,task_id,proj_id,wbs_id,clndr_id,est_wt,phys_complete_pct,rev_fdbk_flag,lock_plan_flag,auto_compute_act_flag,complete_pct_type,task_type,duration_type,review_type,status_code,task_code,task_name,rsrc_id,total_float_hr_cnt,free_float_hr_cnt,remain_drtn_hr_cnt,act_work_qty,remain_work_qty,target_work_qty,target_drtn_hr_cnt,target_equip_qty,act_equip_qty,remain_equip_qty,cstr_date,act_start_date,act_end_date,late_start_date,late_end_date,expect_end_date,early_start_date,early_end_date,restart_date,reend_date,target_start_date,target_end_date,review_end_date,rem_late_start_date,rem_late_end_date,cstr_type,priority_type,suspend_date,resume_date,float_path,float_path_order,guid,tmpl_guid,cstr_date2,cstr_type2,driving_path_flag,act_this_per_work_qty,act_this_per_equip_qty,external_early_start_date,external_late_end_date,create_date,update_date,create_user,update_user
0,93426,1685,12279,794,1,0,N,N,N,CP_Drtn,TT_Task,DT_FixedDUR2,RV_OK,TK_NotStart,A1000,Excavation,2910,704,0,56,0,112,112,56,0,0,0,,,,"Thursday, February 14, 2013","Wednesday, February 20, 2013",,"Sunday, November 18, 2012","Saturday, November 24, 2012","Sunday, November 18, 2012","Saturday, November 24, 2012","Sunday, November 18, 2012","Saturday, November 24, 2012",,2/14/2013 8:00,2/20/2013 17:00,,PT_Normal,,,,,a6xMxZfrfEir+MHKE4XECQ,,,,N,0,0,,,3/6/2012 15:01,3/18/2012 13:25,admin,admin
1,93427,1685,12279,794,1,0,N,N,N,CP_Drtn,TT_Task,DT_FixedDUR2,RV_OK,TK_NotStart,A1010,P.c&R.c footing,2910,704,0,112,0,120,120,112,0,0,0,,,,"Thursday, February 21, 2013","Wednesday, March 6, 2013",,"Sunday, November 25, 2012","Saturday, December 8, 2012","Sunday, November 25, 2012","Saturday, December 8, 2012","Sunday, November 25, 2012","Saturday, December 8, 2012",,2/21/2013 8:00,3/6/2013 17:00,,PT_Normal,,,,,wmIX41RBv0C7O5poqijRfA,,,,N,0,0,,,3/6/2012 15:01,3/18/2012 13:25,admin,admin
2,93428,1685,12279,794,1,0,N,N,N,CP_Drtn,TT_Task,DT_FixedDUR2,RV_OK,TK_NotStart,A1020,R.c columns,2910,704,0,80,0,120,120,80,0,0,0,,,,"Thursday, March 7, 2013","Saturday, March 16, 2013",,"Sunday, December 9, 2012","Tuesday, December 18, 2012","Sunday, December 9, 2012","Tuesday, December 18, 2012","Sunday, December 9, 2012","Tuesday, December 18, 2012",,3/7/2013 8:00,3/16/2013 17:00,,PT_Normal,,,,,39zRQyxDk0qWCDVETi6OTg,,,,N,0,0,,,3/6/2012 15:01,3/18/2012 13:25,admin,admin
3,93429,1685,12279,794,1,0,N,N,N,CP_Drtn,TT_Task,DT_FixedDUR2,RV_OK,TK_NotStart,A1030,Ground floor slab,2910,704,0,160,0,80,80,160,0,0,0,,,,"Sunday, March 17, 2013","Friday, April 5, 2013",,"Wednesday, December 19, 2012","Monday, January 7, 2013","Wednesday, December 19, 2012","Monday, January 7, 2013","Wednesday, December 19, 2012","Monday, January 7, 2013",,3/17/2013 8:00,4/5/2013 17:00,,PT_Normal,,,,,1o9t6Go5H0SZbUm8NPZCaQ,,,,N,0,0,,,3/6/2012 15:01,3/18/2012 13:25,admin,admin
4,93430,1685,12280,794,1,0,N,N,N,CP_Drtn,TT_Task,DT_FixedDUR2,RV_OK,TK_NotStart,A1040,masonry works,2912,704,0,160,0,100,100,160,0,0,0,,,,"Friday, April 26, 2013","Wednesday, May 15, 2013",,"Monday, January 28, 2013","Saturday, February 16, 2013","Monday, January 28, 2013","Saturday, February 16, 2013","Monday, January 28, 2013","Saturday, February 16, 2013",,4/26/2013 8:00,5/15/2013 17:00,,PT_Normal,,,,,UyZixfQCm0ab1raGEGeSzw,,,,N,0,0,,,3/6/2012 15:01,3/18/2012 13:25,admin,admin
5,93432,1685,12221,794,1,0,N,N,N,CP_Drtn,TT_Task,DT_FixedDUR2,RV_OK,TK_NotStart,A1060,Mobilization,,0,0,680,0,0,0,680,0,0,0,,,,"Sunday, May 27, 2012","Sunday, August 19, 2012",,"Sunday, May 27, 2012","Sunday, August 19, 2012","Sunday, May 27, 2012","Sunday, August 19, 2012","Sunday, May 27, 2012","Sunday, August 19, 2012",,5/27/2012 8:00,8/19/2012 17:00,,PT_Normal,,,,,A4SBMac30U+3B7sbkVmkpQ,,,,Y,0,0,,,3/6/2012 15:11,3/18/2012 22:47,admin,NotPrmUser
6,93433,1685,12221,794,1,0,N,N,N,CP_Drtn,TT_Task,DT_FixedDUR2,RV_OK,TK_NotStart,A1070,Demobilization,,0,0,120,0,0,0,120,0,0,0,,,,"Sunday, June 16, 2013","Sunday, June 30, 2013",,"Sunday, June 16, 2013","Sunday, June 30, 2013","Sunday, June 16, 2013","Sunday, June 30, 2013","Sunday, June 16, 2013","Sunday, June 30, 2013",,6/16/2013 8:00,6/30/2013 17:00,,PT_Normal,,,,,R71GiD/16UGGbCQhni3CAA,,,,Y,0,0,,,3/6/2012 15:11,3/18/2012 22:47,admin,NotPrmUser
7,93434,1685,12228,794,0,0,N,N,N,CP_Drtn,TT_Mile,DT_FixedDrtn,RV_OK,TK_NotStart,A1080,Commencement date,,0,0,0,0,0,0,0,0,0,0,,,,"Sunday, May 27, 2012","Sunday, May 27, 2012",,"Sunday, May 27, 2012","Sunday, May 27, 2012","Sunday, May 27, 2012","Sunday, May 27, 2012","Sunday, May 27, 2012","Sunday, May 27, 2012",,5/27/2012 8:00,5/27/2012 8:00,,PT_Normal,,,,,#NAME?,,,,Y,0,0,,,3/6/2012 15:12,3/18/2012 22:53,admin,NotPrmUser
8,93437,1685,12228,794,0,0,N,N,N,CP_Drtn,TT_FinMile,DT_FixedDrtn,RV_OK,TK_NotStart,A1110,Final completion,,0,0,0,0,0,0,0,0,0,0,,,,"Sunday, June 30, 2013","Sunday, June 30, 2013",,"Sunday, June 30, 2013","Sunday, June 30, 2013","Sunday, June 30, 2013","Sunday, June 30, 2013","Sunday, June 30, 2013","Sunday, June 30, 2013",,6/30/2013 17:00,6/30/2013 17:00,,PT_Normal,,,,,v07ofdQq5EWGbxmK5wJ8fQ,,,,Y,0,0,,,3/6/2012 15:12,3/18/2012 22:47,admin,NotPrmUser
9,93438,1685,12283,794,1,0,N,N,N,CP_Drtn,TT_Task,DT_FixedDUR2,RV_OK,TK_NotStart,A1120,Excavation,,464,0,56,0,0,0,56,0,0,0,,,,"Thursday, December 6, 2012","Wednesday, December 12, 2012",,"Tuesday, October 9, 2012","Monday, October 15, 2012","Tuesday, October 9, 2012","Monday, October 15, 2012","Tuesday, October 9, 2012","Monday, October 15, 2012",,12/6/2012 8:00,12/12/2012 17:00,,PT_Normal,,,,,smEqHQt+jEaNZsypIfQvXg,a6xMxZfrfEir+MHKE4XECQ,,,N,0,0,,,3/6/2012 16:26,3/18/2012 13:24,admin,admin
10,93439,1685,12283,794,1,0,N,N,N,CP_Drtn,TT_Task,DT_FixedDUR2,RV_OK,TK_NotStart,A1130,P.c&R.c footing,2910,464,0,112,0,80,80,112,0,0,0,,,,"Thursday, December 13, 2012","Wednesday, December 26, 2012",,"Tuesday, October 16, 2012","Monday, October 29, 2012","Tuesday, October 16, 2012","Monday, October 29, 2012","Tuesday, October 16, 2012","Monday, October 29, 2012",,12/13/2012 8:00,12/26/2012 17:00,,PT_Normal,,,,,GWgRRs0Kcki00ZUmcI0XtQ,wmIX41RBv0C7O5poqijRfA,,,N,0,0,,,3/6/2012 16:26,3/18/2012 13:24,admin,admin
11,93440,1685,12283,794,1,0,N,N,N,CP_Drtn,TT_Task,DT_FixedDUR2,RV_OK,TK_NotStart,A1140,R.c columns,2910,464,0,56,0,80,80,56,0,0,0,,,,"Thursday, December 27, 2012","Wednesday, January 2, 2013",,"Tuesday, October 30, 2012","Monday, November 5, 2012","Tuesday, October 30, 2012","Monday, November 5, 2012","Tuesday, October 30, 2012","Monday, November 5, 2012",,12/27/2012 8:00,1/2/2013 17:00,,PT_Normal,,,,,EbuOy3+1MkeHNNyuPR8y/g,39zRQyxDk0qWCDVETi6OTg,,,N,0,0,,,3/6/2012 16:26,3/18/2012 13:24,admin,admin
12,93441,1685,12283,794,1,0,N,N,N,CP_Drtn,TT_Task,DT_FixedDUR2,RV_OK,TK_NotStart,A1150,Ground floor slab,2910,464,0,240,0,180,180,240,0,0,0,,,,"Thursday, January 3, 2013","Friday, February 1, 2013",,"Tuesday, November 6, 2012","Wednesday, December 5, 2012","Tuesday, November 6, 2012","Wednesday, December 5, 2012","Tuesday, November 6, 2012","Wednesday, December 5, 2012",,1/3/2013 8:00,2/1/2013 17:00,,PT_Normal,,,,,hrB1xYZzvEWVaZXZcydqcA,1o9t6Go5H0SZbUm8NPZCaQ,,,N,0,0,,,3/6/2012 16:26,3/18/2012 13:24,admin,admin
13,93442,1685,12284,794,1,0,N,N,N,CP_Drtn,TT_Task,DT_FixedDUR2,RV_OK,TK_NotStart,A1160,masonry works,2912,464,0,240,0,140,140,240,0,0,0,,,,"Saturday, February 16, 2013","Sunday, March 17, 2013",,"Thursday, December 20, 2012","Friday, January 18, 2013","Thursday, December 20, 2012","Friday, January 18, 2013","Thursday, December 20, 2012","Friday, January 18, 2013",,2/16/2013 8:00,3/17/2013 17:00,,PT_Normal,,,,,BYYUsg8dwEaGvq6bofACwA,UyZixfQCm0ab1raGEGeSzw,,,N,0,0,,,3/6/2012 16:26,3/18/2012 13:24,admin,admin
14,93444,1685,12255,794,1,0,N,N,N,CP_Drtn,TT_Task,DT_FixedDUR2,RV_OK,TK_NotStart,A1180,Excavation,,656,0,56,0,0,0,56,0,0,0,,,,"Monday, February 18, 2013","Sunday, February 24, 2013",,"Wednesday, November 28, 2012","Tuesday, December 4, 2012","Wednesday, November 28, 2012","Tuesday, December 4, 2012","Wednesday, November 28, 2012","Tuesday, December 4, 2012",,2/18/2013 8:00,2/24/2013 17:00,,PT_Normal,,,,,1UMjBKODFkaICPWdQuF1AQ,a6xMxZfrfEir+MHKE4XECQ,,,N,0,0,,,3/6/2012 16:26,3/18/2012 13:23,admin,admin
15,93445,1685,12255,794,1,0,N,N,N,CP_Drtn,TT_Task,DT_FixedDUR2,RV_OK,TK_NotStart,A1190,P.c&R.c footing,2910,656,0,112,0,60,60,112,0,0,0,,,,"Monday, February 25, 2013","Sunday, March 10, 2013",,"Wednesday, December 5, 2012","Tuesday, December 18, 2012","Wednesday, December 5, 2012","Tuesday, December 18, 2012","Wednesday, December 5, 2012","Tuesday, December 18, 2012",,2/25/2013 8:00,3/10/2013 17:00,,PT_Normal,,,,,Jihx0ubW0kKdKfAQHwfVZw,wmIX41RBv0C7O5poqijRfA,,,N,0,0,,,3/6/2012 16:26,3/18/2012 13:23,admin,admin
16,93446,1685,12255,794,1,0,N,N,N,CP_Drtn,TT_Task,DT_FixedDUR2,RV_OK,TK_NotStart,A1200,R.c columns,2910,656,0,56,0,40,40,56,0,0,0,,,,"Monday, March 11, 2013","Sunday, March 17, 2013",,"Wednesday, December 19, 2012","Tuesday, December 25, 2012","Wednesday, December 19, 2012","Tuesday, December 25, 2012","Wednesday, December 19, 2012","Tuesday, December 25, 2012",,3/11/2013 8:00,3/17/2013 17:00,,PT_Normal,,,,,Bv11podAY0CuHxneBmg9oA,39zRQyxDk0qWCDVETi6OTg,,,N,0,0,,,3/6/2012 16:26,3/18/2012 13:23,admin,admin
17,93447,1685,12255,794,1,0,N,N,N,CP_Drtn,TT_Task,DT_FixedDUR2,RV_OK,TK_NotStart,A1210,Ground floor slab,2910,656,0,112,0,200,200,112,0,0,0,,,,"Monday, March 18, 2013","Sunday, March 31, 2013",,"Wednesday, December 26, 2012","Tuesday, January 8, 2013","Wednesday, December 26, 2012","Tuesday, January 8, 2013","Wednesday, December 26, 2012","Tuesday, January 8, 2013",,3/18/2013 8:00,3/31/2013 17:00,,PT_Normal,,,,,E0nWn7uQBUuKtxug1FyqNA,1o9t6Go5H0SZbUm8NPZCaQ,,,N,0,0,,,3/6/2012 16:26,3/18/2012 13:23,admin,admin
18,93448,1685,12256,794,1,0,N,N,N,CP_Drtn,TT_Task,DT_FixedDUR2,RV_OK,TK_NotStart,A1220,masonry works,,656,0,112,0,90,90,112,0,0,0,,,,"Monday, April 15, 2013","Sunday, April 28, 2013",,"Wednesday, January 23, 2013","Tuesday, February 5, 2013","Wednesday, January 23, 2013","Tuesday, February 5, 2013","Wednesday, January 23, 2013","Tuesday, February 5, 2013",,4/15/2013 8:00,4/28/2013 17:00,,PT_Normal,,,,,m12F1C3MoEW2RYNdrzwgKg,UyZixfQCm0ab1raGEGeSzw,,,N,0,0,,,3/6/2012 16:26,3/18/2012 13:23,admin,admin
19,93450,1685,12259,794,1,0,N,N,N,CP_Drtn,TT_Task,DT_FixedDUR2,RV_OK,TK_NotStart,A1240,Excavation,,592,0,56,0,0,0,56,0,0,0,,,,"Saturday, December 22, 2012","Friday, December 28, 2012",,"Tuesday, October 9, 2012","Monday, October 15, 2012","Tuesday, October 9, 2012","Monday, October 15, 2012","Tuesday, October 9, 2012","Monday, October 15, 2012",,12/22/2012 8:00,12/28/2012 17:00,,PT_Normal,,,,,KHzsYaazDk+Uo32ZgoAGVw,a6xMxZfrfEir+MHKE4XECQ,,,N,0,0,,,3/6/2012 16:26,3/18/2012 21:43,admin,NotPrmUser
20,93451,1685,12259,794,1,0,N,N,N,CP_Drtn,TT_Task,DT_FixedDUR2,RV_OK,TK_NotStart,A1250,P.c&R.c footing,2910,592,0,112,0,80,80,112,0,0,0,,,,"Saturday, December 29, 2012","Friday, January 11, 2013",,"Tuesday, October 16, 2012","Monday, October 29, 2012","Tuesday, October 16, 2012","Monday, October 29, 2012","Tuesday, October 16, 2012","Monday, October 29, 2012",,12/29/2012 8:00,1/11/2013 17:00,,PT_Normal,,,,,QC0NcfqpI0GcGi1rAgbAew,wmIX41RBv0C7O5poqijRfA,,,N,0,0,,,3/6/2012 16:26,3/18/2012 21:43,admin,NotPrmUser
21,93452,1685,12259,794,1,0,N,N,N,CP_Drtn,TT_Task,DT_FixedDUR2,RV_OK,TK_NotStart,A1260,R.c columns,2910,592,0,80,0,60,60,80,0,0,0,,,,"Saturday, January 12, 2013","Monday, January 21, 2013",,"Tuesday, October 30, 2012","Thursday, November 8, 2012","Tuesday, October 30, 2012","Thursday, November 8, 2012","Tuesday, October 30, 2012","Thursday, November 8, 2012",,1/12/2013 8:00,1/21/2013 17:00,,PT_Normal,,,,,roayskJDeEe5GlbN+kGKHA,39zRQyxDk0qWCDVETi6OTg,,,N,0,0,,,3/6/2012 16:26,3/18/2012 21:43,admin,NotPrmUser
22,93453,1685,12259,794,1,0,N,N,N,CP_Drtn,TT_Task,DT_FixedDUR2,RV_OK,TK_NotStart,A1270,Ground floor slab,2910,592,0,112,0,312,312,112,0,0,0,,,,"Tuesday, January 22, 2013","Monday, February 4, 2013",,"Friday, November 9, 2012","Thursday, November 22, 2012","Friday, November 9, 2012","Thursday, November 22, 2012","Friday, November 9, 2012","Thursday, November 22, 2012",,1/22/2013 8:00,2/4/2013 17:00,,PT_Normal,,,,,kYXreMD+5E+ygVNuihw5IA,1o9t6Go5H0SZbUm8NPZCaQ,,,N,0,0,,,3/6/2012 16:26,3/18/2012 21:43,admin,NotPrmUser
23,93454,1685,12260,794,1,0,N,N,N,CP_Drtn,TT_Task,DT_FixedDUR2,RV_OK,TK_NotStart,A1280,masonry works,2912,592,0,160,0,160,160,160,0,0,0,,,,"Friday, February 15, 2013","Wednesday, March 6, 2013",,"Monday, December 3, 2012","Saturday, December 22, 2012","Monday, December 3, 2012","Saturday, December 22, 2012","Monday, December 3, 2012","Saturday, December 22, 2012",,2/15/2013 8:00,3/6/2013 17:00,,PT_Normal,,,,,M+3qq5IOj0qUTD13GjwlAw,UyZixfQCm0ab1raGEGeSzw,,,N,0,0,,,3/6/2012 16:26,3/18/2012 21:43,admin,NotPrmUser
24,93456,1685,12295,794,1,0,N,N,N,CP_Drtn,TT_Task,DT_FixedDUR2,RV_OK,TK_NotStart,A1300,Excavation,,552,0,16,0,0,0,16,0,0,0,,,,"Tuesday, April 16, 2013","Wednesday, April 17, 2013",,"Wednesday, February 6, 2013","Thursday, February 7, 2013","Wednesday, February 6, 2013","Thursday, February 7, 2013","Wednesday, February 6, 2013","Thursday, February 7, 2013",,4/16/2013 8:00,4/17/2013 17:00,,PT_Normal,,,,,ShHYBtooT0mRaNylgQbgaQ,a6xMxZfrfEir+MHKE4XECQ,,,N,0,0,,,3/6/2012 16:28,3/18/2012 17:45,admin,admin
25,93457,1685,12295,794,1,0,N,N,N,CP_Drtn,TT_Task,DT_FixedDUR2,RV_OK,TK_NotStart,A1310,P.c&R.c footing,2910,552,0,40,0,20,20,40,0,0,0,,,,"Thursday, April 18, 2013","Monday, April 22, 2013",,"Friday, February 8, 2013","Tuesday, February 12, 2013","Friday, February 8, 2013","Tuesday, February 12, 2013","Friday, February 8, 2013","Tuesday, February 12, 2013",,4/18/2013 8:00,4/22/2013 17:00,,PT_Normal,,,,,hcPdr/rIJECQcAACadroFA,wmIX41RBv0C7O5poqijRfA,,,N,0,0,,,3/6/2012 16:28,3/18/2012 13:29,admin,admin
26,93458,1685,12295,794,1,0,N,N,N,CP_Drtn,TT_Task,DT_FixedDUR2,RV_OK,TK_NotStart,A1320,R.c columns,2910,552,0,40,0,60,60,40,0,0,0,,,,"Tuesday, April 23, 2013","Saturday, April 27, 2013",,"Wednesday, February 13, 2013","Sunday, February 17, 2013","Wednesday, February 13, 2013","Sunday, February 17, 2013","Wednesday, February 13, 2013","Sunday, February 17, 2013",,4/23/2013 8:00,4/27/2013 17:00,,PT_Normal,,,,,QChlB5fa9UOnuqVqEUzDwg,39zRQyxDk0qWCDVETi6OTg,,,N,0,0,,,3/6/2012 16:28,3/18/2012 13:29,admin,admin
27,93459,1685,12295,794,1,0,N,N,N,CP_Drtn,TT_Task,DT_FixedDUR2,RV_OK,TK_NotStart,A1330,Ground floor slab,2910,552,184,80,0,60,60,80,0,0,0,,,,"Sunday, April 28, 2013","Tuesday, May 7, 2013",,"Monday, February 18, 2013","Wednesday, February 27, 2013","Monday, February 18, 2013","Wednesday, February 27, 2013","Monday, February 18, 2013","Wednesday, February 27, 2013",,4/28/2013 8:00,5/7/2013 17:00,,PT_Normal,,,,,nuFUXzGo0kyHtdFaE/YMcw,1o9t6Go5H0SZbUm8NPZCaQ,,,N,0,0,,,3/6/2012 16:28,3/18/2012 17:45,admin,admin
28,93460,1685,12296,794,1,0,N,N,N,CP_Drtn,TT_Task,DT_FixedDUR2,RV_OK,TK_NotStart,A1340,masonry works,2912,368,0,40,0,27,27,40,0,0,0,,,,"Saturday, May 18, 2013","Wednesday, May 22, 2013",,"Tuesday, April 2, 2013","Saturday, April 6, 2013","Tuesday, April 2, 2013","Saturday, April 6, 2013","Tuesday, April 2, 2013","Saturday, April 6, 2013",,5/18/2013 8:00,5/22/2013 17:00,,PT_Normal,,,,,x/CiyD7A7U2Q+7Vp3l1YvA,UyZixfQCm0ab1raGEGeSzw,,,N,0,0,,,3/6/2012 16:28,3/18/2012 17:45,admin,admin
29,93462,1685,12275,794,1,0,N,N,N,CP_Drtn,TT_Task,DT_FixedDUR2,RV_OK,TK_NotStart,A1360,Excavation,,424,0,56,0,0,0,56,0,0,0,,,,"Friday, October 12, 2012","Thursday, October 18, 2012",,"Monday, August 20, 2012","Sunday, August 26, 2012","Monday, August 20, 2012","Sunday, August 26, 2012","Monday, August 20, 2012","Sunday, August 26, 2012",,10/12/2012 8:00,10/18/2012 17:00,,PT_Normal,,,,,2yoGB4vcfU6FhnXCHFnH+w,a6xMxZfrfEir+MHKE4XECQ,,,N,0,0,,,3/6/2012 16:31,3/16/2012 15:23,admin,admin
30,93463,1685,12275,794,1,0,N,N,N,CP_Drtn,TT_Task,DT_FixedDUR2,RV_OK,TK_NotStart,A1370,P.c&R.c footing,2910,424,0,112,0,100,100,112,0,0,0,,,,"Friday, October 19, 2012","Thursday, November 1, 2012",,"Monday, August 27, 2012","Sunday, September 9, 2012","Monday, August 27, 2012","Sunday, September 9, 2012","Monday, August 27, 2012","Sunday, September 9, 2012",,10/19/2012 8:00,11/1/2012 17:00,,PT_Normal,,,,,5c7hZCnn9kCjrhnr+JqZ+w,wmIX41RBv0C7O5poqijRfA,,,N,0,0,,,3/6/2012 16:31,3/16/2012 15:23,admin,admin
31,93464,1685,12275,794,1,0,N,N,N,CP_Drtn,TT_Task,DT_FixedDUR2,RV_OK,TK_NotStart,A1380,R.c columns,2910,424,0,80,0,100,100,80,0,0,0,,,,"Friday, November 2, 2012","Sunday, November 11, 2012",,"Monday, September 10, 2012","Wednesday, September 19, 2012","Monday, September 10, 2012","Wednesday, September 19, 2012","Monday, September 10, 2012","Wednesday, September 19, 2012",,11/2/2012 8:00,11/11/2012 17:00,,PT_Normal,,,,,/EKB7+P80EiWDr/zdjhdgw,39zRQyxDk0qWCDVETi6OTg,,,N,0,0,,,3/6/2012 16:31,3/16/2012 15:23,admin,admin
32,93465,1685,12275,794,1,0,N,N,N,CP_Drtn,TT_Task,DT_FixedDUR2,RV_OK,TK_NotStart,A1390,Ground floor slab,2910,424,0,160,0,140,140,160,0,0,0,,,,"Monday, November 12, 2012","Saturday, December 1, 2012",,"Thursday, September 20, 2012","Tuesday, October 9, 2012","Thursday, September 20, 2012","Tuesday, October 9, 2012","Thursday, September 20, 2012","Tuesday, October 9, 2012",,11/12/2012 8:00,12/1/2012 17:00,,PT_Normal,,,,,1YW+ZQmktUS4uCuW4AjWPA,1o9t6Go5H0SZbUm8NPZCaQ,,,N,0,0,,,3/6/2012 16:31,3/16/2012 15:23,admin,admin
33,93466,1685,12276,794,1,0,N,N,N,CP_Drtn,TT_Task,DT_FixedDUR2,RV_OK,TK_NotStart,A1400,masonry works,2912,424,0,160,0,109,109,160,0,0,0,,,,"Sunday, December 16, 2012","Friday, January 4, 2013",,"Wednesday, October 24, 2012","Monday, November 12, 2012","Wednesday, October 24, 2012","Monday, November 12, 2012","Wednesday, October 24, 2012","Monday, November 12, 2012",,12/16/2012 8:00,1/4/2013 17:00,,PT_Normal,,,,,h6+/gHDnsECBb7c5mRow1w,UyZixfQCm0ab1raGEGeSzw,,,N,0,0,,,3/6/2012 16:31,3/16/2012 15:23,admin,admin
34,93468,1685,12287,794,1,0,N,N,N,CP_Drtn,TT_Task,DT_FixedDUR2,RV_OK,TK_NotStart,A1420,Excavation,,368,0,80,0,0,0,80,0,0,0,,,,"Friday, October 5, 2012","Sunday, October 14, 2012",,"Monday, August 20, 2012","Wednesday, August 29, 2012","Monday, August 20, 2012","Wednesday, August 29, 2012","Monday, August 20, 2012","Wednesday, August 29, 2012",,10/5/2012 8:00,10/14/2012 17:00,,PT_Normal,,,,,mVSV1H8wpUGmx+zAmWaiiw,a6xMxZfrfEir+MHKE4XECQ,,,N,0,0,,,3/6/2012 16:32,3/18/2012 21:42,admin,NotPrmUser
35,93469,1685,12287,794,1,0,N,N,N,CP_Drtn,TT_Task,DT_FixedDUR2,RV_OK,TK_NotStart,A1430,P.c&R.c footing,2911,368,0,112,0,312,312,112,0,0,0,,,,"Monday, October 15, 2012","Sunday, October 28, 2012",,"Thursday, August 30, 2012","Wednesday, September 12, 2012","Thursday, August 30, 2012","Wednesday, September 12, 2012","Thursday, August 30, 2012","Wednesday, September 12, 2012",,10/15/2012 8:00,10/28/2012 17:00,,PT_Normal,,,,,1zH7lYstuUW4TfDS+yjXhg,wmIX41RBv0C7O5poqijRfA,,,N,0,0,,,3/6/2012 16:32,3/18/2012 21:42,admin,NotPrmUser
36,93470,1685,12287,794,1,0,N,N,N,CP_Drtn,TT_Task,DT_FixedDUR2,RV_OK,TK_NotStart,A1440,R.c columns,2911,368,0,112,0,312,312,112,0,0,0,,,,"Monday, October 29, 2012","Sunday, November 11, 2012",,"Thursday, September 13, 2012","Wednesday, September 26, 2012","Thursday, September 13, 2012","Wednesday, September 26, 2012","Thursday, September 13, 2012","Wednesday, September 26, 2012",,10/29/2012 8:00,11/11/2012 17:00,,PT_Normal,,,,,iF1UVdmh7Uy00imm6HJftA,39zRQyxDk0qWCDVETi6OTg,,,N,0,0,,,3/6/2012 16:32,3/18/2012 21:42,admin,NotPrmUser
37,93471,1685,12287,794,1,0,N,N,N,CP_Drtn,TT_Task,DT_FixedDUR2,RV_OK,TK_NotStart,A1450,Ground floor slab,2910,368,0,240,0,690,690,240,0,0,0,,,,"Monday, November 12, 2012","Tuesday, December 11, 2012",,"Thursday, September 27, 2012","Friday, October 26, 2012","Thursday, September 27, 2012","Friday, October 26, 2012","Thursday, September 27, 2012","Friday, October 26, 2012",,11/12/2012 8:00,12/11/2012 17:00,,PT_Normal,,,,,8csVy+jQX0WW1wEyrajIiQ,1o9t6Go5H0SZbUm8NPZCaQ,,,N,0,0,,,3/6/2012 16:32,3/18/2012 21:42,admin,NotPrmUser
38,93472,1685,12288,794,1,0,N,N,N,CP_Drtn,TT_Task,DT_FixedDUR2,RV_OK,TK_NotStart,A1460,masonry works,2912,368,0,240,0,1579,1579,240,0,0,0,,,,"Tuesday, February 19, 2013","Wednesday, March 20, 2013",,"Friday, January 4, 2013","Saturday, February 2, 2013","Friday, January 4, 2013","Saturday, February 2, 2013","Friday, January 4, 2013","Saturday, February 2, 2013",,2/19/2013 8:00,3/20/2013 17:00,,PT_Normal,,,,,OUdNSF1/c0S8723ZndHSWQ,UyZixfQCm0ab1raGEGeSzw,,,N,0,0,,,3/6/2012 16:32,3/18/2012 21:42,admin,NotPrmUser
39,93474,1685,12271,794,1,0,N,N,N,CP_Drtn,TT_Task,DT_FixedDUR2,RV_OK,TK_NotStart,A1480,Excavation,,808,0,56,0,0,0,56,0,0,0,,,,"Thursday, November 29, 2012","Wednesday, December 5, 2012",,"Monday, August 20, 2012","Sunday, August 26, 2012","Monday, August 20, 2012","Sunday, August 26, 2012","Monday, August 20, 2012","Sunday, August 26, 2012",,11/29/2012 8:00,12/5/2012 17:00,,PT_Normal,,,,,i3m+RTCb7EmhWFUqgIOsUw,a6xMxZfrfEir+MHKE4XECQ,,,N,0,0,,,3/6/2012 16:43,3/18/2012 21:18,admin,NotPrmUser
40,93475,1685,12271,794,1,0,N,N,N,CP_Drtn,TT_Task,DT_FixedDUR2,RV_OK,TK_NotStart,A1490,P.c&R.c footing,2910,808,0,112,0,850,850,112,0,0,0,,,,"Thursday, December 6, 2012","Wednesday, December 19, 2012",,"Monday, August 27, 2012","Sunday, September 9, 2012","Monday, August 27, 2012","Sunday, September 9, 2012","Monday, August 27, 2012","Sunday, September 9, 2012",,12/6/2012 8:00,12/19/2012 17:00,,PT_Normal,,,,,1Pp0hSn1/0WPu27/xE6IjA,wmIX41RBv0C7O5poqijRfA,,,N,0,0,,,3/6/2012 16:43,3/18/2012 21:18,admin,NotPrmUser
41,93476,1685,12271,794,1,0,N,N,N,CP_Drtn,TT_Task,DT_FixedDUR2,RV_OK,TK_NotStart,A1500,R.c columns,2910,808,0,112,0,850,850,112,0,0,0,,,,"Thursday, December 20, 2012","Wednesday, January 2, 2013",,"Monday, September 10, 2012","Sunday, September 23, 2012","Monday, September 10, 2012","Sunday, September 23, 2012","Monday, September 10, 2012","Sunday, September 23, 2012",,12/20/2012 8:00,1/2/2013 17:00,,PT_Normal,,,,,ertILlJr9EyhSn3StAlgdg,39zRQyxDk0qWCDVETi6OTg,,,N,0,0,,,3/6/2012 16:43,3/18/2012 21:18,admin,NotPrmUser
42,93477,1685,12271,794,1,0,N,N,N,CP_Drtn,TT_Task,DT_FixedDUR2,RV_OK,TK_NotStart,A1510,Ground floor slab,2910,808,0,160,0,1300,1300,160,0,0,0,,,,"Thursday, January 3, 2013","Tuesday, January 22, 2013",,"Monday, September 24, 2012","Saturday, October 13, 2012","Monday, September 24, 2012","Saturday, October 13, 2012","Monday, September 24, 2012","Saturday, October 13, 2012",,1/3/2013 8:00,1/22/2013 17:00,,PT_Normal,,,,,W8+7xMQw1UO7nwscNwqwGg,1o9t6Go5H0SZbUm8NPZCaQ,,,N,0,0,,,3/6/2012 16:43,3/18/2012 21:18,admin,NotPrmUser
43,93478,1685,12272,794,1,0,N,N,N,CP_Drtn,TT_Task,DT_FixedDUR2,RV_OK,TK_NotStart,A1520,masonry works,2912,808,0,200,0,740,740,200,0,0,0,,,,"Sunday, February 17, 2013","Wednesday, March 13, 2013",,"Thursday, November 8, 2012","Sunday, December 2, 2012","Thursday, November 8, 2012","Sunday, December 2, 2012","Thursday, November 8, 2012","Sunday, December 2, 2012",,2/17/2013 8:00,3/13/2013 17:00,,PT_Normal,,,,,HvGwldy2XEeMJuonlg61Fg,UyZixfQCm0ab1raGEGeSzw,,,N,0,0,,,3/6/2012 16:43,3/18/2012 21:18,admin,NotPrmUser
44,93480,1685,12267,794,1,0,N,N,N,CP_Drtn,TT_Task,DT_FixedDUR2,RV_OK,TK_NotStart,A1540,Excavation,,696,0,40,0,0,0,40,0,0,0,,,,"Thursday, January 24, 2013","Monday, January 28, 2013",,"Monday, October 29, 2012","Friday, November 2, 2012","Monday, October 29, 2012","Friday, November 2, 2012","Monday, October 29, 2012","Friday, November 2, 2012",,1/24/2013 8:00,1/28/2013 17:00,,PT_Normal,,,,,X4TKMiZjTEqo88r8aEOVKQ,a6xMxZfrfEir+MHKE4XECQ,,,N,0,0,,,3/6/2012 16:51,3/18/2012 13:25,admin,admin
45,93481,1685,12267,794,1,0,N,N,N,CP_Drtn,TT_Task,DT_FixedDUR2,RV_OK,TK_NotStart,A1550,P.c&R.c footing,2910,696,0,80,0,140,140,80,0,0,0,,,,"Tuesday, January 29, 2013","Thursday, February 7, 2013",,"Saturday, November 3, 2012","Monday, November 12, 2012","Saturday, November 3, 2012","Monday, November 12, 2012","Saturday, November 3, 2012","Monday, November 12, 2012",,1/29/2013 8:00,2/7/2013 17:00,,PT_Normal,,,,,i/SDi+e1fkOooqjrAFWOJA,wmIX41RBv0C7O5poqijRfA,,,N,0,0,,,3/6/2012 16:51,3/18/2012 13:25,admin,admin
46,93482,1685,12267,794,1,0,N,N,N,CP_Drtn,TT_Task,DT_FixedDUR2,RV_OK,TK_NotStart,A1560,R.c columns,2910,696,0,80,0,105,105,80,0,0,0,,,,"Friday, February 8, 2013","Sunday, February 17, 2013",,"Tuesday, November 13, 2012","Thursday, November 22, 2012","Tuesday, November 13, 2012","Thursday, November 22, 2012","Tuesday, November 13, 2012","Thursday, November 22, 2012",,2/8/2013 8:00,2/17/2013 17:00,,PT_Normal,,,,,ru7hqnRzCU6yzRQPx5y1Ig,39zRQyxDk0qWCDVETi6OTg,,,N,0,0,,,3/6/2012 16:51,3/18/2012 13:25,admin,admin
47,93483,1685,12267,794,1,0,N,N,N,CP_Drtn,TT_Task,DT_FixedDUR2,RV_OK,TK_NotStart,A1570,Ground floor slab,2910,696,0,112,0,236,236,112,0,0,0,,,,"Monday, February 18, 2013","Sunday, March 3, 2013",,"Friday, November 23, 2012","Thursday, December 6, 2012","Friday, November 23, 2012","Thursday, December 6, 2012","Friday, November 23, 2012","Thursday, December 6, 2012",,2/18/2013 8:00,3/3/2013 17:00,,PT_Normal,,,,,ordY3M71x0uGP+sYBtRR+Q,1o9t6Go5H0SZbUm8NPZCaQ,,,N,0,0,,,3/6/2012 16:51,3/18/2012 13:25,admin,admin
48,93484,1685,12268,794,1,0,N,N,N,CP_Drtn,TT_Task,DT_FixedDUR2,RV_OK,TK_NotStart,A1580,masonry works,2912,696,0,160,0,220,220,160,0,0,0,,,,"Monday, March 18, 2013","Saturday, April 6, 2013",,"Friday, December 21, 2012","Wednesday, January 9, 2013","Friday, December 21, 2012","Wednesday, January 9, 2013","Friday, December 21, 2012","Wednesday, January 9, 2013",,3/18/2013 8:00,4/6/2013 17:00,,PT_Normal,,,,,NBIruEPvKkWXg7zuW40rhg,UyZixfQCm0ab1raGEGeSzw,,,N,0,0,,,3/6/2012 16:51,3/18/2012 13:25,admin,admin
49,93486,1685,12263,794,1,0,N,N,N,CP_Drtn,TT_Task,DT_FixedDUR2,RV_OK,TK_NotStart,A1600,Excavation,,928,0,40,0,0,0,40,0,0,0,,,,"Sunday, January 13, 2013","Thursday, January 17, 2013",,"Wednesday, September 19, 2012","Sunday, September 23, 2012","Wednesday, September 19, 2012","Sunday, September 23, 2012","Wednesday, September 19, 2012","Sunday, September 23, 2012",,1/13/2013 8:00,1/17/2013 17:00,,PT_Normal,,,,,zQzxs1xTQUCE7Ctr5BXNmg,a6xMxZfrfEir+MHKE4XECQ,,,N,0,0,,,3/6/2012 16:51,3/18/2012 13:30,admin,admin
50,93487,1685,12263,794,1,0,N,N,N,CP_Drtn,TT_Task,DT_FixedDUR2,RV_OK,TK_NotStart,A1610,P.c&R.c footing,2910,928,0,112,0,40,40,112,0,0,0,,,,"Friday, January 18, 2013","Thursday, January 31, 2013",,"Monday, September 24, 2012","Sunday, October 7, 2012","Monday, September 24, 2012","Sunday, October 7, 2012","Monday, September 24, 2012","Sunday, October 7, 2012",,1/18/2013 8:00,1/31/2013 17:00,,PT_Normal,,,,,qjx1CB/QX0qa0OrHFOL0AQ,wmIX41RBv0C7O5poqijRfA,,,N,0,0,,,3/6/2012 16:51,3/18/2012 13:30,admin,admin
51,93488,1685,12263,794,1,0,N,N,N,CP_Drtn,TT_Task,DT_FixedDUR2,RV_OK,TK_NotStart,A1620,R.c columns,2910,928,0,80,0,60,60,80,0,0,0,,,,"Friday, February 1, 2013","Sunday, February 10, 2013",,"Monday, October 8, 2012","Wednesday, October 17, 2012","Monday, October 8, 2012","Wednesday, October 17, 2012","Monday, October 8, 2012","Wednesday, October 17, 2012",,2/1/2013 8:00,2/10/2013 17:00,,PT_Normal,,,,,azjYkmQOlUuqpdFZlJdRrw,39zRQyxDk0qWCDVETi6OTg,,,N,0,0,,,3/6/2012 16:51,3/18/2012 13:30,admin,admin
52,93489,1685,12263,794,1,0,N,N,N,CP_Drtn,TT_Task,DT_FixedDUR2,RV_OK,TK_NotStart,A1630,Ground floor slab,2910,928,0,160,0,80,80,160,0,0,0,,,,"Monday, February 11, 2013","Saturday, March 2, 2013",,"Thursday, October 18, 2012","Tuesday, November 6, 2012","Thursday, October 18, 2012","Tuesday, November 6, 2012","Thursday, October 18, 2012","Tuesday, November 6, 2012",,2/11/2013 8:00,3/2/2013 17:00,,PT_Normal,,,,,8F+z/PAdMEqNHT9TIxhp2w,1o9t6Go5H0SZbUm8NPZCaQ,,,N,0,0,,,3/6/2012 16:51,3/18/2012 13:30,admin,admin
53,93490,1685,12264,794,1,0,N,N,N,CP_Drtn,TT_Task,DT_FixedDUR2,RV_OK,TK_NotStart,A1640,masonry works,2912,928,0,160,0,60,60,160,0,0,0,,,,"Wednesday, March 13, 2013","Monday, April 1, 2013",,"Saturday, November 17, 2012","Thursday, December 6, 2012","Saturday, November 17, 2012","Thursday, December 6, 2012","Saturday, November 17, 2012","Thursday, December 6, 2012",,3/13/2013 8:00,4/1/2013 17:00,,PT_Normal,,,,,qua/nCJWq0GTiXXjTfvQ/A,UyZixfQCm0ab1raGEGeSzw,,,N,0,0,,,3/6/2012 16:51,3/18/2012 13:30,admin,admin
54,93492,1685,13350,794,1,0,N,N,N,CP_Drtn,TT_Task,DT_FixedDUR2,RV_OK,TK_NotStart,A1660,Excavation,,872,0,56,0,0,0,56,0,0,0,,,,"Friday, December 7, 2012","Thursday, December 13, 2012",,"Monday, August 20, 2012","Sunday, August 26, 2012","Monday, August 20, 2012","Sunday, August 26, 2012","Monday, August 20, 2012","Sunday, August 26, 2012",,12/7/2012 8:00,12/13/2012 17:00,,PT_Normal,,,,,ZFfrajr4IkK8enC8Ztk3jA,a6xMxZfrfEir+MHKE4XECQ,,,N,0,0,,,3/6/2012 16:52,3/16/2012 15:23,admin,admin
55,93493,1685,13350,794,1,0,N,N,N,CP_Drtn,TT_Task,DT_FixedDUR2,RV_OK,TK_NotStart,A1670,P.c&R.c footing,2910,872,0,112,0,600,600,112,0,0,0,,,,"Friday, December 14, 2012","Thursday, December 27, 2012",,"Monday, August 27, 2012","Sunday, September 9, 2012","Monday, August 27, 2012","Sunday, September 9, 2012","Monday, August 27, 2012","Sunday, September 9, 2012",,12/14/2012 8:00,12/27/2012 17:00,,PT_Normal,,,,,Y0wEm7JBlkimJ2ld/XLPHg,wmIX41RBv0C7O5poqijRfA,,,N,0,0,,,3/6/2012 16:52,3/16/2012 15:23,admin,admin
56,93494,1685,13350,794,1,0,N,N,N,CP_Drtn,TT_Task,DT_FixedDUR2,RV_OK,TK_NotStart,A1680,R.c columns,2910,872,0,80,0,450,450,80,0,0,0,,,,"Friday, December 28, 2012","Sunday, January 6, 2013",,"Monday, September 10, 2012","Wednesday, September 19, 2012","Monday, September 10, 2012","Wednesday, September 19, 2012","Monday, September 10, 2012","Wednesday, September 19, 2012",,12/28/2012 8:00,1/6/2013 17:00,,PT_Normal,,,,,2FLQ8DkFyEmSYLQFJ9ub8w,39zRQyxDk0qWCDVETi6OTg,,,N,0,0,,,3/6/2012 16:52,3/16/2012 15:23,admin,admin
57,93495,1685,13350,794,1,0,N,N,N,CP_Drtn,TT_Task,DT_FixedDUR2,RV_OK,TK_NotStart,A1690,Ground floor slab,2910,872,0,112,0,200,200,112,0,0,0,,,,"Monday, January 7, 2013","Sunday, January 20, 2013",,"Thursday, September 20, 2012","Wednesday, October 3, 2012","Thursday, September 20, 2012","Wednesday, October 3, 2012","Thursday, September 20, 2012","Wednesday, October 3, 2012",,1/7/2013 8:00,1/20/2013 17:00,,PT_Normal,,,,,4M5CRFErpEiajhUidirrRA,1o9t6Go5H0SZbUm8NPZCaQ,,,N,0,0,,,3/6/2012 16:52,3/16/2012 15:23,admin,admin
58,93496,1685,13351,794,1,0,N,N,N,CP_Drtn,TT_Task,DT_FixedDUR2,RV_OK,TK_NotStart,A1700,masonry works,2912,872,0,160,0,300,300,160,0,0,0,,,,"Wednesday, March 13, 2013","Monday, April 1, 2013",,"Saturday, November 24, 2012","Thursday, December 13, 2012","Saturday, November 24, 2012","Thursday, December 13, 2012","Saturday, November 24, 2012","Thursday, December 13, 2012",,3/13/2013 8:00,4/1/2013 17:00,,PT_Normal,,,,,AXNMR/HbM0WNwP6LlvMtfw,UyZixfQCm0ab1raGEGeSzw,,,N,0,0,,,3/6/2012 16:52,3/16/2012 15:23,admin,admin
59,93498,1685,13354,794,1,0,N,N,N,CP_Drtn,TT_Task,DT_FixedDUR2,RV_OK,TK_NotStart,A1720,Excavation,,872,0,56,0,0,0,56,0,0,0,,,,"Friday, December 7, 2012","Thursday, December 13, 2012",,"Monday, August 20, 2012","Sunday, August 26, 2012","Monday, August 20, 2012","Sunday, August 26, 2012","Monday, August 20, 2012","Sunday, August 26, 2012",,12/7/2012 8:00,12/13/2012 17:00,,PT_Normal,,,,,DUgYK+m7m0CCvFe2NSWxog,ZFfrajr4IkK8enC8Ztk3jA,,,N,0,0,,,3/6/2012 17:11,3/18/2012 21:27,admin,NotPrmUser
60,93499,1685,13354,794,1,0,N,N,N,CP_Drtn,TT_Task,DT_FixedDUR2,RV_OK,TK_NotStart,A1730,P.c&R.c footing,2910,872,0,112,0,100,100,112,0,0,0,,,,"Friday, December 14, 2012","Thursday, December 27, 2012",,"Monday, August 27, 2012","Sunday, September 9, 2012","Monday, August 27, 2012","Sunday, September 9, 2012","Monday, August 27, 2012","Sunday, September 9, 2012",,12/14/2012 8:00,12/27/2012 17:00,,PT_Normal,,,,,XRGRhlHOJEiS4zKjBbIevA,Y0wEm7JBlkimJ2ld/XLPHg,,,N,0,0,,,3/6/2012 17:11,3/18/2012 21:27,admin,NotPrmUser
61,93500,1685,13354,794,1,0,N,N,N,CP_Drtn,TT_Task,DT_FixedDUR2,RV_OK,TK_NotStart,A1740,R.c columns,2910,872,0,80,0,100,100,80,0,0,0,,,,"Friday, December 28, 2012","Sunday, January 6, 2013",,"Monday, September 10, 2012","Wednesday, September 19, 2012","Monday, September 10, 2012","Wednesday, September 19, 2012","Monday, September 10, 2012","Wednesday, September 19, 2012",,12/28/2012 8:00,1/6/2013 17:00,,PT_Normal,,,,,E43Os4Cd4ESdj0wy1HNgIg,2FLQ8DkFyEmSYLQFJ9ub8w,,,N,0,0,,,3/6/2012 17:11,3/18/2012 21:27,admin,NotPrmUser
62,93501,1685,13354,794,1,0,N,N,N,CP_Drtn,TT_Task,DT_FixedDUR2,RV_OK,TK_NotStart,A1750,Ground floor slab,2910,872,200,160,0,100,100,160,0,0,0,,,,"Monday, January 7, 2013","Saturday, January 26, 2013",,"Thursday, September 20, 2012","Tuesday, October 9, 2012","Thursday, September 20, 2012","Tuesday, October 9, 2012","Thursday, September 20, 2012","Tuesday, October 9, 2012",,1/7/2013 8:00,1/26/2013 17:00,,PT_Normal,,,,,zzSj4f0EuE2zFfkFsdo0sg,4M5CRFErpEiajhUidirrRA,,,N,0,0,,,3/6/2012 17:11,3/18/2012 21:27,admin,NotPrmUser
63,93502,1685,13355,794,1,0,N,N,N,CP_Drtn,TT_Task,DT_FixedDUR2,RV_OK,TK_NotStart,A1760,masonry works,2912,672,0,200,0,92,92,200,0,0,0,,,,"Monday, March 18, 2013","Thursday, April 11, 2013",,"Monday, December 24, 2012","Thursday, January 17, 2013","Monday, December 24, 2012","Thursday, January 17, 2013","Monday, December 24, 2012","Thursday, January 17, 2013",,3/18/2013 8:00,4/11/2013 17:00,,PT_Normal,,,,,OUUdJHHdrEKS+TVFn6gu2g,AXNMR/HbM0WNwP6LlvMtfw,,,N,0,0,,,3/6/2012 17:11,3/18/2012 21:27,admin,NotPrmUser
64,93504,1685,13354,794,1,0,N,N,N,CP_Drtn,TT_Task,DT_FixedDUR2,RV_OK,TK_NotStart,A1780,First floor columns,2910,672,0,80,0,100,100,80,0,0,0,,,,"Sunday, January 27, 2013","Tuesday, February 5, 2013",,"Sunday, November 4, 2012","Tuesday, November 13, 2012","Sunday, November 4, 2012","Tuesday, November 13, 2012","Sunday, November 4, 2012","Tuesday, November 13, 2012",,1/27/2013 8:00,2/5/2013 17:00,,PT_Normal,,,,,XYknYrY5AU2grJ6mVdYU+Q,,,,N,0,0,,,3/6/2012 17:15,3/18/2012 21:27,admin,NotPrmUser
65,93505,1685,13354,794,1,0,N,N,N,CP_Drtn,TT_Task,DT_FixedDUR2,RV_OK,TK_NotStart,A1790,First floor slab,2910,672,0,160,0,100,100,160,0,0,0,,,,"Wednesday, February 6, 2013","Monday, February 25, 2013",,"Wednesday, November 14, 2012","Monday, December 3, 2012","Wednesday, November 14, 2012","Monday, December 3, 2012","Wednesday, November 14, 2012","Monday, December 3, 2012",,2/6/2013 8:00,2/25/2013 17:00,,PT_Normal,,,,,tKatZ1G9mUa7N9htbTMF6Q,,,,N,0,0,,,3/6/2012 17:16,3/18/2012 21:27,admin,NotPrmUser
66,93506,1685,13360,794,1,0,N,N,N,CP_Drtn,TT_Task,DT_FixedDUR2,RV_OK,TK_NotStart,A1800,Excavation,,800,0,56,0,0,0,56,0,0,0,,,,"Monday, February 11, 2013","Sunday, February 17, 2013",,"Saturday, November 3, 2012","Friday, November 9, 2012","Saturday, November 3, 2012","Friday, November 9, 2012","Saturday, November 3, 2012","Friday, November 9, 2012",,2/11/2013 8:00,2/17/2013 17:00,,PT_Normal,,,,,gsxef53UgkiidKWh7TRZfA,DUgYK+m7m0CCvFe2NSWxog,,,N,0,0,,,3/6/2012 17:30,3/18/2012 13:30,admin,admin
67,93507,1685,13360,794,1,0,N,N,N,CP_Drtn,TT_Task,DT_FixedDUR2,RV_OK,TK_NotStart,A1810,P.c&R.c footing,2910,800,0,112,0,100,100,112,0,0,0,,,,"Monday, February 18, 2013","Sunday, March 3, 2013",,"Saturday, November 10, 2012","Friday, November 23, 2012","Saturday, November 10, 2012","Friday, November 23, 2012","Saturday, November 10, 2012","Friday, November 23, 2012",,2/18/2013 8:00,3/3/2013 17:00,,PT_Normal,,,,,BjQFjVnbdUiABUViJRwGuQ,XRGRhlHOJEiS4zKjBbIevA,,,N,0,0,,,3/6/2012 17:30,3/18/2012 13:30,admin,admin
68,93508,1685,13360,794,1,0,N,N,N,CP_Drtn,TT_Task,DT_FixedDUR2,RV_OK,TK_NotStart,A1820,R.c columns,2910,800,0,80,0,100,100,80,0,0,0,,,,"Monday, March 4, 2013","Wednesday, March 13, 2013",,"Saturday, November 24, 2012","Monday, December 3, 2012","Saturday, November 24, 2012","Monday, December 3, 2012","Saturday, November 24, 2012","Monday, December 3, 2012",,3/4/2013 8:00,3/13/2013 17:00,,PT_Normal,,,,,FKNuECRafEGDnLNMlUVyBw,E43Os4Cd4ESdj0wy1HNgIg,,,N,0,0,,,3/6/2012 17:30,3/18/2012 13:30,admin,admin
69,93509,1685,13360,794,1,0,N,N,N,CP_Drtn,TT_Task,DT_FixedDUR2,RV_OK,TK_NotStart,A1830,Ground floor slab,2910,800,0,112,0,20,20,112,0,0,0,,,,"Thursday, March 14, 2013","Wednesday, March 27, 2013",,"Tuesday, December 4, 2012","Monday, December 17, 2012","Tuesday, December 4, 2012","Monday, December 17, 2012","Tuesday, December 4, 2012","Monday, December 17, 2012",,3/14/2013 8:00,3/27/2013 17:00,,PT_Normal,,,,,yzPPT86wkkmwjFInxX5sgQ,zzSj4f0EuE2zFfkFsdo0sg,,,N,0,0,,,3/6/2012 17:30,3/18/2012 13:30,admin,admin
70,93510,1685,13361,794,1,0,N,N,N,CP_Drtn,TT_Task,DT_FixedDUR2,RV_OK,TK_NotStart,A1840,masonry works,2912,800,0,160,0,136,136,160,0,0,0,,,,"Thursday, May 2, 2013","Tuesday, May 21, 2013",,"Tuesday, January 22, 2013","Sunday, February 10, 2013","Tuesday, January 22, 2013","Sunday, February 10, 2013","Tuesday, January 22, 2013","Sunday, February 10, 2013",,5/2/2013 8:00,5/21/2013 17:00,,PT_Normal,,,,,96YQgidWnk6WM+zuC7FQbw,OUUdJHHdrEKS+TVFn6gu2g,,,N,0,0,,,3/6/2012 17:30,3/18/2012 13:30,admin,admin
71,93512,1685,13360,794,1,0,N,N,N,CP_Drtn,TT_Task,DT_FixedDUR2,RV_OK,TK_NotStart,A1860,First floor columns,2910,800,0,56,0,106,106,56,0,0,0,,,,"Thursday, March 28, 2013","Wednesday, April 3, 2013",,"Tuesday, December 18, 2012","Monday, December 24, 2012","Tuesday, December 18, 2012","Monday, December 24, 2012","Tuesday, December 18, 2012","Monday, December 24, 2012",,3/28/2013 8:00,4/3/2013 17:00,,PT_Normal,,,,,buO58k+ML0SFHoLviZFFEQ,XYknYrY5AU2grJ6mVdYU+Q,,,N,0,0,,,3/6/2012 17:30,3/18/2012 13:30,admin,admin
72,93513,1685,13360,794,1,0,N,N,N,CP_Drtn,TT_Task,DT_FixedDUR2,RV_OK,TK_NotStart,A1870,First floor slab,2910,800,0,112,0,20,20,112,0,0,0,,,,"Thursday, April 4, 2013","Wednesday, April 17, 2013",,"Tuesday, December 25, 2012","Monday, January 7, 2013","Tuesday, December 25, 2012","Monday, January 7, 2013","Tuesday, December 25, 2012","Monday, January 7, 2013",,4/4/2013 8:00,4/17/2013 17:00,,PT_Normal,,,,,H9lJn8v6ZEWvw4J0eIxUig,tKatZ1G9mUa7N9htbTMF6Q,,,N,0,0,,,3/6/2012 17:30,3/18/2012 13:30,admin,admin
73,93514,1685,13362,794,1,0,N,N,N,CP_Drtn,TT_Task,DT_FixedDUR2,RV_OK,TK_NotStart,A1880,Excavation,,1576,0,40,0,0,0,40,0,0,0,,,,"Tuesday, March 5, 2013","Saturday, March 9, 2013",,"Monday, August 20, 2012","Friday, August 24, 2012","Monday, August 20, 2012","Friday, August 24, 2012","Monday, August 20, 2012","Friday, August 24, 2012",,3/5/2013 8:00,3/9/2013 17:00,,PT_Normal,,,,,6skV6DTe1UqGF6nrgpbZXQ,ZFfrajr4IkK8enC8Ztk3jA,,,N,0,0,,,3/6/2012 17:32,3/16/2012 15:23,admin,admin
74,93515,1685,13362,794,1,0,N,N,N,CP_Drtn,TT_Task,DT_FixedDUR2,RV_OK,TK_NotStart,A1890,P.c&R.c footing,2910,1576,0,80,0,160,160,80,0,0,0,,,,"Sunday, March 10, 2013","Tuesday, March 19, 2013",,"Saturday, August 25, 2012","Monday, September 3, 2012","Saturday, August 25, 2012","Monday, September 3, 2012","Saturday, August 25, 2012","Monday, September 3, 2012",,3/10/2013 8:00,3/19/2013 17:00,,PT_Normal,,,,,DqIVxbXAOUShXHhnZgbnmA,Y0wEm7JBlkimJ2ld/XLPHg,,,N,0,0,,,3/6/2012 17:32,3/16/2012 15:23,admin,admin
75,93516,1685,13362,794,1,0,N,N,N,CP_Drtn,TT_Task,DT_FixedDUR2,RV_OK,TK_NotStart,A1900,R.c columns,2910,1576,0,56,0,136,136,56,0,0,0,,,,"Wednesday, March 20, 2013","Tuesday, March 26, 2013",,"Tuesday, September 4, 2012","Monday, September 10, 2012","Tuesday, September 4, 2012","Monday, September 10, 2012","Tuesday, September 4, 2012","Monday, September 10, 2012",,3/20/2013 8:00,3/26/2013 17:00,,PT_Normal,,,,,WpcMzdoRxE2k8cf2Yi2DIQ,2FLQ8DkFyEmSYLQFJ9ub8w,,,N,0,0,,,3/6/2012 17:32,3/16/2012 15:23,admin,admin
76,93517,1685,13362,794,1,0,N,N,N,CP_Drtn,TT_Task,DT_FixedDUR2,RV_OK,TK_NotStart,A1910,Ground floor slab,2910,1576,0,112,0,200,200,112,0,0,0,,,,"Wednesday, March 27, 2013","Tuesday, April 9, 2013",,"Tuesday, September 11, 2012","Monday, September 24, 2012","Tuesday, September 11, 2012","Monday, September 24, 2012","Tuesday, September 11, 2012","Monday, September 24, 2012",,3/27/2013 8:00,4/9/2013 17:00,,PT_Normal,,,,,4/BK3dGlDky72CD77mz4+Q,4M5CRFErpEiajhUidirrRA,,,N,0,0,,,3/6/2012 17:32,3/16/2012 15:23,admin,admin
77,93518,1685,13363,794,1,0,N,N,N,CP_Drtn,TT_Task,DT_FixedDUR2,RV_OK,TK_NotStart,A1920,masonry works,2912,1576,0,120,0,80,80,120,0,0,0,,,,"Wednesday, April 24, 2013","Wednesday, May 8, 2013",,"Tuesday, October 9, 2012","Tuesday, October 23, 2012","Tuesday, October 9, 2012","Tuesday, October 23, 2012","Tuesday, October 9, 2012","Tuesday, October 23, 2012",,4/24/2013 8:00,5/8/2013 17:00,,PT_Normal,,,,,u50PL4cSFUWTMPMqg5mt5g,AXNMR/HbM0WNwP6LlvMtfw,,,N,0,0,,,3/6/2012 17:32,3/16/2012 15:23,admin,admin
78,93519,1685,13363,794,1,0,N,N,N,CP_Drtn,TT_Task,DT_FixedDUR2,RV_OK,TK_NotStart,A1930,finishing works,,1760,1760,240,0,0,0,240,0,0,0,,,,"Saturday, June 1, 2013","Sunday, June 30, 2013",,"Wednesday, October 24, 2012","Thursday, November 22, 2012","Wednesday, October 24, 2012","Thursday, November 22, 2012","Wednesday, October 24, 2012","Thursday, November 22, 2012",,6/1/2013 8:00,6/30/2013 17:00,,PT_Normal,,,,,7x1pFx6zdkWUU64OguRKPA,TlHYn302+kask00HKB7buQ,,,N,0,0,,,3/6/2012 17:32,3/18/2012 22:47,admin,NotPrmUser
79,93520,1685,13366,794,1,0,N,N,N,CP_Drtn,TT_Task,DT_FixedDUR2,RV_OK,TK_NotStart,A1940,Excavation,,1272,0,56,0,0,0,56,0,0,0,,,,"Saturday, January 26, 2013","Friday, February 1, 2013",,"Monday, August 20, 2012","Sunday, August 26, 2012","Monday, August 20, 2012","Sunday, August 26, 2012","Monday, August 20, 2012","Sunday, August 26, 2012",,1/26/2013 8:00,2/1/2013 17:00,,PT_Normal,,,,,LhW2PDx4Y0qFYpddnrp7Iw,6skV6DTe1UqGF6nrgpbZXQ,,,N,0,0,,,3/6/2012 17:54,3/16/2012 15:31,admin,admin
80,93521,1685,13366,794,1,0,N,N,N,CP_Drtn,TT_Task,DT_FixedDUR2,RV_OK,TK_NotStart,A1950,P.c&R.c footing,2910,1328,0,112,0,60,60,112,0,0,0,,,,"Saturday, February 9, 2013","Friday, February 22, 2013",,"Monday, August 27, 2012","Sunday, September 9, 2012","Monday, August 27, 2012","Sunday, September 9, 2012","Monday, August 27, 2012","Sunday, September 9, 2012",,2/9/2013 8:00,2/22/2013 17:00,,PT_Normal,,,,,oDCFdA1adEa7vbnKklb27w,DqIVxbXAOUShXHhnZgbnmA,,,N,0,0,,,3/6/2012 17:54,3/16/2012 15:23,admin,admin
81,93522,1685,13366,794,1,0,N,N,N,CP_Drtn,TT_Task,DT_FixedDUR2,RV_OK,TK_NotStart,A1960,R.c columns,2910,1328,0,56,0,60,60,56,0,0,0,,,,"Saturday, February 23, 2013","Friday, March 1, 2013",,"Monday, September 10, 2012","Sunday, September 16, 2012","Monday, September 10, 2012","Sunday, September 16, 2012","Monday, September 10, 2012","Sunday, September 16, 2012",,2/23/2013 8:00,3/1/2013 17:00,,PT_Normal,,,,,qZTlkeHYhEuC4ehST9m42Q,WpcMzdoRxE2k8cf2Yi2DIQ,,,N,0,0,,,3/6/2012 17:54,3/16/2012 15:23,admin,admin
82,93523,1685,13366,794,1,0,N,N,N,CP_Drtn,TT_Task,DT_FixedDUR2,RV_OK,TK_NotStart,A1970,Ground floor slab,2910,1328,0,112,0,160,160,112,0,0,0,,,,"Saturday, March 2, 2013","Friday, March 15, 2013",,"Monday, September 17, 2012","Sunday, September 30, 2012","Monday, September 17, 2012","Sunday, September 30, 2012","Monday, September 17, 2012","Sunday, September 30, 2012",,3/2/2013 8:00,3/15/2013 17:00,,PT_Normal,,,,,a3ecyukfOkyAhnGqDhZRhw,4/BK3dGlDky72CD77mz4+Q,,,N,0,0,,,3/6/2012 17:54,3/16/2012 15:23,admin,admin
83,93524,1685,13367,794,1,0,N,N,N,CP_Drtn,TT_Task,DT_FixedDUR2,RV_OK,TK_NotStart,A1980,masonry works,2912,1328,0,160,0,160,160,160,0,0,0,,,,"Sunday, March 31, 2013","Friday, April 19, 2013",,"Tuesday, October 16, 2012","Sunday, November 4, 2012","Tuesday, October 16, 2012","Sunday, November 4, 2012","Tuesday, October 16, 2012","Sunday, November 4, 2012",,3/31/2013 8:00,4/19/2013 17:00,,PT_Normal,,,,,256sFzWLpkSR37Jpgssxsw,u50PL4cSFUWTMPMqg5mt5g,,,N,0,0,,,3/6/2012 17:54,3/16/2012 15:23,admin,admin
84,93526,1685,12287,794,1,0,N,N,N,CP_Drtn,TT_Task,DT_FixedDUR2,RV_OK,TK_NotStart,A2000,First floor column,,368,0,112,0,300,300,112,0,0,0,,,,"Wednesday, December 12, 2012","Tuesday, December 25, 2012",,"Saturday, October 27, 2012","Friday, November 9, 2012","Saturday, October 27, 2012","Friday, November 9, 2012","Saturday, October 27, 2012","Friday, November 9, 2012",,12/12/2012 8:00,12/25/2012 17:00,,PT_Normal,,,,,8NoUsAF1u0iYlvxrHDT8kg,,,,N,0,0,,,3/6/2012 20:45,3/18/2012 21:42,admin,NotPrmUser
85,93527,1685,12287,794,1,0,N,N,N,CP_Drtn,TT_Task,DT_FixedDUR2,RV_OK,TK_NotStart,A2010,First floor slab,2910,368,0,200,0,640,640,200,0,0,0,,,,"Wednesday, December 26, 2012","Saturday, January 19, 2013",,"Saturday, November 10, 2012","Tuesday, December 4, 2012","Saturday, November 10, 2012","Tuesday, December 4, 2012","Saturday, November 10, 2012","Tuesday, December 4, 2012",,12/26/2012 8:00,1/19/2013 17:00,,PT_Normal,,,,,RwFdEHWvQUqmFuhEO5E2MA,,,,N,0,0,,,3/6/2012 20:45,3/18/2012 21:42,admin,NotPrmUser
86,93528,1685,13350,794,1,0,N,N,N,CP_Drtn,TT_Task,DT_FixedDUR2,RV_OK,TK_NotStart,A2020,First floor columns,2910,872,0,56,0,400,400,56,0,0,0,,,,"Monday, January 21, 2013","Sunday, January 27, 2013",,"Thursday, October 4, 2012","Wednesday, October 10, 2012","Thursday, October 4, 2012","Wednesday, October 10, 2012","Thursday, October 4, 2012","Wednesday, October 10, 2012",,1/21/2013 8:00,1/27/2013 17:00,,PT_Normal,,,,,uwbpC7UexUaXSmCx3siR9w,,,,N,0,0,,,3/7/2012 9:35,3/16/2012 15:23,admin,admin
87,93530,1685,13350,794,1,0,N,N,N,CP_Drtn,TT_Task,DT_FixedDUR2,RV_OK,TK_NotStart,A2040,First floor slab,2910,872,0,112,0,200,200,112,0,0,0,,,,"Monday, January 28, 2013","Sunday, February 10, 2013",,"Thursday, October 11, 2012","Wednesday, October 24, 2012","Thursday, October 11, 2012","Wednesday, October 24, 2012","Thursday, October 11, 2012","Wednesday, October 24, 2012",,1/28/2013 8:00,2/10/2013 17:00,,PT_Normal,,,,,abpdd2+ysU6zx/aZdxpkxw,,,,N,0,0,,,3/7/2012 9:36,3/16/2012 15:23,admin,admin
88,93531,1685,12253,794,1,0,N,N,N,CP_Drtn,TT_Task,DT_FixedDUR2,RV_OK,TK_NotStart,A2050,P.c&R.c footings,2910,1272,0,112,0,60,60,112,0,0,0,,,,"Saturday, February 2, 2013","Friday, February 15, 2013",,"Monday, August 27, 2012","Sunday, September 9, 2012","Monday, August 27, 2012","Sunday, September 9, 2012","Monday, August 27, 2012","Sunday, September 9, 2012",,2/2/2013 8:00,2/15/2013 17:00,,PT_Normal,,,,,VFl/CdKh10OcZ3Ptuy2+Dw,,,,N,0,0,,,3/7/2012 9:47,3/16/2012 15:31,admin,admin
89,93532,1685,12253,794,1,0,N,N,N,CP_Drtn,TT_Task,DT_FixedDUR2,RV_OK,TK_NotStart,A2060,R.c walls,2910,1272,0,720,0,30,30,720,0,0,0,,,,"Saturday, February 16, 2013","Thursday, May 16, 2013",,"Monday, September 10, 2012","Saturday, December 8, 2012","Monday, September 10, 2012","Saturday, December 8, 2012","Monday, September 10, 2012","Saturday, December 8, 2012",,2/16/2013 8:00,5/16/2013 17:00,,PT_Normal,,,,,jcQiNLsTwUuWJePMf4JzKw,,,,N,0,0,,,3/7/2012 9:48,3/16/2012 15:31,admin,admin
90,93533,1685,12291,794,1,0,N,N,N,CP_Drtn,TT_Task,DT_FixedDUR2,RV_OK,TK_NotStart,A2070,Excavation,,552,0,32,0,0,0,32,0,0,0,,,,"Sunday, March 17, 2013","Wednesday, March 20, 2013",,"Monday, January 7, 2013","Thursday, January 10, 2013","Monday, January 7, 2013","Thursday, January 10, 2013","Monday, January 7, 2013","Thursday, January 10, 2013",,3/17/2013 8:00,3/20/2013 17:00,,PT_Normal,,,,,LBKLG8Tb/U2V4fJi9N85YA,ShHYBtooT0mRaNylgQbgaQ,,,N,0,0,,,3/7/2012 9:50,3/18/2012 13:24,admin,admin
91,93534,1685,12291,794,1,0,N,N,N,CP_Drtn,TT_Task,DT_FixedDUR2,RV_OK,TK_NotStart,A2080,P.c&R.c footing,2910,552,0,56,0,40,40,56,0,0,0,,,,"Thursday, March 21, 2013","Wednesday, March 27, 2013",,"Friday, January 11, 2013","Thursday, January 17, 2013","Friday, January 11, 2013","Thursday, January 17, 2013","Friday, January 11, 2013","Thursday, January 17, 2013",,3/21/2013 8:00,3/27/2013 17:00,,PT_Normal,,,,,8/zJKf1iQUOXQr50Srshtw,hcPdr/rIJECQcAACadroFA,,,N,0,0,,,3/7/2012 9:50,3/18/2012 13:24,admin,admin
92,93535,1685,12291,794,1,0,N,N,N,CP_Drtn,TT_Task,DT_FixedDUR2,RV_OK,TK_NotStart,A2090,Ground floor slab,2910,552,0,112,0,60,60,112,0,0,0,,,,"Thursday, March 28, 2013","Wednesday, April 10, 2013",,"Friday, January 18, 2013","Thursday, January 31, 2013","Friday, January 18, 2013","Thursday, January 31, 2013","Friday, January 18, 2013","Thursday, January 31, 2013",,3/28/2013 8:00,4/10/2013 17:00,,PT_Normal,,,,,tqbpGyHxmEGYQfDDRHA2jA,,,,N,0,0,,,3/7/2012 9:52,3/18/2012 13:24,admin,admin
93,93537,1685,12292,794,1,0,N,N,N,CP_Drtn,TT_Task,DT_FixedDUR2,RV_OK,TK_NotStart,A2110,Masonry works,2912,552,0,160,0,61,61,160,0,0,0,,,,"Sunday, April 21, 2013","Friday, May 10, 2013",,"Monday, February 11, 2013","Saturday, March 2, 2013","Monday, February 11, 2013","Saturday, March 2, 2013","Monday, February 11, 2013","Saturday, March 2, 2013",,4/21/2013 8:00,5/10/2013 17:00,,PT_Normal,,,,,J/TQvq28Y0WIHe74zl2zPw,,,,N,0,0,,,3/7/2012 9:52,3/18/2012 13:24,admin,admin
94,93538,1685,12256,794,1,0,N,N,N,CP_Drtn,TT_Task,DT_FixedDUR2,RV_OK,TK_NotStart,A2120,Plaster works,2914,656,0,120,0,75,75,120,0,0,0,,,,"Monday, April 29, 2013","Monday, May 13, 2013",,"Wednesday, February 6, 2013","Wednesday, February 20, 2013","Wednesday, February 6, 2013","Wednesday, February 20, 2013","Wednesday, February 6, 2013","Wednesday, February 20, 2013",,4/29/2013 8:00,5/13/2013 17:00,,PT_Normal,,,,,QGQaIj/CzUG4Mw2dxBug5g,,,,N,0,0,,,3/7/2012 19:13,3/18/2012 13:23,admin,admin
95,93539,1685,12256,794,1,0,N,N,N,CP_Drtn,TT_Task,DT_FixedDUR2,RV_OK,TK_NotStart,A2130,Flooring works,2914,656,0,120,0,75,75,120,0,0,0,,,,"Tuesday, May 14, 2013","Tuesday, May 28, 2013",,"Thursday, February 21, 2013","Thursday, March 7, 2013","Thursday, February 21, 2013","Thursday, March 7, 2013","Thursday, February 21, 2013","Thursday, March 7, 2013",,5/14/2013 8:00,5/28/2013 17:00,,PT_Normal,,,,,OUTASiO3qEKz7WivQ72UYg,,,,N,0,0,,,3/7/2012 19:13,3/18/2012 13:23,admin,admin
96,93540,1685,12256,794,1,0,N,N,N,CP_Drtn,TT_Task,DT_FixedDUR2,RV_OK,TK_NotStart,A2140,Painting works,2914,656,0,80,0,50,50,80,0,0,0,,,,"Tuesday, June 18, 2013","Thursday, June 27, 2013",,"Thursday, March 28, 2013","Saturday, April 6, 2013","Thursday, March 28, 2013","Saturday, April 6, 2013","Thursday, March 28, 2013","Saturday, April 6, 2013",,6/18/2013 8:00,6/27/2013 17:00,,PT_Normal,,,,,TIk6tiyQyUeFfgfBZh0gDw,,,,N,0,0,,,3/7/2012 19:13,3/18/2012 13:23,admin,admin
97,93541,1685,12256,794,1,0,N,N,N,CP_Drtn,TT_Task,DT_FixedDUR2,RV_OK,TK_NotStart,A2150,Doors&windows erection,2914,656,0,40,0,25,25,40,0,0,0,,,,"Wednesday, May 29, 2013","Sunday, June 2, 2013",,"Friday, March 8, 2013","Tuesday, March 12, 2013","Friday, March 8, 2013","Tuesday, March 12, 2013","Friday, March 8, 2013","Tuesday, March 12, 2013",,5/29/2013 8:00,6/2/2013 17:00,,PT_Normal,,,,,sUPjwdEPyUSrXQ5xVuP5yg,,,,N,0,0,,,3/7/2012 19:13,3/18/2012 13:23,admin,admin
98,93542,1685,12256,794,1,0,N,N,N,CP_Drtn,TT_Task,DT_FixedDUR2,RV_OK,TK_NotStart,A2160,False ceiling,2914,656,0,120,0,75,75,120,0,0,0,,,,"Monday, June 3, 2013","Monday, June 17, 2013",,"Wednesday, March 13, 2013","Wednesday, March 27, 2013","Wednesday, March 13, 2013","Wednesday, March 27, 2013","Wednesday, March 13, 2013","Wednesday, March 27, 2013",,6/3/2013 8:00,6/17/2013 17:00,,PT_Normal,,,,,hfrdQLR/V0Gpao1vhee1xw,,,,N,0,0,,,3/7/2012 19:13,3/18/2012 13:23,admin,admin
99,93543,1685,12296,794,1,0,N,N,N,CP_Drtn,TT_Task,DT_FixedDUR2,RV_OK,TK_NotStart,A2170,Plaster works,2914,368,0,8,0,5,5,8,0,0,0,,,,"Saturday, May 25, 2013","Saturday, May 25, 2013",,"Tuesday, April 9, 2013","Tuesday, April 9, 2013","Tuesday, April 9, 2013","Tuesday, April 9, 2013","Tuesday, April 9, 2013","Tuesday, April 9, 2013",,5/25/2013 8:00,5/25/2013 17:00,,PT_Normal,,,,,G1DarJQGSECwU8pEaZrkcA,QGQaIj/CzUG4Mw2dxBug5g,,,N,0,0,,,3/7/2012 19:16,3/18/2012 17:45,admin,admin
100,93544,1685,12296,794,1,0,N,N,N,CP_Drtn,TT_Task,DT_FixedDUR2,RV_OK,TK_NotStart,A2180,Flooring works,2914,368,0,8,0,5,5,8,0,0,0,,,,"Sunday, May 26, 2013","Sunday, May 26, 2013",,"Wednesday, April 10, 2013","Wednesday, April 10, 2013","Wednesday, April 10, 2013","Wednesday, April 10, 2013","Wednesday, April 10, 2013","Wednesday, April 10, 2013",,5/26/2013 8:00,5/26/2013 17:00,,PT_Normal,,,,,bKEpI0D8bUWBj+cvT1f6sg,OUTASiO3qEKz7WivQ72UYg,,,N,0,0,,,3/7/2012 19:16,3/18/2012 17:45,admin,admin
101,93545,1685,12296,794,1,0,N,N,N,CP_Drtn,TT_Task,DT_FixedDUR2,RV_OK,TK_NotStart,A2210,Painting works,2914,368,0,8,0,5,5,8,0,0,0,,,,"Saturday, June 1, 2013","Saturday, June 1, 2013",,"Tuesday, April 16, 2013","Tuesday, April 16, 2013","Tuesday, April 16, 2013","Tuesday, April 16, 2013","Tuesday, April 16, 2013","Tuesday, April 16, 2013",,6/1/2013 8:00,6/1/2013 17:00,,PT_Normal,,,,,spxfiujTekiPiULF+EwDqQ,TIk6tiyQyUeFfgfBZh0gDw,,,N,0,0,,,3/7/2012 19:16,3/18/2012 17:45,admin,admin
102,93546,1685,12296,794,1,0,N,N,N,CP_Drtn,TT_Task,DT_FixedDUR2,RV_OK,TK_NotStart,A2190,Doors&windows erection,2914,392,24,8,0,5,5,8,0,0,0,,,,"Thursday, May 30, 2013","Thursday, May 30, 2013",,"Thursday, April 11, 2013","Thursday, April 11, 2013","Thursday, April 11, 2013","Thursday, April 11, 2013","Thursday, April 11, 2013","Thursday, April 11, 2013",,5/30/2013 8:00,5/30/2013 17:00,,PT_Normal,,,,,c2pXuRw580OcfH5eH5QiZQ,sUPjwdEPyUSrXQ5xVuP5yg,,,N,0,0,,,3/7/2012 19:16,3/18/2012 17:45,admin,admin
103,93547,1685,12296,794,1,0,N,N,N,CP_Drtn,TT_Task,DT_FixedDUR2,RV_OK,TK_NotStart,A2200,False ceiling,2914,368,0,8,0,5,5,8,0,0,0,,,,"Friday, May 31, 2013","Friday, May 31, 2013",,"Monday, April 15, 2013","Monday, April 15, 2013","Monday, April 15, 2013","Monday, April 15, 2013","Monday, April 15, 2013","Monday, April 15, 2013",,5/31/2013 8:00,5/31/2013 17:00,,PT_Normal,,,,,#NAME?,hfrdQLR/V0Gpao1vhee1xw,,,N,0,0,,,3/7/2012 19:16,3/18/2012 17:45,admin,admin
104,93548,1685,12260,794,1,0,N,N,N,CP_Drtn,TT_Task,DT_FixedDUR2,RV_OK,TK_NotStart,A2220,Plaster works,2914,592,0,160,0,100,100,160,0,0,0,,,,"Wednesday, March 13, 2013","Monday, April 1, 2013",,"Saturday, December 29, 2012","Thursday, January 17, 2013","Saturday, December 29, 2012","Thursday, January 17, 2013","Saturday, December 29, 2012","Thursday, January 17, 2013",,3/13/2013 8:00,4/1/2013 17:00,,PT_Normal,,,,,EAZuy55XHEO3Yv1KVO1aQg,QGQaIj/CzUG4Mw2dxBug5g,,,N,0,0,,,3/7/2012 19:16,3/18/2012 21:43,admin,NotPrmUser
105,93549,1685,12260,794,1,0,N,N,N,CP_Drtn,TT_Task,DT_FixedDUR2,RV_OK,TK_NotStart,A2230,Flooring works,2914,592,0,120,0,75,75,120,0,0,0,,,,"Tuesday, April 2, 2013","Tuesday, April 16, 2013",,"Friday, January 18, 2013","Friday, February 1, 2013","Friday, January 18, 2013","Friday, February 1, 2013","Friday, January 18, 2013","Friday, February 1, 2013",,4/2/2013 8:00,4/16/2013 17:00,,PT_Normal,,,,,rHIzPn0zm06rs9cedBlSiw,OUTASiO3qEKz7WivQ72UYg,,,N,0,0,,,3/7/2012 19:16,3/18/2012 21:43,admin,NotPrmUser
106,93550,1685,12260,794,1,0,N,N,N,CP_Drtn,TT_Task,DT_FixedDUR2,RV_OK,TK_NotStart,A2260,Painting works,2914,592,0,80,0,50,50,80,0,0,0,,,,"Saturday, June 1, 2013","Monday, June 10, 2013",,"Tuesday, March 19, 2013","Thursday, March 28, 2013","Tuesday, March 19, 2013","Thursday, March 28, 2013","Tuesday, March 19, 2013","Thursday, March 28, 2013",,6/1/2013 8:00,6/10/2013 17:00,,PT_Normal,,,,,l0bs5fhDtEC8Lv4ym+uZfQ,TIk6tiyQyUeFfgfBZh0gDw,,,N,0,0,,,3/7/2012 19:16,3/18/2012 21:43,admin,NotPrmUser
107,93551,1685,12260,794,1,0,N,N,N,CP_Drtn,TT_Task,DT_FixedDUR2,RV_OK,TK_NotStart,A2240,Doors&windows erection,2914,776,184,56,0,35,35,56,0,0,0,,,,"Friday, May 10, 2013","Thursday, May 16, 2013",,"Saturday, February 2, 2013","Friday, February 8, 2013","Saturday, February 2, 2013","Friday, February 8, 2013","Saturday, February 2, 2013","Friday, February 8, 2013",,5/10/2013 8:00,5/16/2013 17:00,,PT_Normal,,,,,bgb/pmaLRkGtg0WO+1phRA,sUPjwdEPyUSrXQ5xVuP5yg,,,N,0,0,,,3/7/2012 19:16,3/18/2012 21:43,admin,NotPrmUser
108,93552,1685,12260,794,1,0,N,N,N,CP_Drtn,TT_Task,DT_FixedDUR2,RV_OK,TK_NotStart,A2250,False ceiling,2914,592,0,120,0,75,75,120,0,0,0,,,,"Friday, May 17, 2013","Friday, May 31, 2013",,"Monday, March 4, 2013","Monday, March 18, 2013","Monday, March 4, 2013","Monday, March 18, 2013","Monday, March 4, 2013","Monday, March 18, 2013",,5/17/2013 8:00,5/31/2013 17:00,,PT_Normal,,,,,b/YH79RqyUCSljEZ4p5O+Q,hfrdQLR/V0Gpao1vhee1xw,,,N,0,0,,,3/7/2012 19:16,3/18/2012 21:43,admin,NotPrmUser
109,93553,1685,12292,794,1,0,N,N,N,CP_Drtn,TT_Task,DT_FixedDUR2,RV_OK,TK_NotStart,A2270,Plaster works,2914,552,0,120,0,75,75,120,0,0,0,,,,"Saturday, May 11, 2013","Saturday, May 25, 2013",,"Sunday, March 3, 2013","Sunday, March 17, 2013","Sunday, March 3, 2013","Sunday, March 17, 2013","Sunday, March 3, 2013","Sunday, March 17, 2013",,5/11/2013 8:00,5/25/2013 17:00,,PT_Normal,,,,,ZvGQm+DXKkuZmDlFTrA+Vw,QGQaIj/CzUG4Mw2dxBug5g,,,N,0,0,,,3/7/2012 19:17,3/18/2012 13:24,admin,admin
110,93554,1685,12292,794,1,0,N,N,N,CP_Drtn,TT_Task,DT_FixedDUR2,RV_OK,TK_NotStart,A2280,Flooring works,2914,552,0,120,0,75,75,120,0,0,0,,,,"Sunday, May 26, 2013","Sunday, June 9, 2013",,"Monday, March 18, 2013","Monday, April 1, 2013","Monday, March 18, 2013","Monday, April 1, 2013","Monday, March 18, 2013","Monday, April 1, 2013",,5/26/2013 8:00,6/9/2013 17:00,,PT_Normal,,,,,2vkfUu1ER0uzNJ1frqIi0Q,OUTASiO3qEKz7WivQ72UYg,,,N,0,0,,,3/7/2012 19:17,3/18/2012 13:24,admin,admin
111,93555,1685,12292,794,1,0,N,N,N,CP_Drtn,TT_Task,DT_FixedDUR2,RV_OK,TK_NotStart,A2310,Painting works,2914,552,0,80,0,50,50,80,0,0,0,,,,"Tuesday, June 18, 2013","Thursday, June 27, 2013",,"Wednesday, April 10, 2013","Friday, April 19, 2013","Wednesday, April 10, 2013","Friday, April 19, 2013","Wednesday, April 10, 2013","Friday, April 19, 2013",,6/18/2013 8:00,6/27/2013 17:00,,PT_Normal,,,,,3EArTDj0mU+Rozyalkb6ZQ,TIk6tiyQyUeFfgfBZh0gDw,,,N,0,0,,,3/7/2012 19:17,3/18/2012 13:24,admin,admin
112,93556,1685,12292,794,1,0,N,N,N,CP_Drtn,TT_Task,DT_FixedDUR2,RV_OK,TK_NotStart,A2290,Doors&windows erection,2914,552,0,24,0,15,15,24,0,0,0,,,,"Monday, June 10, 2013","Wednesday, June 12, 2013",,"Tuesday, April 2, 2013","Thursday, April 4, 2013","Tuesday, April 2, 2013","Thursday, April 4, 2013","Tuesday, April 2, 2013","Thursday, April 4, 2013",,6/10/2013 8:00,6/12/2013 17:00,,PT_Normal,,,,,HOEvaPsuPE6yb8CUdgji7w,sUPjwdEPyUSrXQ5xVuP5yg,,,N,0,0,,,3/7/2012 19:17,3/18/2012 13:24,admin,admin
113,93557,1685,12292,794,1,0,N,N,N,CP_Drtn,TT_Task,DT_FixedDUR2,RV_OK,TK_NotStart,A2300,False ceiling,2914,552,0,40,0,25,25,40,0,0,0,,,,"Thursday, June 13, 2013","Monday, June 17, 2013",,"Friday, April 5, 2013","Tuesday, April 9, 2013","Friday, April 5, 2013","Tuesday, April 9, 2013","Friday, April 5, 2013","Tuesday, April 9, 2013",,6/13/2013 8:00,6/17/2013 17:00,,PT_Normal,,,,,MHbOIiebREaxNtwUdpzcuQ,hfrdQLR/V0Gpao1vhee1xw,,,N,0,0,,,3/7/2012 19:17,3/18/2012 13:24,admin,admin
114,93558,1685,12288,794,1,0,N,N,N,CP_Drtn,TT_Task,DT_FixedDUR2,RV_OK,TK_NotStart,A2320,Plaster works,2914,368,0,240,0,150,150,240,0,0,0,,,,"Tuesday, March 26, 2013","Wednesday, April 24, 2013",,"Friday, February 8, 2013","Saturday, March 9, 2013","Friday, February 8, 2013","Saturday, March 9, 2013","Friday, February 8, 2013","Saturday, March 9, 2013",,3/26/2013 8:00,4/24/2013 17:00,,PT_Normal,,,,,I0J27DwV0U2Z5mCtT/wucg,QGQaIj/CzUG4Mw2dxBug5g,,,N,0,0,,,3/7/2012 19:17,3/18/2012 21:42,admin,NotPrmUser
115,93559,1685,12288,794,1,0,N,N,N,CP_Drtn,TT_Task,DT_FixedDUR2,RV_OK,TK_NotStart,A2330,Flooring works,2914,368,0,160,0,100,100,160,0,0,0,,,,"Thursday, April 25, 2013","Tuesday, May 14, 2013",,"Sunday, March 10, 2013","Friday, March 29, 2013","Sunday, March 10, 2013","Friday, March 29, 2013","Sunday, March 10, 2013","Friday, March 29, 2013",,4/25/2013 8:00,5/14/2013 17:00,,PT_Normal,,,,,1YV1x+pMYUevKS40e0uLqA,OUTASiO3qEKz7WivQ72UYg,,,N,0,0,,,3/7/2012 19:17,3/18/2012 21:42,admin,NotPrmUser
116,93560,1685,12288,794,1,0,N,N,N,CP_Drtn,TT_Task,DT_FixedDUR2,RV_OK,TK_NotStart,A2360,Painting works,2914,368,0,120,0,75,75,120,0,0,0,,,,"Thursday, June 6, 2013","Thursday, June 20, 2013",,"Sunday, April 21, 2013","Sunday, May 5, 2013","Sunday, April 21, 2013","Sunday, May 5, 2013","Sunday, April 21, 2013","Sunday, May 5, 2013",,6/6/2013 8:00,6/20/2013 17:00,,PT_Normal,,,,,PaC4ch23O06WGGQMoHLRXA,TIk6tiyQyUeFfgfBZh0gDw,,,N,0,0,,,3/7/2012 19:17,3/18/2012 21:42,admin,NotPrmUser
117,93561,1685,12288,794,1,0,N,N,N,CP_Drtn,TT_Task,DT_FixedDUR2,RV_OK,TK_NotStart,A2340,Doors&windows erection,2914,368,0,80,0,50,50,80,0,0,0,,,,"Wednesday, May 15, 2013","Friday, May 24, 2013",,"Saturday, March 30, 2013","Monday, April 8, 2013","Saturday, March 30, 2013","Monday, April 8, 2013","Saturday, March 30, 2013","Monday, April 8, 2013",,5/15/2013 8:00,5/24/2013 17:00,,PT_Normal,,,,,Sxvbab53L0yDehiUfz+8dw,sUPjwdEPyUSrXQ5xVuP5yg,,,N,0,0,,,3/7/2012 19:17,3/18/2012 21:42,admin,NotPrmUser
118,93562,1685,12288,794,1,0,N,N,N,CP_Drtn,TT_Task,DT_FixedDUR2,RV_OK,TK_NotStart,A2350,False ceiling,2914,368,0,96,0,60,60,96,0,0,0,,,,"Saturday, May 25, 2013","Wednesday, June 5, 2013",,"Tuesday, April 9, 2013","Saturday, April 20, 2013","Tuesday, April 9, 2013","Saturday, April 20, 2013","Tuesday, April 9, 2013","Saturday, April 20, 2013",,5/25/2013 8:00,6/5/2013 17:00,,PT_Normal,,,,,bzdnHXDxS0GkMJNOZIrzfg,hfrdQLR/V0Gpao1vhee1xw,,,N,0,0,,,3/7/2012 19:17,3/18/2012 21:42,admin,NotPrmUser
119,93563,1685,12284,794,1,0,N,N,N,CP_Drtn,TT_Task,DT_FixedDUR2,RV_OK,TK_NotStart,A2370,Plaster works,2914,464,0,200,0,125,125,200,0,0,0,,,,"Monday, March 18, 2013","Thursday, April 11, 2013",,"Saturday, January 19, 2013","Tuesday, February 12, 2013","Saturday, January 19, 2013","Tuesday, February 12, 2013","Saturday, January 19, 2013","Tuesday, February 12, 2013",,3/18/2013 8:00,4/11/2013 17:00,,PT_Normal,,,,,N3/NV8JnXE2ehIZHB8Sgag,QGQaIj/CzUG4Mw2dxBug5g,,,N,0,0,,,3/7/2012 19:17,3/18/2012 13:24,admin,admin
120,93564,1685,12284,794,1,0,N,N,N,CP_Drtn,TT_Task,DT_FixedDUR2,RV_OK,TK_NotStart,A2380,Flooring works,2914,464,0,200,0,125,125,200,0,0,0,,,,"Friday, April 12, 2013","Monday, May 6, 2013",,"Wednesday, February 13, 2013","Saturday, March 9, 2013","Wednesday, February 13, 2013","Saturday, March 9, 2013","Wednesday, February 13, 2013","Saturday, March 9, 2013",,4/12/2013 8:00,5/6/2013 17:00,,PT_Normal,,,,,nlGw4FFMjE6JpwP6pDhC2Q,OUTASiO3qEKz7WivQ72UYg,,,N,0,0,,,3/7/2012 19:17,3/18/2012 13:24,admin,admin
121,93565,1685,12284,794,1,0,N,N,N,CP_Drtn,TT_Task,DT_FixedDUR2,RV_OK,TK_NotStart,A2410,Painting works,2914,464,0,120,0,75,75,120,0,0,0,,,,"Saturday, June 1, 2013","Saturday, June 15, 2013",,"Thursday, April 4, 2013","Thursday, April 18, 2013","Thursday, April 4, 2013","Thursday, April 18, 2013","Thursday, April 4, 2013","Thursday, April 18, 2013",,6/1/2013 8:00,6/15/2013 17:00,,PT_Normal,,,,,fc4DtkLtfkG3K9B7wzeaxw,TIk6tiyQyUeFfgfBZh0gDw,,,N,0,0,,,3/7/2012 19:17,3/18/2012 13:24,admin,admin
122,93566,1685,12284,794,1,0,N,N,N,CP_Drtn,TT_Task,DT_FixedDUR2,RV_OK,TK_NotStart,A2390,Doors&windows erection,2914,464,0,80,0,50,50,80,0,0,0,,,,"Tuesday, May 7, 2013","Thursday, May 16, 2013",,"Sunday, March 10, 2013","Tuesday, March 19, 2013","Sunday, March 10, 2013","Tuesday, March 19, 2013","Sunday, March 10, 2013","Tuesday, March 19, 2013",,5/7/2013 8:00,5/16/2013 17:00,,PT_Normal,,,,,dq73hbTiMU2pJLlsDbXMfQ,sUPjwdEPyUSrXQ5xVuP5yg,,,N,0,0,,,3/7/2012 19:17,3/18/2012 13:24,admin,admin
123,93567,1685,12284,794,1,0,N,N,N,CP_Drtn,TT_Task,DT_FixedDUR2,RV_OK,TK_NotStart,A2400,False ceiling,2914,464,0,120,0,75,75,120,0,0,0,,,,"Friday, May 17, 2013","Friday, May 31, 2013",,"Wednesday, March 20, 2013","Wednesday, April 3, 2013","Wednesday, March 20, 2013","Wednesday, April 3, 2013","Wednesday, March 20, 2013","Wednesday, April 3, 2013",,5/17/2013 8:00,5/31/2013 17:00,,PT_Normal,,,,,OjCrOhm1vEesKuMTq9Oxfg,hfrdQLR/V0Gpao1vhee1xw,,,N,0,0,,,3/7/2012 19:17,3/18/2012 13:24,admin,admin
124,93568,1685,12280,794,1,0,N,N,N,CP_Drtn,TT_Task,DT_FixedDUR2,RV_OK,TK_NotStart,A2420,Plaster works,2914,704,0,120,0,75,75,120,0,0,0,,,,"Thursday, May 16, 2013","Thursday, May 30, 2013",,"Sunday, February 17, 2013","Sunday, March 3, 2013","Sunday, February 17, 2013","Sunday, March 3, 2013","Sunday, February 17, 2013","Sunday, March 3, 2013",,5/16/2013 8:00,5/30/2013 17:00,,PT_Normal,,,,,qhGYysX3bkO1W3Za1xBz0w,QGQaIj/CzUG4Mw2dxBug5g,,,N,0,0,,,3/7/2012 19:17,3/18/2012 13:25,admin,admin
125,93569,1685,12280,794,1,0,N,N,N,CP_Drtn,TT_Task,DT_FixedDUR2,RV_OK,TK_NotStart,A2430,Flooring works,2914,704,0,80,0,50,50,80,0,0,0,,,,"Friday, May 31, 2013","Sunday, June 9, 2013",,"Monday, March 4, 2013","Wednesday, March 13, 2013","Monday, March 4, 2013","Wednesday, March 13, 2013","Monday, March 4, 2013","Wednesday, March 13, 2013",,5/31/2013 8:00,6/9/2013 17:00,,PT_Normal,,,,,mZY6kYaYK0WO/tqVH21UCQ,OUTASiO3qEKz7WivQ72UYg,,,N,0,0,,,3/7/2012 19:17,3/18/2012 13:25,admin,admin
126,93570,1685,12280,794,1,0,N,N,N,CP_Drtn,TT_Task,DT_FixedDUR2,RV_OK,TK_NotStart,A2460,Painting works,2914,704,0,80,0,50,50,80,0,0,0,,,,"Thursday, June 13, 2013","Saturday, June 22, 2013",,"Sunday, March 17, 2013","Tuesday, March 26, 2013","Sunday, March 17, 2013","Tuesday, March 26, 2013","Sunday, March 17, 2013","Tuesday, March 26, 2013",,6/13/2013 8:00,6/22/2013 17:00,,PT_Normal,,,,,avaLY7fOwU+CD48r+EGOwA,TIk6tiyQyUeFfgfBZh0gDw,,,N,0,0,,,3/7/2012 19:17,3/18/2012 13:25,admin,admin
127,93571,1685,12280,794,1,0,N,N,N,CP_Drtn,TT_Task,DT_FixedDUR2,RV_OK,TK_NotStart,A2440,Doors&windows erection,2914,704,0,24,0,15,15,24,0,0,0,,,,"Monday, June 10, 2013","Wednesday, June 12, 2013",,"Thursday, March 14, 2013","Saturday, March 16, 2013","Thursday, March 14, 2013","Saturday, March 16, 2013","Thursday, March 14, 2013","Saturday, March 16, 2013",,6/10/2013 8:00,6/12/2013 17:00,,PT_Normal,,,,,Ss1PqN79q0yNd+GLBfj2GQ,sUPjwdEPyUSrXQ5xVuP5yg,,,N,0,0,,,3/7/2012 19:17,3/18/2012 13:25,admin,admin
128,93573,1685,12276,794,1,0,N,N,N,CP_Drtn,TT_Task,DT_FixedDUR2,RV_OK,TK_NotStart,A2470,Plaster works,2914,424,0,120,0,75,75,120,0,0,0,,,,"Friday, January 25, 2013","Friday, February 8, 2013",,"Monday, December 3, 2012","Monday, December 17, 2012","Monday, December 3, 2012","Monday, December 17, 2012","Monday, December 3, 2012","Monday, December 17, 2012",,1/25/2013 8:00,2/8/2013 17:00,,PT_Normal,,,,,5+U08RV/4kW9AFP80IKW1g,QGQaIj/CzUG4Mw2dxBug5g,,,N,0,0,,,3/7/2012 19:17,3/16/2012 15:23,admin,admin
129,93574,1685,12276,794,1,0,N,N,N,CP_Drtn,TT_Task,DT_FixedDUR2,RV_OK,TK_NotStart,A2480,Flooring works,2914,424,0,120,0,75,75,120,0,0,0,,,,"Saturday, February 9, 2013","Saturday, February 23, 2013",,"Tuesday, December 18, 2012","Tuesday, January 1, 2013","Tuesday, December 18, 2012","Tuesday, January 1, 2013","Tuesday, December 18, 2012","Tuesday, January 1, 2013",,2/9/2013 8:00,2/23/2013 17:00,,PT_Normal,,,,,IamVqfUg5kK60MME00UZbQ,OUTASiO3qEKz7WivQ72UYg,,,N,0,0,,,3/7/2012 19:17,3/16/2012 15:23,admin,admin
130,93575,1685,12276,794,1,0,N,N,N,CP_Drtn,TT_Task,DT_FixedDUR2,RV_OK,TK_NotStart,A2510,Painting works,2914,424,0,56,0,35,35,56,0,0,0,,,,"Friday, April 12, 2013","Thursday, April 18, 2013",,"Monday, February 18, 2013","Sunday, February 24, 2013","Monday, February 18, 2013","Sunday, February 24, 2013","Monday, February 18, 2013","Sunday, February 24, 2013",,4/12/2013 8:00,4/18/2013 17:00,,PT_Normal,,,,,2rYccPXu1EGiZ2ziBCOSaQ,TIk6tiyQyUeFfgfBZh0gDw,,,N,0,0,,,3/7/2012 19:17,3/16/2012 15:23,admin,admin
131,93576,1685,12276,794,1,0,N,N,N,CP_Drtn,TT_Task,DT_FixedDUR2,RV_OK,TK_NotStart,A2490,Doors&windows erection,2914,720,296,24,0,15,15,24,0,0,0,,,,"Tuesday, April 2, 2013","Thursday, April 4, 2013",,"Wednesday, January 2, 2013","Friday, January 4, 2013","Wednesday, January 2, 2013","Friday, January 4, 2013","Wednesday, January 2, 2013","Friday, January 4, 2013",,4/2/2013 8:00,4/4/2013 17:00,,PT_Normal,,,,,Ect3HLDpOUaVujYdST/XeA,sUPjwdEPyUSrXQ5xVuP5yg,,,N,0,0,,,3/7/2012 19:17,3/16/2012 15:23,admin,admin
132,93577,1685,12276,794,1,0,N,N,N,CP_Drtn,TT_Task,DT_FixedDUR2,RV_OK,TK_NotStart,A2500,False ceiling,2914,424,0,56,0,35,35,56,0,0,0,,,,"Friday, April 5, 2013","Thursday, April 11, 2013",,"Monday, February 11, 2013","Sunday, February 17, 2013","Monday, February 11, 2013","Sunday, February 17, 2013","Monday, February 11, 2013","Sunday, February 17, 2013",,4/5/2013 8:00,4/11/2013 17:00,,PT_Normal,,,,,P4ZuJTw5U0KeWN0DkxEZVg,hfrdQLR/V0Gpao1vhee1xw,,,N,0,0,,,3/7/2012 19:17,3/16/2012 15:23,admin,admin
133,93578,1685,12272,794,1,0,N,N,N,CP_Drtn,TT_Task,DT_FixedDUR2,RV_OK,TK_NotStart,A2520,Plaster works,2914,808,0,160,0,100,100,160,0,0,0,,,,"Tuesday, March 19, 2013","Sunday, April 7, 2013",,"Saturday, December 8, 2012","Thursday, December 27, 2012","Saturday, December 8, 2012","Thursday, December 27, 2012","Saturday, December 8, 2012","Thursday, December 27, 2012",,3/19/2013 8:00,4/7/2013 17:00,,PT_Normal,,,,,wdMPapNyY0yd6OQN7rV2kA,QGQaIj/CzUG4Mw2dxBug5g,,,N,0,0,,,3/7/2012 19:17,3/18/2012 21:18,admin,NotPrmUser
134,93579,1685,12272,794,1,0,N,N,N,CP_Drtn,TT_Task,DT_FixedDUR2,RV_OK,TK_NotStart,A2530,Flooring works,2914,912,0,160,0,100,100,160,0,0,0,,,,"Sunday, April 21, 2013","Friday, May 10, 2013",,"Friday, December 28, 2012","Wednesday, January 16, 2013","Friday, December 28, 2012","Wednesday, January 16, 2013","Friday, December 28, 2012","Wednesday, January 16, 2013",,4/21/2013 8:00,5/10/2013 17:00,,PT_Normal,,,,,oeJ6RlDgRkq30AZiYOagxw,OUTASiO3qEKz7WivQ72UYg,,,N,0,0,,,3/7/2012 19:17,3/18/2012 21:18,admin,NotPrmUser
135,93580,1685,12272,794,1,0,N,N,N,CP_Drtn,TT_Task,DT_FixedDUR2,RV_OK,TK_NotStart,A2560,Painting works,2914,808,0,120,0,75,75,120,0,0,0,,,,"Sunday, June 2, 2013","Sunday, June 16, 2013",,"Thursday, February 21, 2013","Thursday, March 7, 2013","Thursday, February 21, 2013","Thursday, March 7, 2013","Thursday, February 21, 2013","Thursday, March 7, 2013",,6/2/2013 8:00,6/16/2013 17:00,,PT_Normal,,,,,wJcBoNo+uUyGqZXegHLplQ,TIk6tiyQyUeFfgfBZh0gDw,,,N,0,0,,,3/7/2012 19:17,3/18/2012 21:18,admin,NotPrmUser
136,93581,1685,12272,794,1,0,N,N,N,CP_Drtn,TT_Task,DT_FixedDUR2,RV_OK,TK_NotStart,A2540,Doors&windows erection,2914,912,104,56,0,35,35,56,0,0,0,,,,"Saturday, May 11, 2013","Friday, May 17, 2013",,"Thursday, January 17, 2013","Wednesday, January 23, 2013","Thursday, January 17, 2013","Wednesday, January 23, 2013","Thursday, January 17, 2013","Wednesday, January 23, 2013",,5/11/2013 8:00,5/17/2013 17:00,,PT_Normal,,,,,xzAnp1G61kGqDOqcPfEirw,sUPjwdEPyUSrXQ5xVuP5yg,,,N,0,0,,,3/7/2012 19:17,3/18/2012 21:18,admin,NotPrmUser
137,93582,1685,12272,794,1,0,N,N,N,CP_Drtn,TT_Task,DT_FixedDUR2,RV_OK,TK_NotStart,A2550,False ceiling,2914,808,0,120,0,75,75,120,0,0,0,,,,"Saturday, May 18, 2013","Saturday, June 1, 2013",,"Wednesday, February 6, 2013","Wednesday, February 20, 2013","Wednesday, February 6, 2013","Wednesday, February 20, 2013","Wednesday, February 6, 2013","Wednesday, February 20, 2013",,5/18/2013 8:00,6/1/2013 17:00,,PT_Normal,,,,,jf3q5LkK2EOmzu3v3SPADQ,hfrdQLR/V0Gpao1vhee1xw,,,N,0,0,,,3/7/2012 19:17,3/18/2012 21:18,admin,NotPrmUser
138,93583,1685,12268,794,1,0,N,N,N,CP_Drtn,TT_Task,DT_FixedDUR2,RV_OK,TK_NotStart,A2570,Plaster works,2914,696,0,112,0,5,5,112,0,0,0,,,,"Sunday, April 7, 2013","Saturday, April 20, 2013",,"Thursday, January 10, 2013","Wednesday, January 23, 2013","Thursday, January 10, 2013","Wednesday, January 23, 2013","Thursday, January 10, 2013","Wednesday, January 23, 2013",,4/7/2013 8:00,4/20/2013 17:00,,PT_Normal,,,,,0ay/x2XK+EqOVVGDkDQ/MQ,QGQaIj/CzUG4Mw2dxBug5g,,,N,0,0,,,3/7/2012 19:17,3/18/2012 13:25,admin,admin
139,93584,1685,12268,794,1,0,N,N,N,CP_Drtn,TT_Task,DT_FixedDUR2,RV_OK,TK_NotStart,A2580,Flooring works,2914,696,0,112,0,5,5,112,0,0,0,,,,"Sunday, April 21, 2013","Saturday, May 4, 2013",,"Thursday, January 24, 2013","Wednesday, February 6, 2013","Thursday, January 24, 2013","Wednesday, February 6, 2013","Thursday, January 24, 2013","Wednesday, February 6, 2013",,4/21/2013 8:00,5/4/2013 17:00,,PT_Normal,,,,,qNbtJbfsIk6+d5/DWpU3AA,OUTASiO3qEKz7WivQ72UYg,,,N,0,0,,,3/7/2012 19:17,3/18/2012 13:25,admin,admin
140,93585,1685,12268,794,1,0,N,N,N,CP_Drtn,TT_Task,DT_FixedDUR2,RV_OK,TK_NotStart,A2610,Painting works,2914,696,0,80,0,5,5,80,0,0,0,,,,"Wednesday, May 22, 2013","Friday, May 31, 2013",,"Sunday, February 24, 2013","Tuesday, March 5, 2013","Sunday, February 24, 2013","Tuesday, March 5, 2013","Sunday, February 24, 2013","Tuesday, March 5, 2013",,5/22/2013 8:00,5/31/2013 17:00,,PT_Normal,,,,,cYD+lYUlIkOUtmnKfFxt6Q,TIk6tiyQyUeFfgfBZh0gDw,,,N,0,0,,,3/7/2012 19:17,3/18/2012 13:25,admin,admin
141,93586,1685,12268,794,1,0,N,N,N,CP_Drtn,TT_Task,DT_FixedDUR2,RV_OK,TK_NotStart,A2590,Doors&windows erection,2914,696,0,56,0,5,5,56,0,0,0,,,,"Sunday, May 5, 2013","Saturday, May 11, 2013",,"Thursday, February 7, 2013","Wednesday, February 13, 2013","Thursday, February 7, 2013","Wednesday, February 13, 2013","Thursday, February 7, 2013","Wednesday, February 13, 2013",,5/5/2013 8:00,5/11/2013 17:00,,PT_Normal,,,,,JvkR97QWn0eK5eCw1jxZXg,sUPjwdEPyUSrXQ5xVuP5yg,,,N,0,0,,,3/7/2012 19:17,3/18/2012 13:25,admin,admin
142,93587,1685,12268,794,1,0,N,N,N,CP_Drtn,TT_Task,DT_FixedDUR2,RV_OK,TK_NotStart,A2600,False ceiling,2914,696,0,80,0,5,5,80,0,0,0,,,,"Sunday, May 12, 2013","Tuesday, May 21, 2013",,"Thursday, February 14, 2013","Saturday, February 23, 2013","Thursday, February 14, 2013","Saturday, February 23, 2013","Thursday, February 14, 2013","Saturday, February 23, 2013",,5/12/2013 8:00,5/21/2013 17:00,,PT_Normal,,,,,qX+gkxpCXUu98sSnWZl+AA,hfrdQLR/V0Gpao1vhee1xw,,,N,0,0,,,3/7/2012 19:17,3/18/2012 13:25,admin,admin
143,93588,1685,12264,794,1,0,N,N,N,CP_Drtn,TT_Task,DT_FixedDUR2,RV_OK,TK_NotStart,A2620,Plaster works,2914,928,0,160,0,100,100,160,0,0,0,,,,"Tuesday, April 2, 2013","Sunday, April 21, 2013",,"Friday, December 7, 2012","Wednesday, December 26, 2012","Friday, December 7, 2012","Wednesday, December 26, 2012","Friday, December 7, 2012","Wednesday, December 26, 2012",,4/2/2013 8:00,4/21/2013 17:00,,PT_Normal,,,,,Xlqwj3DZdkq6hIUg/2eqDw,QGQaIj/CzUG4Mw2dxBug5g,,,N,0,0,,,3/7/2012 19:17,3/18/2012 13:30,admin,admin
144,93589,1685,12264,794,1,0,N,N,N,CP_Drtn,TT_Task,DT_FixedDUR2,RV_OK,TK_NotStart,A2630,Flooring works,2914,928,0,120,0,75,75,120,0,0,0,,,,"Monday, April 22, 2013","Monday, May 6, 2013",,"Thursday, December 27, 2012","Thursday, January 10, 2013","Thursday, December 27, 2012","Thursday, January 10, 2013","Thursday, December 27, 2012","Thursday, January 10, 2013",,4/22/2013 8:00,5/6/2013 17:00,,PT_Normal,,,,,9CLpz7KjUEqFwnaDHWm7cw,OUTASiO3qEKz7WivQ72UYg,,,N,0,0,,,3/7/2012 19:17,3/18/2012 13:30,admin,admin
145,93590,1685,12264,794,1,0,N,N,N,CP_Drtn,TT_Task,DT_FixedDUR2,RV_OK,TK_NotStart,A2660,Painting works,2914,928,0,80,0,50,50,80,0,0,0,,,,"Wednesday, May 22, 2013","Friday, May 31, 2013",,"Saturday, January 26, 2013","Monday, February 4, 2013","Saturday, January 26, 2013","Monday, February 4, 2013","Saturday, January 26, 2013","Monday, February 4, 2013",,5/22/2013 8:00,5/31/2013 17:00,,PT_Normal,,,,,04BBeRnf+US+kbjGyfuEyA,TIk6tiyQyUeFfgfBZh0gDw,,,N,0,0,,,3/7/2012 19:17,3/18/2012 13:30,admin,admin
146,93591,1685,12264,794,1,0,N,N,N,CP_Drtn,TT_Task,DT_FixedDUR2,RV_OK,TK_NotStart,A2640,Doors&windows erection,2914,928,0,40,0,25,25,40,0,0,0,,,,"Tuesday, May 7, 2013","Saturday, May 11, 2013",,"Friday, January 11, 2013","Tuesday, January 15, 2013","Friday, January 11, 2013","Tuesday, January 15, 2013","Friday, January 11, 2013","Tuesday, January 15, 2013",,5/7/2013 8:00,5/11/2013 17:00,,PT_Normal,,,,,RXV8xkdLik+bOOiwq/vS+g,sUPjwdEPyUSrXQ5xVuP5yg,,,N,0,0,,,3/7/2012 19:17,3/18/2012 13:30,admin,admin
147,93592,1685,12264,794,1,0,N,N,N,CP_Drtn,TT_Task,DT_FixedDUR2,RV_OK,TK_NotStart,A2650,False ceiling,2914,928,0,80,0,50,50,80,0,0,0,,,,"Sunday, May 12, 2013","Tuesday, May 21, 2013",,"Wednesday, January 16, 2013","Friday, January 25, 2013","Wednesday, January 16, 2013","Friday, January 25, 2013","Wednesday, January 16, 2013","Friday, January 25, 2013",,5/12/2013 8:00,5/21/2013 17:00,,PT_Normal,,,,,4/Kb0ClaOEaBtrUx+JUNzw,hfrdQLR/V0Gpao1vhee1xw,,,N,0,0,,,3/7/2012 19:17,3/18/2012 13:30,admin,admin
148,93593,1685,13351,794,1,0,N,N,N,CP_Drtn,TT_Task,DT_FixedDUR2,RV_OK,TK_NotStart,A2670,Plaster works,2914,872,0,160,0,75,75,160,0,0,0,,,,"Tuesday, April 2, 2013","Sunday, April 21, 2013",,"Friday, December 14, 2012","Wednesday, January 2, 2013","Friday, December 14, 2012","Wednesday, January 2, 2013","Friday, December 14, 2012","Wednesday, January 2, 2013",,4/2/2013 8:00,4/21/2013 17:00,,PT_Normal,,,,,VnvqLA+IvkqPype2ff134A,QGQaIj/CzUG4Mw2dxBug5g,,,N,0,0,,,3/7/2012 19:17,3/16/2012 15:23,admin,admin
149,93594,1685,13351,794,1,0,N,N,N,CP_Drtn,TT_Task,DT_FixedDUR2,RV_OK,TK_NotStart,A2680,Flooring works,2914,968,0,120,0,75,75,120,0,0,0,,,,"Saturday, May 4, 2013","Saturday, May 18, 2013",,"Thursday, January 3, 2013","Thursday, January 17, 2013","Thursday, January 3, 2013","Thursday, January 17, 2013","Thursday, January 3, 2013","Thursday, January 17, 2013",,5/4/2013 8:00,5/18/2013 17:00,,PT_Normal,,,,,4t+nh/Hmx0S+sHvh2g+V+Q,OUTASiO3qEKz7WivQ72UYg,,,N,0,0,,,3/7/2012 19:17,3/16/2012 15:23,admin,admin
150,93595,1685,13351,794,1,0,N,N,N,CP_Drtn,TT_Task,DT_FixedDUR2,RV_OK,TK_NotStart,A2710,Painting works,2914,872,0,80,0,50,50,80,0,0,0,,,,"Saturday, June 1, 2013","Monday, June 10, 2013",,"Tuesday, February 12, 2013","Thursday, February 21, 2013","Tuesday, February 12, 2013","Thursday, February 21, 2013","Tuesday, February 12, 2013","Thursday, February 21, 2013",,6/1/2013 8:00,6/10/2013 17:00,,PT_Normal,,,,,EhuxvmzGqkuUSGGW9WMGIw,TIk6tiyQyUeFfgfBZh0gDw,,,N,0,0,,,3/7/2012 19:17,3/16/2012 15:23,admin,admin
151,93596,1685,13351,794,1,0,N,N,N,CP_Drtn,TT_Task,DT_FixedDUR2,RV_OK,TK_NotStart,A2690,Doors&windows erection,2914,968,96,24,0,15,15,24,0,0,0,,,,"Sunday, May 19, 2013","Tuesday, May 21, 2013",,"Friday, January 18, 2013","Sunday, January 20, 2013","Friday, January 18, 2013","Sunday, January 20, 2013","Friday, January 18, 2013","Sunday, January 20, 2013",,5/19/2013 8:00,5/21/2013 17:00,,PT_Normal,,,,,xvHiBTbpAkKsMKn0oPPCWA,sUPjwdEPyUSrXQ5xVuP5yg,,,N,0,0,,,3/7/2012 19:17,3/16/2012 15:23,admin,admin
152,93597,1685,13351,794,1,0,N,N,N,CP_Drtn,TT_Task,DT_FixedDUR2,RV_OK,TK_NotStart,A2700,False ceiling,2914,872,0,80,0,50,50,80,0,0,0,,,,"Wednesday, May 22, 2013","Friday, May 31, 2013",,"Saturday, February 2, 2013","Monday, February 11, 2013","Saturday, February 2, 2013","Monday, February 11, 2013","Saturday, February 2, 2013","Monday, February 11, 2013",,5/22/2013 8:00,5/31/2013 17:00,,PT_Normal,,,,,fVAJVcvbw0GyWk5BjttUyA,hfrdQLR/V0Gpao1vhee1xw,,,N,0,0,,,3/7/2012 19:17,3/16/2012 15:23,admin,admin
153,93598,1685,13355,794,1,0,N,N,N,CP_Drtn,TT_Task,DT_FixedDUR2,RV_OK,TK_NotStart,A2720,Plaster works,2914,672,0,160,0,75,75,160,0,0,0,,,,"Friday, April 12, 2013","Wednesday, May 1, 2013",,"Friday, January 18, 2013","Wednesday, February 6, 2013","Friday, January 18, 2013","Wednesday, February 6, 2013","Friday, January 18, 2013","Wednesday, February 6, 2013",,4/12/2013 8:00,5/1/2013 17:00,,PT_Normal,,,,,/nMy/dFPIEymtmhBhouUIA,QGQaIj/CzUG4Mw2dxBug5g,,,N,0,0,,,3/7/2012 19:17,3/18/2012 21:27,admin,NotPrmUser
154,93599,1685,13355,794,1,0,N,N,N,CP_Drtn,TT_Task,DT_FixedDUR2,RV_OK,TK_NotStart,A2730,Flooring works,2914,672,0,120,0,50,50,120,0,0,0,,,,"Thursday, May 2, 2013","Thursday, May 16, 2013",,"Thursday, February 7, 2013","Thursday, February 21, 2013","Thursday, February 7, 2013","Thursday, February 21, 2013","Thursday, February 7, 2013","Thursday, February 21, 2013",,5/2/2013 8:00,5/16/2013 17:00,,PT_Normal,,,,,5a1IBe+fzUq4OJKCDH1tPg,OUTASiO3qEKz7WivQ72UYg,,,N,0,0,,,3/7/2012 19:17,3/18/2012 21:27,admin,NotPrmUser
155,93600,1685,13355,794,1,0,N,N,N,CP_Drtn,TT_Task,DT_FixedDUR2,RV_OK,TK_NotStart,A2760,Painting works,2914,672,0,80,0,50,50,80,0,0,0,,,,"Thursday, June 6, 2013","Saturday, June 15, 2013",,"Thursday, March 14, 2013","Saturday, March 23, 2013","Thursday, March 14, 2013","Saturday, March 23, 2013","Thursday, March 14, 2013","Saturday, March 23, 2013",,6/6/2013 8:00,6/15/2013 17:00,,PT_Normal,,,,,Z7syJIDZvE6HNOlguqny2w,TIk6tiyQyUeFfgfBZh0gDw,,,N,0,0,,,3/7/2012 19:17,3/18/2012 21:27,admin,NotPrmUser
156,93601,1685,13355,794,1,0,N,N,N,CP_Drtn,TT_Task,DT_FixedDUR2,RV_OK,TK_NotStart,A2740,Doors&windows erection,2914,672,0,48,0,15,15,48,0,0,0,,,,"Friday, May 17, 2013","Wednesday, May 22, 2013",,"Friday, February 22, 2013","Wednesday, February 27, 2013","Friday, February 22, 2013","Wednesday, February 27, 2013","Friday, February 22, 2013","Wednesday, February 27, 2013",,5/17/2013 8:00,5/22/2013 17:00,,PT_Normal,,,,,avm71r82vU+AsmIUHHh9Zw,sUPjwdEPyUSrXQ5xVuP5yg,,,N,0,0,,,3/7/2012 19:17,3/18/2012 21:27,admin,NotPrmUser
157,93602,1685,13355,794,1,0,N,N,N,CP_Drtn,TT_Task,DT_FixedDUR2,RV_OK,TK_NotStart,A2750,False ceiling,2914,672,0,112,0,70,70,112,0,0,0,,,,"Thursday, May 23, 2013","Wednesday, June 5, 2013",,"Thursday, February 28, 2013","Wednesday, March 13, 2013","Thursday, February 28, 2013","Wednesday, March 13, 2013","Thursday, February 28, 2013","Wednesday, March 13, 2013",,5/23/2013 8:00,6/5/2013 17:00,,PT_Normal,,,,,Tv34scfl/kC/RSAp0Zp6IA,hfrdQLR/V0Gpao1vhee1xw,,,N,0,0,,,3/7/2012 19:17,3/18/2012 21:27,admin,NotPrmUser
158,93603,1685,13361,794,1,0,N,N,N,CP_Drtn,TT_Task,DT_FixedDUR2,RV_OK,TK_NotStart,A2770,Plaster works,2914,800,0,80,0,50,50,80,0,0,0,,,,"Wednesday, May 22, 2013","Friday, May 31, 2013",,"Monday, February 11, 2013","Wednesday, February 20, 2013","Monday, February 11, 2013","Wednesday, February 20, 2013","Monday, February 11, 2013","Wednesday, February 20, 2013",,5/22/2013 8:00,5/31/2013 17:00,,PT_Normal,,,,,LZZEXuWrZEuGNQ2TTk1XFQ,QGQaIj/CzUG4Mw2dxBug5g,,,N,0,0,,,3/7/2012 19:17,3/18/2012 13:30,admin,admin
159,93604,1685,13361,794,1,0,N,N,N,CP_Drtn,TT_Task,DT_FixedDUR2,RV_OK,TK_NotStart,A2780,Flooring works,2914,800,0,80,0,50,50,80,0,0,0,,,,"Saturday, June 1, 2013","Monday, June 10, 2013",,"Thursday, February 21, 2013","Saturday, March 2, 2013","Thursday, February 21, 2013","Saturday, March 2, 2013","Thursday, February 21, 2013","Saturday, March 2, 2013",,6/1/2013 8:00,6/10/2013 17:00,,PT_Normal,,,,,2y/UqG7rrEaK07Egh9x2sA,OUTASiO3qEKz7WivQ72UYg,,,N,0,0,,,3/7/2012 19:17,3/18/2012 13:30,admin,admin
160,93605,1685,13361,794,1,0,N,N,N,CP_Drtn,TT_Task,DT_FixedDUR2,RV_OK,TK_NotStart,A2810,Painting works,2914,832,0,40,0,25,25,40,0,0,0,,,,"Monday, June 17, 2013","Friday, June 21, 2013",,"Tuesday, March 5, 2013","Saturday, March 9, 2013","Tuesday, March 5, 2013","Saturday, March 9, 2013","Tuesday, March 5, 2013","Saturday, March 9, 2013",,6/17/2013 8:00,6/21/2013 17:00,,PT_Normal,,,,,HA0BmJ7HPUCa3FSSiL0vMA,TIk6tiyQyUeFfgfBZh0gDw,,,N,0,0,,,3/7/2012 19:17,3/18/2012 13:30,admin,admin
161,93606,1685,13361,794,1,0,N,N,N,CP_Drtn,TT_Task,DT_FixedDUR2,RV_OK,TK_NotStart,A2790,Doors&windows erection,2914,832,0,16,0,10,10,16,0,0,0,,,,"Saturday, June 15, 2013","Sunday, June 16, 2013",,"Sunday, March 3, 2013","Monday, March 4, 2013","Sunday, March 3, 2013","Monday, March 4, 2013","Sunday, March 3, 2013","Monday, March 4, 2013",,6/15/2013 8:00,6/16/2013 17:00,,PT_Normal,,,,,VCc60kNL3EeI2pvl6X+yoA,sUPjwdEPyUSrXQ5xVuP5yg,,,N,0,0,,,3/7/2012 19:17,3/18/2012 13:30,admin,admin
162,93608,1685,13363,794,1,0,N,N,N,CP_Drtn,TT_Task,DT_FixedDUR2,RV_OK,TK_NotStart,A2820,Plaster works,2914,1576,0,80,0,50,50,80,0,0,0,,,,"Thursday, May 9, 2013","Saturday, May 18, 2013",,"Wednesday, October 24, 2012","Friday, November 2, 2012","Wednesday, October 24, 2012","Friday, November 2, 2012","Wednesday, October 24, 2012","Friday, November 2, 2012",,5/9/2013 8:00,5/18/2013 17:00,,PT_Normal,,,,,LXsW0UinVUaZTcLHrPn3uA,QGQaIj/CzUG4Mw2dxBug5g,,,N,0,0,,,3/7/2012 19:17,3/16/2012 15:23,admin,admin
163,93609,1685,13363,794,1,0,N,N,N,CP_Drtn,TT_Task,DT_FixedDUR2,RV_OK,TK_NotStart,A2830,Flooring works,2914,1576,0,56,0,35,35,56,0,0,0,,,,"Sunday, May 19, 2013","Saturday, May 25, 2013",,"Saturday, November 3, 2012","Friday, November 9, 2012","Saturday, November 3, 2012","Friday, November 9, 2012","Saturday, November 3, 2012","Friday, November 9, 2012",,5/19/2013 8:00,5/25/2013 17:00,,PT_Normal,,,,,HnASKuLUs0GjUbSfwWNl8g,OUTASiO3qEKz7WivQ72UYg,,,N,0,0,,,3/7/2012 19:17,3/16/2012 15:23,admin,admin
164,93610,1685,13363,794,1,0,N,N,N,CP_Drtn,TT_Task,DT_FixedDUR2,RV_OK,TK_NotStart,A2860,Painting works,2914,1576,0,56,0,35,35,56,0,0,0,,,,"Tuesday, June 4, 2013","Monday, June 10, 2013",,"Monday, November 19, 2012","Sunday, November 25, 2012","Monday, November 19, 2012","Sunday, November 25, 2012","Monday, November 19, 2012","Sunday, November 25, 2012",,6/4/2013 8:00,6/10/2013 17:00,,PT_Normal,,,,,ZOwJiyCDRk+28MZnjo3fvw,TIk6tiyQyUeFfgfBZh0gDw,,,N,0,0,,,3/7/2012 19:17,3/16/2012 15:23,admin,admin
165,93611,1685,13363,794,1,0,N,N,N,CP_Drtn,TT_Task,DT_FixedDUR2,RV_OK,TK_NotStart,A2840,Doors&windows erection,2914,1576,0,16,0,10,10,16,0,0,0,,,,"Sunday, May 26, 2013","Monday, May 27, 2013",,"Saturday, November 10, 2012","Sunday, November 11, 2012","Saturday, November 10, 2012","Sunday, November 11, 2012","Saturday, November 10, 2012","Sunday, November 11, 2012",,5/26/2013 8:00,5/27/2013 17:00,,PT_Normal,,,,,4BGmTEioykevoV/HxPFxXQ,sUPjwdEPyUSrXQ5xVuP5yg,,,N,0,0,,,3/7/2012 19:17,3/16/2012 15:23,admin,admin
166,93612,1685,13363,794,1,0,N,N,N,CP_Drtn,TT_Task,DT_FixedDUR2,RV_OK,TK_NotStart,A2850,False ceiling,2914,1576,0,56,0,35,35,56,0,0,0,,,,"Tuesday, May 28, 2013","Monday, June 3, 2013",,"Monday, November 12, 2012","Sunday, November 18, 2012","Monday, November 12, 2012","Sunday, November 18, 2012","Monday, November 12, 2012","Sunday, November 18, 2012",,5/28/2013 8:00,6/3/2013 17:00,,PT_Normal,,,,,74Awd4Jw0kaERI4yBFtHYQ,hfrdQLR/V0Gpao1vhee1xw,,,N,0,0,,,3/7/2012 19:17,3/16/2012 15:23,admin,admin
167,93613,1685,13367,794,1,0,N,N,N,CP_Drtn,TT_Task,DT_FixedDUR2,RV_OK,TK_NotStart,A2870,Plaster works,2914,1328,0,160,0,100,100,160,0,0,0,,,,"Saturday, April 20, 2013","Thursday, May 9, 2013",,"Monday, November 5, 2012","Saturday, November 24, 2012","Monday, November 5, 2012","Saturday, November 24, 2012","Monday, November 5, 2012","Saturday, November 24, 2012",,4/20/2013 8:00,5/9/2013 17:00,,PT_Normal,,,,,Sdh0LAaQukuSlZn+UljTtw,QGQaIj/CzUG4Mw2dxBug5g,,,N,0,0,,,3/7/2012 19:17,3/16/2012 15:23,admin,admin
168,93614,1685,13367,794,1,0,N,N,N,CP_Drtn,TT_Task,DT_FixedDUR2,RV_OK,TK_NotStart,A2880,Flooring works,2914,1328,0,80,0,50,50,80,0,0,0,,,,"Friday, May 10, 2013","Sunday, May 19, 2013",,"Sunday, November 25, 2012","Tuesday, December 4, 2012","Sunday, November 25, 2012","Tuesday, December 4, 2012","Sunday, November 25, 2012","Tuesday, December 4, 2012",,5/10/2013 8:00,5/19/2013 17:00,,PT_Normal,,,,,GD2J+tCtBEqmHUDOr5Qgwg,OUTASiO3qEKz7WivQ72UYg,,,N,0,0,,,3/7/2012 19:17,3/16/2012 15:23,admin,admin
169,93615,1685,13367,794,1,0,N,N,N,CP_Drtn,TT_Task,DT_FixedDUR2,RV_OK,TK_NotStart,A2910,Painting works,2914,1328,0,160,0,100,100,160,0,0,0,,,,"Monday, May 27, 2013","Saturday, June 15, 2013",,"Wednesday, December 12, 2012","Monday, December 31, 2012","Wednesday, December 12, 2012","Monday, December 31, 2012","Wednesday, December 12, 2012","Monday, December 31, 2012",,5/27/2013 8:00,6/15/2013 17:00,,PT_Normal,,,,,B2dEKfhV50mCbdUTU9UqOg,TIk6tiyQyUeFfgfBZh0gDw,,,N,0,0,,,3/7/2012 19:17,3/16/2012 15:23,admin,admin
170,93616,1685,13367,794,1,0,N,N,N,CP_Drtn,TT_Task,DT_FixedDUR2,RV_OK,TK_NotStart,A2890,Doors&windows erection,2914,1328,0,56,0,35,35,56,0,0,0,,,,"Monday, May 20, 2013","Sunday, May 26, 2013",,"Wednesday, December 5, 2012","Tuesday, December 11, 2012","Wednesday, December 5, 2012","Tuesday, December 11, 2012","Wednesday, December 5, 2012","Tuesday, December 11, 2012",,5/20/2013 8:00,5/26/2013 17:00,,PT_Normal,,,,,UB33DtaVA0uovBAC7o0g9Q,sUPjwdEPyUSrXQ5xVuP5yg,,,N,0,0,,,3/7/2012 19:17,3/16/2012 15:23,admin,admin
171,93618,1685,12253,794,1,0,N,N,N,CP_Drtn,TT_Task,DT_FixedDUR2,RV_OK,TK_NotStart,A2920,External plaster,,1272,0,240,0,0,0,240,0,0,0,,,,"Friday, May 17, 2013","Saturday, June 15, 2013",,"Sunday, December 9, 2012","Monday, January 7, 2013","Sunday, December 9, 2012","Monday, January 7, 2013","Sunday, December 9, 2012","Monday, January 7, 2013",,5/17/2013 8:00,6/15/2013 17:00,,PT_Normal,,,,,RjxtVk+XqkSdyPI2eWIcDQ,,,,N,0,0,,,3/7/2012 19:17,3/16/2012 15:31,admin,admin
172,93619,1685,12253,794,1,0,N,N,N,CP_Drtn,TT_Task,DT_FixedDUR2,RV_OK,TK_NotStart,A2930,Painting works,2914,1272,1272,120,0,75,75,120,0,0,0,,,,"Sunday, June 16, 2013","Sunday, June 30, 2013",,"Tuesday, January 8, 2013","Tuesday, January 22, 2013","Tuesday, January 8, 2013","Tuesday, January 22, 2013","Tuesday, January 8, 2013","Tuesday, January 22, 2013",,6/16/2013 8:00,6/30/2013 17:00,,PT_Normal,,,,,EzefFibELUCs0O9HvRfKbw,,,,N,0,0,,,3/7/2012 19:17,3/18/2012 22:47,admin,NotPrmUser
173,93970,1685,13391,794,1,0,N,N,N,CP_Drtn,TT_Task,DT_FixedDUR2,RV_OK,TK_NotStart,A2940,Plumbing works(first fix),2909,1136,1136,24,0,7,7,24,0,0,0,,,,"Friday, June 28, 2013","Sunday, June 30, 2013",,"Wednesday, February 6, 2013","Friday, February 8, 2013","Wednesday, February 6, 2013","Friday, February 8, 2013","Wednesday, February 6, 2013","Friday, February 8, 2013",,6/28/2013 8:00,6/30/2013 17:00,,PT_Normal,,,,,u2vRTIeMi0SwNFpTA5oGXQ,,,,N,0,0,,,3/11/2012 12:03,3/19/2012 1:05,NotPrmUser,NotPrmUser
174,93971,1685,13391,794,1,0,N,N,N,CP_Drtn,TT_Task,DT_FixedDUR2,RV_OK,TK_NotStart,A2950,Plumbing works(second fix),,656,656,24,0,0,0,24,0,0,0,,,,"Friday, June 28, 2013","Sunday, June 30, 2013",,"Sunday, April 7, 2013","Tuesday, April 9, 2013","Sunday, April 7, 2013","Tuesday, April 9, 2013","Sunday, April 7, 2013","Tuesday, April 9, 2013",,6/28/2013 8:00,6/30/2013 17:00,,PT_Normal,,,,,fqQf45WwWE+zXFEW+4BllQ,,,,N,0,0,,,3/11/2012 12:07,3/18/2012 22:47,NotPrmUser,NotPrmUser
175,93972,1685,12257,794,1,0,N,N,N,CP_Drtn,TT_Task,DT_FixedDUR2,RV_OK,TK_NotStart,A2960,Conduits&outlets,,1040,1040,56,0,0,0,56,0,0,0,,,,"Monday, June 24, 2013","Sunday, June 30, 2013",,"Thursday, February 14, 2013","Wednesday, February 20, 2013","Thursday, February 14, 2013","Wednesday, February 20, 2013","Thursday, February 14, 2013","Wednesday, February 20, 2013",,6/24/2013 8:00,6/30/2013 17:00,,PT_Normal,,,,,VyP0xNAk0Eu31aXEkrzbhA,,,,N,0,0,,,3/11/2012 12:38,3/18/2012 22:47,NotPrmUser,NotPrmUser
176,93973,1685,12257,794,1,0,N,N,N,CP_Drtn,TT_Task,DT_FixedDUR2,RV_OK,TK_NotStart,A2970,Lighting & power panels,,696,0,64,0,0,0,64,0,0,0,,,,"Sunday, June 23, 2013","Sunday, June 30, 2013",,"Thursday, March 28, 2013","Thursday, April 4, 2013","Thursday, March 28, 2013","Thursday, April 4, 2013","Thursday, March 28, 2013","Thursday, April 4, 2013",,6/23/2013 8:00,6/30/2013 17:00,,PT_Normal,,,,,j4QBiw/5e0eOfuwcChioqw,,,,N,0,0,,,3/11/2012 12:40,3/18/2012 13:23,NotPrmUser,admin
177,93974,1685,12257,794,1,0,N,N,N,CP_Drtn,TT_Task,DT_FixedDUR2,RV_OK,TK_NotStart,A2980,Cable trays,,872,872,48,0,0,0,48,0,0,0,,,,"Tuesday, June 25, 2013","Sunday, June 30, 2013",,"Friday, March 8, 2013","Wednesday, March 13, 2013","Friday, March 8, 2013","Wednesday, March 13, 2013","Friday, March 8, 2013","Wednesday, March 13, 2013",,6/25/2013 8:00,6/30/2013 17:00,,PT_Normal,,,,,IYDykbEg5EawDFJv3UT/1g,,,,N,0,0,,,3/11/2012 12:41,3/18/2012 22:47,NotPrmUser,NotPrmUser
178,93975,1685,12257,794,1,0,N,N,N,CP_Drtn,TT_Task,DT_FixedDUR2,RV_OK,TK_NotStart,A2990,Telecommunications system & outlets,,696,696,64,0,0,0,64,0,0,0,,,,"Sunday, June 23, 2013","Sunday, June 30, 2013",,"Thursday, March 28, 2013","Thursday, April 4, 2013","Thursday, March 28, 2013","Thursday, April 4, 2013","Thursday, March 28, 2013","Thursday, April 4, 2013",,6/23/2013 8:00,6/30/2013 17:00,,PT_Normal,,,,,qexOpWgbjUCj93KBsPd7Tw,,,,N,0,0,,,3/11/2012 12:43,3/18/2012 22:47,NotPrmUser,NotPrmUser
179,93976,1685,12257,794,1,0,N,N,N,CP_Drtn,TT_Task,DT_FixedDUR2,RV_OK,TK_NotStart,A3000,Fire alarm system,,760,760,120,0,0,0,120,0,0,0,,,,"Sunday, June 16, 2013","Sunday, June 30, 2013",,"Wednesday, March 13, 2013","Wednesday, March 27, 2013","Wednesday, March 13, 2013","Wednesday, March 27, 2013","Wednesday, March 13, 2013","Wednesday, March 27, 2013",,6/16/2013 8:00,6/30/2013 17:00,,PT_Normal,,,,,3F1EaJJEAEOVKug8gVLphg,,,,N,0,0,,,3/11/2012 12:44,3/18/2012 22:47,NotPrmUser,NotPrmUser
180,94777,1685,13422,794,1,0,N,N,N,CP_Drtn,TT_Task,DT_FixedDUR2,RV_OK,TK_NotStart,A3010,Plumbing works(first fix),2909,592,0,48,0,36,36,48,0,0,0,,,,"Thursday, March 7, 2013","Tuesday, March 12, 2013",,"Sunday, December 23, 2012","Friday, December 28, 2012","Sunday, December 23, 2012","Friday, December 28, 2012","Sunday, December 23, 2012","Friday, December 28, 2012",,3/7/2013 8:00,3/12/2013 17:00,,PT_Normal,,,,,54qX33a98UyNWPJSDDlvzQ,u2vRTIeMi0SwNFpTA5oGXQ,,,N,0,0,,,3/12/2012 11:21,3/19/2012 1:06,admin,NotPrmUser
181,94778,1685,13422,794,1,0,N,N,N,CP_Drtn,TT_Task,DT_FixedDUR2,RV_OK,TK_NotStart,A3020,Plumbing works(second fix),,704,704,48,0,0,0,48,0,0,0,,,,"Tuesday, June 25, 2013","Sunday, June 30, 2013",,"Friday, March 29, 2013","Wednesday, April 3, 2013","Friday, March 29, 2013","Wednesday, April 3, 2013","Friday, March 29, 2013","Wednesday, April 3, 2013",,6/25/2013 8:00,6/30/2013 17:00,,PT_Normal,,,,,7A4hZhegVUu8eEsE73DMTg,fqQf45WwWE+zXFEW+4BllQ,,,N,0,0,,,3/12/2012 11:21,3/18/2012 22:47,admin,NotPrmUser
182,94779,1685,12261,794,1,0,N,N,N,CP_Drtn,TT_Task,DT_FixedDUR2,RV_OK,TK_NotStart,A3030,Conduits&outlets,,1312,1312,56,0,0,0,56,0,0,0,,,,"Monday, June 24, 2013","Sunday, June 30, 2013",,"Friday, January 11, 2013","Thursday, January 17, 2013","Friday, January 11, 2013","Thursday, January 17, 2013","Friday, January 11, 2013","Thursday, January 17, 2013",,6/24/2013 8:00,6/30/2013 17:00,,PT_Normal,,,,,x2SUypK+B0W0Hwxl9ykoAQ,VyP0xNAk0Eu31aXEkrzbhA,,,N,0,0,,,3/12/2012 11:21,3/18/2012 22:47,admin,NotPrmUser
183,94780,1685,12261,794,1,0,N,N,N,CP_Drtn,TT_Task,DT_FixedDUR2,RV_OK,TK_NotStart,A3070,Lighting & power panels,,768,0,64,0,0,0,64,0,0,0,,,,"Sunday, June 23, 2013","Sunday, June 30, 2013",,"Tuesday, March 19, 2013","Tuesday, March 26, 2013","Tuesday, March 19, 2013","Tuesday, March 26, 2013","Tuesday, March 19, 2013","Tuesday, March 26, 2013",,6/23/2013 8:00,6/30/2013 17:00,,PT_Normal,,,,,0PwVC6fuGUurzFECvVVIVg,j4QBiw/5e0eOfuwcChioqw,,,N,0,0,,,3/12/2012 11:21,3/18/2012 21:43,admin,NotPrmUser
184,94781,1685,12261,794,1,0,N,N,N,CP_Drtn,TT_Task,DT_FixedDUR2,RV_OK,TK_NotStart,A3040,Cable trays,,592,0,240,0,0,0,240,0,0,0,,,,"Wednesday, April 17, 2013","Thursday, May 16, 2013",,"Saturday, February 2, 2013","Sunday, March 3, 2013","Saturday, February 2, 2013","Sunday, March 3, 2013","Saturday, February 2, 2013","Sunday, March 3, 2013",,4/17/2013 8:00,5/16/2013 17:00,,PT_Normal,,,,,TdSgOflHc0SmHZ9SmthlTg,IYDykbEg5EawDFJv3UT/1g,,,N,0,0,,,3/12/2012 11:21,3/18/2012 21:43,admin,NotPrmUser
185,94782,1685,12261,794,1,0,N,N,N,CP_Drtn,TT_Task,DT_FixedDUR2,RV_OK,TK_NotStart,A3060,Telecommunications system & outlets,,768,768,64,0,0,0,64,0,0,0,,,,"Sunday, June 23, 2013","Sunday, June 30, 2013",,"Tuesday, March 19, 2013","Tuesday, March 26, 2013","Tuesday, March 19, 2013","Tuesday, March 26, 2013","Tuesday, March 19, 2013","Tuesday, March 26, 2013",,6/23/2013 8:00,6/30/2013 17:00,,PT_Normal,,,,,C+NdeWu7tk2Rh7jSPYbU7w,qexOpWgbjUCj93KBsPd7Tw,,,N,0,0,,,3/12/2012 11:21,3/18/2012 22:47,admin,NotPrmUser
186,94783,1685,12261,794,1,0,N,N,N,CP_Drtn,TT_Task,DT_FixedDUR2,RV_OK,TK_NotStart,A3050,Fire alarm system,,712,712,120,0,0,0,120,0,0,0,,,,"Sunday, June 16, 2013","Sunday, June 30, 2013",,"Tuesday, March 19, 2013","Tuesday, April 2, 2013","Tuesday, March 19, 2013","Tuesday, April 2, 2013","Tuesday, March 19, 2013","Tuesday, April 2, 2013",,6/16/2013 8:00,6/30/2013 17:00,,PT_Normal,,,,,0ZraE4vpSEWB+2QyWsGYhw,3F1EaJJEAEOVKug8gVLphg,,,N,0,0,,,3/12/2012 11:21,3/18/2012 22:47,admin,NotPrmUser
187,94784,1685,12261,794,1,0,N,N,N,CP_Drtn,TT_Task,DT_FixedDUR2,RV_OK,TK_NotStart,A3080,Grounding&bonding,,1424,728,40,0,0,0,40,0,0,0,,,,"Wednesday, June 19, 2013","Sunday, June 23, 2013",,"Sunday, December 23, 2012","Thursday, December 27, 2012","Sunday, December 23, 2012","Thursday, December 27, 2012","Sunday, December 23, 2012","Thursday, December 27, 2012",,6/19/2013 8:00,6/23/2013 17:00,,PT_Normal,,,,,moEDfS98YUafTl2MSck6zg,,,,N,0,0,,,3/12/2012 14:36,3/18/2012 21:43,admin,NotPrmUser
188,94785,1685,12261,794,1,0,N,N,N,CP_Drtn,TT_Task,DT_FixedDUR2,RV_OK,TK_NotStart,A3090,Wires&cables,,592,592,240,0,0,0,240,0,0,0,,,,"Saturday, June 1, 2013","Sunday, June 30, 2013",,"Tuesday, March 19, 2013","Wednesday, April 17, 2013","Tuesday, March 19, 2013","Wednesday, April 17, 2013","Tuesday, March 19, 2013","Wednesday, April 17, 2013",,6/1/2013 8:00,6/30/2013 17:00,,PT_Normal,,,,,1x+RMJwDGEKwQmeECwRCvQ,,,,N,0,0,,,3/12/2012 14:36,3/18/2012 22:47,admin,NotPrmUser
189,94786,1685,12297,794,1,0,N,N,N,CP_Drtn,TT_Task,DT_FixedDUR2,RV_OK,TK_NotStart,A3100,Conduits&outlets,,552,552,112,0,0,0,112,0,0,0,,,,"Monday, June 17, 2013","Sunday, June 30, 2013",,"Tuesday, April 9, 2013","Monday, April 22, 2013","Tuesday, April 9, 2013","Monday, April 22, 2013","Tuesday, April 9, 2013","Monday, April 22, 2013",,6/17/2013 8:00,6/30/2013 17:00,,PT_Normal,,,,,ccMEipGqZE+szEiIGJHWhg,x2SUypK+B0W0Hwxl9ykoAQ,,,N,0,0,,,3/12/2012 15:35,3/18/2012 22:47,admin,NotPrmUser
190,94787,1685,12297,794,1,0,N,N,N,CP_Drtn,TT_Task,DT_FixedDUR2,RV_OK,TK_NotStart,A3150,Lighting & power panels,,568,0,40,0,0,0,40,0,0,0,,,,"Wednesday, June 26, 2013","Sunday, June 30, 2013",,"Tuesday, April 16, 2013","Saturday, April 20, 2013","Tuesday, April 16, 2013","Saturday, April 20, 2013","Tuesday, April 16, 2013","Saturday, April 20, 2013",,6/26/2013 8:00,6/30/2013 17:00,,PT_Normal,,,,,9lGW5qxr9EOLIAzPUfJckg,0PwVC6fuGUurzFECvVVIVg,,,N,0,0,,,3/12/2012 15:35,3/18/2012 17:45,admin,admin
191,94788,1685,12297,794,1,0,N,N,N,CP_Drtn,TT_Task,DT_FixedDUR2,RV_OK,TK_NotStart,A3110,Cable trays,,368,0,32,0,0,0,32,0,0,0,,,,"Monday, May 27, 2013","Thursday, May 30, 2013",,"Thursday, April 11, 2013","Sunday, April 14, 2013","Thursday, April 11, 2013","Sunday, April 14, 2013","Thursday, April 11, 2013","Sunday, April 14, 2013",,5/27/2013 8:00,5/30/2013 17:00,,PT_Normal,,,,,9f3QEwPe90OXA3aACgev8w,TdSgOflHc0SmHZ9SmthlTg,,,N,0,0,,,3/12/2012 15:35,3/18/2012 17:45,admin,admin
192,94789,1685,12297,794,1,0,N,N,N,CP_Drtn,TT_Task,DT_FixedDUR2,RV_OK,TK_NotStart,A3120,Telecommunications system & outlets,,568,568,24,0,0,0,24,0,0,0,,,,"Friday, June 28, 2013","Sunday, June 30, 2013",,"Thursday, April 18, 2013","Saturday, April 20, 2013","Thursday, April 18, 2013","Saturday, April 20, 2013","Thursday, April 18, 2013","Saturday, April 20, 2013",,6/28/2013 8:00,6/30/2013 17:00,,PT_Normal,,,,,WVMyX+TKOUWG/8Ge1zWwTg,C+NdeWu7tk2Rh7jSPYbU7w,,,N,0,0,,,3/12/2012 15:35,3/18/2012 22:47,admin,NotPrmUser
193,94790,1685,12297,794,1,0,N,N,N,CP_Drtn,TT_Task,DT_FixedDUR2,RV_OK,TK_NotStart,A3130,Fire alarm system,,528,528,80,0,0,0,80,0,0,0,,,,"Friday, June 21, 2013","Sunday, June 30, 2013",,"Tuesday, April 16, 2013","Thursday, April 25, 2013","Tuesday, April 16, 2013","Thursday, April 25, 2013","Tuesday, April 16, 2013","Thursday, April 25, 2013",,6/21/2013 8:00,6/30/2013 17:00,,PT_Normal,,,,,I4qqvxOqIkO3f4MkFfAzLg,0ZraE4vpSEWB+2QyWsGYhw,,,N,0,0,,,3/12/2012 15:35,3/18/2012 22:47,admin,NotPrmUser
194,94791,1685,12297,794,1,0,N,N,N,CP_Drtn,TT_Task,DT_FixedDUR2,RV_OK,TK_NotStart,A3160,Grounding&bonding,,648,64,16,0,0,0,16,0,0,0,,,,"Thursday, June 27, 2013","Friday, June 28, 2013",,"Sunday, April 7, 2013","Monday, April 8, 2013","Sunday, April 7, 2013","Monday, April 8, 2013","Sunday, April 7, 2013","Monday, April 8, 2013",,6/27/2013 8:00,6/28/2013 17:00,,PT_Normal,,,,,SXps5PTIIE2IYlTDhbAuZQ,moEDfS98YUafTl2MSck6zg,,,N,0,0,,,3/12/2012 15:35,3/18/2012 17:45,admin,admin
195,94792,1685,12297,794,1,0,N,N,N,CP_Drtn,TT_Task,DT_FixedDUR2,RV_OK,TK_NotStart,A3140,Wires&cables,,368,368,240,0,0,0,240,0,0,0,,,,"Saturday, June 1, 2013","Sunday, June 30, 2013",,"Tuesday, April 16, 2013","Wednesday, May 15, 2013","Tuesday, April 16, 2013","Wednesday, May 15, 2013","Tuesday, April 16, 2013","Wednesday, May 15, 2013",,6/1/2013 8:00,6/30/2013 17:00,,PT_Normal,,,,,vN+OfXntc0at1h/9nUatnA,1x+RMJwDGEKwQmeECwRCvQ,,,N,0,0,,,3/12/2012 15:35,3/18/2012 22:47,admin,NotPrmUser
196,94793,1685,12293,794,1,0,N,N,N,CP_Drtn,TT_Task,DT_FixedDUR2,RV_OK,TK_NotStart,A3170,Conduits&outlets,,840,840,80,0,0,0,80,0,0,0,,,,"Friday, June 21, 2013","Sunday, June 30, 2013",,"Friday, March 8, 2013","Sunday, March 17, 2013","Friday, March 8, 2013","Sunday, March 17, 2013","Friday, March 8, 2013","Sunday, March 17, 2013",,6/21/2013 8:00,6/30/2013 17:00,,PT_Normal,,,,,sBkf8dWsR0ilcPcWT4RPHQ,x2SUypK+B0W0Hwxl9ykoAQ,,,N,0,0,,,3/12/2012 15:35,3/18/2012 22:47,admin,NotPrmUser
197,94794,1685,12293,794,1,0,N,N,N,CP_Drtn,TT_Task,DT_FixedDUR2,RV_OK,TK_NotStart,A3220,Lighting & power panels,,624,0,32,0,0,0,32,0,0,0,,,,"Thursday, June 27, 2013","Sunday, June 30, 2013",,"Wednesday, April 10, 2013","Saturday, April 13, 2013","Wednesday, April 10, 2013","Saturday, April 13, 2013","Wednesday, April 10, 2013","Saturday, April 13, 2013",,6/27/2013 8:00,6/30/2013 17:00,,PT_Normal,,,,,xQ3l1xnz0UCTza/g2wvHrQ,0PwVC6fuGUurzFECvVVIVg,,,N,0,0,,,3/12/2012 15:35,3/18/2012 13:24,admin,admin
198,94795,1685,12293,794,1,0,N,N,N,CP_Drtn,TT_Task,DT_FixedDUR2,RV_OK,TK_NotStart,A3180,Cable trays,,680,680,40,0,0,0,40,0,0,0,,,,"Wednesday, June 26, 2013","Sunday, June 30, 2013",,"Tuesday, April 2, 2013","Saturday, April 6, 2013","Tuesday, April 2, 2013","Saturday, April 6, 2013","Tuesday, April 2, 2013","Saturday, April 6, 2013",,6/26/2013 8:00,6/30/2013 17:00,,PT_Normal,,,,,/B9eo2YZkk6m9upmNbWxRA,TdSgOflHc0SmHZ9SmthlTg,,,N,0,0,,,3/12/2012 15:35,3/18/2012 22:47,admin,NotPrmUser
199,94796,1685,12293,794,1,0,N,N,N,CP_Drtn,TT_Task,DT_FixedDUR2,RV_OK,TK_NotStart,A3190,Telecommunications system & outlets,,624,624,48,0,0,0,48,0,0,0,,,,"Tuesday, June 25, 2013","Sunday, June 30, 2013",,"Monday, April 8, 2013","Saturday, April 13, 2013","Monday, April 8, 2013","Saturday, April 13, 2013","Monday, April 8, 2013","Saturday, April 13, 2013",,6/25/2013 8:00,6/30/2013 17:00,,PT_Normal,,,,,WuXTPrDTAUWeYsVLQpzlnw,C+NdeWu7tk2Rh7jSPYbU7w,,,N,0,0,,,3/12/2012 15:35,3/18/2012 22:47,admin,NotPrmUser
200,94797,1685,12293,794,1,0,N,N,N,CP_Drtn,TT_Task,DT_FixedDUR2,RV_OK,TK_NotStart,A3200,Fire alarm system,,616,616,40,0,0,0,40,0,0,0,,,,"Wednesday, June 26, 2013","Sunday, June 30, 2013",,"Wednesday, April 10, 2013","Sunday, April 14, 2013","Wednesday, April 10, 2013","Sunday, April 14, 2013","Wednesday, April 10, 2013","Sunday, April 14, 2013",,6/26/2013 8:00,6/30/2013 17:00,,PT_Normal,,,,,bgqjwV0U9UCuoc35E7d5Ug,0ZraE4vpSEWB+2QyWsGYhw,,,N,0,0,,,3/12/2012 15:35,3/18/2012 22:47,admin,NotPrmUser
201,94798,1685,12293,794,1,0,N,N,N,CP_Drtn,TT_Task,DT_FixedDUR2,RV_OK,TK_NotStart,A3230,Grounding&bonding,,904,352,32,0,0,0,32,0,0,0,,,,"Monday, June 24, 2013","Thursday, June 27, 2013",,"Sunday, March 3, 2013","Wednesday, March 6, 2013","Sunday, March 3, 2013","Wednesday, March 6, 2013","Sunday, March 3, 2013","Wednesday, March 6, 2013",,6/24/2013 8:00,6/27/2013 17:00,,PT_Normal,,,,,0FWGeHqNikK34fXBnSbsZw,moEDfS98YUafTl2MSck6zg,,,N,0,0,,,3/12/2012 15:35,3/18/2012 13:24,admin,admin
202,94799,1685,12293,794,1,0,N,N,N,CP_Drtn,TT_Task,DT_FixedDUR2,RV_OK,TK_NotStart,A3210,Wires&cables,,648,648,8,0,0,0,8,0,0,0,,,,"Sunday, June 30, 2013","Sunday, June 30, 2013",,"Wednesday, April 10, 2013","Wednesday, April 10, 2013","Wednesday, April 10, 2013","Wednesday, April 10, 2013","Wednesday, April 10, 2013","Wednesday, April 10, 2013",,6/30/2013 8:00,6/30/2013 17:00,,PT_Normal,,,,,FLLt+OZ9Eku6YGL6PoGqEQ,1x+RMJwDGEKwQmeECwRCvQ,,,N,0,0,,,3/12/2012 15:35,3/18/2012 22:47,admin,NotPrmUser
203,94800,1685,12289,794,1,0,N,N,N,CP_Drtn,TT_Task,DT_FixedDUR2,RV_OK,TK_NotStart,A3240,Conduits&outlets,,504,504,640,0,0,0,640,0,0,0,,,,"Friday, April 12, 2013","Sunday, June 30, 2013",,"Friday, February 8, 2013","Sunday, April 28, 2013","Friday, February 8, 2013","Sunday, April 28, 2013","Friday, February 8, 2013","Sunday, April 28, 2013",,4/12/2013 8:00,6/30/2013 17:00,,PT_Normal,,,,,rIZCzDB/D06W0MlHwP2feQ,x2SUypK+B0W0Hwxl9ykoAQ,,,N,0,0,,,3/12/2012 15:35,3/18/2012 22:47,admin,NotPrmUser
204,94801,1685,12289,794,1,0,N,N,N,CP_Drtn,TT_Task,DT_FixedDUR2,RV_OK,TK_NotStart,A3290,Lighting & power panels,,456,0,112,0,0,0,112,0,0,0,,,,"Monday, June 17, 2013","Sunday, June 30, 2013",,"Sunday, April 21, 2013","Saturday, May 4, 2013","Sunday, April 21, 2013","Saturday, May 4, 2013","Sunday, April 21, 2013","Saturday, May 4, 2013",,6/17/2013 8:00,6/30/2013 17:00,,PT_Normal,,,,,KY4PjrD8Z0W/v8kmu1WVig,0PwVC6fuGUurzFECvVVIVg,,,N,0,0,,,3/12/2012 15:35,3/18/2012 21:41,admin,NotPrmUser
205,94802,1685,12289,794,1,0,N,N,N,CP_Drtn,TT_Task,DT_FixedDUR2,RV_OK,TK_NotStart,A3250,Cable trays,,424,424,320,0,0,0,320,0,0,0,,,,"Wednesday, May 22, 2013","Sunday, June 30, 2013",,"Saturday, March 30, 2013","Wednesday, May 8, 2013","Saturday, March 30, 2013","Wednesday, May 8, 2013","Saturday, March 30, 2013","Wednesday, May 8, 2013",,5/22/2013 8:00,6/30/2013 17:00,,PT_Normal,,,,,R5DA1Ed930KRar+/Z2Mf4A,TdSgOflHc0SmHZ9SmthlTg,,,N,0,0,,,3/12/2012 15:35,3/18/2012 22:47,admin,NotPrmUser
206,94803,1685,12289,794,1,0,N,N,N,CP_Drtn,TT_Task,DT_FixedDUR2,RV_OK,TK_NotStart,A3260,Telecommunications system & outlets,,456,456,64,0,0,0,64,0,0,0,,,,"Sunday, June 23, 2013","Sunday, June 30, 2013",,"Saturday, April 27, 2013","Saturday, May 4, 2013","Saturday, April 27, 2013","Saturday, May 4, 2013","Saturday, April 27, 2013","Saturday, May 4, 2013",,6/23/2013 8:00,6/30/2013 17:00,,PT_Normal,,,,,Z+ZVfwxeJE2bn1YxUtuYBw,C+NdeWu7tk2Rh7jSPYbU7w,,,N,0,0,,,3/12/2012 15:35,3/18/2012 22:47,admin,NotPrmUser
207,94804,1685,12289,794,1,0,N,N,N,CP_Drtn,TT_Task,DT_FixedDUR2,RV_OK,TK_NotStart,A3270,Fire alarm system,,408,408,160,0,0,0,160,0,0,0,,,,"Tuesday, June 11, 2013","Sunday, June 30, 2013",,"Sunday, April 21, 2013","Friday, May 10, 2013","Sunday, April 21, 2013","Friday, May 10, 2013","Sunday, April 21, 2013","Friday, May 10, 2013",,6/11/2013 8:00,6/30/2013 17:00,,PT_Normal,,,,,mt+4hVtWD02A6wr7/54riw,0ZraE4vpSEWB+2QyWsGYhw,,,N,0,0,,,3/12/2012 15:35,3/18/2012 22:47,admin,NotPrmUser
208,94805,1685,12289,794,1,0,N,N,N,CP_Drtn,TT_Task,DT_FixedDUR2,RV_OK,TK_NotStart,A3300,Grounding&bonding,,1096,728,32,0,0,0,32,0,0,0,,,,"Thursday, June 20, 2013","Sunday, June 23, 2013",,"Sunday, February 3, 2013","Wednesday, February 6, 2013","Sunday, February 3, 2013","Wednesday, February 6, 2013","Sunday, February 3, 2013","Wednesday, February 6, 2013",,6/20/2013 8:00,6/23/2013 17:00,,PT_Normal,,,,,A3qAmntFoUuxpDhM3Zs7qw,moEDfS98YUafTl2MSck6zg,,,N,0,0,,,3/12/2012 15:35,3/18/2012 21:42,admin,NotPrmUser
209,94806,1685,12289,794,1,0,N,N,N,CP_Drtn,TT_Task,DT_FixedDUR2,RV_OK,TK_NotStart,A3280,Wires&cables,,424,424,240,0,0,0,240,0,0,0,,,,"Saturday, June 1, 2013","Sunday, June 30, 2013",,"Tuesday, April 9, 2013","Wednesday, May 8, 2013","Tuesday, April 9, 2013","Wednesday, May 8, 2013","Tuesday, April 9, 2013","Wednesday, May 8, 2013",,6/1/2013 8:00,6/30/2013 17:00,,PT_Normal,,,,,1rKIpIS5X0+yB9vEiE4gxw,1x+RMJwDGEKwQmeECwRCvQ,,,N,0,0,,,3/12/2012 15:35,3/18/2012 22:47,admin,NotPrmUser
210,94814,1685,12281,794,1,0,N,N,N,CP_Drtn,TT_Task,DT_FixedDUR2,RV_OK,TK_NotStart,A3380,Conduits&outlets,,952,952,120,0,0,0,120,0,0,0,,,,"Sunday, June 16, 2013","Sunday, June 30, 2013",,"Sunday, February 17, 2013","Sunday, March 3, 2013","Sunday, February 17, 2013","Sunday, March 3, 2013","Sunday, February 17, 2013","Sunday, March 3, 2013",,6/16/2013 8:00,6/30/2013 17:00,,PT_Normal,,,,,yA/z+1gFfk2yz5UmipCOaA,x2SUypK+B0W0Hwxl9ykoAQ,,,N,0,0,,,3/12/2012 15:35,3/18/2012 22:47,admin,NotPrmUser
211,94815,1685,12281,794,1,0,N,N,N,CP_Drtn,TT_Task,DT_FixedDUR2,RV_OK,TK_NotStart,A3430,Lighting & power panels,,768,0,64,0,0,0,64,0,0,0,,,,"Tuesday, June 18, 2013","Tuesday, June 25, 2013",,"Thursday, March 14, 2013","Thursday, March 21, 2013","Thursday, March 14, 2013","Thursday, March 21, 2013","Thursday, March 14, 2013","Thursday, March 21, 2013",,6/18/2013 8:00,6/25/2013 17:00,,PT_Normal,,,,,#NAME?,0PwVC6fuGUurzFECvVVIVg,,,N,0,0,,,3/12/2012 15:35,3/18/2012 13:25,admin,admin
212,94816,1685,12281,794,1,0,N,N,N,CP_Drtn,TT_Task,DT_FixedDUR2,RV_OK,TK_NotStart,A3390,Cable trays,,816,816,56,0,0,0,56,0,0,0,,,,"Monday, June 24, 2013","Sunday, June 30, 2013",,"Thursday, March 14, 2013","Wednesday, March 20, 2013","Thursday, March 14, 2013","Wednesday, March 20, 2013","Thursday, March 14, 2013","Wednesday, March 20, 2013",,6/24/2013 8:00,6/30/2013 17:00,,PT_Normal,,,,,PLi73GRJ90yXtkbpKWUR3Q,TdSgOflHc0SmHZ9SmthlTg,,,N,0,0,,,3/12/2012 15:35,3/18/2012 22:47,admin,NotPrmUser
213,94817,1685,12281,794,1,0,N,N,N,CP_Drtn,TT_Task,DT_FixedDUR2,RV_OK,TK_NotStart,A3400,Telecommunications system & outlets,,768,768,40,0,0,0,40,0,0,0,,,,"Wednesday, June 26, 2013","Sunday, June 30, 2013",,"Friday, March 22, 2013","Tuesday, March 26, 2013","Friday, March 22, 2013","Tuesday, March 26, 2013","Friday, March 22, 2013","Tuesday, March 26, 2013",,6/26/2013 8:00,6/30/2013 17:00,,PT_Normal,,,,,2USQ/5mhQkKaxh+qHjZdyg,C+NdeWu7tk2Rh7jSPYbU7w,,,N,0,0,,,3/12/2012 15:35,3/18/2012 22:47,admin,NotPrmUser
214,94818,1685,12281,794,1,0,N,N,N,CP_Drtn,TT_Task,DT_FixedDUR2,RV_OK,TK_NotStart,A3410,Fire alarm system,,792,792,80,0,0,0,80,0,0,0,,,,"Friday, June 21, 2013","Sunday, June 30, 2013",,"Thursday, March 14, 2013","Saturday, March 23, 2013","Thursday, March 14, 2013","Saturday, March 23, 2013","Thursday, March 14, 2013","Saturday, March 23, 2013",,6/21/2013 8:00,6/30/2013 17:00,,PT_Normal,,,,,So/qkuzaGkyn9P85hd48Lw,0ZraE4vpSEWB+2QyWsGYhw,,,N,0,0,,,3/12/2012 15:35,3/18/2012 22:47,admin,NotPrmUser
215,94819,1685,12281,794,1,0,N,N,N,CP_Drtn,TT_Task,DT_FixedDUR2,RV_OK,TK_NotStart,A3440,Grounding&bonding,,712,0,32,0,0,0,32,0,0,0,,,,"Monday, June 24, 2013","Thursday, June 27, 2013",,"Wednesday, March 27, 2013","Saturday, March 30, 2013","Wednesday, March 27, 2013","Saturday, March 30, 2013","Wednesday, March 27, 2013","Saturday, March 30, 2013",,6/24/2013 8:00,6/27/2013 17:00,,PT_Normal,,,,,7d6pNBABv0CMfVHTS48f0Q,moEDfS98YUafTl2MSck6zg,,,N,0,0,,,3/12/2012 15:35,3/18/2012 13:25,admin,admin
216,94820,1685,12281,794,1,0,N,N,N,CP_Drtn,TT_Task,DT_FixedDUR2,RV_OK,TK_NotStart,A3420,Wires&cables,,704,704,64,0,0,0,64,0,0,0,,,,"Sunday, June 23, 2013","Sunday, June 30, 2013",,"Wednesday, March 27, 2013","Wednesday, April 3, 2013","Wednesday, March 27, 2013","Wednesday, April 3, 2013","Wednesday, March 27, 2013","Wednesday, April 3, 2013",,6/23/2013 8:00,6/30/2013 17:00,,PT_Normal,,,,,9O1DAz9OpEunH3iyr/H8Ug,1x+RMJwDGEKwQmeECwRCvQ,,,N,0,0,,,3/12/2012 15:35,3/18/2012 22:47,admin,NotPrmUser
217,94821,1685,12277,794,1,0,N,N,N,CP_Drtn,TT_Task,DT_FixedDUR2,RV_OK,TK_NotStart,A3450,Conduits&outlets,,1200,1200,480,0,0,0,480,0,0,0,,,,"Thursday, May 2, 2013","Sunday, June 30, 2013",,"Monday, December 3, 2012","Thursday, January 31, 2013","Monday, December 3, 2012","Thursday, January 31, 2013","Monday, December 3, 2012","Thursday, January 31, 2013",,5/2/2013 8:00,6/30/2013 17:00,,PT_Normal,,,,,o4UMwIupcEaOKHVZ80VHUA,x2SUypK+B0W0Hwxl9ykoAQ,,,N,0,0,,,3/12/2012 15:36,3/18/2012 22:47,admin,NotPrmUser
218,94822,1685,12277,794,1,0,N,N,N,CP_Drtn,TT_Task,DT_FixedDUR2,RV_OK,TK_NotStart,A3500,Lighting & power panels,,744,0,320,0,0,0,320,0,0,0,,,,"Wednesday, May 22, 2013","Sunday, June 30, 2013",,"Monday, February 18, 2013","Friday, March 29, 2013","Monday, February 18, 2013","Friday, March 29, 2013","Monday, February 18, 2013","Friday, March 29, 2013",,5/22/2013 8:00,6/30/2013 17:00,,PT_Normal,,,,,ckzG9X8ByU+P8GoFYuv0jg,0PwVC6fuGUurzFECvVVIVg,,,N,0,0,,,3/12/2012 15:36,3/16/2012 15:23,admin,admin
219,94823,1685,12277,794,1,0,N,N,N,CP_Drtn,TT_Task,DT_FixedDUR2,RV_OK,TK_NotStart,A3460,Cable trays,,424,0,320,0,0,0,320,0,0,0,,,,"Sunday, February 24, 2013","Thursday, April 4, 2013",,"Wednesday, January 2, 2013","Sunday, February 10, 2013","Wednesday, January 2, 2013","Sunday, February 10, 2013","Wednesday, January 2, 2013","Sunday, February 10, 2013",,2/24/2013 8:00,4/4/2013 17:00,,PT_Normal,,,,,TITA6BfADEuNM5abZ/rQIQ,TdSgOflHc0SmHZ9SmthlTg,,,N,0,0,,,3/12/2012 15:36,3/16/2012 15:23,admin,admin
220,94824,1685,12277,794,1,0,N,N,N,CP_Drtn,TT_Task,DT_FixedDUR2,RV_OK,TK_NotStart,A3470,Telecommunications system & outlets,,744,744,64,0,0,0,64,0,0,0,,,,"Sunday, June 23, 2013","Sunday, June 30, 2013",,"Friday, March 22, 2013","Friday, March 29, 2013","Friday, March 22, 2013","Friday, March 29, 2013","Friday, March 22, 2013","Friday, March 29, 2013",,6/23/2013 8:00,6/30/2013 17:00,,PT_Normal,,,,,RK18wOCuSkSDIOk8kIb9Vg,C+NdeWu7tk2Rh7jSPYbU7w,,,N,0,0,,,3/12/2012 15:36,3/18/2012 22:47,admin,NotPrmUser
221,94825,1685,12277,794,1,0,N,N,N,CP_Drtn,TT_Task,DT_FixedDUR2,RV_OK,TK_NotStart,A3480,Fire alarm system,,504,504,560,0,0,0,560,0,0,0,,,,"Monday, April 22, 2013","Sunday, June 30, 2013",,"Monday, February 18, 2013","Sunday, April 28, 2013","Monday, February 18, 2013","Sunday, April 28, 2013","Monday, February 18, 2013","Sunday, April 28, 2013",,4/22/2013 8:00,6/30/2013 17:00,,PT_Normal,,,,,9mitGnLVsEyvGXVu7H91rw,0ZraE4vpSEWB+2QyWsGYhw,,,N,0,0,,,3/12/2012 15:36,3/18/2012 22:47,admin,NotPrmUser
222,94826,1685,12277,794,1,0,N,N,N,CP_Drtn,TT_Task,DT_FixedDUR2,RV_OK,TK_NotStart,A3510,Grounding&bonding,,1720,0,64,0,0,0,64,0,0,0,,,,"Sunday, June 16, 2013","Sunday, June 23, 2013",,"Tuesday, November 13, 2012","Tuesday, November 20, 2012","Tuesday, November 13, 2012","Tuesday, November 20, 2012","Tuesday, November 13, 2012","Tuesday, November 20, 2012",,6/16/2013 8:00,6/23/2013 17:00,,PT_Normal,,,,,8Jh0T9QpoEOV0GH5bPEmnA,moEDfS98YUafTl2MSck6zg,,,N,0,0,,,3/12/2012 15:36,3/16/2012 15:23,admin,admin
223,94827,1685,12277,794,1,0,N,N,N,CP_Drtn,TT_Task,DT_FixedDUR2,RV_OK,TK_NotStart,A3490,Wires&cables,,424,424,640,0,0,0,640,0,0,0,,,,"Friday, April 12, 2013","Sunday, June 30, 2013",,"Monday, February 18, 2013","Wednesday, May 8, 2013","Monday, February 18, 2013","Wednesday, May 8, 2013","Monday, February 18, 2013","Wednesday, May 8, 2013",,4/12/2013 8:00,6/30/2013 17:00,,PT_Normal,,,,,oH5VBaa0SEmSsv8xE7F9hw,1x+RMJwDGEKwQmeECwRCvQ,,,N,0,0,,,3/12/2012 15:36,3/18/2012 22:47,admin,NotPrmUser
224,94828,1685,12273,794,1,0,N,N,N,CP_Drtn,TT_Task,DT_FixedDUR2,RV_OK,TK_NotStart,A3520,Conduits&outlets,,1400,1400,240,0,0,0,240,0,0,0,,,,"Saturday, June 1, 2013","Sunday, June 30, 2013",,"Saturday, December 8, 2012","Sunday, January 6, 2013","Saturday, December 8, 2012","Sunday, January 6, 2013","Saturday, December 8, 2012","Sunday, January 6, 2013",,6/1/2013 8:00,6/30/2013 17:00,,PT_Normal,,,,,SS7+FaSihkCxH+qf6SFjKg,x2SUypK+B0W0Hwxl9ykoAQ,,,N,0,0,,,3/12/2012 15:36,3/18/2012 22:47,admin,NotPrmUser
225,94829,1685,12273,794,1,0,N,N,N,CP_Drtn,TT_Task,DT_FixedDUR2,RV_OK,TK_NotStart,A3570,Lighting & power panels,,976,0,64,0,0,0,64,0,0,0,,,,"Sunday, June 23, 2013","Sunday, June 30, 2013",,"Thursday, February 21, 2013","Thursday, February 28, 2013","Thursday, February 21, 2013","Thursday, February 28, 2013","Thursday, February 21, 2013","Thursday, February 28, 2013",,6/23/2013 8:00,6/30/2013 17:00,,PT_Normal,,,,,E7bHLP+gKESHY+qxGALqHg,0PwVC6fuGUurzFECvVVIVg,,,N,0,0,,,3/12/2012 15:36,3/16/2012 15:23,admin,admin
226,94830,1685,12273,794,1,0,N,N,N,CP_Drtn,TT_Task,DT_FixedDUR2,RV_OK,TK_NotStart,A3530,Cable trays,,1200,1200,120,0,0,0,120,0,0,0,,,,"Sunday, June 16, 2013","Sunday, June 30, 2013",,"Thursday, January 17, 2013","Thursday, January 31, 2013","Thursday, January 17, 2013","Thursday, January 31, 2013","Thursday, January 17, 2013","Thursday, January 31, 2013",,6/16/2013 8:00,6/30/2013 17:00,,PT_Normal,,,,,msAW47d+s0KGkweVq1Tk0g,TdSgOflHc0SmHZ9SmthlTg,,,N,0,0,,,3/12/2012 15:36,3/18/2012 22:47,admin,NotPrmUser
227,94831,1685,12273,794,1,0,N,N,N,CP_Drtn,TT_Task,DT_FixedDUR2,RV_OK,TK_NotStart,A3540,Telecommunications system & outlets,,976,976,64,0,0,0,64,0,0,0,,,,"Sunday, June 23, 2013","Sunday, June 30, 2013",,"Thursday, February 21, 2013","Thursday, February 28, 2013","Thursday, February 21, 2013","Thursday, February 28, 2013","Thursday, February 21, 2013","Thursday, February 28, 2013",,6/23/2013 8:00,6/30/2013 17:00,,PT_Normal,,,,,BNcFAbb1LUOXpCJnvNPkpw,C+NdeWu7tk2Rh7jSPYbU7w,,,N,0,0,,,3/12/2012 15:36,3/18/2012 22:47,admin,NotPrmUser
228,94832,1685,12273,794,1,0,N,N,N,CP_Drtn,TT_Task,DT_FixedDUR2,RV_OK,TK_NotStart,A3550,Fire alarm system,,984,984,56,0,0,0,56,0,0,0,,,,"Monday, June 24, 2013","Sunday, June 30, 2013",,"Thursday, February 21, 2013","Wednesday, February 27, 2013","Thursday, February 21, 2013","Wednesday, February 27, 2013","Thursday, February 21, 2013","Wednesday, February 27, 2013",,6/24/2013 8:00,6/30/2013 17:00,,PT_Normal,,,,,z6yIvjl7DE2zCxXbTeeM7w,0ZraE4vpSEWB+2QyWsGYhw,,,N,0,0,,,3/12/2012 15:36,3/18/2012 22:47,admin,NotPrmUser
229,94833,1685,12273,794,1,0,N,N,N,CP_Drtn,TT_Task,DT_FixedDUR2,RV_OK,TK_NotStart,A3580,Grounding&bonding,,1584,720,40,0,0,0,40,0,0,0,,,,"Wednesday, June 19, 2013","Sunday, June 23, 2013",,"Monday, December 3, 2012","Friday, December 7, 2012","Monday, December 3, 2012","Friday, December 7, 2012","Monday, December 3, 2012","Friday, December 7, 2012",,6/19/2013 8:00,6/23/2013 17:00,,PT_Normal,,,,,fbzVdF2KK02I9b4RY4TgyQ,moEDfS98YUafTl2MSck6zg,,,N,0,0,,,3/12/2012 15:36,3/16/2012 15:23,admin,admin
230,94834,1685,12273,794,1,0,N,N,N,CP_Drtn,TT_Task,DT_FixedDUR2,RV_OK,TK_NotStart,A3560,Wires&cables,,1000,1000,40,0,0,0,40,0,0,0,,,,"Wednesday, June 26, 2013","Sunday, June 30, 2013",,"Thursday, February 21, 2013","Monday, February 25, 2013","Thursday, February 21, 2013","Monday, February 25, 2013","Thursday, February 21, 2013","Monday, February 25, 2013",,6/26/2013 8:00,6/30/2013 17:00,,PT_Normal,,,,,MATFjdcib0mWo2BIe8zD2w,1x+RMJwDGEKwQmeECwRCvQ,,,N,0,0,,,3/12/2012 15:36,3/18/2012 22:47,admin,NotPrmUser
231,94835,1685,12269,794,1,0,N,N,N,CP_Drtn,TT_Task,DT_FixedDUR2,RV_OK,TK_NotStart,A3590,Conduits&outlets,,1264,1264,56,0,0,0,56,0,0,0,,,,"Monday, June 24, 2013","Sunday, June 30, 2013",,"Thursday, January 17, 2013","Wednesday, January 23, 2013","Thursday, January 17, 2013","Wednesday, January 23, 2013","Thursday, January 17, 2013","Wednesday, January 23, 2013",,6/24/2013 8:00,6/30/2013 17:00,,PT_Normal,,,,,KD50pB/4IESfDIWwi39D3Q,x2SUypK+B0W0Hwxl9ykoAQ,,,N,0,0,,,3/12/2012 15:36,3/18/2012 22:47,admin,NotPrmUser
232,94836,1685,12269,794,1,0,N,N,N,CP_Drtn,TT_Task,DT_FixedDUR2,RV_OK,TK_NotStart,A3640,Lighting & power panels,,952,0,64,0,0,0,64,0,0,0,,,,"Sunday, June 23, 2013","Sunday, June 30, 2013",,"Sunday, February 24, 2013","Sunday, March 3, 2013","Sunday, February 24, 2013","Sunday, March 3, 2013","Sunday, February 24, 2013","Sunday, March 3, 2013",,6/23/2013 8:00,6/30/2013 17:00,,PT_Normal,,,,,4D5SEKE20U+J66NdNNxfmw,0PwVC6fuGUurzFECvVVIVg,,,N,0,0,,,3/12/2012 15:36,3/18/2012 13:25,admin,admin
233,94837,1685,12269,794,1,0,N,N,N,CP_Drtn,TT_Task,DT_FixedDUR2,RV_OK,TK_NotStart,A3600,Cable trays,,912,912,240,0,0,0,240,0,0,0,,,,"Saturday, June 1, 2013","Sunday, June 30, 2013",,"Thursday, February 7, 2013","Friday, March 8, 2013","Thursday, February 7, 2013","Friday, March 8, 2013","Thursday, February 7, 2013","Friday, March 8, 2013",,6/1/2013 8:00,6/30/2013 17:00,,PT_Normal,,,,,UtafeOrJVkySqqcR1LC0nQ,TdSgOflHc0SmHZ9SmthlTg,,,N,0,0,,,3/12/2012 15:36,3/18/2012 22:47,admin,NotPrmUser
234,94838,1685,12269,794,1,0,N,N,N,CP_Drtn,TT_Task,DT_FixedDUR2,RV_OK,TK_NotStart,A3610,Telecommunications system & outlets,,952,952,64,0,0,0,64,0,0,0,,,,"Sunday, June 23, 2013","Sunday, June 30, 2013",,"Sunday, February 24, 2013","Sunday, March 3, 2013","Sunday, February 24, 2013","Sunday, March 3, 2013","Sunday, February 24, 2013","Sunday, March 3, 2013",,6/23/2013 8:00,6/30/2013 17:00,,PT_Normal,,,,,NbgP0EkbmE+sJgo/XIsn7w,C+NdeWu7tk2Rh7jSPYbU7w,,,N,0,0,,,3/12/2012 15:36,3/18/2012 22:47,admin,NotPrmUser
235,94839,1685,12269,794,1,0,N,N,N,CP_Drtn,TT_Task,DT_FixedDUR2,RV_OK,TK_NotStart,A3620,Fire alarm system,,896,896,120,0,0,0,120,0,0,0,,,,"Sunday, June 16, 2013","Sunday, June 30, 2013",,"Sunday, February 24, 2013","Sunday, March 10, 2013","Sunday, February 24, 2013","Sunday, March 10, 2013","Sunday, February 24, 2013","Sunday, March 10, 2013",,6/16/2013 8:00,6/30/2013 17:00,,PT_Normal,,,,,DjMNal1zoUW7j6BOCzWirg,0ZraE4vpSEWB+2QyWsGYhw,,,N,0,0,,,3/12/2012 15:36,3/18/2012 22:47,admin,NotPrmUser
236,94840,1685,12269,794,1,0,N,N,N,CP_Drtn,TT_Task,DT_FixedDUR2,RV_OK,TK_NotStart,A3650,Grounding&bonding,,1336,1336,40,0,0,0,40,0,0,0,,,,"Wednesday, June 26, 2013","Sunday, June 30, 2013",,"Thursday, January 10, 2013","Monday, January 14, 2013","Thursday, January 10, 2013","Monday, January 14, 2013","Thursday, January 10, 2013","Monday, January 14, 2013",,6/26/2013 8:00,6/30/2013 17:00,,PT_Normal,,,,,3ODDC5zWkEOaps5L4xYl8g,moEDfS98YUafTl2MSck6zg,,,N,0,0,,,3/12/2012 15:36,3/18/2012 22:47,admin,NotPrmUser
237,94841,1685,12269,794,1,0,N,N,N,CP_Drtn,TT_Task,DT_FixedDUR2,RV_OK,TK_NotStart,A3630,Wires&cables,,696,696,240,0,0,0,240,0,0,0,,,,"Saturday, June 1, 2013","Sunday, June 30, 2013",,"Wednesday, March 6, 2013","Thursday, April 4, 2013","Wednesday, March 6, 2013","Thursday, April 4, 2013","Wednesday, March 6, 2013","Thursday, April 4, 2013",,6/1/2013 8:00,6/30/2013 17:00,,PT_Normal,,,,,KrDrjiO4j0OurkiCwUPqpA,1x+RMJwDGEKwQmeECwRCvQ,,,N,0,0,,,3/12/2012 15:36,3/18/2012 22:47,admin,NotPrmUser
238,94842,1685,12265,794,1,0,N,N,N,CP_Drtn,TT_Task,DT_FixedDUR2,RV_OK,TK_NotStart,A3660,Conduits&outlets,,1488,1488,56,0,0,0,56,0,0,0,,,,"Monday, June 24, 2013","Sunday, June 30, 2013",,"Thursday, December 20, 2012","Wednesday, December 26, 2012","Thursday, December 20, 2012","Wednesday, December 26, 2012","Thursday, December 20, 2012","Wednesday, December 26, 2012",,6/24/2013 8:00,6/30/2013 17:00,,PT_Normal,,,,,gKasH0/Z4Ei2ksn+/bWHwA,x2SUypK+B0W0Hwxl9ykoAQ,,,N,0,0,,,3/12/2012 15:36,3/18/2012 22:47,admin,NotPrmUser
239,94843,1685,12265,794,1,0,N,N,N,CP_Drtn,TT_Task,DT_FixedDUR2,RV_OK,TK_NotStart,A3710,Lighting & power panels,,1184,0,64,0,0,0,64,0,0,0,,,,"Sunday, June 23, 2013","Sunday, June 30, 2013",,"Saturday, January 26, 2013","Saturday, February 2, 2013","Saturday, January 26, 2013","Saturday, February 2, 2013","Saturday, January 26, 2013","Saturday, February 2, 2013",,6/23/2013 8:00,6/30/2013 17:00,,PT_Normal,,,,,Mj0Jwb9/iESskdRFISqIIw,0PwVC6fuGUurzFECvVVIVg,,,N,0,0,,,3/12/2012 15:36,3/18/2012 13:30,admin,admin
240,94844,1685,12265,794,1,0,N,N,N,CP_Drtn,TT_Task,DT_FixedDUR2,RV_OK,TK_NotStart,A3670,Cable trays,,1128,1128,240,0,0,0,240,0,0,0,,,,"Saturday, June 1, 2013","Sunday, June 30, 2013",,"Friday, January 11, 2013","Saturday, February 9, 2013","Friday, January 11, 2013","Saturday, February 9, 2013","Friday, January 11, 2013","Saturday, February 9, 2013",,6/1/2013 8:00,6/30/2013 17:00,,PT_Normal,,,,,MfjqQJgA3EKupjjv/l476Q,TdSgOflHc0SmHZ9SmthlTg,,,N,0,0,,,3/12/2012 15:36,3/18/2012 22:47,admin,NotPrmUser
241,94845,1685,12265,794,1,0,N,N,N,CP_Drtn,TT_Task,DT_FixedDUR2,RV_OK,TK_NotStart,A3680,Telecommunications system & outlets,,1184,1184,64,0,0,0,64,0,0,0,,,,"Sunday, June 23, 2013","Sunday, June 30, 2013",,"Saturday, January 26, 2013","Saturday, February 2, 2013","Saturday, January 26, 2013","Saturday, February 2, 2013","Saturday, January 26, 2013","Saturday, February 2, 2013",,6/23/2013 8:00,6/30/2013 17:00,,PT_Normal,,,,,XAIveax7mEKcJMCyGbNNsg,C+NdeWu7tk2Rh7jSPYbU7w,,,N,0,0,,,3/12/2012 15:36,3/18/2012 22:47,admin,NotPrmUser
242,94846,1685,12265,794,1,0,N,N,N,CP_Drtn,TT_Task,DT_FixedDUR2,RV_OK,TK_NotStart,A3690,Fire alarm system,,1128,1128,120,0,0,0,120,0,0,0,,,,"Sunday, June 16, 2013","Sunday, June 30, 2013",,"Saturday, January 26, 2013","Saturday, February 9, 2013","Saturday, January 26, 2013","Saturday, February 9, 2013","Saturday, January 26, 2013","Saturday, February 9, 2013",,6/16/2013 8:00,6/30/2013 17:00,,PT_Normal,,,,,7VJC4VVmUEq8DNncyB7h6g,0ZraE4vpSEWB+2QyWsGYhw,,,N,0,0,,,3/12/2012 15:36,3/18/2012 22:47,admin,NotPrmUser
243,94847,1685,12265,794,1,0,N,N,N,CP_Drtn,TT_Task,DT_FixedDUR2,RV_OK,TK_NotStart,A3720,Grounding&bonding,,1608,1608,40,0,0,0,40,0,0,0,,,,"Wednesday, June 26, 2013","Sunday, June 30, 2013",,"Friday, December 7, 2012","Tuesday, December 11, 2012","Friday, December 7, 2012","Tuesday, December 11, 2012","Friday, December 7, 2012","Tuesday, December 11, 2012",,6/26/2013 8:00,6/30/2013 17:00,,PT_Normal,,,,,BPTw76bb2UyjAiTIUtOGqQ,moEDfS98YUafTl2MSck6zg,,,N,0,0,,,3/12/2012 15:36,3/18/2012 22:47,admin,NotPrmUser
244,94848,1685,12265,794,1,0,N,N,N,CP_Drtn,TT_Task,DT_FixedDUR2,RV_OK,TK_NotStart,A3700,Wires&cables,,928,928,240,0,0,0,240,0,0,0,,,,"Saturday, June 1, 2013","Sunday, June 30, 2013",,"Tuesday, February 5, 2013","Wednesday, March 6, 2013","Tuesday, February 5, 2013","Wednesday, March 6, 2013","Tuesday, February 5, 2013","Wednesday, March 6, 2013",,6/1/2013 8:00,6/30/2013 17:00,,PT_Normal,,,,,W4XjV409wUe66Ov3ue28AQ,1x+RMJwDGEKwQmeECwRCvQ,,,N,0,0,,,3/12/2012 15:36,3/18/2012 22:47,admin,NotPrmUser
245,95132,1685,12261,794,1,0,N,N,N,CP_Drtn,TT_Task,DT_FixedDUR2,RV_OK,TK_NotStart,A3730,Equipment installation,,696,696,56,0,0,0,56,0,0,0,,,,"Monday, June 24, 2013","Sunday, June 30, 2013",,"Friday, March 29, 2013","Thursday, April 4, 2013","Friday, March 29, 2013","Thursday, April 4, 2013","Friday, March 29, 2013","Thursday, April 4, 2013",,6/24/2013 8:00,6/30/2013 17:00,,PT_Normal,,,,,RQ2ogQg56EyZ15sj2NNw5g,,,,N,0,0,,,3/13/2012 10:30,3/18/2012 22:47,admin,NotPrmUser
246,95133,1685,12297,794,1,0,N,N,N,CP_Drtn,TT_Task,DT_FixedDUR2,RV_OK,TK_NotStart,A3740,Equipment installation,,584,584,16,0,0,0,16,0,0,0,,,,"Saturday, June 29, 2013","Sunday, June 30, 2013",,"Wednesday, April 17, 2013","Thursday, April 18, 2013","Wednesday, April 17, 2013","Thursday, April 18, 2013","Wednesday, April 17, 2013","Thursday, April 18, 2013",,6/29/2013 8:00,6/30/2013 17:00,,PT_Normal,,,,,J0ZFIivVKE+p55ngBqM9EA,RQ2ogQg56EyZ15sj2NNw5g,,,N,0,0,,,3/13/2012 10:32,3/18/2012 22:47,admin,NotPrmUser
247,95134,1685,12293,794,1,0,N,N,N,CP_Drtn,TT_Task,DT_FixedDUR2,RV_OK,TK_NotStart,A3750,Equipment installation,,552,552,24,0,0,0,24,0,0,0,,,,"Friday, June 28, 2013","Sunday, June 30, 2013",,"Saturday, April 20, 2013","Monday, April 22, 2013","Saturday, April 20, 2013","Monday, April 22, 2013","Saturday, April 20, 2013","Monday, April 22, 2013",,6/28/2013 8:00,6/30/2013 17:00,,PT_Normal,,,,,d7sciMaz9USVu6dIqRTPag,RQ2ogQg56EyZ15sj2NNw5g,,,N,0,0,,,3/13/2012 10:33,3/18/2012 22:47,admin,NotPrmUser
248,95135,1685,12289,794,1,0,N,N,N,CP_Drtn,TT_Task,DT_FixedDUR2,RV_OK,TK_NotStart,A3760,Equipment installation,,368,0,56,0,0,0,56,0,0,0,,,,"Monday, June 24, 2013","Sunday, June 30, 2013",,"Thursday, May 9, 2013","Wednesday, May 15, 2013","Thursday, May 9, 2013","Wednesday, May 15, 2013","Thursday, May 9, 2013","Wednesday, May 15, 2013",,6/24/2013 8:00,6/30/2013 17:00,,PT_Normal,,,,,tHnP/rF8bUa7jouhSxXiMg,RQ2ogQg56EyZ15sj2NNw5g,,,N,0,0,,,3/13/2012 10:33,3/18/2012 21:42,admin,NotPrmUser
249,95137,1685,12281,794,1,0,N,N,N,CP_Drtn,TT_Task,DT_FixedDUR2,RV_OK,TK_NotStart,A3780,Equipment installation,,712,712,24,0,0,0,24,0,0,0,,,,"Friday, June 28, 2013","Sunday, June 30, 2013",,"Sunday, March 31, 2013","Tuesday, April 2, 2013","Sunday, March 31, 2013","Tuesday, April 2, 2013","Sunday, March 31, 2013","Tuesday, April 2, 2013",,6/28/2013 8:00,6/30/2013 17:00,,PT_Normal,,,,,9YPTvx3JP0yOh2SxgSWtRA,RQ2ogQg56EyZ15sj2NNw5g,,,N,0,0,,,3/13/2012 10:33,3/18/2012 22:47,admin,NotPrmUser
250,95138,1685,12277,794,1,0,N,N,N,CP_Drtn,TT_Task,DT_FixedDUR2,RV_OK,TK_NotStart,A3790,Equipment installation,,1720,1720,56,0,0,0,56,0,0,0,,,,"Monday, June 24, 2013","Sunday, June 30, 2013",,"Wednesday, November 21, 2012","Tuesday, November 27, 2012","Wednesday, November 21, 2012","Tuesday, November 27, 2012","Wednesday, November 21, 2012","Tuesday, November 27, 2012",,6/24/2013 8:00,6/30/2013 17:00,,PT_Normal,,,,,56B5GmX29EGnXMwMJROPIA,RQ2ogQg56EyZ15sj2NNw5g,,,N,0,0,,,3/13/2012 10:33,3/18/2012 22:47,admin,NotPrmUser
251,95139,1685,12273,794,1,0,N,N,N,CP_Drtn,TT_Task,DT_FixedDUR2,RV_OK,TK_NotStart,A3800,Equipment installation,,864,864,56,0,0,0,56,0,0,0,,,,"Monday, June 24, 2013","Sunday, June 30, 2013",,"Friday, March 8, 2013","Thursday, March 14, 2013","Friday, March 8, 2013","Thursday, March 14, 2013","Friday, March 8, 2013","Thursday, March 14, 2013",,6/24/2013 8:00,6/30/2013 17:00,,PT_Normal,,,,,4HfsGiMpqEypZ+IM3vsVwg,RQ2ogQg56EyZ15sj2NNw5g,,,N,0,0,,,3/13/2012 10:33,3/18/2012 22:47,admin,NotPrmUser
252,95140,1685,12269,794,1,0,N,N,N,CP_Drtn,TT_Task,DT_FixedDUR2,RV_OK,TK_NotStart,A3810,Equipment installation,,880,880,56,0,0,0,56,0,0,0,,,,"Monday, June 24, 2013","Sunday, June 30, 2013",,"Wednesday, March 6, 2013","Tuesday, March 12, 2013","Wednesday, March 6, 2013","Tuesday, March 12, 2013","Wednesday, March 6, 2013","Tuesday, March 12, 2013",,6/24/2013 8:00,6/30/2013 17:00,,PT_Normal,,,,,oGZGzTkEc0ec56WgX8SnGw,RQ2ogQg56EyZ15sj2NNw5g,,,N,0,0,,,3/13/2012 10:33,3/18/2012 22:47,admin,NotPrmUser
253,95141,1685,12265,794,1,0,N,N,N,CP_Drtn,TT_Task,DT_FixedDUR2,RV_OK,TK_NotStart,A3820,Equipment installation,,1112,1112,56,0,0,0,56,0,0,0,,,,"Monday, June 24, 2013","Sunday, June 30, 2013",,"Tuesday, February 5, 2013","Monday, February 11, 2013","Tuesday, February 5, 2013","Monday, February 11, 2013","Tuesday, February 5, 2013","Monday, February 11, 2013",,6/24/2013 8:00,6/30/2013 17:00,,PT_Normal,,,,,vBckSsRMAkGNB5HfHFQ8wA,RQ2ogQg56EyZ15sj2NNw5g,,,N,0,0,,,3/13/2012 10:33,3/18/2012 22:47,admin,NotPrmUser
254,95142,1685,13420,794,1,0,N,N,N,CP_Drtn,TT_Task,DT_FixedDUR2,RV_OK,TK_NotStart,A3830,Plumbing works(first fix),2909,368,0,16,0,4,4,16,0,0,0,,,,"Thursday, May 23, 2013","Friday, May 24, 2013",,"Sunday, April 7, 2013","Monday, April 8, 2013","Sunday, April 7, 2013","Monday, April 8, 2013","Sunday, April 7, 2013","Monday, April 8, 2013",,5/23/2013 8:00,5/24/2013 17:00,,PT_Normal,,,,,OWBDxq+boUKQdlzkb5WRpQ,54qX33a98UyNWPJSDDlvzQ,,,N,0,0,,,3/13/2012 10:43,3/19/2012 1:06,admin,NotPrmUser
255,95143,1685,13420,794,1,0,N,N,N,CP_Drtn,TT_Task,DT_FixedDUR2,RV_OK,TK_NotStart,A3840,Plumbing works(second fix),,584,584,16,0,0,0,16,0,0,0,,,,"Saturday, June 29, 2013","Sunday, June 30, 2013",,"Wednesday, April 17, 2013","Thursday, April 18, 2013","Wednesday, April 17, 2013","Thursday, April 18, 2013","Wednesday, April 17, 2013","Thursday, April 18, 2013",,6/29/2013 8:00,6/30/2013 17:00,,PT_Normal,,,,,lNUKM4NGV0ivXXD3VSBcUg,7A4hZhegVUu8eEsE73DMTg,,,N,0,0,,,3/13/2012 10:43,3/18/2012 22:47,admin,NotPrmUser
256,95144,1685,13416,794,1,0,N,N,N,CP_Drtn,TT_Task,DT_FixedDUR2,RV_OK,TK_NotStart,A3850,Plumbing works(first fix),2909,368,0,120,0,165,165,120,0,0,0,,,,"Thursday, March 21, 2013","Thursday, April 4, 2013",,"Sunday, February 3, 2013","Sunday, February 17, 2013","Sunday, February 3, 2013","Sunday, February 17, 2013","Sunday, February 3, 2013","Sunday, February 17, 2013",,3/21/2013 8:00,4/4/2013 17:00,,PT_Normal,,,,,OhgfYxrBUU6Npax+g9nt+Q,OWBDxq+boUKQdlzkb5WRpQ,,,N,0,0,,,3/13/2012 13:47,3/19/2012 1:08,admin,NotPrmUser
257,95145,1685,13416,794,1,0,N,N,N,CP_Drtn,TT_Task,DT_FixedDUR2,RV_OK,TK_NotStart,A3860,Plumbing works(second fix),,408,408,120,0,0,0,120,0,0,0,,,,"Sunday, June 16, 2013","Sunday, June 30, 2013",,"Friday, April 26, 2013","Friday, May 10, 2013","Friday, April 26, 2013","Friday, May 10, 2013","Friday, April 26, 2013","Friday, May 10, 2013",,6/16/2013 8:00,6/30/2013 17:00,,PT_Normal,,,,,6usnCfLO30aMGfvwH1V6dg,lNUKM4NGV0ivXXD3VSBcUg,,,N,0,0,,,3/13/2012 13:47,3/18/2012 22:47,admin,NotPrmUser
258,95146,1685,13414,794,1,0,N,N,N,CP_Drtn,TT_Task,DT_FixedDUR2,RV_OK,TK_NotStart,A3870,Plumbing works(first fix),2909,1184,1184,120,0,0,0,120,0,0,0,,,,"Sunday, June 16, 2013","Sunday, June 30, 2013",,"Saturday, January 19, 2013","Saturday, February 2, 2013","Saturday, January 19, 2013","Saturday, February 2, 2013","Saturday, January 19, 2013","Saturday, February 2, 2013",,6/16/2013 8:00,6/30/2013 17:00,,PT_Normal,,,,,dZxZbNNG50O9YwNbUeY9lA,OhgfYxrBUU6Npax+g9nt+Q,,,N,0,0,,,3/13/2012 14:16,3/19/2012 1:07,admin,NotPrmUser
259,95147,1685,13414,794,1,0,N,N,N,CP_Drtn,TT_Task,DT_FixedDUR2,RV_OK,TK_NotStart,A3880,Plumbing works(second fix),,464,464,120,0,0,0,120,0,0,0,,,,"Sunday, June 16, 2013","Sunday, June 30, 2013",,"Friday, April 19, 2013","Friday, May 3, 2013","Friday, April 19, 2013","Friday, May 3, 2013","Friday, April 19, 2013","Friday, May 3, 2013",,6/16/2013 8:00,6/30/2013 17:00,,PT_Normal,,,,,AfEPa07k1UedjQ54grzUfA,6usnCfLO30aMGfvwH1V6dg,,,N,0,0,,,3/13/2012 14:16,3/18/2012 22:47,admin,NotPrmUser
260,95148,1685,13408,794,1,0,N,N,N,CP_Drtn,TT_Task,DT_FixedDUR2,RV_OK,TK_NotStart,A3890,Plumbing works(first fix),2909,808,0,264,0,0,0,264,0,0,0,,,,"Thursday, March 14, 2013","Monday, March 18, 2013",,"Monday, December 3, 2012","Friday, December 7, 2012","Monday, December 3, 2012","Friday, January 4, 2013","Monday, December 3, 2012","Friday, January 4, 2013",,3/14/2013 8:00,3/18/2013 17:00,,PT_Normal,,,,,MPoBET5I2UKTQYEu5yUtxw,OhgfYxrBUU6Npax+g9nt+Q,,,N,0,0,,,3/13/2012 16:25,3/19/2012 1:09,admin,NotPrmUser
261,95149,1685,13408,794,1,0,N,N,N,CP_Drtn,TT_Task,DT_FixedDUR2,RV_OK,TK_NotStart,A3900,Plumbing works(second fix),,880,880,40,0,0,0,40,0,0,0,,,,"Wednesday, June 26, 2013","Sunday, June 30, 2013",,"Friday, March 8, 2013","Tuesday, March 12, 2013","Friday, March 8, 2013","Tuesday, March 12, 2013","Friday, March 8, 2013","Tuesday, March 12, 2013",,6/26/2013 8:00,6/30/2013 17:00,,PT_Normal,,,,,3FVlvIbSgEG5HMIT1FHeUA,6usnCfLO30aMGfvwH1V6dg,,,N,0,0,,,3/13/2012 16:25,3/18/2012 22:47,admin,NotPrmUser
262,95150,1685,13396,794,1,0,N,N,N,CP_Drtn,TT_Task,DT_FixedDUR2,RV_OK,TK_NotStart,A3910,Plumbing works(first fix),2909,1256,0,120,0,61,61,120,0,0,0,,,,"Sunday, June 16, 2013","Sunday, June 30, 2013",,"Thursday, January 10, 2013","Thursday, January 24, 2013","Thursday, January 10, 2013","Thursday, January 24, 2013","Thursday, January 10, 2013","Thursday, January 24, 2013",,6/16/2013 8:00,6/30/2013 17:00,,PT_Normal,,,,,DKL3YLK1cEmZpN81Yym2nQ,OhgfYxrBUU6Npax+g9nt+Q,,,N,0,0,,,3/13/2012 16:25,3/19/2012 1:07,admin,NotPrmUser
263,95151,1685,13396,794,1,0,N,N,N,CP_Drtn,TT_Task,DT_FixedDUR2,RV_OK,TK_NotStart,A3920,Plumbing works(second fix),,816,816,120,0,0,0,120,0,0,0,,,,"Sunday, June 16, 2013","Sunday, June 30, 2013",,"Wednesday, March 6, 2013","Wednesday, March 20, 2013","Wednesday, March 6, 2013","Wednesday, March 20, 2013","Wednesday, March 6, 2013","Wednesday, March 20, 2013",,6/16/2013 8:00,6/30/2013 17:00,,PT_Normal,,,,,YYny6oB0tE6Pol3TOytWjQ,6usnCfLO30aMGfvwH1V6dg,,,N,0,0,,,3/13/2012 16:25,3/18/2012 22:47,admin,NotPrmUser
264,95152,1685,13406,794,1,0,N,N,N,CP_Drtn,TT_Task,DT_FixedDUR2,RV_OK,TK_NotStart,A3930,Plumbing works(first fix),2909,1528,0,120,0,0,0,120,0,0,0,,,,"Sunday, June 16, 2013","Sunday, June 30, 2013",,"Friday, December 7, 2012","Friday, December 21, 2012","Friday, December 7, 2012","Friday, December 21, 2012","Friday, December 7, 2012","Friday, December 21, 2012",,6/16/2013 8:00,6/30/2013 17:00,,PT_Normal,,,,,5nhxnZH0sU25nr31vnH47A,OhgfYxrBUU6Npax+g9nt+Q,,,N,0,0,,,3/13/2012 16:25,3/19/2012 1:07,admin,NotPrmUser
265,95153,1685,13406,794,1,0,N,N,N,CP_Drtn,TT_Task,DT_FixedDUR2,RV_OK,TK_NotStart,A3940,Plumbing works(second fix),,1048,1048,120,0,0,0,120,0,0,0,,,,"Sunday, June 16, 2013","Sunday, June 30, 2013",,"Tuesday, February 5, 2013","Tuesday, February 19, 2013","Tuesday, February 5, 2013","Tuesday, February 19, 2013","Tuesday, February 5, 2013","Tuesday, February 19, 2013",,6/16/2013 8:00,6/30/2013 17:00,,PT_Normal,,,,,E7HWxOY5s0qzFBEbIZyy7A,6usnCfLO30aMGfvwH1V6dg,,,N,0,0,,,3/13/2012 16:25,3/18/2012 22:47,admin,NotPrmUser
266,95154,1685,13412,794,1,0,N,N,N,CP_Drtn,TT_Task,DT_FixedDUR2,RV_OK,TK_NotStart,A3950,Plumbing works(first fix),2909,712,0,32,0,0,0,32,0,0,0,,,,"Monday, June 24, 2013","Thursday, June 27, 2013",,"Wednesday, March 27, 2013","Saturday, March 30, 2013","Wednesday, March 27, 2013","Saturday, March 30, 2013","Wednesday, March 27, 2013","Saturday, March 30, 2013",,6/24/2013 8:00,6/27/2013 17:00,,PT_Normal,,,,,97cOJnXn6kWHCrqcZnOnuQ,dZxZbNNG50O9YwNbUeY9lA,,,N,0,0,,,3/13/2012 16:52,3/19/2012 1:07,admin,NotPrmUser
267,95155,1685,13412,794,1,0,N,N,N,CP_Drtn,TT_Task,DT_FixedDUR2,RV_OK,TK_NotStart,A3960,Plumbing works(second fix),,736,736,32,0,0,0,32,0,0,0,,,,"Thursday, June 27, 2013","Sunday, June 30, 2013",,"Wednesday, March 27, 2013","Saturday, March 30, 2013","Wednesday, March 27, 2013","Saturday, March 30, 2013","Wednesday, March 27, 2013","Saturday, March 30, 2013",,6/27/2013 8:00,6/30/2013 17:00,,PT_Normal,,,,,s9meegfo9k+iFAESDdMPkA,AfEPa07k1UedjQ54grzUfA,,,N,0,0,,,3/13/2012 16:52,3/18/2012 22:47,admin,NotPrmUser
268,95156,1685,13410,794,1,0,N,N,N,CP_Drtn,TT_Task,DT_FixedDUR2,RV_OK,TK_NotStart,A3970,Plumbing works(first fix),2909,424,0,160,0,0,0,160,0,0,0,,,,"Saturday, January 5, 2013","Thursday, January 24, 2013",,"Tuesday, November 13, 2012","Sunday, December 2, 2012","Tuesday, November 13, 2012","Sunday, December 2, 2012","Tuesday, November 13, 2012","Sunday, December 2, 2012",,1/5/2013 8:00,1/24/2013 17:00,,PT_Normal,,,,,wyyLlFFgcUGnrntMOge8zw,MPoBET5I2UKTQYEu5yUtxw,,,N,0,0,,,3/13/2012 17:17,3/19/2012 1:07,NotPrmUser,NotPrmUser
269,95157,1685,13410,794,1,0,N,N,N,CP_Drtn,TT_Task,DT_FixedDUR2,RV_OK,TK_NotStart,A3980,Plumbing works(second fix),,848,848,160,0,0,0,160,0,0,0,,,,"Tuesday, June 11, 2013","Sunday, June 30, 2013",,"Monday, February 25, 2013","Saturday, March 16, 2013","Monday, February 25, 2013","Saturday, March 16, 2013","Monday, February 25, 2013","Saturday, March 16, 2013",,6/11/2013 8:00,6/30/2013 17:00,,PT_Normal,,,,,qbqAuNhsxEykITBUYCcOow,3FVlvIbSgEG5HMIT1FHeUA,,,N,0,0,,,3/13/2012 17:17,3/18/2012 22:47,NotPrmUser,NotPrmUser
270,96672,1685,12246,794,1,0,N,N,N,CP_Drtn,TT_Task,DT_FixedDUR2,RV_OK,TK_NotStart,A4240,Excavation,,1792,0,80,0,0,0,80,0,0,0,,,,"Monday, April 1, 2013","Wednesday, April 10, 2013",,"Monday, August 20, 2012","Wednesday, August 29, 2012","Monday, August 20, 2012","Wednesday, August 29, 2012","Monday, August 20, 2012","Wednesday, August 29, 2012",,4/1/2013 8:00,4/10/2013 17:00,,PT_Normal,,,,,jnJSq/Wu6ECKNN5Aole4DA,Gf8v6By0SkGM9Lssb7xflQ,,,N,0,0,,,3/14/2012 20:24,3/16/2012 15:26,admin,admin
271,96673,1685,12246,794,1,0,N,N,N,CP_Drtn,TT_Task,DT_FixedDUR2,RV_OK,TK_NotStart,A4250,P.c&R.c footing,2910,1792,0,120,0,160,160,120,0,0,0,,,,"Thursday, April 11, 2013","Thursday, April 25, 2013",,"Thursday, August 30, 2012","Thursday, September 13, 2012","Thursday, August 30, 2012","Thursday, September 13, 2012","Thursday, August 30, 2012","Thursday, September 13, 2012",,4/11/2013 8:00,4/25/2013 17:00,,PT_Normal,,,,,Uo7V1dTyk0KfR6iy12kAEg,G/Q+WqD5D0mIBZ9DDtkfhQ,,,N,0,0,,,3/14/2012 20:24,3/16/2012 15:26,admin,admin
272,96674,1685,12246,794,1,0,N,N,N,CP_Drtn,TT_Task,DT_FixedDUR2,RV_OK,TK_NotStart,A4260,R.c pedestals,2910,1792,0,112,0,136,136,112,0,0,0,,,,"Friday, April 26, 2013","Thursday, May 9, 2013",,"Friday, September 14, 2012","Thursday, September 27, 2012","Friday, September 14, 2012","Thursday, September 27, 2012","Friday, September 14, 2012","Thursday, September 27, 2012",,4/26/2013 8:00,5/9/2013 17:00,,PT_Normal,,,,,XxCSfitiNkavAxMLxzOeIQ,JT3ThjPw4kOKQLgvhh0gmg,,,N,0,0,,,3/14/2012 20:24,3/16/2012 15:26,admin,admin
273,96675,1685,12246,794,1,0,N,N,N,CP_Drtn,TT_Task,DT_FixedDUR2,RV_OK,TK_NotStart,A4270,Steel structure erection,,1808,0,240,0,0,0,240,0,0,0,,,,"Sunday, May 12, 2013","Monday, June 10, 2013",,"Friday, September 28, 2012","Saturday, October 27, 2012","Friday, September 28, 2012","Saturday, October 27, 2012","Friday, September 28, 2012","Saturday, October 27, 2012",,5/12/2013 8:00,6/10/2013 17:00,,PT_Normal,,,,,7wiAXvj0sEeyFizTV0kNzQ,zaOPlQ6yfEKUbMenAKKGrQ,,,N,0,0,,,3/14/2012 20:24,3/16/2012 15:26,admin,admin
274,96676,1685,12246,794,1,0,N,N,N,CP_Drtn,TT_Task,DT_FixedDUR2,RV_OK,TK_NotStart,A4280,Corrugated sheets installation,,1808,1808,160,0,0,0,160,0,0,0,,,,"Tuesday, June 11, 2013","Sunday, June 30, 2013",,"Sunday, October 28, 2012","Friday, November 16, 2012","Sunday, October 28, 2012","Friday, November 16, 2012","Sunday, October 28, 2012","Friday, November 16, 2012",,6/11/2013 8:00,6/30/2013 17:00,,PT_Normal,,,,,WxNta1w+h0KM/u5kFL9mVA,5NGWhQhPvECfVUhlNl8/9w,,,N,0,0,,,3/14/2012 20:24,3/18/2012 22:47,admin,NotPrmUser
275,96677,1685,12246,794,1,0,N,N,N,CP_Drtn,TT_Task,DT_FixedDUR2,RV_OK,TK_NotStart,A4290,Footing insulation,,1792,0,56,0,0,0,56,0,0,0,,,,"Thursday, May 30, 2013","Wednesday, June 5, 2013",,"Thursday, October 18, 2012","Wednesday, October 24, 2012","Thursday, October 18, 2012","Wednesday, October 24, 2012","Thursday, October 18, 2012","Wednesday, October 24, 2012",,5/30/2013 8:00,6/5/2013 17:00,,PT_Normal,,,,,Ug+GeyKdjkuOMNqSzJr/AQ,uTdB+Ks2IUCUY5JpVuM4Iw,,,N,0,0,,,3/14/2012 20:24,3/16/2012 15:26,admin,admin
276,96678,1685,12246,794,1,0,N,N,N,CP_Drtn,TT_Task,DT_FixedDUR2,RV_OK,TK_NotStart,A4300,Backfilling,,1792,0,120,0,0,0,120,0,0,0,,,,"Thursday, June 6, 2013","Thursday, June 20, 2013",,"Thursday, October 25, 2012","Thursday, November 8, 2012","Thursday, October 25, 2012","Thursday, November 8, 2012","Thursday, October 25, 2012","Thursday, November 8, 2012",,6/6/2013 8:00,6/20/2013 17:00,,PT_Normal,,,,,+mYv+03ZZEC9++b38Zga0Q,4gwa+TVwPUCULkuZmYnpNQ,,,N,0,0,,,3/14/2012 20:24,3/16/2012 15:26,admin,admin
277,96679,1685,12246,794,1,0,N,N,N,CP_Drtn,TT_Task,DT_FixedDUR2,RV_OK,TK_NotStart,A4310,Slab on grade,,1792,1792,80,0,0,0,80,0,0,0,,,,"Friday, June 21, 2013","Sunday, June 30, 2013",,"Friday, November 9, 2012","Sunday, November 18, 2012","Friday, November 9, 2012","Sunday, November 18, 2012","Friday, November 9, 2012","Sunday, November 18, 2012",,6/21/2013 8:00,6/30/2013 17:00,,PT_Normal,,,,,flQxQy15Xkq5Ylaxyk7+XQ,8tZQpIuaXUuD7B75MLND3g,,,N,0,0,,,3/14/2012 20:24,3/18/2012 22:47,admin,NotPrmUser
278,96680,1685,12246,794,1,0,N,N,N,CP_Drtn,TT_Task,DT_FixedDUR2,RV_OK,TK_NotStart,A4320,Masonry under slab on grade,,1792,0,160,0,0,0,160,0,0,0,,,,"Friday, May 10, 2013","Wednesday, May 29, 2013",,"Friday, September 28, 2012","Wednesday, October 17, 2012","Friday, September 28, 2012","Wednesday, October 17, 2012","Friday, September 28, 2012","Wednesday, October 17, 2012",,5/10/2013 8:00,5/29/2013 17:00,,PT_Normal,,,,,1KhXHOPOy02DN0nr9gRVIg,,,,N,0,0,,,3/14/2012 20:59,3/16/2012 15:26,admin,admin
279,96682,1685,12250,794,1,0,N,N,N,CP_Drtn,TT_Task,DT_FixedDUR2,RV_OK,TK_NotStart,b10,Excavation,,1832,0,40,0,0,0,40,0,0,0,,,,"Saturday, April 6, 2013","Wednesday, April 10, 2013",,"Monday, August 20, 2012","Friday, August 24, 2012","Monday, August 20, 2012","Friday, August 24, 2012","Monday, August 20, 2012","Friday, August 24, 2012",,4/6/2013 8:00,4/10/2013 17:00,,PT_Normal,,,,,USQdUto1v06JDE+O+8zTeg,Gf8v6By0SkGM9Lssb7xflQ,,,N,0,0,,,3/14/2012 21:04,3/16/2012 15:23,admin,admin
280,96683,1685,12250,794,1,0,N,N,N,CP_Drtn,TT_Task,DT_FixedDUR2,RV_OK,TK_NotStart,b20,P.c&R.c footing,2910,1832,0,80,0,160,160,80,0,0,0,,,,"Thursday, April 11, 2013","Saturday, April 20, 2013",,"Saturday, August 25, 2012","Monday, September 3, 2012","Saturday, August 25, 2012","Monday, September 3, 2012","Saturday, August 25, 2012","Monday, September 3, 2012",,4/11/2013 8:00,4/20/2013 17:00,,PT_Normal,,,,,TX1JYxoYrkKuZaRCYlvuhg,G/Q+WqD5D0mIBZ9DDtkfhQ,,,N,0,0,,,3/14/2012 21:04,3/16/2012 15:23,admin,admin
281,96684,1685,12250,794,1,0,N,N,N,CP_Drtn,TT_Task,DT_FixedDUR2,RV_OK,TK_NotStart,b30,R.c pedestals,2910,1832,0,56,0,136,136,56,0,0,0,,,,"Sunday, April 21, 2013","Saturday, April 27, 2013",,"Tuesday, September 4, 2012","Monday, September 10, 2012","Tuesday, September 4, 2012","Monday, September 10, 2012","Tuesday, September 4, 2012","Monday, September 10, 2012",,4/21/2013 8:00,4/27/2013 17:00,,PT_Normal,,,,,q6my+pVBjkCwSwRZTUeubw,JT3ThjPw4kOKQLgvhh0gmg,,,N,0,0,,,3/14/2012 21:04,3/16/2012 15:23,admin,admin
282,96685,1685,12250,794,1,0,N,N,N,CP_Drtn,TT_Task,DT_FixedDUR2,RV_OK,TK_NotStart,b70,Steel structure erection,,1832,0,120,0,0,0,120,0,0,0,,,,"Saturday, June 1, 2013","Saturday, June 15, 2013",,"Monday, October 15, 2012","Monday, October 29, 2012","Monday, October 15, 2012","Monday, October 29, 2012","Monday, October 15, 2012","Monday, October 29, 2012",,6/1/2013 8:00,6/15/2013 17:00,,PT_Normal,,,,,d1qP6cIKSECWei//g3XBxg,zaOPlQ6yfEKUbMenAKKGrQ,,,N,0,0,,,3/14/2012 21:04,3/16/2012 15:23,admin,admin
283,96686,1685,12250,794,1,0,N,N,N,CP_Drtn,TT_Task,DT_FixedDUR2,RV_OK,TK_NotStart,b90,Corrugated sheets installation,,1832,1832,80,0,0,0,80,0,0,0,,,,"Friday, June 21, 2013","Sunday, June 30, 2013",,"Sunday, November 4, 2012","Tuesday, November 13, 2012","Sunday, November 4, 2012","Tuesday, November 13, 2012","Sunday, November 4, 2012","Tuesday, November 13, 2012",,6/21/2013 8:00,6/30/2013 17:00,,PT_Normal,,,,,ivsyDdUI3kuw0xuGTm+hag,5NGWhQhPvECfVUhlNl8/9w,,,N,0,0,,,3/14/2012 21:04,3/18/2012 22:47,admin,NotPrmUser
284,96687,1685,12250,794,1,0,N,N,N,CP_Drtn,TT_Task,DT_FixedDUR2,RV_OK,TK_NotStart,b50,Footing insulation,,1832,0,56,0,0,0,56,0,0,0,,,,"Saturday, May 18, 2013","Friday, May 24, 2013",,"Monday, October 1, 2012","Sunday, October 7, 2012","Monday, October 1, 2012","Sunday, October 7, 2012","Monday, October 1, 2012","Sunday, October 7, 2012",,5/18/2013 8:00,5/24/2013 17:00,,PT_Normal,,,,,xwmUvfKUlUiOwFIvcpn32Q,uTdB+Ks2IUCUY5JpVuM4Iw,,,N,0,0,,,3/14/2012 21:04,3/16/2012 15:23,admin,admin
285,96688,1685,12250,794,1,0,N,N,N,CP_Drtn,TT_Task,DT_FixedDUR2,RV_OK,TK_NotStart,b60,Backfilling,,1832,0,56,0,0,0,56,0,0,0,,,,"Saturday, May 25, 2013","Friday, May 31, 2013",,"Monday, October 8, 2012","Sunday, October 14, 2012","Monday, October 8, 2012","Sunday, October 14, 2012","Monday, October 8, 2012","Sunday, October 14, 2012",,5/25/2013 8:00,5/31/2013 17:00,,PT_Normal,,,,,Y79lkIbS0UyAgnJ4Kh6L3w,4gwa+TVwPUCULkuZmYnpNQ,,,N,0,0,,,3/14/2012 21:04,3/16/2012 15:23,admin,admin
286,96689,1685,12250,794,1,0,N,N,N,CP_Drtn,TT_Task,DT_FixedDUR2,RV_OK,TK_NotStart,b80,Slab on grade,,1832,0,40,0,0,0,40,0,0,0,,,,"Sunday, June 16, 2013","Thursday, June 20, 2013",,"Tuesday, October 30, 2012","Saturday, November 3, 2012","Tuesday, October 30, 2012","Saturday, November 3, 2012","Tuesday, October 30, 2012","Saturday, November 3, 2012",,6/16/2013 8:00,6/20/2013 17:00,,PT_Normal,,,,,eZ8huLJ+/kWZAO49JQJBnQ,8tZQpIuaXUuD7B75MLND3g,,,N,0,0,,,3/14/2012 21:04,3/16/2012 15:23,admin,admin
287,96690,1685,12250,794,1,0,N,N,N,CP_Drtn,TT_Task,DT_FixedDUR2,RV_OK,TK_NotStart,b40,Masonry under slab on grade,,1832,0,160,0,0,0,160,0,0,0,,,,"Sunday, April 28, 2013","Friday, May 17, 2013",,"Tuesday, September 11, 2012","Sunday, September 30, 2012","Tuesday, September 11, 2012","Sunday, September 30, 2012","Tuesday, September 11, 2012","Sunday, September 30, 2012",,4/28/2013 8:00,5/17/2013 17:00,,PT_Normal,,,,,WJSF8sW2M02PYk/LVRkBNQ,B0EVVokvN0OYbrHLTYC8RQ,,,N,0,0,,,3/14/2012 21:04,3/16/2012 15:23,admin,admin
288,96691,1685,12248,794,1,0,N,N,N,CP_Drtn,TT_Task,DT_FixedDUR2,RV_OK,TK_NotStart,b190,Excavation,,2072,0,40,0,0,0,40,0,0,0,,,,"Monday, May 6, 2013","Friday, May 10, 2013",,"Monday, August 20, 2012","Friday, August 24, 2012","Monday, August 20, 2012","Friday, August 24, 2012","Monday, August 20, 2012","Friday, August 24, 2012",,5/6/2013 8:00,5/10/2013 17:00,,PT_Normal,,,,,lplLF9a3okS6WKX5hWJpNQ,jnJSq/Wu6ECKNN5Aole4DA,,,N,0,0,,,3/14/2012 21:06,3/16/2012 15:23,admin,admin
289,96692,1685,12248,794,1,0,N,N,N,CP_Drtn,TT_Task,DT_FixedDUR2,RV_OK,TK_NotStart,b290,P.c&R.c footing,2910,2072,0,80,0,160,160,80,0,0,0,,,,"Saturday, May 11, 2013","Monday, May 20, 2013",,"Saturday, August 25, 2012","Monday, September 3, 2012","Saturday, August 25, 2012","Monday, September 3, 2012","Saturday, August 25, 2012","Monday, September 3, 2012",,5/11/2013 8:00,5/20/2013 17:00,,PT_Normal,,,,,/kGgewQWlke1lITAC6NZ7w,Uo7V1dTyk0KfR6iy12kAEg,,,N,0,0,,,3/14/2012 21:06,3/16/2012 15:23,admin,admin
290,96693,1685,12248,794,1,0,N,N,N,CP_Drtn,TT_Task,DT_FixedDUR2,RV_OK,TK_NotStart,b390,R.c pedestals,2910,2072,0,56,0,136,136,56,0,0,0,,,,"Tuesday, May 21, 2013","Monday, May 27, 2013",,"Tuesday, September 4, 2012","Monday, September 10, 2012","Tuesday, September 4, 2012","Monday, September 10, 2012","Tuesday, September 4, 2012","Monday, September 10, 2012",,5/21/2013 8:00,5/27/2013 17:00,,PT_Normal,,,,,WSc1RzHHf0StwZ5HDMYhLQ,XxCSfitiNkavAxMLxzOeIQ,,,N,0,0,,,3/14/2012 21:06,3/16/2012 15:23,admin,admin
291,96694,1685,12248,794,1,0,N,N,N,CP_Drtn,TT_Task,DT_FixedDUR2,RV_OK,TK_NotStart,b490,Steel structure erection,,2072,0,120,0,0,0,120,0,0,0,,,,"Tuesday, May 28, 2013","Tuesday, June 11, 2013",,"Tuesday, September 11, 2012","Tuesday, September 25, 2012","Tuesday, September 11, 2012","Tuesday, September 25, 2012","Tuesday, September 11, 2012","Tuesday, September 25, 2012",,5/28/2013 8:00,6/11/2013 17:00,,PT_Normal,,,,,/e/gNAX4Y064TQ+7Sg+0qQ,7wiAXvj0sEeyFizTV0kNzQ,,,N,0,0,,,3/14/2012 21:06,3/16/2012 15:23,admin,admin
292,96695,1685,12248,794,1,0,N,N,N,CP_Drtn,TT_Task,DT_FixedDUR2,RV_OK,TK_NotStart,b590,Corrugated sheets installation,,2144,2144,80,0,0,0,80,0,0,0,,,,"Friday, June 21, 2013","Sunday, June 30, 2013",,"Wednesday, September 26, 2012","Friday, October 5, 2012","Wednesday, September 26, 2012","Friday, October 5, 2012","Wednesday, September 26, 2012","Friday, October 5, 2012",,6/21/2013 8:00,6/30/2013 17:00,,PT_Normal,,,,,i+pqp+uFuUKrAMJ8g+K4CA,WxNta1w+h0KM/u5kFL9mVA,,,N,0,0,,,3/14/2012 21:06,3/18/2012 22:47,admin,NotPrmUser
293,96696,1685,12248,794,1,0,N,N,N,CP_Drtn,TT_Task,DT_FixedDUR2,RV_OK,TK_NotStart,b690,Footing insulation,,2072,0,56,0,0,0,56,0,0,0,,,,"Wednesday, June 12, 2013","Tuesday, June 18, 2013",,"Wednesday, September 26, 2012","Tuesday, October 2, 2012","Wednesday, September 26, 2012","Tuesday, October 2, 2012","Wednesday, September 26, 2012","Tuesday, October 2, 2012",,6/12/2013 8:00,6/18/2013 17:00,,PT_Normal,,,,,F5rb++ZL7UaNJ1kjIy1+2w,Ug+GeyKdjkuOMNqSzJr/AQ,,,N,0,0,,,3/14/2012 21:06,3/16/2012 15:23,admin,admin
294,96697,1685,12248,794,1,0,N,N,N,CP_Drtn,TT_Task,DT_FixedDUR2,RV_OK,TK_NotStart,b790,Backfilling,,2072,0,56,0,0,0,56,0,0,0,,,,"Wednesday, June 19, 2013","Tuesday, June 25, 2013",,"Wednesday, October 3, 2012","Tuesday, October 9, 2012","Wednesday, October 3, 2012","Tuesday, October 9, 2012","Wednesday, October 3, 2012","Tuesday, October 9, 2012",,6/19/2013 8:00,6/25/2013 17:00,,PT_Normal,,,,,wrB4FmHWyUaDOOP1yuiWQQ,+mYv+03ZZEC9++b38Zga0Q,,,N,0,0,,,3/14/2012 21:06,3/16/2012 15:23,admin,admin
295,96698,1685,12248,794,1,0,N,N,N,CP_Drtn,TT_Task,DT_FixedDUR2,RV_OK,TK_NotStart,b890,Slab on grade,,2072,2072,40,0,0,0,40,0,0,0,,,,"Wednesday, June 26, 2013","Sunday, June 30, 2013",,"Wednesday, October 10, 2012","Sunday, October 14, 2012","Wednesday, October 10, 2012","Sunday, October 14, 2012","Wednesday, October 10, 2012","Sunday, October 14, 2012",,6/26/2013 8:00,6/30/2013 17:00,,PT_Normal,,,,,UqeJaOZG3E+RC/cafULo5g,flQxQy15Xkq5Ylaxyk7+XQ,,,N,0,0,,,3/14/2012 21:06,3/18/2012 22:47,admin,NotPrmUser
296,96699,1685,12248,794,1,0,N,N,N,CP_Drtn,TT_Task,DT_FixedDUR2,RV_OK,TK_NotStart,b990,Masonry under slab on grade,,2112,40,80,0,0,0,80,0,0,0,,,,"Sunday, June 2, 2013","Tuesday, June 11, 2013",,"Tuesday, September 11, 2012","Thursday, September 20, 2012","Tuesday, September 11, 2012","Thursday, September 20, 2012","Tuesday, September 11, 2012","Thursday, September 20, 2012",,6/2/2013 8:00,6/11/2013 17:00,,PT_Normal,,,,,fjSf3oof5kmWnET9HMvXCA,1KhXHOPOy02DN0nr9gRVIg,,,N,0,0,,,3/14/2012 21:06,3/16/2012 15:23,admin,admin
297,96700,1685,12252,794,1,0,N,N,N,CP_Drtn,TT_Task,DT_FixedDUR2,RV_OK,TK_NotStart,c10,Excavation,,2032,0,40,0,0,0,40,0,0,0,,,,"Wednesday, May 1, 2013","Sunday, May 5, 2013",,"Monday, August 20, 2012","Friday, August 24, 2012","Monday, August 20, 2012","Friday, August 24, 2012","Monday, August 20, 2012","Friday, August 24, 2012",,5/1/2013 8:00,5/5/2013 17:00,,PT_Normal,,,,,V3xZtHyxok65WwAEohq50Q,jnJSq/Wu6ECKNN5Aole4DA,,,N,0,0,,,3/14/2012 21:08,3/16/2012 15:23,admin,admin
298,96701,1685,12252,794,1,0,N,N,N,CP_Drtn,TT_Task,DT_FixedDUR2,RV_OK,TK_NotStart,c110,P.c&R.c footing,2910,2032,0,80,0,160,160,80,0,0,0,,,,"Monday, May 6, 2013","Wednesday, May 15, 2013",,"Saturday, August 25, 2012","Monday, September 3, 2012","Saturday, August 25, 2012","Monday, September 3, 2012","Saturday, August 25, 2012","Monday, September 3, 2012",,5/6/2013 8:00,5/15/2013 17:00,,PT_Normal,,,,,Fmo/O/4ve0KLBHyjjdaW2A,Uo7V1dTyk0KfR6iy12kAEg,,,N,0,0,,,3/14/2012 21:08,3/16/2012 15:23,admin,admin
299,96702,1685,12252,794,1,0,N,N,N,CP_Drtn,TT_Task,DT_FixedDUR2,RV_OK,TK_NotStart,c210,R.c pedestals,2910,2032,0,56,0,136,136,56,0,0,0,,,,"Thursday, May 16, 2013","Wednesday, May 22, 2013",,"Tuesday, September 4, 2012","Monday, September 10, 2012","Tuesday, September 4, 2012","Monday, September 10, 2012","Tuesday, September 4, 2012","Monday, September 10, 2012",,5/16/2013 8:00,5/22/2013 17:00,,PT_Normal,,,,,xrfhsdCTbE+CKiLa5ufPkg,XxCSfitiNkavAxMLxzOeIQ,,,N,0,0,,,3/14/2012 21:08,3/16/2012 15:23,admin,admin
300,96703,1685,12252,794,1,0,N,N,N,CP_Drtn,TT_Task,DT_FixedDUR2,RV_OK,TK_NotStart,c310,Steel structure erection,,2072,0,120,0,0,0,120,0,0,0,,,,"Tuesday, May 28, 2013","Tuesday, June 11, 2013",,"Tuesday, September 11, 2012","Tuesday, September 25, 2012","Tuesday, September 11, 2012","Tuesday, September 25, 2012","Tuesday, September 11, 2012","Tuesday, September 25, 2012",,5/28/2013 8:00,6/11/2013 17:00,,PT_Normal,,,,,0TVkVeEVo06gZ3IOGxZb7A,7wiAXvj0sEeyFizTV0kNzQ,,,N,0,0,,,3/14/2012 21:08,3/16/2012 15:23,admin,admin
301,96704,1685,12252,794,1,0,N,N,N,CP_Drtn,TT_Task,DT_FixedDUR2,RV_OK,TK_NotStart,c410,Corrugated sheets installation,,2144,2144,80,0,0,0,80,0,0,0,,,,"Friday, June 21, 2013","Sunday, June 30, 2013",,"Wednesday, September 26, 2012","Friday, October 5, 2012","Wednesday, September 26, 2012","Friday, October 5, 2012","Wednesday, September 26, 2012","Friday, October 5, 2012",,6/21/2013 8:00,6/30/2013 17:00,,PT_Normal,,,,,4wPQAJMuS0+8r9Y8VcASqg,WxNta1w+h0KM/u5kFL9mVA,,,N,0,0,,,3/14/2012 21:08,3/18/2012 22:47,admin,NotPrmUser
302,96705,1685,12252,794,1,0,N,N,N,CP_Drtn,TT_Task,DT_FixedDUR2,RV_OK,TK_NotStart,c510,Footing insulation,,2032,0,56,0,0,0,56,0,0,0,,,,"Wednesday, June 12, 2013","Tuesday, June 18, 2013",,"Monday, October 1, 2012","Sunday, October 7, 2012","Monday, October 1, 2012","Sunday, October 7, 2012","Monday, October 1, 2012","Sunday, October 7, 2012",,6/12/2013 8:00,6/18/2013 17:00,,PT_Normal,,,,,PhkBvSeAa0eqDsbDxiSQBQ,Ug+GeyKdjkuOMNqSzJr/AQ,,,N,0,0,,,3/14/2012 21:08,3/16/2012 15:23,admin,admin
303,96706,1685,12252,794,1,0,N,N,N,CP_Drtn,TT_Task,DT_FixedDUR2,RV_OK,TK_NotStart,c610,Backfilling,,2032,0,56,0,0,0,56,0,0,0,,,,"Wednesday, June 19, 2013","Tuesday, June 25, 2013",,"Monday, October 8, 2012","Sunday, October 14, 2012","Monday, October 8, 2012","Sunday, October 14, 2012","Monday, October 8, 2012","Sunday, October 14, 2012",,6/19/2013 8:00,6/25/2013 17:00,,PT_Normal,,,,,8J2rgpcs602kf1P2G5Ybmg,+mYv+03ZZEC9++b38Zga0Q,,,N,0,0,,,3/14/2012 21:08,3/16/2012 15:23,admin,admin
304,96707,1685,12252,794,1,0,N,N,N,CP_Drtn,TT_Task,DT_FixedDUR2,RV_OK,TK_NotStart,c710,Slab on grade,,2032,2032,40,0,0,0,40,0,0,0,,,,"Wednesday, June 26, 2013","Sunday, June 30, 2013",,"Monday, October 15, 2012","Friday, October 19, 2012","Monday, October 15, 2012","Friday, October 19, 2012","Monday, October 15, 2012","Friday, October 19, 2012",,6/26/2013 8:00,6/30/2013 17:00,,PT_Normal,,,,,TfAljRiErkWsi7txGF1b9w,flQxQy15Xkq5Ylaxyk7+XQ,,,N,0,0,,,3/14/2012 21:08,3/18/2012 22:47,admin,NotPrmUser
305,96708,1685,12252,794,1,0,N,N,N,CP_Drtn,TT_Task,DT_FixedDUR2,RV_OK,TK_NotStart,c810,Masonry under slab on grade,,2032,0,160,0,0,0,160,0,0,0,,,,"Thursday, May 23, 2013","Tuesday, June 11, 2013",,"Tuesday, September 11, 2012","Sunday, September 30, 2012","Tuesday, September 11, 2012","Sunday, September 30, 2012","Tuesday, September 11, 2012","Sunday, September 30, 2012",,5/23/2013 8:00,6/11/2013 17:00,,PT_Normal,,,,,5r8oEJPwZUSw8nTuFGaGEw,1KhXHOPOy02DN0nr9gRVIg,,,N,0,0,,,3/14/2012 21:08,3/16/2012 15:23,admin,admin
306,96709,1685,13370,794,1,0,N,N,N,CP_Drtn,TT_Task,DT_FixedDUR2,RV_OK,TK_NotStart,A4330,Conduits&outlets,,1352,1352,240,0,0,0,240,0,0,0,,,,"Saturday, June 1, 2013","Sunday, June 30, 2013",,"Friday, December 14, 2012","Saturday, January 12, 2013","Friday, December 14, 2012","Saturday, January 12, 2013","Friday, December 14, 2012","Saturday, January 12, 2013",,6/1/2013 8:00,6/30/2013 17:00,,PT_Normal,,,,,sXSUyHfOe0GH0jkVWNtRpg,gKasH0/Z4Ei2ksn+/bWHwA,,,N,0,0,,,3/15/2012 10:34,3/18/2012 22:47,admin,NotPrmUser
307,96710,1685,13370,794,1,0,N,N,N,CP_Drtn,TT_Task,DT_FixedDUR2,RV_OK,TK_NotStart,A4380,Lighting & power panels,,1048,0,64,0,0,0,64,0,0,0,,,,"Sunday, June 23, 2013","Sunday, June 30, 2013",,"Tuesday, February 12, 2013","Tuesday, February 19, 2013","Tuesday, February 12, 2013","Tuesday, February 19, 2013","Tuesday, February 12, 2013","Tuesday, February 19, 2013",,6/23/2013 8:00,6/30/2013 17:00,,PT_Normal,,,,,jxDuk/2kjk+mPJhOp4LHaA,Mj0Jwb9/iESskdRFISqIIw,,,N,0,0,,,3/15/2012 10:34,3/16/2012 15:23,admin,admin
308,96711,1685,13370,794,1,0,N,N,N,CP_Drtn,TT_Task,DT_FixedDUR2,RV_OK,TK_NotStart,A4340,Cable trays,,1152,1152,160,0,0,0,160,0,0,0,,,,"Tuesday, June 11, 2013","Sunday, June 30, 2013",,"Friday, January 18, 2013","Wednesday, February 6, 2013","Friday, January 18, 2013","Wednesday, February 6, 2013","Friday, January 18, 2013","Wednesday, February 6, 2013",,6/11/2013 8:00,6/30/2013 17:00,,PT_Normal,,,,,3KFn045++Ua+Xb1ZOSgdoA,MfjqQJgA3EKupjjv/l476Q,,,N,0,0,,,3/15/2012 10:34,3/18/2012 22:47,admin,NotPrmUser
309,96712,1685,13370,794,1,0,N,N,N,CP_Drtn,TT_Task,DT_FixedDUR2,RV_OK,TK_NotStart,A4350,Telecommunications system & outlets,,1048,1048,80,0,0,0,80,0,0,0,,,,"Friday, June 21, 2013","Sunday, June 30, 2013",,"Sunday, February 10, 2013","Tuesday, February 19, 2013","Sunday, February 10, 2013","Tuesday, February 19, 2013","Sunday, February 10, 2013","Tuesday, February 19, 2013",,6/21/2013 8:00,6/30/2013 17:00,,PT_Normal,,,,,V1L0L3PF/Ua5v0v2LwR6yg,XAIveax7mEKcJMCyGbNNsg,,,N,0,0,,,3/15/2012 10:34,3/18/2012 22:47,admin,NotPrmUser
310,96713,1685,13370,794,1,0,N,N,N,CP_Drtn,TT_Task,DT_FixedDUR2,RV_OK,TK_NotStart,A4360,Fire alarm system,,1032,1032,80,0,0,0,80,0,0,0,,,,"Friday, June 21, 2013","Sunday, June 30, 2013",,"Tuesday, February 12, 2013","Thursday, February 21, 2013","Tuesday, February 12, 2013","Thursday, February 21, 2013","Tuesday, February 12, 2013","Thursday, February 21, 2013",,6/21/2013 8:00,6/30/2013 17:00,,PT_Normal,,,,,ezmfi4qzykWD1ELpjmlf/w,7VJC4VVmUEq8DNncyB7h6g,,,N,0,0,,,3/15/2012 10:34,3/18/2012 22:47,admin,NotPrmUser
311,96714,1685,13370,794,1,0,N,N,N,CP_Drtn,TT_Task,DT_FixedDUR2,RV_OK,TK_NotStart,A4390,Grounding&bonding,,1536,1536,56,0,0,0,56,0,0,0,,,,"Monday, June 24, 2013","Sunday, June 30, 2013",,"Friday, December 14, 2012","Thursday, December 20, 2012","Friday, December 14, 2012","Thursday, December 20, 2012","Friday, December 14, 2012","Thursday, December 20, 2012",,6/24/2013 8:00,6/30/2013 17:00,,PT_Normal,,,,,zY8zAXijaEeJXiGpTyW6ug,BPTw76bb2UyjAiTIUtOGqQ,,,N,0,0,,,3/15/2012 10:34,3/18/2012 22:47,admin,NotPrmUser
312,96715,1685,13370,794,1,0,N,N,N,CP_Drtn,TT_Task,DT_FixedDUR2,RV_OK,TK_NotStart,A4370,Wires&cables,,872,872,240,0,0,0,240,0,0,0,,,,"Saturday, June 1, 2013","Sunday, June 30, 2013",,"Tuesday, February 12, 2013","Wednesday, March 13, 2013","Tuesday, February 12, 2013","Wednesday, March 13, 2013","Tuesday, February 12, 2013","Wednesday, March 13, 2013",,6/1/2013 8:00,6/30/2013 17:00,,PT_Normal,,,,,IB2u6OJ/J0GV4qN9ULk8iw,W4XjV409wUe66Ov3ue28AQ,,,N,0,0,,,3/15/2012 10:34,3/18/2012 22:47,admin,NotPrmUser
313,96716,1685,13370,794,1,0,N,N,N,CP_Drtn,TT_Task,DT_FixedDUR2,RV_OK,TK_NotStart,A4400,Equipment installation,,976,976,56,0,0,0,56,0,0,0,,,,"Monday, June 24, 2013","Sunday, June 30, 2013",,"Friday, February 22, 2013","Thursday, February 28, 2013","Friday, February 22, 2013","Thursday, February 28, 2013","Friday, February 22, 2013","Thursday, February 28, 2013",,6/24/2013 8:00,6/30/2013 17:00,,PT_Normal,,,,,7JI1qkWjukiuk5EVE9NX9w,vBckSsRMAkGNB5HfHFQ8wA,,,N,0,0,,,3/15/2012 10:34,3/18/2012 22:47,admin,NotPrmUser
314,96717,1685,13404,794,1,0,N,N,N,CP_Drtn,TT_Task,DT_FixedDUR2,RV_OK,TK_NotStart,A4410,Plumbing works(first fix),2909,1432,0,160,0,0,0,160,0,0,0,,,,"Tuesday, June 11, 2013","Sunday, June 30, 2013",,"Friday, December 14, 2012","Wednesday, January 2, 2013","Friday, December 14, 2012","Wednesday, January 2, 2013","Friday, December 14, 2012","Wednesday, January 2, 2013",,6/11/2013 8:00,6/30/2013 17:00,,PT_Normal,,,,,cd6CVbWaGEOSZ/Xzx1kWaQ,5nhxnZH0sU25nr31vnH47A,,,N,0,0,,,3/15/2012 10:34,3/19/2012 1:07,admin,NotPrmUser
315,96718,1685,13404,794,1,0,N,N,N,CP_Drtn,TT_Task,DT_FixedDUR2,RV_OK,TK_NotStart,A4420,Plumbing works(second fix),,872,872,160,0,0,0,160,0,0,0,,,,"Tuesday, June 11, 2013","Sunday, June 30, 2013",,"Friday, February 22, 2013","Wednesday, March 13, 2013","Friday, February 22, 2013","Wednesday, March 13, 2013","Friday, February 22, 2013","Wednesday, March 13, 2013",,6/11/2013 8:00,6/30/2013 17:00,,PT_Normal,,,,,dSQLlI9O3EW6pGItc/pMmA,E7HWxOY5s0qzFBEbIZyy7A,,,N,0,0,,,3/15/2012 10:34,3/18/2012 22:47,admin,NotPrmUser
316,96729,1685,13384,794,1,0,N,N,N,CP_Drtn,TT_Task,DT_FixedDUR2,RV_OK,TK_NotStart,A4530,Conduits&outlets,,1624,1624,120,0,0,0,120,0,0,0,,,,"Sunday, June 16, 2013","Sunday, June 30, 2013",,"Sunday, November 25, 2012","Sunday, December 9, 2012","Sunday, November 25, 2012","Sunday, December 9, 2012","Sunday, November 25, 2012","Sunday, December 9, 2012",,6/16/2013 8:00,6/30/2013 17:00,,PT_Normal,,,,,bkiUx3dLlkSuQrYa6gajLQ,gKasH0/Z4Ei2ksn+/bWHwA,,,N,0,0,,,3/15/2012 10:34,3/18/2012 22:47,admin,NotPrmUser
317,96730,1685,13384,794,1,0,N,N,N,CP_Drtn,TT_Task,DT_FixedDUR2,RV_OK,TK_NotStart,A4580,Lighting & power panels,,1600,0,64,0,0,0,64,0,0,0,,,,"Sunday, June 23, 2013","Sunday, June 30, 2013",,"Wednesday, December 5, 2012","Wednesday, December 12, 2012","Wednesday, December 5, 2012","Wednesday, December 12, 2012","Wednesday, December 5, 2012","Wednesday, December 12, 2012",,6/23/2013 8:00,6/30/2013 17:00,,PT_Normal,,,,,Q8xBAgT360+61mfatidRRw,Mj0Jwb9/iESskdRFISqIIw,,,N,0,0,,,3/15/2012 10:34,3/16/2012 15:23,admin,admin
318,96731,1685,13384,794,1,0,N,N,N,CP_Drtn,TT_Task,DT_FixedDUR2,RV_OK,TK_NotStart,A4540,Cable trays,,1680,1680,64,0,0,0,64,0,0,0,,,,"Sunday, June 23, 2013","Sunday, June 30, 2013",,"Sunday, November 25, 2012","Sunday, December 2, 2012","Sunday, November 25, 2012","Sunday, December 2, 2012","Sunday, November 25, 2012","Sunday, December 2, 2012",,6/23/2013 8:00,6/30/2013 17:00,,PT_Normal,,,,,nooMsF9kI0iIvxHXvc3ypA,MfjqQJgA3EKupjjv/l476Q,,,N,0,0,,,3/15/2012 10:34,3/18/2012 22:47,admin,NotPrmUser
319,96732,1685,13384,794,1,0,N,N,N,CP_Drtn,TT_Task,DT_FixedDUR2,RV_OK,TK_NotStart,A4550,Telecommunications system & outlets,,1600,1600,64,0,0,0,64,0,0,0,,,,"Sunday, June 23, 2013","Sunday, June 30, 2013",,"Wednesday, December 5, 2012","Wednesday, December 12, 2012","Wednesday, December 5, 2012","Wednesday, December 12, 2012","Wednesday, December 5, 2012","Wednesday, December 12, 2012",,6/23/2013 8:00,6/30/2013 17:00,,PT_Normal,,,,,xkbQGwzRE0Wk2zZ8E0/4Lw,XAIveax7mEKcJMCyGbNNsg,,,N,0,0,,,3/15/2012 10:34,3/18/2012 22:47,admin,NotPrmUser
320,96733,1685,13384,794,1,0,N,N,N,CP_Drtn,TT_Task,DT_FixedDUR2,RV_OK,TK_NotStart,A4560,Fire alarm system,,1392,1392,56,0,0,0,56,0,0,0,,,,"Monday, June 24, 2013","Sunday, June 30, 2013",,"Tuesday, January 1, 2013","Monday, January 7, 2013","Tuesday, January 1, 2013","Monday, January 7, 2013","Tuesday, January 1, 2013","Monday, January 7, 2013",,6/24/2013 8:00,6/30/2013 17:00,,PT_Normal,,,,,nUnMSwfUHkGAJXwJDTWgcA,7VJC4VVmUEq8DNncyB7h6g,,,N,0,0,,,3/15/2012 10:34,3/18/2012 22:47,admin,NotPrmUser
321,96734,1685,13384,794,1,0,N,N,N,CP_Drtn,TT_Task,DT_FixedDUR2,RV_OK,TK_NotStart,A4590,Grounding&bonding,,1864,1864,40,0,0,0,40,0,0,0,,,,"Wednesday, June 26, 2013","Sunday, June 30, 2013",,"Monday, November 5, 2012","Friday, November 9, 2012","Monday, November 5, 2012","Friday, November 9, 2012","Monday, November 5, 2012","Friday, November 9, 2012",,6/26/2013 8:00,6/30/2013 17:00,,PT_Normal,,,,,ldVEsBXWREiRg0Zm4XJpCg,BPTw76bb2UyjAiTIUtOGqQ,,,N,0,0,,,3/15/2012 10:34,3/18/2012 22:47,admin,NotPrmUser
322,96735,1685,13384,794,1,0,N,N,N,CP_Drtn,TT_Task,DT_FixedDUR2,RV_OK,TK_NotStart,A4570,Wires&cables,,1328,1328,120,0,0,0,120,0,0,0,,,,"Sunday, June 16, 2013","Sunday, June 30, 2013",,"Tuesday, January 1, 2013","Tuesday, January 15, 2013","Tuesday, January 1, 2013","Tuesday, January 15, 2013","Tuesday, January 1, 2013","Tuesday, January 15, 2013",,6/16/2013 8:00,6/30/2013 17:00,,PT_Normal,,,,,k9AvsopzWkKk7X1yst7vJg,W4XjV409wUe66Ov3ue28AQ,,,N,0,0,,,3/15/2012 10:34,3/18/2012 22:47,admin,NotPrmUser
323,96736,1685,13384,794,1,0,N,N,N,CP_Drtn,TT_Task,DT_FixedDUR2,RV_OK,TK_NotStart,A4600,Equipment installation,,1392,1392,56,0,0,0,56,0,0,0,,,,"Monday, June 24, 2013","Sunday, June 30, 2013",,"Tuesday, January 1, 2013","Monday, January 7, 2013","Tuesday, January 1, 2013","Monday, January 7, 2013","Tuesday, January 1, 2013","Monday, January 7, 2013",,6/24/2013 8:00,6/30/2013 17:00,,PT_Normal,,,,,OvOTmw79YE+ljvbZ0RV/HQ,vBckSsRMAkGNB5HfHFQ8wA,,,N,0,0,,,3/15/2012 10:34,3/18/2012 22:47,admin,NotPrmUser
324,96737,1685,13398,794,1,0,N,N,N,CP_Drtn,TT_Task,DT_FixedDUR2,RV_OK,TK_NotStart,A4610,Plumbing works(first fix),2909,1848,0,56,0,0,0,56,0,0,0,,,,"Monday, June 24, 2013","Sunday, June 30, 2013",,"Monday, November 5, 2012","Sunday, November 11, 2012","Monday, November 5, 2012","Sunday, November 11, 2012","Monday, November 5, 2012","Sunday, November 11, 2012",,6/24/2013 8:00,6/30/2013 17:00,,PT_Normal,,,,,eY6t04k8S0GJ4GJKPmBgBg,5nhxnZH0sU25nr31vnH47A,,,N,0,0,,,3/15/2012 10:34,3/19/2012 1:08,admin,NotPrmUser
325,96738,1685,13398,794,1,0,N,N,N,CP_Drtn,TT_Task,DT_FixedDUR2,RV_OK,TK_NotStart,A4620,Plumbing works(second fix),,1392,1392,56,0,0,0,56,0,0,0,,,,"Monday, June 24, 2013","Sunday, June 30, 2013",,"Tuesday, January 1, 2013","Monday, January 7, 2013","Tuesday, January 1, 2013","Monday, January 7, 2013","Tuesday, January 1, 2013","Monday, January 7, 2013",,6/24/2013 8:00,6/30/2013 17:00,,PT_Normal,,,,,bjBBPPnjnEuqPfx3IofFlQ,E7HWxOY5s0qzFBEbIZyy7A,,,N,0,0,,,3/15/2012 10:34,3/18/2012 22:47,admin,NotPrmUser
326,96759,1685,13378,794,1,0,N,N,N,CP_Drtn,TT_Task,DT_FixedDUR2,RV_OK,TK_NotStart,A4830,Conduits&outlets,,1760,1760,240,0,0,0,240,0,0,0,,,,"Saturday, June 1, 2013","Sunday, June 30, 2013",,"Wednesday, October 24, 2012","Thursday, November 22, 2012","Wednesday, October 24, 2012","Thursday, November 22, 2012","Wednesday, October 24, 2012","Thursday, November 22, 2012",,6/1/2013 8:00,6/30/2013 17:00,,PT_Normal,,,,,4vyKPrxVXUmkqEVnxtZ+1Q,gKasH0/Z4Ei2ksn+/bWHwA,,,N,0,0,,,3/15/2012 10:35,3/18/2012 22:47,admin,NotPrmUser
327,96760,1685,13378,794,1,0,N,N,N,CP_Drtn,TT_Task,DT_FixedDUR2,RV_OK,TK_NotStart,A4880,Lighting & power panels,,1728,0,64,0,0,0,64,0,0,0,,,,"Sunday, June 23, 2013","Sunday, June 30, 2013",,"Monday, November 19, 2012","Monday, November 26, 2012","Monday, November 19, 2012","Monday, November 26, 2012","Monday, November 19, 2012","Monday, November 26, 2012",,6/23/2013 8:00,6/30/2013 17:00,,PT_Normal,,,,,XIX1PDv3/UyWMf4vm93g/Q,Mj0Jwb9/iESskdRFISqIIw,,,N,0,0,,,3/15/2012 10:35,3/16/2012 15:23,admin,admin
328,96761,1685,13378,794,1,0,N,N,N,CP_Drtn,TT_Task,DT_FixedDUR2,RV_OK,TK_NotStart,A4840,Cable trays,,1632,1632,160,0,0,0,160,0,0,0,,,,"Tuesday, June 11, 2013","Sunday, June 30, 2013",,"Monday, November 19, 2012","Saturday, December 8, 2012","Monday, November 19, 2012","Saturday, December 8, 2012","Monday, November 19, 2012","Saturday, December 8, 2012",,6/11/2013 8:00,6/30/2013 17:00,,PT_Normal,,,,,p7945q8aTkKzK9SQ2KvUrQ,MfjqQJgA3EKupjjv/l476Q,,,N,0,0,,,3/15/2012 10:35,3/18/2012 22:47,admin,NotPrmUser
329,96762,1685,13378,794,1,0,N,N,N,CP_Drtn,TT_Task,DT_FixedDUR2,RV_OK,TK_NotStart,A4850,Telecommunications system & outlets,,1728,1728,64,0,0,0,64,0,0,0,,,,"Sunday, June 23, 2013","Sunday, June 30, 2013",,"Monday, November 19, 2012","Monday, November 26, 2012","Monday, November 19, 2012","Monday, November 26, 2012","Monday, November 19, 2012","Monday, November 26, 2012",,6/23/2013 8:00,6/30/2013 17:00,,PT_Normal,,,,,kUubM6ZZrESU/BO496IAeA,XAIveax7mEKcJMCyGbNNsg,,,N,0,0,,,3/15/2012 10:35,3/18/2012 22:47,admin,NotPrmUser
330,96763,1685,13378,794,1,0,N,N,N,CP_Drtn,TT_Task,DT_FixedDUR2,RV_OK,TK_NotStart,A4860,Fire alarm system,,1712,1712,80,0,0,0,80,0,0,0,,,,"Friday, June 21, 2013","Sunday, June 30, 2013",,"Monday, November 19, 2012","Wednesday, November 28, 2012","Monday, November 19, 2012","Wednesday, November 28, 2012","Monday, November 19, 2012","Wednesday, November 28, 2012",,6/21/2013 8:00,6/30/2013 17:00,,PT_Normal,,,,,afPmg6nhCkuWVIi3PRjXfA,7VJC4VVmUEq8DNncyB7h6g,,,N,0,0,,,3/15/2012 10:35,3/18/2012 22:47,admin,NotPrmUser
331,96764,1685,13378,794,1,0,N,N,N,CP_Drtn,TT_Task,DT_FixedDUR2,RV_OK,TK_NotStart,A4890,Grounding&bonding,,1960,1960,40,0,0,0,40,0,0,0,,,,"Wednesday, June 26, 2013","Sunday, June 30, 2013",,"Wednesday, October 24, 2012","Sunday, October 28, 2012","Wednesday, October 24, 2012","Sunday, October 28, 2012","Wednesday, October 24, 2012","Sunday, October 28, 2012",,6/26/2013 8:00,6/30/2013 17:00,,PT_Normal,,,,,ikx2fyFUq0GixdtXDP9MJw,BPTw76bb2UyjAiTIUtOGqQ,,,N,0,0,,,3/15/2012 10:35,3/18/2012 22:47,admin,NotPrmUser
332,96765,1685,13378,794,1,0,N,N,N,CP_Drtn,TT_Task,DT_FixedDUR2,RV_OK,TK_NotStart,A4870,Wires&cables,,1576,1576,160,0,0,0,160,0,0,0,,,,"Tuesday, June 11, 2013","Sunday, June 30, 2013",,"Monday, November 26, 2012","Saturday, December 15, 2012","Monday, November 26, 2012","Saturday, December 15, 2012","Monday, November 26, 2012","Saturday, December 15, 2012",,6/11/2013 8:00,6/30/2013 17:00,,PT_Normal,,,,,rkluPh5va0ekrkED8/ZSew,W4XjV409wUe66Ov3ue28AQ,,,N,0,0,,,3/15/2012 10:35,3/18/2012 22:47,admin,NotPrmUser
333,96766,1685,13378,794,1,0,N,N,N,CP_Drtn,TT_Task,DT_FixedDUR2,RV_OK,TK_NotStart,A4900,Equipment installation,,1680,1680,56,0,0,0,56,0,0,0,,,,"Monday, June 24, 2013","Sunday, June 30, 2013",,"Monday, November 26, 2012","Sunday, December 2, 2012","Monday, November 26, 2012","Sunday, December 2, 2012","Monday, November 26, 2012","Sunday, December 2, 2012",,6/24/2013 8:00,6/30/2013 17:00,,PT_Normal,,,,,t6IRkkpWik6OwCLTGT17Zw,vBckSsRMAkGNB5HfHFQ8wA,,,N,0,0,,,3/15/2012 10:35,3/18/2012 22:47,admin,NotPrmUser
334,96767,1685,13400,794,1,0,N,N,N,CP_Drtn,TT_Task,DT_FixedDUR2,RV_OK,TK_NotStart,A4910,Plumbing works(first fix),2909,1960,0,32,0,0,0,32,0,0,0,,,,"Wednesday, June 26, 2013","Saturday, June 29, 2013",,"Wednesday, October 24, 2012","Saturday, October 27, 2012","Wednesday, October 24, 2012","Saturday, October 27, 2012","Wednesday, October 24, 2012","Saturday, October 27, 2012",,6/26/2013 8:00,6/29/2013 17:00,,PT_Normal,,,,,HT30OfK6Yk2a/qOnrUpa/A,5nhxnZH0sU25nr31vnH47A,,,N,0,0,,,3/15/2012 10:35,3/19/2012 1:07,admin,NotPrmUser
335,96768,1685,13400,794,1,0,N,N,N,CP_Drtn,TT_Task,DT_FixedDUR2,RV_OK,TK_NotStart,A4920,Plumbing works(second fix),,1704,1704,32,0,0,0,32,0,0,0,,,,"Thursday, June 27, 2013","Sunday, June 30, 2013",,"Monday, November 26, 2012","Thursday, November 29, 2012","Monday, November 26, 2012","Thursday, November 29, 2012","Monday, November 26, 2012","Thursday, November 29, 2012",,6/27/2013 8:00,6/30/2013 17:00,,PT_Normal,,,,,VtnEUoBHuEi9oAz71bIJJQ,E7HWxOY5s0qzFBEbIZyy7A,,,N,0,0,,,3/15/2012 10:35,3/18/2012 22:47,admin,NotPrmUser
336,96779,1685,13386,794,1,0,N,N,N,CP_Drtn,TT_Task,DT_FixedDUR2,RV_OK,TK_NotStart,A5030,Conduits&outlets,,960,960,160,0,0,0,160,0,0,0,,,,"Tuesday, June 11, 2013","Sunday, June 30, 2013",,"Monday, February 11, 2013","Saturday, March 2, 2013","Monday, February 11, 2013","Saturday, March 2, 2013","Monday, February 11, 2013","Saturday, March 2, 2013",,6/11/2013 8:00,6/30/2013 17:00,,PT_Normal,,,,,#NAME?,gKasH0/Z4Ei2ksn+/bWHwA,,,N,0,0,,,3/15/2012 10:35,3/18/2012 22:47,admin,NotPrmUser
337,96780,1685,13386,794,1,0,N,N,N,CP_Drtn,TT_Task,DT_FixedDUR2,RV_OK,TK_NotStart,A5080,Lighting & power panels,,896,0,64,0,0,0,64,0,0,0,,,,"Sunday, June 23, 2013","Sunday, June 30, 2013",,"Sunday, March 3, 2013","Sunday, March 10, 2013","Sunday, March 3, 2013","Sunday, March 10, 2013","Sunday, March 3, 2013","Sunday, March 10, 2013",,6/23/2013 8:00,6/30/2013 17:00,,PT_Normal,,,,,Qnj1NMkQTU2NDggibs+rvA,Mj0Jwb9/iESskdRFISqIIw,,,N,0,0,,,3/15/2012 10:35,3/18/2012 13:30,admin,admin
338,96781,1685,13386,794,1,0,N,N,N,CP_Drtn,TT_Task,DT_FixedDUR2,RV_OK,TK_NotStart,A5040,Cable trays,,800,800,160,0,0,0,160,0,0,0,,,,"Tuesday, June 11, 2013","Sunday, June 30, 2013",,"Sunday, March 3, 2013","Friday, March 22, 2013","Sunday, March 3, 2013","Friday, March 22, 2013","Sunday, March 3, 2013","Friday, March 22, 2013",,6/11/2013 8:00,6/30/2013 17:00,,PT_Normal,,,,,yQZV+j05g0GZVW5MmCYJIQ,MfjqQJgA3EKupjjv/l476Q,,,N,0,0,,,3/15/2012 10:35,3/18/2012 22:47,admin,NotPrmUser
339,96782,1685,13386,794,1,0,N,N,N,CP_Drtn,TT_Task,DT_FixedDUR2,RV_OK,TK_NotStart,A5050,Telecommunications system & outlets,,896,896,64,0,0,0,64,0,0,0,,,,"Sunday, June 23, 2013","Sunday, June 30, 2013",,"Sunday, March 3, 2013","Sunday, March 10, 2013","Sunday, March 3, 2013","Sunday, March 10, 2013","Sunday, March 3, 2013","Sunday, March 10, 2013",,6/23/2013 8:00,6/30/2013 17:00,,PT_Normal,,,,,F84nR6HSH0aNqerdT/W7gA,XAIveax7mEKcJMCyGbNNsg,,,N,0,0,,,3/15/2012 10:35,3/18/2012 22:47,admin,NotPrmUser
340,96783,1685,13386,794,1,0,N,N,N,CP_Drtn,TT_Task,DT_FixedDUR2,RV_OK,TK_NotStart,A5060,Fire alarm system,,880,880,80,0,0,0,80,0,0,0,,,,"Friday, June 21, 2013","Sunday, June 30, 2013",,"Sunday, March 3, 2013","Tuesday, March 12, 2013","Sunday, March 3, 2013","Tuesday, March 12, 2013","Sunday, March 3, 2013","Tuesday, March 12, 2013",,6/21/2013 8:00,6/30/2013 17:00,,PT_Normal,,,,,BUjDZ1MQrESXNBS2+OZMiw,7VJC4VVmUEq8DNncyB7h6g,,,N,0,0,,,3/15/2012 10:35,3/18/2012 22:47,admin,NotPrmUser
341,96784,1685,13386,794,1,0,N,N,N,CP_Drtn,TT_Task,DT_FixedDUR2,RV_OK,TK_NotStart,A5090,Grounding&bonding,,1080,1080,40,0,0,0,40,0,0,0,,,,"Wednesday, June 26, 2013","Sunday, June 30, 2013",,"Monday, February 11, 2013","Friday, February 15, 2013","Monday, February 11, 2013","Friday, February 15, 2013","Monday, February 11, 2013","Friday, February 15, 2013",,6/26/2013 8:00,6/30/2013 17:00,,PT_Normal,,,,,ETm2sZwbGk+eVcSybTTaZA,BPTw76bb2UyjAiTIUtOGqQ,,,N,0,0,,,3/15/2012 10:35,3/18/2012 22:47,admin,NotPrmUser
342,96785,1685,13386,794,1,0,N,N,N,CP_Drtn,TT_Task,DT_FixedDUR2,RV_OK,TK_NotStart,A5070,Wires&cables,,832,832,112,0,0,0,112,0,0,0,,,,"Monday, June 17, 2013","Sunday, June 30, 2013",,"Tuesday, March 5, 2013","Monday, March 18, 2013","Tuesday, March 5, 2013","Monday, March 18, 2013","Tuesday, March 5, 2013","Monday, March 18, 2013",,6/17/2013 8:00,6/30/2013 17:00,,PT_Normal,,,,,bZNU1kO5hUKJkUNyFLSDVw,W4XjV409wUe66Ov3ue28AQ,,,N,0,0,,,3/15/2012 10:35,3/18/2012 22:47,admin,NotPrmUser
343,96786,1685,13386,794,1,0,N,N,N,CP_Drtn,TT_Task,DT_FixedDUR2,RV_OK,TK_NotStart,A5100,Equipment installation,,848,848,56,0,0,0,56,0,0,0,,,,"Monday, June 24, 2013","Sunday, June 30, 2013",,"Sunday, March 10, 2013","Saturday, March 16, 2013","Sunday, March 10, 2013","Saturday, March 16, 2013","Sunday, March 10, 2013","Saturday, March 16, 2013",,6/24/2013 8:00,6/30/2013 17:00,,PT_Normal,,,,,mzVhLz+7p0m1csjflZ4SVQ,vBckSsRMAkGNB5HfHFQ8wA,,,N,0,0,,,3/15/2012 10:35,3/18/2012 22:47,admin,NotPrmUser
344,96787,1685,13392,794,1,0,N,N,N,CP_Drtn,TT_Task,DT_FixedDUR2,RV_OK,TK_NotStart,A5110,Plumbing works(first fix),2909,1080,0,16,0,0,0,16,0,0,0,,,,"Wednesday, June 26, 2013","Thursday, June 27, 2013",,"Monday, February 11, 2013","Tuesday, February 12, 2013","Monday, February 11, 2013","Tuesday, February 12, 2013","Monday, February 11, 2013","Tuesday, February 12, 2013",,6/26/2013 8:00,6/27/2013 17:00,,PT_Normal,,,,,X+2yXjyl80ejM4bs+ke6gg,5nhxnZH0sU25nr31vnH47A,,,N,0,0,,,3/15/2012 10:35,3/19/2012 1:07,admin,NotPrmUser
345,96788,1685,13392,794,1,0,N,N,N,CP_Drtn,TT_Task,DT_FixedDUR2,RV_OK,TK_NotStart,A5120,Plumbing works(second fix),,888,888,16,0,0,0,16,0,0,0,,,,"Saturday, June 29, 2013","Sunday, June 30, 2013",,"Sunday, March 10, 2013","Monday, March 11, 2013","Sunday, March 10, 2013","Monday, March 11, 2013","Sunday, March 10, 2013","Monday, March 11, 2013",,6/29/2013 8:00,6/30/2013 17:00,,PT_Normal,,,,,rn00Ff5ZhkSNNvTxZERPZA,E7HWxOY5s0qzFBEbIZyy7A,,,N,0,0,,,3/15/2012 10:35,3/18/2012 22:47,admin,NotPrmUser
346,96799,1685,13376,794,1,0,N,N,N,CP_Drtn,TT_Task,DT_FixedDUR2,RV_OK,TK_NotStart,A5230,Conduits&outlets,,1072,1072,240,0,0,0,240,0,0,0,,,,"Saturday, June 1, 2013","Sunday, June 30, 2013",,"Friday, January 18, 2013","Saturday, February 16, 2013","Friday, January 18, 2013","Saturday, February 16, 2013","Friday, January 18, 2013","Saturday, February 16, 2013",,6/1/2013 8:00,6/30/2013 17:00,,PT_Normal,,,,,#NAME?,gKasH0/Z4Ei2ksn+/bWHwA,,,N,0,0,,,3/15/2012 10:35,3/18/2012 22:47,admin,NotPrmUser
347,96800,1685,13376,794,1,0,N,N,N,CP_Drtn,TT_Task,DT_FixedDUR2,RV_OK,TK_NotStart,A5280,Lighting & power panels,,808,0,64,0,0,0,64,0,0,0,,,,"Sunday, June 23, 2013","Sunday, June 30, 2013",,"Thursday, March 14, 2013","Thursday, March 21, 2013","Thursday, March 14, 2013","Thursday, March 21, 2013","Thursday, March 14, 2013","Thursday, March 21, 2013",,6/23/2013 8:00,6/30/2013 17:00,,PT_Normal,,,,,jJ/IbMumWUKs7vrklIp56g,Mj0Jwb9/iESskdRFISqIIw,,,N,0,0,,,3/15/2012 10:35,3/18/2012 21:27,admin,NotPrmUser
348,96801,1685,13376,794,1,0,N,N,N,CP_Drtn,TT_Task,DT_FixedDUR2,RV_OK,TK_NotStart,A5240,Cable trays,,792,792,80,0,0,0,80,0,0,0,,,,"Friday, June 21, 2013","Sunday, June 30, 2013",,"Thursday, March 14, 2013","Saturday, March 23, 2013","Thursday, March 14, 2013","Saturday, March 23, 2013","Thursday, March 14, 2013","Saturday, March 23, 2013",,6/21/2013 8:00,6/30/2013 17:00,,PT_Normal,,,,,bcJmuWxmW0CHxstUFpD/bA,MfjqQJgA3EKupjjv/l476Q,,,N,0,0,,,3/15/2012 10:35,3/18/2012 22:47,admin,NotPrmUser
349,96802,1685,13376,794,1,0,N,N,N,CP_Drtn,TT_Task,DT_FixedDUR2,RV_OK,TK_NotStart,A5250,Telecommunications system & outlets,,808,808,64,0,0,0,64,0,0,0,,,,"Sunday, June 23, 2013","Sunday, June 30, 2013",,"Thursday, March 14, 2013","Thursday, March 21, 2013","Thursday, March 14, 2013","Thursday, March 21, 2013","Thursday, March 14, 2013","Thursday, March 21, 2013",,6/23/2013 8:00,6/30/2013 17:00,,PT_Normal,,,,,/aIYzPkTWUSMIHxMd700Hw,XAIveax7mEKcJMCyGbNNsg,,,N,0,0,,,3/15/2012 10:35,3/18/2012 22:47,admin,NotPrmUser
350,96803,1685,13376,794,1,0,N,N,N,CP_Drtn,TT_Task,DT_FixedDUR2,RV_OK,TK_NotStart,A5260,Fire alarm system,,752,752,120,0,0,0,120,0,0,0,,,,"Sunday, June 16, 2013","Sunday, June 30, 2013",,"Thursday, March 14, 2013","Thursday, March 28, 2013","Thursday, March 14, 2013","Thursday, March 28, 2013","Thursday, March 14, 2013","Thursday, March 28, 2013",,6/16/2013 8:00,6/30/2013 17:00,,PT_Normal,,,,,R+mcZUxI0EKOqMJe6K6ySA,7VJC4VVmUEq8DNncyB7h6g,,,N,0,0,,,3/15/2012 10:35,3/18/2012 22:47,admin,NotPrmUser
351,96804,1685,13376,794,1,0,N,N,N,CP_Drtn,TT_Task,DT_FixedDUR2,RV_OK,TK_NotStart,A5290,Grounding&bonding,,1272,1272,40,0,0,0,40,0,0,0,,,,"Wednesday, June 26, 2013","Sunday, June 30, 2013",,"Friday, January 18, 2013","Tuesday, January 22, 2013","Friday, January 18, 2013","Tuesday, January 22, 2013","Friday, January 18, 2013","Tuesday, January 22, 2013",,6/26/2013 8:00,6/30/2013 17:00,,PT_Normal,,,,,6tuCRJaZNkOlAd/fgnd4xw,BPTw76bb2UyjAiTIUtOGqQ,,,N,0,0,,,3/15/2012 10:35,3/18/2012 22:47,admin,NotPrmUser
352,96805,1685,13376,794,1,0,N,N,N,CP_Drtn,TT_Task,DT_FixedDUR2,RV_OK,TK_NotStart,A5270,Wires&cables,,672,0,160,0,0,0,160,0,0,0,,,,"Tuesday, June 11, 2013","Sunday, June 30, 2013",,"Tuesday, March 19, 2013","Sunday, April 7, 2013","Tuesday, March 19, 2013","Sunday, April 7, 2013","Tuesday, March 19, 2013","Sunday, April 7, 2013",,6/11/2013 8:00,6/30/2013 17:00,,PT_Normal,,,,,yDn2XEgNv02FDypWpsk1hg,W4XjV409wUe66Ov3ue28AQ,,,N,0,0,,,3/15/2012 10:35,3/18/2012 21:28,admin,NotPrmUser
353,96806,1685,13376,794,1,0,N,N,N,CP_Drtn,TT_Task,DT_FixedDUR2,RV_OK,TK_NotStart,A5300,Equipment installation,,736,736,56,0,0,0,56,0,0,0,,,,"Monday, June 24, 2013","Sunday, June 30, 2013",,"Sunday, March 24, 2013","Saturday, March 30, 2013","Sunday, March 24, 2013","Saturday, March 30, 2013","Sunday, March 24, 2013","Saturday, March 30, 2013",,6/24/2013 8:00,6/30/2013 17:00,,PT_Normal,,,,,LLXTeWVrHkOGbPTCYjb9ug,vBckSsRMAkGNB5HfHFQ8wA,,,N,0,0,,,3/15/2012 10:35,3/18/2012 22:47,admin,NotPrmUser
354,96807,1685,13402,794,1,0,N,N,N,CP_Drtn,TT_Task,DT_FixedDUR2,RV_OK,TK_NotStart,A5310,Plumbing works(first fix),2909,1264,0,48,0,0,0,48,0,0,0,,,,"Tuesday, June 25, 2013","Sunday, June 30, 2013",,"Friday, January 18, 2013","Wednesday, January 23, 2013","Friday, January 18, 2013","Wednesday, January 23, 2013","Friday, January 18, 2013","Wednesday, January 23, 2013",,6/25/2013 8:00,6/30/2013 17:00,,PT_Normal,,,,,2Rc629DjBkKu7BSLfRgwCw,5nhxnZH0sU25nr31vnH47A,,,N,0,0,,,3/15/2012 10:35,3/19/2012 1:07,admin,NotPrmUser
355,96808,1685,13402,794,1,0,N,N,N,CP_Drtn,TT_Task,DT_FixedDUR2,RV_OK,TK_NotStart,A5320,Plumbing works(second fix),,744,744,48,0,0,0,48,0,0,0,,,,"Tuesday, June 25, 2013","Sunday, June 30, 2013",,"Sunday, March 24, 2013","Friday, March 29, 2013","Sunday, March 24, 2013","Friday, March 29, 2013","Sunday, March 24, 2013","Friday, March 29, 2013",,6/25/2013 8:00,6/30/2013 17:00,,PT_Normal,,,,,aK3hXm28cEixgfwONvQGUg,E7HWxOY5s0qzFBEbIZyy7A,,,N,0,0,,,3/15/2012 10:35,3/18/2012 22:47,admin,NotPrmUser
356,96809,1685,13390,794,1,0,N,N,N,CP_Drtn,TT_Task,DT_FixedDUR2,RV_OK,TK_NotStart,A5330,Split units,,672,672,8,0,0,0,8,0,0,0,,,,"Sunday, June 30, 2013","Sunday, June 30, 2013",,"Sunday, April 7, 2013","Sunday, April 7, 2013","Sunday, April 7, 2013","Sunday, April 7, 2013","Sunday, April 7, 2013","Sunday, April 7, 2013",,6/30/2013 8:00,6/30/2013 17:00,,PT_Normal,,,,,xbtwZmhEpkuM5KLKe1ct2w,,,,N,0,0,,,3/15/2012 13:40,3/18/2012 22:47,admin,NotPrmUser
357,96811,1685,13423,794,1,0,N,N,N,CP_Drtn,TT_Task,DT_FixedDUR2,RV_OK,TK_NotStart,A5350,Duct work,,1176,1176,16,0,0,0,16,0,0,0,,,,"Saturday, June 29, 2013","Sunday, June 30, 2013",,"Saturday, February 2, 2013","Sunday, February 3, 2013","Saturday, February 2, 2013","Sunday, February 3, 2013","Saturday, February 2, 2013","Sunday, February 3, 2013",,6/29/2013 8:00,6/30/2013 17:00,,PT_Normal,,,,,k/f/4wlLA0iKybswpNrYyg,,,,N,0,0,,,3/15/2012 13:40,3/18/2012 22:47,admin,NotPrmUser
358,96814,1685,13423,794,1,0,N,N,N,CP_Drtn,TT_Task,DT_FixedDUR2,RV_OK,TK_NotStart,A5380,VRF units,,672,672,80,0,0,0,80,0,0,0,,,,"Friday, June 21, 2013","Sunday, June 30, 2013",,"Friday, March 29, 2013","Sunday, April 7, 2013","Friday, March 29, 2013","Sunday, April 7, 2013","Friday, March 29, 2013","Sunday, April 7, 2013",,6/21/2013 8:00,6/30/2013 17:00,,PT_Normal,,,,,UlMLtbSy/kqNoUyhx2ZOWg,,,,N,0,0,,,3/15/2012 13:44,3/18/2012 22:47,admin,NotPrmUser
359,96816,1685,13390,794,1,0,N,N,N,CP_Drtn,TT_Task,DT_FixedDUR2,RV_OK,TK_NotStart,A5400,Duct work,,912,912,8,0,0,0,8,0,0,0,,,,"Sunday, June 30, 2013","Sunday, June 30, 2013",,"Friday, March 8, 2013","Friday, March 8, 2013","Friday, March 8, 2013","Friday, March 8, 2013","Friday, March 8, 2013","Friday, March 8, 2013",,6/30/2013 8:00,6/30/2013 17:00,,PT_Normal,,,,,TM0IZ7ck+E+ik+PnQ76/JQ,k/f/4wlLA0iKybswpNrYyg,,,N,0,0,,,3/15/2012 13:47,3/18/2012 22:47,admin,NotPrmUser
360,96820,1685,13421,794,1,0,N,N,N,CP_Drtn,TT_Task,DT_FixedDUR2,RV_OK,TK_NotStart,A5430,Split units,,584,584,16,0,0,0,16,0,0,0,,,,"Saturday, June 29, 2013","Sunday, June 30, 2013",,"Wednesday, April 17, 2013","Thursday, April 18, 2013","Wednesday, April 17, 2013","Thursday, April 18, 2013","Wednesday, April 17, 2013","Thursday, April 18, 2013",,6/29/2013 8:00,6/30/2013 17:00,,PT_Normal,,,,,Oh3Hbrgu5USROMbs1bwlwg,,,,N,0,0,,,3/15/2012 14:27,3/18/2012 22:47,admin,NotPrmUser
361,96824,1685,13417,794,1,0,N,N,N,CP_Drtn,TT_Task,DT_FixedDUR2,RV_OK,TK_NotStart,A5510,Duct work,,368,0,240,0,0,0,240,0,0,0,,,,"Thursday, April 25, 2013","Friday, May 24, 2013",,"Sunday, March 10, 2013","Monday, April 8, 2013","Sunday, March 10, 2013","Monday, April 8, 2013","Sunday, March 10, 2013","Monday, April 8, 2013",,4/25/2013 8:00,5/24/2013 17:00,,PT_Normal,,,,,NxKH/+nKvkeqGtJGKNa12A,yYOWXKTO30qpVPy7CmO8Yg,,,N,0,0,,,3/15/2012 14:35,3/18/2012 21:42,admin,NotPrmUser
362,96826,1685,13417,794,1,0,N,N,N,CP_Drtn,TT_Task,DT_FixedDUR2,RV_OK,TK_NotStart,A5470,Split units,,408,408,40,0,0,0,40,0,0,0,,,,"Wednesday, June 26, 2013","Sunday, June 30, 2013",,"Monday, May 6, 2013","Friday, May 10, 2013","Monday, May 6, 2013","Friday, May 10, 2013","Monday, May 6, 2013","Friday, May 10, 2013",,6/26/2013 8:00,6/30/2013 17:00,,PT_Normal,,,,,C6c5fSkG5UyVy7Pz7TmpTg,Oh3Hbrgu5USROMbs1bwlwg,,,N,0,0,,,3/15/2012 14:35,3/18/2012 22:47,admin,NotPrmUser
363,96827,1685,13417,794,1,0,N,N,N,CP_Drtn,TT_Task,DT_FixedDUR2,RV_OK,TK_NotStart,A5480,Air handling unit,,392,392,56,0,0,0,56,0,0,0,,,,"Monday, June 24, 2013","Sunday, June 30, 2013",,"Monday, May 6, 2013","Sunday, May 12, 2013","Monday, May 6, 2013","Sunday, May 12, 2013","Monday, May 6, 2013","Sunday, May 12, 2013",,6/24/2013 8:00,6/30/2013 17:00,,PT_Normal,,,,,uUsjAlTXZU6clQy+U3slIA,wUaY1sBdSEGJqD5dSONzJw,,,N,0,0,,,3/15/2012 14:35,3/18/2012 22:47,admin,NotPrmUser
364,96828,1685,13417,794,1,0,N,N,N,CP_Drtn,TT_Task,DT_FixedDUR2,RV_OK,TK_NotStart,A5490,Chillers installation,,392,392,56,0,0,0,56,0,0,0,,,,"Monday, June 24, 2013","Sunday, June 30, 2013",,"Monday, May 6, 2013","Sunday, May 12, 2013","Monday, May 6, 2013","Sunday, May 12, 2013","Monday, May 6, 2013","Sunday, May 12, 2013",,6/24/2013 8:00,6/30/2013 17:00,,PT_Normal,,,,,lRwlpg7Hg0mECE9X6Ic6Cw,GBPSjt3A20aMZquSBhMalA,,,N,0,0,,,3/15/2012 14:35,3/18/2012 22:47,admin,NotPrmUser
365,96830,1685,13415,794,1,0,N,N,N,CP_Drtn,TT_Task,DT_FixedDUR2,RV_OK,TK_NotStart,A5560,Duct work,,728,264,16,0,0,0,16,0,0,0,,,,"Wednesday, May 15, 2013","Thursday, May 16, 2013",,"Wednesday, February 13, 2013","Thursday, February 14, 2013","Wednesday, February 13, 2013","Thursday, February 14, 2013","Wednesday, February 13, 2013","Thursday, February 14, 2013",,5/15/2013 8:00,5/16/2013 17:00,,PT_Normal,,,,,SWVCSg7xfU+hdMwhFdtKAw,yYOWXKTO30qpVPy7CmO8Yg,,,N,0,0,,,3/15/2012 14:39,3/18/2012 13:24,admin,admin
366,96831,1685,13415,794,1,0,N,N,N,CP_Drtn,TT_Task,DT_FixedDUR2,RV_OK,TK_NotStart,A5570,VRF units,,504,504,80,0,0,0,80,0,0,0,,,,"Friday, June 21, 2013","Sunday, June 30, 2013",,"Friday, April 19, 2013","Sunday, April 28, 2013","Friday, April 19, 2013","Sunday, April 28, 2013","Friday, April 19, 2013","Sunday, April 28, 2013",,6/21/2013 8:00,6/30/2013 17:00,,PT_Normal,,,,,9N+0IB1U/UGrNQqDKykPxA,wq0oqOjUjEWy0KhGqjoKgw,,,N,0,0,,,3/15/2012 14:39,3/18/2012 22:47,admin,NotPrmUser
367,96836,1685,13413,794,1,0,N,N,N,CP_Drtn,TT_Task,DT_FixedDUR2,RV_OK,TK_NotStart,A5590,Duct work,,936,936,16,0,0,0,16,0,0,0,,,,"Saturday, June 29, 2013","Sunday, June 30, 2013",,"Monday, March 4, 2013","Tuesday, March 5, 2013","Monday, March 4, 2013","Tuesday, March 5, 2013","Monday, March 4, 2013","Tuesday, March 5, 2013",,6/29/2013 8:00,6/30/2013 17:00,,PT_Normal,,,,,0gj7L4TR+k26p8CigA4NTg,yYOWXKTO30qpVPy7CmO8Yg,,,N,0,0,,,3/15/2012 14:57,3/18/2012 22:47,admin,NotPrmUser
368,96837,1685,13413,794,1,0,N,N,N,CP_Drtn,TT_Task,DT_FixedDUR2,RV_OK,TK_NotStart,A5580,Air handling unit,,752,752,16,0,0,0,16,0,0,0,,,,"Saturday, June 29, 2013","Sunday, June 30, 2013",,"Wednesday, March 27, 2013","Thursday, March 28, 2013","Wednesday, March 27, 2013","Thursday, March 28, 2013","Wednesday, March 27, 2013","Thursday, March 28, 2013",,6/29/2013 8:00,6/30/2013 17:00,,PT_Normal,,,,,6drQsYvv10KcpF8qVVNBQg,wUaY1sBdSEGJqD5dSONzJw,,,N,0,0,,,3/15/2012 14:57,3/18/2012 22:47,admin,NotPrmUser
369,96838,1685,13397,794,1,0,N,N,N,CP_Drtn,TT_Task,DT_FixedDUR2,RV_OK,TK_NotStart,A5600,Duct work,,848,152,16,0,0,0,16,0,0,0,,,,"Friday, May 10, 2013","Saturday, May 11, 2013",,"Thursday, January 24, 2013","Friday, January 25, 2013","Thursday, January 24, 2013","Friday, January 25, 2013","Thursday, January 24, 2013","Friday, January 25, 2013",,5/10/2013 8:00,5/11/2013 17:00,,PT_Normal,,,,,AV2q90axLEKn9j72bhDUnw,yYOWXKTO30qpVPy7CmO8Yg,,,N,0,0,,,3/15/2012 16:54,3/18/2012 13:25,admin,admin
370,96839,1685,13397,794,1,0,N,N,N,CP_Drtn,TT_Task,DT_FixedDUR2,RV_OK,TK_NotStart,A5610,VRF units,,816,816,120,0,0,0,120,0,0,0,,,,"Sunday, June 16, 2013","Sunday, June 30, 2013",,"Wednesday, March 6, 2013","Wednesday, March 20, 2013","Wednesday, March 6, 2013","Wednesday, March 20, 2013","Wednesday, March 6, 2013","Wednesday, March 20, 2013",,6/16/2013 8:00,6/30/2013 17:00,,PT_Normal,,,,,#NAME?,wq0oqOjUjEWy0KhGqjoKgw,,,N,0,0,,,3/15/2012 16:54,3/18/2012 22:47,admin,NotPrmUser
371,96840,1685,13409,794,1,0,N,N,N,CP_Drtn,TT_Task,DT_FixedDUR2,RV_OK,TK_NotStart,A5640,Duct work,,808,0,320,0,0,0,320,0,0,0,,,,"Monday, April 8, 2013","Friday, May 17, 2013",,"Friday, December 28, 2012","Tuesday, February 5, 2013","Friday, December 28, 2012","Tuesday, February 5, 2013","Friday, December 28, 2012","Tuesday, February 5, 2013",,4/8/2013 8:00,5/17/2013 17:00,,PT_Normal,,,,,BSjxafUwkkChwMloOZXQuQ,yYOWXKTO30qpVPy7CmO8Yg,,,N,0,0,,,3/15/2012 17:04,3/18/2012 21:18,admin,NotPrmUser
372,96841,1685,13409,794,1,0,N,N,N,CP_Drtn,TT_Task,DT_FixedDUR2,RV_OK,TK_NotStart,A5620,Air handling unit,,864,864,56,0,0,0,56,0,0,0,,,,"Monday, June 24, 2013","Sunday, June 30, 2013",,"Friday, March 8, 2013","Thursday, March 14, 2013","Friday, March 8, 2013","Thursday, March 14, 2013","Friday, March 8, 2013","Thursday, March 14, 2013",,6/24/2013 8:00,6/30/2013 17:00,,PT_Normal,,,,,D8jxat5UREyAzfFAnr/WUw,wUaY1sBdSEGJqD5dSONzJw,,,N,0,0,,,3/15/2012 17:04,3/18/2012 22:47,admin,NotPrmUser
373,96842,1685,13409,794,1,0,N,N,N,CP_Drtn,TT_Task,DT_FixedDUR2,RV_OK,TK_NotStart,A5630,Chillers installation,,808,0,112,0,0,0,112,0,0,0,,,,"Monday, June 17, 2013","Sunday, June 30, 2013",,"Friday, March 8, 2013","Thursday, March 21, 2013","Friday, March 8, 2013","Thursday, March 21, 2013","Friday, March 8, 2013","Thursday, March 21, 2013",,6/17/2013 8:00,6/30/2013 17:00,,PT_Normal,,,,,DPbdJoxHhUqo+sVpDW8jpw,GBPSjt3A20aMZquSBhMalA,,,N,0,0,,,3/15/2012 17:04,3/18/2012 21:18,admin,NotPrmUser
374,96843,1685,13409,794,1,0,N,N,N,CP_Drtn,TT_Task,DT_FixedDUR2,RV_OK,TK_NotStart,A5650,Piping,,1160,1160,320,0,0,0,320,0,0,0,,,,"Wednesday, May 22, 2013","Sunday, June 30, 2013",,"Friday, December 28, 2012","Tuesday, February 5, 2013","Friday, December 28, 2012","Tuesday, February 5, 2013","Friday, December 28, 2012","Tuesday, February 5, 2013",,5/22/2013 8:00,6/30/2013 17:00,,PT_Normal,,,,,57edngqZ8Ue8ay3Jbuw7qQ,,,,N,0,0,,,3/15/2012 17:04,3/18/2012 22:47,admin,NotPrmUser
375,96844,1685,13405,794,1,0,N,N,N,CP_Drtn,TT_Task,DT_FixedDUR2,RV_OK,TK_NotStart,A5690,Duct work,,872,0,240,0,0,0,240,0,0,0,,,,"Monday, April 22, 2013","Tuesday, May 21, 2013",,"Thursday, January 3, 2013","Friday, February 1, 2013","Thursday, January 3, 2013","Friday, February 1, 2013","Thursday, January 3, 2013","Friday, February 1, 2013",,4/22/2013 8:00,5/21/2013 17:00,,PT_Normal,,,,,#NAME?,yYOWXKTO30qpVPy7CmO8Yg,,,N,0,0,,,3/15/2012 17:12,3/16/2012 15:23,admin,admin
376,96845,1685,13405,794,1,0,N,N,N,CP_Drtn,TT_Task,DT_FixedDUR2,RV_OK,TK_NotStart,A5660,Air handling unit,,976,976,56,0,0,0,56,0,0,0,,,,"Monday, June 24, 2013","Sunday, June 30, 2013",,"Friday, February 22, 2013","Thursday, February 28, 2013","Friday, February 22, 2013","Thursday, February 28, 2013","Friday, February 22, 2013","Thursday, February 28, 2013",,6/24/2013 8:00,6/30/2013 17:00,,PT_Normal,,,,,kqhc6UHRCkmCEv3BfKNdfQ,wUaY1sBdSEGJqD5dSONzJw,,,N,0,0,,,3/15/2012 17:12,3/18/2012 22:47,admin,NotPrmUser
377,96846,1685,13405,794,1,0,N,N,N,CP_Drtn,TT_Task,DT_FixedDUR2,RV_OK,TK_NotStart,A5670,Chillers installation,,976,976,56,0,0,0,56,0,0,0,,,,"Monday, June 24, 2013","Sunday, June 30, 2013",,"Friday, February 22, 2013","Thursday, February 28, 2013","Friday, February 22, 2013","Thursday, February 28, 2013","Friday, February 22, 2013","Thursday, February 28, 2013",,6/24/2013 8:00,6/30/2013 17:00,,PT_Normal,,,,,uIbKhuvDVEKSMooBY6LwFw,GBPSjt3A20aMZquSBhMalA,,,N,0,0,,,3/15/2012 17:12,3/18/2012 22:47,admin,NotPrmUser
378,96847,1685,13405,794,1,0,N,N,N,CP_Drtn,TT_Task,DT_FixedDUR2,RV_OK,TK_NotStart,A5680,Piping,,872,0,240,0,0,0,240,0,0,0,,,,"Monday, April 22, 2013","Tuesday, May 21, 2013",,"Thursday, January 3, 2013","Friday, February 1, 2013","Thursday, January 3, 2013","Friday, February 1, 2013","Thursday, January 3, 2013","Friday, February 1, 2013",,4/22/2013 8:00,5/21/2013 17:00,,PT_Normal,,,,,HkE7yAyFNUODeaFtF9QbTg,MsPcnbgmVkGnlIfunQPDOQ,,,N,0,0,,,3/15/2012 17:12,3/16/2012 15:23,admin,admin
379,96848,1685,13401,794,1,0,N,N,N,CP_Drtn,TT_Task,DT_FixedDUR2,RV_OK,TK_NotStart,A5710,Duct work,,1904,1904,16,0,0,0,16,0,0,0,,,,"Saturday, June 29, 2013","Sunday, June 30, 2013",,"Saturday, November 3, 2012","Sunday, November 4, 2012","Saturday, November 3, 2012","Sunday, November 4, 2012","Saturday, November 3, 2012","Sunday, November 4, 2012",,6/29/2013 8:00,6/30/2013 17:00,,PT_Normal,,,,,se+bGjXor0Gsf/kpvvYj6w,yYOWXKTO30qpVPy7CmO8Yg,,,N,0,0,,,3/15/2012 17:21,3/18/2012 22:47,admin,NotPrmUser
380,96849,1685,13401,794,1,0,N,N,N,CP_Drtn,TT_Task,DT_FixedDUR2,RV_OK,TK_NotStart,A5700,Air handling unit,,1720,1720,16,0,0,0,16,0,0,0,,,,"Saturday, June 29, 2013","Sunday, June 30, 2013",,"Monday, November 26, 2012","Tuesday, November 27, 2012","Monday, November 26, 2012","Tuesday, November 27, 2012","Monday, November 26, 2012","Tuesday, November 27, 2012",,6/29/2013 8:00,6/30/2013 17:00,,PT_Normal,,,,,pO16NK+rW0O1akCV7dUeVg,wUaY1sBdSEGJqD5dSONzJw,,,N,0,0,,,3/15/2012 17:21,3/18/2012 22:47,admin,NotPrmUser
381,96850,1685,13411,794,1,0,N,N,N,CP_Drtn,TT_Task,DT_FixedDUR2,RV_OK,TK_NotStart,A5730,Duct work,,848,424,16,0,0,0,16,0,0,0,,,,"Wednesday, April 3, 2013","Thursday, April 4, 2013",,"Tuesday, December 18, 2012","Wednesday, December 19, 2012","Tuesday, December 18, 2012","Wednesday, December 19, 2012","Tuesday, December 18, 2012","Wednesday, December 19, 2012",,4/3/2013 8:00,4/4/2013 17:00,,PT_Normal,,,,,M/gtshgYFU+6UdyzFfKBmQ,yYOWXKTO30qpVPy7CmO8Yg,,,N,0,0,,,3/15/2012 17:27,3/16/2012 15:23,admin,admin
382,96851,1685,13411,794,1,0,N,N,N,CP_Drtn,TT_Task,DT_FixedDUR2,RV_OK,TK_NotStart,A5720,Air handling unit,,992,992,16,0,0,0,16,0,0,0,,,,"Saturday, June 29, 2013","Sunday, June 30, 2013",,"Monday, February 25, 2013","Tuesday, February 26, 2013","Monday, February 25, 2013","Tuesday, February 26, 2013","Monday, February 25, 2013","Tuesday, February 26, 2013",,6/29/2013 8:00,6/30/2013 17:00,,PT_Normal,,,,,WX6fmLpYmEO+DiXOs67nHg,wUaY1sBdSEGJqD5dSONzJw,,,N,0,0,,,3/15/2012 17:27,3/18/2012 22:47,admin,NotPrmUser
383,96852,1685,13419,794,1,0,N,N,N,CP_Drtn,TT_Task,DT_FixedDUR2,RV_OK,TK_NotStart,A5740,Split units,,568,568,8,0,0,0,8,0,0,0,,,,"Sunday, June 30, 2013","Sunday, June 30, 2013",,"Saturday, April 20, 2013","Saturday, April 20, 2013","Saturday, April 20, 2013","Saturday, April 20, 2013","Saturday, April 20, 2013","Saturday, April 20, 2013",,6/30/2013 8:00,6/30/2013 17:00,,PT_Normal,,,,,MwrdSzSsoEe/jzJwAmBW7A,Oh3Hbrgu5USROMbs1bwlwg,,,N,0,0,,,3/15/2012 17:28,3/18/2012 22:47,admin,NotPrmUser
384,96853,1685,13393,794,1,0,N,N,N,CP_Drtn,TT_Task,DT_FixedDUR2,RV_OK,TK_NotStart,A5760,Duct work,,1024,1024,16,0,0,0,16,0,0,0,,,,"Saturday, June 29, 2013","Sunday, June 30, 2013",,"Thursday, February 21, 2013","Friday, February 22, 2013","Thursday, February 21, 2013","Friday, February 22, 2013","Thursday, February 21, 2013","Friday, February 22, 2013",,6/29/2013 8:00,6/30/2013 17:00,,PT_Normal,,,,,LQLwc0ruQ0+F3DZRtblKiQ,yYOWXKTO30qpVPy7CmO8Yg,,,N,0,0,,,3/15/2012 17:28,3/18/2012 22:47,admin,NotPrmUser
385,96854,1685,13393,794,1,0,N,N,N,CP_Drtn,TT_Task,DT_FixedDUR2,RV_OK,TK_NotStart,A5750,Split units,,888,888,16,0,0,0,16,0,0,0,,,,"Saturday, June 29, 2013","Sunday, June 30, 2013",,"Sunday, March 10, 2013","Monday, March 11, 2013","Sunday, March 10, 2013","Monday, March 11, 2013","Sunday, March 10, 2013","Monday, March 11, 2013",,6/29/2013 8:00,6/30/2013 17:00,,PT_Normal,,,,,mVKS4KGvhUan6V2K7144Tg,Oh3Hbrgu5USROMbs1bwlwg,,,N,0,0,,,3/15/2012 17:28,3/18/2012 22:47,admin,NotPrmUser
386,96857,1685,13399,794,1,0,N,N,N,CP_Drtn,TT_Task,DT_FixedDUR2,RV_OK,TK_NotStart,A5770,Split units,,1432,1432,16,0,0,0,16,0,0,0,,,,"Saturday, June 29, 2013","Sunday, June 30, 2013",,"Tuesday, January 1, 2013","Wednesday, January 2, 2013","Tuesday, January 1, 2013","Wednesday, January 2, 2013","Tuesday, January 1, 2013","Wednesday, January 2, 2013",,6/29/2013 8:00,6/30/2013 17:00,,PT_Normal,,,,,ooPCic7SPE2YOtpoXcO0VA,Oh3Hbrgu5USROMbs1bwlwg,,,N,0,0,,,3/15/2012 17:30,3/18/2012 22:47,admin,NotPrmUser
387,96858,1685,13407,794,1,0,N,N,N,CP_Drtn,TT_Task,DT_FixedDUR2,RV_OK,TK_NotStart,A5780,Split units,,1160,1160,8,0,0,0,8,0,0,0,,,,"Sunday, June 30, 2013","Sunday, June 30, 2013",,"Tuesday, February 5, 2013","Tuesday, February 5, 2013","Tuesday, February 5, 2013","Tuesday, February 5, 2013","Tuesday, February 5, 2013","Tuesday, February 5, 2013",,6/30/2013 8:00,6/30/2013 17:00,,PT_Normal,,,,,YE21BGm5NkOO35LWQNntEA,Oh3Hbrgu5USROMbs1bwlwg,,,N,0,0,,,3/15/2012 17:45,3/18/2012 22:47,admin,NotPrmUser
388,96859,1685,13403,794,1,0,N,N,N,CP_Drtn,TT_Task,DT_FixedDUR2,RV_OK,TK_NotStart,A5790,Split units,,760,760,32,0,0,0,32,0,0,0,,,,"Thursday, June 27, 2013","Sunday, June 30, 2013",,"Sunday, March 24, 2013","Wednesday, March 27, 2013","Sunday, March 24, 2013","Wednesday, March 27, 2013","Sunday, March 24, 2013","Wednesday, March 27, 2013",,6/27/2013 8:00,6/30/2013 17:00,,PT_Normal,,,,,azBuxyV9Eki19DKYYTNohw,YE21BGm5NkOO35LWQNntEA,,,N,0,0,,,3/15/2012 17:46,3/18/2012 22:47,admin,NotPrmUser
389,96860,1685,12255,794,1,0,N,N,N,CP_Drtn,TT_LOE,DT_FixedDUR2,RV_OK,TK_NotStart,A5800,cash,,656,0,1064,0,0,0,1064,0,0,0,,,,"Monday, February 18, 2013","Sunday, June 30, 2013",,"Wednesday, November 28, 2012","Tuesday, April 9, 2013","Wednesday, November 28, 2012","Tuesday, April 9, 2013","Wednesday, November 28, 2012","Tuesday, April 9, 2013",,2/18/2013 8:00,6/30/2013 17:00,,PT_Normal,,,,,qMonQABQYkWPMjI3RWYiUw,,,,N,0,0,,,3/16/2012 16:17,3/18/2012 13:23,admin,admin
390,96861,1685,12259,794,1,0,N,N,N,CP_Drtn,TT_LOE,DT_FixedDUR2,RV_OK,TK_NotStart,A5810,cash,,592,0,1528,0,0,0,1528,0,0,0,,,,"Saturday, December 22, 2012","Sunday, June 30, 2013",,"Tuesday, October 9, 2012","Wednesday, April 17, 2013","Tuesday, October 9, 2012","Wednesday, April 17, 2013","Tuesday, October 9, 2012","Wednesday, April 17, 2013",,12/22/2012 8:00,6/30/2013 17:00,,PT_Normal,,,,,vU5x3B2YBUa7ko4f64BL6g,qMonQABQYkWPMjI3RWYiUw,,,N,0,0,,,3/16/2012 16:22,3/18/2012 21:43,admin,NotPrmUser
391,96862,1685,12295,794,1,0,N,N,N,CP_Drtn,TT_LOE,DT_FixedDUR2,RV_OK,TK_NotStart,A5820,cash,,368,0,792,0,0,0,792,0,0,0,,,,"Tuesday, April 16, 2013","Sunday, June 30, 2013",,"Wednesday, February 6, 2013","Wednesday, May 15, 2013","Wednesday, February 6, 2013","Wednesday, May 15, 2013","Wednesday, February 6, 2013","Wednesday, May 15, 2013",,4/16/2013 8:00,6/30/2013 17:00,,PT_Normal,,,,,qSprEF5nIUmYkiSUlwzq+w,qMonQABQYkWPMjI3RWYiUw,,,N,0,0,,,3/16/2012 16:24,3/18/2012 17:45,admin,admin
392,96864,1685,13424,794,0,0,N,N,N,CP_Drtn,TT_Mile,DT_FixedDrtn,RV_OK,TK_NotStart,A5840,Place order for bulk material,,904,0,0,0,0,0,0,0,0,0,,,,"Saturday, February 9, 2013","Saturday, February 9, 2013",,"Friday, October 19, 2012","Friday, October 19, 2012","Friday, October 19, 2012","Friday, October 19, 2012","Friday, October 19, 2012","Friday, October 19, 2012",,2/9/2013 8:00,2/9/2013 8:00,,PT_Normal,,,,,Nc60WZJXhk68FyxjbCSmQw,,,,N,0,0,,,3/16/2012 17:07,3/18/2012 13:29,admin,admin
393,96865,1685,13424,794,0,0,N,N,N,CP_Drtn,TT_Mile,DT_FixedDrtn,RV_OK,TK_NotStart,A5850,material received@construction site,,904,0,0,0,0,0,0,0,0,0,,,,"Saturday, June 1, 2013","Saturday, June 1, 2013",,"Friday, February 8, 2013","Friday, February 8, 2013","Friday, February 8, 2013","Friday, February 8, 2013","Friday, February 8, 2013","Friday, February 8, 2013",,6/1/2013 8:00,6/1/2013 8:00,,PT_Normal,,,,,TJ/6xt/Yo0KXLSw19lkcWw,,,,N,0,0,,,3/16/2012 17:07,3/18/2012 14:08,admin,admin
394,96866,1685,13424,794,0,0,N,N,N,CP_Drtn,TT_Mile,DT_FixedDrtn,RV_OK,TK_NotStart,A5860,All material received&p.o closed,,904,904,0,0,0,0,0,0,0,0,,,,"Sunday, June 30, 2013","Sunday, June 30, 2013",,"Sunday, March 10, 2013","Sunday, March 10, 2013","Sunday, March 10, 2013","Sunday, March 10, 2013","Sunday, March 10, 2013","Sunday, March 10, 2013",,6/30/2013 17:00,6/30/2013 17:00,,PT_Normal,,,,,AhBWY8kIcECopJzIAHY1hA,,,,N,0,0,,,3/16/2012 17:07,3/18/2012 22:47,admin,NotPrmUser
395,96868,1685,13425,794,0,0,N,N,N,CP_Drtn,TT_Mile,DT_FixedDrtn,RV_OK,TK_NotStart,A5870,Issue mr for approval,,1736,0,0,0,0,0,0,0,0,0,,,,"Thursday, April 4, 2013","Thursday, April 4, 2013",,"Thursday, August 30, 2012","Thursday, August 30, 2012","Thursday, August 30, 2012","Thursday, August 30, 2012","Thursday, August 30, 2012","Thursday, August 30, 2012",,4/4/2013 8:00,4/4/2013 8:00,,PT_Normal,,,,,fERcjmK/fECXr+fYuxoBnw,,,,N,0,0,,,3/16/2012 17:19,3/18/2012 21:24,admin,NotPrmUser
396,96869,1685,13425,794,0,0,N,N,N,CP_Drtn,TT_Mile,DT_FixedDrtn,RV_OK,TK_NotStart,A5880,Issue Po,,1736,0,0,0,0,0,0,0,0,0,,,,"Thursday, April 18, 2013","Thursday, April 18, 2013",,"Thursday, September 13, 2012","Thursday, September 13, 2012","Thursday, September 13, 2012","Thursday, September 13, 2012","Thursday, September 13, 2012","Thursday, September 13, 2012",,4/18/2013 8:00,4/18/2013 8:00,,PT_Normal,,,,,Op4TZaoVwkm03uTW/O0qyQ,,,,N,0,0,,,3/16/2012 17:19,3/18/2012 21:24,admin,NotPrmUser
397,96870,1685,13425,794,0,0,N,N,N,CP_Drtn,TT_Mile,DT_FixedDrtn,RV_OK,TK_NotStart,A5890,Material received and inspected@ site,,1736,0,0,0,0,0,0,0,0,0,,,,"Monday, June 3, 2013","Monday, June 3, 2013",,"Monday, October 29, 2012","Monday, October 29, 2012","Monday, October 29, 2012","Monday, October 29, 2012","Monday, October 29, 2012","Monday, October 29, 2012",,6/3/2013 8:00,6/3/2013 8:00,,PT_Normal,,,,,pQ1eAfAnm06En/Xq00/bjg,,,,N,0,0,,,3/16/2012 17:19,3/18/2012 21:24,admin,NotPrmUser
398,96871,1685,13425,794,0,0,N,N,N,CP_Drtn,TT_Mile,DT_FixedDrtn,RV_OK,TK_NotStart,A5900,All spare parts rec'd,,1736,1736,0,0,0,0,0,0,0,0,,,,"Sunday, June 30, 2013","Sunday, June 30, 2013",,"Monday, November 26, 2012","Monday, November 26, 2012","Monday, November 26, 2012","Monday, November 26, 2012","Monday, November 26, 2012","Monday, November 26, 2012",,6/30/2013 17:00,6/30/2013 17:00,,PT_Normal,,,,,L55AtgiuDUyRuc3zz/HAyQ,,,,N,0,0,,,3/16/2012 17:19,3/18/2012 22:47,admin,NotPrmUser
399,96892,1685,13431,794,0,0,N,N,N,CP_Drtn,TT_Mile,DT_FixedDrtn,RV_OK,TK_NotStart,A6110,Issue mr for approval,,712,0,0,0,0,0,0,0,0,0,,,,"Wednesday, January 16, 2013","Wednesday, January 16, 2013",,"Friday, October 19, 2012","Friday, October 19, 2012","Friday, October 19, 2012","Friday, October 19, 2012","Friday, October 19, 2012","Friday, October 19, 2012",,1/16/2013 8:00,1/16/2013 8:00,,PT_Normal,,,,,RPG5KguaJUyhAa0ieSN5eg,fERcjmK/fECXr+fYuxoBnw,,,N,0,0,,,3/16/2012 19:06,3/18/2012 15:05,admin,admin
400,96893,1685,13431,794,0,0,N,N,N,CP_Drtn,TT_Mile,DT_FixedDrtn,RV_OK,TK_NotStart,A6120,Issue Po,,712,0,0,0,0,0,0,0,0,0,,,,"Wednesday, February 13, 2013","Wednesday, February 13, 2013",,"Friday, November 16, 2012","Friday, November 16, 2012","Friday, November 16, 2012","Friday, November 16, 2012","Friday, November 16, 2012","Friday, November 16, 2012",,2/13/2013 8:00,2/13/2013 8:00,,PT_Normal,,,,,N4am2I+QokWQzNoh/sN2Tw,Op4TZaoVwkm03uTW/O0qyQ,,,N,0,0,,,3/16/2012 19:06,3/18/2012 15:05,admin,admin
401,96894,1685,13431,794,0,0,N,N,N,CP_Drtn,TT_Mile,DT_FixedDrtn,RV_OK,TK_NotStart,A6130,Material received and inspected@ site,,712,0,0,0,0,0,0,0,0,0,,,,"Monday, June 3, 2013","Monday, June 3, 2013",,"Wednesday, March 6, 2013","Wednesday, March 6, 2013","Wednesday, March 6, 2013","Wednesday, March 6, 2013","Wednesday, March 6, 2013","Wednesday, March 6, 2013",,6/3/2013 8:00,6/3/2013 8:00,,PT_Normal,,,,,CxPhhMSPzEO0m7DGVpdleg,pQ1eAfAnm06En/Xq00/bjg,,,N,0,0,,,3/16/2012 19:06,3/18/2012 15:05,admin,admin
402,96895,1685,13431,794,0,0,N,N,N,CP_Drtn,TT_Mile,DT_FixedDrtn,RV_OK,TK_NotStart,A6140,All spare parts rec'd,,712,712,0,0,0,0,0,0,0,0,,,,"Sunday, June 30, 2013","Sunday, June 30, 2013",,"Wednesday, April 3, 2013","Wednesday, April 3, 2013","Wednesday, April 3, 2013","Wednesday, April 3, 2013","Wednesday, April 3, 2013","Wednesday, April 3, 2013",,6/30/2013 17:00,6/30/2013 17:00,,PT_Normal,,,,,OVaS7Z1raEGV6xxguRPkyA,L55AtgiuDUyRuc3zz/HAyQ,,,N,0,0,,,3/16/2012 19:06,3/18/2012 22:47,admin,NotPrmUser
403,96896,1685,13432,794,0,0,N,N,N,CP_Drtn,TT_Mile,DT_FixedDrtn,RV_OK,TK_NotStart,A6150,Issue mr for approval,,1512,0,0,0,0,0,0,0,0,0,,,,"Friday, April 26, 2013","Friday, April 26, 2013",,"Friday, October 19, 2012","Friday, October 19, 2012","Friday, October 19, 2012","Friday, October 19, 2012","Friday, October 19, 2012","Friday, October 19, 2012",,4/26/2013 8:00,4/26/2013 8:00,,PT_Normal,,,,,BcwzU7e/QEiD8mb/wtBDkQ,fERcjmK/fECXr+fYuxoBnw,,,N,0,0,,,3/16/2012 19:06,3/18/2012 14:31,admin,admin
404,96897,1685,13432,794,0,0,N,N,N,CP_Drtn,TT_Mile,DT_FixedDrtn,RV_OK,TK_NotStart,A6160,Issue Po,,1512,0,0,0,0,0,0,0,0,0,,,,"Friday, May 24, 2013","Friday, May 24, 2013",,"Friday, November 16, 2012","Friday, November 16, 2012","Friday, November 16, 2012","Friday, November 16, 2012","Friday, November 16, 2012","Friday, November 16, 2012",,5/24/2013 8:00,5/24/2013 8:00,,PT_Normal,,,,,KdXuqAECcUizKp4OKhe1lw,Op4TZaoVwkm03uTW/O0qyQ,,,N,0,0,,,3/16/2012 19:06,3/18/2012 14:31,admin,admin
405,96898,1685,13432,794,0,0,N,N,N,CP_Drtn,TT_Mile,DT_FixedDrtn,RV_OK,TK_NotStart,A6170,Material received and inspected@ site,,1512,0,0,0,0,0,0,0,0,0,,,,"Monday, June 3, 2013","Monday, June 3, 2013",,"Monday, November 26, 2012","Monday, November 26, 2012","Monday, November 26, 2012","Monday, November 26, 2012","Monday, November 26, 2012","Monday, November 26, 2012",,6/3/2013 8:00,6/3/2013 8:00,,PT_Normal,,,,,hqX1TpZ3dESlYvvnDFxvjQ,pQ1eAfAnm06En/Xq00/bjg,,,N,0,0,,,3/16/2012 19:06,3/18/2012 14:31,admin,admin
406,96899,1685,13432,794,0,0,N,N,N,CP_Drtn,TT_Mile,DT_FixedDrtn,RV_OK,TK_NotStart,A6180,All spare parts rec'd,,1512,1512,0,0,0,0,0,0,0,0,,,,"Sunday, June 30, 2013","Sunday, June 30, 2013",,"Monday, December 24, 2012","Monday, December 24, 2012","Monday, December 24, 2012","Monday, December 24, 2012","Monday, December 24, 2012","Monday, December 24, 2012",,6/30/2013 17:00,6/30/2013 17:00,,PT_Normal,,,,,Rg9mDKd18EmsaiQMs+4GKA,L55AtgiuDUyRuc3zz/HAyQ,,,N,0,0,,,3/16/2012 19:06,3/18/2012 22:47,admin,NotPrmUser
407,96900,1685,13433,794,0,0,N,N,N,CP_Drtn,TT_Mile,DT_FixedDrtn,RV_OK,TK_NotStart,A6190,Issue mr for approval,,1256,0,0,0,0,0,0,0,0,0,,,,"Monday, March 25, 2013","Monday, March 25, 2013",,"Friday, October 19, 2012","Friday, October 19, 2012","Friday, October 19, 2012","Friday, October 19, 2012","Friday, October 19, 2012","Friday, October 19, 2012",,3/25/2013 8:00,3/25/2013 8:00,,PT_Normal,,,,,ilfTtp/x4kWoj2Pyt5Slog,fERcjmK/fECXr+fYuxoBnw,,,N,0,0,,,3/16/2012 19:06,3/18/2012 14:22,admin,admin
408,96901,1685,13433,794,0,0,N,N,N,CP_Drtn,TT_Mile,DT_FixedDrtn,RV_OK,TK_NotStart,A6200,Issue Po,,1256,0,0,0,0,0,0,0,0,0,,,,"Monday, April 22, 2013","Monday, April 22, 2013",,"Friday, November 16, 2012","Friday, November 16, 2012","Friday, November 16, 2012","Friday, November 16, 2012","Friday, November 16, 2012","Friday, November 16, 2012",,4/22/2013 8:00,4/22/2013 8:00,,PT_Normal,,,,,JjyO5JtUC0evJAFfEroaTQ,Op4TZaoVwkm03uTW/O0qyQ,,,N,0,0,,,3/16/2012 19:06,3/18/2012 14:22,admin,admin
409,96902,1685,13433,794,0,0,N,N,N,CP_Drtn,TT_Mile,DT_FixedDrtn,RV_OK,TK_NotStart,A6210,Material received and inspected@ site,,1256,0,0,0,0,0,0,0,0,0,,,,"Monday, June 3, 2013","Monday, June 3, 2013",,"Friday, December 28, 2012","Friday, December 28, 2012","Friday, December 28, 2012","Friday, December 28, 2012","Friday, December 28, 2012","Friday, December 28, 2012",,6/3/2013 8:00,6/3/2013 8:00,,PT_Normal,,,,,eOu/rSf1zEi127fcnuJ1wA,pQ1eAfAnm06En/Xq00/bjg,,,N,0,0,,,3/16/2012 19:06,3/18/2012 14:22,admin,admin
410,96903,1685,13433,794,0,0,N,N,N,CP_Drtn,TT_Mile,DT_FixedDrtn,RV_OK,TK_NotStart,A6220,All spare parts rec'd,,1256,1256,0,0,0,0,0,0,0,0,,,,"Sunday, June 30, 2013","Sunday, June 30, 2013",,"Friday, January 25, 2013","Friday, January 25, 2013","Friday, January 25, 2013","Friday, January 25, 2013","Friday, January 25, 2013","Friday, January 25, 2013",,6/30/2013 17:00,6/30/2013 17:00,,PT_Normal,,,,,+XyF7muyV0+7ND07sY/Few,L55AtgiuDUyRuc3zz/HAyQ,,,N,0,0,,,3/16/2012 19:06,3/18/2012 22:47,admin,NotPrmUser
411,96904,1685,13434,794,0,0,N,N,N,CP_Drtn,TT_Mile,DT_FixedDrtn,RV_OK,TK_NotStart,A6230,Issue mr for approval,,696,0,0,0,0,0,0,0,0,0,,,,"Monday, January 14, 2013","Monday, January 14, 2013",,"Friday, October 19, 2012","Friday, October 19, 2012","Friday, October 19, 2012","Friday, October 19, 2012","Friday, October 19, 2012","Friday, October 19, 2012",,1/14/2013 8:00,1/14/2013 8:00,,PT_Normal,,,,,0sia7nZKb0CVWE2nuNaRDA,fERcjmK/fECXr+fYuxoBnw,,,N,0,0,,,3/16/2012 19:07,3/18/2012 15:26,admin,admin
412,96905,1685,13434,794,0,0,N,N,N,CP_Drtn,TT_Mile,DT_FixedDrtn,RV_OK,TK_NotStart,A6240,Issue Po,,696,0,0,0,0,0,0,0,0,0,,,,"Monday, February 11, 2013","Monday, February 11, 2013",,"Friday, November 16, 2012","Friday, November 16, 2012","Friday, November 16, 2012","Friday, November 16, 2012","Friday, November 16, 2012","Friday, November 16, 2012",,2/11/2013 8:00,2/11/2013 8:00,,PT_Normal,,,,,Jno2ZPsJZkedt/PTiAaXQQ,Op4TZaoVwkm03uTW/O0qyQ,,,N,0,0,,,3/16/2012 19:07,3/18/2012 15:26,admin,admin
413,96906,1685,13434,794,0,0,N,N,N,CP_Drtn,TT_Mile,DT_FixedDrtn,RV_OK,TK_NotStart,A6250,Material received and inspected@ site,,696,0,0,0,0,0,0,0,0,0,,,,"Monday, June 3, 2013","Monday, June 3, 2013",,"Friday, March 8, 2013","Friday, March 8, 2013","Friday, March 8, 2013","Friday, March 8, 2013","Friday, March 8, 2013","Friday, March 8, 2013",,6/3/2013 8:00,6/3/2013 8:00,,PT_Normal,,,,,wKUvaFJtBEGVKVDLK+JxOg,pQ1eAfAnm06En/Xq00/bjg,,,N,0,0,,,3/16/2012 19:07,3/18/2012 15:26,admin,admin
414,96907,1685,13434,794,0,0,N,N,N,CP_Drtn,TT_Mile,DT_FixedDrtn,RV_OK,TK_NotStart,A6260,All spare parts rec'd,,696,696,0,0,0,0,0,0,0,0,,,,"Sunday, June 30, 2013","Sunday, June 30, 2013",,"Friday, April 5, 2013","Friday, April 5, 2013","Friday, April 5, 2013","Friday, April 5, 2013","Friday, April 5, 2013","Friday, April 5, 2013",,6/30/2013 17:00,6/30/2013 17:00,,PT_Normal,,,,,pxemiHx5i0iQcC98jwXiaA,L55AtgiuDUyRuc3zz/HAyQ,,,N,0,0,,,3/16/2012 19:07,3/18/2012 22:47,admin,NotPrmUser
415,96908,1685,13435,794,0,0,N,N,N,CP_Drtn,TT_Mile,DT_FixedDrtn,RV_OK,TK_NotStart,A6270,Issue mr for approval,,632,0,0,0,0,0,0,0,0,0,,,,"Sunday, January 6, 2013","Sunday, January 6, 2013",,"Friday, October 19, 2012","Friday, October 19, 2012","Friday, October 19, 2012","Friday, October 19, 2012","Friday, October 19, 2012","Friday, October 19, 2012",,1/6/2013 8:00,1/6/2013 8:00,,PT_Normal,,,,,ofJFnzkvcUqes4JP87Lwzw,fERcjmK/fECXr+fYuxoBnw,,,N,0,0,,,3/16/2012 19:07,3/18/2012 15:27,admin,admin
416,96909,1685,13435,794,0,0,N,N,N,CP_Drtn,TT_Mile,DT_FixedDrtn,RV_OK,TK_NotStart,A6280,Issue Po,,632,0,0,0,0,0,0,0,0,0,,,,"Sunday, February 3, 2013","Sunday, February 3, 2013",,"Friday, November 16, 2012","Friday, November 16, 2012","Friday, November 16, 2012","Friday, November 16, 2012","Friday, November 16, 2012","Friday, November 16, 2012",,2/3/2013 8:00,2/3/2013 8:00,,PT_Normal,,,,,211Fz55M3UOjU/qb/uYIHQ,Op4TZaoVwkm03uTW/O0qyQ,,,N,0,0,,,3/16/2012 19:07,3/18/2012 15:27,admin,admin
417,96910,1685,13435,794,0,0,N,N,N,CP_Drtn,TT_Mile,DT_FixedDrtn,RV_OK,TK_NotStart,A6290,Material received and inspected@ site,,632,0,0,0,0,0,0,0,0,0,,,,"Monday, June 3, 2013","Monday, June 3, 2013",,"Saturday, March 16, 2013","Saturday, March 16, 2013","Saturday, March 16, 2013","Saturday, March 16, 2013","Saturday, March 16, 2013","Saturday, March 16, 2013",,6/3/2013 8:00,6/3/2013 8:00,,PT_Normal,,,,,4pGDGZS0yEmxL9sOmiF3ag,pQ1eAfAnm06En/Xq00/bjg,,,N,0,0,,,3/16/2012 19:07,3/18/2012 15:27,admin,admin
418,96911,1685,13435,794,0,0,N,N,N,CP_Drtn,TT_Mile,DT_FixedDrtn,RV_OK,TK_NotStart,A6300,All spare parts rec'd,,632,632,0,0,0,0,0,0,0,0,,,,"Sunday, June 30, 2013","Sunday, June 30, 2013",,"Saturday, April 13, 2013","Saturday, April 13, 2013","Saturday, April 13, 2013","Saturday, April 13, 2013","Saturday, April 13, 2013","Saturday, April 13, 2013",,6/30/2013 17:00,6/30/2013 17:00,,PT_Normal,,,,,8lOQoVQV1Ei0Un3dQ6RKmw,L55AtgiuDUyRuc3zz/HAyQ,,,N,0,0,,,3/16/2012 19:07,3/18/2012 22:47,admin,NotPrmUser
419,96912,1685,13436,794,0,0,N,N,N,CP_Drtn,TT_Mile,DT_FixedDrtn,RV_OK,TK_NotStart,A6310,Issue mr for approval,,1112,0,0,0,0,0,0,0,0,0,,,,"Thursday, March 7, 2013","Thursday, March 7, 2013",,"Friday, October 19, 2012","Friday, October 19, 2012","Friday, October 19, 2012","Friday, October 19, 2012","Friday, October 19, 2012","Friday, October 19, 2012",,3/7/2013 8:00,3/7/2013 8:00,,PT_Normal,,,,,dfAanAPaZ0CPpU31jnbfYg,fERcjmK/fECXr+fYuxoBnw,,,N,0,0,,,3/16/2012 19:07,3/18/2012 14:31,admin,admin
420,96913,1685,13436,794,0,0,N,N,N,CP_Drtn,TT_Mile,DT_FixedDrtn,RV_OK,TK_NotStart,A6320,Issue Po,,1112,0,0,0,0,0,0,0,0,0,,,,"Thursday, April 4, 2013","Thursday, April 4, 2013",,"Friday, November 16, 2012","Friday, November 16, 2012","Friday, November 16, 2012","Friday, November 16, 2012","Friday, November 16, 2012","Friday, November 16, 2012",,4/4/2013 8:00,4/4/2013 8:00,,PT_Normal,,,,,S6ucekikiE6Phr2PvLLq4A,Op4TZaoVwkm03uTW/O0qyQ,,,N,0,0,,,3/16/2012 19:07,3/18/2012 14:31,admin,admin
421,96914,1685,13436,794,0,0,N,N,N,CP_Drtn,TT_Mile,DT_FixedDrtn,RV_OK,TK_NotStart,A6330,Material received and inspected@ site,,1112,0,0,0,0,0,0,0,0,0,,,,"Monday, June 3, 2013","Monday, June 3, 2013",,"Tuesday, January 15, 2013","Tuesday, January 15, 2013","Tuesday, January 15, 2013","Tuesday, January 15, 2013","Tuesday, January 15, 2013","Tuesday, January 15, 2013",,6/3/2013 8:00,6/3/2013 8:00,,PT_Normal,,,,,/mExy4KQBU+3YtIqYAs5vA,pQ1eAfAnm06En/Xq00/bjg,,,N,0,0,,,3/16/2012 19:07,3/18/2012 14:31,admin,admin
422,96915,1685,13436,794,0,0,N,N,N,CP_Drtn,TT_Mile,DT_FixedDrtn,RV_OK,TK_NotStart,A6340,All spare parts rec'd,,1112,1112,0,0,0,0,0,0,0,0,,,,"Sunday, June 30, 2013","Sunday, June 30, 2013",,"Tuesday, February 12, 2013","Tuesday, February 12, 2013","Tuesday, February 12, 2013","Tuesday, February 12, 2013","Tuesday, February 12, 2013","Tuesday, February 12, 2013",,6/30/2013 17:00,6/30/2013 17:00,,PT_Normal,,,,,EwaJtAEsDEqTdOneBhMG4g,L55AtgiuDUyRuc3zz/HAyQ,,,N,0,0,,,3/16/2012 19:07,3/18/2012 22:47,admin,NotPrmUser
423,96916,1685,13437,794,0,0,N,N,N,CP_Drtn,TT_Mile,DT_FixedDrtn,RV_OK,TK_NotStart,A6350,Issue mr for approval,,1192,0,0,0,0,0,0,0,0,0,,,,"Sunday, March 17, 2013","Sunday, March 17, 2013",,"Friday, October 19, 2012","Friday, October 19, 2012","Friday, October 19, 2012","Friday, October 19, 2012","Friday, October 19, 2012","Friday, October 19, 2012",,3/17/2013 8:00,3/17/2013 8:00,,PT_Normal,,,,,CGiEoluZH0+u+J3CMQB+xQ,fERcjmK/fECXr+fYuxoBnw,,,N,0,0,,,3/16/2012 19:07,3/18/2012 14:19,admin,admin
424,96917,1685,13437,794,0,0,N,N,N,CP_Drtn,TT_Mile,DT_FixedDrtn,RV_OK,TK_NotStart,A6360,Issue Po,,1192,0,0,0,0,0,0,0,0,0,,,,"Sunday, April 14, 2013","Sunday, April 14, 2013",,"Friday, November 16, 2012","Friday, November 16, 2012","Friday, November 16, 2012","Friday, November 16, 2012","Friday, November 16, 2012","Friday, November 16, 2012",,4/14/2013 8:00,4/14/2013 8:00,,PT_Normal,,,,,iIDOGQq800ya42Cc5lNBpQ,Op4TZaoVwkm03uTW/O0qyQ,,,N,0,0,,,3/16/2012 19:07,3/18/2012 14:19,admin,admin
425,96918,1685,13437,794,0,0,N,N,N,CP_Drtn,TT_Mile,DT_FixedDrtn,RV_OK,TK_NotStart,A6370,Material received and inspected@ site,,1192,0,0,0,0,0,0,0,0,0,,,,"Monday, June 3, 2013","Monday, June 3, 2013",,"Saturday, January 5, 2013","Saturday, January 5, 2013","Saturday, January 5, 2013","Saturday, January 5, 2013","Saturday, January 5, 2013","Saturday, January 5, 2013",,6/3/2013 8:00,6/3/2013 8:00,,PT_Normal,,,,,hisyIhgOzUeBRk72JLm40Q,pQ1eAfAnm06En/Xq00/bjg,,,N,0,0,,,3/16/2012 19:07,3/18/2012 14:19,admin,admin
426,96919,1685,13437,794,0,0,N,N,N,CP_Drtn,TT_Mile,DT_FixedDrtn,RV_OK,TK_NotStart,A6380,All spare parts rec'd,,1192,1192,0,0,0,0,0,0,0,0,,,,"Sunday, June 30, 2013","Sunday, June 30, 2013",,"Saturday, February 2, 2013","Saturday, February 2, 2013","Saturday, February 2, 2013","Saturday, February 2, 2013","Saturday, February 2, 2013","Saturday, February 2, 2013",,6/30/2013 17:00,6/30/2013 17:00,,PT_Normal,,,,,qJf7Ztb0YEOtGyNTAqkmLg,L55AtgiuDUyRuc3zz/HAyQ,,,N,0,0,,,3/16/2012 19:07,3/18/2012 22:47,admin,NotPrmUser
427,96920,1685,13438,794,0,0,N,N,N,CP_Drtn,TT_Mile,DT_FixedDrtn,RV_OK,TK_NotStart,A6390,Issue mr for approval,,1256,0,0,0,0,0,0,0,0,0,,,,"Monday, March 25, 2013","Monday, March 25, 2013",,"Friday, October 19, 2012","Friday, October 19, 2012","Friday, October 19, 2012","Friday, October 19, 2012","Friday, October 19, 2012","Friday, October 19, 2012",,3/25/2013 8:00,3/25/2013 8:00,,PT_Normal,,,,,TOUPa+eRNEOeKm1YvjWqkw,fERcjmK/fECXr+fYuxoBnw,,,N,0,0,,,3/16/2012 19:07,3/18/2012 14:19,admin,admin
428,96921,1685,13438,794,0,0,N,N,N,CP_Drtn,TT_Mile,DT_FixedDrtn,RV_OK,TK_NotStart,A6400,Issue Po,,1256,0,0,0,0,0,0,0,0,0,,,,"Monday, April 22, 2013","Monday, April 22, 2013",,"Friday, November 16, 2012","Friday, November 16, 2012","Friday, November 16, 2012","Friday, November 16, 2012","Friday, November 16, 2012","Friday, November 16, 2012",,4/22/2013 8:00,4/22/2013 8:00,,PT_Normal,,,,,HnwThYGwE0+qIIPEYDuqrw,Op4TZaoVwkm03uTW/O0qyQ,,,N,0,0,,,3/16/2012 19:07,3/18/2012 14:19,admin,admin
429,96922,1685,13438,794,0,0,N,N,N,CP_Drtn,TT_Mile,DT_FixedDrtn,RV_OK,TK_NotStart,A6410,Material received and inspected@ site,,1256,0,0,0,0,0,0,0,0,0,,,,"Monday, June 3, 2013","Monday, June 3, 2013",,"Friday, December 28, 2012","Friday, December 28, 2012","Friday, December 28, 2012","Friday, December 28, 2012","Friday, December 28, 2012","Friday, December 28, 2012",,6/3/2013 8:00,6/3/2013 8:00,,PT_Normal,,,,,59O05ECniEm8HHKlR+YtCQ,pQ1eAfAnm06En/Xq00/bjg,,,N,0,0,,,3/16/2012 19:07,3/18/2012 14:19,admin,admin
430,96923,1685,13438,794,0,0,N,N,N,CP_Drtn,TT_Mile,DT_FixedDrtn,RV_OK,TK_NotStart,A6420,All spare parts rec'd,,1256,1256,0,0,0,0,0,0,0,0,,,,"Sunday, June 30, 2013","Sunday, June 30, 2013",,"Friday, January 25, 2013","Friday, January 25, 2013","Friday, January 25, 2013","Friday, January 25, 2013","Friday, January 25, 2013","Friday, January 25, 2013",,6/30/2013 17:00,6/30/2013 17:00,,PT_Normal,,,,,LpEQdE3N00+/KE2Vn/oqng,L55AtgiuDUyRuc3zz/HAyQ,,,N,0,0,,,3/16/2012 19:07,3/18/2012 22:47,admin,NotPrmUser
431,96924,1685,13439,794,0,0,N,N,N,CP_Drtn,TT_Mile,DT_FixedDrtn,RV_OK,TK_NotStart,A6430,Issue mr for approval,,1272,0,0,0,0,0,0,0,0,0,,,,"Wednesday, March 27, 2013","Wednesday, March 27, 2013",,"Friday, October 19, 2012","Friday, October 19, 2012","Friday, October 19, 2012","Friday, October 19, 2012","Friday, October 19, 2012","Friday, October 19, 2012",,3/27/2013 8:00,3/27/2013 8:00,,PT_Normal,,,,,AJ0nUPpIokaHfNbWzVZwUA,fERcjmK/fECXr+fYuxoBnw,,,N,0,0,,,3/16/2012 19:07,3/18/2012 14:20,admin,admin
432,96925,1685,13439,794,0,0,N,N,N,CP_Drtn,TT_Mile,DT_FixedDrtn,RV_OK,TK_NotStart,A6440,Issue Po,,1272,0,0,0,0,0,0,0,0,0,,,,"Wednesday, April 24, 2013","Wednesday, April 24, 2013",,"Friday, November 16, 2012","Friday, November 16, 2012","Friday, November 16, 2012","Friday, November 16, 2012","Friday, November 16, 2012","Friday, November 16, 2012",,4/24/2013 8:00,4/24/2013 8:00,,PT_Normal,,,,,161xZx5BTk2BOXrSwmlh3w,Op4TZaoVwkm03uTW/O0qyQ,,,N,0,0,,,3/16/2012 19:07,3/18/2012 14:20,admin,admin
433,96926,1685,13439,794,0,0,N,N,N,CP_Drtn,TT_Mile,DT_FixedDrtn,RV_OK,TK_NotStart,A6450,Material received and inspected@ site,,1272,0,0,0,0,0,0,0,0,0,,,,"Monday, June 3, 2013","Monday, June 3, 2013",,"Wednesday, December 26, 2012","Wednesday, December 26, 2012","Wednesday, December 26, 2012","Wednesday, December 26, 2012","Wednesday, December 26, 2012","Wednesday, December 26, 2012",,6/3/2013 8:00,6/3/2013 8:00,,PT_Normal,,,,,yEvuBBSCO0Ckx3WbLKMMCw,pQ1eAfAnm06En/Xq00/bjg,,,N,0,0,,,3/16/2012 19:07,3/18/2012 14:20,admin,admin
434,96927,1685,13439,794,0,0,N,N,N,CP_Drtn,TT_Mile,DT_FixedDrtn,RV_OK,TK_NotStart,A6460,All spare parts rec'd,,1272,1272,0,0,0,0,0,0,0,0,,,,"Sunday, June 30, 2013","Sunday, June 30, 2013",,"Wednesday, January 23, 2013","Wednesday, January 23, 2013","Wednesday, January 23, 2013","Wednesday, January 23, 2013","Wednesday, January 23, 2013","Wednesday, January 23, 2013",,6/30/2013 17:00,6/30/2013 17:00,,PT_Normal,,,,,eSy5bFoGS0m3iVkgSvF2mQ,L55AtgiuDUyRuc3zz/HAyQ,,,N,0,0,,,3/16/2012 19:07,3/18/2012 22:47,admin,NotPrmUser
435,96928,1685,13440,794,0,0,N,N,N,CP_Drtn,TT_Mile,DT_FixedDrtn,RV_OK,TK_NotStart,A6470,Issue mr for approval,,712,0,0,0,0,0,0,0,0,0,,,,"Wednesday, January 16, 2013","Wednesday, January 16, 2013",,"Friday, October 19, 2012","Friday, October 19, 2012","Friday, October 19, 2012","Friday, October 19, 2012","Friday, October 19, 2012","Friday, October 19, 2012",,1/16/2013 8:00,1/16/2013 8:00,,PT_Normal,,,,,B8Zs5tV2TEmE4SWzTvrzFQ,fERcjmK/fECXr+fYuxoBnw,,,N,0,0,,,3/16/2012 19:07,3/18/2012 15:04,admin,admin
436,96929,1685,13440,794,0,0,N,N,N,CP_Drtn,TT_Mile,DT_FixedDrtn,RV_OK,TK_NotStart,A6480,Issue Po,,712,0,0,0,0,0,0,0,0,0,,,,"Wednesday, February 13, 2013","Wednesday, February 13, 2013",,"Friday, November 16, 2012","Friday, November 16, 2012","Friday, November 16, 2012","Friday, November 16, 2012","Friday, November 16, 2012","Friday, November 16, 2012",,2/13/2013 8:00,2/13/2013 8:00,,PT_Normal,,,,,CDw26ju86Ee6WeAZloKxaA,Op4TZaoVwkm03uTW/O0qyQ,,,N,0,0,,,3/16/2012 19:07,3/18/2012 15:04,admin,admin
437,96930,1685,13440,794,0,0,N,N,N,CP_Drtn,TT_Mile,DT_FixedDrtn,RV_OK,TK_NotStart,A6490,Material received and inspected@ site,,712,0,0,0,0,0,0,0,0,0,,,,"Monday, June 3, 2013","Monday, June 3, 2013",,"Wednesday, March 6, 2013","Wednesday, March 6, 2013","Wednesday, March 6, 2013","Wednesday, March 6, 2013","Wednesday, March 6, 2013","Wednesday, March 6, 2013",,6/3/2013 8:00,6/3/2013 8:00,,PT_Normal,,,,,/x6N8FuggUiZvesh94tp6g,pQ1eAfAnm06En/Xq00/bjg,,,N,0,0,,,3/16/2012 19:07,3/18/2012 15:04,admin,admin
438,96931,1685,13440,794,0,0,N,N,N,CP_Drtn,TT_Mile,DT_FixedDrtn,RV_OK,TK_NotStart,A6500,All spare parts rec'd,,712,712,0,0,0,0,0,0,0,0,,,,"Sunday, June 30, 2013","Sunday, June 30, 2013",,"Wednesday, April 3, 2013","Wednesday, April 3, 2013","Wednesday, April 3, 2013","Wednesday, April 3, 2013","Wednesday, April 3, 2013","Wednesday, April 3, 2013",,6/30/2013 17:00,6/30/2013 17:00,,PT_Normal,,,,,VUszzXTuoU2NY7KG2G9Idw,L55AtgiuDUyRuc3zz/HAyQ,,,N,0,0,,,3/16/2012 19:07,3/18/2012 22:47,admin,NotPrmUser
439,96932,1685,13441,794,0,0,N,N,N,CP_Drtn,TT_Mile,DT_FixedDrtn,RV_OK,TK_NotStart,A6510,Issue mr for approval,,1344,0,0,0,0,0,0,0,0,0,,,,"Wednesday, March 6, 2013","Wednesday, March 6, 2013",,"Wednesday, September 19, 2012","Wednesday, September 19, 2012","Wednesday, September 19, 2012","Wednesday, September 19, 2012","Wednesday, September 19, 2012","Wednesday, September 19, 2012",,3/6/2013 8:00,3/6/2013 8:00,,PT_Normal,,,,,7BLWLI3o60a8B4LQSu1ZIQ,fERcjmK/fECXr+fYuxoBnw,,,N,0,0,,,3/16/2012 19:07,3/18/2012 21:21,admin,NotPrmUser
440,96933,1685,13441,794,0,0,N,N,N,CP_Drtn,TT_Mile,DT_FixedDrtn,RV_OK,TK_NotStart,A6520,Issue Po,,1344,0,0,0,0,0,0,0,0,0,,,,"Wednesday, April 3, 2013","Wednesday, April 3, 2013",,"Wednesday, October 17, 2012","Wednesday, October 17, 2012","Wednesday, October 17, 2012","Wednesday, October 17, 2012","Wednesday, October 17, 2012","Wednesday, October 17, 2012",,4/3/2013 8:00,4/3/2013 8:00,,PT_Normal,,,,,OSjTeLspH0yijI33ZaUvsw,Op4TZaoVwkm03uTW/O0qyQ,,,N,0,0,,,3/16/2012 19:07,3/18/2012 21:21,admin,NotPrmUser
441,96934,1685,13441,794,0,0,N,N,N,CP_Drtn,TT_Mile,DT_FixedDrtn,RV_OK,TK_NotStart,A6530,Material received and inspected@ site,,1344,0,0,0,0,0,0,0,0,0,,,,"Monday, June 3, 2013","Monday, June 3, 2013",,"Monday, December 17, 2012","Monday, December 17, 2012","Monday, December 17, 2012","Monday, December 17, 2012","Monday, December 17, 2012","Monday, December 17, 2012",,6/3/2013 8:00,6/3/2013 8:00,,PT_Normal,,,,,kAtuk04NLUK4Dx1J8WtX7w,pQ1eAfAnm06En/Xq00/bjg,,,N,0,0,,,3/16/2012 19:07,3/18/2012 21:21,admin,NotPrmUser
442,96935,1685,13441,794,0,0,N,N,N,CP_Drtn,TT_Mile,DT_FixedDrtn,RV_OK,TK_NotStart,A6540,All spare parts rec'd,,1344,1344,0,0,0,0,0,0,0,0,,,,"Sunday, June 30, 2013","Sunday, June 30, 2013",,"Monday, January 14, 2013","Monday, January 14, 2013","Monday, January 14, 2013","Monday, January 14, 2013","Monday, January 14, 2013","Monday, January 14, 2013",,6/30/2013 17:00,6/30/2013 17:00,,PT_Normal,,,,,q3zkGSBh3kOZdQS1DW2aAQ,L55AtgiuDUyRuc3zz/HAyQ,,,N,0,0,,,3/16/2012 19:07,3/18/2012 22:47,admin,NotPrmUser
443,96936,1685,13442,794,0,0,N,N,N,CP_Drtn,TT_Mile,DT_FixedDrtn,RV_OK,TK_NotStart,A6550,Issue mr for approval,,1344,0,0,0,0,0,0,0,0,0,,,,"Wednesday, March 6, 2013","Wednesday, March 6, 2013",,"Wednesday, September 19, 2012","Wednesday, September 19, 2012","Wednesday, September 19, 2012","Wednesday, September 19, 2012","Wednesday, September 19, 2012","Wednesday, September 19, 2012",,3/6/2013 8:00,3/6/2013 8:00,,PT_Normal,,,,,BpiwzltIV0evNAM27p8o8g,fERcjmK/fECXr+fYuxoBnw,,,N,0,0,,,3/16/2012 19:07,3/18/2012 21:22,admin,NotPrmUser
444,96937,1685,13442,794,0,0,N,N,N,CP_Drtn,TT_Mile,DT_FixedDrtn,RV_OK,TK_NotStart,A6560,Issue Po,,1344,0,0,0,0,0,0,0,0,0,,,,"Wednesday, April 3, 2013","Wednesday, April 3, 2013",,"Wednesday, October 17, 2012","Wednesday, October 17, 2012","Wednesday, October 17, 2012","Wednesday, October 17, 2012","Wednesday, October 17, 2012","Wednesday, October 17, 2012",,4/3/2013 8:00,4/3/2013 8:00,,PT_Normal,,,,,TPSIFt8GRE2mYPrwd+ZZoQ,Op4TZaoVwkm03uTW/O0qyQ,,,N,0,0,,,3/16/2012 19:07,3/18/2012 21:22,admin,NotPrmUser
445,96938,1685,13442,794,0,0,N,N,N,CP_Drtn,TT_Mile,DT_FixedDrtn,RV_OK,TK_NotStart,A6570,Material received and inspected@ site,,1344,0,0,0,0,0,0,0,0,0,,,,"Monday, June 3, 2013","Monday, June 3, 2013",,"Monday, December 17, 2012","Monday, December 17, 2012","Monday, December 17, 2012","Monday, December 17, 2012","Monday, December 17, 2012","Monday, December 17, 2012",,6/3/2013 8:00,6/3/2013 8:00,,PT_Normal,,,,,JPOMDjLvJ0+n2TeSMsynZg,pQ1eAfAnm06En/Xq00/bjg,,,N,0,0,,,3/16/2012 19:07,3/18/2012 21:22,admin,NotPrmUser
446,96939,1685,13442,794,0,0,N,N,N,CP_Drtn,TT_Mile,DT_FixedDrtn,RV_OK,TK_NotStart,A6580,All spare parts rec'd,,1344,1344,0,0,0,0,0,0,0,0,,,,"Sunday, June 30, 2013","Sunday, June 30, 2013",,"Monday, January 14, 2013","Monday, January 14, 2013","Monday, January 14, 2013","Monday, January 14, 2013","Monday, January 14, 2013","Monday, January 14, 2013",,6/30/2013 17:00,6/30/2013 17:00,,PT_Normal,,,,,qnou4sm6d025m4+Px4BEVQ,L55AtgiuDUyRuc3zz/HAyQ,,,N,0,0,,,3/16/2012 19:07,3/18/2012 22:47,admin,NotPrmUser
447,96940,1685,13443,794,0,0,N,N,N,CP_Drtn,TT_Mile,DT_FixedDrtn,RV_OK,TK_NotStart,A6590,Issue mr for approval,,1192,0,0,0,0,0,0,0,0,0,,,,"Sunday, March 17, 2013","Sunday, March 17, 2013",,"Friday, October 19, 2012","Friday, October 19, 2012","Friday, October 19, 2012","Friday, October 19, 2012","Friday, October 19, 2012","Friday, October 19, 2012",,3/17/2013 8:00,3/17/2013 8:00,,PT_Normal,,,,,BkYXZefqhEOfHYXug6Q9nQ,fERcjmK/fECXr+fYuxoBnw,,,N,0,0,,,3/16/2012 19:07,3/18/2012 14:19,admin,admin
448,96941,1685,13443,794,0,0,N,N,N,CP_Drtn,TT_Mile,DT_FixedDrtn,RV_OK,TK_NotStart,A6600,Issue Po,,1192,0,0,0,0,0,0,0,0,0,,,,"Sunday, April 14, 2013","Sunday, April 14, 2013",,"Friday, November 16, 2012","Friday, November 16, 2012","Friday, November 16, 2012","Friday, November 16, 2012","Friday, November 16, 2012","Friday, November 16, 2012",,4/14/2013 8:00,4/14/2013 8:00,,PT_Normal,,,,,IbOn4wdSkE+WhoScWpKf9g,Op4TZaoVwkm03uTW/O0qyQ,,,N,0,0,,,3/16/2012 19:07,3/18/2012 14:19,admin,admin
449,96942,1685,13443,794,0,0,N,N,N,CP_Drtn,TT_Mile,DT_FixedDrtn,RV_OK,TK_NotStart,A6610,Material received and inspected@ site,,1192,0,0,0,0,0,0,0,0,0,,,,"Monday, June 3, 2013","Monday, June 3, 2013",,"Saturday, January 5, 2013","Saturday, January 5, 2013","Saturday, January 5, 2013","Saturday, January 5, 2013","Saturday, January 5, 2013","Saturday, January 5, 2013",,6/3/2013 8:00,6/3/2013 8:00,,PT_Normal,,,,,bZ9GHSPKxEK5Bv7x7Zk/Mg,pQ1eAfAnm06En/Xq00/bjg,,,N,0,0,,,3/16/2012 19:07,3/18/2012 14:19,admin,admin
450,96943,1685,13443,794,0,0,N,N,N,CP_Drtn,TT_Mile,DT_FixedDrtn,RV_OK,TK_NotStart,A6620,All spare parts rec'd,,1192,1192,0,0,0,0,0,0,0,0,,,,"Sunday, June 30, 2013","Sunday, June 30, 2013",,"Saturday, February 2, 2013","Saturday, February 2, 2013","Saturday, February 2, 2013","Saturday, February 2, 2013","Saturday, February 2, 2013","Saturday, February 2, 2013",,6/30/2013 17:00,6/30/2013 17:00,,PT_Normal,,,,,MrAvRlkcek+X8pTL9oA1Bg,L55AtgiuDUyRuc3zz/HAyQ,,,N,0,0,,,3/16/2012 19:07,3/18/2012 22:47,admin,NotPrmUser
451,96944,1685,13444,794,0,0,N,N,N,CP_Drtn,TT_Mile,DT_FixedDrtn,RV_OK,TK_NotStart,A6630,Issue mr for approval,,576,0,0,0,0,0,0,0,0,0,,,,"Sunday, December 30, 2012","Sunday, December 30, 2012",,"Friday, October 19, 2012","Friday, October 19, 2012","Friday, October 19, 2012","Friday, October 19, 2012","Friday, October 19, 2012","Friday, October 19, 2012",,12/30/2012 8:00,12/30/2012 8:00,,PT_Normal,,,,,Uip1R5OE10uGnzAj2LT0ag,fERcjmK/fECXr+fYuxoBnw,,,N,0,0,,,3/16/2012 21:14,3/18/2012 21:16,admin,NotPrmUser
452,96945,1685,13444,794,0,0,N,N,N,CP_Drtn,TT_Mile,DT_FixedDrtn,RV_OK,TK_NotStart,A6640,Issue Po,,576,0,0,0,0,0,0,0,0,0,,,,"Sunday, January 27, 2013","Sunday, January 27, 2013",,"Friday, November 16, 2012","Friday, November 16, 2012","Friday, November 16, 2012","Friday, November 16, 2012","Friday, November 16, 2012","Friday, November 16, 2012",,1/27/2013 8:00,1/27/2013 8:00,,PT_Normal,,,,,s3rHKVY1bUeGTfLpU0RAeA,Op4TZaoVwkm03uTW/O0qyQ,,,N,0,0,,,3/16/2012 21:14,3/18/2012 21:16,admin,NotPrmUser
453,96946,1685,13444,794,0,0,N,N,N,CP_Drtn,TT_Mile,DT_FixedDrtn,RV_OK,TK_NotStart,A6650,Material received and inspected@ site,,576,0,0,0,0,0,0,0,0,0,,,,"Monday, May 27, 2013","Monday, May 27, 2013",,"Saturday, March 16, 2013","Saturday, March 16, 2013","Saturday, March 16, 2013","Saturday, March 16, 2013","Saturday, March 16, 2013","Saturday, March 16, 2013",,5/27/2013 8:00,5/27/2013 8:00,,PT_Normal,,,,,TSC/bb5kYUifDqt2n06ybg,pQ1eAfAnm06En/Xq00/bjg,,,N,0,0,,,3/16/2012 21:14,3/18/2012 21:16,admin,NotPrmUser
454,96947,1685,13444,794,0,0,N,N,N,CP_Drtn,TT_Mile,DT_FixedDrtn,RV_OK,TK_NotStart,A6660,All spare parts rec'd,,576,0,0,0,0,0,0,0,0,0,,,,"Sunday, June 30, 2013","Sunday, June 30, 2013",,"Saturday, April 20, 2013","Saturday, April 20, 2013","Saturday, April 20, 2013","Saturday, April 20, 2013","Saturday, April 20, 2013","Saturday, April 20, 2013",,6/30/2013 17:00,6/30/2013 17:00,,PT_Normal,,,,,XQBpaJCXeUejwegdSlLyew,L55AtgiuDUyRuc3zz/HAyQ,,,N,0,0,,,3/16/2012 21:14,3/18/2012 21:16,admin,NotPrmUser
455,96948,1685,13445,794,0,0,N,N,N,CP_Drtn,TT_Mile,DT_FixedDrtn,RV_OK,TK_NotStart,A6670,Issue mr for approval,,712,0,0,0,0,0,0,0,0,0,,,,"Wednesday, January 16, 2013","Wednesday, January 16, 2013",,"Friday, October 19, 2012","Friday, October 19, 2012","Friday, October 19, 2012","Friday, October 19, 2012","Friday, October 19, 2012","Friday, October 19, 2012",,1/16/2013 8:00,1/16/2013 8:00,,PT_Normal,,,,,Umk3CxAmpE2SJ3wZPzxxrA,fERcjmK/fECXr+fYuxoBnw,,,N,0,0,,,3/16/2012 21:14,3/18/2012 15:04,admin,admin
456,96949,1685,13445,794,0,0,N,N,N,CP_Drtn,TT_Mile,DT_FixedDrtn,RV_OK,TK_NotStart,A6680,Issue Po,,712,0,0,0,0,0,0,0,0,0,,,,"Wednesday, February 13, 2013","Wednesday, February 13, 2013",,"Friday, November 16, 2012","Friday, November 16, 2012","Friday, November 16, 2012","Friday, November 16, 2012","Friday, November 16, 2012","Friday, November 16, 2012",,2/13/2013 8:00,2/13/2013 8:00,,PT_Normal,,,,,zHM/1xn60kyjApITBJN+VQ,Op4TZaoVwkm03uTW/O0qyQ,,,N,0,0,,,3/16/2012 21:14,3/18/2012 15:04,admin,admin
457,96950,1685,13445,794,0,0,N,N,N,CP_Drtn,TT_Mile,DT_FixedDrtn,RV_OK,TK_NotStart,A6690,Material received and inspected@ site,,712,0,0,0,0,0,0,0,0,0,,,,"Monday, June 3, 2013","Monday, June 3, 2013",,"Wednesday, March 6, 2013","Wednesday, March 6, 2013","Wednesday, March 6, 2013","Wednesday, March 6, 2013","Wednesday, March 6, 2013","Wednesday, March 6, 2013",,6/3/2013 8:00,6/3/2013 8:00,,PT_Normal,,,,,SZYgmKICLkGhgoMgsalIlg,pQ1eAfAnm06En/Xq00/bjg,,,N,0,0,,,3/16/2012 21:14,3/18/2012 15:04,admin,admin
458,96951,1685,13445,794,0,0,N,N,N,CP_Drtn,TT_Mile,DT_FixedDrtn,RV_OK,TK_NotStart,A6700,All spare parts rec'd,,712,712,0,0,0,0,0,0,0,0,,,,"Sunday, June 30, 2013","Sunday, June 30, 2013",,"Wednesday, April 3, 2013","Wednesday, April 3, 2013","Wednesday, April 3, 2013","Wednesday, April 3, 2013","Wednesday, April 3, 2013","Wednesday, April 3, 2013",,6/30/2013 17:00,6/30/2013 17:00,,PT_Normal,,,,,NAYoRslaH0CHFXEF+XqXXA,L55AtgiuDUyRuc3zz/HAyQ,,,N,0,0,,,3/16/2012 21:14,3/18/2012 22:47,admin,NotPrmUser
459,96952,1685,13446,794,0,0,N,N,N,CP_Drtn,TT_Mile,DT_FixedDrtn,RV_OK,TK_NotStart,A6710,Issue mr for approval,,872,0,0,0,0,0,0,0,0,0,,,,"Tuesday, February 5, 2013","Tuesday, February 5, 2013",,"Friday, October 19, 2012","Friday, October 19, 2012","Friday, October 19, 2012","Friday, October 19, 2012","Friday, October 19, 2012","Friday, October 19, 2012",,2/5/2013 8:00,2/5/2013 8:00,,PT_Normal,,,,,KnnWWwkPKUynFL+NGF4HqQ,fERcjmK/fECXr+fYuxoBnw,,,N,0,0,,,3/16/2012 21:14,3/18/2012 15:03,admin,admin
460,96953,1685,13446,794,0,0,N,N,N,CP_Drtn,TT_Mile,DT_FixedDrtn,RV_OK,TK_NotStart,A6720,Issue Po,,872,0,0,0,0,0,0,0,0,0,,,,"Tuesday, March 5, 2013","Tuesday, March 5, 2013",,"Friday, November 16, 2012","Friday, November 16, 2012","Friday, November 16, 2012","Friday, November 16, 2012","Friday, November 16, 2012","Friday, November 16, 2012",,3/5/2013 8:00,3/5/2013 8:00,,PT_Normal,,,,,lqJ76vrWgUGv6MNX2sXnrA,Op4TZaoVwkm03uTW/O0qyQ,,,N,0,0,,,3/16/2012 21:14,3/18/2012 15:03,admin,admin
461,96954,1685,13446,794,0,0,N,N,N,CP_Drtn,TT_Mile,DT_FixedDrtn,RV_OK,TK_NotStart,A6730,Material received and inspected@ site,,872,0,0,0,0,0,0,0,0,0,,,,"Monday, June 3, 2013","Monday, June 3, 2013",,"Thursday, February 14, 2013","Thursday, February 14, 2013","Thursday, February 14, 2013","Thursday, February 14, 2013","Thursday, February 14, 2013","Thursday, February 14, 2013",,6/3/2013 8:00,6/3/2013 8:00,,PT_Normal,,,,,Nzq/v8DLlEO7RLI+377PXQ,pQ1eAfAnm06En/Xq00/bjg,,,N,0,0,,,3/16/2012 21:14,3/18/2012 15:03,admin,admin
462,96955,1685,13446,794,0,0,N,N,N,CP_Drtn,TT_Mile,DT_FixedDrtn,RV_OK,TK_NotStart,A6740,All spare parts rec'd,,872,872,0,0,0,0,0,0,0,0,,,,"Sunday, June 30, 2013","Sunday, June 30, 2013",,"Thursday, March 14, 2013","Thursday, March 14, 2013","Thursday, March 14, 2013","Thursday, March 14, 2013","Thursday, March 14, 2013","Thursday, March 14, 2013",,6/30/2013 17:00,6/30/2013 17:00,,PT_Normal,,,,,5vkaHMaZs06xFqnX+bIHlA,L55AtgiuDUyRuc3zz/HAyQ,,,N,0,0,,,3/16/2012 21:14,3/18/2012 22:47,admin,NotPrmUser
463,96960,1685,13448,794,0,0,N,N,N,CP_Drtn,TT_Mile,DT_FixedDrtn,RV_OK,TK_NotStart,A6790,Issue mr for approval,,1512,0,0,0,0,0,0,0,0,0,,,,"Friday, April 26, 2013","Friday, April 26, 2013",,"Friday, October 19, 2012","Friday, October 19, 2012","Friday, October 19, 2012","Friday, October 19, 2012","Friday, October 19, 2012","Friday, October 19, 2012",,4/26/2013 8:00,4/26/2013 8:00,,PT_Normal,,,,,GPwEg/SxAU6lC6ZtOBw+wg,fERcjmK/fECXr+fYuxoBnw,,,N,0,0,,,3/16/2012 21:15,3/18/2012 14:32,admin,admin
464,96961,1685,13448,794,0,0,N,N,N,CP_Drtn,TT_Mile,DT_FixedDrtn,RV_OK,TK_NotStart,A6800,Issue Po,,1512,0,0,0,0,0,0,0,0,0,,,,"Friday, May 24, 2013","Friday, May 24, 2013",,"Friday, November 16, 2012","Friday, November 16, 2012","Friday, November 16, 2012","Friday, November 16, 2012","Friday, November 16, 2012","Friday, November 16, 2012",,5/24/2013 8:00,5/24/2013 8:00,,PT_Normal,,,,,79O/7zSQT0mMuPZIPEkLSg,Op4TZaoVwkm03uTW/O0qyQ,,,N,0,0,,,3/16/2012 21:15,3/18/2012 14:32,admin,admin
465,96962,1685,13448,794,0,0,N,N,N,CP_Drtn,TT_Mile,DT_FixedDrtn,RV_OK,TK_NotStart,A6810,Material received and inspected@ site,,1512,0,0,0,0,0,0,0,0,0,,,,"Monday, June 3, 2013","Monday, June 3, 2013",,"Monday, November 26, 2012","Monday, November 26, 2012","Monday, November 26, 2012","Monday, November 26, 2012","Monday, November 26, 2012","Monday, November 26, 2012",,6/3/2013 8:00,6/3/2013 8:00,,PT_Normal,,,,,Nv0bgGpEd0OKwbQJ9KMpRA,pQ1eAfAnm06En/Xq00/bjg,,,N,0,0,,,3/16/2012 21:15,3/18/2012 14:32,admin,admin
466,96963,1685,13448,794,0,0,N,N,N,CP_Drtn,TT_Mile,DT_FixedDrtn,RV_OK,TK_NotStart,A6820,All spare parts rec'd,,1512,1512,0,0,0,0,0,0,0,0,,,,"Sunday, June 30, 2013","Sunday, June 30, 2013",,"Monday, December 24, 2012","Monday, December 24, 2012","Monday, December 24, 2012","Monday, December 24, 2012","Monday, December 24, 2012","Monday, December 24, 2012",,6/30/2013 17:00,6/30/2013 17:00,,PT_Normal,,,,,ulNsnDaYz0iNj2W1j/Kh3Q,L55AtgiuDUyRuc3zz/HAyQ,,,N,0,0,,,3/16/2012 21:15,3/18/2012 22:47,admin,NotPrmUser
467,96964,1685,13449,794,0,0,N,N,N,CP_Drtn,TT_Mile,DT_FixedDrtn,RV_OK,TK_NotStart,A6830,Issue mr for approval,,1152,0,0,0,0,0,0,0,0,0,,,,"Tuesday, March 12, 2013","Tuesday, March 12, 2013",,"Friday, October 19, 2012","Friday, October 19, 2012","Friday, October 19, 2012","Friday, October 19, 2012","Friday, October 19, 2012","Friday, October 19, 2012",,3/12/2013 8:00,3/12/2013 8:00,,PT_Normal,,,,,rcPhf0hRoEuqKKfm1oeMXA,fERcjmK/fECXr+fYuxoBnw,,,N,0,0,,,3/16/2012 21:15,3/18/2012 14:31,admin,admin
468,96965,1685,13449,794,0,0,N,N,N,CP_Drtn,TT_Mile,DT_FixedDrtn,RV_OK,TK_NotStart,A6840,Issue Po,,1152,0,0,0,0,0,0,0,0,0,,,,"Tuesday, April 9, 2013","Tuesday, April 9, 2013",,"Friday, November 16, 2012","Friday, November 16, 2012","Friday, November 16, 2012","Friday, November 16, 2012","Friday, November 16, 2012","Friday, November 16, 2012",,4/9/2013 8:00,4/9/2013 8:00,,PT_Normal,,,,,tWG8uje5eEG8Uq0zbTm/kw,Op4TZaoVwkm03uTW/O0qyQ,,,N,0,0,,,3/16/2012 21:15,3/18/2012 14:31,admin,admin
469,96966,1685,13449,794,0,0,N,N,N,CP_Drtn,TT_Mile,DT_FixedDrtn,RV_OK,TK_NotStart,A6850,Material received and inspected@ site,,1152,0,0,0,0,0,0,0,0,0,,,,"Monday, June 3, 2013","Monday, June 3, 2013",,"Thursday, January 10, 2013","Thursday, January 10, 2013","Thursday, January 10, 2013","Thursday, January 10, 2013","Thursday, January 10, 2013","Thursday, January 10, 2013",,6/3/2013 8:00,6/3/2013 8:00,,PT_Normal,,,,,WJqN289nbUOQHlYWhzjBzw,pQ1eAfAnm06En/Xq00/bjg,,,N,0,0,,,3/16/2012 21:15,3/18/2012 14:31,admin,admin
470,96967,1685,13449,794,0,0,N,N,N,CP_Drtn,TT_Mile,DT_FixedDrtn,RV_OK,TK_NotStart,A6860,All spare parts rec'd,,1152,1152,0,0,0,0,0,0,0,0,,,,"Sunday, June 30, 2013","Sunday, June 30, 2013",,"Thursday, February 7, 2013","Thursday, February 7, 2013","Thursday, February 7, 2013","Thursday, February 7, 2013","Thursday, February 7, 2013","Thursday, February 7, 2013",,6/30/2013 17:00,6/30/2013 17:00,,PT_Normal,,,,,xsRDrGNgtUKasPlIssQ3Eg,L55AtgiuDUyRuc3zz/HAyQ,,,N,0,0,,,3/16/2012 21:15,3/18/2012 22:47,admin,NotPrmUser
471,96971,1685,13451,794,0,0,N,N,N,CP_Drtn,TT_Mile,DT_FixedDrtn,RV_OK,TK_NotStart,A6870,Issue mr for approval,,696,0,0,0,0,0,0,0,0,0,,,,"Monday, January 14, 2013","Monday, January 14, 2013",,"Friday, October 19, 2012","Friday, October 19, 2012","Friday, October 19, 2012","Friday, October 19, 2012","Friday, October 19, 2012","Friday, October 19, 2012",,1/14/2013 8:00,1/14/2013 8:00,,PT_Normal,,,,,JTjYYZZPtkSmkwQLk2rtxA,fERcjmK/fECXr+fYuxoBnw,,,N,0,0,,,3/16/2012 21:45,3/16/2012 21:45,admin,admin
472,96972,1685,13451,794,0,0,N,N,N,CP_Drtn,TT_Mile,DT_FixedDrtn,RV_OK,TK_NotStart,A6880,Issue Po,,696,0,0,0,0,0,0,0,0,0,,,,"Monday, February 11, 2013","Monday, February 11, 2013",,"Friday, November 16, 2012","Friday, November 16, 2012","Friday, November 16, 2012","Friday, November 16, 2012","Friday, November 16, 2012","Friday, November 16, 2012",,2/11/2013 8:00,2/11/2013 8:00,,PT_Normal,,,,,oEkbg9mGdEmG0zzT4Xet8g,Op4TZaoVwkm03uTW/O0qyQ,,,N,0,0,,,3/16/2012 21:45,3/17/2012 18:00,admin,admin
473,96973,1685,13451,794,0,0,N,N,N,CP_Drtn,TT_Mile,DT_FixedDrtn,RV_OK,TK_NotStart,A6890,Material received and inspected@ site,,696,0,0,0,0,0,0,0,0,0,,,,"Monday, June 3, 2013","Monday, June 3, 2013",,"Friday, March 8, 2013","Friday, March 8, 2013","Friday, March 8, 2013","Friday, March 8, 2013","Friday, March 8, 2013","Friday, March 8, 2013",,6/3/2013 8:00,6/3/2013 8:00,,PT_Normal,,,,,mt/Jffpg/kS6Scb6XyyI5A,pQ1eAfAnm06En/Xq00/bjg,,,N,0,0,,,3/16/2012 21:45,3/16/2012 21:45,admin,admin
474,96974,1685,13451,794,0,0,N,N,N,CP_Drtn,TT_Mile,DT_FixedDrtn,RV_OK,TK_NotStart,A6900,All spare parts rec'd,,696,696,0,0,0,0,0,0,0,0,,,,"Sunday, June 30, 2013","Sunday, June 30, 2013",,"Friday, April 5, 2013","Friday, April 5, 2013","Friday, April 5, 2013","Friday, April 5, 2013","Friday, April 5, 2013","Friday, April 5, 2013",,6/30/2013 17:00,6/30/2013 17:00,,PT_Normal,,,,,PjOHm5DcsEqk0Nr/ipWBiA,L55AtgiuDUyRuc3zz/HAyQ,,,N,0,0,,,3/16/2012 21:45,3/18/2012 22:47,admin,NotPrmUser
475,96975,1685,13452,794,0,0,N,N,N,CP_Drtn,TT_Mile,DT_FixedDrtn,RV_OK,TK_NotStart,A6910,Issue mr for approval,,696,0,0,0,0,0,0,0,0,0,,,,"Monday, January 14, 2013","Monday, January 14, 2013",,"Friday, October 19, 2012","Friday, October 19, 2012","Friday, October 19, 2012","Friday, October 19, 2012","Friday, October 19, 2012","Friday, October 19, 2012",,1/14/2013 8:00,1/14/2013 8:00,,PT_Normal,,,,,rAHv7yhLU0uZa0PD2Mf1Sg,JTjYYZZPtkSmkwQLk2rtxA,,,N,0,0,,,3/16/2012 21:46,3/16/2012 21:46,admin,admin
476,96976,1685,13452,794,0,0,N,N,N,CP_Drtn,TT_Mile,DT_FixedDrtn,RV_OK,TK_NotStart,A6920,Issue Po,,696,0,0,0,0,0,0,0,0,0,,,,"Monday, February 11, 2013","Monday, February 11, 2013",,"Friday, November 16, 2012","Friday, November 16, 2012","Friday, November 16, 2012","Friday, November 16, 2012","Friday, November 16, 2012","Friday, November 16, 2012",,2/11/2013 8:00,2/11/2013 8:00,,PT_Normal,,,,,PcN4c8MMhkuTJc3la4tMwA,oEkbg9mGdEmG0zzT4Xet8g,,,N,0,0,,,3/16/2012 21:46,3/17/2012 18:00,admin,admin
477,96977,1685,13452,794,0,0,N,N,N,CP_Drtn,TT_Mile,DT_FixedDrtn,RV_OK,TK_NotStart,A6930,Material received and inspected@ site,,696,0,0,0,0,0,0,0,0,0,,,,"Monday, June 3, 2013","Monday, June 3, 2013",,"Friday, March 8, 2013","Friday, March 8, 2013","Friday, March 8, 2013","Friday, March 8, 2013","Friday, March 8, 2013","Friday, March 8, 2013",,6/3/2013 8:00,6/3/2013 8:00,,PT_Normal,,,,,nNBju9NYREyMVIR6JDT7GA,mt/Jffpg/kS6Scb6XyyI5A,,,N,0,0,,,3/16/2012 21:46,3/16/2012 21:46,admin,admin
478,96978,1685,13452,794,0,0,N,N,N,CP_Drtn,TT_Mile,DT_FixedDrtn,RV_OK,TK_NotStart,A6940,All spare parts rec'd,,696,696,0,0,0,0,0,0,0,0,,,,"Sunday, June 30, 2013","Sunday, June 30, 2013",,"Friday, April 5, 2013","Friday, April 5, 2013","Friday, April 5, 2013","Friday, April 5, 2013","Friday, April 5, 2013","Friday, April 5, 2013",,6/30/2013 17:00,6/30/2013 17:00,,PT_Normal,,,,,kFaoe3nGUkOMV2Kk+3eEMg,PjOHm5DcsEqk0Nr/ipWBiA,,,N,0,0,,,3/16/2012 21:46,3/18/2012 22:47,admin,NotPrmUser
479,96979,1685,13453,794,0,0,N,N,N,CP_Drtn,TT_Mile,DT_FixedDrtn,RV_OK,TK_NotStart,A6950,Issue mr for approval,,696,0,0,0,0,0,0,0,0,0,,,,"Monday, January 14, 2013","Monday, January 14, 2013",,"Friday, October 19, 2012","Friday, October 19, 2012","Friday, October 19, 2012","Friday, October 19, 2012","Friday, October 19, 2012","Friday, October 19, 2012",,1/14/2013 8:00,1/14/2013 8:00,,PT_Normal,,,,,BmG0AhdCZki8B8GgyHs8Yw,rAHv7yhLU0uZa0PD2Mf1Sg,,,N,0,0,,,3/16/2012 21:47,3/16/2012 21:47,admin,admin
480,96980,1685,13453,794,0,0,N,N,N,CP_Drtn,TT_Mile,DT_FixedDrtn,RV_OK,TK_NotStart,A6960,Issue Po,,696,0,0,0,0,0,0,0,0,0,,,,"Monday, February 11, 2013","Monday, February 11, 2013",,"Friday, November 16, 2012","Friday, November 16, 2012","Friday, November 16, 2012","Friday, November 16, 2012","Friday, November 16, 2012","Friday, November 16, 2012",,2/11/2013 8:00,2/11/2013 8:00,,PT_Normal,,,,,vsM22LHKa0WBAonKq10lAQ,PcN4c8MMhkuTJc3la4tMwA,,,N,0,0,,,3/16/2012 21:47,3/17/2012 18:00,admin,admin
481,96981,1685,13453,794,0,0,N,N,N,CP_Drtn,TT_Mile,DT_FixedDrtn,RV_OK,TK_NotStart,A6970,Material received and inspected@ site,,696,0,0,0,0,0,0,0,0,0,,,,"Monday, June 3, 2013","Monday, June 3, 2013",,"Friday, March 8, 2013","Friday, March 8, 2013","Friday, March 8, 2013","Friday, March 8, 2013","Friday, March 8, 2013","Friday, March 8, 2013",,6/3/2013 8:00,6/3/2013 8:00,,PT_Normal,,,,,4HmYMO0gkE2BDCF1DzF4DQ,nNBju9NYREyMVIR6JDT7GA,,,N,0,0,,,3/16/2012 21:47,3/16/2012 21:47,admin,admin
482,96982,1685,13453,794,0,0,N,N,N,CP_Drtn,TT_Mile,DT_FixedDrtn,RV_OK,TK_NotStart,A6980,All spare parts rec'd,,696,696,0,0,0,0,0,0,0,0,,,,"Sunday, June 30, 2013","Sunday, June 30, 2013",,"Friday, April 5, 2013","Friday, April 5, 2013","Friday, April 5, 2013","Friday, April 5, 2013","Friday, April 5, 2013","Friday, April 5, 2013",,6/30/2013 17:00,6/30/2013 17:00,,PT_Normal,,,,,bVwj7ospvECJvoId4efxxQ,kFaoe3nGUkOMV2Kk+3eEMg,,,N,0,0,,,3/16/2012 21:47,3/18/2012 22:47,admin,NotPrmUser
483,96983,1685,13454,794,0,0,N,N,N,CP_Drtn,TT_Mile,DT_FixedDrtn,RV_OK,TK_NotStart,A6990,Issue mr for approval,,696,0,0,0,0,0,0,0,0,0,,,,"Monday, January 14, 2013","Monday, January 14, 2013",,"Friday, October 19, 2012","Friday, October 19, 2012","Friday, October 19, 2012","Friday, October 19, 2012","Friday, October 19, 2012","Friday, October 19, 2012",,1/14/2013 8:00,1/14/2013 8:00,,PT_Normal,,,,,4o4uOX6NpUipAKsDm5W5Vw,rAHv7yhLU0uZa0PD2Mf1Sg,,,N,0,0,,,3/16/2012 21:48,3/16/2012 21:48,admin,admin
484,96984,1685,13454,794,0,0,N,N,N,CP_Drtn,TT_Mile,DT_FixedDrtn,RV_OK,TK_NotStart,A7000,Issue Po,,696,0,0,0,0,0,0,0,0,0,,,,"Monday, February 11, 2013","Monday, February 11, 2013",,"Friday, November 16, 2012","Friday, November 16, 2012","Friday, November 16, 2012","Friday, November 16, 2012","Friday, November 16, 2012","Friday, November 16, 2012",,2/11/2013 8:00,2/11/2013 8:00,,PT_Normal,,,,,2jEb7C5MWE+EwH6cjuPHhA,PcN4c8MMhkuTJc3la4tMwA,,,N,0,0,,,3/16/2012 21:48,3/17/2012 18:00,admin,admin
485,96985,1685,13454,794,0,0,N,N,N,CP_Drtn,TT_Mile,DT_FixedDrtn,RV_OK,TK_NotStart,A7010,Material received and inspected@ site,,696,0,0,0,0,0,0,0,0,0,,,,"Monday, June 3, 2013","Monday, June 3, 2013",,"Friday, March 8, 2013","Friday, March 8, 2013","Friday, March 8, 2013","Friday, March 8, 2013","Friday, March 8, 2013","Friday, March 8, 2013",,6/3/2013 8:00,6/3/2013 8:00,,PT_Normal,,,,,bZQmGY3Tj0265UUefc+sNQ,nNBju9NYREyMVIR6JDT7GA,,,N,0,0,,,3/16/2012 21:48,3/16/2012 21:48,admin,admin
486,96986,1685,13454,794,0,0,N,N,N,CP_Drtn,TT_Mile,DT_FixedDrtn,RV_OK,TK_NotStart,A7020,All spare parts rec'd,,696,696,0,0,0,0,0,0,0,0,,,,"Sunday, June 30, 2013","Sunday, June 30, 2013",,"Friday, April 5, 2013","Friday, April 5, 2013","Friday, April 5, 2013","Friday, April 5, 2013","Friday, April 5, 2013","Friday, April 5, 2013",,6/30/2013 17:00,6/30/2013 17:00,,PT_Normal,,,,,dZyUDOx2YkOCrOASP/UAFA,kFaoe3nGUkOMV2Kk+3eEMg,,,N,0,0,,,3/16/2012 21:48,3/18/2012 22:47,admin,NotPrmUser
487,96991,1685,12291,794,1,0,N,N,N,CP_Drtn,TT_LOE,DT_FixedDUR2,RV_OK,TK_NotStart,A7070,cash,,552,0,848,0,0,0,848,0,0,0,,,,"Sunday, March 17, 2013","Sunday, June 30, 2013",,"Monday, January 7, 2013","Monday, April 22, 2013","Monday, January 7, 2013","Monday, April 22, 2013","Monday, January 7, 2013","Monday, April 22, 2013",,3/17/2013 8:00,6/30/2013 17:00,,PT_Normal,,,,,hSC5+Y9S70ypRBa1swyrQg,qSprEF5nIUmYkiSUlwzq+w,,,N,0,0,,,3/17/2012 11:08,3/18/2012 13:24,admin,admin
488,98619,1685,12287,794,1,0,N,N,N,CP_Drtn,TT_LOE,DT_FixedDUR2,RV_OK,TK_NotStart,A7080,cash,,408,0,2112,0,0,0,2112,0,0,0,,,,"Friday, October 5, 2012","Sunday, June 30, 2013",,"Monday, August 20, 2012","Friday, May 10, 2013","Monday, August 20, 2012","Friday, May 10, 2013","Monday, August 20, 2012","Friday, May 10, 2013",,10/5/2012 8:00,6/30/2013 17:00,,PT_Normal,,,,,nQMFf3LvfU2V90Z3U9P23A,hSC5+Y9S70ypRBa1swyrQg,,,N,0,0,,,3/17/2012 18:09,3/18/2012 21:42,admin,NotPrmUser
489,98620,1685,12283,794,1,0,N,N,N,CP_Drtn,TT_LOE,DT_FixedDUR2,RV_OK,TK_NotStart,A7090,cash,,464,0,1656,0,0,0,1656,0,0,0,,,,"Thursday, December 6, 2012","Sunday, June 30, 2013",,"Tuesday, October 9, 2012","Friday, May 3, 2013","Tuesday, October 9, 2012","Friday, May 3, 2013","Tuesday, October 9, 2012","Friday, May 3, 2013",,12/6/2012 8:00,6/30/2013 17:00,,PT_Normal,,,,,urlgszsEak+uchyBZZicFQ,nQMFf3LvfU2V90Z3U9P23A,,,N,0,0,,,3/17/2012 19:15,3/18/2012 13:24,admin,admin
490,98622,1685,12279,794,1,0,N,N,N,CP_Drtn,TT_LOE,DT_FixedDUR2,RV_OK,TK_NotStart,A7100,cash,,712,0,1088,0,0,0,1088,0,0,0,,,,"Thursday, February 14, 2013","Sunday, June 30, 2013",,"Sunday, November 18, 2012","Tuesday, April 2, 2013","Sunday, November 18, 2012","Tuesday, April 2, 2013","Sunday, November 18, 2012","Tuesday, April 2, 2013",,2/14/2013 8:00,6/30/2013 17:00,,PT_Normal,,,,,LvUD4mFenU+flMVr+9x1Rg,urlgszsEak+uchyBZZicFQ,,,N,0,0,,,3/17/2012 19:19,3/18/2012 13:25,admin,admin
491,98623,1685,12275,794,1,0,N,N,N,CP_Drtn,TT_LOE,DT_FixedDUR2,RV_OK,TK_NotStart,A7110,cash,,424,0,2096,0,0,0,2096,0,0,0,,,,"Friday, October 12, 2012","Sunday, June 30, 2013",,"Monday, August 20, 2012","Wednesday, May 8, 2013","Monday, August 20, 2012","Wednesday, May 8, 2013","Monday, August 20, 2012","Wednesday, May 8, 2013",,10/12/2012 8:00,6/30/2013 17:00,,PT_Normal,,,,,OrEjpOnkpEKEO+37pK0oKQ,urlgszsEak+uchyBZZicFQ,,,N,0,0,,,3/17/2012 19:31,3/17/2012 19:32,admin,admin
492,98624,1685,12271,794,1,0,N,N,N,CP_Drtn,TT_LOE,DT_FixedDUR2,RV_OK,TK_NotStart,A7120,cash,,808,0,1712,0,0,0,1712,0,0,0,,,,"Thursday, November 29, 2012","Sunday, June 30, 2013",,"Monday, August 20, 2012","Thursday, March 21, 2013","Monday, August 20, 2012","Thursday, March 21, 2013","Monday, August 20, 2012","Thursday, March 21, 2013",,11/29/2012 8:00,6/30/2013 17:00,,PT_Normal,,,,,mUEA5if7lEyqLkSxd14qaw,OrEjpOnkpEKEO+37pK0oKQ,,,N,0,0,,,3/17/2012 19:32,3/18/2012 21:18,admin,NotPrmUser
493,98625,1685,12267,794,1,0,N,N,N,CP_Drtn,TT_LOE,DT_FixedDUR2,RV_OK,TK_NotStart,A7130,cash,,696,0,1264,0,0,0,1264,0,0,0,,,,"Thursday, January 24, 2013","Sunday, June 30, 2013",,"Monday, October 29, 2012","Thursday, April 4, 2013","Monday, October 29, 2012","Thursday, April 4, 2013","Monday, October 29, 2012","Thursday, April 4, 2013",,1/24/2013 8:00,6/30/2013 17:00,,PT_Normal,,,,,LUSS3GadhEKawD7WP6yOIg,mUEA5if7lEyqLkSxd14qaw,,,N,0,0,,,3/17/2012 19:34,3/18/2012 13:25,admin,admin
494,98626,1685,13350,794,1,0,N,N,N,CP_Drtn,TT_LOE,DT_FixedDUR2,RV_OK,TK_NotStart,A7140,cash,,872,0,1648,0,0,0,1648,0,0,0,,,,"Friday, December 7, 2012","Sunday, June 30, 2013",,"Monday, August 20, 2012","Wednesday, March 13, 2013","Monday, August 20, 2012","Wednesday, March 13, 2013","Monday, August 20, 2012","Wednesday, March 13, 2013",,12/7/2012 8:00,6/30/2013 17:00,,PT_Normal,,,,,gDyr3avFPU2ktJXQg4ckSg,mUEA5if7lEyqLkSxd14qaw,,,N,0,0,,,3/17/2012 20:02,3/17/2012 20:04,admin,admin
495,98627,1685,13354,794,1,0,N,N,N,CP_Drtn,TT_LOE,DT_FixedDUR2,RV_OK,TK_NotStart,A7150,cash,,760,0,1760,0,0,0,1760,0,0,0,,,,"Friday, December 7, 2012","Sunday, June 30, 2013",,"Monday, August 20, 2012","Wednesday, March 27, 2013","Monday, August 20, 2012","Wednesday, March 27, 2013","Monday, August 20, 2012","Wednesday, March 27, 2013",,12/7/2012 8:00,6/30/2013 17:00,,PT_Normal,,,,,Unw9ppizI0CHxwrudJjEmw,gDyr3avFPU2ktJXQg4ckSg,,,N,0,0,,,3/17/2012 20:04,3/18/2012 21:27,admin,NotPrmUser
496,98629,1685,13362,794,1,0,N,N,N,CP_Drtn,TT_LOE,DT_FixedDUR2,RV_OK,TK_NotStart,A7160,cash,,1576,0,944,0,0,0,944,0,0,0,,,,"Tuesday, March 5, 2013","Sunday, June 30, 2013",,"Monday, August 20, 2012","Saturday, December 15, 2012","Monday, August 20, 2012","Saturday, December 15, 2012","Monday, August 20, 2012","Saturday, December 15, 2012",,3/5/2013 8:00,6/30/2013 17:00,,PT_Normal,,,,,5Ozg6e2z9kGRZuGqBUvvhw,gDyr3avFPU2ktJXQg4ckSg,,,N,0,0,,,3/17/2012 20:17,3/17/2012 20:23,admin,admin
497,98630,1685,12253,794,1,0,N,N,N,CP_Drtn,TT_LOE,DT_FixedDUR2,RV_OK,TK_NotStart,A7170,cash,,1328,0,1192,0,0,0,1192,0,0,0,,,,"Saturday, January 26, 2013","Sunday, June 30, 2013",,"Monday, August 20, 2012","Tuesday, January 15, 2013","Monday, August 20, 2012","Tuesday, January 15, 2013","Monday, August 20, 2012","Tuesday, January 15, 2013",,1/26/2013 8:00,6/30/2013 17:00,,PT_Normal,,,,,rtlQsrj3nU6P4rCWGYX3ug,gDyr3avFPU2ktJXQg4ckSg,,,N,0,0,,,3/17/2012 20:24,3/17/2012 20:25,admin,admin
498,98675,1685,14229,794,1,0,N,N,N,CP_Drtn,TT_Task,DT_FixedDUR2,RV_OK,TK_NotStart,A7180,Excavation,,632,0,16,0,0,0,16,0,0,0,,,,"Tuesday, April 16, 2013","Wednesday, April 17, 2013",,"Sunday, January 27, 2013","Monday, January 28, 2013","Sunday, January 27, 2013","Monday, January 28, 2013","Sunday, January 27, 2013","Monday, January 28, 2013",,4/16/2013 8:00,4/17/2013 17:00,,PT_Normal,,,,,9x02qRAOQkCs6Vhu4WaTZg,ShHYBtooT0mRaNylgQbgaQ,,,N,0,0,,,3/17/2012 20:29,3/18/2012 13:23,admin,admin
499,98676,1685,14229,794,1,0,N,N,N,CP_Drtn,TT_Task,DT_FixedDUR2,RV_OK,TK_NotStart,A7190,P.c&R.c footing,2910,632,0,40,0,20,20,40,0,0,0,,,,"Thursday, April 18, 2013","Monday, April 22, 2013",,"Tuesday, January 29, 2013","Saturday, February 2, 2013","Tuesday, January 29, 2013","Saturday, February 2, 2013","Tuesday, January 29, 2013","Saturday, February 2, 2013",,4/18/2013 8:00,4/22/2013 17:00,,PT_Normal,,,,,eD8vbD2+1U6hGSQW/rOYGg,hcPdr/rIJECQcAACadroFA,,,N,0,0,,,3/17/2012 20:29,3/18/2012 13:23,admin,admin
500,98677,1685,14229,794,1,0,N,N,N,CP_Drtn,TT_Task,DT_FixedDUR2,RV_OK,TK_NotStart,A7200,R.c columns,2910,632,0,40,0,60,60,40,0,0,0,,,,"Tuesday, April 23, 2013","Saturday, April 27, 2013",,"Sunday, February 3, 2013","Thursday, February 7, 2013","Sunday, February 3, 2013","Thursday, February 7, 2013","Sunday, February 3, 2013","Thursday, February 7, 2013",,4/23/2013 8:00,4/27/2013 17:00,,PT_Normal,,,,,QZgaoO1AIUaUT0NJYC1Q/Q,QChlB5fa9UOnuqVqEUzDwg,,,N,0,0,,,3/17/2012 20:29,3/18/2012 13:23,admin,admin
501,98678,1685,14229,794,1,0,N,N,N,CP_Drtn,TT_Task,DT_FixedDUR2,RV_OK,TK_NotStart,A7210,Ground floor slab,2910,632,0,80,0,60,60,80,0,0,0,,,,"Sunday, April 28, 2013","Tuesday, May 7, 2013",,"Friday, February 8, 2013","Sunday, February 17, 2013","Friday, February 8, 2013","Sunday, February 17, 2013","Friday, February 8, 2013","Sunday, February 17, 2013",,4/28/2013 8:00,5/7/2013 17:00,,PT_Normal,,,,,2+kIahc6XUGWwcGduv/xbQ,nuFUXzGo0kyHtdFaE/YMcw,,,N,0,0,,,3/17/2012 20:29,3/18/2012 13:23,admin,admin
502,98679,1685,14230,794,1,0,N,N,N,CP_Drtn,TT_Task,DT_FixedDUR2,RV_OK,TK_NotStart,A7220,masonry works,2912,632,0,40,0,27,27,40,0,0,0,,,,"Saturday, May 18, 2013","Wednesday, May 22, 2013",,"Thursday, February 28, 2013","Monday, March 4, 2013","Thursday, February 28, 2013","Monday, March 4, 2013","Thursday, February 28, 2013","Monday, March 4, 2013",,5/18/2013 8:00,5/22/2013 17:00,,PT_Normal,,,,,7i2x3VRkvk2/p/6g2YU8Vg,x/CiyD7A7U2Q+7Vp3l1YvA,,,N,0,0,,,3/17/2012 20:29,3/18/2012 13:23,admin,admin
503,98680,1685,14230,794,1,0,N,N,N,CP_Drtn,TT_Task,DT_FixedDUR2,RV_OK,TK_NotStart,A7230,Plaster works,2914,632,0,8,0,5,5,8,0,0,0,,,,"Saturday, May 25, 2013","Saturday, May 25, 2013",,"Thursday, March 7, 2013","Thursday, March 7, 2013","Thursday, March 7, 2013","Thursday, March 7, 2013","Thursday, March 7, 2013","Thursday, March 7, 2013",,5/25/2013 8:00,5/25/2013 17:00,,PT_Normal,,,,,q9ITiCNWGk+t2DlyYt8t/A,G1DarJQGSECwU8pEaZrkcA,,,N,0,0,,,3/17/2012 20:29,3/18/2012 13:23,admin,admin
504,98681,1685,14230,794,1,0,N,N,N,CP_Drtn,TT_Task,DT_FixedDUR2,RV_OK,TK_NotStart,A7240,Flooring works,2914,632,0,8,0,5,5,8,0,0,0,,,,"Sunday, May 26, 2013","Sunday, May 26, 2013",,"Friday, March 8, 2013","Friday, March 8, 2013","Friday, March 8, 2013","Friday, March 8, 2013","Friday, March 8, 2013","Friday, March 8, 2013",,5/26/2013 8:00,5/26/2013 17:00,,PT_Normal,,,,,RMjY81sj5ECxwsu/8ivv5Q,bKEpI0D8bUWBj+cvT1f6sg,,,N,0,0,,,3/17/2012 20:29,3/18/2012 13:23,admin,admin
505,98682,1685,14230,794,1,0,N,N,N,CP_Drtn,TT_Task,DT_FixedDUR2,RV_OK,TK_NotStart,A7250,Painting works,2914,632,0,8,0,5,5,8,0,0,0,,,,"Saturday, June 1, 2013","Saturday, June 1, 2013",,"Thursday, March 14, 2013","Thursday, March 14, 2013","Thursday, March 14, 2013","Thursday, March 14, 2013","Thursday, March 14, 2013","Thursday, March 14, 2013",,6/1/2013 8:00,6/1/2013 17:00,,PT_Normal,,,,,EWlBitKq+kqC7sCGC6EuxQ,spxfiujTekiPiULF+EwDqQ,,,N,0,0,,,3/17/2012 20:29,3/18/2012 13:23,admin,admin
506,98683,1685,14230,794,1,0,N,N,N,CP_Drtn,TT_Task,DT_FixedDUR2,RV_OK,TK_NotStart,A7260,Doors&windows erection,2914,656,24,8,0,5,5,8,0,0,0,,,,"Thursday, May 30, 2013","Thursday, May 30, 2013",,"Saturday, March 9, 2013","Saturday, March 9, 2013","Saturday, March 9, 2013","Saturday, March 9, 2013","Saturday, March 9, 2013","Saturday, March 9, 2013",,5/30/2013 8:00,5/30/2013 17:00,,PT_Normal,,,,,LUPbsQiaKUiPs3q1gpoXKg,c2pXuRw580OcfH5eH5QiZQ,,,N,0,0,,,3/17/2012 20:29,3/18/2012 13:23,admin,admin
507,98684,1685,14230,794,1,0,N,N,N,CP_Drtn,TT_Task,DT_FixedDUR2,RV_OK,TK_NotStart,A7270,False ceiling,2914,632,0,8,0,5,5,8,0,0,0,,,,"Friday, May 31, 2013","Friday, May 31, 2013",,"Wednesday, March 13, 2013","Wednesday, March 13, 2013","Wednesday, March 13, 2013","Wednesday, March 13, 2013","Wednesday, March 13, 2013","Wednesday, March 13, 2013",,5/31/2013 8:00,5/31/2013 17:00,,PT_Normal,,,,,FomSBC3SCUiBRu9Y/gm+Yw,#NAME?,,,N,0,0,,,3/17/2012 20:29,3/18/2012 13:23,admin,admin
508,98685,1685,14231,794,1,0,N,N,N,CP_Drtn,TT_Task,DT_FixedDUR2,RV_OK,TK_NotStart,A7280,Conduits&outlets,,816,816,112,0,0,0,112,0,0,0,,,,"Monday, June 17, 2013","Sunday, June 30, 2013",,"Thursday, March 7, 2013","Wednesday, March 20, 2013","Thursday, March 7, 2013","Wednesday, March 20, 2013","Thursday, March 7, 2013","Wednesday, March 20, 2013",,6/17/2013 8:00,6/30/2013 17:00,,PT_Normal,,,,,fmh1cz921UqTNaOPcXGXXA,ccMEipGqZE+szEiIGJHWhg,,,N,0,0,,,3/17/2012 20:29,3/18/2012 22:47,admin,NotPrmUser
509,98686,1685,14231,794,1,0,N,N,N,CP_Drtn,TT_Task,DT_FixedDUR2,RV_OK,TK_NotStart,A7290,Lighting & power panels,,832,0,40,0,0,0,40,0,0,0,,,,"Wednesday, June 26, 2013","Sunday, June 30, 2013",,"Thursday, March 14, 2013","Monday, March 18, 2013","Thursday, March 14, 2013","Monday, March 18, 2013","Thursday, March 14, 2013","Monday, March 18, 2013",,6/26/2013 8:00,6/30/2013 17:00,,PT_Normal,,,,,WlzqH7tFs0y5aqOtd0YQAQ,9lGW5qxr9EOLIAzPUfJckg,,,N,0,0,,,3/17/2012 20:29,3/18/2012 13:23,admin,admin
510,98687,1685,14231,794,1,0,N,N,N,CP_Drtn,TT_Task,DT_FixedDUR2,RV_OK,TK_NotStart,A7300,Cable trays,,632,0,32,0,0,0,32,0,0,0,,,,"Monday, May 27, 2013","Thursday, May 30, 2013",,"Saturday, March 9, 2013","Tuesday, March 12, 2013","Saturday, March 9, 2013","Tuesday, March 12, 2013","Saturday, March 9, 2013","Tuesday, March 12, 2013",,5/27/2013 8:00,5/30/2013 17:00,,PT_Normal,,,,,wht4s67EEEengglMs+9CHA,9f3QEwPe90OXA3aACgev8w,,,N,0,0,,,3/17/2012 20:29,3/18/2012 13:23,admin,admin
511,98688,1685,14231,794,1,0,N,N,N,CP_Drtn,TT_Task,DT_FixedDUR2,RV_OK,TK_NotStart,A7310,Telecommunications system & outlets,,832,832,24,0,0,0,24,0,0,0,,,,"Friday, June 28, 2013","Sunday, June 30, 2013",,"Saturday, March 16, 2013","Monday, March 18, 2013","Saturday, March 16, 2013","Monday, March 18, 2013","Saturday, March 16, 2013","Monday, March 18, 2013",,6/28/2013 8:00,6/30/2013 17:00,,PT_Normal,,,,,GzpaXn8k0kWnZkL7Qvln6g,WVMyX+TKOUWG/8Ge1zWwTg,,,N,0,0,,,3/17/2012 20:29,3/18/2012 22:47,admin,NotPrmUser
512,98689,1685,14231,794,1,0,N,N,N,CP_Drtn,TT_Task,DT_FixedDUR2,RV_OK,TK_NotStart,A7320,Fire alarm system,,792,792,80,0,0,0,80,0,0,0,,,,"Friday, June 21, 2013","Sunday, June 30, 2013",,"Thursday, March 14, 2013","Saturday, March 23, 2013","Thursday, March 14, 2013","Saturday, March 23, 2013","Thursday, March 14, 2013","Saturday, March 23, 2013",,6/21/2013 8:00,6/30/2013 17:00,,PT_Normal,,,,,IeY9zanbOUij5dE8fa/fkA,I4qqvxOqIkO3f4MkFfAzLg,,,N,0,0,,,3/17/2012 20:29,3/18/2012 22:47,admin,NotPrmUser
513,98690,1685,14231,794,1,0,N,N,N,CP_Drtn,TT_Task,DT_FixedDUR2,RV_OK,TK_NotStart,A7330,Grounding&bonding,,912,64,16,0,0,0,16,0,0,0,,,,"Thursday, June 27, 2013","Friday, June 28, 2013",,"Tuesday, March 5, 2013","Wednesday, March 6, 2013","Tuesday, March 5, 2013","Wednesday, March 6, 2013","Tuesday, March 5, 2013","Wednesday, March 6, 2013",,6/27/2013 8:00,6/28/2013 17:00,,PT_Normal,,,,,HuLuI26j+UebCEPDR7O0Tw,SXps5PTIIE2IYlTDhbAuZQ,,,N,0,0,,,3/17/2012 20:29,3/18/2012 13:23,admin,admin
514,98691,1685,14231,794,1,0,N,N,N,CP_Drtn,TT_Task,DT_FixedDUR2,RV_OK,TK_NotStart,A7340,Wires&cables,,632,632,240,0,0,0,240,0,0,0,,,,"Saturday, June 1, 2013","Sunday, June 30, 2013",,"Thursday, March 14, 2013","Friday, April 12, 2013","Thursday, March 14, 2013","Friday, April 12, 2013","Thursday, March 14, 2013","Friday, April 12, 2013",,6/1/2013 8:00,6/30/2013 17:00,,PT_Normal,,,,,TpO60GnZ6k+7grqQC3xxNA,vN+OfXntc0at1h/9nUatnA,,,N,0,0,,,3/17/2012 20:29,3/18/2012 22:47,admin,NotPrmUser
515,98692,1685,14231,794,1,0,N,N,N,CP_Drtn,TT_Task,DT_FixedDUR2,RV_OK,TK_NotStart,A7350,Equipment installation,,848,848,16,0,0,0,16,0,0,0,,,,"Saturday, June 29, 2013","Sunday, June 30, 2013",,"Friday, March 15, 2013","Saturday, March 16, 2013","Friday, March 15, 2013","Saturday, March 16, 2013","Friday, March 15, 2013","Saturday, March 16, 2013",,6/29/2013 8:00,6/30/2013 17:00,,PT_Normal,,,,,AEaAuNYBE02mfpuVwzXY/w,J0ZFIivVKE+p55ngBqM9EA,,,N,0,0,,,3/17/2012 20:29,3/18/2012 22:47,admin,NotPrmUser
516,98693,1685,14233,794,1,0,N,N,N,CP_Drtn,TT_Task,DT_FixedDUR2,RV_OK,TK_NotStart,A7360,Plumbing works(first fix),2909,632,0,16,0,0,0,16,0,0,0,,,,"Thursday, May 23, 2013","Friday, May 24, 2013",,"Tuesday, March 5, 2013","Wednesday, March 6, 2013","Tuesday, March 5, 2013","Wednesday, March 6, 2013","Tuesday, March 5, 2013","Wednesday, March 6, 2013",,5/23/2013 8:00,5/24/2013 17:00,,PT_Normal,,,,,cd1SeK0nT0ypjLudeWVgOg,OWBDxq+boUKQdlzkb5WRpQ,,,N,0,0,,,3/17/2012 20:29,3/19/2012 1:07,admin,NotPrmUser
517,98694,1685,14233,794,1,0,N,N,N,CP_Drtn,TT_Task,DT_FixedDUR2,RV_OK,TK_NotStart,A7370,Plumbing works(second fix),,848,848,16,0,0,0,16,0,0,0,,,,"Saturday, June 29, 2013","Sunday, June 30, 2013",,"Friday, March 15, 2013","Saturday, March 16, 2013","Friday, March 15, 2013","Saturday, March 16, 2013","Friday, March 15, 2013","Saturday, March 16, 2013",,6/29/2013 8:00,6/30/2013 17:00,,PT_Normal,,,,,lwjBLtDBMEKNAgxcluo+sg,lNUKM4NGV0ivXXD3VSBcUg,,,N,0,0,,,3/17/2012 20:29,3/18/2012 22:47,admin,NotPrmUser
518,98695,1685,14234,794,1,0,N,N,N,CP_Drtn,TT_Task,DT_FixedDUR2,RV_OK,TK_NotStart,A7380,Split units,,848,848,16,0,0,0,16,0,0,0,,,,"Saturday, June 29, 2013","Sunday, June 30, 2013",,"Friday, March 15, 2013","Saturday, March 16, 2013","Friday, March 15, 2013","Saturday, March 16, 2013","Friday, March 15, 2013","Saturday, March 16, 2013",,6/29/2013 8:00,6/30/2013 17:00,,PT_Normal,,,,,mYUnn3xORk2sXN+AXGdebg,Oh3Hbrgu5USROMbs1bwlwg,,,N,0,0,,,3/17/2012 20:29,3/18/2012 22:47,admin,NotPrmUser
519,98696,1685,14229,794,1,0,N,N,N,CP_Drtn,TT_LOE,DT_FixedDUR2,RV_OK,TK_NotStart,A7390,cash,,632,0,608,0,0,0,608,0,0,0,,,,"Tuesday, April 16, 2013","Sunday, June 30, 2013",,"Sunday, January 27, 2013","Friday, April 12, 2013","Sunday, January 27, 2013","Friday, April 12, 2013","Sunday, January 27, 2013","Friday, April 12, 2013",,4/16/2013 8:00,6/30/2013 17:00,,PT_Normal,,,,,mQqruT25XEq1i0LXQH6eqA,qSprEF5nIUmYkiSUlwzq+w,,,N,0,0,,,3/17/2012 20:29,3/18/2012 13:23,admin,admin
520,98697,1685,13455,794,0,0,N,N,N,CP_Drtn,TT_Mile,DT_FixedDrtn,RV_OK,TK_NotStart,A7400,Place order for bulk material,,2064,0,0,0,0,0,0,0,0,0,,,,"Saturday, February 9, 2013","Saturday, February 9, 2013",,"Sunday, May 27, 2012","Sunday, May 27, 2012","Sunday, May 27, 2012","Sunday, May 27, 2012","Sunday, May 27, 2012","Sunday, May 27, 2012",,2/9/2013 8:00,2/9/2013 8:00,,PT_Normal,,,,,p/jvLAKSTUCkEZ/mpIoQdw,Nc60WZJXhk68FyxjbCSmQw,,,N,0,0,,,3/18/2012 10:58,3/18/2012 10:58,admin,admin
521,98698,1685,13455,794,0,0,N,N,N,CP_Drtn,TT_Mile,DT_FixedDrtn,RV_OK,TK_NotStart,A7410,material received@construction site,,2064,0,0,0,0,0,0,0,0,0,,,,"Saturday, June 1, 2013","Saturday, June 1, 2013",,"Sunday, September 16, 2012","Sunday, September 16, 2012","Sunday, September 16, 2012","Sunday, September 16, 2012","Sunday, September 16, 2012","Sunday, September 16, 2012",,6/1/2013 8:00,6/1/2013 8:00,,PT_Normal,,,,,84EeaOMusk2Xtss9JD8UkA,TJ/6xt/Yo0KXLSw19lkcWw,,,N,0,0,,,3/18/2012 10:58,3/18/2012 10:58,admin,admin
522,98699,1685,13455,794,0,0,N,N,N,CP_Drtn,TT_Mile,DT_FixedDrtn,RV_OK,TK_NotStart,A7420,All material received&p.o closed,,2064,2064,0,0,0,0,0,0,0,0,,,,"Sunday, June 30, 2013","Sunday, June 30, 2013",,"Tuesday, October 16, 2012","Tuesday, October 16, 2012","Tuesday, October 16, 2012","Tuesday, October 16, 2012","Tuesday, October 16, 2012","Tuesday, October 16, 2012",,6/30/2013 17:00,6/30/2013 17:00,,PT_Normal,,,,,6cWH/7CD10muI34OGtNRmA,AhBWY8kIcECopJzIAHY1hA,,,N,0,0,,,3/18/2012 10:58,3/18/2012 22:47,admin,NotPrmUser
523,98700,1685,14235,794,0,0,N,N,N,CP_Drtn,TT_Mile,DT_FixedDrtn,RV_OK,TK_NotStart,A7430,Issue mr for approval,,1112,0,0,0,0,0,0,0,0,0,,,,"Thursday, March 7, 2013","Thursday, March 7, 2013",,"Friday, October 19, 2012","Friday, October 19, 2012","Friday, October 19, 2012","Friday, October 19, 2012","Friday, October 19, 2012","Friday, October 19, 2012",,3/7/2013 8:00,3/7/2013 8:00,,PT_Normal,,,,,6y6oDwqJQ0COwoyejGAl8w,fERcjmK/fECXr+fYuxoBnw,,,N,0,0,,,3/18/2012 11:26,3/18/2012 15:03,admin,admin
524,98701,1685,14235,794,0,0,N,N,N,CP_Drtn,TT_Mile,DT_FixedDrtn,RV_OK,TK_NotStart,A7440,Issue Po,,1112,0,0,0,0,0,0,0,0,0,,,,"Thursday, April 4, 2013","Thursday, April 4, 2013",,"Friday, November 16, 2012","Friday, November 16, 2012","Friday, November 16, 2012","Friday, November 16, 2012","Friday, November 16, 2012","Friday, November 16, 2012",,4/4/2013 8:00,4/4/2013 8:00,,PT_Normal,,,,,YI69qhosi0Sl2vzmSO4Y0g,Op4TZaoVwkm03uTW/O0qyQ,,,N,0,0,,,3/18/2012 11:26,3/18/2012 15:03,admin,admin
525,98702,1685,14235,794,0,0,N,N,N,CP_Drtn,TT_Mile,DT_FixedDrtn,RV_OK,TK_NotStart,A7450,Material received and inspected@ site,,1112,0,0,0,0,0,0,0,0,0,,,,"Monday, June 3, 2013","Monday, June 3, 2013",,"Tuesday, January 15, 2013","Tuesday, January 15, 2013","Tuesday, January 15, 2013","Tuesday, January 15, 2013","Tuesday, January 15, 2013","Tuesday, January 15, 2013",,6/3/2013 8:00,6/3/2013 8:00,,PT_Normal,,,,,95SiPLuYoEuxG9qZyfiB6Q,pQ1eAfAnm06En/Xq00/bjg,,,N,0,0,,,3/18/2012 11:26,3/18/2012 15:03,admin,admin
526,98703,1685,14235,794,0,0,N,N,N,CP_Drtn,TT_Mile,DT_FixedDrtn,RV_OK,TK_NotStart,A7460,All spare parts rec'd,,1112,1112,0,0,0,0,0,0,0,0,,,,"Sunday, June 30, 2013","Sunday, June 30, 2013",,"Tuesday, February 12, 2013","Tuesday, February 12, 2013","Tuesday, February 12, 2013","Tuesday, February 12, 2013","Tuesday, February 12, 2013","Tuesday, February 12, 2013",,6/30/2013 17:00,6/30/2013 17:00,,PT_Normal,,,,,q0Uh6dND80Gual4Wha9Wpw,L55AtgiuDUyRuc3zz/HAyQ,,,N,0,0,,,3/18/2012 11:26,3/18/2012 22:47,admin,NotPrmUser
527,98704,1685,14236,794,0,0,N,N,N,CP_Drtn,TT_Mile,DT_FixedDrtn,RV_OK,TK_NotStart,A7470,Issue mr for approval,,792,0,0,0,0,0,0,0,0,0,,,,"Saturday, January 26, 2013","Saturday, January 26, 2013",,"Friday, October 19, 2012","Friday, October 19, 2012","Friday, October 19, 2012","Friday, October 19, 2012","Friday, October 19, 2012","Friday, October 19, 2012",,1/26/2013 8:00,1/26/2013 8:00,,PT_Normal,,,,,an+CglhEiUydssSm/ZIREQ,6y6oDwqJQ0COwoyejGAl8w,,,N,0,0,,,3/18/2012 11:28,3/18/2012 15:25,admin,admin
528,98705,1685,14236,794,0,0,N,N,N,CP_Drtn,TT_Mile,DT_FixedDrtn,RV_OK,TK_NotStart,A7480,Issue Po,,792,0,0,0,0,0,0,0,0,0,,,,"Saturday, February 23, 2013","Saturday, February 23, 2013",,"Friday, November 16, 2012","Friday, November 16, 2012","Friday, November 16, 2012","Friday, November 16, 2012","Friday, November 16, 2012","Friday, November 16, 2012",,2/23/2013 8:00,2/23/2013 8:00,,PT_Normal,,,,,Zg+3fUv430SkTWd2ccV/qg,YI69qhosi0Sl2vzmSO4Y0g,,,N,0,0,,,3/18/2012 11:28,3/18/2012 15:25,admin,admin
529,98706,1685,14236,794,0,0,N,N,N,CP_Drtn,TT_Mile,DT_FixedDrtn,RV_OK,TK_NotStart,A7490,Material received and inspected@ site,,792,0,0,0,0,0,0,0,0,0,,,,"Monday, June 3, 2013","Monday, June 3, 2013",,"Sunday, February 24, 2013","Sunday, February 24, 2013","Sunday, February 24, 2013","Sunday, February 24, 2013","Sunday, February 24, 2013","Sunday, February 24, 2013",,6/3/2013 8:00,6/3/2013 8:00,,PT_Normal,,,,,Y0EHlzt5ikqqUmLvibXmjQ,95SiPLuYoEuxG9qZyfiB6Q,,,N,0,0,,,3/18/2012 11:28,3/18/2012 15:25,admin,admin
530,98707,1685,14236,794,0,0,N,N,N,CP_Drtn,TT_Mile,DT_FixedDrtn,RV_OK,TK_NotStart,A7500,All spare parts rec'd,,792,792,0,0,0,0,0,0,0,0,,,,"Sunday, June 30, 2013","Sunday, June 30, 2013",,"Sunday, March 24, 2013","Sunday, March 24, 2013","Sunday, March 24, 2013","Sunday, March 24, 2013","Sunday, March 24, 2013","Sunday, March 24, 2013",,6/30/2013 17:00,6/30/2013 17:00,,PT_Normal,,,,,sTNS1C+H8EewDJpW7qN+xQ,q0Uh6dND80Gual4Wha9Wpw,,,N,0,0,,,3/18/2012 11:28,3/18/2012 22:47,admin,NotPrmUser
531,98708,1685,14237,794,0,0,N,N,N,CP_Drtn,TT_Mile,DT_FixedDrtn,RV_OK,TK_NotStart,A7510,Place order for bulk material,,904,0,0,0,0,0,0,0,0,0,,,,"Saturday, February 9, 2013","Saturday, February 9, 2013",,"Friday, October 19, 2012","Friday, October 19, 2012","Friday, October 19, 2012","Friday, October 19, 2012","Friday, October 19, 2012","Friday, October 19, 2012",,2/9/2013 8:00,2/9/2013 8:00,,PT_Normal,,,,,kH2s/H40zEGREhbZ2PGQyg,Nc60WZJXhk68FyxjbCSmQw,,,N,0,0,,,3/18/2012 11:31,3/18/2012 11:31,admin,admin
532,98709,1685,14237,794,0,0,N,N,N,CP_Drtn,TT_Mile,DT_FixedDrtn,RV_OK,TK_NotStart,A7520,material received@construction site,,904,0,0,0,0,0,0,0,0,0,,,,"Saturday, June 1, 2013","Saturday, June 1, 2013",,"Friday, February 8, 2013","Friday, February 8, 2013","Friday, February 8, 2013","Friday, February 8, 2013","Friday, February 8, 2013","Friday, February 8, 2013",,6/1/2013 8:00,6/1/2013 8:00,,PT_Normal,,,,,tMO/pwbjsUOLzj+7jGww9Q,TJ/6xt/Yo0KXLSw19lkcWw,,,N,0,0,,,3/18/2012 11:31,3/18/2012 11:31,admin,admin
533,98710,1685,14237,794,0,0,N,N,N,CP_Drtn,TT_Mile,DT_FixedDrtn,RV_OK,TK_NotStart,A7530,All material received&p.o closed,,904,904,0,0,0,0,0,0,0,0,,,,"Sunday, June 30, 2013","Sunday, June 30, 2013",,"Sunday, March 10, 2013","Sunday, March 10, 2013","Sunday, March 10, 2013","Sunday, March 10, 2013","Sunday, March 10, 2013","Sunday, March 10, 2013",,6/30/2013 17:00,6/30/2013 17:00,,PT_Normal,,,,,iXah+pemdky3etzpdZw30w,AhBWY8kIcECopJzIAHY1hA,,,N,0,0,,,3/18/2012 11:31,3/18/2012 22:47,admin,NotPrmUser
534,98711,1685,14238,794,0,0,N,N,N,CP_Drtn,TT_Mile,DT_FixedDrtn,RV_OK,TK_NotStart,A7540,Place order for bulk material,,904,0,0,0,0,0,0,0,0,0,,,,"Saturday, February 9, 2013","Saturday, February 9, 2013",,"Friday, October 19, 2012","Friday, October 19, 2012","Friday, October 19, 2012","Friday, October 19, 2012","Friday, October 19, 2012","Friday, October 19, 2012",,2/9/2013 8:00,2/9/2013 8:00,,PT_Normal,,,,,ezNlNw2+N0uGb2oDKUEitA,Nc60WZJXhk68FyxjbCSmQw,,,N,0,0,,,3/18/2012 11:34,3/18/2012 11:34,admin,admin
535,98712,1685,14238,794,0,0,N,N,N,CP_Drtn,TT_Mile,DT_FixedDrtn,RV_OK,TK_NotStart,A7550,material received@construction site,,904,0,0,0,0,0,0,0,0,0,,,,"Saturday, June 1, 2013","Saturday, June 1, 2013",,"Friday, February 8, 2013","Friday, February 8, 2013","Friday, February 8, 2013","Friday, February 8, 2013","Friday, February 8, 2013","Friday, February 8, 2013",,6/1/2013 8:00,6/1/2013 8:00,,PT_Normal,,,,,C0a45d6uLUqrS70hAso9Mw,TJ/6xt/Yo0KXLSw19lkcWw,,,N,0,0,,,3/18/2012 11:34,3/18/2012 11:34,admin,admin
536,98713,1685,14238,794,0,0,N,N,N,CP_Drtn,TT_Mile,DT_FixedDrtn,RV_OK,TK_NotStart,A7560,All material received&p.o closed,,904,904,0,0,0,0,0,0,0,0,,,,"Sunday, June 30, 2013","Sunday, June 30, 2013",,"Sunday, March 10, 2013","Sunday, March 10, 2013","Sunday, March 10, 2013","Sunday, March 10, 2013","Sunday, March 10, 2013","Sunday, March 10, 2013",,6/30/2013 17:00,6/30/2013 17:00,,PT_Normal,,,,,fbldQgU6GEmkJgxTBc1W/A,AhBWY8kIcECopJzIAHY1hA,,,N,0,0,,,3/18/2012 11:34,3/18/2012 22:47,admin,NotPrmUser
537,98714,1685,14239,794,0,0,N,N,N,CP_Drtn,TT_Mile,DT_FixedDrtn,RV_OK,TK_NotStart,A7570,Place order for bulk material,,904,0,0,0,0,0,0,0,0,0,,,,"Saturday, February 9, 2013","Saturday, February 9, 2013",,"Friday, October 19, 2012","Friday, October 19, 2012","Friday, October 19, 2012","Friday, October 19, 2012","Friday, October 19, 2012","Friday, October 19, 2012",,2/9/2013 8:00,2/9/2013 8:00,,PT_Normal,,,,,Lcpk4sAGWUSUQFQXoksG9w,Nc60WZJXhk68FyxjbCSmQw,,,N,0,0,,,3/18/2012 11:34,3/18/2012 11:34,admin,admin
538,98715,1685,14239,794,0,0,N,N,N,CP_Drtn,TT_Mile,DT_FixedDrtn,RV_OK,TK_NotStart,A7580,material received@construction site,,904,0,0,0,0,0,0,0,0,0,,,,"Saturday, June 1, 2013","Saturday, June 1, 2013",,"Friday, February 8, 2013","Friday, February 8, 2013","Friday, February 8, 2013","Friday, February 8, 2013","Friday, February 8, 2013","Friday, February 8, 2013",,6/1/2013 8:00,6/1/2013 8:00,,PT_Normal,,,,,Wh+d2yWCmECXcPx0O1hppg,TJ/6xt/Yo0KXLSw19lkcWw,,,N,0,0,,,3/18/2012 11:34,3/18/2012 11:34,admin,admin
539,98716,1685,14239,794,0,0,N,N,N,CP_Drtn,TT_Mile,DT_FixedDrtn,RV_OK,TK_NotStart,A7590,All material received&p.o closed,,904,904,0,0,0,0,0,0,0,0,,,,"Sunday, June 30, 2013","Sunday, June 30, 2013",,"Sunday, March 10, 2013","Sunday, March 10, 2013","Sunday, March 10, 2013","Sunday, March 10, 2013","Sunday, March 10, 2013","Sunday, March 10, 2013",,6/30/2013 17:00,6/30/2013 17:00,,PT_Normal,,,,,irgo7DfgfUSieBZcjFkzhA,AhBWY8kIcECopJzIAHY1hA,,,N,0,0,,,3/18/2012 11:34,3/18/2012 22:47,admin,NotPrmUser
540,99617,1685,12225,794,1,0,N,N,N,CP_Drtn,TT_Task,DT_FixedDrtn,RV_OK,TK_NotStart,A7600,Project management&services,,1544,0,1656,0,0,0,1656,0,0,0,,,,"Thursday, December 6, 2012","Sunday, June 30, 2013",,"Sunday, May 27, 2012","Wednesday, December 19, 2012","Sunday, May 27, 2012","Wednesday, December 19, 2012","Sunday, May 27, 2012","Wednesday, December 19, 2012",,12/6/2012 8:00,6/30/2013 17:00,,PT_Normal,,,,,1N2l5U/mTECFF0317ZVh+A,,,,N,0,0,,,3/18/2012 15:36,3/18/2012 23:04,admin,NotPrmUser
541,99618,1685,12225,794,1,0,N,N,N,CP_Drtn,TT_Task,DT_FixedDrtn,RV_OK,TK_NotStart,A7610,Process,,2120,2120,720,0,0,0,720,0,0,0,,,,"Tuesday, April 2, 2013","Sunday, June 30, 2013",,"Wednesday, July 11, 2012","Monday, October 8, 2012","Wednesday, July 11, 2012","Monday, October 8, 2012","Wednesday, July 11, 2012","Monday, October 8, 2012",,4/2/2013 8:00,6/30/2013 17:00,,PT_Normal,,,,,d3CRcq80Rkqqw0nYLjffwQ,,,,N,0,0,,,3/18/2012 15:36,3/18/2012 22:47,admin,NotPrmUser
542,99619,1685,12225,794,1,0,N,N,N,CP_Drtn,TT_Task,DT_FixedDrtn,RV_OK,TK_NotStart,A7620,Civil &structural steel,,1544,1544,1656,0,0,0,1656,0,0,0,,,,"Thursday, December 6, 2012","Sunday, June 30, 2013",,"Sunday, May 27, 2012","Wednesday, December 19, 2012","Sunday, May 27, 2012","Wednesday, December 19, 2012","Sunday, May 27, 2012","Wednesday, December 19, 2012",,12/6/2012 8:00,6/30/2013 17:00,,PT_Normal,,,,,3WWVYAVitkuUMgDrIVjhzQ,,,,N,0,0,,,3/18/2012 15:36,3/18/2012 22:47,admin,NotPrmUser
543,99620,1685,12225,794,1,0,N,N,N,CP_Drtn,TT_Task,DT_FixedDrtn,RV_OK,TK_NotStart,A7630,Mechnical equipment,,1536,1536,1424,0,0,0,1424,0,0,0,,,,"Friday, January 4, 2013","Sunday, June 30, 2013",,"Tuesday, June 26, 2012","Thursday, December 20, 2012","Tuesday, June 26, 2012","Thursday, December 20, 2012","Tuesday, June 26, 2012","Thursday, December 20, 2012",,1/4/2013 8:00,6/30/2013 17:00,,PT_Normal,,,,,LgNkiEXzxEWhZBoRxBSORg,,,,N,0,0,,,3/18/2012 15:36,3/18/2012 22:48,admin,NotPrmUser
544,99621,1685,12225,794,1,0,N,N,N,CP_Drtn,TT_Task,DT_FixedDrtn,RV_OK,TK_NotStart,A7640,Plant&piping,,1536,1536,1424,0,0,0,1424,0,0,0,,,,"Friday, January 4, 2013","Sunday, June 30, 2013",,"Tuesday, June 26, 2012","Thursday, December 20, 2012","Tuesday, June 26, 2012","Thursday, December 20, 2012","Tuesday, June 26, 2012","Thursday, December 20, 2012",,1/4/2013 8:00,6/30/2013 17:00,,PT_Normal,,,,,E9K+A+NnnkmS2uXYC8En2g,,,,N,0,0,,,3/18/2012 15:36,3/18/2012 22:48,admin,NotPrmUser
545,99622,1685,12225,794,1,0,N,N,N,CP_Drtn,TT_Task,DT_FixedDrtn,RV_OK,TK_NotStart,A7650,Electrical,,1600,1600,1360,0,0,0,1360,0,0,0,,,,"Saturday, January 12, 2013","Sunday, June 30, 2013",,"Tuesday, June 26, 2012","Wednesday, December 12, 2012","Tuesday, June 26, 2012","Wednesday, December 12, 2012","Tuesday, June 26, 2012","Wednesday, December 12, 2012",,1/12/2013 8:00,6/30/2013 17:00,,PT_Normal,,,,,xzR9sGEga0y/qoiBJQxfkQ,,,,N,0,0,,,3/18/2012 15:36,3/18/2012 22:50,admin,NotPrmUser
546,99623,1685,12225,794,1,0,N,N,N,CP_Drtn,TT_Task,DT_FixedDrtn,RV_OK,TK_NotStart,A7660,"Instrumintation,automation&telecommunication",,1760,1760,1200,0,0,0,1200,0,0,0,,,,"Friday, February 1, 2013","Sunday, June 30, 2013",,"Tuesday, June 26, 2012","Thursday, November 22, 2012","Tuesday, June 26, 2012","Thursday, November 22, 2012","Tuesday, June 26, 2012","Thursday, November 22, 2012",,2/1/2013 8:00,6/30/2013 17:00,,PT_Normal,,,,,yriW6nXlu0q5/K7Uc8q64Q,,,,N,0,0,,,3/18/2012 15:37,3/18/2012 22:50,admin,NotPrmUser
547,99624,1685,12225,794,1,0,N,N,N,CP_Drtn,TT_Task,DT_FixedDrtn,RV_OK,TK_NotStart,A7670,Architectural& buildings,,1560,1560,1640,0,0,0,1640,0,0,0,,,,"Saturday, December 8, 2012","Sunday, June 30, 2013",,"Sunday, May 27, 2012","Monday, December 17, 2012","Sunday, May 27, 2012","Monday, December 17, 2012","Sunday, May 27, 2012","Monday, December 17, 2012",,12/8/2012 8:00,6/30/2013 17:00,,PT_Normal,,,,,8I8pLaXxdUu3WQeBE2m+qw,,,,N,0,0,,,3/18/2012 15:37,3/18/2012 22:52,admin,NotPrmUser
548,99625,1685,12225,794,1,0,N,N,N,CP_Drtn,TT_Task,DT_FixedDrtn,RV_OK,TK_NotStart,A7680,HVAC,,1760,1760,1200,0,0,0,1200,0,0,0,,,,"Friday, February 1, 2013","Sunday, June 30, 2013",,"Tuesday, June 26, 2012","Thursday, November 22, 2012","Tuesday, June 26, 2012","Thursday, November 22, 2012","Tuesday, June 26, 2012","Thursday, November 22, 2012",,2/1/2013 8:00,6/30/2013 17:00,,PT_Normal,,,,,L7vw9xgxGEOmZ02vSDUwyA,,,,N,0,0,,,3/18/2012 16:11,3/18/2012 22:52,admin,NotPrmUser
549,99626,1685,12225,794,1,0,N,N,N,CP_Drtn,TT_Task,DT_FixedDrtn,RV_OK,TK_NotStart,A7690,Evaporation bond,,2720,1176,480,0,0,0,480,0,0,0,,,,"Thursday, May 2, 2013","Sunday, June 30, 2013",,"Sunday, May 27, 2012","Wednesday, July 25, 2012","Sunday, May 27, 2012","Wednesday, July 25, 2012","Sunday, May 27, 2012","Wednesday, July 25, 2012",,5/2/2013 8:00,6/30/2013 17:00,,PT_Normal,,,,,E54M0bpLYEWias9NSaz8Wg,,,,N,0,0,,,3/18/2012 16:11,3/18/2012 23:04,admin,NotPrmUser
550,99627,1685,14640,794,0,0,N,N,N,CP_Drtn,TT_FinMile,DT_FixedDrtn,RV_OK,TK_NotStart,A7700,Electrical part,,360,360,0,0,0,0,0,0,0,0,,,,"Sunday, June 30, 2013","Sunday, June 30, 2013",,"Thursday, May 16, 2013","Thursday, May 16, 2013","Thursday, May 16, 2013","Thursday, May 16, 2013","Thursday, May 16, 2013","Thursday, May 16, 2013",,6/30/2013 17:00,6/30/2013 17:00,,PT_Normal,,,,,YKHelYMDLUqS9XEqvwgBsw,,,,N,0,0,,,3/18/2012 16:49,3/18/2012 16:56,admin,admin
551,99628,1685,14640,794,0,0,N,N,N,CP_Drtn,TT_FinMile,DT_FixedDrtn,RV_OK,TK_NotStart,A7710,Instrumentation& telecommunication,,280,280,0,0,0,0,0,0,0,0,,,,"Sunday, June 30, 2013","Sunday, June 30, 2013",,"Sunday, May 26, 2013","Sunday, May 26, 2013","Sunday, May 26, 2013","Sunday, May 26, 2013","Sunday, May 26, 2013","Sunday, May 26, 2013",,6/30/2013 17:00,6/30/2013 17:00,,PT_Normal,,,,,ClLso/3X9UCsFvcC+swqAw,,,,N,0,0,,,3/18/2012 16:49,3/18/2012 16:56,admin,admin
552,99629,1685,14640,794,0,0,N,N,N,CP_Drtn,TT_FinMile,DT_FixedDrtn,RV_OK,TK_NotStart,A7720,HVAC system,,320,320,0,0,0,0,0,0,0,0,,,,"Sunday, June 30, 2013","Sunday, June 30, 2013",,"Tuesday, May 21, 2013","Tuesday, May 21, 2013","Tuesday, May 21, 2013","Tuesday, May 21, 2013","Tuesday, May 21, 2013","Tuesday, May 21, 2013",,6/30/2013 17:00,6/30/2013 17:00,,PT_Normal,,,,,gFVNFyh4YkSLGxwiNEMC9Q,,,,N,0,0,,,3/18/2012 16:49,3/18/2012 16:56,admin,admin
553,99630,1685,14640,794,0,0,N,N,N,CP_Drtn,TT_FinMile,DT_FixedDrtn,RV_OK,TK_NotStart,A7730,Utilities & connections,,240,240,0,0,0,0,0,0,0,0,,,,"Sunday, June 30, 2013","Sunday, June 30, 2013",,"Friday, May 31, 2013","Friday, May 31, 2013","Friday, May 31, 2013","Friday, May 31, 2013","Friday, May 31, 2013","Friday, May 31, 2013",,6/30/2013 17:00,6/30/2013 17:00,,PT_Normal,,,,,arjFornJ/k+hCeyRsHo/0Q,,,,N,0,0,,,3/18/2012 16:49,3/18/2012 16:56,admin,admin
554,99631,1685,14640,794,0,0,N,N,N,CP_Drtn,TT_FinMile,DT_FixedDrtn,RV_OK,TK_NotStart,A7740,Start up,,120,120,0,0,0,0,0,0,0,0,,,,"Sunday, June 30, 2013","Sunday, June 30, 2013",,"Saturday, June 15, 2013","Saturday, June 15, 2013","Saturday, June 15, 2013","Saturday, June 15, 2013","Saturday, June 15, 2013","Saturday, June 15, 2013",,6/30/2013 17:00,6/30/2013 17:00,,PT_Normal,,,,,5/M+z+KPsEuRZhOPFP4UOw,,,,N,0,0,,,3/18/2012 16:49,3/18/2012 16:56,admin,admin
555,99632,1685,14640,794,0,0,N,N,N,CP_Drtn,TT_FinMile,DT_FixedDrtn,RV_OK,TK_NotStart,A7750,Hydro testing of piping &testing of equipment,,0,0,0,0,0,0,0,0,0,0,,,,"Sunday, June 30, 2013","Sunday, June 30, 2013",,"Sunday, June 30, 2013","Sunday, June 30, 2013","Sunday, June 30, 2013","Sunday, June 30, 2013","Sunday, June 30, 2013","Sunday, June 30, 2013",,6/30/2013 17:00,6/30/2013 17:00,,PT_Normal,,,,,SMk29aEkik2BGHrmG4YNHg,,,,Y,0,0,,,3/18/2012 16:49,3/18/2012 22:47,admin,NotPrmUser
556,99634,1685,14641,794,1,0,N,N,N,CP_Drtn,TT_Task,DT_FixedDUR2,RV_OK,TK_NotStart,A7760,Excavation,,1512,0,56,0,0,0,56,0,0,0,,,,"Wednesday, June 5, 2013","Tuesday, June 11, 2013",,"Wednesday, November 28, 2012","Tuesday, December 4, 2012","Wednesday, November 28, 2012","Tuesday, December 4, 2012","Wednesday, November 28, 2012","Tuesday, December 4, 2012",,6/5/2013 8:00,6/11/2013 17:00,,PT_Normal,,,,,gsCvT8/cakqVNTWrbrYRcQ,,,,N,0,0,,,3/18/2012 17:16,3/18/2012 17:18,admin,admin
557,99635,1685,14641,794,1,0,N,N,N,CP_Drtn,TT_Task,DT_FixedDUR2,RV_OK,TK_NotStart,A7770,Backfilling&compacting,,1512,0,56,0,0,0,56,0,0,0,,,,"Wednesday, June 12, 2013","Tuesday, June 18, 2013",,"Wednesday, December 5, 2012","Tuesday, December 11, 2012","Wednesday, December 5, 2012","Tuesday, December 11, 2012","Wednesday, December 5, 2012","Tuesday, December 11, 2012",,6/12/2013 8:00,6/18/2013 17:00,,PT_Normal,,,,,MBpqIb+sg02X/BESu3sXIg,,,,N,0,0,,,3/18/2012 17:16,3/18/2012 17:18,admin,admin
558,99636,1685,14641,794,1,0,N,N,N,CP_Drtn,TT_Task,DT_FixedDUR2,RV_OK,TK_NotStart,A7780,Polythreen sheet insulation,,1512,0,16,0,0,0,16,0,0,0,,,,"Wednesday, June 19, 2013","Thursday, June 20, 2013",,"Wednesday, December 12, 2012","Thursday, December 13, 2012","Wednesday, December 12, 2012","Thursday, December 13, 2012","Wednesday, December 12, 2012","Thursday, December 13, 2012",,6/19/2013 8:00,6/20/2013 17:00,,PT_Normal,,,,,boDnWCQGuUyIEXXAGLoB+A,,,,N,0,0,,,3/18/2012 17:16,3/18/2012 17:18,admin,admin
559,99637,1685,14641,794,1,0,N,N,N,CP_Drtn,TT_Task,DT_FixedDUR2,RV_OK,TK_NotStart,A7790,Slab on grade,,1512,1512,80,0,0,0,80,0,0,0,,,,"Friday, June 21, 2013","Sunday, June 30, 2013",,"Friday, December 14, 2012","Sunday, December 23, 2012","Friday, December 14, 2012","Sunday, December 23, 2012","Friday, December 14, 2012","Sunday, December 23, 2012",,6/21/2013 8:00,6/30/2013 17:00,,PT_Normal,,,,,miLATuudWkS3Xfnp+6kG6g,,,,N,0,0,,,3/18/2012 17:16,3/18/2012 22:47,admin,NotPrmUser
560,99638,1685,14642,794,1,0,N,N,N,CP_Drtn,TT_Task,DT_FixedDUR2,RV_OK,TK_NotStart,A7800,Excavation,,672,0,56,0,0,0,56,0,0,0,,,,"Wednesday, December 12, 2012","Tuesday, December 18, 2012",,"Wednesday, September 19, 2012","Tuesday, September 25, 2012","Wednesday, September 19, 2012","Tuesday, September 25, 2012","Wednesday, September 19, 2012","Tuesday, September 25, 2012",,12/12/2012 8:00,12/18/2012 17:00,,PT_Normal,,,,,dALr3f5wE0O3r1qmmZXMgQ,DUgYK+m7m0CCvFe2NSWxog,,,N,0,0,,,3/18/2012 17:37,3/18/2012 21:27,admin,NotPrmUser
561,99639,1685,14642,794,1,0,N,N,N,CP_Drtn,TT_Task,DT_FixedDUR2,RV_OK,TK_NotStart,A7820,P.c&R.c footing,2910,672,0,112,0,100,100,112,0,0,0,,,,"Wednesday, December 19, 2012","Tuesday, January 1, 2013",,"Wednesday, September 26, 2012","Tuesday, October 9, 2012","Wednesday, September 26, 2012","Tuesday, October 9, 2012","Wednesday, September 26, 2012","Tuesday, October 9, 2012",,12/19/2012 8:00,1/1/2013 17:00,,PT_Normal,,,,,f9gQuMWEKk+Kuyohi90fpQ,XRGRhlHOJEiS4zKjBbIevA,,,N,0,0,,,3/18/2012 17:37,3/18/2012 21:27,admin,NotPrmUser
562,99640,1685,14642,794,1,0,N,N,N,CP_Drtn,TT_Task,DT_FixedDUR2,RV_OK,TK_NotStart,A7830,R.c columns,2910,672,0,80,0,100,100,80,0,0,0,,,,"Wednesday, January 2, 2013","Friday, January 11, 2013",,"Wednesday, October 10, 2012","Friday, October 19, 2012","Wednesday, October 10, 2012","Friday, October 19, 2012","Wednesday, October 10, 2012","Friday, October 19, 2012",,1/2/2013 8:00,1/11/2013 17:00,,PT_Normal,,,,,TDLV3q+6h0SAFNj461PTTQ,E43Os4Cd4ESdj0wy1HNgIg,,,N,0,0,,,3/18/2012 17:37,3/18/2012 21:27,admin,NotPrmUser
563,99641,1685,14642,794,1,0,N,N,N,CP_Drtn,TT_Task,DT_FixedDUR2,RV_OK,TK_NotStart,A7840,Ground floor slab,2910,672,0,120,0,100,100,120,0,0,0,,,,"Saturday, January 12, 2013","Saturday, January 26, 2013",,"Saturday, October 20, 2012","Saturday, November 3, 2012","Saturday, October 20, 2012","Saturday, November 3, 2012","Saturday, October 20, 2012","Saturday, November 3, 2012",,1/12/2013 8:00,1/26/2013 17:00,,PT_Normal,,,,,FCO2mvLVcUS0u4k4voNxtQ,zzSj4f0EuE2zFfkFsdo0sg,,,N,0,0,,,3/18/2012 17:37,3/18/2012 21:27,admin,NotPrmUser
564,99643,1685,14642,794,1,0,N,N,N,CP_Drtn,TT_LOE,DT_FixedDUR2,RV_OK,TK_NotStart,A7850,Cash,,672,0,368,0,0,0,368,0,0,0,,,,"Wednesday, December 12, 2012","Saturday, January 26, 2013",,"Wednesday, September 19, 2012","Saturday, November 3, 2012","Wednesday, September 19, 2012","Saturday, November 3, 2012","Wednesday, September 19, 2012","Saturday, November 3, 2012",,12/12/2012 8:00,1/26/2013 17:00,,PT_Normal,,,,,Ks/NlbQbHEmdEHRNSMiVJg,,,,N,0,0,,,3/18/2012 17:39,3/18/2012 21:27,admin,NotPrmUser
565,99644,1685,14643,794,1,0,N,N,N,CP_Drtn,TT_Task,DT_FixedDUR2,RV_OK,TK_NotStart,A7860,Excavation,,368,0,80,0,0,0,80,0,0,0,,,,"Sunday, January 13, 2013","Tuesday, January 22, 2013",,"Wednesday, November 28, 2012","Friday, December 7, 2012","Wednesday, November 28, 2012","Friday, December 7, 2012","Wednesday, November 28, 2012","Friday, December 7, 2012",,1/13/2013 8:00,1/22/2013 17:00,,PT_Normal,,,,,AgtZk9L4hkWJp1/k7EVFag,ShHYBtooT0mRaNylgQbgaQ,,,N,0,0,,,3/18/2012 17:44,3/18/2012 17:45,admin,admin
566,99645,1685,14643,794,1,0,N,N,N,CP_Drtn,TT_Task,DT_FixedDUR2,RV_OK,TK_NotStart,A7880,P.c&R.c footing,2910,368,0,240,0,20,20,240,0,0,0,,,,"Wednesday, January 23, 2013","Thursday, February 21, 2013",,"Saturday, December 8, 2012","Sunday, January 6, 2013","Saturday, December 8, 2012","Sunday, January 6, 2013","Saturday, December 8, 2012","Sunday, January 6, 2013",,1/23/2013 8:00,2/21/2013 17:00,,PT_Normal,,,,,ftUTBvzTY0mGDUkGpJA6xw,hcPdr/rIJECQcAACadroFA,,,N,0,0,,,3/18/2012 17:44,3/18/2012 17:45,admin,admin
567,99646,1685,14643,794,1,0,N,N,N,CP_Drtn,TT_Task,DT_FixedDUR2,RV_OK,TK_NotStart,A7890,R.c columns&walls,2910,368,0,360,0,60,60,360,0,0,0,,,,"Friday, February 22, 2013","Sunday, April 7, 2013",,"Monday, January 7, 2013","Wednesday, February 20, 2013","Monday, January 7, 2013","Wednesday, February 20, 2013","Monday, January 7, 2013","Wednesday, February 20, 2013",,2/22/2013 8:00,4/7/2013 17:00,,PT_Normal,,,,,tQeDt3GAPEGuBZkR+sq82A,QChlB5fa9UOnuqVqEUzDwg,,,N,0,0,,,3/18/2012 17:44,3/18/2012 17:45,admin,admin
568,99647,1685,14643,794,1,0,N,N,N,CP_Drtn,TT_Task,DT_FixedDUR2,RV_OK,TK_NotStart,A7900,Ground floor slab,2910,368,0,240,0,60,60,240,0,0,0,,,,"Monday, April 8, 2013","Tuesday, May 7, 2013",,"Thursday, February 21, 2013","Friday, March 22, 2013","Thursday, February 21, 2013","Friday, March 22, 2013","Thursday, February 21, 2013","Friday, March 22, 2013",,4/8/2013 8:00,5/7/2013 17:00,,PT_Normal,,,,,LURWs8BewEq+kuElXSx9iA,nuFUXzGo0kyHtdFaE/YMcw,,,N,0,0,,,3/18/2012 17:44,3/18/2012 17:45,admin,admin
569,99648,1685,14643,794,1,0,N,N,N,CP_Drtn,TT_LOE,DT_FixedDUR2,RV_OK,TK_NotStart,A7870,cash,,368,0,920,0,0,0,920,0,0,0,,,,"Sunday, January 13, 2013","Tuesday, May 7, 2013",,"Wednesday, November 28, 2012","Friday, March 22, 2013","Wednesday, November 28, 2012","Friday, March 22, 2013","Wednesday, November 28, 2012","Friday, March 22, 2013",,1/13/2013 8:00,5/7/2013 17:00,,PT_Normal,,,,,TdJJ1kca3EC63DxVeWTDNA,qSprEF5nIUmYkiSUlwzq+w,,,N,0,0,,,3/18/2012 17:44,3/18/2012 18:50,admin,admin
570,99649,1685,14645,794,1,0,N,N,N,CP_Drtn,TT_Task,DT_FixedDUR2,RV_OK,TK_NotStart,A7910,Excavation,,904,0,56,0,0,0,56,0,0,0,,,,"Tuesday, December 11, 2012","Monday, December 17, 2012",,"Monday, August 20, 2012","Sunday, August 26, 2012","Monday, August 20, 2012","Sunday, August 26, 2012","Monday, August 20, 2012","Sunday, August 26, 2012",,12/11/2012 8:00,12/17/2012 17:00,,PT_Normal,,,,,cZQkk+cJx0aPlE2xRHMmkA,2yoGB4vcfU6FhnXCHFnH+w,,,N,0,0,,,3/18/2012 17:53,3/18/2012 17:56,admin,admin
571,99650,1685,14645,794,1,0,N,N,N,CP_Drtn,TT_Task,DT_FixedDUR2,RV_OK,TK_NotStart,A7920,P.c&R.c footing,2910,904,0,112,0,100,100,112,0,0,0,,,,"Tuesday, December 18, 2012","Monday, December 31, 2012",,"Monday, August 27, 2012","Sunday, September 9, 2012","Monday, August 27, 2012","Sunday, September 9, 2012","Monday, August 27, 2012","Sunday, September 9, 2012",,12/18/2012 8:00,12/31/2012 17:00,,PT_Normal,,,,,Hm4GTwI5mESFs/y3VFn4dg,5c7hZCnn9kCjrhnr+JqZ+w,,,N,0,0,,,3/18/2012 17:53,3/18/2012 17:56,admin,admin
572,99651,1685,14645,794,1,0,N,N,N,CP_Drtn,TT_Task,DT_FixedDUR2,RV_OK,TK_NotStart,A7930,R.c columns,2910,904,0,80,0,100,100,80,0,0,0,,,,"Tuesday, January 1, 2013","Thursday, January 10, 2013",,"Monday, September 10, 2012","Wednesday, September 19, 2012","Monday, September 10, 2012","Wednesday, September 19, 2012","Monday, September 10, 2012","Wednesday, September 19, 2012",,1/1/2013 8:00,1/10/2013 17:00,,PT_Normal,,,,,suGOagDDkkSsedscF0zIUg,/EKB7+P80EiWDr/zdjhdgw,,,N,0,0,,,3/18/2012 17:53,3/18/2012 17:56,admin,admin
573,99652,1685,14645,794,1,0,N,N,N,CP_Drtn,TT_Task,DT_FixedDUR2,RV_OK,TK_NotStart,A7940,Ground floor slab,2910,904,0,160,0,140,140,160,0,0,0,,,,"Friday, January 11, 2013","Wednesday, January 30, 2013",,"Thursday, September 20, 2012","Tuesday, October 9, 2012","Thursday, September 20, 2012","Tuesday, October 9, 2012","Thursday, September 20, 2012","Tuesday, October 9, 2012",,1/11/2013 8:00,1/30/2013 17:00,,PT_Normal,,,,,n6X6ZcMXmkCNleZGWgNJxg,1YW+ZQmktUS4uCuW4AjWPA,,,N,0,0,,,3/18/2012 17:53,3/18/2012 17:56,admin,admin
574,99653,1685,14646,794,1,0,N,N,N,CP_Drtn,TT_Task,DT_FixedDUR2,RV_OK,TK_NotStart,A7950,masonry works,2912,904,0,160,0,109,109,160,0,0,0,,,,"Thursday, February 14, 2013","Tuesday, March 5, 2013",,"Wednesday, October 24, 2012","Monday, November 12, 2012","Wednesday, October 24, 2012","Monday, November 12, 2012","Wednesday, October 24, 2012","Monday, November 12, 2012",,2/14/2013 8:00,3/5/2013 17:00,,PT_Normal,,,,,KTDi4eU3cUCg8vO2xu41pQ,h6+/gHDnsECBb7c5mRow1w,,,N,0,0,,,3/18/2012 17:53,3/18/2012 17:56,admin,admin
575,99654,1685,14646,794,1,0,N,N,N,CP_Drtn,TT_Task,DT_FixedDUR2,RV_OK,TK_NotStart,A7960,Plaster works,2914,904,0,120,0,75,75,120,0,0,0,,,,"Tuesday, March 26, 2013","Tuesday, April 9, 2013",,"Monday, December 3, 2012","Monday, December 17, 2012","Monday, December 3, 2012","Monday, December 17, 2012","Monday, December 3, 2012","Monday, December 17, 2012",,3/26/2013 8:00,4/9/2013 17:00,,PT_Normal,,,,,5AZ7LXLuTUyHrOt7EvheiA,5+U08RV/4kW9AFP80IKW1g,,,N,0,0,,,3/18/2012 17:53,3/18/2012 17:56,admin,admin
576,99655,1685,14646,794,1,0,N,N,N,CP_Drtn,TT_Task,DT_FixedDUR2,RV_OK,TK_NotStart,A7970,Flooring works,2914,904,0,120,0,75,75,120,0,0,0,,,,"Wednesday, April 10, 2013","Wednesday, April 24, 2013",,"Tuesday, December 18, 2012","Tuesday, January 1, 2013","Tuesday, December 18, 2012","Tuesday, January 1, 2013","Tuesday, December 18, 2012","Tuesday, January 1, 2013",,4/10/2013 8:00,4/24/2013 17:00,,PT_Normal,,,,,3nwzNWHax0OQEx2rV2BShg,IamVqfUg5kK60MME00UZbQ,,,N,0,0,,,3/18/2012 17:53,3/18/2012 17:56,admin,admin
577,99656,1685,14646,794,1,0,N,N,N,CP_Drtn,TT_Task,DT_FixedDUR2,RV_OK,TK_NotStart,A7980,Painting works,2914,904,0,56,0,35,35,56,0,0,0,,,,"Wednesday, May 22, 2013","Tuesday, May 28, 2013",,"Tuesday, January 29, 2013","Monday, February 4, 2013","Tuesday, January 29, 2013","Monday, February 4, 2013","Tuesday, January 29, 2013","Monday, February 4, 2013",,5/22/2013 8:00,5/28/2013 17:00,,PT_Normal,,,,,yejPIb/XYEqmCi2VK6oztA,2rYccPXu1EGiZ2ziBCOSaQ,,,N,0,0,,,3/18/2012 17:53,3/18/2012 17:56,admin,admin
578,99657,1685,14646,794,1,0,N,N,N,CP_Drtn,TT_Task,DT_FixedDUR2,RV_OK,TK_NotStart,A7990,Doors&windows erection,2914,1040,136,24,0,15,15,24,0,0,0,,,,"Sunday, May 12, 2013","Tuesday, May 14, 2013",,"Wednesday, January 2, 2013","Friday, January 4, 2013","Wednesday, January 2, 2013","Friday, January 4, 2013","Wednesday, January 2, 2013","Friday, January 4, 2013",,5/12/2013 8:00,5/14/2013 17:00,,PT_Normal,,,,,0dMuWyvYh0a+s0zwfcDH+A,Ect3HLDpOUaVujYdST/XeA,,,N,0,0,,,3/18/2012 17:53,3/18/2012 17:56,admin,admin
579,99658,1685,14646,794,1,0,N,N,N,CP_Drtn,TT_Task,DT_FixedDUR2,RV_OK,TK_NotStart,A8000,False ceiling,2914,904,0,56,0,35,35,56,0,0,0,,,,"Wednesday, May 15, 2013","Tuesday, May 21, 2013",,"Tuesday, January 22, 2013","Monday, January 28, 2013","Tuesday, January 22, 2013","Monday, January 28, 2013","Tuesday, January 22, 2013","Monday, January 28, 2013",,5/15/2013 8:00,5/21/2013 17:00,,PT_Normal,,,,,IEtOhH7qbEK9Wg8wyoxgVQ,P4ZuJTw5U0KeWN0DkxEZVg,,,N,0,0,,,3/18/2012 17:53,3/18/2012 17:56,admin,admin
580,99659,1685,14647,794,1,0,N,N,N,CP_Drtn,TT_Task,DT_FixedDUR2,RV_OK,TK_NotStart,A8010,Conduits&outlets,,1440,1440,240,0,0,0,240,0,0,0,,,,"Saturday, June 1, 2013","Sunday, June 30, 2013",,"Monday, December 3, 2012","Tuesday, January 1, 2013","Monday, December 3, 2012","Tuesday, January 1, 2013","Monday, December 3, 2012","Tuesday, January 1, 2013",,6/1/2013 8:00,6/30/2013 17:00,,PT_Normal,,,,,Ck4Azqj4T0yK+x7jIpncVg,o4UMwIupcEaOKHVZ80VHUA,,,N,0,0,,,3/18/2012 17:53,3/18/2012 22:47,admin,NotPrmUser
581,99660,1685,14647,794,1,0,N,N,N,CP_Drtn,TT_Task,DT_FixedDUR2,RV_OK,TK_NotStart,A8020,Lighting & power panels,,1064,0,160,0,0,0,160,0,0,0,,,,"Tuesday, June 11, 2013","Sunday, June 30, 2013",,"Tuesday, January 29, 2013","Sunday, February 17, 2013","Tuesday, January 29, 2013","Sunday, February 17, 2013","Tuesday, January 29, 2013","Sunday, February 17, 2013",,6/11/2013 8:00,6/30/2013 17:00,,PT_Normal,,,,,IRrI0msX7kS8oyO8SIiZdw,ckzG9X8ByU+P8GoFYuv0jg,,,N,0,0,,,3/18/2012 17:53,3/18/2012 17:56,admin,admin
582,99661,1685,14647,794,1,0,N,N,N,CP_Drtn,TT_Task,DT_FixedDUR2,RV_OK,TK_NotStart,A8030,Cable trays,,904,0,160,0,0,0,160,0,0,0,,,,"Thursday, April 25, 2013","Tuesday, May 14, 2013",,"Wednesday, January 2, 2013","Monday, January 21, 2013","Wednesday, January 2, 2013","Monday, January 21, 2013","Wednesday, January 2, 2013","Monday, January 21, 2013",,4/25/2013 8:00,5/14/2013 17:00,,PT_Normal,,,,,xP9VbRTwcUuLLua3ncgIHQ,TITA6BfADEuNM5abZ/rQIQ,,,N,0,0,,,3/18/2012 17:53,3/18/2012 17:56,admin,admin
583,99662,1685,14647,794,1,0,N,N,N,CP_Drtn,TT_Task,DT_FixedDUR2,RV_OK,TK_NotStart,A8040,Telecommunications system & outlets,,1064,1064,64,0,0,0,64,0,0,0,,,,"Sunday, June 23, 2013","Sunday, June 30, 2013",,"Sunday, February 10, 2013","Sunday, February 17, 2013","Sunday, February 10, 2013","Sunday, February 17, 2013","Sunday, February 10, 2013","Sunday, February 17, 2013",,6/23/2013 8:00,6/30/2013 17:00,,PT_Normal,,,,,y+EDtf/jckK2THxWBeaesQ,RK18wOCuSkSDIOk8kIb9Vg,,,N,0,0,,,3/18/2012 17:53,3/18/2012 22:47,admin,NotPrmUser
584,99663,1685,14647,794,1,0,N,N,N,CP_Drtn,TT_Task,DT_FixedDUR2,RV_OK,TK_NotStart,A8050,Fire alarm system,,944,944,280,0,0,0,280,0,0,0,,,,"Monday, May 27, 2013","Sunday, June 30, 2013",,"Tuesday, January 29, 2013","Monday, March 4, 2013","Tuesday, January 29, 2013","Monday, March 4, 2013","Tuesday, January 29, 2013","Monday, March 4, 2013",,5/27/2013 8:00,6/30/2013 17:00,,PT_Normal,,,,,o+DMN7t6V0+Ab2NufDmKvg,9mitGnLVsEyvGXVu7H91rw,,,N,0,0,,,3/18/2012 17:53,3/18/2012 22:47,admin,NotPrmUser
585,99664,1685,14647,794,1,0,N,N,N,CP_Drtn,TT_Task,DT_FixedDUR2,RV_OK,TK_NotStart,A8060,Grounding&bonding,,1720,0,64,0,0,0,64,0,0,0,,,,"Sunday, June 16, 2013","Sunday, June 23, 2013",,"Tuesday, November 13, 2012","Tuesday, November 20, 2012","Tuesday, November 13, 2012","Tuesday, November 20, 2012","Tuesday, November 13, 2012","Tuesday, November 20, 2012",,6/16/2013 8:00,6/23/2013 17:00,,PT_Normal,,,,,My+Zj2i/kkOGZo1W93dT7Q,8Jh0T9QpoEOV0GH5bPEmnA,,,N,0,0,,,3/18/2012 17:53,3/18/2012 17:53,admin,admin
586,99665,1685,14647,794,1,0,N,N,N,CP_Drtn,TT_Task,DT_FixedDUR2,RV_OK,TK_NotStart,A8070,Wires&cables,,904,904,320,0,0,0,320,0,0,0,,,,"Wednesday, May 22, 2013","Sunday, June 30, 2013",,"Tuesday, January 29, 2013","Saturday, March 9, 2013","Tuesday, January 29, 2013","Saturday, March 9, 2013","Tuesday, January 29, 2013","Saturday, March 9, 2013",,5/22/2013 8:00,6/30/2013 17:00,,PT_Normal,,,,,GIi72Pwl/UGFRz1Yyia9ew,oH5VBaa0SEmSsv8xE7F9hw,,,N,0,0,,,3/18/2012 17:53,3/18/2012 22:47,admin,NotPrmUser
587,99666,1685,14647,794,1,0,N,N,N,CP_Drtn,TT_Task,DT_FixedDUR2,RV_OK,TK_NotStart,A8080,Equipment installation,,1720,1720,56,0,0,0,56,0,0,0,,,,"Monday, June 24, 2013","Sunday, June 30, 2013",,"Wednesday, November 21, 2012","Tuesday, November 27, 2012","Wednesday, November 21, 2012","Tuesday, November 27, 2012","Wednesday, November 21, 2012","Tuesday, November 27, 2012",,6/24/2013 8:00,6/30/2013 17:00,,PT_Normal,,,,,YRKTwNnOmkCBEgzxG2i46w,56B5GmX29EGnXMwMJROPIA,,,N,0,0,,,3/18/2012 17:53,3/18/2012 22:47,admin,NotPrmUser
588,99667,1685,14649,794,1,0,N,N,N,CP_Drtn,TT_Task,DT_FixedDUR2,RV_OK,TK_NotStart,A8090,Plumbing works(first fix),2909,904,0,160,0,0,0,160,0,0,0,,,,"Wednesday, March 6, 2013","Monday, March 25, 2013",,"Tuesday, November 13, 2012","Sunday, December 2, 2012","Tuesday, November 13, 2012","Sunday, December 2, 2012","Tuesday, November 13, 2012","Sunday, December 2, 2012",,3/6/2013 8:00,3/25/2013 17:00,,PT_Normal,,,,,uTVtbNQsYEOdX7mUJ1BIwA,wyyLlFFgcUGnrntMOge8zw,,,N,0,0,,,3/18/2012 17:53,3/19/2012 1:07,admin,NotPrmUser
589,99668,1685,14649,794,1,0,N,N,N,CP_Drtn,TT_Task,DT_FixedDUR2,RV_OK,TK_NotStart,A8100,Plumbing works(second fix),,1008,1008,160,0,0,0,160,0,0,0,,,,"Tuesday, June 11, 2013","Sunday, June 30, 2013",,"Tuesday, February 5, 2013","Sunday, February 24, 2013","Tuesday, February 5, 2013","Sunday, February 24, 2013","Tuesday, February 5, 2013","Sunday, February 24, 2013",,6/11/2013 8:00,6/30/2013 17:00,,PT_Normal,,,,,Dsmo4p6zyU+75j/DYy4kXQ,qbqAuNhsxEykITBUYCcOow,,,N,0,0,,,3/18/2012 17:53,3/18/2012 22:47,admin,NotPrmUser
590,99669,1685,14650,794,1,0,N,N,N,CP_Drtn,TT_Task,DT_FixedDUR2,RV_OK,TK_NotStart,A8110,Duct work,,1168,264,16,0,0,0,16,0,0,0,,,,"Monday, May 13, 2013","Tuesday, May 14, 2013",,"Tuesday, December 18, 2012","Wednesday, December 19, 2012","Tuesday, December 18, 2012","Wednesday, December 19, 2012","Tuesday, December 18, 2012","Wednesday, December 19, 2012",,5/13/2013 8:00,5/14/2013 17:00,,PT_Normal,,,,,Buun05UdRkSkZtcEbVJEJw,M/gtshgYFU+6UdyzFfKBmQ,,,N,0,0,,,3/18/2012 17:53,3/18/2012 17:56,admin,admin
591,99671,1685,14645,794,1,0,N,N,N,CP_Drtn,TT_LOE,DT_FixedDUR2,RV_OK,TK_NotStart,A8130,cash,,904,0,1616,0,0,0,1616,0,0,0,,,,"Tuesday, December 11, 2012","Sunday, June 30, 2013",,"Monday, August 20, 2012","Saturday, March 9, 2013","Monday, August 20, 2012","Saturday, March 9, 2013","Monday, August 20, 2012","Saturday, March 9, 2013",,12/11/2012 8:00,6/30/2013 17:00,,PT_Normal,,,,,7Zlm7nsJMkyieB6b0ytmuw,OrEjpOnkpEKEO+37pK0oKQ,,,N,0,0,,,3/18/2012 17:53,3/18/2012 17:56,admin,admin
592,99672,1685,14652,794,1,0,N,N,N,CP_Drtn,TT_Task,DT_FixedDUR2,RV_OK,TK_NotStart,A8140,Excavation,,432,0,56,0,0,0,56,0,0,0,,,,"Saturday, December 22, 2012","Friday, December 28, 2012",,"Monday, October 29, 2012","Sunday, November 4, 2012","Monday, October 29, 2012","Sunday, November 4, 2012","Monday, October 29, 2012","Sunday, November 4, 2012",,12/22/2012 8:00,12/28/2012 17:00,,PT_Normal,,,,,eQpzckj+5EOgqkSKnBSvIQ,KHzsYaazDk+Uo32ZgoAGVw,,,N,0,0,,,3/18/2012 18:02,3/18/2012 21:43,admin,NotPrmUser
593,99673,1685,14652,794,1,0,N,N,N,CP_Drtn,TT_Task,DT_FixedDUR2,RV_OK,TK_NotStart,A8150,P.c&R.c footing,2910,432,0,112,0,80,80,112,0,0,0,,,,"Saturday, December 29, 2012","Friday, January 11, 2013",,"Monday, November 5, 2012","Sunday, November 18, 2012","Monday, November 5, 2012","Sunday, November 18, 2012","Monday, November 5, 2012","Sunday, November 18, 2012",,12/29/2012 8:00,1/11/2013 17:00,,PT_Normal,,,,,dJizBgzTNUGRF2OGZ4RysQ,QC0NcfqpI0GcGi1rAgbAew,,,N,0,0,,,3/18/2012 18:02,3/18/2012 21:43,admin,NotPrmUser
594,99674,1685,14652,794,1,0,N,N,N,CP_Drtn,TT_Task,DT_FixedDUR2,RV_OK,TK_NotStart,A8160,R.c columns,2910,432,0,80,0,60,60,80,0,0,0,,,,"Saturday, January 12, 2013","Monday, January 21, 2013",,"Monday, November 19, 2012","Wednesday, November 28, 2012","Monday, November 19, 2012","Wednesday, November 28, 2012","Monday, November 19, 2012","Wednesday, November 28, 2012",,1/12/2013 8:00,1/21/2013 17:00,,PT_Normal,,,,,L3BSsYbWCEq8oHD8+F8KvA,roayskJDeEe5GlbN+kGKHA,,,N,0,0,,,3/18/2012 18:02,3/18/2012 21:43,admin,NotPrmUser
595,99675,1685,14652,794,1,0,N,N,N,CP_Drtn,TT_Task,DT_FixedDUR2,RV_OK,TK_NotStart,A8170,Ground floor slab,2910,432,0,112,0,312,312,112,0,0,0,,,,"Tuesday, January 22, 2013","Monday, February 4, 2013",,"Thursday, November 29, 2012","Wednesday, December 12, 2012","Thursday, November 29, 2012","Wednesday, December 12, 2012","Thursday, November 29, 2012","Wednesday, December 12, 2012",,1/22/2013 8:00,2/4/2013 17:00,,PT_Normal,,,,,ScgftVuAO0mgRVyleYHuww,kYXreMD+5E+ygVNuihw5IA,,,N,0,0,,,3/18/2012 18:02,3/18/2012 21:43,admin,NotPrmUser
596,99676,1685,14653,794,1,0,N,N,N,CP_Drtn,TT_Task,DT_FixedDUR2,RV_OK,TK_NotStart,A8180,masonry works,2912,432,0,160,0,160,160,160,0,0,0,,,,"Friday, February 15, 2013","Wednesday, March 6, 2013",,"Sunday, December 23, 2012","Friday, January 11, 2013","Sunday, December 23, 2012","Friday, January 11, 2013","Sunday, December 23, 2012","Friday, January 11, 2013",,2/15/2013 8:00,3/6/2013 17:00,,PT_Normal,,,,,CZwJ62lEJkWOODQpqrR9zw,M+3qq5IOj0qUTD13GjwlAw,,,N,0,0,,,3/18/2012 18:02,3/18/2012 21:43,admin,NotPrmUser
597,99677,1685,14653,794,1,0,N,N,N,CP_Drtn,TT_Task,DT_FixedDUR2,RV_OK,TK_NotStart,A8190,Plaster works,2914,432,0,160,0,100,100,160,0,0,0,,,,"Wednesday, March 13, 2013","Monday, April 1, 2013",,"Friday, January 18, 2013","Wednesday, February 6, 2013","Friday, January 18, 2013","Wednesday, February 6, 2013","Friday, January 18, 2013","Wednesday, February 6, 2013",,3/13/2013 8:00,4/1/2013 17:00,,PT_Normal,,,,,Sz8HasdKYkqbQyOwuu7RvA,EAZuy55XHEO3Yv1KVO1aQg,,,N,0,0,,,3/18/2012 18:02,3/18/2012 21:43,admin,NotPrmUser
598,99678,1685,14653,794,1,0,N,N,N,CP_Drtn,TT_Task,DT_FixedDUR2,RV_OK,TK_NotStart,A8200,Flooring works,2914,432,0,120,0,75,75,120,0,0,0,,,,"Tuesday, April 2, 2013","Tuesday, April 16, 2013",,"Thursday, February 7, 2013","Thursday, February 21, 2013","Thursday, February 7, 2013","Thursday, February 21, 2013","Thursday, February 7, 2013","Thursday, February 21, 2013",,4/2/2013 8:00,4/16/2013 17:00,,PT_Normal,,,,,GI236WNfcUe6+A67IKpvOA,rHIzPn0zm06rs9cedBlSiw,,,N,0,0,,,3/18/2012 18:02,3/18/2012 21:43,admin,NotPrmUser
599,99679,1685,14653,794,1,0,N,N,N,CP_Drtn,TT_Task,DT_FixedDUR2,RV_OK,TK_NotStart,A8210,Painting works,2914,432,0,80,0,50,50,80,0,0,0,,,,"Saturday, June 1, 2013","Monday, June 10, 2013",,"Monday, April 8, 2013","Wednesday, April 17, 2013","Monday, April 8, 2013","Wednesday, April 17, 2013","Monday, April 8, 2013","Wednesday, April 17, 2013",,6/1/2013 8:00,6/10/2013 17:00,,PT_Normal,,,,,ygPd1pYPyEGfyIQqpJwgMg,l0bs5fhDtEC8Lv4ym+uZfQ,,,N,0,0,,,3/18/2012 18:02,3/18/2012 21:43,admin,NotPrmUser
600,99680,1685,14653,794,1,0,N,N,N,CP_Drtn,TT_Task,DT_FixedDUR2,RV_OK,TK_NotStart,A8220,Doors&windows erection,2914,616,184,56,0,35,35,56,0,0,0,,,,"Friday, May 10, 2013","Thursday, May 16, 2013",,"Friday, February 22, 2013","Thursday, February 28, 2013","Friday, February 22, 2013","Thursday, February 28, 2013","Friday, February 22, 2013","Thursday, February 28, 2013",,5/10/2013 8:00,5/16/2013 17:00,,PT_Normal,,,,,fkgsejC/RESwdSogrTmgMw,bgb/pmaLRkGtg0WO+1phRA,,,N,0,0,,,3/18/2012 18:02,3/18/2012 21:43,admin,NotPrmUser
601,99681,1685,14653,794,1,0,N,N,N,CP_Drtn,TT_Task,DT_FixedDUR2,RV_OK,TK_NotStart,A8230,False ceiling,2914,432,0,120,0,75,75,120,0,0,0,,,,"Friday, May 17, 2013","Friday, May 31, 2013",,"Sunday, March 24, 2013","Sunday, April 7, 2013","Sunday, March 24, 2013","Sunday, April 7, 2013","Sunday, March 24, 2013","Sunday, April 7, 2013",,5/17/2013 8:00,5/31/2013 17:00,,PT_Normal,,,,,qRvdfQKt8kiNqgZnH8u4CQ,b/YH79RqyUCSljEZ4p5O+Q,,,N,0,0,,,3/18/2012 18:02,3/18/2012 21:43,admin,NotPrmUser
602,99682,1685,14656,794,1,0,N,N,N,CP_Drtn,TT_Task,DT_FixedDUR2,RV_OK,TK_NotStart,A8240,Plumbing works(first fix),2909,432,0,48,0,0,0,48,0,0,0,,,,"Thursday, March 7, 2013","Tuesday, March 12, 2013",,"Saturday, January 12, 2013","Thursday, January 17, 2013","Saturday, January 12, 2013","Thursday, January 17, 2013","Saturday, January 12, 2013","Thursday, January 17, 2013",,3/7/2013 8:00,3/12/2013 17:00,,PT_Normal,,,,,RZ6Odo+Kb0iKsiN/optfOA,54qX33a98UyNWPJSDDlvzQ,,,N,0,0,,,3/18/2012 18:02,3/19/2012 1:07,admin,NotPrmUser
603,99683,1685,14656,794,1,0,N,N,N,CP_Drtn,TT_Task,DT_FixedDUR2,RV_OK,TK_NotStart,A8250,Plumbing works(second fix),,544,544,48,0,0,0,48,0,0,0,,,,"Tuesday, June 25, 2013","Sunday, June 30, 2013",,"Thursday, April 18, 2013","Tuesday, April 23, 2013","Thursday, April 18, 2013","Tuesday, April 23, 2013","Thursday, April 18, 2013","Tuesday, April 23, 2013",,6/25/2013 8:00,6/30/2013 17:00,,PT_Normal,,,,,MNZqbaMojkSEtJ/qoQVqlA,7A4hZhegVUu8eEsE73DMTg,,,N,0,0,,,3/18/2012 18:02,3/18/2012 22:47,admin,NotPrmUser
604,99684,1685,14654,794,1,0,N,N,N,CP_Drtn,TT_Task,DT_FixedDUR2,RV_OK,TK_NotStart,A8260,Conduits&outlets,,1152,1152,56,0,0,0,56,0,0,0,,,,"Monday, June 24, 2013","Sunday, June 30, 2013",,"Thursday, January 31, 2013","Wednesday, February 6, 2013","Thursday, January 31, 2013","Wednesday, February 6, 2013","Thursday, January 31, 2013","Wednesday, February 6, 2013",,6/24/2013 8:00,6/30/2013 17:00,,PT_Normal,,,,,G9hHNt2GSk2saQLDvQLSyw,x2SUypK+B0W0Hwxl9ykoAQ,,,N,0,0,,,3/18/2012 18:02,3/18/2012 22:47,admin,NotPrmUser
605,99685,1685,14654,794,1,0,N,N,N,CP_Drtn,TT_Task,DT_FixedDUR2,RV_OK,TK_NotStart,A8270,Lighting & power panels,,608,0,64,0,0,0,64,0,0,0,,,,"Sunday, June 23, 2013","Sunday, June 30, 2013",,"Monday, April 8, 2013","Monday, April 15, 2013","Monday, April 8, 2013","Monday, April 15, 2013","Monday, April 8, 2013","Monday, April 15, 2013",,6/23/2013 8:00,6/30/2013 17:00,,PT_Normal,,,,,r8amkqTXbEeep7N+NaSd+g,0PwVC6fuGUurzFECvVVIVg,,,N,0,0,,,3/18/2012 18:02,3/18/2012 21:43,admin,NotPrmUser
606,99686,1685,14654,794,1,0,N,N,N,CP_Drtn,TT_Task,DT_FixedDUR2,RV_OK,TK_NotStart,A8280,Cable trays,,432,0,240,0,0,0,240,0,0,0,,,,"Wednesday, April 17, 2013","Thursday, May 16, 2013",,"Friday, February 22, 2013","Saturday, March 23, 2013","Friday, February 22, 2013","Saturday, March 23, 2013","Friday, February 22, 2013","Saturday, March 23, 2013",,4/17/2013 8:00,5/16/2013 17:00,,PT_Normal,,,,,TLR/LaBEU0CHftiB4XqTfg,TdSgOflHc0SmHZ9SmthlTg,,,N,0,0,,,3/18/2012 18:02,3/18/2012 21:43,admin,NotPrmUser
607,99687,1685,14654,794,1,0,N,N,N,CP_Drtn,TT_Task,DT_FixedDUR2,RV_OK,TK_NotStart,A8290,Telecommunications system & outlets,,608,608,64,0,0,0,64,0,0,0,,,,"Sunday, June 23, 2013","Sunday, June 30, 2013",,"Monday, April 8, 2013","Monday, April 15, 2013","Monday, April 8, 2013","Monday, April 15, 2013","Monday, April 8, 2013","Monday, April 15, 2013",,6/23/2013 8:00,6/30/2013 17:00,,PT_Normal,,,,,d0sr1xpWO0avZ9/5hJ27Hw,C+NdeWu7tk2Rh7jSPYbU7w,,,N,0,0,,,3/18/2012 18:02,3/18/2012 22:47,admin,NotPrmUser
608,99688,1685,14654,794,1,0,N,N,N,CP_Drtn,TT_Task,DT_FixedDUR2,RV_OK,TK_NotStart,A8300,Fire alarm system,,552,552,120,0,0,0,120,0,0,0,,,,"Sunday, June 16, 2013","Sunday, June 30, 2013",,"Monday, April 8, 2013","Monday, April 22, 2013","Monday, April 8, 2013","Monday, April 22, 2013","Monday, April 8, 2013","Monday, April 22, 2013",,6/16/2013 8:00,6/30/2013 17:00,,PT_Normal,,,,,SgE2SFwl7UmuTdkGAiPj5w,0ZraE4vpSEWB+2QyWsGYhw,,,N,0,0,,,3/18/2012 18:02,3/18/2012 22:47,admin,NotPrmUser
609,99689,1685,14654,794,1,0,N,N,N,CP_Drtn,TT_Task,DT_FixedDUR2,RV_OK,TK_NotStart,A8310,Grounding&bonding,,1264,728,40,0,0,0,40,0,0,0,,,,"Wednesday, June 19, 2013","Sunday, June 23, 2013",,"Saturday, January 12, 2013","Wednesday, January 16, 2013","Saturday, January 12, 2013","Wednesday, January 16, 2013","Saturday, January 12, 2013","Wednesday, January 16, 2013",,6/19/2013 8:00,6/23/2013 17:00,,PT_Normal,,,,,J9DnuTfIe0ibe+4XXnZAbw,moEDfS98YUafTl2MSck6zg,,,N,0,0,,,3/18/2012 18:02,3/18/2012 21:43,admin,NotPrmUser
610,99690,1685,14654,794,1,0,N,N,N,CP_Drtn,TT_Task,DT_FixedDUR2,RV_OK,TK_NotStart,A8320,Wires&cables,,432,432,240,0,0,0,240,0,0,0,,,,"Saturday, June 1, 2013","Sunday, June 30, 2013",,"Monday, April 8, 2013","Tuesday, May 7, 2013","Monday, April 8, 2013","Tuesday, May 7, 2013","Monday, April 8, 2013","Tuesday, May 7, 2013",,6/1/2013 8:00,6/30/2013 17:00,,PT_Normal,,,,,7gwSM2hrEUGtWbZ0sFcOsw,1x+RMJwDGEKwQmeECwRCvQ,,,N,0,0,,,3/18/2012 18:02,3/18/2012 22:47,admin,NotPrmUser
611,99691,1685,14654,794,1,0,N,N,N,CP_Drtn,TT_Task,DT_FixedDUR2,RV_OK,TK_NotStart,A8330,Equipment installation,,536,536,56,0,0,0,56,0,0,0,,,,"Monday, June 24, 2013","Sunday, June 30, 2013",,"Thursday, April 18, 2013","Wednesday, April 24, 2013","Thursday, April 18, 2013","Wednesday, April 24, 2013","Thursday, April 18, 2013","Wednesday, April 24, 2013",,6/24/2013 8:00,6/30/2013 17:00,,PT_Normal,,,,,JBSv5VfFQE2PQ9DEIMgcFQ,RQ2ogQg56EyZ15sj2NNw5g,,,N,0,0,,,3/18/2012 18:02,3/18/2012 22:47,admin,NotPrmUser
612,99692,1685,14657,794,1,0,N,N,N,CP_Drtn,TT_Task,DT_FixedDUR2,RV_OK,TK_NotStart,A8340,Duct work,,1016,1016,16,0,0,0,16,0,0,0,,,,"Saturday, June 29, 2013","Sunday, June 30, 2013",,"Friday, February 22, 2013","Saturday, February 23, 2013","Friday, February 22, 2013","Saturday, February 23, 2013","Friday, February 22, 2013","Saturday, February 23, 2013",,6/29/2013 8:00,6/30/2013 17:00,,PT_Normal,,,,,3C5ImLpSOkq0eYhOZikNtg,k/f/4wlLA0iKybswpNrYyg,,,N,0,0,,,3/18/2012 18:02,3/18/2012 22:47,admin,NotPrmUser
613,99693,1685,14657,794,1,0,N,N,N,CP_Drtn,TT_Task,DT_FixedDUR2,RV_OK,TK_NotStart,A8350,VRF units,,512,512,80,0,0,0,80,0,0,0,,,,"Friday, June 21, 2013","Sunday, June 30, 2013",,"Thursday, April 18, 2013","Saturday, April 27, 2013","Thursday, April 18, 2013","Saturday, April 27, 2013","Thursday, April 18, 2013","Saturday, April 27, 2013",,6/21/2013 8:00,6/30/2013 17:00,,PT_Normal,,,,,GmTe3ZAuMU+iHd0YKJE0Tw,UlMLtbSy/kqNoUyhx2ZOWg,,,N,0,0,,,3/18/2012 18:02,3/18/2012 22:47,admin,NotPrmUser
614,99694,1685,14652,794,1,0,N,N,N,CP_Drtn,TT_LOE,DT_FixedDUR2,RV_OK,TK_NotStart,A8360,cash,,432,0,1528,0,0,0,1528,0,0,0,,,,"Saturday, December 22, 2012","Sunday, June 30, 2013",,"Monday, October 29, 2012","Tuesday, May 7, 2013","Monday, October 29, 2012","Tuesday, May 7, 2013","Monday, October 29, 2012","Tuesday, May 7, 2013",,12/22/2012 8:00,6/30/2013 17:00,,PT_Normal,,,,,rCG58Cw77kKuR07sBQwF6A,vU5x3B2YBUa7ko4f64BL6g,,,N,0,0,,,3/18/2012 18:02,3/18/2012 21:43,admin,NotPrmUser
615,99695,1685,14658,794,1,0,N,N,N,CP_Drtn,TT_Task,DT_FixedDUR2,RV_OK,TK_NotStart,A8370,Roads &covered parkings,,520,520,800,0,0,0,800,0,0,0,,,,"Saturday, March 23, 2013","Sunday, June 30, 2013",,"Thursday, January 17, 2013","Friday, April 26, 2013","Thursday, January 17, 2013","Friday, April 26, 2013","Thursday, January 17, 2013","Friday, April 26, 2013",,3/23/2013 8:00,6/30/2013 17:00,,PT_Normal,,,,,D97EbJhDGECslrOk4gqfzA,,,,N,0,0,,,3/18/2012 18:53,3/18/2012 22:47,admin,NotPrmUser
616,99696,1685,14659,794,1,0,N,N,N,CP_Drtn,TT_Task,DT_FixedDUR2,RV_OK,TK_NotStart,A8380,Excavation,,400,0,360,0,0,0,360,0,0,0,,,,"Sunday, August 5, 2012","Tuesday, September 18, 2012",,"Saturday, June 16, 2012","Monday, July 30, 2012","Saturday, June 16, 2012","Monday, July 30, 2012","Saturday, June 16, 2012","Monday, July 30, 2012",,8/5/2012 8:00,9/18/2012 17:00,,PT_Normal,,,,,UHgKCM4O60+mUEPudJ30KA,,,,N,0,0,,,3/18/2012 19:11,3/18/2012 21:35,admin,NotPrmUser
617,99697,1685,14659,794,1,0,N,N,N,CP_Drtn,TT_Task,DT_FixedDUR2,RV_OK,TK_NotStart,A8390,Backfilling from foundation level,,400,0,240,0,0,0,240,0,0,0,,,,"Wednesday, September 19, 2012","Thursday, October 18, 2012",,"Tuesday, July 31, 2012","Wednesday, August 29, 2012","Tuesday, July 31, 2012","Wednesday, August 29, 2012","Tuesday, July 31, 2012","Wednesday, August 29, 2012",,9/19/2012 8:00,10/18/2012 17:00,,PT_Normal,,,,,27tdw0f+TkKW/Sr/v+f5qA,,,,N,0,0,,,3/18/2012 19:11,3/18/2012 21:35,admin,NotPrmUser
618,99698,1685,14659,794,1,0,N,N,N,CP_Drtn,TT_Task,DT_FixedDUR2,RV_OK,TK_NotStart,A8400,Plain concrete,,400,0,320,0,0,0,320,0,0,0,,,,"Friday, October 19, 2012","Tuesday, November 27, 2012",,"Thursday, August 30, 2012","Monday, October 8, 2012","Thursday, August 30, 2012","Monday, October 8, 2012","Thursday, August 30, 2012","Monday, October 8, 2012",,10/19/2012 8:00,11/27/2012 17:00,,PT_Normal,,,,,MvwQxyn64EytkXXWUGFzaw,,,,N,0,0,,,3/18/2012 19:11,3/18/2012 21:35,admin,NotPrmUser
619,99699,1685,14659,794,1,0,N,N,N,CP_Drtn,TT_Task,DT_FixedDUR2,RV_OK,TK_NotStart,A8410,R.C for foundations&ground beams,,400,0,640,0,0,0,640,0,0,0,,,,"Wednesday, November 28, 2012","Friday, February 15, 2013",,"Tuesday, October 9, 2012","Thursday, December 27, 2012","Tuesday, October 9, 2012","Thursday, December 27, 2012","Tuesday, October 9, 2012","Thursday, December 27, 2012",,11/28/2012 8:00,2/15/2013 17:00,,PT_Normal,,,,,wEz6Ttlr/EqNxjrDkHKpFg,,,,N,0,0,,,3/18/2012 19:11,3/18/2012 21:35,admin,NotPrmUser
620,99700,1685,14659,794,1,0,N,N,N,CP_Drtn,TT_Task,DT_FixedDUR2,RV_OK,TK_NotStart,A8420,R.C walls,,400,0,640,0,0,0,640,0,0,0,,,,"Saturday, February 16, 2013","Monday, May 6, 2013",,"Friday, December 28, 2012","Sunday, March 17, 2013","Friday, December 28, 2012","Sunday, March 17, 2013","Friday, December 28, 2012","Sunday, March 17, 2013",,2/16/2013 8:00,5/6/2013 17:00,,PT_Normal,,,,,4wv+6XM0jEizilmlInN8wQ,,,,N,0,0,,,3/18/2012 19:11,3/18/2012 21:35,admin,NotPrmUser
621,99701,1685,14659,794,1,0,N,N,N,CP_Drtn,TT_Task,DT_FixedDUR2,RV_OK,TK_NotStart,A8430,Bituminous insulation,,400,0,160,0,0,0,160,0,0,0,,,,"Tuesday, May 7, 2013","Sunday, May 26, 2013",,"Monday, March 18, 2013","Saturday, April 6, 2013","Monday, March 18, 2013","Saturday, April 6, 2013","Monday, March 18, 2013","Saturday, April 6, 2013",,5/7/2013 8:00,5/26/2013 17:00,,PT_Normal,,,,,SuA3gJ4Be0Ow68Wzfo8Wyw,,,,N,0,0,,,3/18/2012 19:34,3/18/2012 21:35,admin,NotPrmUser
622,99702,1685,14659,794,1,0,N,N,N,CP_Drtn,TT_Task,DT_FixedDUR2,RV_OK,TK_NotStart,A8440,Water proof membrane,,400,0,160,0,0,0,160,0,0,0,,,,"Monday, May 27, 2013","Saturday, June 15, 2013",,"Sunday, April 7, 2013","Friday, April 26, 2013","Sunday, April 7, 2013","Friday, April 26, 2013","Sunday, April 7, 2013","Friday, April 26, 2013",,5/27/2013 8:00,6/15/2013 17:00,,PT_Normal,,,,,OhMY/WlGVEu0a5JHTQEuTQ,,,,N,0,0,,,3/18/2012 19:35,3/18/2012 21:35,admin,NotPrmUser
623,99703,1685,14659,794,1,0,N,N,N,CP_Drtn,TT_Task,DT_FixedDUR2,RV_OK,TK_NotStart,A8450,Internal wall painting,,400,400,120,0,0,0,120,0,0,0,,,,"Sunday, June 16, 2013","Sunday, June 30, 2013",,"Saturday, April 27, 2013","Saturday, May 11, 2013","Saturday, April 27, 2013","Saturday, May 11, 2013","Saturday, April 27, 2013","Saturday, May 11, 2013",,6/16/2013 8:00,6/30/2013 17:00,,PT_Normal,,,,,XR4FmgoBT0ij5MgM/XfG8Q,,,,N,0,0,,,3/18/2012 19:35,3/18/2012 22:47,admin,NotPrmUser
624,99704,1685,14659,794,1,0,N,N,N,CP_Drtn,TT_LOE,DT_FixedDUR2,RV_OK,TK_NotStart,A8460,cash,,400,0,2640,0,0,0,2640,0,0,0,,,,"Sunday, August 5, 2012","Sunday, June 30, 2013",,"Saturday, June 16, 2012","Saturday, May 11, 2013","Saturday, June 16, 2012","Saturday, May 11, 2013","Saturday, June 16, 2012","Saturday, May 11, 2013",,8/5/2012 8:00,6/30/2013 17:00,,PT_Normal,,,,,sbOIVODWVEqY5XhDOcnFTw,,,,N,0,0,,,3/18/2012 19:37,3/18/2012 23:34,admin,NotPrmUser
625,99713,1685,12228,794,0,0,N,N,N,CP_Drtn,TT_FinMile,DT_FixedDrtn,RV_OK,TK_NotStart,A1170,Detail engineering,,1544,1544,0,0,0,0,0,0,0,0,,,,"Sunday, June 30, 2013","Sunday, June 30, 2013",,"Wednesday, December 19, 2012","Wednesday, December 19, 2012","Wednesday, December 19, 2012","Wednesday, December 19, 2012","Wednesday, December 19, 2012","Wednesday, December 19, 2012",,6/30/2013 17:00,6/30/2013 17:00,,PT_Normal,,,,,8udfuR+6nEWKW9mqfjckXQ,,,,N,0,0,,,3/18/2012 20:36,3/18/2012 23:04,admin,NotPrmUser
626,99714,1685,12228,794,0,0,N,N,N,CP_Drtn,TT_FinMile,DT_FixedDrtn,RV_OK,TK_NotStart,A8470,Procurement,,576,576,0,0,0,0,0,0,0,0,,,,"Sunday, June 30, 2013","Sunday, June 30, 2013",,"Saturday, April 20, 2013","Saturday, April 20, 2013","Saturday, April 20, 2013","Saturday, April 20, 2013","Saturday, April 20, 2013","Saturday, April 20, 2013",,6/30/2013 17:00,6/30/2013 17:00,,PT_Normal,,,,,M5IDMsPiBkCVUoSnWktBdA,,,,N,0,0,,,3/18/2012 20:36,3/18/2012 22:47,admin,NotPrmUser
627,99715,1685,12228,794,0,0,N,N,N,CP_Drtn,TT_FinMile,DT_FixedDrtn,RV_OK,TK_NotStart,A8480,Laboratory equipment passed incomin control,,1568,1568,0,0,0,0,0,0,0,0,,,,"Sunday, June 30, 2013","Sunday, June 30, 2013",,"Monday, December 17, 2012","Monday, December 17, 2012","Monday, December 17, 2012","Monday, December 17, 2012","Monday, December 17, 2012","Monday, December 17, 2012",,6/30/2013 17:00,6/30/2013 17:00,,PT_Normal,,,,,Y393xR8wzUOLKTc7SB0jfw,,,,N,0,0,,,3/18/2012 20:36,3/18/2012 22:47,admin,NotPrmUser
628,99716,1685,12228,794,0,0,N,N,N,CP_Drtn,TT_FinMile,DT_FixedDrtn,RV_OK,TK_NotStart,A8490,All equipment &material for main control building passed incoming control,,1568,1568,0,0,0,0,0,0,0,0,,,,"Sunday, June 30, 2013","Sunday, June 30, 2013",,"Monday, December 17, 2012","Monday, December 17, 2012","Monday, December 17, 2012","Monday, December 17, 2012","Monday, December 17, 2012","Monday, December 17, 2012",,6/30/2013 17:00,6/30/2013 17:00,,PT_Normal,,,,,1W3t/jcqh0aJ4hNOyNVg+g,,,,N,0,0,,,3/18/2012 20:36,3/18/2012 22:47,admin,NotPrmUser
629,99717,1685,12228,794,0,0,N,N,N,CP_Drtn,TT_FinMile,DT_FixedDrtn,RV_OK,TK_NotStart,A8500,All equipment &material for vehicle maintenance&fuel station building passed incoming control,,1960,1960,0,0,0,0,0,0,0,0,,,,"Sunday, June 30, 2013","Sunday, June 30, 2013",,"Monday, October 29, 2012","Monday, October 29, 2012","Monday, October 29, 2012","Monday, October 29, 2012","Monday, October 29, 2012","Monday, October 29, 2012",,6/30/2013 17:00,6/30/2013 17:00,,PT_Normal,,,,,+7u8jXuP3kmCX4UKRQ78ug,,,,N,0,0,,,3/18/2012 20:36,3/18/2012 22:47,admin,NotPrmUser
630,99718,1685,12228,794,0,0,N,N,N,CP_Drtn,TT_FinMile,DT_FixedDrtn,RV_OK,TK_NotStart,A8510,"Mechanical completion,construction completed",,368,368,0,0,0,0,0,0,0,0,,,,"Sunday, June 30, 2013","Sunday, June 30, 2013",,"Wednesday, May 15, 2013","Wednesday, May 15, 2013","Wednesday, May 15, 2013","Wednesday, May 15, 2013","Wednesday, May 15, 2013","Wednesday, May 15, 2013",,6/30/2013 17:00,6/30/2013 17:00,,PT_Normal,,,,,xzWtysIQuU+avMh2Lmxs0w,,,,N,0,0,,,3/18/2012 20:36,3/18/2012 22:47,admin,NotPrmUser
631,99719,1685,12228,794,0,0,N,N,N,CP_Drtn,TT_FinMile,DT_FixedDrtn,RV_OK,TK_NotStart,A8520,Construction completed in main control building,,808,808,0,0,0,0,0,0,0,0,,,,"Sunday, June 30, 2013","Sunday, June 30, 2013",,"Thursday, March 21, 2013","Thursday, March 21, 2013","Thursday, March 21, 2013","Thursday, March 21, 2013","Thursday, March 21, 2013","Thursday, March 21, 2013",,6/30/2013 17:00,6/30/2013 17:00,,PT_Normal,,,,,YPfXiRfnL0OsQbf51/tCqQ,,,,N,0,0,,,3/18/2012 20:36,3/18/2012 22:47,admin,NotPrmUser
632,99720,1685,12228,794,0,0,N,N,N,CP_Drtn,TT_FinMile,DT_FixedDrtn,RV_OK,TK_NotStart,A8530,Construction completed in vehicle maintenance building&fuel station,,672,672,0,0,0,0,0,0,0,0,,,,"Sunday, June 30, 2013","Sunday, June 30, 2013",,"Sunday, April 7, 2013","Sunday, April 7, 2013","Sunday, April 7, 2013","Sunday, April 7, 2013","Sunday, April 7, 2013","Sunday, April 7, 2013",,6/30/2013 17:00,6/30/2013 17:00,,PT_Normal,,,,,y8IckvT83ky5j/FcHHVAeA,,,,N,0,0,,,3/18/2012 20:36,3/18/2012 22:47,admin,NotPrmUser
633,99721,1685,12228,794,0,0,N,N,N,CP_Drtn,TT_FinMile,DT_FixedDrtn,RV_OK,TK_NotStart,A8540,"Provisional acceptance,ready to startup",,0,0,0,0,0,0,0,0,0,0,,,,"Sunday, June 30, 2013","Sunday, June 30, 2013",,"Sunday, June 30, 2013","Sunday, June 30, 2013","Sunday, June 30, 2013","Sunday, June 30, 2013","Sunday, June 30, 2013","Sunday, June 30, 2013",,6/30/2013 17:00,6/30/2013 17:00,,PT_Normal,,,,,IlHxYSS+rEGj0LPtOhCr1Q,,,,Y,0,0,,,3/18/2012 20:40,3/18/2012 22:47,admin,NotPrmUser
634,99722,1685,12221,794,1,0,N,N,N,CP_Drtn,TT_Task,DT_FixedDUR2,RV_OK,TK_NotStart,A8550,Soil investegation report,,3008,3008,112,0,0,0,112,0,0,0,,,,"Monday, June 17, 2013","Sunday, June 30, 2013",,"Wednesday, June 6, 2012","Tuesday, June 19, 2012","Wednesday, June 6, 2012","Tuesday, June 19, 2012","Wednesday, June 6, 2012","Tuesday, June 19, 2012",,6/17/2013 8:00,6/30/2013 17:00,,PT_Normal,,,,,ReudYtn1GkWHT3x830vh5g,,,,N,0,0,,,3/18/2012 21:13,3/18/2012 22:47,admin,NotPrmUser
