,task_id,proj_id,wbs_id,clndr_id,est_wt,phys_complete_pct,rev_fdbk_flag,lock_plan_flag,auto_compute_act_flag,complete_pct_type,task_type,duration_type,review_type,status_code,task_code,task_name,rsrc_id,total_float_hr_cnt,free_float_hr_cnt,remain_drtn_hr_cnt,act_work_qty,remain_work_qty,target_work_qty,target_drtn_hr_cnt,target_equip_qty,act_equip_qty,remain_equip_qty,cstr_date,act_start_date,act_end_date,late_start_date,late_end_date,expect_end_date,early_start_date,early_end_date,restart_date,reend_date,target_start_date,target_end_date,review_end_date,rem_late_start_date,rem_late_end_date,cstr_type,priority_type,suspend_date,resume_date,float_path,float_path_order,guid,tmpl_guid,cstr_date2,cstr_type2,driving_path_flag,act_this_per_work_qty,act_this_per_equip_qty,external_early_start_date,external_late_end_date,create_date,update_date,create_user,update_user,old_restart_date,old_reend_date,old_remain_drtn_hr_cnt
0,82913,764,10508,841,0,0,N,N,N,CP_Drtn,TT_Mile,DT_FixedDrtn,RV_OK,TK_NotStart,A1000,Project Start,,264,0,0,0,0,0,0,0,0,0,,,,2010-07-29 08:00,2010-07-29 08:00,,2010-06-21 08:00,2010-06-21 08:00,2010-06-21 08:00,2010-06-21 08:00,2010-06-21 08:00,2010-06-21 08:00,,2010-07-29 08:00,2010-07-29 08:00,,PT_Normal,,,,,8HM7EtD+IUKWTf6naSThcg,,,,N,0,0,,,2010-06-27 10:17,2010-06-27 10:17,admin,admin,,,
1,82914,764,10508,841,0,0,N,N,N,CP_Drtn,TT_Mile,DT_FixedDrtn,RV_OK,TK_NotStart,A1020,Site Taking Over,,264,0,0,0,0,0,0,0,0,0,,,,2010-07-29 08:00,2010-07-29 08:00,,2010-06-21 08:00,2010-06-21 08:00,2010-06-21 08:00,2010-06-21 08:00,2010-06-21 08:00,2010-06-21 08:00,,2010-07-29 08:00,2010-07-29 08:00,,PT_Normal,,,,,2GcW1+/8LUiTMP3iJ65iaA,,,,N,0,0,,,2010-06-27 10:17,2010-06-27 10:17,admin,admin,,,
2,82915,764,10510,841,0,0,N,N,N,CP_Drtn,TT_FinMile,DT_FixedDrtn,RV_OK,TK_NotStart,A1280,end project,,0,0,0,0,0,0,0,0,0,0,,,,2010-11-30 16:00,2010-11-30 16:00,,2010-11-30 16:00,2010-11-30 16:00,2010-11-30 16:00,2010-11-30 16:00,2010-11-30 16:00,2010-11-30 16:00,,2010-11-30 16:00,2010-11-30 16:00,,PT_Normal,,,,,AF1ilkPWQUahyChW+ywKWQ,,,,Y,0,0,,,2010-06-27 10:17,2010-06-27 10:17,admin,admin,,,
3,82916,764,10542,841,1,0,N,N,N,CP_Drtn,TT_Task,DT_FixedDUR2,RV_OK,TK_NotStart,A9980,excavation,,264,0,16,0,0,0,16,0,0,0,,,,2010-07-29 08:00,2010-07-31 16:00,,2010-06-21 08:00,2010-06-22 16:00,2010-06-21 08:00,2010-06-22 16:00,2010-06-21 08:00,2010-06-22 16:00,,2010-07-29 08:00,2010-07-31 16:00,,PT_Normal,,,,,51kr/hRRW0SfDqgoCLm/0w,pR51kGoI20OO7hCzM8wNEA,,,N,0,0,,,2010-06-27 10:17,2010-06-27 10:17,admin,admin,,,
4,82917,764,10542,841,1,0,N,N,N,CP_Drtn,TT_Task,DT_FixedDUR2,RV_OK,TK_NotStart,A9990,soil replacement,,264,0,96,0,0,0,96,0,0,0,,,,2010-08-01 08:00,2010-08-14 16:00,,2010-06-23 08:00,2010-07-06 16:00,2010-06-23 08:00,2010-07-06 16:00,2010-06-23 08:00,2010-07-06 16:00,,2010-08-01 08:00,2010-08-14 16:00,,PT_Normal,,,,,IoTbrqNovE213a2Cq6p9zQ,sAFO1QwZ/Eic/wXDsvwfEg,,,N,0,0,,,2010-06-27 10:17,2010-06-27 10:17,admin,admin,,,
5,82918,764,10537,841,1,0,N,N,N,CP_Drtn,TT_Task,DT_FixedDUR2,RV_OK,TK_NotStart,A10000,Plain Concrete Foundation,,264,0,16,0,0,0,16,0,0,0,,,,2010-08-15 08:00,2010-08-16 16:00,,2010-07-07 08:00,2010-07-08 16:00,2010-07-07 08:00,2010-07-08 16:00,2010-07-07 08:00,2010-07-08 16:00,,2010-08-15 08:00,2010-08-16 16:00,,PT_Normal,,,,,Q79r75mKB0SAYA7EpggZAg,ZfdxWPXNKECWVjU8exyb3g,,,N,0,0,,,2010-06-27 10:17,2010-06-27 10:17,admin,admin,,,
6,82919,764,10537,841,1,0,N,N,N,CP_Drtn,TT_Task,DT_FixedDUR2,RV_OK,TK_NotStart,A10010,Reinforced Concrete Foundation,,264,0,56,0,0,0,56,0,0,0,,,,2010-08-22 08:00,2010-08-29 16:00,,2010-07-14 08:00,2010-07-21 16:00,2010-07-14 08:00,2010-07-21 16:00,2010-07-14 08:00,2010-07-21 16:00,,2010-08-22 08:00,2010-08-29 16:00,,PT_Normal,,,,,OOX3+INgB0an+C13KgSYCA,qj4YcRKGZkivqAaS+9+R0Q,,,N,0,0,,,2010-06-27 10:17,2010-06-27 10:17,admin,admin,,,
7,82920,764,10537,841,1,0,N,N,N,CP_Drtn,TT_Task,DT_FixedDUR2,RV_OK,TK_NotStart,A10020,under ground  brick works,,264,0,16,0,0,0,16,0,0,0,,,,2010-09-06 08:00,2010-09-07 16:00,,2010-07-29 08:00,2010-07-31 16:00,2010-07-29 08:00,2010-07-31 16:00,2010-07-29 08:00,2010-07-31 16:00,,2010-09-06 08:00,2010-09-07 16:00,,PT_Normal,,,,,vgyVaXBzlUOQ+ggc/XPz4w,46sDrceNckeaI1w9PG/r5A,,,N,0,0,,,2010-06-27 10:17,2010-06-27 10:17,admin,admin,,,
8,82921,764,10537,841,1,0,N,N,N,CP_Drtn,TT_Task,DT_FixedDUR2,RV_OK,TK_NotStart,A10030,under ground insulation for RC & Brick work,,264,0,16,0,0,0,16,0,0,0,,,,2010-09-11 08:00,2010-09-12 16:00,,2010-08-01 08:00,2010-08-02 16:00,2010-08-01 08:00,2010-08-02 16:00,2010-08-01 08:00,2010-08-02 16:00,,2010-09-11 08:00,2010-09-12 16:00,,PT_Normal,,,,,l8rdghU0Ek267vfzxKq3BQ,ecjDXTIAuU2mU0c42NSiYw,,,N,0,0,,,2010-06-27 10:17,2010-06-27 10:17,admin,admin,,,
9,82922,764,10537,841,1,0,N,N,N,CP_Drtn,TT_Task,DT_FixedDUR2,RV_OK,TK_NotStart,A10040,backfilling for under ground,,264,0,32,0,0,0,32,0,0,0,,,,2010-09-13 08:00,2010-09-16 16:00,,2010-08-03 08:00,2010-08-07 16:00,2010-08-03 08:00,2010-08-07 16:00,2010-08-03 08:00,2010-08-07 16:00,,2010-09-13 08:00,2010-09-16 16:00,,PT_Normal,,,,,yjuulYbyp0igWGcFg0BJog,ZrSNVFL7eUWIDD79JyjXfg,,,N,0,0,,,2010-06-27 10:17,2010-06-27 10:17,admin,admin,,,
10,82923,764,10537,841,1,0,N,N,N,CP_Drtn,TT_Task,DT_FixedDUR2,RV_OK,TK_NotStart,A10050,P.C slab on grade 10CM,,336,0,8,0,0,0,8,0,0,0,,,,2010-10-27 08:00,2010-10-27 16:00,,2010-09-06 08:00,2010-09-06 16:00,2010-09-06 08:00,2010-09-06 16:00,2010-09-06 08:00,2010-09-06 16:00,,2010-10-27 08:00,2010-10-27 16:00,,PT_Normal,,,,,M4pYGT3Im06wapkiAuLeXg,16cYLpKRtkmlOFWeCTttwg,,,N,0,0,,,2010-06-27 10:17,2010-06-27 10:17,admin,admin,,,
11,82924,764,10537,841,1,0,N,N,N,CP_Drtn,TT_Task,DT_FixedDUR2,RV_OK,TK_NotStart,A10060,moisture insulation with membrane sheets,,336,0,16,0,0,0,16,0,0,0,,,,2010-10-28 08:00,2010-10-30 16:00,,2010-09-07 08:00,2010-09-11 16:00,2010-09-07 08:00,2010-09-11 16:00,2010-09-07 08:00,2010-09-11 16:00,,2010-10-28 08:00,2010-10-30 16:00,,PT_Normal,,,,,H4MHz3ozRUCTo9qTiEZk6g,jvHKAv8t70aerVPigkQwog,,,N,0,0,,,2010-06-27 10:17,2010-06-27 10:17,admin,admin,,,
12,82925,764,10537,841,1,0,N,N,N,CP_Drtn,TT_Task,DT_FixedDUR2,RV_OK,TK_NotStart,A10070,R.C slab on grade,,336,0,16,0,0,0,16,0,0,0,,,,2010-10-31 08:00,2010-11-01 16:00,,2010-09-12 08:00,2010-09-13 16:00,2010-09-12 08:00,2010-09-13 16:00,2010-09-12 08:00,2010-09-13 16:00,,2010-10-31 08:00,2010-11-01 16:00,,PT_Normal,,,,,JzeymDhfvke8UA8l6ynSQA,KV1fty9QNUuBPk3UJDVbgw,,,N,0,0,,,2010-06-27 10:17,2010-06-27 10:17,admin,admin,,,
13,82926,764,10556,841,1,0,N,N,N,CP_Drtn,TT_Task,DT_FixedDUR2,RV_OK,TK_NotStart,A10080,columns for ground floor,,264,0,48,0,0,0,48,0,0,0,,,,2010-08-30 08:00,2010-09-05 16:00,,2010-07-22 08:00,2010-07-28 16:00,2010-07-22 08:00,2010-07-28 16:00,2010-07-22 08:00,2010-07-28 16:00,,2010-08-30 08:00,2010-09-05 16:00,,PT_Normal,,,,,Yu9qr2JQO0GnxbUeURyHog,jIQR9FyJ30ypRH/ev7KyLA,,,N,0,0,,,2010-06-27 10:17,2010-06-27 10:17,admin,admin,,,
14,82927,764,10556,841,1,0,N,N,N,CP_Drtn,TT_Task,DT_FixedDUR2,RV_OK,TK_NotStart,A10090,slab for ground floor,,264,0,72,0,0,0,72,0,0,0,,,,2010-09-18 08:00,2010-09-27 16:00,,2010-08-08 08:00,2010-08-17 16:00,2010-08-08 08:00,2010-08-17 16:00,2010-08-08 08:00,2010-08-17 16:00,,2010-09-18 08:00,2010-09-27 16:00,,PT_Normal,,,,,ugZEzCjViE6tyqk9TYPvkA,m8HKEf1Y3kWaMRqZkhZDYQ,,,N,0,0,,,2010-06-27 10:17,2010-06-27 10:17,admin,admin,,,
15,82928,764,10556,841,1,0,N,N,N,CP_Drtn,TT_Task,DT_FixedDUR2,RV_OK,TK_NotStart,A10100,columns for 1st floor,,280,0,48,0,0,0,48,0,0,0,,,,2010-10-02 08:00,2010-10-07 16:00,,2010-08-19 08:00,2010-08-25 16:00,2010-08-19 08:00,2010-08-25 16:00,2010-08-19 08:00,2010-08-25 16:00,,2010-10-02 08:00,2010-10-07 16:00,,PT_Normal,,,,,VgEputR5RUCDsGsj4bHghw,O1JSEh5wq0mDR5xsjAs1eA,,,N,0,0,,,2010-06-27 10:17,2010-06-27 10:17,admin,admin,,,
16,82929,764,10556,841,1,0,N,N,N,CP_Drtn,TT_Task,DT_FixedDUR2,RV_OK,TK_NotStart,A10110,slab for 1st floor,,280,0,72,0,0,0,72,0,0,0,,,,2010-10-09 08:00,2010-10-18 16:00,,2010-08-26 08:00,2010-09-05 16:00,2010-08-26 08:00,2010-09-05 16:00,2010-08-26 08:00,2010-09-05 16:00,,2010-10-09 08:00,2010-10-18 16:00,,PT_Normal,,,,,rviI3029bEWDn4vVfj87Mw,J3tYc4DQYkmI+MM4r+s7vw,,,N,0,0,,,2010-06-27 10:17,2010-06-27 10:17,admin,admin,,,
17,82930,764,10556,841,1,0,N,N,N,CP_Drtn,TT_Task,DT_FixedDUR2,RV_OK,TK_NotStart,A10120,columns for roof floor,,280,0,32,0,0,0,32,0,0,0,,,,2010-10-23 08:00,2010-10-26 16:00,,2010-09-12 08:00,2010-09-15 16:00,2010-09-12 08:00,2010-09-15 16:00,2010-09-12 08:00,2010-09-15 16:00,,2010-10-23 08:00,2010-10-26 16:00,,PT_Normal,,,,,wcrgreM7hUeXmOA20NTfFg,KXnziB/G2km7100sLmKX6g,,,N,0,0,,,2010-06-27 10:17,2010-06-27 10:17,admin,admin,,,
18,82931,764,10556,841,1,0,N,N,N,CP_Drtn,TT_Task,DT_FixedDUR2,RV_OK,TK_NotStart,A10130,slab for roof floor,,280,0,48,0,0,0,48,0,0,0,,,,2010-10-27 08:00,2010-11-02 16:00,,2010-09-16 08:00,2010-09-22 16:00,2010-09-16 08:00,2010-09-22 16:00,2010-09-16 08:00,2010-09-22 16:00,,2010-10-27 08:00,2010-11-02 16:00,,PT_Normal,,,,,156x1KmV6USGNcMjYOEwSA,rfetPMwheU6qBwrhhpwYJg,,,N,0,0,,,2010-06-27 10:17,2010-06-27 10:17,admin,admin,,,
19,82932,764,10556,841,1,0,N,N,N,CP_Drtn,TT_Task,DT_FixedDUR2,RV_OK,TK_NotStart,A10140,Brick works for ground floor,,336,0,40,0,0,0,40,0,0,0,,,,2010-10-21 08:00,2010-10-26 16:00,,2010-08-31 08:00,2010-09-05 16:00,2010-08-31 08:00,2010-09-05 16:00,2010-08-31 08:00,2010-09-05 16:00,,2010-10-21 08:00,2010-10-26 16:00,,PT_Normal,,,,,PYXpM9LcTkagl7NvR7tZ1g,qtgTOiAYYUO1AYSNbt1Ojw,,,N,0,0,,,2010-06-27 10:17,2010-06-27 10:17,admin,admin,,,
20,82933,764,10557,841,1,0,N,N,N,CP_Drtn,TT_Task,DT_FixedDrtn,RV_OK,TK_NotStart,A10150,electrical conduits for ground floor's slab,,272,8,16,0,0,0,16,0,0,0,,,,2010-09-23 08:00,2010-09-25 16:00,,2010-08-12 08:00,2010-08-14 16:00,2010-08-12 08:00,2010-08-14 16:00,2010-08-12 08:00,2010-08-14 16:00,,2010-09-23 08:00,2010-09-25 16:00,,PT_Normal,,,,,JKA+PErNtkCHVzuvCTod4Q,AwtCgWm9dUq9H6TLXiKVkg,,,N,0,0,,,2010-06-27 10:17,2010-06-27 10:17,admin,admin,,,
21,82934,764,10557,841,1,0,N,N,N,CP_Drtn,TT_Task,DT_FixedDrtn,RV_OK,TK_NotStart,A10160,electrical conduits for 1st floor slab,,288,8,16,0,0,0,16,0,0,0,,,,2010-10-14 08:00,2010-10-16 16:00,,2010-08-31 08:00,2010-09-01 16:00,2010-08-31 08:00,2010-09-01 16:00,2010-08-31 08:00,2010-09-01 16:00,,2010-10-14 08:00,2010-10-16 16:00,,PT_Normal,,,,,miFOOSRE002qGrfJwEQdSA,nfat9bCS4UGMLztsO+AYAw,,,N,0,0,,,2010-06-27 10:17,2010-06-27 10:17,admin,admin,,,
22,82935,764,10557,841,1,0,N,N,N,CP_Drtn,TT_Task,DT_FixedDrtn,RV_OK,TK_NotStart,A10170,electrical conduits for roof slab,,288,8,8,0,0,0,8,0,0,0,,,,2010-11-01 08:00,2010-11-01 16:00,,2010-09-20 08:00,2010-09-20 16:00,2010-09-20 08:00,2010-09-20 16:00,2010-09-20 08:00,2010-09-20 16:00,,2010-11-01 08:00,2010-11-01 16:00,,PT_Normal,,,,,f/1xHm8sZUKo810zPYWZLQ,ljYRZZ2Z80irbSuhWR1Jvw,,,N,0,0,,,2010-06-27 10:17,2010-06-27 10:17,admin,admin,,,
23,82936,764,10558,841,1,0,N,N,N,CP_Drtn,TT_Task,DT_FixedDUR2,RV_OK,TK_NotStart,A10190,Internal plastering for ground floor,,336,16,64,0,0,0,64,0,0,0,,,,2010-11-06 08:00,2010-11-14 16:00,,2010-09-18 08:00,2010-09-26 16:00,2010-09-18 08:00,2010-09-26 16:00,2010-09-18 08:00,2010-09-26 16:00,,2010-11-06 08:00,2010-11-14 16:00,,PT_Normal,,,,,nGsHYJNdKEGEjMTKiRiaNA,xtDIeRPhK0OtYDlHtk6U5A,,,N,0,0,,,2010-06-27 10:17,2010-06-27 10:17,admin,admin,,,
24,82937,764,10558,841,1,0,N,N,N,CP_Drtn,TT_Task,DT_FixedDUR2,RV_OK,TK_NotStart,A10200,External plastering,,248,0,80,0,0,0,80,0,0,0,,,,2010-11-20 08:00,2010-11-30 16:00,,2010-10-10 08:00,2010-10-20 16:00,2010-10-10 08:00,2010-10-20 16:00,2010-10-10 08:00,2010-10-20 16:00,,2010-11-20 08:00,2010-11-30 16:00,,PT_Normal,,,,,NlRrzvhaJEK9PBIRzp8Dsg,I3bEgrk+40iSgXvI1/jNog,,,N,0,0,,,2010-06-27 10:17,2010-06-27 10:17,admin,admin,,,
25,82938,764,10557,841,1,0,N,N,N,CP_Drtn,TT_Task,DT_FixedDrtn,RV_OK,TK_NotStart,A10210,plumbing connections under slab on grade,,520,184,16,0,0,0,16,0,0,0,,,,2010-10-25 08:00,2010-10-26 16:00,,2010-08-08 08:00,2010-08-09 16:00,2010-08-08 08:00,2010-08-09 16:00,2010-08-08 08:00,2010-08-09 16:00,,2010-10-25 08:00,2010-10-26 16:00,,PT_Normal,,,,,0EbIuJjYQE+AF9ZChkIsxg,wSjjdCY+Ck6Fuug6zZwEBQ,,,N,0,0,,,2010-06-27 10:17,2010-06-27 10:17,admin,admin,,,
26,82939,764,10550,841,0,0,N,N,N,CP_Drtn,TT_Mile,DT_FixedDrtn,RV_OK,TK_NotStart,A10230,Start Villa construction,,264,0,0,0,0,0,0,0,0,0,,,,2010-07-29 08:00,2010-07-29 08:00,,2010-06-21 08:00,2010-06-21 08:00,2010-06-21 08:00,2010-06-21 08:00,2010-06-21 08:00,2010-06-21 08:00,,2010-07-29 08:00,2010-07-29 08:00,,PT_Normal,,,,,qW0u8CwovkWXLWSYOg/ccA,blw9c4/rZkSA8JJdv7j+dw,,,N,0,0,,,2010-06-27 10:17,2010-06-27 10:17,admin,admin,,,
27,82940,764,10550,841,0,0,N,N,N,CP_Drtn,TT_FinMile,DT_FixedDrtn,RV_OK,TK_NotStart,A10240,finish Villa construction,,248,248,0,0,0,0,0,0,0,0,,,,2010-11-30 16:00,2010-11-30 16:00,,2010-10-20 16:00,2010-10-20 16:00,2010-10-20 16:00,2010-10-20 16:00,2010-10-20 16:00,2010-10-20 16:00,,2010-11-30 16:00,2010-11-30 16:00,,PT_Normal,,,,,mfH+QL+eWU6Wi3YXKnemRQ,plphke8dD0epoliS2tZyUQ,,,N,0,0,,,2010-06-27 10:17,2010-06-27 10:17,admin,admin,,,
28,82941,764,10550,841,0,0,N,N,N,CP_Drtn,TT_Mile,DT_FixedDrtn,RV_OK,TK_NotStart,A10250,IFC drawings,,264,0,0,0,0,0,0,0,0,0,,,,2010-07-29 08:00,2010-07-29 08:00,,2010-06-21 08:00,2010-06-21 08:00,2010-06-21 08:00,2010-06-21 08:00,2010-06-21 08:00,2010-06-21 08:00,,2010-07-29 08:00,2010-07-29 08:00,,PT_Normal,,,,,nL+rzNmyi0aHTKdKoR14Eg,AZS2kXhzPE60K970qbZY0g,,,N,0,0,,,2010-06-27 10:17,2010-06-27 10:17,admin,admin,,,
29,82942,764,10556,841,1,0,N,N,N,CP_Drtn,TT_Task,DT_FixedDUR2,RV_OK,TK_NotStart,A10260,pouring for ground floor's slab,,264,0,8,0,0,0,8,0,0,0,,,,2010-09-28 08:00,2010-09-28 16:00,,2010-08-18 08:00,2010-08-18 16:00,2010-08-18 08:00,2010-08-18 16:00,2010-08-18 08:00,2010-08-18 16:00,,2010-09-28 08:00,2010-09-28 16:00,,PT_Normal,,,,,ZKJeqfCNhkixkqK577EvqQ,vK4QYECrhkuoFUCE5nGafA,,,N,0,0,,,2010-06-27 10:17,2010-06-27 10:17,admin,admin,,,
30,82943,764,10556,841,1,0,N,N,N,CP_Drtn,TT_Task,DT_FixedDUR2,RV_OK,TK_NotStart,A10270,pouring for 1st floor's slab,,280,0,8,0,0,0,8,0,0,0,,,,2010-10-19 08:00,2010-10-19 16:00,,2010-09-06 08:00,2010-09-06 16:00,2010-09-06 08:00,2010-09-06 16:00,2010-09-06 08:00,2010-09-06 16:00,,2010-10-19 08:00,2010-10-19 16:00,,PT_Normal,,,,,lmZrVVgcs0iSxcPdRyHctg,pXS5M7KQmEuQm6S3N/rDqA,,,N,0,0,,,2010-06-27 10:17,2010-06-27 10:17,admin,admin,,,
31,82944,764,10556,841,1,0,N,N,N,CP_Drtn,TT_Task,DT_FixedDUR2,RV_OK,TK_NotStart,A10280,pouring for roof floor's slab,,280,0,8,0,0,0,8,0,0,0,,,,2010-11-03 08:00,2010-11-03 16:00,,2010-09-23 08:00,2010-09-23 16:00,2010-09-23 08:00,2010-09-23 16:00,2010-09-23 08:00,2010-09-23 16:00,,2010-11-03 08:00,2010-11-03 16:00,,PT_Normal,,,,,J1k+nIrMtUuV0HWQPgbv1A,rAlW6OzVIk2IzMoysdv7Vw,,,N,0,0,,,2010-06-27 10:17,2010-06-27 10:17,admin,admin,,,
32,82945,764,10556,841,1,0,N,N,N,CP_Drtn,TT_Task,DT_FixedDrtn,RV_OK,TK_NotStart,A10290,Fence work,,264,16,400,0,0,0,400,0,0,0,,,,2010-09-29 08:00,2010-11-30 16:00,,2010-08-19 08:00,2010-10-18 16:00,2010-08-19 08:00,2010-10-18 16:00,2010-08-19 08:00,2010-10-18 16:00,,2010-09-29 08:00,2010-11-30 16:00,,PT_Normal,,,,,gevd4W+lfUGSpTI9i9yDaQ,eGmwX5lIXU6QYDukULNcEA,,,N,0,0,,,2010-06-27 10:17,2010-06-27 10:17,admin,admin,,,
33,82946,764,10550,841,1,0,N,N,N,CP_Drtn,TT_Task,DT_FixedDUR2,RV_OK,TK_NotStart,A10300,Fence Drawings IFC,,584,320,8,0,0,0,8,0,0,0,,,,2010-09-16 08:00,2010-09-16 16:00,,2010-06-21 08:00,2010-06-21 16:00,2010-06-21 08:00,2010-06-21 16:00,2010-06-21 08:00,2010-06-21 16:00,,2010-09-16 08:00,2010-09-16 16:00,,PT_Normal,,,,,cTKBu4mGNU+OwpCd8OcHmQ,kZ4VvTjSEk6hCLfSU4mIdg,,,N,0,0,,,2010-06-27 10:17,2010-06-27 10:17,admin,admin,,,
34,82947,764,10537,849,1,0,N,N,N,CP_Drtn,TT_Task,DT_FixedDUR2,RV_OK,TK_NotStart,A10001,backfilling between P.C Foundation,,264,0,16,0,0,0,16,0,0,0,,,,2010-08-18 08:00,2010-08-19 16:00,,2010-07-11 08:00,2010-07-12 16:00,2010-07-11 08:00,2010-07-12 16:00,2010-07-11 08:00,2010-07-12 16:00,,2010-08-18 08:00,2010-08-19 16:00,,PT_Normal,,,,,NkwW6ZWTiEqK41mywnkyBg,,,,N,0,0,,,2010-06-27 10:17,2010-06-27 10:17,admin,admin,,,
35,82948,764,10537,849,1,0,N,N,N,CP_Drtn,TT_Task,DT_FixedDUR2,RV_OK,TK_NotStart,A10002,P.C Under Smells,,264,0,8,0,0,0,8,0,0,0,,,,2010-08-21 08:00,2010-08-21 16:00,,2010-07-13 08:00,2010-07-13 16:00,2010-07-13 08:00,2010-07-13 16:00,2010-07-13 08:00,2010-07-13 16:00,,2010-08-21 08:00,2010-08-21 16:00,,PT_Normal,,,,,OTU7pi0KFkiU3hdd3ZbaWg,,,,N,0,0,,,2010-06-27 10:17,2010-06-27 10:17,admin,admin,,,
36,82949,764,10556,849,1,0,N,N,N,CP_Drtn,TT_Task,DT_FixedDUR2,RV_OK,TK_NotStart,A10141,Brick works for 1st floor,,328,0,40,0,0,0,40,0,0,0,,,,2010-11-08 08:00,2010-11-13 16:00,,2010-09-21 08:00,2010-09-26 16:00,2010-09-21 08:00,2010-09-26 16:00,2010-09-21 08:00,2010-09-26 16:00,,2010-11-08 08:00,2010-11-13 16:00,,PT_Normal,,,,,3VouqK9HKUaKNNpVnzIa9A,,,,N,0,0,,,2010-06-27 10:17,2010-06-27 10:17,admin,admin,,,
37,82950,764,10556,849,1,0,N,N,N,CP_Drtn,TT_Task,DT_FixedDUR2,RV_OK,TK_NotStart,A10142,Brick works for roof floor,,280,0,40,0,0,0,40,0,0,0,,,,2010-11-14 08:00,2010-11-18 16:00,,2010-10-04 08:00,2010-10-09 16:00,2010-10-04 08:00,2010-10-09 16:00,2010-10-04 08:00,2010-10-09 16:00,,2010-11-14 08:00,2010-11-18 16:00,,PT_Normal,,,,,/IgvtGPiKUOpNonf97gOmg,,,,N,0,0,,,2010-06-27 10:17,2010-06-27 10:17,admin,admin,,,
38,82951,764,10558,849,1,0,N,N,N,CP_Drtn,TT_Task,DT_FixedDUR2,RV_OK,TK_NotStart,A10191,Internal plastering for 1st floor,,328,24,64,0,0,0,64,0,0,0,,,,2010-11-16 08:00,2010-11-24 16:00,,2010-09-29 08:00,2010-10-07 16:00,2010-09-29 08:00,2010-10-07 16:00,2010-09-29 08:00,2010-10-07 16:00,,2010-11-16 08:00,2010-11-24 16:00,,PT_Normal,,,,,xNznaRtAOEiMDcdAVxjZCw,,,,N,0,0,,,2010-06-27 10:17,2010-06-27 10:17,admin,admin,,,
39,82952,764,10558,849,1,0,N,N,N,CP_Drtn,TT_Task,DT_FixedDUR2,RV_OK,TK_NotStart,A10192,Internal plastering for roof floor,,304,24,40,0,0,0,40,0,0,0,,,,2010-11-25 08:00,2010-11-30 16:00,,2010-10-12 08:00,2010-10-17 16:00,2010-10-12 08:00,2010-10-17 16:00,2010-10-12 08:00,2010-10-17 16:00,,2010-11-25 08:00,2010-11-30 16:00,,PT_Normal,,,,,JJ8rOiPwakyx02hsuiuNjA,,,,N,0,0,,,2010-06-27 10:17,2010-06-27 10:17,admin,admin,,,
40,82953,764,10557,849,1,0,N,N,N,CP_Drtn,TT_Task,DT_FixedDUR2,RV_OK,TK_NotStart,A10171,electrical conduits for ground floor walls,,336,0,16,0,0,0,16,0,0,0,,,,2010-11-03 08:00,2010-11-04 16:00,,2010-09-15 08:00,2010-09-16 16:00,2010-09-15 08:00,2010-09-16 16:00,2010-09-15 08:00,2010-09-16 16:00,,2010-11-03 08:00,2010-11-04 16:00,,PT_Normal,,,,,KI2xE8rYJEqaf8ljCIxyRg,,,,N,0,0,,,2010-06-27 10:17,2010-06-27 10:17,admin,admin,,,
41,82954,764,10557,849,1,0,N,N,N,CP_Drtn,TT_Task,DT_FixedDUR2,RV_OK,TK_NotStart,A10172,electrical conduits for 1st floor walls,,328,0,16,0,0,0,16,0,0,0,,,,2010-11-14 08:00,2010-11-15 16:00,,2010-09-27 08:00,2010-09-28 16:00,2010-09-27 08:00,2010-09-28 16:00,2010-09-27 08:00,2010-09-28 16:00,,2010-11-14 08:00,2010-11-15 16:00,,PT_Normal,,,,,eAcNPLbjhEaOnT7B36YN5A,,,,N,0,0,,,2010-06-27 10:17,2010-06-27 10:17,admin,admin,,,
42,82955,764,10557,849,1,0,N,N,N,CP_Drtn,TT_Task,DT_FixedDUR2,RV_OK,TK_NotStart,A10173,electrical conduits for roof floor walls,,304,0,16,0,0,0,16,0,0,0,,,,2010-11-23 08:00,2010-11-24 16:00,,2010-10-10 08:00,2010-10-11 16:00,2010-10-10 08:00,2010-10-11 16:00,2010-10-10 08:00,2010-10-11 16:00,,2010-11-23 08:00,2010-11-24 16:00,,PT_Normal,,,,,X1gdxyi6ZUOnjZA5xn46/Q,,,,N,0,0,,,2010-06-27 10:17,2010-06-27 10:17,admin,admin,,,
43,82956,764,10564,841,1,0,N,N,N,CP_Drtn,TT_Task,DT_FixedDUR2,RV_OK,TK_NotStart,A10310,excavation,,368,0,8,0,0,0,8,0,0,0,,,,2010-08-14 08:00,2010-08-14 16:00,,2010-06-21 08:00,2010-06-21 16:00,2010-06-21 08:00,2010-06-21 16:00,2010-06-21 08:00,2010-06-21 16:00,,2010-08-14 08:00,2010-08-14 16:00,,PT_Normal,,,,,OG8Rdun9o02UbFo7Vm6oAw,w00juhqOnEaAjO+PyXKITg,,,N,0,0,,,2010-06-27 10:17,2010-06-27 10:17,admin,admin,,,
44,82957,764,10564,841,1,0,N,N,N,CP_Drtn,TT_Task,DT_FixedDUR2,RV_OK,TK_NotStart,A10320,soil replacement,,368,0,0,0,0,0,0,0,0,0,,,,2010-08-14 16:00,2010-08-14 16:00,,2010-06-22 08:00,2010-06-22 08:00,2010-06-22 08:00,2010-06-22 08:00,2010-06-22 08:00,2010-06-22 08:00,,2010-08-14 16:00,2010-08-14 16:00,,PT_Normal,,,,,/2dE+TYUtk+QNCD1E3OSAQ,OfwvHaUMwU2nZNH/KRhRQg,,,N,0,0,,,2010-06-27 10:17,2010-06-27 10:17,admin,admin,,,
45,82958,764,10565,841,1,0,N,N,N,CP_Drtn,TT_Task,DT_FixedDUR2,RV_OK,TK_NotStart,A10330,Plain Concrete Foundation,,368,0,16,0,0,0,16,0,0,0,,,,2010-08-15 08:00,2010-08-16 16:00,,2010-06-22 08:00,2010-06-23 16:00,2010-06-22 08:00,2010-06-23 16:00,2010-06-22 08:00,2010-06-23 16:00,,2010-08-15 08:00,2010-08-16 16:00,,PT_Normal,,,,,fu/vIBU9gUOgpiz7HZYu8A,w7k7lbi3MUmrDvdQzHi9PQ,,,N,0,0,,,2010-06-27 10:17,2010-06-27 10:17,admin,admin,,,
46,82959,764,10565,841,1,0,N,N,N,CP_Drtn,TT_Task,DT_FixedDUR2,RV_OK,TK_NotStart,A10340,Reinforced Concrete Foundation,,368,0,56,0,0,0,56,0,0,0,,,,2010-08-22 08:00,2010-08-29 16:00,,2010-06-29 08:00,2010-07-06 16:00,2010-06-29 08:00,2010-07-06 16:00,2010-06-29 08:00,2010-07-06 16:00,,2010-08-22 08:00,2010-08-29 16:00,,PT_Normal,,,,,CfOKCwd1pEeWzXBIOtv2PQ,ovpMN20jskiFhLK5kNQeZw,,,N,0,0,,,2010-06-27 10:17,2010-06-27 10:17,admin,admin,,,
47,82960,764,10565,841,1,0,N,N,N,CP_Drtn,TT_Task,DT_FixedDUR2,RV_OK,TK_NotStart,A10350,under ground  brick works,,368,0,16,0,0,0,16,0,0,0,,,,2010-09-06 08:00,2010-09-07 16:00,,2010-07-14 08:00,2010-07-15 16:00,2010-07-14 08:00,2010-07-15 16:00,2010-07-14 08:00,2010-07-15 16:00,,2010-09-06 08:00,2010-09-07 16:00,,PT_Normal,,,,,gRfT4mVkTkWhXvFR3R4vew,AynKXs2EYk64UCpxIrPcUg,,,N,0,0,,,2010-06-27 10:17,2010-06-27 10:17,admin,admin,,,
48,82961,764,10565,841,1,0,N,N,N,CP_Drtn,TT_Task,DT_FixedDUR2,RV_OK,TK_NotStart,A10360,under ground insulation for RC & Brick work,,368,0,16,0,0,0,16,0,0,0,,,,2010-09-11 08:00,2010-09-12 16:00,,2010-07-17 08:00,2010-07-18 16:00,2010-07-17 08:00,2010-07-18 16:00,2010-07-17 08:00,2010-07-18 16:00,,2010-09-11 08:00,2010-09-12 16:00,,PT_Normal,,,,,Us6jxM7lGkar36kQubQXMA,iVGv2xlSAEqBTJfmaJKP3A,,,N,0,0,,,2010-06-27 10:17,2010-06-27 10:17,admin,admin,,,
49,82962,764,10565,841,1,0,N,N,N,CP_Drtn,TT_Task,DT_FixedDUR2,RV_OK,TK_NotStart,A10370,backfilling for under ground,,368,0,32,0,0,0,32,0,0,0,,,,2010-09-13 08:00,2010-09-16 16:00,,2010-07-19 08:00,2010-07-22 16:00,2010-07-19 08:00,2010-07-22 16:00,2010-07-19 08:00,2010-07-22 16:00,,2010-09-13 08:00,2010-09-16 16:00,,PT_Normal,,,,,6cJo2rNaf0edn6rKacbAbw,wsTP8cQHmkat/McfT7rsRA,,,N,0,0,,,2010-06-27 10:17,2010-06-27 10:17,admin,admin,,,
50,82963,764,10565,841,1,0,N,N,N,CP_Drtn,TT_Task,DT_FixedDUR2,RV_OK,TK_NotStart,A10380,P.C slab on grade 10CM,,440,0,8,0,0,0,8,0,0,0,,,,2010-10-27 08:00,2010-10-27 16:00,,2010-08-22 08:00,2010-08-22 16:00,2010-08-22 08:00,2010-08-22 16:00,2010-08-22 08:00,2010-08-22 16:00,,2010-10-27 08:00,2010-10-27 16:00,,PT_Normal,,,,,24nFDPUCKEarmuUGX0c6tw,+ZqHZD7jY062KDwA7p+W9A,,,N,0,0,,,2010-06-27 10:17,2010-06-27 10:17,admin,admin,,,
51,82964,764,10565,841,1,0,N,N,N,CP_Drtn,TT_Task,DT_FixedDUR2,RV_OK,TK_NotStart,A10390,moisture insulation with membrane sheets,,440,0,16,0,0,0,16,0,0,0,,,,2010-10-28 08:00,2010-10-30 16:00,,2010-08-23 08:00,2010-08-24 16:00,2010-08-23 08:00,2010-08-24 16:00,2010-08-23 08:00,2010-08-24 16:00,,2010-10-28 08:00,2010-10-30 16:00,,PT_Normal,,,,,t5yYfqrzJEKnXDHb/mkFjQ,w239f8dFDUmNOeiQflxhOA,,,N,0,0,,,2010-06-27 10:17,2010-06-27 10:17,admin,admin,,,
52,82965,764,10565,841,1,0,N,N,N,CP_Drtn,TT_Task,DT_FixedDUR2,RV_OK,TK_NotStart,A10400,R.C slab on grade,,440,0,16,0,0,0,16,0,0,0,,,,2010-10-31 08:00,2010-11-01 16:00,,2010-08-25 08:00,2010-08-26 16:00,2010-08-25 08:00,2010-08-26 16:00,2010-08-25 08:00,2010-08-26 16:00,,2010-10-31 08:00,2010-11-01 16:00,,PT_Normal,,,,,v5rWb9fdnUmnSRIzPo7qog,obZ1gJKsT0a4BfjVgESU/Q,,,N,0,0,,,2010-06-27 10:17,2010-06-27 10:17,admin,admin,,,
53,82966,764,10549,841,1,0,N,N,N,CP_Drtn,TT_Task,DT_FixedDUR2,RV_OK,TK_NotStart,A10410,columns for ground floor,,368,0,48,0,0,0,48,0,0,0,,,,2010-08-30 08:00,2010-09-05 16:00,,2010-07-07 08:00,2010-07-13 16:00,2010-07-07 08:00,2010-07-13 16:00,2010-07-07 08:00,2010-07-13 16:00,,2010-08-30 08:00,2010-09-05 16:00,,PT_Normal,,,,,ba4SbX0lNkW2/khRlcT9zA,w3pI+EDPVk6DYy+5L5SK0w,,,N,0,0,,,2010-06-27 10:17,2010-06-27 10:17,admin,admin,,,
54,82967,764,10549,841,1,0,N,N,N,CP_Drtn,TT_Task,DT_FixedDUR2,RV_OK,TK_NotStart,A10420,slab for ground floor,,368,0,72,0,0,0,72,0,0,0,,,,2010-09-18 08:00,2010-09-27 16:00,,2010-07-24 08:00,2010-08-02 16:00,2010-07-24 08:00,2010-08-02 16:00,2010-07-24 08:00,2010-08-02 16:00,,2010-09-18 08:00,2010-09-27 16:00,,PT_Normal,,,,,39Li6oRz/UKBYSO0S9k2Hg,NDQRolU3mkieCagFXybNFQ,,,N,0,0,,,2010-06-27 10:17,2010-06-27 10:17,admin,admin,,,
55,82968,764,10549,841,1,0,N,N,N,CP_Drtn,TT_Task,DT_FixedDUR2,RV_OK,TK_NotStart,A10430,columns for 1st floor,,384,0,48,0,0,0,48,0,0,0,,,,2010-10-02 08:00,2010-10-07 16:00,,2010-08-04 08:00,2010-08-10 16:00,2010-08-04 08:00,2010-08-10 16:00,2010-08-04 08:00,2010-08-10 16:00,,2010-10-02 08:00,2010-10-07 16:00,,PT_Normal,,,,,CkRf3kBOP06m7Taln+ez8A,nO23ED1qjU6aRLWSGGiSog,,,N,0,0,,,2010-06-27 10:17,2010-06-27 10:17,admin,admin,,,
56,82969,764,10549,841,1,0,N,N,N,CP_Drtn,TT_Task,DT_FixedDUR2,RV_OK,TK_NotStart,A10440,slab for 1st floor,,384,0,72,0,0,0,72,0,0,0,,,,2010-10-09 08:00,2010-10-18 16:00,,2010-08-11 08:00,2010-08-21 16:00,2010-08-11 08:00,2010-08-21 16:00,2010-08-11 08:00,2010-08-21 16:00,,2010-10-09 08:00,2010-10-18 16:00,,PT_Normal,,,,,YTQylutwRUyBLSndEiVmEw,WVuyh59Gd0qDfhgYky9c5Q,,,N,0,0,,,2010-06-27 10:17,2010-06-27 10:17,admin,admin,,,
57,82970,764,10549,841,1,0,N,N,N,CP_Drtn,TT_Task,DT_FixedDUR2,RV_OK,TK_NotStart,A10450,columns for roof floor,,384,0,32,0,0,0,32,0,0,0,,,,2010-10-23 08:00,2010-10-26 16:00,,2010-08-25 08:00,2010-08-29 16:00,2010-08-25 08:00,2010-08-29 16:00,2010-08-25 08:00,2010-08-29 16:00,,2010-10-23 08:00,2010-10-26 16:00,,PT_Normal,,,,,nbI++GMhIUaMmcA9b5XzWA,fRbsRIbtNUCVUhRnRIUTuA,,,N,0,0,,,2010-06-27 10:17,2010-06-27 10:17,admin,admin,,,
58,82971,764,10549,841,1,0,N,N,N,CP_Drtn,TT_Task,DT_FixedDUR2,RV_OK,TK_NotStart,A10460,slab for roof floor,,384,0,48,0,0,0,48,0,0,0,,,,2010-10-27 08:00,2010-11-02 16:00,,2010-08-30 08:00,2010-09-05 16:00,2010-08-30 08:00,2010-09-05 16:00,2010-08-30 08:00,2010-09-05 16:00,,2010-10-27 08:00,2010-11-02 16:00,,PT_Normal,,,,,fIdAcDpi9kGM1e4QxAhkKQ,SJplJ2EYCkeIErcijUnhIg,,,N,0,0,,,2010-06-27 10:17,2010-06-27 10:17,admin,admin,,,
59,82972,764,10549,841,1,0,N,N,N,CP_Drtn,TT_Task,DT_FixedDUR2,RV_OK,TK_NotStart,A10470,Brick works for ground floor,,440,0,40,0,0,0,40,0,0,0,,,,2010-10-21 08:00,2010-10-26 16:00,,2010-08-16 08:00,2010-08-21 16:00,2010-08-16 08:00,2010-08-21 16:00,2010-08-16 08:00,2010-08-21 16:00,,2010-10-21 08:00,2010-10-26 16:00,,PT_Normal,,,,,dZV8l4rzV0yw2fExEvkdAA,ikbkwfgHKE6t36bwCKBOxg,,,N,0,0,,,2010-06-27 10:17,2010-06-27 10:17,admin,admin,,,
60,82973,764,10545,841,1,0,N,N,N,CP_Drtn,TT_Task,DT_FixedDrtn,RV_OK,TK_NotStart,A10480,electrical conduits for ground floor's slab,,376,8,16,0,0,0,16,0,0,0,,,,2010-09-23 08:00,2010-09-25 16:00,,2010-07-28 08:00,2010-07-29 16:00,2010-07-28 08:00,2010-07-29 16:00,2010-07-28 08:00,2010-07-29 16:00,,2010-09-23 08:00,2010-09-25 16:00,,PT_Normal,,,,,AuGBFNdboUmY1gB/DZE8QA,Sg0JIVoJD06IAKMCFJj0tw,,,N,0,0,,,2010-06-27 10:17,2010-06-27 10:17,admin,admin,,,
61,82974,764,10545,841,1,0,N,N,N,CP_Drtn,TT_Task,DT_FixedDrtn,RV_OK,TK_NotStart,A10490,electrical conduits for 1st floor slab,,392,8,16,0,0,0,16,0,0,0,,,,2010-10-14 08:00,2010-10-16 16:00,,2010-08-16 08:00,2010-08-17 16:00,2010-08-16 08:00,2010-08-17 16:00,2010-08-16 08:00,2010-08-17 16:00,,2010-10-14 08:00,2010-10-16 16:00,,PT_Normal,,,,,OqUYnSH9jEORZrH2ppBD+Q,EmA4rSmWRUO8bBfxI2za2A,,,N,0,0,,,2010-06-27 10:17,2010-06-27 10:17,admin,admin,,,
62,82975,764,10545,841,1,0,N,N,N,CP_Drtn,TT_Task,DT_FixedDrtn,RV_OK,TK_NotStart,A10500,electrical conduits for roof slab,,392,8,8,0,0,0,8,0,0,0,,,,2010-11-01 08:00,2010-11-01 16:00,,2010-09-02 08:00,2010-09-02 16:00,2010-09-02 08:00,2010-09-02 16:00,2010-09-02 08:00,2010-09-02 16:00,,2010-11-01 08:00,2010-11-01 16:00,,PT_Normal,,,,,iR2Y90pdSEC+1JyizwsyLQ,zggIJ2V3b0iN6h5UhlIvmw,,,N,0,0,,,2010-06-27 10:17,2010-06-27 10:17,admin,admin,,,
63,82976,764,10538,841,1,0,N,N,N,CP_Drtn,TT_Task,DT_FixedDUR2,RV_OK,TK_NotStart,A10510,Internal plastering for ground floor,,440,32,64,0,0,0,64,0,0,0,,,,2010-11-06 08:00,2010-11-14 16:00,,2010-08-31 08:00,2010-09-11 16:00,2010-08-31 08:00,2010-09-11 16:00,2010-08-31 08:00,2010-09-11 16:00,,2010-11-06 08:00,2010-11-14 16:00,,PT_Normal,,,,,IFd3YbWCPUCEFx8UZPok5Q,RRvMVLyM8Um0gNcg5aAkKA,,,N,0,0,,,2010-06-27 10:17,2010-06-27 10:17,admin,admin,,,
64,82977,764,10538,841,1,0,N,N,N,CP_Drtn,TT_Task,DT_FixedDUR2,RV_OK,TK_NotStart,A10520,External plastering,,352,0,80,0,0,0,80,0,0,0,,,,2010-11-20 08:00,2010-11-30 16:00,,2010-09-25 08:00,2010-10-05 16:00,2010-09-25 08:00,2010-10-05 16:00,2010-09-25 08:00,2010-10-05 16:00,,2010-11-20 08:00,2010-11-30 16:00,,PT_Normal,,,,,/bLaLe+gE0CkytbVjIAvxQ,Dpjm1gusKUikby6WEkIHMw,,,N,0,0,,,2010-06-27 10:17,2010-06-27 10:17,admin,admin,,,
65,82978,764,10545,841,1,0,N,N,N,CP_Drtn,TT_Task,DT_FixedDrtn,RV_OK,TK_NotStart,A10530,plumbing connections under slab on grade,,624,184,16,0,0,0,16,0,0,0,,,,2010-10-25 08:00,2010-10-26 16:00,,2010-07-24 08:00,2010-07-25 16:00,2010-07-24 08:00,2010-07-25 16:00,2010-07-24 08:00,2010-07-25 16:00,,2010-10-25 08:00,2010-10-26 16:00,,PT_Normal,,,,,qph1JddtQ0ifrZx6gYhnoQ,6P2DFPjXMEqvxFBMio0IyQ,,,N,0,0,,,2010-06-27 10:17,2010-06-27 10:17,admin,admin,,,
66,82979,764,10563,841,0,0,N,N,N,CP_Drtn,TT_Mile,DT_FixedDrtn,RV_OK,TK_NotStart,A10540,Start Villa construction,,368,0,0,0,0,0,0,0,0,0,,,,2010-08-14 08:00,2010-08-14 08:00,,2010-06-21 08:00,2010-06-21 08:00,2010-06-21 08:00,2010-06-21 08:00,2010-06-21 08:00,2010-06-21 08:00,,2010-08-14 08:00,2010-08-14 08:00,,PT_Normal,,,,,ZKKU6EYSqEmtYzLLtenP0w,Cf7OYCLmA0m1nG2jkAprsw,,,N,0,0,,,2010-06-27 10:17,2010-06-27 10:17,admin,admin,,,
67,82980,764,10563,841,0,0,N,N,N,CP_Drtn,TT_FinMile,DT_FixedDrtn,RV_OK,TK_NotStart,A10550,finish Villa construction,,352,352,0,0,0,0,0,0,0,0,,,,2010-11-30 16:00,2010-11-30 16:00,,2010-10-05 16:00,2010-10-05 16:00,2010-10-05 16:00,2010-10-05 16:00,2010-10-05 16:00,2010-10-05 16:00,,2010-11-30 16:00,2010-11-30 16:00,,PT_Normal,,,,,biubOLwPMkiUWB40LfrZNQ,FuOde62ttUOnqpumMTLVCg,,,N,0,0,,,2010-06-27 10:17,2010-06-27 10:17,admin,admin,,,
68,82981,764,10563,841,0,0,N,N,N,CP_Drtn,TT_Mile,DT_FixedDrtn,RV_OK,TK_NotStart,A10560,IFC drawings,,368,0,0,0,0,0,0,0,0,0,,,,2010-08-14 08:00,2010-08-14 08:00,,2010-06-21 08:00,2010-06-21 08:00,2010-06-21 08:00,2010-06-21 08:00,2010-06-21 08:00,2010-06-21 08:00,,2010-08-14 08:00,2010-08-14 08:00,,PT_Normal,,,,,3oqNbxNyX0CIkMwDUZzUkw,paLhTEjiLUmn9ZhRERLzsg,,,N,0,0,,,2010-06-27 10:17,2010-06-27 10:17,admin,admin,,,
69,82982,764,10549,841,1,0,N,N,N,CP_Drtn,TT_Task,DT_FixedDUR2,RV_OK,TK_NotStart,A10570,pouring for ground floor's slab,,368,0,8,0,0,0,8,0,0,0,,,,2010-09-28 08:00,2010-09-28 16:00,,2010-08-03 08:00,2010-08-03 16:00,2010-08-03 08:00,2010-08-03 16:00,2010-08-03 08:00,2010-08-03 16:00,,2010-09-28 08:00,2010-09-28 16:00,,PT_Normal,,,,,i3BZmFBTJUep0he3P7JadA,rkHX0gLJu06MmHJWaPEYyA,,,N,0,0,,,2010-06-27 10:17,2010-06-27 10:17,admin,admin,,,
70,82983,764,10549,841,1,0,N,N,N,CP_Drtn,TT_Task,DT_FixedDUR2,RV_OK,TK_NotStart,A10580,pouring for 1st floor's slab,,384,0,8,0,0,0,8,0,0,0,,,,2010-10-19 08:00,2010-10-19 16:00,,2010-08-22 08:00,2010-08-22 16:00,2010-08-22 08:00,2010-08-22 16:00,2010-08-22 08:00,2010-08-22 16:00,,2010-10-19 08:00,2010-10-19 16:00,,PT_Normal,,,,,IFZ0DnXllEC5u9S9niHZ7w,pREhT23pg0O650onZ/m75w,,,N,0,0,,,2010-06-27 10:17,2010-06-27 10:17,admin,admin,,,
71,82984,764,10549,841,1,0,N,N,N,CP_Drtn,TT_Task,DT_FixedDUR2,RV_OK,TK_NotStart,A10590,pouring for roof floor's slab,,384,0,8,0,0,0,8,0,0,0,,,,2010-11-03 08:00,2010-11-03 16:00,,2010-09-06 08:00,2010-09-06 16:00,2010-09-06 08:00,2010-09-06 16:00,2010-09-06 08:00,2010-09-06 16:00,,2010-11-03 08:00,2010-11-03 16:00,,PT_Normal,,,,,TKMW/AmtE0Cvb0B+l2ZJTg,CLbJCMkWRUGa7ISIXW7gSA,,,N,0,0,,,2010-06-27 10:17,2010-06-27 10:17,admin,admin,,,
72,82985,764,10549,841,1,0,N,N,N,CP_Drtn,TT_Task,DT_FixedDrtn,RV_OK,TK_NotStart,A10600,Fence work,,368,16,400,0,0,0,400,0,0,0,,,,2010-09-29 08:00,2010-11-30 16:00,,2010-08-04 08:00,2010-10-03 16:00,2010-08-04 08:00,2010-10-03 16:00,2010-08-04 08:00,2010-10-03 16:00,,2010-09-29 08:00,2010-11-30 16:00,,PT_Normal,,,,,VroYicOsm06QkIO42iSvKg,kQLfBqADlESecTnkUN3eYg,,,N,0,0,,,2010-06-27 10:17,2010-06-27 10:17,admin,admin,,,
73,82986,764,10563,841,1,0,N,N,N,CP_Drtn,TT_Task,DT_FixedDUR2,RV_OK,TK_NotStart,A10610,Fence Drawings IFC,,584,216,8,0,0,0,8,0,0,0,,,,2010-09-16 08:00,2010-09-16 16:00,,2010-06-21 08:00,2010-06-21 16:00,2010-06-21 08:00,2010-06-21 16:00,2010-06-21 08:00,2010-06-21 16:00,,2010-09-16 08:00,2010-09-16 16:00,,PT_Normal,,,,,HVfBLRAnt0yk+Xk0+Lz2qA,AgJYHaoCTEqqVEpujxZQtg,,,N,0,0,,,2010-06-27 10:17,2010-06-27 10:17,admin,admin,,,
74,82987,764,10565,849,1,0,N,N,N,CP_Drtn,TT_Task,DT_FixedDUR2,RV_OK,TK_NotStart,A10620,backfilling between P.C Foundation,,368,0,16,0,0,0,16,0,0,0,,,,2010-08-18 08:00,2010-08-19 16:00,,2010-06-26 08:00,2010-06-27 16:00,2010-06-26 08:00,2010-06-27 16:00,2010-06-26 08:00,2010-06-27 16:00,,2010-08-18 08:00,2010-08-19 16:00,,PT_Normal,,,,,PE949HHEKkCLGVQjUkDHrQ,s2gESojSkk++pI2pDzsr4A,,,N,0,0,,,2010-06-27 10:17,2010-06-27 10:17,admin,admin,,,
75,82988,764,10565,849,1,0,N,N,N,CP_Drtn,TT_Task,DT_FixedDUR2,RV_OK,TK_NotStart,A10630,P.C Under Smells,,368,0,8,0,0,0,8,0,0,0,,,,2010-08-21 08:00,2010-08-21 16:00,,2010-06-28 08:00,2010-06-28 16:00,2010-06-28 08:00,2010-06-28 16:00,2010-06-28 08:00,2010-06-28 16:00,,2010-08-21 08:00,2010-08-21 16:00,,PT_Normal,,,,,ZvaQzg8Ct0GZJfn/u1Kvmw,QZzAAliQH0yXd9NHaw1xUg,,,N,0,0,,,2010-06-27 10:17,2010-06-27 10:17,admin,admin,,,
76,82989,764,10549,849,1,0,N,N,N,CP_Drtn,TT_Task,DT_FixedDUR2,RV_OK,TK_NotStart,A10640,Brick works for 1st floor,,416,0,40,0,0,0,40,0,0,0,,,,2010-11-08 08:00,2010-11-13 16:00,,2010-09-04 08:00,2010-09-13 16:00,2010-09-04 08:00,2010-09-13 16:00,2010-09-04 08:00,2010-09-13 16:00,,2010-11-08 08:00,2010-11-13 16:00,,PT_Normal,,,,,5g586jTIHkaTy5ZmU5ANRw,gWAkVitp30GQrlG2D6Rm8A,,,N,0,0,,,2010-06-27 10:17,2010-06-27 10:17,admin,admin,,,
77,82990,764,10549,849,1,0,N,N,N,CP_Drtn,TT_Task,DT_FixedDUR2,RV_OK,TK_NotStart,A10650,Brick works for roof floor,,384,0,40,0,0,0,40,0,0,0,,,,2010-11-14 08:00,2010-11-18 16:00,,2010-09-19 08:00,2010-09-23 16:00,2010-09-19 08:00,2010-09-23 16:00,2010-09-19 08:00,2010-09-23 16:00,,2010-11-14 08:00,2010-11-18 16:00,,PT_Normal,,,,,Nq4dzpc+P025V12x6Z4ZUw,xhmL3kAwc0CobGJtqORJow,,,N,0,0,,,2010-06-27 10:17,2010-06-27 10:17,admin,admin,,,
78,82991,764,10538,849,1,0,N,N,N,CP_Drtn,TT_Task,DT_FixedDUR2,RV_OK,TK_NotStart,A10660,Internal plastering for 1st floor,,416,8,64,0,0,0,64,0,0,0,,,,2010-11-16 08:00,2010-11-24 16:00,,2010-09-16 08:00,2010-09-25 16:00,2010-09-16 08:00,2010-09-25 16:00,2010-09-16 08:00,2010-09-25 16:00,,2010-11-16 08:00,2010-11-24 16:00,,PT_Normal,,,,,VF2rbnP/U0+MzTieiyM4sw,3ZVBuMa7kU+K0SYoWR8iVw,,,N,0,0,,,2010-06-27 10:17,2010-06-27 10:17,admin,admin,,,
79,82992,764,10538,849,1,0,N,N,N,CP_Drtn,TT_Task,DT_FixedDUR2,RV_OK,TK_NotStart,A10670,Internal plastering for roof floor,,408,24,40,0,0,0,40,0,0,0,,,,2010-11-25 08:00,2010-11-30 16:00,,2010-09-27 08:00,2010-10-02 16:00,2010-09-27 08:00,2010-10-02 16:00,2010-09-27 08:00,2010-10-02 16:00,,2010-11-25 08:00,2010-11-30 16:00,,PT_Normal,,,,,PwjqdnfoLEOXDfiw3ObCQA,obb0sowi/k6hM6VWVsgQtg,,,N,0,0,,,2010-06-27 10:17,2010-06-27 10:17,admin,admin,,,
80,82993,764,10545,849,1,0,N,N,N,CP_Drtn,TT_Task,DT_FixedDUR2,RV_OK,TK_NotStart,A10680,electrical conduits for ground floor walls,,424,0,16,0,0,0,16,0,0,0,,,,2010-11-03 08:00,2010-11-04 16:00,,2010-08-29 08:00,2010-08-30 16:00,2010-08-29 08:00,2010-08-30 16:00,2010-08-29 08:00,2010-08-30 16:00,,2010-11-03 08:00,2010-11-04 16:00,,PT_Normal,,,,,Pu6L3yPdvkqjQv2iGmxWyQ,8xHg6ZUA4EGB8RQoSy1Lyw,,,N,0,0,,,2010-06-27 10:17,2010-06-27 10:17,admin,admin,,,
81,82994,764,10545,849,1,0,N,N,N,CP_Drtn,TT_Task,DT_FixedDUR2,RV_OK,TK_NotStart,A10690,electrical conduits for 1st floor walls,,416,0,16,0,0,0,16,0,0,0,,,,2010-11-14 08:00,2010-11-15 16:00,,2010-09-14 08:00,2010-09-15 16:00,2010-09-14 08:00,2010-09-15 16:00,2010-09-14 08:00,2010-09-15 16:00,,2010-11-14 08:00,2010-11-15 16:00,,PT_Normal,,,,,OQ+Igvhub0uLLCVCfxnAMA,ZfzwFYJ4zUemElqyQynfjQ,,,N,0,0,,,2010-06-27 10:17,2010-06-27 10:17,admin,admin,,,
82,82995,764,10545,849,1,0,N,N,N,CP_Drtn,TT_Task,DT_FixedDUR2,RV_OK,TK_NotStart,A10700,electrical conduits for roof floor walls,,408,0,16,0,0,0,16,0,0,0,,,,2010-11-23 08:00,2010-11-24 16:00,,2010-09-25 08:00,2010-09-26 16:00,2010-09-25 08:00,2010-09-26 16:00,2010-09-25 08:00,2010-09-26 16:00,,2010-11-23 08:00,2010-11-24 16:00,,PT_Normal,,,,,z8v98bQPNEGgZU++z98yvQ,ybbpQGkYiEaYhNhyk1gMAA,,,N,0,0,,,2010-06-27 10:17,2010-06-27 10:17,admin,admin,,,
83,82996,764,10571,841,1,0,N,N,N,CP_Drtn,TT_Task,DT_FixedDUR2,RV_OK,TK_NotStart,A10710,excavation,,272,0,0,0,0,0,0,0,0,0,,,,2010-07-31 16:00,2010-07-31 16:00,,2010-06-22 08:00,2010-06-22 08:00,2010-06-22 08:00,2010-06-22 08:00,2010-06-22 08:00,2010-06-22 08:00,,2010-07-31 16:00,2010-07-31 16:00,,PT_Normal,,,,,6Rw+n6SLfEGGBFDwcU1+Qw,ng8shaW9FESCVPieb4P8CA,,,N,0,0,,,2010-06-27 10:17,2010-06-27 10:17,admin,admin,,,
84,82997,764,10571,841,1,0,N,N,N,CP_Drtn,TT_Task,DT_FixedDUR2,RV_OK,TK_NotStart,A10720,soil replacement,,272,0,96,0,0,0,96,0,0,0,,,,2010-08-01 08:00,2010-08-14 16:00,,2010-06-22 08:00,2010-07-05 16:00,2010-06-22 08:00,2010-07-05 16:00,2010-06-22 08:00,2010-07-05 16:00,,2010-08-01 08:00,2010-08-14 16:00,,PT_Normal,,,,,h1iuyeSNYEaFm0xzNnDxLg,4Qk8+L/BSkCkprNI1ZYWuw,,,N,0,0,,,2010-06-27 10:17,2010-06-27 10:17,admin,admin,,,
85,82998,764,10572,841,1,0,N,N,N,CP_Drtn,TT_Task,DT_FixedDUR2,RV_OK,TK_NotStart,A10730,Plain Concrete Foundation,,272,0,16,0,0,0,16,0,0,0,,,,2010-08-15 08:00,2010-08-16 16:00,,2010-07-06 08:00,2010-07-07 16:00,2010-07-06 08:00,2010-07-07 16:00,2010-07-06 08:00,2010-07-07 16:00,,2010-08-15 08:00,2010-08-16 16:00,,PT_Normal,,,,,jrdVL0TKQEqYA29KLyZuIA,p1jplYl8KUOxxxWMkcqYMA,,,N,0,0,,,2010-06-27 10:17,2010-06-27 10:17,admin,admin,,,
86,82999,764,10572,841,1,0,N,N,N,CP_Drtn,TT_Task,DT_FixedDUR2,RV_OK,TK_NotStart,A10740,Reinforced Concrete Foundation,,272,0,56,0,0,0,56,0,0,0,,,,2010-08-22 08:00,2010-08-29 16:00,,2010-07-13 08:00,2010-07-20 16:00,2010-07-13 08:00,2010-07-20 16:00,2010-07-13 08:00,2010-07-20 16:00,,2010-08-22 08:00,2010-08-29 16:00,,PT_Normal,,,,,eqL4KkJnJEmLHWPHxUkh9A,OouzYJgbKEu48pVPxeIiIA,,,N,0,0,,,2010-06-27 10:17,2010-06-27 10:17,admin,admin,,,
87,83000,764,10572,841,1,0,N,N,N,CP_Drtn,TT_Task,DT_FixedDUR2,RV_OK,TK_NotStart,A10750,under ground  brick works,,272,0,16,0,0,0,16,0,0,0,,,,2010-09-06 08:00,2010-09-07 16:00,,2010-07-28 08:00,2010-07-29 16:00,2010-07-28 08:00,2010-07-29 16:00,2010-07-28 08:00,2010-07-29 16:00,,2010-09-06 08:00,2010-09-07 16:00,,PT_Normal,,,,,A0+mQeD320SMItBgrcRLQQ,FUKefw86v0aWi/uZ8jkVKw,,,N,0,0,,,2010-06-27 10:17,2010-06-27 10:17,admin,admin,,,
88,83001,764,10572,841,1,0,N,N,N,CP_Drtn,TT_Task,DT_FixedDUR2,RV_OK,TK_NotStart,A10760,under ground insulation for RC & Brick work,,272,0,16,0,0,0,16,0,0,0,,,,2010-09-11 08:00,2010-09-12 16:00,,2010-07-31 08:00,2010-08-01 16:00,2010-07-31 08:00,2010-08-01 16:00,2010-07-31 08:00,2010-08-01 16:00,,2010-09-11 08:00,2010-09-12 16:00,,PT_Normal,,,,,HYt+zi9amUa3+Z2HtDyjpQ,/WTSmyTP1ESTYmJAVhgz4g,,,N,0,0,,,2010-06-27 10:17,2010-06-27 10:17,admin,admin,,,
89,83002,764,10572,841,1,0,N,N,N,CP_Drtn,TT_Task,DT_FixedDUR2,RV_OK,TK_NotStart,A10770,backfilling for under ground,,272,0,32,0,0,0,32,0,0,0,,,,2010-09-13 08:00,2010-09-16 16:00,,2010-08-02 08:00,2010-08-05 16:00,2010-08-02 08:00,2010-08-05 16:00,2010-08-02 08:00,2010-08-05 16:00,,2010-09-13 08:00,2010-09-16 16:00,,PT_Normal,,,,,H9Phdvbjo0OkE/BGxJnuzg,7kEvWe46HUiw84mBskQr1Q,,,N,0,0,,,2010-06-27 10:17,2010-06-27 10:17,admin,admin,,,
90,83003,764,10572,841,1,0,N,N,N,CP_Drtn,TT_Task,DT_FixedDUR2,RV_OK,TK_NotStart,A10780,P.C slab on grade 10CM,,344,0,8,0,0,0,8,0,0,0,,,,2010-10-27 08:00,2010-10-27 16:00,,2010-09-05 08:00,2010-09-05 16:00,2010-09-05 08:00,2010-09-05 16:00,2010-09-05 08:00,2010-09-05 16:00,,2010-10-27 08:00,2010-10-27 16:00,,PT_Normal,,,,,dzownN/v806ZqY5ohNkEvw,61SmK7jW40Si60nHqZBPIQ,,,N,0,0,,,2010-06-27 10:17,2010-06-27 10:17,admin,admin,,,
91,83004,764,10572,841,1,0,N,N,N,CP_Drtn,TT_Task,DT_FixedDUR2,RV_OK,TK_NotStart,A10790,moisture insulation with membrane sheets,,344,0,16,0,0,0,16,0,0,0,,,,2010-10-28 08:00,2010-10-30 16:00,,2010-09-06 08:00,2010-09-07 16:00,2010-09-06 08:00,2010-09-07 16:00,2010-09-06 08:00,2010-09-07 16:00,,2010-10-28 08:00,2010-10-30 16:00,,PT_Normal,,,,,8w4GR5i34k26troIfamStw,6X7Oz7l2zEeuVqshoN9Kqw,,,N,0,0,,,2010-06-27 10:17,2010-06-27 10:17,admin,admin,,,
92,83005,764,10572,841,1,0,N,N,N,CP_Drtn,TT_Task,DT_FixedDUR2,RV_OK,TK_NotStart,A10800,R.C slab on grade,,344,0,16,0,0,0,16,0,0,0,,,,2010-10-31 08:00,2010-11-01 16:00,,2010-09-11 08:00,2010-09-12 16:00,2010-09-11 08:00,2010-09-12 16:00,2010-09-11 08:00,2010-09-12 16:00,,2010-10-31 08:00,2010-11-01 16:00,,PT_Normal,,,,,0kMLAbDeqUaHMKCvQtCK1w,eX5CcH33eUC6ONhHnLAyiA,,,N,0,0,,,2010-06-27 10:17,2010-06-27 10:17,admin,admin,,,
93,83006,764,10551,841,1,0,N,N,N,CP_Drtn,TT_Task,DT_FixedDUR2,RV_OK,TK_NotStart,A10810,columns for ground floor,,272,0,48,0,0,0,48,0,0,0,,,,2010-08-30 08:00,2010-09-05 16:00,,2010-07-21 08:00,2010-07-27 16:00,2010-07-21 08:00,2010-07-27 16:00,2010-07-21 08:00,2010-07-27 16:00,,2010-08-30 08:00,2010-09-05 16:00,,PT_Normal,,,,,pQP1o0XVsUicijxIcqGahA,9aP1FaFtwEGKCrsqYw65bQ,,,N,0,0,,,2010-06-27 10:17,2010-06-27 10:17,admin,admin,,,
94,83007,764,10551,841,1,0,N,N,N,CP_Drtn,TT_Task,DT_FixedDUR2,RV_OK,TK_NotStart,A10820,slab for ground floor,,272,0,72,0,0,0,72,0,0,0,,,,2010-09-18 08:00,2010-09-27 16:00,,2010-08-07 08:00,2010-08-16 16:00,2010-08-07 08:00,2010-08-16 16:00,2010-08-07 08:00,2010-08-16 16:00,,2010-09-18 08:00,2010-09-27 16:00,,PT_Normal,,,,,QEI8DZDgl02ASuwerVAoIw,tS+z5Yi8WEq5ZEmUBMsAFg,,,N,0,0,,,2010-06-27 10:17,2010-06-27 10:17,admin,admin,,,
95,83008,764,10551,841,1,0,N,N,N,CP_Drtn,TT_Task,DT_FixedDUR2,RV_OK,TK_NotStart,A10830,columns for 1st floor,,288,0,48,0,0,0,48,0,0,0,,,,2010-10-02 08:00,2010-10-07 16:00,,2010-08-18 08:00,2010-08-24 16:00,2010-08-18 08:00,2010-08-24 16:00,2010-08-18 08:00,2010-08-24 16:00,,2010-10-02 08:00,2010-10-07 16:00,,PT_Normal,,,,,10QbTIRfm0CSSrPA5Q+OrQ,yo+Z+eg7xEm4qThxWgCf0g,,,N,0,0,,,2010-06-27 10:17,2010-06-27 10:17,admin,admin,,,
96,83009,764,10551,841,1,0,N,N,N,CP_Drtn,TT_Task,DT_FixedDUR2,RV_OK,TK_NotStart,A10840,slab for 1st floor,,288,0,72,0,0,0,72,0,0,0,,,,2010-10-09 08:00,2010-10-18 16:00,,2010-08-25 08:00,2010-09-04 16:00,2010-08-25 08:00,2010-09-04 16:00,2010-08-25 08:00,2010-09-04 16:00,,2010-10-09 08:00,2010-10-18 16:00,,PT_Normal,,,,,8Wqq+OBkA0C8n006Ag9adw,owf4tOO85Uq0rios65uxXQ,,,N,0,0,,,2010-06-27 10:17,2010-06-27 10:17,admin,admin,,,
97,83010,764,10551,841,1,0,N,N,N,CP_Drtn,TT_Task,DT_FixedDUR2,RV_OK,TK_NotStart,A10850,columns for roof floor,,288,0,32,0,0,0,32,0,0,0,,,,2010-10-23 08:00,2010-10-26 16:00,,2010-09-11 08:00,2010-09-14 16:00,2010-09-11 08:00,2010-09-14 16:00,2010-09-11 08:00,2010-09-14 16:00,,2010-10-23 08:00,2010-10-26 16:00,,PT_Normal,,,,,EVjPeuSPuk6liYIGKVEEWg,HgE48giV2UiW4eTQ+lqbrA,,,N,0,0,,,2010-06-27 10:17,2010-06-27 10:17,admin,admin,,,
98,83011,764,10551,841,1,0,N,N,N,CP_Drtn,TT_Task,DT_FixedDUR2,RV_OK,TK_NotStart,A10860,slab for roof floor,,288,0,48,0,0,0,48,0,0,0,,,,2010-10-27 08:00,2010-11-02 16:00,,2010-09-15 08:00,2010-09-21 16:00,2010-09-15 08:00,2010-09-21 16:00,2010-09-15 08:00,2010-09-21 16:00,,2010-10-27 08:00,2010-11-02 16:00,,PT_Normal,,,,,cJDGQjjCW0K/oGGDVqbrIw,defMwlsnck6AbXQIdM7TPA,,,N,0,0,,,2010-06-27 10:17,2010-06-27 10:17,admin,admin,,,
99,83012,764,10551,841,1,0,N,N,N,CP_Drtn,TT_Task,DT_FixedDUR2,RV_OK,TK_NotStart,A10870,Brick works for ground floor,,344,0,40,0,0,0,40,0,0,0,,,,2010-10-21 08:00,2010-10-26 16:00,,2010-08-30 08:00,2010-09-04 16:00,2010-08-30 08:00,2010-09-04 16:00,2010-08-30 08:00,2010-09-04 16:00,,2010-10-21 08:00,2010-10-26 16:00,,PT_Normal,,,,,qXnxIAnAwE2AjFTYtNSC8g,cvyWtBlCK0W0e0vdXHznpQ,,,N,0,0,,,2010-06-27 10:17,2010-06-27 10:17,admin,admin,,,
100,83013,764,10543,841,1,0,N,N,N,CP_Drtn,TT_Task,DT_FixedDrtn,RV_OK,TK_NotStart,A10880,electrical conduits for ground floor's slab,,280,8,16,0,0,0,16,0,0,0,,,,2010-09-23 08:00,2010-09-25 16:00,,2010-08-11 08:00,2010-08-12 16:00,2010-08-11 08:00,2010-08-12 16:00,2010-08-11 08:00,2010-08-12 16:00,,2010-09-23 08:00,2010-09-25 16:00,,PT_Normal,,,,,Zhaxlj2pbU6TaFdDeAaJjg,OrXdWNZtl0OZY55AMylxJg,,,N,0,0,,,2010-06-27 10:17,2010-06-27 10:17,admin,admin,,,
101,83014,764,10543,841,1,0,N,N,N,CP_Drtn,TT_Task,DT_FixedDrtn,RV_OK,TK_NotStart,A10890,electrical conduits for 1st floor slab,,296,8,16,0,0,0,16,0,0,0,,,,2010-10-14 08:00,2010-10-16 16:00,,2010-08-30 08:00,2010-08-31 16:00,2010-08-30 08:00,2010-08-31 16:00,2010-08-30 08:00,2010-08-31 16:00,,2010-10-14 08:00,2010-10-16 16:00,,PT_Normal,,,,,vp+lw+ZX30aU/cte6Xpiqg,+JDL9IKxcEKBrOR8TdasKQ,,,N,0,0,,,2010-06-27 10:17,2010-06-27 10:17,admin,admin,,,
102,83015,764,10543,841,1,0,N,N,N,CP_Drtn,TT_Task,DT_FixedDrtn,RV_OK,TK_NotStart,A10900,electrical conduits for roof slab,,296,8,8,0,0,0,8,0,0,0,,,,2010-11-01 08:00,2010-11-01 16:00,,2010-09-19 08:00,2010-09-19 16:00,2010-09-19 08:00,2010-09-19 16:00,2010-09-19 08:00,2010-09-19 16:00,,2010-11-01 08:00,2010-11-01 16:00,,PT_Normal,,,,,l2XrWI7K3EuVyEcdCoKV9Q,pUUq0IoVCEaub0BBrdx4Hg,,,N,0,0,,,2010-06-27 10:17,2010-06-27 10:17,admin,admin,,,
103,83016,764,10539,841,1,0,N,N,N,CP_Drtn,TT_Task,DT_FixedDUR2,RV_OK,TK_NotStart,A10910,Internal plastering for ground floor,,344,16,64,0,0,0,64,0,0,0,,,,2010-11-06 08:00,2010-11-14 16:00,,2010-09-16 08:00,2010-09-25 16:00,2010-09-16 08:00,2010-09-25 16:00,2010-09-16 08:00,2010-09-25 16:00,,2010-11-06 08:00,2010-11-14 16:00,,PT_Normal,,,,,g9kdwIjJHU2fh5UMixMVYw,QdKggyZ6WUeyAO/NjKV3Vw,,,N,0,0,,,2010-06-27 10:17,2010-06-27 10:17,admin,admin,,,
104,83017,764,10539,841,1,0,N,N,N,CP_Drtn,TT_Task,DT_FixedDUR2,RV_OK,TK_NotStart,A10920,External plastering,,256,0,80,0,0,0,80,0,0,0,,,,2010-11-20 08:00,2010-11-30 16:00,,2010-10-09 08:00,2010-10-19 16:00,2010-10-09 08:00,2010-10-19 16:00,2010-10-09 08:00,2010-10-19 16:00,,2010-11-20 08:00,2010-11-30 16:00,,PT_Normal,,,,,b5w77Uj34UuaoPZWrN3Ceg,DN7tDjiGbkixKIdQKzK5TA,,,N,0,0,,,2010-06-27 10:17,2010-06-27 10:17,admin,admin,,,
105,83018,764,10543,841,1,0,N,N,N,CP_Drtn,TT_Task,DT_FixedDrtn,RV_OK,TK_NotStart,A10930,plumbing connections under slab on grade,,528,184,16,0,0,0,16,0,0,0,,,,2010-10-25 08:00,2010-10-26 16:00,,2010-08-07 08:00,2010-08-08 16:00,2010-08-07 08:00,2010-08-08 16:00,2010-08-07 08:00,2010-08-08 16:00,,2010-10-25 08:00,2010-10-26 16:00,,PT_Normal,,,,,kV0S57ymA0SWNwuPufnCMg,CxI1lM/cW0GhkyUl7ZEUrA,,,N,0,0,,,2010-06-27 10:17,2010-06-27 10:17,admin,admin,,,
106,83019,764,10570,841,0,0,N,N,N,CP_Drtn,TT_Mile,DT_FixedDrtn,RV_OK,TK_NotStart,A10940,Start Villa construction,,272,0,0,0,0,0,0,0,0,0,,,,2010-07-31 08:00,2010-07-31 08:00,,2010-06-21 08:00,2010-06-21 08:00,2010-06-21 08:00,2010-06-21 08:00,2010-06-21 08:00,2010-06-21 08:00,,2010-07-31 08:00,2010-07-31 08:00,,PT_Normal,,,,,KkvWXdE31UeheEZ59sPtvQ,T4JEiXOUZkyy5FfAz16NHQ,,,N,0,0,,,2010-06-27 10:17,2010-06-27 10:17,admin,admin,,,
107,83020,764,10570,841,0,0,N,N,N,CP_Drtn,TT_FinMile,DT_FixedDrtn,RV_OK,TK_NotStart,A10950,finish Villa construction,,256,256,0,0,0,0,0,0,0,0,,,,2010-11-30 16:00,2010-11-30 16:00,,2010-10-19 16:00,2010-10-19 16:00,2010-10-19 16:00,2010-10-19 16:00,2010-10-19 16:00,2010-10-19 16:00,,2010-11-30 16:00,2010-11-30 16:00,,PT_Normal,,,,,Pz63Rw4eVE2PX85WeOeudw,e8WIaj6UlUy8nMjdblzVUA,,,N,0,0,,,2010-06-27 10:17,2010-06-27 10:17,admin,admin,,,
108,83021,764,10570,841,0,0,N,N,N,CP_Drtn,TT_Mile,DT_FixedDrtn,RV_OK,TK_NotStart,A10960,IFC drawings,,272,0,0,0,0,0,0,0,0,0,,,,2010-07-31 08:00,2010-07-31 08:00,,2010-06-21 08:00,2010-06-21 08:00,2010-06-21 08:00,2010-06-21 08:00,2010-06-21 08:00,2010-06-21 08:00,,2010-07-31 08:00,2010-07-31 08:00,,PT_Normal,,,,,nK2ZObyTUEOs2D0xsNLaeA,z1W7JUGPbEewTErNPmeSGg,,,N,0,0,,,2010-06-27 10:17,2010-06-27 10:17,admin,admin,,,
109,83022,764,10551,841,1,0,N,N,N,CP_Drtn,TT_Task,DT_FixedDUR2,RV_OK,TK_NotStart,A10970,pouring for ground floor's slab,,272,0,8,0,0,0,8,0,0,0,,,,2010-09-28 08:00,2010-09-28 16:00,,2010-08-17 08:00,2010-08-17 16:00,2010-08-17 08:00,2010-08-17 16:00,2010-08-17 08:00,2010-08-17 16:00,,2010-09-28 08:00,2010-09-28 16:00,,PT_Normal,,,,,4ZyB8cn9xkSsOIRFeYuIHw,d+pE6uDpI0aqjIUksHl20Q,,,N,0,0,,,2010-06-27 10:17,2010-06-27 10:17,admin,admin,,,
110,83023,764,10551,841,1,0,N,N,N,CP_Drtn,TT_Task,DT_FixedDUR2,RV_OK,TK_NotStart,A10980,pouring for 1st floor's slab,,288,0,8,0,0,0,8,0,0,0,,,,2010-10-19 08:00,2010-10-19 16:00,,2010-09-05 08:00,2010-09-05 16:00,2010-09-05 08:00,2010-09-05 16:00,2010-09-05 08:00,2010-09-05 16:00,,2010-10-19 08:00,2010-10-19 16:00,,PT_Normal,,,,,N0v9vl1OVUmo/+Qb75kyUQ,W6PMa66IPkyD6PvSN0rfxQ,,,N,0,0,,,2010-06-27 10:17,2010-06-27 10:17,admin,admin,,,
111,83024,764,10551,841,1,0,N,N,N,CP_Drtn,TT_Task,DT_FixedDUR2,RV_OK,TK_NotStart,A10990,pouring for roof floor's slab,,288,0,8,0,0,0,8,0,0,0,,,,2010-11-03 08:00,2010-11-03 16:00,,2010-09-22 08:00,2010-09-22 16:00,2010-09-22 08:00,2010-09-22 16:00,2010-09-22 08:00,2010-09-22 16:00,,2010-11-03 08:00,2010-11-03 16:00,,PT_Normal,,,,,AhD73pPMoE+Km2/SjAy6QA,MJW+EYrZo0SMGsBq72ETyQ,,,N,0,0,,,2010-06-27 10:17,2010-06-27 10:17,admin,admin,,,
112,83025,764,10551,841,1,0,N,N,N,CP_Drtn,TT_Task,DT_FixedDrtn,RV_OK,TK_NotStart,A11000,Fence work,,272,16,400,0,0,0,400,0,0,0,,,,2010-09-29 08:00,2010-11-30 16:00,,2010-08-18 08:00,2010-10-17 16:00,2010-08-18 08:00,2010-10-17 16:00,2010-08-18 08:00,2010-10-17 16:00,,2010-09-29 08:00,2010-11-30 16:00,,PT_Normal,,,,,s3gdtbs/2UeQj65AAC9fgg,aUeUwqlKaE+KE93jRojYqw,,,N,0,0,,,2010-06-27 10:17,2010-06-27 10:17,admin,admin,,,
113,83026,764,10570,841,1,0,N,N,N,CP_Drtn,TT_Task,DT_FixedDUR2,RV_OK,TK_NotStart,A11010,Fence Drawings IFC,,584,312,8,0,0,0,8,0,0,0,,,,2010-09-16 08:00,2010-09-16 16:00,,2010-06-21 08:00,2010-06-21 16:00,2010-06-21 08:00,2010-06-21 16:00,2010-06-21 08:00,2010-06-21 16:00,,2010-09-16 08:00,2010-09-16 16:00,,PT_Normal,,,,,SWlmwi5gV0OJiKxL+lXrjA,zoynR0gg60utPV7M3IOHZw,,,N,0,0,,,2010-06-27 10:17,2010-06-27 10:17,admin,admin,,,
114,83027,764,10572,849,1,0,N,N,N,CP_Drtn,TT_Task,DT_FixedDUR2,RV_OK,TK_NotStart,A11020,backfilling between P.C Foundation,,272,0,16,0,0,0,16,0,0,0,,,,2010-08-18 08:00,2010-08-19 16:00,,2010-07-10 08:00,2010-07-11 16:00,2010-07-10 08:00,2010-07-11 16:00,2010-07-10 08:00,2010-07-11 16:00,,2010-08-18 08:00,2010-08-19 16:00,,PT_Normal,,,,,XoZnBsxqcUWZYVokcOfmfQ,d/rJUJlEcUepPD+8r6GhXQ,,,N,0,0,,,2010-06-27 10:17,2010-06-27 10:17,admin,admin,,,
115,83028,764,10572,849,1,0,N,N,N,CP_Drtn,TT_Task,DT_FixedDUR2,RV_OK,TK_NotStart,A11030,P.C Under Smells,,272,0,8,0,0,0,8,0,0,0,,,,2010-08-21 08:00,2010-08-21 16:00,,2010-07-12 08:00,2010-07-12 16:00,2010-07-12 08:00,2010-07-12 16:00,2010-07-12 08:00,2010-07-12 16:00,,2010-08-21 08:00,2010-08-21 16:00,,PT_Normal,,,,,/ae6N74HhUWEWEHy9oUqOA,kIrwTfGLQE+JkPCpHjQvUw,,,N,0,0,,,2010-06-27 10:17,2010-06-27 10:17,admin,admin,,,
116,83029,764,10551,849,1,0,N,N,N,CP_Drtn,TT_Task,DT_FixedDUR2,RV_OK,TK_NotStart,A11040,Brick works for 1st floor,,336,0,40,0,0,0,40,0,0,0,,,,2010-11-08 08:00,2010-11-13 16:00,,2010-09-20 08:00,2010-09-25 16:00,2010-09-20 08:00,2010-09-25 16:00,2010-09-20 08:00,2010-09-25 16:00,,2010-11-08 08:00,2010-11-13 16:00,,PT_Normal,,,,,ICgBr3TEzkW6eksCBbwkHQ,+72wrztbN06fZr4b5vVfRg,,,N,0,0,,,2010-06-27 10:17,2010-06-27 10:17,admin,admin,,,
117,83030,764,10551,849,1,0,N,N,N,CP_Drtn,TT_Task,DT_FixedDUR2,RV_OK,TK_NotStart,A11050,Brick works for roof floor,,288,0,40,0,0,0,40,0,0,0,,,,2010-11-14 08:00,2010-11-18 16:00,,2010-10-03 08:00,2010-10-07 16:00,2010-10-03 08:00,2010-10-07 16:00,2010-10-03 08:00,2010-10-07 16:00,,2010-11-14 08:00,2010-11-18 16:00,,PT_Normal,,,,,2RmIGaqEJ0eYKwub1/ZEkA,bs7T4beOzkCzbumz1QouDQ,,,N,0,0,,,2010-06-27 10:17,2010-06-27 10:17,admin,admin,,,
118,83031,764,10539,849,1,0,N,N,N,CP_Drtn,TT_Task,DT_FixedDUR2,RV_OK,TK_NotStart,A11060,Internal plastering for 1st floor,,336,24,64,0,0,0,64,0,0,0,,,,2010-11-16 08:00,2010-11-24 16:00,,2010-09-28 08:00,2010-10-06 16:00,2010-09-28 08:00,2010-10-06 16:00,2010-09-28 08:00,2010-10-06 16:00,,2010-11-16 08:00,2010-11-24 16:00,,PT_Normal,,,,,kSPlpwW82USIppLfg4y3gA,l0fCeYdsdkOHYGYBwsRCXw,,,N,0,0,,,2010-06-27 10:17,2010-06-27 10:17,admin,admin,,,
119,83032,764,10539,849,1,0,N,N,N,CP_Drtn,TT_Task,DT_FixedDUR2,RV_OK,TK_NotStart,A11070,Internal plastering for roof floor,,312,24,40,0,0,0,40,0,0,0,,,,2010-11-25 08:00,2010-11-30 16:00,,2010-10-11 08:00,2010-10-16 16:00,2010-10-11 08:00,2010-10-16 16:00,2010-10-11 08:00,2010-10-16 16:00,,2010-11-25 08:00,2010-11-30 16:00,,PT_Normal,,,,,NPQIcRbqMU6EL1dDrAA0yA,gc+DB8DDOUKEX9/O6RCxOw,,,N,0,0,,,2010-06-27 10:17,2010-06-27 10:17,admin,admin,,,
120,83033,764,10543,849,1,0,N,N,N,CP_Drtn,TT_Task,DT_FixedDUR2,RV_OK,TK_NotStart,A11080,electrical conduits for ground floor walls,,344,0,16,0,0,0,16,0,0,0,,,,2010-11-03 08:00,2010-11-04 16:00,,2010-09-14 08:00,2010-09-15 16:00,2010-09-14 08:00,2010-09-15 16:00,2010-09-14 08:00,2010-09-15 16:00,,2010-11-03 08:00,2010-11-04 16:00,,PT_Normal,,,,,jVAEDf6ObkKuxXzibKqkZg,xbB0JFzG9EOK00Xyosu8Pw,,,N,0,0,,,2010-06-27 10:17,2010-06-27 10:17,admin,admin,,,
121,83034,764,10543,849,1,0,N,N,N,CP_Drtn,TT_Task,DT_FixedDUR2,RV_OK,TK_NotStart,A11090,electrical conduits for 1st floor walls,,336,0,16,0,0,0,16,0,0,0,,,,2010-11-14 08:00,2010-11-15 16:00,,2010-09-26 08:00,2010-09-27 16:00,2010-09-26 08:00,2010-09-27 16:00,2010-09-26 08:00,2010-09-27 16:00,,2010-11-14 08:00,2010-11-15 16:00,,PT_Normal,,,,,EPajpZDD8EyFEhtb7LMylg,Fc+j4qQ5uESO6H1VG+Hc+g,,,N,0,0,,,2010-06-27 10:17,2010-06-27 10:17,admin,admin,,,
122,83035,764,10543,849,1,0,N,N,N,CP_Drtn,TT_Task,DT_FixedDUR2,RV_OK,TK_NotStart,A11100,electrical conduits for roof floor walls,,312,0,16,0,0,0,16,0,0,0,,,,2010-11-23 08:00,2010-11-24 16:00,,2010-10-09 08:00,2010-10-10 16:00,2010-10-09 08:00,2010-10-10 16:00,2010-10-09 08:00,2010-10-10 16:00,,2010-11-23 08:00,2010-11-24 16:00,,PT_Normal,,,,,LD6lNfZUlUqgzIbs3rVQwg,KkpJBMd7fEmLbOurPx9Umw,,,N,0,0,,,2010-06-27 10:17,2010-06-27 10:17,admin,admin,,,
123,83036,764,10578,841,1,0,N,N,N,CP_Drtn,TT_Task,DT_FixedDUR2,RV_OK,TK_NotStart,A11110,excavation,,272,0,0,0,0,0,0,0,0,0,,,,2010-07-31 16:00,2010-07-31 16:00,,2010-06-22 08:00,2010-06-22 08:00,2010-06-22 08:00,2010-06-22 08:00,2010-06-22 08:00,2010-06-22 08:00,,2010-07-31 16:00,2010-07-31 16:00,,PT_Normal,,,,,q/w9kisSO0G7Tg0II7YvJQ,LzN/BNS4PUCITg/1IQe7Og,,,N,0,0,,,2010-06-27 10:17,2010-06-27 10:17,admin,admin,,,
124,83037,764,10578,841,1,0,N,N,N,CP_Drtn,TT_Task,DT_FixedDUR2,RV_OK,TK_NotStart,A11120,soil replacement,,272,0,96,0,0,0,96,0,0,0,,,,2010-08-01 08:00,2010-08-14 16:00,,2010-06-22 08:00,2010-07-05 16:00,2010-06-22 08:00,2010-07-05 16:00,2010-06-22 08:00,2010-07-05 16:00,,2010-08-01 08:00,2010-08-14 16:00,,PT_Normal,,,,,x6a6hZ/ZTkmwn37FetTRpg,afq6vct970CmGDFnGrGoSQ,,,N,0,0,,,2010-06-27 10:17,2010-06-27 10:17,admin,admin,,,
125,83038,764,10579,841,1,0,N,N,N,CP_Drtn,TT_Task,DT_FixedDUR2,RV_OK,TK_NotStart,A11130,Plain Concrete Foundation,,272,0,16,0,0,0,16,0,0,0,,,,2010-08-15 08:00,2010-08-16 16:00,,2010-07-06 08:00,2010-07-07 16:00,2010-07-06 08:00,2010-07-07 16:00,2010-07-06 08:00,2010-07-07 16:00,,2010-08-15 08:00,2010-08-16 16:00,,PT_Normal,,,,,uqVE+MX9m0KQuGCDChieNA,aFrUXlFen02f4oO8X0zCfQ,,,N,0,0,,,2010-06-27 10:17,2010-06-27 10:17,admin,admin,,,
126,83039,764,10579,841,1,0,N,N,N,CP_Drtn,TT_Task,DT_FixedDUR2,RV_OK,TK_NotStart,A11140,Reinforced Concrete Foundation,,272,0,56,0,0,0,56,0,0,0,,,,2010-08-22 08:00,2010-08-29 16:00,,2010-07-13 08:00,2010-07-20 16:00,2010-07-13 08:00,2010-07-20 16:00,2010-07-13 08:00,2010-07-20 16:00,,2010-08-22 08:00,2010-08-29 16:00,,PT_Normal,,,,,fDzTJ9VywU2o6s74PWaD2A,gwXyTukgAEy/wZ/ps8lXrw,,,N,0,0,,,2010-06-27 10:17,2010-06-27 10:17,admin,admin,,,
127,83040,764,10579,841,1,0,N,N,N,CP_Drtn,TT_Task,DT_FixedDUR2,RV_OK,TK_NotStart,A11150,under ground  brick works,,272,0,16,0,0,0,16,0,0,0,,,,2010-09-06 08:00,2010-09-07 16:00,,2010-07-28 08:00,2010-07-29 16:00,2010-07-28 08:00,2010-07-29 16:00,2010-07-28 08:00,2010-07-29 16:00,,2010-09-06 08:00,2010-09-07 16:00,,PT_Normal,,,,,rRxWovm5+kG8rTroK+qKIQ,o6ETLYBWakWrO8qj44I7Iw,,,N,0,0,,,2010-06-27 10:17,2010-06-27 10:17,admin,admin,,,
128,83041,764,10579,841,1,0,N,N,N,CP_Drtn,TT_Task,DT_FixedDUR2,RV_OK,TK_NotStart,A11160,under ground insulation for RC & Brick work,,272,0,16,0,0,0,16,0,0,0,,,,2010-09-11 08:00,2010-09-12 16:00,,2010-07-31 08:00,2010-08-01 16:00,2010-07-31 08:00,2010-08-01 16:00,2010-07-31 08:00,2010-08-01 16:00,,2010-09-11 08:00,2010-09-12 16:00,,PT_Normal,,,,,bpYre7nSbUi8oxJdOBEUvA,z+BOkxKth06MUXVtSBZ+BQ,,,N,0,0,,,2010-06-27 10:17,2010-06-27 10:17,admin,admin,,,
129,83042,764,10579,841,1,0,N,N,N,CP_Drtn,TT_Task,DT_FixedDUR2,RV_OK,TK_NotStart,A11170,backfilling for under ground,,272,0,32,0,0,0,32,0,0,0,,,,2010-09-13 08:00,2010-09-16 16:00,,2010-08-02 08:00,2010-08-05 16:00,2010-08-02 08:00,2010-08-05 16:00,2010-08-02 08:00,2010-08-05 16:00,,2010-09-13 08:00,2010-09-16 16:00,,PT_Normal,,,,,bOc+0rDLLEWfpPCsgMOCHQ,v7+bbYc0BEavBaNGARvWew,,,N,0,0,,,2010-06-27 10:17,2010-06-27 10:17,admin,admin,,,
130,83043,764,10579,841,1,0,N,N,N,CP_Drtn,TT_Task,DT_FixedDUR2,RV_OK,TK_NotStart,A11180,P.C slab on grade 10CM,,344,0,8,0,0,0,8,0,0,0,,,,2010-10-27 08:00,2010-10-27 16:00,,2010-09-05 08:00,2010-09-05 16:00,2010-09-05 08:00,2010-09-05 16:00,2010-09-05 08:00,2010-09-05 16:00,,2010-10-27 08:00,2010-10-27 16:00,,PT_Normal,,,,,yZuTwJAICEusoXvi89F3og,s0XwKtmqgkSH0IgROcXmJA,,,N,0,0,,,2010-06-27 10:17,2010-06-27 10:17,admin,admin,,,
131,83044,764,10579,841,1,0,N,N,N,CP_Drtn,TT_Task,DT_FixedDUR2,RV_OK,TK_NotStart,A11190,moisture insulation with membrane sheets,,344,0,16,0,0,0,16,0,0,0,,,,2010-10-28 08:00,2010-10-30 16:00,,2010-09-06 08:00,2010-09-07 16:00,2010-09-06 08:00,2010-09-07 16:00,2010-09-06 08:00,2010-09-07 16:00,,2010-10-28 08:00,2010-10-30 16:00,,PT_Normal,,,,,k0cJVmKTnUujuPg4IFmyxQ,mGhSMjYnuU2A/r87nm+mNw,,,N,0,0,,,2010-06-27 10:17,2010-06-27 10:17,admin,admin,,,
132,83045,764,10579,841,1,0,N,N,N,CP_Drtn,TT_Task,DT_FixedDUR2,RV_OK,TK_NotStart,A11200,R.C slab on grade,,344,0,16,0,0,0,16,0,0,0,,,,2010-10-31 08:00,2010-11-01 16:00,,2010-09-11 08:00,2010-09-12 16:00,2010-09-11 08:00,2010-09-12 16:00,2010-09-11 08:00,2010-09-12 16:00,,2010-10-31 08:00,2010-11-01 16:00,,PT_Normal,,,,,2OSp/CWp5k2xv5yNj9XelQ,0DdWAs8ZZkyfHtN00DofzQ,,,N,0,0,,,2010-06-27 10:17,2010-06-27 10:17,admin,admin,,,
133,83046,764,10544,841,1,0,N,N,N,CP_Drtn,TT_Task,DT_FixedDUR2,RV_OK,TK_NotStart,A11210,columns for ground floor,,272,0,48,0,0,0,48,0,0,0,,,,2010-08-30 08:00,2010-09-05 16:00,,2010-07-21 08:00,2010-07-27 16:00,2010-07-21 08:00,2010-07-27 16:00,2010-07-21 08:00,2010-07-27 16:00,,2010-08-30 08:00,2010-09-05 16:00,,PT_Normal,,,,,SbSsFuNvGkilZdLYySqB/w,6LCH4iDgGEu2TKOaWbWzdw,,,N,0,0,,,2010-06-27 10:17,2010-06-27 10:17,admin,admin,,,
134,83047,764,10544,841,1,0,N,N,N,CP_Drtn,TT_Task,DT_FixedDUR2,RV_OK,TK_NotStart,A11220,slab for ground floor,,272,0,72,0,0,0,72,0,0,0,,,,2010-09-18 08:00,2010-09-27 16:00,,2010-08-07 08:00,2010-08-16 16:00,2010-08-07 08:00,2010-08-16 16:00,2010-08-07 08:00,2010-08-16 16:00,,2010-09-18 08:00,2010-09-27 16:00,,PT_Normal,,,,,5IAhGH6ZikeyhVlLTboKAQ,Q2vTD/TFNESVC+NCD5CqKw,,,N,0,0,,,2010-06-27 10:17,2010-06-27 10:17,admin,admin,,,
135,83048,764,10544,841,1,0,N,N,N,CP_Drtn,TT_Task,DT_FixedDUR2,RV_OK,TK_NotStart,A11230,columns for 1st floor,,288,0,48,0,0,0,48,0,0,0,,,,2010-10-02 08:00,2010-10-07 16:00,,2010-08-18 08:00,2010-08-24 16:00,2010-08-18 08:00,2010-08-24 16:00,2010-08-18 08:00,2010-08-24 16:00,,2010-10-02 08:00,2010-10-07 16:00,,PT_Normal,,,,,AI1Ea/MlcUWlWfs0flCaNg,THpuqjk0kkK0CDcGqQ7wSQ,,,N,0,0,,,2010-06-27 10:17,2010-06-27 10:17,admin,admin,,,
136,83049,764,10544,841,1,0,N,N,N,CP_Drtn,TT_Task,DT_FixedDUR2,RV_OK,TK_NotStart,A11240,slab for 1st floor,,288,0,72,0,0,0,72,0,0,0,,,,2010-10-09 08:00,2010-10-18 16:00,,2010-08-25 08:00,2010-09-04 16:00,2010-08-25 08:00,2010-09-04 16:00,2010-08-25 08:00,2010-09-04 16:00,,2010-10-09 08:00,2010-10-18 16:00,,PT_Normal,,,,,D1/iLEDfokWw0d8BOMEbjA,ENdJq/V8cEmotYl8OfD16A,,,N,0,0,,,2010-06-27 10:17,2010-06-27 10:17,admin,admin,,,
137,83050,764,10544,841,1,0,N,N,N,CP_Drtn,TT_Task,DT_FixedDUR2,RV_OK,TK_NotStart,A11250,columns for roof floor,,288,0,32,0,0,0,32,0,0,0,,,,2010-10-23 08:00,2010-10-26 16:00,,2010-09-11 08:00,2010-09-14 16:00,2010-09-11 08:00,2010-09-14 16:00,2010-09-11 08:00,2010-09-14 16:00,,2010-10-23 08:00,2010-10-26 16:00,,PT_Normal,,,,,3Fa98IkfEkScmuW2sEz9Jg,d7bHiWzJ2UG2vp9MZtrQkw,,,N,0,0,,,2010-06-27 10:17,2010-06-27 10:17,admin,admin,,,
138,83051,764,10544,841,1,0,N,N,N,CP_Drtn,TT_Task,DT_FixedDUR2,RV_OK,TK_NotStart,A11260,slab for roof floor,,288,0,48,0,0,0,48,0,0,0,,,,2010-10-27 08:00,2010-11-02 16:00,,2010-09-15 08:00,2010-09-21 16:00,2010-09-15 08:00,2010-09-21 16:00,2010-09-15 08:00,2010-09-21 16:00,,2010-10-27 08:00,2010-11-02 16:00,,PT_Normal,,,,,PjpRQCrPdE+a3X+hk1zAgQ,OI5dcq6UjkWYda8ygOdqSg,,,N,0,0,,,2010-06-27 10:17,2010-06-27 10:17,admin,admin,,,
139,83052,764,10544,841,1,0,N,N,N,CP_Drtn,TT_Task,DT_FixedDUR2,RV_OK,TK_NotStart,A11270,Brick works for ground floor,,344,0,40,0,0,0,40,0,0,0,,,,2010-10-21 08:00,2010-10-26 16:00,,2010-08-30 08:00,2010-09-04 16:00,2010-08-30 08:00,2010-09-04 16:00,2010-08-30 08:00,2010-09-04 16:00,,2010-10-21 08:00,2010-10-26 16:00,,PT_Normal,,,,,0R1zZnbOa0qusSZRc0b3ig,/TlfDDIFb0ijYNaTrhijlA,,,N,0,0,,,2010-06-27 10:17,2010-06-27 10:17,admin,admin,,,
140,83053,764,10540,841,1,0,N,N,N,CP_Drtn,TT_Task,DT_FixedDrtn,RV_OK,TK_NotStart,A11280,electrical conduits for ground floor's slab,,280,8,16,0,0,0,16,0,0,0,,,,2010-09-23 08:00,2010-09-25 16:00,,2010-08-11 08:00,2010-08-12 16:00,2010-08-11 08:00,2010-08-12 16:00,2010-08-11 08:00,2010-08-12 16:00,,2010-09-23 08:00,2010-09-25 16:00,,PT_Normal,,,,,HfhDkJwxhk+tfNJ8BOwzdQ,pDFhwm+LH0mVTHiqnPOrDw,,,N,0,0,,,2010-06-27 10:17,2010-06-27 10:17,admin,admin,,,
141,83054,764,10540,841,1,0,N,N,N,CP_Drtn,TT_Task,DT_FixedDrtn,RV_OK,TK_NotStart,A11290,electrical conduits for 1st floor slab,,296,8,16,0,0,0,16,0,0,0,,,,2010-10-14 08:00,2010-10-16 16:00,,2010-08-30 08:00,2010-08-31 16:00,2010-08-30 08:00,2010-08-31 16:00,2010-08-30 08:00,2010-08-31 16:00,,2010-10-14 08:00,2010-10-16 16:00,,PT_Normal,,,,,imDzszXRREGGbB5T8RLLwA,xHIaLSosYEKgb5Cruwa2Jg,,,N,0,0,,,2010-06-27 10:17,2010-06-27 10:17,admin,admin,,,
142,83055,764,10540,841,1,0,N,N,N,CP_Drtn,TT_Task,DT_FixedDrtn,RV_OK,TK_NotStart,A11300,electrical conduits for roof slab,,296,8,8,0,0,0,8,0,0,0,,,,2010-11-01 08:00,2010-11-01 16:00,,2010-09-19 08:00,2010-09-19 16:00,2010-09-19 08:00,2010-09-19 16:00,2010-09-19 08:00,2010-09-19 16:00,,2010-11-01 08:00,2010-11-01 16:00,,PT_Normal,,,,,r0blPzABhU6QJ53cjTNCyQ,srPHi23H/kyt7z4Vw3oQqw,,,N,0,0,,,2010-06-27 10:17,2010-06-27 10:17,admin,admin,,,
143,83056,764,10541,841,1,0,N,N,N,CP_Drtn,TT_Task,DT_FixedDUR2,RV_OK,TK_NotStart,A11310,Internal plastering for ground floor,,344,16,64,0,0,0,64,0,0,0,,,,2010-11-06 08:00,2010-11-14 16:00,,2010-09-16 08:00,2010-09-25 16:00,2010-09-16 08:00,2010-09-25 16:00,2010-09-16 08:00,2010-09-25 16:00,,2010-11-06 08:00,2010-11-14 16:00,,PT_Normal,,,,,+8T45EspvkGDISSxzUQwIw,tbV9EO02WEOjhSyDxsxq0A,,,N,0,0,,,2010-06-27 10:17,2010-06-27 10:17,admin,admin,,,
144,83057,764,10541,841,1,0,N,N,N,CP_Drtn,TT_Task,DT_FixedDUR2,RV_OK,TK_NotStart,A11320,External plastering,,256,0,80,0,0,0,80,0,0,0,,,,2010-11-20 08:00,2010-11-30 16:00,,2010-10-09 08:00,2010-10-19 16:00,2010-10-09 08:00,2010-10-19 16:00,2010-10-09 08:00,2010-10-19 16:00,,2010-11-20 08:00,2010-11-30 16:00,,PT_Normal,,,,,rT4yQGsaO0elATs2Kg7J7A,p8OlSwc/q0qT7E7KAMQ20Q,,,N,0,0,,,2010-06-27 10:17,2010-06-27 10:17,admin,admin,,,
145,83058,764,10540,841,1,0,N,N,N,CP_Drtn,TT_Task,DT_FixedDrtn,RV_OK,TK_NotStart,A11330,plumbing connections under slab on grade,,528,184,16,0,0,0,16,0,0,0,,,,2010-10-25 08:00,2010-10-26 16:00,,2010-08-07 08:00,2010-08-08 16:00,2010-08-07 08:00,2010-08-08 16:00,2010-08-07 08:00,2010-08-08 16:00,,2010-10-25 08:00,2010-10-26 16:00,,PT_Normal,,,,,8uYBsppREUyzQNgC0GJeGg,vo9q/kwtoEiUq2K8g56+zQ,,,N,0,0,,,2010-06-27 10:17,2010-06-27 10:17,admin,admin,,,
146,83059,764,10577,841,0,0,N,N,N,CP_Drtn,TT_Mile,DT_FixedDrtn,RV_OK,TK_NotStart,A11340,Start Villa construction,,272,0,0,0,0,0,0,0,0,0,,,,2010-07-31 08:00,2010-07-31 08:00,,2010-06-21 08:00,2010-06-21 08:00,2010-06-21 08:00,2010-06-21 08:00,2010-06-21 08:00,2010-06-21 08:00,,2010-07-31 08:00,2010-07-31 08:00,,PT_Normal,,,,,rVQXQD5BhUSqUyxlLanFpg,aQdtKNtOX0S+88JBkZQAqQ,,,N,0,0,,,2010-06-27 10:17,2010-06-27 10:17,admin,admin,,,
147,83060,764,10577,841,0,0,N,N,N,CP_Drtn,TT_FinMile,DT_FixedDrtn,RV_OK,TK_NotStart,A11350,finish Villa construction,,256,256,0,0,0,0,0,0,0,0,,,,2010-11-30 16:00,2010-11-30 16:00,,2010-10-19 16:00,2010-10-19 16:00,2010-10-19 16:00,2010-10-19 16:00,2010-10-19 16:00,2010-10-19 16:00,,2010-11-30 16:00,2010-11-30 16:00,,PT_Normal,,,,,n42T5k8I/kqD3khRbbq49w,JDUHU6xTM0iXUWpi7LQ9og,,,N,0,0,,,2010-06-27 10:17,2010-06-27 10:17,admin,admin,,,
148,83061,764,10577,841,0,0,N,N,N,CP_Drtn,TT_Mile,DT_FixedDrtn,RV_OK,TK_NotStart,A11360,IFC drawings,,272,0,0,0,0,0,0,0,0,0,,,,2010-07-31 08:00,2010-07-31 08:00,,2010-06-21 08:00,2010-06-21 08:00,2010-06-21 08:00,2010-06-21 08:00,2010-06-21 08:00,2010-06-21 08:00,,2010-07-31 08:00,2010-07-31 08:00,,PT_Normal,,,,,yoJwEpR6ykWSV32dYQvY3g,Xh+8Zgdc2EWGyuPyyD/dxg,,,N,0,0,,,2010-06-27 10:17,2010-06-27 10:17,admin,admin,,,
149,83062,764,10544,841,1,0,N,N,N,CP_Drtn,TT_Task,DT_FixedDUR2,RV_OK,TK_NotStart,A11370,pouring for ground floor's slab,,272,0,8,0,0,0,8,0,0,0,,,,2010-09-28 08:00,2010-09-28 16:00,,2010-08-17 08:00,2010-08-17 16:00,2010-08-17 08:00,2010-08-17 16:00,2010-08-17 08:00,2010-08-17 16:00,,2010-09-28 08:00,2010-09-28 16:00,,PT_Normal,,,,,6RsBUJI3J0KhI4GeG6HOZA,VZ9ab0ES0UOu8blbKI9a9A,,,N,0,0,,,2010-06-27 10:17,2010-06-27 10:17,admin,admin,,,
150,83063,764,10544,841,1,0,N,N,N,CP_Drtn,TT_Task,DT_FixedDUR2,RV_OK,TK_NotStart,A11380,pouring for 1st floor's slab,,288,0,8,0,0,0,8,0,0,0,,,,2010-10-19 08:00,2010-10-19 16:00,,2010-09-05 08:00,2010-09-05 16:00,2010-09-05 08:00,2010-09-05 16:00,2010-09-05 08:00,2010-09-05 16:00,,2010-10-19 08:00,2010-10-19 16:00,,PT_Normal,,,,,Rxw+Z0E0v0S5RxoaN6SYBA,4C2yP02Jr0uqgH+4KTzg2g,,,N,0,0,,,2010-06-27 10:17,2010-06-27 10:17,admin,admin,,,
151,83064,764,10544,841,1,0,N,N,N,CP_Drtn,TT_Task,DT_FixedDUR2,RV_OK,TK_NotStart,A11390,pouring for roof floor's slab,,288,0,8,0,0,0,8,0,0,0,,,,2010-11-03 08:00,2010-11-03 16:00,,2010-09-22 08:00,2010-09-22 16:00,2010-09-22 08:00,2010-09-22 16:00,2010-09-22 08:00,2010-09-22 16:00,,2010-11-03 08:00,2010-11-03 16:00,,PT_Normal,,,,,XLi+VePeUE6K+u2T6jPZZQ,7B+8QaaWF0W/YJ5664jSPw,,,N,0,0,,,2010-06-27 10:17,2010-06-27 10:17,admin,admin,,,
152,83065,764,10544,841,1,0,N,N,N,CP_Drtn,TT_Task,DT_FixedDrtn,RV_OK,TK_NotStart,A11400,Fence work,,272,16,400,0,0,0,400,0,0,0,,,,2010-09-29 08:00,2010-11-30 16:00,,2010-08-18 08:00,2010-10-17 16:00,2010-08-18 08:00,2010-10-17 16:00,2010-08-18 08:00,2010-10-17 16:00,,2010-09-29 08:00,2010-11-30 16:00,,PT_Normal,,,,,Wzd3328660OvJPbGw3uZeQ,cr9hPNkd/UuLTIs/HOJknQ,,,N,0,0,,,2010-06-27 10:17,2010-06-27 10:17,admin,admin,,,
153,83066,764,10577,841,1,0,N,N,N,CP_Drtn,TT_Task,DT_FixedDUR2,RV_OK,TK_NotStart,A11410,Fence Drawings IFC,,584,312,8,0,0,0,8,0,0,0,,,,2010-09-16 08:00,2010-09-16 16:00,,2010-06-21 08:00,2010-06-21 16:00,2010-06-21 08:00,2010-06-21 16:00,2010-06-21 08:00,2010-06-21 16:00,,2010-09-16 08:00,2010-09-16 16:00,,PT_Normal,,,,,mnGBNxjHw0ekrnBVob5W2A,8Se0kHkWVUeC+3+mRVzVfA,,,N,0,0,,,2010-06-27 10:17,2010-06-27 10:17,admin,admin,,,
154,83067,764,10579,849,1,0,N,N,N,CP_Drtn,TT_Task,DT_FixedDUR2,RV_OK,TK_NotStart,A11420,backfilling between P.C Foundation,,272,0,16,0,0,0,16,0,0,0,,,,2010-08-18 08:00,2010-08-19 16:00,,2010-07-10 08:00,2010-07-11 16:00,2010-07-10 08:00,2010-07-11 16:00,2010-07-10 08:00,2010-07-11 16:00,,2010-08-18 08:00,2010-08-19 16:00,,PT_Normal,,,,,Me4DSsiMMkSTxWEvEJUCuQ,hAWqKnrPW0iP+GH0U9U3+g,,,N,0,0,,,2010-06-27 10:17,2010-06-27 10:17,admin,admin,,,
155,83068,764,10579,849,1,0,N,N,N,CP_Drtn,TT_Task,DT_FixedDUR2,RV_OK,TK_NotStart,A11430,P.C Under Smells,,272,0,8,0,0,0,8,0,0,0,,,,2010-08-21 08:00,2010-08-21 16:00,,2010-07-12 08:00,2010-07-12 16:00,2010-07-12 08:00,2010-07-12 16:00,2010-07-12 08:00,2010-07-12 16:00,,2010-08-21 08:00,2010-08-21 16:00,,PT_Normal,,,,,fKiX0BXTm0uDFTYj5IVnQQ,CFQW4tObJ06P9rU6CT0/fg,,,N,0,0,,,2010-06-27 10:17,2010-06-27 10:17,admin,admin,,,
156,83069,764,10544,849,1,0,N,N,N,CP_Drtn,TT_Task,DT_FixedDUR2,RV_OK,TK_NotStart,A11440,Brick works for 1st floor,,336,0,40,0,0,0,40,0,0,0,,,,2010-11-08 08:00,2010-11-13 16:00,,2010-09-20 08:00,2010-09-25 16:00,2010-09-20 08:00,2010-09-25 16:00,2010-09-20 08:00,2010-09-25 16:00,,2010-11-08 08:00,2010-11-13 16:00,,PT_Normal,,,,,gtOI+JRXEkuhB8CzUW6wYg,t1BpC1I1okuZu9/xVTuHtg,,,N,0,0,,,2010-06-27 10:17,2010-06-27 10:17,admin,admin,,,
157,83070,764,10544,849,1,0,N,N,N,CP_Drtn,TT_Task,DT_FixedDUR2,RV_OK,TK_NotStart,A11450,Brick works for roof floor,,288,0,40,0,0,0,40,0,0,0,,,,2010-11-14 08:00,2010-11-18 16:00,,2010-10-03 08:00,2010-10-07 16:00,2010-10-03 08:00,2010-10-07 16:00,2010-10-03 08:00,2010-10-07 16:00,,2010-11-14 08:00,2010-11-18 16:00,,PT_Normal,,,,,nPx1l7AB5U+uafC6lsVdbA,1+VdaCGsYEmTsgdWbbtGSg,,,N,0,0,,,2010-06-27 10:17,2010-06-27 10:17,admin,admin,,,
158,83071,764,10541,849,1,0,N,N,N,CP_Drtn,TT_Task,DT_FixedDUR2,RV_OK,TK_NotStart,A11460,Internal plastering for 1st floor,,336,24,64,0,0,0,64,0,0,0,,,,2010-11-16 08:00,2010-11-24 16:00,,2010-09-28 08:00,2010-10-06 16:00,2010-09-28 08:00,2010-10-06 16:00,2010-09-28 08:00,2010-10-06 16:00,,2010-11-16 08:00,2010-11-24 16:00,,PT_Normal,,,,,zaHidDCESUmqV0oyl4WVpQ,7X5gWEArgkKNM8MyCjyNew,,,N,0,0,,,2010-06-27 10:17,2010-06-27 10:17,admin,admin,,,
159,83072,764,10541,849,1,0,N,N,N,CP_Drtn,TT_Task,DT_FixedDUR2,RV_OK,TK_NotStart,A11470,Internal plastering for roof floor,,312,24,40,0,0,0,40,0,0,0,,,,2010-11-25 08:00,2010-11-30 16:00,,2010-10-11 08:00,2010-10-16 16:00,2010-10-11 08:00,2010-10-16 16:00,2010-10-11 08:00,2010-10-16 16:00,,2010-11-25 08:00,2010-11-30 16:00,,PT_Normal,,,,,nC0wQ4g8OUKv3Z7mfmvr7A,NZsUs7frCk+Gceqj1oQBRA,,,N,0,0,,,2010-06-27 10:17,2010-06-27 10:17,admin,admin,,,
160,83073,764,10540,849,1,0,N,N,N,CP_Drtn,TT_Task,DT_FixedDUR2,RV_OK,TK_NotStart,A11480,electrical conduits for ground floor walls,,344,0,16,0,0,0,16,0,0,0,,,,2010-11-03 08:00,2010-11-04 16:00,,2010-09-14 08:00,2010-09-15 16:00,2010-09-14 08:00,2010-09-15 16:00,2010-09-14 08:00,2010-09-15 16:00,,2010-11-03 08:00,2010-11-04 16:00,,PT_Normal,,,,,f4l1HS+oWUWhSn9YY9nsNA,7XeBdcmCik2oiAw+6rkjUQ,,,N,0,0,,,2010-06-27 10:17,2010-06-27 10:17,admin,admin,,,
161,83074,764,10540,849,1,0,N,N,N,CP_Drtn,TT_Task,DT_FixedDUR2,RV_OK,TK_NotStart,A11490,electrical conduits for 1st floor walls,,336,0,16,0,0,0,16,0,0,0,,,,2010-11-14 08:00,2010-11-15 16:00,,2010-09-26 08:00,2010-09-27 16:00,2010-09-26 08:00,2010-09-27 16:00,2010-09-26 08:00,2010-09-27 16:00,,2010-11-14 08:00,2010-11-15 16:00,,PT_Normal,,,,,8HfJM7GoSESYYHsVwPDEQg,esf8YibRkE+movPeN0+Yvg,,,N,0,0,,,2010-06-27 10:17,2010-06-27 10:17,admin,admin,,,
162,83075,764,10540,849,1,0,N,N,N,CP_Drtn,TT_Task,DT_FixedDUR2,RV_OK,TK_NotStart,A11500,electrical conduits for roof floor walls,,312,0,16,0,0,0,16,0,0,0,,,,2010-11-23 08:00,2010-11-24 16:00,,2010-10-09 08:00,2010-10-10 16:00,2010-10-09 08:00,2010-10-10 16:00,2010-10-09 08:00,2010-10-10 16:00,,2010-11-23 08:00,2010-11-24 16:00,,PT_Normal,,,,,eAJVCFF2wE26AdMqeg089Q,inJWK8qFzkWqNJZTTUr8tQ,,,N,0,0,,,2010-06-27 10:17,2010-06-27 10:17,admin,admin,,,
163,83076,764,10585,841,1,0,N,N,N,CP_Drtn,TT_Task,DT_FixedDUR2,RV_OK,TK_NotStart,A11510,excavation,,264,0,0,0,0,0,0,0,0,0,,,,2010-07-31 16:00,2010-07-31 16:00,,2010-06-23 08:00,2010-06-23 08:00,2010-06-23 08:00,2010-06-23 08:00,2010-06-23 08:00,2010-06-23 08:00,,2010-07-31 16:00,2010-07-31 16:00,,PT_Normal,,,,,RYFMKKaS8UWE/2n4Gf6VjA,297eDYemqkSUFPtCon8JMw,,,N,0,0,,,2010-06-27 10:17,2010-06-27 10:17,admin,admin,,,
164,83077,764,10585,841,1,0,N,N,N,CP_Drtn,TT_Task,DT_FixedDUR2,RV_OK,TK_NotStart,A11520,soil replacement,,264,0,96,0,0,0,96,0,0,0,,,,2010-08-01 08:00,2010-08-14 16:00,,2010-06-23 08:00,2010-07-06 16:00,2010-06-23 08:00,2010-07-06 16:00,2010-06-23 08:00,2010-07-06 16:00,,2010-08-01 08:00,2010-08-14 16:00,,PT_Normal,,,,,yeY3HLF0bE2JWnPV6vdrsw,YWMslkVVVEuszIM/HQP3VQ,,,N,0,0,,,2010-06-27 10:17,2010-06-27 10:17,admin,admin,,,
165,83078,764,10586,841,1,0,N,N,N,CP_Drtn,TT_Task,DT_FixedDUR2,RV_OK,TK_NotStart,A11530,Plain Concrete Foundation,,264,0,16,0,0,0,16,0,0,0,,,,2010-08-15 08:00,2010-08-16 16:00,,2010-07-07 08:00,2010-07-08 16:00,2010-07-07 08:00,2010-07-08 16:00,2010-07-07 08:00,2010-07-08 16:00,,2010-08-15 08:00,2010-08-16 16:00,,PT_Normal,,,,,W+YzPnGooECAtCFWo2ASgw,0S8e02Y+aEafZg6vTCwNnA,,,N,0,0,,,2010-06-27 10:17,2010-06-27 10:17,admin,admin,,,
166,83079,764,10586,841,1,0,N,N,N,CP_Drtn,TT_Task,DT_FixedDUR2,RV_OK,TK_NotStart,A11540,Reinforced Concrete Foundation,,264,0,56,0,0,0,56,0,0,0,,,,2010-08-22 08:00,2010-08-29 16:00,,2010-07-14 08:00,2010-07-21 16:00,2010-07-14 08:00,2010-07-21 16:00,2010-07-14 08:00,2010-07-21 16:00,,2010-08-22 08:00,2010-08-29 16:00,,PT_Normal,,,,,UoWQ7aKUiEuTQWJdwkpG/Q,bt65tRy9lUmS8CcH/sUuaw,,,N,0,0,,,2010-06-27 10:17,2010-06-27 10:17,admin,admin,,,
167,83080,764,10586,841,1,0,N,N,N,CP_Drtn,TT_Task,DT_FixedDUR2,RV_OK,TK_NotStart,A11550,under ground  brick works,,264,0,16,0,0,0,16,0,0,0,,,,2010-09-06 08:00,2010-09-07 16:00,,2010-07-29 08:00,2010-07-31 16:00,2010-07-29 08:00,2010-07-31 16:00,2010-07-29 08:00,2010-07-31 16:00,,2010-09-06 08:00,2010-09-07 16:00,,PT_Normal,,,,,JjxpNGxkRUmFMI5qDQmg/A,whLHlPIV0km4Dg1UGr/Jbw,,,N,0,0,,,2010-06-27 10:17,2010-06-27 10:17,admin,admin,,,
168,83081,764,10586,841,1,0,N,N,N,CP_Drtn,TT_Task,DT_FixedDUR2,RV_OK,TK_NotStart,A11560,under ground insulation for RC & Brick work,,264,0,16,0,0,0,16,0,0,0,,,,2010-09-11 08:00,2010-09-12 16:00,,2010-08-01 08:00,2010-08-02 16:00,2010-08-01 08:00,2010-08-02 16:00,2010-08-01 08:00,2010-08-02 16:00,,2010-09-11 08:00,2010-09-12 16:00,,PT_Normal,,,,,B1Kaa+peEkyi+11D2ZExDA,FsXPG3rPpU6Y/oNMUWKt6Q,,,N,0,0,,,2010-06-27 10:17,2010-06-27 10:17,admin,admin,,,
169,83082,764,10586,841,1,0,N,N,N,CP_Drtn,TT_Task,DT_FixedDUR2,RV_OK,TK_NotStart,A11570,backfilling for under ground,,264,0,32,0,0,0,32,0,0,0,,,,2010-09-13 08:00,2010-09-16 16:00,,2010-08-03 08:00,2010-08-07 16:00,2010-08-03 08:00,2010-08-07 16:00,2010-08-03 08:00,2010-08-07 16:00,,2010-09-13 08:00,2010-09-16 16:00,,PT_Normal,,,,,vxpXmwBb6EevyziQdzL/TQ,hstk5qXh0UuGlAGFG2oXcA,,,N,0,0,,,2010-06-27 10:17,2010-06-27 10:17,admin,admin,,,
170,83083,764,10586,841,1,0,N,N,N,CP_Drtn,TT_Task,DT_FixedDUR2,RV_OK,TK_NotStart,A11580,P.C slab on grade 10CM,,336,0,8,0,0,0,8,0,0,0,,,,2010-10-27 08:00,2010-10-27 16:00,,2010-09-06 08:00,2010-09-06 16:00,2010-09-06 08:00,2010-09-06 16:00,2010-09-06 08:00,2010-09-06 16:00,,2010-10-27 08:00,2010-10-27 16:00,,PT_Normal,,,,,XNKaJIjubE2EwoVGaXcDMA,j+N/cSckvEm3BLKxwrRbEw,,,N,0,0,,,2010-06-27 10:17,2010-06-27 10:17,admin,admin,,,
171,83084,764,10586,841,1,0,N,N,N,CP_Drtn,TT_Task,DT_FixedDUR2,RV_OK,TK_NotStart,A11590,moisture insulation with membrane sheets,,336,0,16,0,0,0,16,0,0,0,,,,2010-10-28 08:00,2010-10-30 16:00,,2010-09-07 08:00,2010-09-11 16:00,2010-09-07 08:00,2010-09-11 16:00,2010-09-07 08:00,2010-09-11 16:00,,2010-10-28 08:00,2010-10-30 16:00,,PT_Normal,,,,,rLjJjfa+sk+WpGmGoyI8Jw,/gnNqtbKUEWYTf8xhaO2Pw,,,N,0,0,,,2010-06-27 10:17,2010-06-27 10:17,admin,admin,,,
172,83085,764,10586,841,1,0,N,N,N,CP_Drtn,TT_Task,DT_FixedDUR2,RV_OK,TK_NotStart,A11600,R.C slab on grade,,336,0,16,0,0,0,16,0,0,0,,,,2010-10-31 08:00,2010-11-01 16:00,,2010-09-12 08:00,2010-09-13 16:00,2010-09-12 08:00,2010-09-13 16:00,2010-09-12 08:00,2010-09-13 16:00,,2010-10-31 08:00,2010-11-01 16:00,,PT_Normal,,,,,pQscUg6ltU+Scz0EZ12SVg,Aj50L02maUuvpjl7VNRnLQ,,,N,0,0,,,2010-06-27 10:17,2010-06-27 10:17,admin,admin,,,
173,83086,764,10546,841,1,0,N,N,N,CP_Drtn,TT_Task,DT_FixedDUR2,RV_OK,TK_NotStart,A11610,columns for ground floor,,264,0,48,0,0,0,48,0,0,0,,,,2010-08-30 08:00,2010-09-05 16:00,,2010-07-22 08:00,2010-07-28 16:00,2010-07-22 08:00,2010-07-28 16:00,2010-07-22 08:00,2010-07-28 16:00,,2010-08-30 08:00,2010-09-05 16:00,,PT_Normal,,,,,PzvNkgouD0+VfPDrChmTvw,tRut1XpHnkm8jNi+g48BCA,,,N,0,0,,,2010-06-27 10:17,2010-06-27 10:17,admin,admin,,,
174,83087,764,10546,841,1,0,N,N,N,CP_Drtn,TT_Task,DT_FixedDUR2,RV_OK,TK_NotStart,A11620,slab for ground floor,,264,0,72,0,0,0,72,0,0,0,,,,2010-09-18 08:00,2010-09-27 16:00,,2010-08-08 08:00,2010-08-17 16:00,2010-08-08 08:00,2010-08-17 16:00,2010-08-08 08:00,2010-08-17 16:00,,2010-09-18 08:00,2010-09-27 16:00,,PT_Normal,,,,,4PkYGT2CVUKbqUs+TBkxCg,qD2MbKanS0yJWIb0dqOSCA,,,N,0,0,,,2010-06-27 10:17,2010-06-27 10:17,admin,admin,,,
175,83088,764,10546,841,1,0,N,N,N,CP_Drtn,TT_Task,DT_FixedDUR2,RV_OK,TK_NotStart,A11630,columns for 1st floor,,280,0,48,0,0,0,48,0,0,0,,,,2010-10-02 08:00,2010-10-07 16:00,,2010-08-19 08:00,2010-08-25 16:00,2010-08-19 08:00,2010-08-25 16:00,2010-08-19 08:00,2010-08-25 16:00,,2010-10-02 08:00,2010-10-07 16:00,,PT_Normal,,,,,N2+tDV/8SUKD/LTq65adAA,jeyrWKiRtEmZDmIh1fy6rg,,,N,0,0,,,2010-06-27 10:17,2010-06-27 10:17,admin,admin,,,
176,83089,764,10546,841,1,0,N,N,N,CP_Drtn,TT_Task,DT_FixedDUR2,RV_OK,TK_NotStart,A11640,slab for 1st floor,,280,0,72,0,0,0,72,0,0,0,,,,2010-10-09 08:00,2010-10-18 16:00,,2010-08-26 08:00,2010-09-05 16:00,2010-08-26 08:00,2010-09-05 16:00,2010-08-26 08:00,2010-09-05 16:00,,2010-10-09 08:00,2010-10-18 16:00,,PT_Normal,,,,,Wo/rq3Vbv0ypvtrVGmCIuA,lgr7vmg+UEWVcQWtqXXLww,,,N,0,0,,,2010-06-27 10:17,2010-06-27 10:17,admin,admin,,,
177,83090,764,10546,841,1,0,N,N,N,CP_Drtn,TT_Task,DT_FixedDUR2,RV_OK,TK_NotStart,A11650,columns for roof floor,,280,0,32,0,0,0,32,0,0,0,,,,2010-10-23 08:00,2010-10-26 16:00,,2010-09-12 08:00,2010-09-15 16:00,2010-09-12 08:00,2010-09-15 16:00,2010-09-12 08:00,2010-09-15 16:00,,2010-10-23 08:00,2010-10-26 16:00,,PT_Normal,,,,,MzeHS+ku7kCRgJPhOPL3vA,IZkzKIhxiEOQKIJ3wSYVkA,,,N,0,0,,,2010-06-27 10:17,2010-06-27 10:17,admin,admin,,,
178,83091,764,10546,841,1,0,N,N,N,CP_Drtn,TT_Task,DT_FixedDUR2,RV_OK,TK_NotStart,A11660,slab for roof floor,,280,0,48,0,0,0,48,0,0,0,,,,2010-10-27 08:00,2010-11-02 16:00,,2010-09-16 08:00,2010-09-22 16:00,2010-09-16 08:00,2010-09-22 16:00,2010-09-16 08:00,2010-09-22 16:00,,2010-10-27 08:00,2010-11-02 16:00,,PT_Normal,,,,,jHqBf11vQEOC4+v4igdpiw,gi6cI0FAK0aaFVb7i0uLpw,,,N,0,0,,,2010-06-27 10:17,2010-06-27 10:17,admin,admin,,,
179,83092,764,10546,841,1,0,N,N,N,CP_Drtn,TT_Task,DT_FixedDUR2,RV_OK,TK_NotStart,A11670,Brick works for ground floor,,336,0,40,0,0,0,40,0,0,0,,,,2010-10-21 08:00,2010-10-26 16:00,,2010-08-31 08:00,2010-09-05 16:00,2010-08-31 08:00,2010-09-05 16:00,2010-08-31 08:00,2010-09-05 16:00,,2010-10-21 08:00,2010-10-26 16:00,,PT_Normal,,,,,Q8MNfFHuQ0iFlMup/jQGGA,pzE18glC0UC7nv2hTF4Yhw,,,N,0,0,,,2010-06-27 10:17,2010-06-27 10:17,admin,admin,,,
180,83093,764,10547,841,1,0,N,N,N,CP_Drtn,TT_Task,DT_FixedDrtn,RV_OK,TK_NotStart,A11680,electrical conduits for ground floor's slab,,272,8,16,0,0,0,16,0,0,0,,,,2010-09-23 08:00,2010-09-25 16:00,,2010-08-12 08:00,2010-08-14 16:00,2010-08-12 08:00,2010-08-14 16:00,2010-08-12 08:00,2010-08-14 16:00,,2010-09-23 08:00,2010-09-25 16:00,,PT_Normal,,,,,fzx2rRW5S0m5Bp/YFDzmQg,aaSMphoBjEaRIn2uF4ZuYQ,,,N,0,0,,,2010-06-27 10:17,2010-06-27 10:17,admin,admin,,,
181,83094,764,10547,841,1,0,N,N,N,CP_Drtn,TT_Task,DT_FixedDrtn,RV_OK,TK_NotStart,A11690,electrical conduits for 1st floor slab,,288,8,16,0,0,0,16,0,0,0,,,,2010-10-14 08:00,2010-10-16 16:00,,2010-08-31 08:00,2010-09-01 16:00,2010-08-31 08:00,2010-09-01 16:00,2010-08-31 08:00,2010-09-01 16:00,,2010-10-14 08:00,2010-10-16 16:00,,PT_Normal,,,,,96xeQiblXkaBXPrs6sdjsw,BN0guBs3AEuT0chM2zqoAQ,,,N,0,0,,,2010-06-27 10:17,2010-06-27 10:17,admin,admin,,,
182,83095,764,10547,841,1,0,N,N,N,CP_Drtn,TT_Task,DT_FixedDrtn,RV_OK,TK_NotStart,A11700,electrical conduits for roof slab,,288,8,8,0,0,0,8,0,0,0,,,,2010-11-01 08:00,2010-11-01 16:00,,2010-09-20 08:00,2010-09-20 16:00,2010-09-20 08:00,2010-09-20 16:00,2010-09-20 08:00,2010-09-20 16:00,,2010-11-01 08:00,2010-11-01 16:00,,PT_Normal,,,,,dOSmfG4iBUG9qvjAdnfnOA,5KSaF2DreEiZdh3smHFZ5w,,,N,0,0,,,2010-06-27 10:17,2010-06-27 10:17,admin,admin,,,
183,83096,764,10548,841,1,0,N,N,N,CP_Drtn,TT_Task,DT_FixedDUR2,RV_OK,TK_NotStart,A11710,Internal plastering for ground floor,,336,16,64,0,0,0,64,0,0,0,,,,2010-11-06 08:00,2010-11-14 16:00,,2010-09-18 08:00,2010-09-26 16:00,2010-09-18 08:00,2010-09-26 16:00,2010-09-18 08:00,2010-09-26 16:00,,2010-11-06 08:00,2010-11-14 16:00,,PT_Normal,,,,,XOXqhQFNz0ytNQ9w6jSPzw,zVTPrTjUJU6X3IjFZnYe5w,,,N,0,0,,,2010-06-27 10:17,2010-06-27 10:17,admin,admin,,,
184,83097,764,10548,841,1,0,N,N,N,CP_Drtn,TT_Task,DT_FixedDUR2,RV_OK,TK_NotStart,A11720,External plastering,,248,0,80,0,0,0,80,0,0,0,,,,2010-11-20 08:00,2010-11-30 16:00,,2010-10-10 08:00,2010-10-20 16:00,2010-10-10 08:00,2010-10-20 16:00,2010-10-10 08:00,2010-10-20 16:00,,2010-11-20 08:00,2010-11-30 16:00,,PT_Normal,,,,,TI+2v2NpukSQZYvKQX0XBw,IzBMDf1480e1DUVsMtlqJw,,,N,0,0,,,2010-06-27 10:17,2010-06-27 10:17,admin,admin,,,
185,83098,764,10547,841,1,0,N,N,N,CP_Drtn,TT_Task,DT_FixedDrtn,RV_OK,TK_NotStart,A11730,plumbing connections under slab on grade,,520,184,16,0,0,0,16,0,0,0,,,,2010-10-25 08:00,2010-10-26 16:00,,2010-08-08 08:00,2010-08-09 16:00,2010-08-08 08:00,2010-08-09 16:00,2010-08-08 08:00,2010-08-09 16:00,,2010-10-25 08:00,2010-10-26 16:00,,PT_Normal,,,,,dWsGONXJk026F0WGDTIO/Q,Q1WuR5VSsU66rlwdKDG+Sw,,,N,0,0,,,2010-06-27 10:17,2010-06-27 10:17,admin,admin,,,
186,83099,764,10584,841,0,0,N,N,N,CP_Drtn,TT_Mile,DT_FixedDrtn,RV_OK,TK_NotStart,A11740,Start Villa construction,,264,0,0,0,0,0,0,0,0,0,,,,2010-07-29 08:00,2010-07-29 08:00,,2010-06-21 08:00,2010-06-21 08:00,2010-06-21 08:00,2010-06-21 08:00,2010-06-21 08:00,2010-06-21 08:00,,2010-07-29 08:00,2010-07-29 08:00,,PT_Normal,,,,,bIqwfliyh0aJPJGxHS9h+w,Qkc3WYTcP0ipHTdzaTOA/g,,,N,0,0,,,2010-06-27 10:17,2010-06-27 10:17,admin,admin,,,
187,83100,764,10584,841,0,0,N,N,N,CP_Drtn,TT_FinMile,DT_FixedDrtn,RV_OK,TK_NotStart,A11750,finish Villa construction,,248,248,0,0,0,0,0,0,0,0,,,,2010-11-30 16:00,2010-11-30 16:00,,2010-10-20 16:00,2010-10-20 16:00,2010-10-20 16:00,2010-10-20 16:00,2010-10-20 16:00,2010-10-20 16:00,,2010-11-30 16:00,2010-11-30 16:00,,PT_Normal,,,,,gGD0/f7NG02BjBtqIOXljw,WifAFoBfR0STJnega25blQ,,,N,0,0,,,2010-06-27 10:17,2010-06-27 10:17,admin,admin,,,
188,83101,764,10584,841,0,0,N,N,N,CP_Drtn,TT_Mile,DT_FixedDrtn,RV_OK,TK_NotStart,A11760,IFC drawings,,264,0,0,0,0,0,0,0,0,0,,,,2010-07-29 08:00,2010-07-29 08:00,,2010-06-21 08:00,2010-06-21 08:00,2010-06-21 08:00,2010-06-21 08:00,2010-06-21 08:00,2010-06-21 08:00,,2010-07-29 08:00,2010-07-29 08:00,,PT_Normal,,,,,Ro2D5kY/4kujxRnfUW2BUA,oj8qMatmlkmOtpuPC4KoZQ,,,N,0,0,,,2010-06-27 10:17,2010-06-27 10:17,admin,admin,,,
189,83102,764,10546,841,1,0,N,N,N,CP_Drtn,TT_Task,DT_FixedDUR2,RV_OK,TK_NotStart,A11770,pouring for ground floor's slab,,264,0,8,0,0,0,8,0,0,0,,,,2010-09-28 08:00,2010-09-28 16:00,,2010-08-18 08:00,2010-08-18 16:00,2010-08-18 08:00,2010-08-18 16:00,2010-08-18 08:00,2010-08-18 16:00,,2010-09-28 08:00,2010-09-28 16:00,,PT_Normal,,,,,YxVymRjd1kKIDY3S60KxGA,noHYLFM0+0mGUHh/tNv2oQ,,,N,0,0,,,2010-06-27 10:17,2010-06-27 10:17,admin,admin,,,
190,83103,764,10546,841,1,0,N,N,N,CP_Drtn,TT_Task,DT_FixedDUR2,RV_OK,TK_NotStart,A11780,pouring for 1st floor's slab,,280,0,8,0,0,0,8,0,0,0,,,,2010-10-19 08:00,2010-10-19 16:00,,2010-09-06 08:00,2010-09-06 16:00,2010-09-06 08:00,2010-09-06 16:00,2010-09-06 08:00,2010-09-06 16:00,,2010-10-19 08:00,2010-10-19 16:00,,PT_Normal,,,,,be3RvqpgpkG0KvozGXgMSw,lK5YedPIAkGELVxDtydGJQ,,,N,0,0,,,2010-06-27 10:17,2010-06-27 10:17,admin,admin,,,
191,83104,764,10546,841,1,0,N,N,N,CP_Drtn,TT_Task,DT_FixedDUR2,RV_OK,TK_NotStart,A11790,pouring for roof floor's slab,,280,0,8,0,0,0,8,0,0,0,,,,2010-11-03 08:00,2010-11-03 16:00,,2010-09-23 08:00,2010-09-23 16:00,2010-09-23 08:00,2010-09-23 16:00,2010-09-23 08:00,2010-09-23 16:00,,2010-11-03 08:00,2010-11-03 16:00,,PT_Normal,,,,,r/sMrvLhk0K0M6gYZwJlhA,Y+xbv+F6UUePh1CwpktBXA,,,N,0,0,,,2010-06-27 10:17,2010-06-27 10:17,admin,admin,,,
192,83105,764,10546,841,1,0,N,N,N,CP_Drtn,TT_Task,DT_FixedDrtn,RV_OK,TK_NotStart,A11800,Fence work,,264,16,400,0,0,0,400,0,0,0,,,,2010-09-29 08:00,2010-11-30 16:00,,2010-08-19 08:00,2010-10-18 16:00,2010-08-19 08:00,2010-10-18 16:00,2010-08-19 08:00,2010-10-18 16:00,,2010-09-29 08:00,2010-11-30 16:00,,PT_Normal,,,,,gZS1otgYmkme8gDeEVoNUg,KOBjEGoydka6U3TWgUw1cg,,,N,0,0,,,2010-06-27 10:17,2010-06-27 10:17,admin,admin,,,
193,83106,764,10584,841,1,0,N,N,N,CP_Drtn,TT_Task,DT_FixedDUR2,RV_OK,TK_NotStart,A11810,Fence Drawings IFC,,584,320,8,0,0,0,8,0,0,0,,,,2010-09-16 08:00,2010-09-16 16:00,,2010-06-21 08:00,2010-06-21 16:00,2010-06-21 08:00,2010-06-21 16:00,2010-06-21 08:00,2010-06-21 16:00,,2010-09-16 08:00,2010-09-16 16:00,,PT_Normal,,,,,LhgkHvV58UmPcEc6cZmo2Q,yCIdHJ+JoUed1TWes3lkOQ,,,N,0,0,,,2010-06-27 10:17,2010-06-27 10:17,admin,admin,,,
194,83107,764,10586,849,1,0,N,N,N,CP_Drtn,TT_Task,DT_FixedDUR2,RV_OK,TK_NotStart,A11820,backfilling between P.C Foundation,,264,0,16,0,0,0,16,0,0,0,,,,2010-08-18 08:00,2010-08-19 16:00,,2010-07-11 08:00,2010-07-12 16:00,2010-07-11 08:00,2010-07-12 16:00,2010-07-11 08:00,2010-07-12 16:00,,2010-08-18 08:00,2010-08-19 16:00,,PT_Normal,,,,,Vl14Zz88XEi0pRcWicUkdg,EHPpQiO0uEOmjnm8+DRJQg,,,N,0,0,,,2010-06-27 10:17,2010-06-27 10:17,admin,admin,,,
195,83108,764,10586,849,1,0,N,N,N,CP_Drtn,TT_Task,DT_FixedDUR2,RV_OK,TK_NotStart,A11830,P.C Under Smells,,264,0,8,0,0,0,8,0,0,0,,,,2010-08-21 08:00,2010-08-21 16:00,,2010-07-13 08:00,2010-07-13 16:00,2010-07-13 08:00,2010-07-13 16:00,2010-07-13 08:00,2010-07-13 16:00,,2010-08-21 08:00,2010-08-21 16:00,,PT_Normal,,,,,4JftmKISZEeozEzQIqIPvw,TTMR80s4vU60TOZ74vVcTQ,,,N,0,0,,,2010-06-27 10:17,2010-06-27 10:17,admin,admin,,,
196,83109,764,10546,849,1,0,N,N,N,CP_Drtn,TT_Task,DT_FixedDUR2,RV_OK,TK_NotStart,A11840,Brick works for 1st floor,,328,0,40,0,0,0,40,0,0,0,,,,2010-11-08 08:00,2010-11-13 16:00,,2010-09-21 08:00,2010-09-26 16:00,2010-09-21 08:00,2010-09-26 16:00,2010-09-21 08:00,2010-09-26 16:00,,2010-11-08 08:00,2010-11-13 16:00,,PT_Normal,,,,,MMbWM5aqDEiTi0NEN5m72A,s7luMZMyBEmRlQF6T8zGFQ,,,N,0,0,,,2010-06-27 10:17,2010-06-27 10:17,admin,admin,,,
197,83110,764,10546,849,1,0,N,N,N,CP_Drtn,TT_Task,DT_FixedDUR2,RV_OK,TK_NotStart,A11850,Brick works for roof floor,,280,0,40,0,0,0,40,0,0,0,,,,2010-11-14 08:00,2010-11-18 16:00,,2010-10-04 08:00,2010-10-09 16:00,2010-10-04 08:00,2010-10-09 16:00,2010-10-04 08:00,2010-10-09 16:00,,2010-11-14 08:00,2010-11-18 16:00,,PT_Normal,,,,,EIuBXIj8eUqsj+19L4suPA,v6wkfpWm/Umwqp+2hsJbgA,,,N,0,0,,,2010-06-27 10:17,2010-06-27 10:17,admin,admin,,,
198,83111,764,10548,849,1,0,N,N,N,CP_Drtn,TT_Task,DT_FixedDUR2,RV_OK,TK_NotStart,A11860,Internal plastering for 1st floor,,328,24,64,0,0,0,64,0,0,0,,,,2010-11-16 08:00,2010-11-24 16:00,,2010-09-29 08:00,2010-10-07 16:00,2010-09-29 08:00,2010-10-07 16:00,2010-09-29 08:00,2010-10-07 16:00,,2010-11-16 08:00,2010-11-24 16:00,,PT_Normal,,,,,bhQexj0LXkC4WZ4DOkaEkA,WBXOffytMU6UqFiYblrVng,,,N,0,0,,,2010-06-27 10:17,2010-06-27 10:17,admin,admin,,,
199,83112,764,10548,849,1,0,N,N,N,CP_Drtn,TT_Task,DT_FixedDUR2,RV_OK,TK_NotStart,A11870,Internal plastering for roof floor,,304,24,40,0,0,0,40,0,0,0,,,,2010-11-25 08:00,2010-11-30 16:00,,2010-10-12 08:00,2010-10-17 16:00,2010-10-12 08:00,2010-10-17 16:00,2010-10-12 08:00,2010-10-17 16:00,,2010-11-25 08:00,2010-11-30 16:00,,PT_Normal,,,,,LMUdVqTt20id/ExflaqQkA,T8+sFb8bOk6zawF3eVuf2w,,,N,0,0,,,2010-06-27 10:17,2010-06-27 10:17,admin,admin,,,
200,83113,764,10547,849,1,0,N,N,N,CP_Drtn,TT_Task,DT_FixedDUR2,RV_OK,TK_NotStart,A11880,electrical conduits for ground floor walls,,336,0,16,0,0,0,16,0,0,0,,,,2010-11-03 08:00,2010-11-04 16:00,,2010-09-15 08:00,2010-09-16 16:00,2010-09-15 08:00,2010-09-16 16:00,2010-09-15 08:00,2010-09-16 16:00,,2010-11-03 08:00,2010-11-04 16:00,,PT_Normal,,,,,D6/iXplwik6biD+hOAm92Q,Vl6IeymF7UizmAexZY3AMw,,,N,0,0,,,2010-06-27 10:17,2010-06-27 10:17,admin,admin,,,
201,83114,764,10547,849,1,0,N,N,N,CP_Drtn,TT_Task,DT_FixedDUR2,RV_OK,TK_NotStart,A11890,electrical conduits for 1st floor walls,,328,0,16,0,0,0,16,0,0,0,,,,2010-11-14 08:00,2010-11-15 16:00,,2010-09-27 08:00,2010-09-28 16:00,2010-09-27 08:00,2010-09-28 16:00,2010-09-27 08:00,2010-09-28 16:00,,2010-11-14 08:00,2010-11-15 16:00,,PT_Normal,,,,,l/uTaIaEgEK64Bcod9V3Xg,9OVTf0PgIUeYvje9JoHVew,,,N,0,0,,,2010-06-27 10:17,2010-06-27 10:17,admin,admin,,,
202,83115,764,10547,849,1,0,N,N,N,CP_Drtn,TT_Task,DT_FixedDUR2,RV_OK,TK_NotStart,A11900,electrical conduits for roof floor walls,,304,0,16,0,0,0,16,0,0,0,,,,2010-11-23 08:00,2010-11-24 16:00,,2010-10-10 08:00,2010-10-11 16:00,2010-10-10 08:00,2010-10-11 16:00,2010-10-10 08:00,2010-10-11 16:00,,2010-11-23 08:00,2010-11-24 16:00,,PT_Normal,,,,,c+6LaNqBxkOunp4ncfaCyQ,c9uLFWurY0OSF8HJjBbfyQ,,,N,0,0,,,2010-06-27 10:17,2010-06-27 10:17,admin,admin,,,
203,83116,764,10592,841,1,0,N,N,N,CP_Drtn,TT_Task,DT_FixedDUR2,RV_OK,TK_NotStart,A11910,excavation,,264,0,0,0,0,0,0,0,0,0,,,,2010-07-31 16:00,2010-07-31 16:00,,2010-06-23 08:00,2010-06-23 08:00,2010-06-23 08:00,2010-06-23 08:00,2010-06-23 08:00,2010-06-23 08:00,,2010-07-31 16:00,2010-07-31 16:00,,PT_Normal,,,,,UiifwNdsC0GGttsOSmal0w,ln4w7Nw8TE2mApqf6eWS1g,,,N,0,0,,,2010-06-27 10:17,2010-06-27 10:17,admin,admin,,,
204,83117,764,10592,841,1,0,N,N,N,CP_Drtn,TT_Task,DT_FixedDUR2,RV_OK,TK_NotStart,A11920,soil replacement,,264,0,96,0,0,0,96,0,0,0,,,,2010-08-01 08:00,2010-08-14 16:00,,2010-06-23 08:00,2010-07-06 16:00,2010-06-23 08:00,2010-07-06 16:00,2010-06-23 08:00,2010-07-06 16:00,,2010-08-01 08:00,2010-08-14 16:00,,PT_Normal,,,,,53lsqdQ+uUmOgvi4A6IJ2g,mYRJ5CetSUKPVLtIRsJepw,,,N,0,0,,,2010-06-27 10:17,2010-06-27 10:17,admin,admin,,,
205,83118,764,10552,841,1,0,N,N,N,CP_Drtn,TT_Task,DT_FixedDUR2,RV_OK,TK_NotStart,A11930,Plain Concrete Foundation,,264,0,16,0,0,0,16,0,0,0,,,,2010-08-15 08:00,2010-08-16 16:00,,2010-07-07 08:00,2010-07-08 16:00,2010-07-07 08:00,2010-07-08 16:00,2010-07-07 08:00,2010-07-08 16:00,,2010-08-15 08:00,2010-08-16 16:00,,PT_Normal,,,,,q0pQw7OovEKR4J8c88o8eA,rrs/5LnXj0W2nDkYhxhLbg,,,N,0,0,,,2010-06-27 10:17,2010-06-27 10:17,admin,admin,,,
206,83119,764,10552,841,1,0,N,N,N,CP_Drtn,TT_Task,DT_FixedDUR2,RV_OK,TK_NotStart,A11940,Reinforced Concrete Foundation,,264,0,56,0,0,0,56,0,0,0,,,,2010-08-22 08:00,2010-08-29 16:00,,2010-07-14 08:00,2010-07-21 16:00,2010-07-14 08:00,2010-07-21 16:00,2010-07-14 08:00,2010-07-21 16:00,,2010-08-22 08:00,2010-08-29 16:00,,PT_Normal,,,,,AkvJSj+qsU+7L80G4XJBBw,Q7qgn6R9Jk+Srr0PLRYfSQ,,,N,0,0,,,2010-06-27 10:17,2010-06-27 10:17,admin,admin,,,
207,83120,764,10552,841,1,0,N,N,N,CP_Drtn,TT_Task,DT_FixedDUR2,RV_OK,TK_NotStart,A11950,under ground  brick works,,264,0,16,0,0,0,16,0,0,0,,,,2010-09-06 08:00,2010-09-07 16:00,,2010-07-29 08:00,2010-07-31 16:00,2010-07-29 08:00,2010-07-31 16:00,2010-07-29 08:00,2010-07-31 16:00,,2010-09-06 08:00,2010-09-07 16:00,,PT_Normal,,,,,STJJhP+VoUekW66csG+daA,6dKuxjgrgEG+FgmSI91z9g,,,N,0,0,,,2010-06-27 10:17,2010-06-27 10:17,admin,admin,,,
208,83121,764,10552,841,1,0,N,N,N,CP_Drtn,TT_Task,DT_FixedDUR2,RV_OK,TK_NotStart,A11960,under ground insulation for RC & Brick work,,264,0,16,0,0,0,16,0,0,0,,,,2010-09-11 08:00,2010-09-12 16:00,,2010-08-01 08:00,2010-08-02 16:00,2010-08-01 08:00,2010-08-02 16:00,2010-08-01 08:00,2010-08-02 16:00,,2010-09-11 08:00,2010-09-12 16:00,,PT_Normal,,,,,wH3/Rv/5zUCg4t2jQZCoNA,Na+lJ4jdAUeLzSWKWnsWYA,,,N,0,0,,,2010-06-27 10:17,2010-06-27 10:17,admin,admin,,,
209,83122,764,10552,841,1,0,N,N,N,CP_Drtn,TT_Task,DT_FixedDUR2,RV_OK,TK_NotStart,A11970,backfilling for under ground,,264,0,32,0,0,0,32,0,0,0,,,,2010-09-13 08:00,2010-09-16 16:00,,2010-08-03 08:00,2010-08-07 16:00,2010-08-03 08:00,2010-08-07 16:00,2010-08-03 08:00,2010-08-07 16:00,,2010-09-13 08:00,2010-09-16 16:00,,PT_Normal,,,,,W3PPHx6CHk2+UcH6DkMcfg,0TfQhVF1yk62P19hgcRxXg,,,N,0,0,,,2010-06-27 10:17,2010-06-27 10:17,admin,admin,,,
210,83123,764,10552,841,1,0,N,N,N,CP_Drtn,TT_Task,DT_FixedDUR2,RV_OK,TK_NotStart,A11980,P.C slab on grade 10CM,,336,0,8,0,0,0,8,0,0,0,,,,2010-10-27 08:00,2010-10-27 16:00,,2010-09-06 08:00,2010-09-06 16:00,2010-09-06 08:00,2010-09-06 16:00,2010-09-06 08:00,2010-09-06 16:00,,2010-10-27 08:00,2010-10-27 16:00,,PT_Normal,,,,,sBIDbw5WIE6rxt6emSzVzQ,u0AIaZYzOEaTFPMhtJWwFA,,,N,0,0,,,2010-06-27 10:17,2010-06-27 10:17,admin,admin,,,
211,83124,764,10552,841,1,0,N,N,N,CP_Drtn,TT_Task,DT_FixedDUR2,RV_OK,TK_NotStart,A11990,moisture insulation with membrane sheets,,336,0,16,0,0,0,16,0,0,0,,,,2010-10-28 08:00,2010-10-30 16:00,,2010-09-07 08:00,2010-09-11 16:00,2010-09-07 08:00,2010-09-11 16:00,2010-09-07 08:00,2010-09-11 16:00,,2010-10-28 08:00,2010-10-30 16:00,,PT_Normal,,,,,ik4ZmTQBpUmGz63AG1b0eg,fRz3KqqzH0qJhIymOWCKyA,,,N,0,0,,,2010-06-27 10:17,2010-06-27 10:17,admin,admin,,,
212,83125,764,10552,841,1,0,N,N,N,CP_Drtn,TT_Task,DT_FixedDUR2,RV_OK,TK_NotStart,A12000,R.C slab on grade,,336,0,16,0,0,0,16,0,0,0,,,,2010-10-31 08:00,2010-11-01 16:00,,2010-09-12 08:00,2010-09-13 16:00,2010-09-12 08:00,2010-09-13 16:00,2010-09-12 08:00,2010-09-13 16:00,,2010-10-31 08:00,2010-11-01 16:00,,PT_Normal,,,,,xRJtesHko066DgqtZ11aAw,4quTuFXUBEuz+M6Z5OiQuQ,,,N,0,0,,,2010-06-27 10:17,2010-06-27 10:17,admin,admin,,,
213,83126,764,10553,841,1,0,N,N,N,CP_Drtn,TT_Task,DT_FixedDUR2,RV_OK,TK_NotStart,A12010,columns for ground floor,,264,0,48,0,0,0,48,0,0,0,,,,2010-08-30 08:00,2010-09-05 16:00,,2010-07-22 08:00,2010-07-28 16:00,2010-07-22 08:00,2010-07-28 16:00,2010-07-22 08:00,2010-07-28 16:00,,2010-08-30 08:00,2010-09-05 16:00,,PT_Normal,,,,,hc63csxZL0uyxG/truSqDw,r53gl0+HMk6GtA7cnAlF3Q,,,N,0,0,,,2010-06-27 10:17,2010-06-27 10:17,admin,admin,,,
214,83127,764,10553,841,1,0,N,N,N,CP_Drtn,TT_Task,DT_FixedDUR2,RV_OK,TK_NotStart,A12020,slab for ground floor,,264,0,72,0,0,0,72,0,0,0,,,,2010-09-18 08:00,2010-09-27 16:00,,2010-08-08 08:00,2010-08-17 16:00,2010-08-08 08:00,2010-08-17 16:00,2010-08-08 08:00,2010-08-17 16:00,,2010-09-18 08:00,2010-09-27 16:00,,PT_Normal,,,,,OtagL1MmFk2xoJZ2pn5Bag,/4A+d14AXUWuzwykcs5VFA,,,N,0,0,,,2010-06-27 10:17,2010-06-27 10:17,admin,admin,,,
215,83128,764,10553,841,1,0,N,N,N,CP_Drtn,TT_Task,DT_FixedDUR2,RV_OK,TK_NotStart,A12030,columns for 1st floor,,280,0,48,0,0,0,48,0,0,0,,,,2010-10-02 08:00,2010-10-07 16:00,,2010-08-19 08:00,2010-08-25 16:00,2010-08-19 08:00,2010-08-25 16:00,2010-08-19 08:00,2010-08-25 16:00,,2010-10-02 08:00,2010-10-07 16:00,,PT_Normal,,,,,HWrT+/opP0ubSWjI4GJjpQ,keZZCQ/n20KCYN6xUQzAlg,,,N,0,0,,,2010-06-27 10:17,2010-06-27 10:17,admin,admin,,,
216,83129,764,10553,841,1,0,N,N,N,CP_Drtn,TT_Task,DT_FixedDUR2,RV_OK,TK_NotStart,A12040,slab for 1st floor,,280,0,72,0,0,0,72,0,0,0,,,,2010-10-09 08:00,2010-10-18 16:00,,2010-08-26 08:00,2010-09-05 16:00,2010-08-26 08:00,2010-09-05 16:00,2010-08-26 08:00,2010-09-05 16:00,,2010-10-09 08:00,2010-10-18 16:00,,PT_Normal,,,,,Hbogr8pXME+GbGkk3RabCQ,Vd6JTRUd2UazS17k0thQ+g,,,N,0,0,,,2010-06-27 10:17,2010-06-27 10:17,admin,admin,,,
217,83130,764,10553,841,1,0,N,N,N,CP_Drtn,TT_Task,DT_FixedDUR2,RV_OK,TK_NotStart,A12050,columns for roof floor,,280,0,32,0,0,0,32,0,0,0,,,,2010-10-23 08:00,2010-10-26 16:00,,2010-09-12 08:00,2010-09-15 16:00,2010-09-12 08:00,2010-09-15 16:00,2010-09-12 08:00,2010-09-15 16:00,,2010-10-23 08:00,2010-10-26 16:00,,PT_Normal,,,,,UaKcMHLKy0uktPaKBM1HZw,JBNBtEASIUyouSQX6msEMA,,,N,0,0,,,2010-06-27 10:17,2010-06-27 10:17,admin,admin,,,
218,83131,764,10553,841,1,0,N,N,N,CP_Drtn,TT_Task,DT_FixedDUR2,RV_OK,TK_NotStart,A12060,slab for roof floor,,280,0,48,0,0,0,48,0,0,0,,,,2010-10-27 08:00,2010-11-02 16:00,,2010-09-16 08:00,2010-09-22 16:00,2010-09-16 08:00,2010-09-22 16:00,2010-09-16 08:00,2010-09-22 16:00,,2010-10-27 08:00,2010-11-02 16:00,,PT_Normal,,,,,7Ir9/gCNR0qGbP7NSInWCg,Ukql1lj8e0OyhNrVR9GWxQ,,,N,0,0,,,2010-06-27 10:17,2010-06-27 10:17,admin,admin,,,
219,83132,764,10553,841,1,0,N,N,N,CP_Drtn,TT_Task,DT_FixedDUR2,RV_OK,TK_NotStart,A12070,Brick works for ground floor,,336,0,40,0,0,0,40,0,0,0,,,,2010-10-21 08:00,2010-10-26 16:00,,2010-08-31 08:00,2010-09-05 16:00,2010-08-31 08:00,2010-09-05 16:00,2010-08-31 08:00,2010-09-05 16:00,,2010-10-21 08:00,2010-10-26 16:00,,PT_Normal,,,,,RcIuLWs/y0K0rPHUSoqzSQ,vjZcZkMYT0qLvfsDpLVIqw,,,N,0,0,,,2010-06-27 10:17,2010-06-27 10:17,admin,admin,,,
220,83133,764,10554,841,1,0,N,N,N,CP_Drtn,TT_Task,DT_FixedDrtn,RV_OK,TK_NotStart,A12080,electrical conduits for ground floor's slab,,272,8,16,0,0,0,16,0,0,0,,,,2010-09-23 08:00,2010-09-25 16:00,,2010-08-12 08:00,2010-08-14 16:00,2010-08-12 08:00,2010-08-14 16:00,2010-08-12 08:00,2010-08-14 16:00,,2010-09-23 08:00,2010-09-25 16:00,,PT_Normal,,,,,R5bfJV5vAU6lBbCh6YADkg,EgpjY3zsyUaP9qWSm53vBg,,,N,0,0,,,2010-06-27 10:17,2010-06-27 10:17,admin,admin,,,
221,83134,764,10554,841,1,0,N,N,N,CP_Drtn,TT_Task,DT_FixedDrtn,RV_OK,TK_NotStart,A12090,electrical conduits for 1st floor slab,,288,8,16,0,0,0,16,0,0,0,,,,2010-10-14 08:00,2010-10-16 16:00,,2010-08-31 08:00,2010-09-01 16:00,2010-08-31 08:00,2010-09-01 16:00,2010-08-31 08:00,2010-09-01 16:00,,2010-10-14 08:00,2010-10-16 16:00,,PT_Normal,,,,,BWmMcMdloke7mDYoNPNUdA,y1VMgvQZEE+FD15GI+K2Vg,,,N,0,0,,,2010-06-27 10:17,2010-06-27 10:17,admin,admin,,,
222,83135,764,10554,841,1,0,N,N,N,CP_Drtn,TT_Task,DT_FixedDrtn,RV_OK,TK_NotStart,A12100,electrical conduits for roof slab,,288,8,8,0,0,0,8,0,0,0,,,,2010-11-01 08:00,2010-11-01 16:00,,2010-09-20 08:00,2010-09-20 16:00,2010-09-20 08:00,2010-09-20 16:00,2010-09-20 08:00,2010-09-20 16:00,,2010-11-01 08:00,2010-11-01 16:00,,PT_Normal,,,,,Pdokfx+xnE6urh91VHLfEw,IZjD7/766kWNYAFKhBOAuQ,,,N,0,0,,,2010-06-27 10:17,2010-06-27 10:17,admin,admin,,,
223,83136,764,10555,841,1,0,N,N,N,CP_Drtn,TT_Task,DT_FixedDUR2,RV_OK,TK_NotStart,A12110,Internal plastering for ground floor,,336,16,64,0,0,0,64,0,0,0,,,,2010-11-06 08:00,2010-11-14 16:00,,2010-09-18 08:00,2010-09-26 16:00,2010-09-18 08:00,2010-09-26 16:00,2010-09-18 08:00,2010-09-26 16:00,,2010-11-06 08:00,2010-11-14 16:00,,PT_Normal,,,,,qgrPNxhojkqo/XI8w8Ocfw,ONeTpLfv2kCcBQXGcp2uDQ,,,N,0,0,,,2010-06-27 10:17,2010-06-27 10:17,admin,admin,,,
224,83137,764,10555,841,1,0,N,N,N,CP_Drtn,TT_Task,DT_FixedDUR2,RV_OK,TK_NotStart,A12120,External plastering,,248,0,80,0,0,0,80,0,0,0,,,,2010-11-20 08:00,2010-11-30 16:00,,2010-10-10 08:00,2010-10-20 16:00,2010-10-10 08:00,2010-10-20 16:00,2010-10-10 08:00,2010-10-20 16:00,,2010-11-20 08:00,2010-11-30 16:00,,PT_Normal,,,,,wUSc+JYy3kW59Ef01/c/LA,/Ku6+63IHUet/Lczs1GDmg,,,N,0,0,,,2010-06-27 10:17,2010-06-27 10:17,admin,admin,,,
225,83138,764,10554,841,1,0,N,N,N,CP_Drtn,TT_Task,DT_FixedDrtn,RV_OK,TK_NotStart,A12130,plumbing connections under slab on grade,,520,184,16,0,0,0,16,0,0,0,,,,2010-10-25 08:00,2010-10-26 16:00,,2010-08-08 08:00,2010-08-09 16:00,2010-08-08 08:00,2010-08-09 16:00,2010-08-08 08:00,2010-08-09 16:00,,2010-10-25 08:00,2010-10-26 16:00,,PT_Normal,,,,,gKpOIaqw5k681EULwLK7SA,NKQuThH/7EuXtEq1/UJIVg,,,N,0,0,,,2010-06-27 10:17,2010-06-27 10:17,admin,admin,,,
226,83139,764,10591,841,0,0,N,N,N,CP_Drtn,TT_Mile,DT_FixedDrtn,RV_OK,TK_NotStart,A12140,Start Villa construction,,264,0,0,0,0,0,0,0,0,0,,,,2010-07-29 08:00,2010-07-29 08:00,,2010-06-21 08:00,2010-06-21 08:00,2010-06-21 08:00,2010-06-21 08:00,2010-06-21 08:00,2010-06-21 08:00,,2010-07-29 08:00,2010-07-29 08:00,,PT_Normal,,,,,AX2/UwuhC0qu8xTEMEtpRA,pp3oojicr0eZ/8sqGvNNhg,,,N,0,0,,,2010-06-27 10:17,2010-06-27 10:17,admin,admin,,,
227,83140,764,10591,841,0,0,N,N,N,CP_Drtn,TT_FinMile,DT_FixedDrtn,RV_OK,TK_NotStart,A12150,finish Villa construction,,248,248,0,0,0,0,0,0,0,0,,,,2010-11-30 16:00,2010-11-30 16:00,,2010-10-20 16:00,2010-10-20 16:00,2010-10-20 16:00,2010-10-20 16:00,2010-10-20 16:00,2010-10-20 16:00,,2010-11-30 16:00,2010-11-30 16:00,,PT_Normal,,,,,t0YG3MBXi0+Tpr+4WrClcQ,Br4uMEm4oEu8hYuPZcD7hg,,,N,0,0,,,2010-06-27 10:17,2010-06-27 10:17,admin,admin,,,
228,83141,764,10591,841,0,0,N,N,N,CP_Drtn,TT_Mile,DT_FixedDrtn,RV_OK,TK_NotStart,A12160,IFC drawings,,264,0,0,0,0,0,0,0,0,0,,,,2010-07-29 08:00,2010-07-29 08:00,,2010-06-21 08:00,2010-06-21 08:00,2010-06-21 08:00,2010-06-21 08:00,2010-06-21 08:00,2010-06-21 08:00,,2010-07-29 08:00,2010-07-29 08:00,,PT_Normal,,,,,Su0ihFy3UkKM7NivzwTpfQ,sYznmiFgsk+UhGgnTLqBCA,,,N,0,0,,,2010-06-27 10:17,2010-06-27 10:17,admin,admin,,,
229,83142,764,10553,841,1,0,N,N,N,CP_Drtn,TT_Task,DT_FixedDUR2,RV_OK,TK_NotStart,A12170,pouring for ground floor's slab,,264,0,8,0,0,0,8,0,0,0,,,,2010-09-28 08:00,2010-09-28 16:00,,2010-08-18 08:00,2010-08-18 16:00,2010-08-18 08:00,2010-08-18 16:00,2010-08-18 08:00,2010-08-18 16:00,,2010-09-28 08:00,2010-09-28 16:00,,PT_Normal,,,,,U91IBkphTkGjEgpEOqB/QA,+eDXoQjy2UqkpPA7NXrnvg,,,N,0,0,,,2010-06-27 10:17,2010-06-27 10:17,admin,admin,,,
230,83143,764,10553,841,1,0,N,N,N,CP_Drtn,TT_Task,DT_FixedDUR2,RV_OK,TK_NotStart,A12180,pouring for 1st floor's slab,,280,0,8,0,0,0,8,0,0,0,,,,2010-10-19 08:00,2010-10-19 16:00,,2010-09-06 08:00,2010-09-06 16:00,2010-09-06 08:00,2010-09-06 16:00,2010-09-06 08:00,2010-09-06 16:00,,2010-10-19 08:00,2010-10-19 16:00,,PT_Normal,,,,,MpplXzJ+sE+ruBIFPkH9Jg,ycYM/YrRYEuwwC7lQRigDw,,,N,0,0,,,2010-06-27 10:17,2010-06-27 10:17,admin,admin,,,
231,83144,764,10553,841,1,0,N,N,N,CP_Drtn,TT_Task,DT_FixedDUR2,RV_OK,TK_NotStart,A12190,pouring for roof floor's slab,,280,0,8,0,0,0,8,0,0,0,,,,2010-11-03 08:00,2010-11-03 16:00,,2010-09-23 08:00,2010-09-23 16:00,2010-09-23 08:00,2010-09-23 16:00,2010-09-23 08:00,2010-09-23 16:00,,2010-11-03 08:00,2010-11-03 16:00,,PT_Normal,,,,,oc5Ho+Xr8EKYBR0zURC2gA,c43KzQSBnE2RsHHrDlo/0A,,,N,0,0,,,2010-06-27 10:17,2010-06-27 10:17,admin,admin,,,
232,83145,764,10553,841,1,0,N,N,N,CP_Drtn,TT_Task,DT_FixedDrtn,RV_OK,TK_NotStart,A12200,Fence work,,264,16,400,0,0,0,400,0,0,0,,,,2010-09-29 08:00,2010-11-30 16:00,,2010-08-19 08:00,2010-10-18 16:00,2010-08-19 08:00,2010-10-18 16:00,2010-08-19 08:00,2010-10-18 16:00,,2010-09-29 08:00,2010-11-30 16:00,,PT_Normal,,,,,uGq4JeIMhUi5XE7WYawptQ,opD33MwjZUmrJZy8pua5Yg,,,N,0,0,,,2010-06-27 10:17,2010-06-27 10:17,admin,admin,,,
233,83146,764,10591,841,1,0,N,N,N,CP_Drtn,TT_Task,DT_FixedDUR2,RV_OK,TK_NotStart,A12210,Fence Drawings IFC,,584,320,8,0,0,0,8,0,0,0,,,,2010-09-16 08:00,2010-09-16 16:00,,2010-06-21 08:00,2010-06-21 16:00,2010-06-21 08:00,2010-06-21 16:00,2010-06-21 08:00,2010-06-21 16:00,,2010-09-16 08:00,2010-09-16 16:00,,PT_Normal,,,,,MR8DkkiI2k6rwrmuVnaU8Q,tEn5p0y550S6mRpcA0F/2g,,,N,0,0,,,2010-06-27 10:17,2010-06-27 10:17,admin,admin,,,
234,83147,764,10552,849,1,0,N,N,N,CP_Drtn,TT_Task,DT_FixedDUR2,RV_OK,TK_NotStart,A12220,backfilling between P.C Foundation,,264,0,16,0,0,0,16,0,0,0,,,,2010-08-18 08:00,2010-08-19 16:00,,2010-07-11 08:00,2010-07-12 16:00,2010-07-11 08:00,2010-07-12 16:00,2010-07-11 08:00,2010-07-12 16:00,,2010-08-18 08:00,2010-08-19 16:00,,PT_Normal,,,,,MUpkN8Yn+ES2tBkXoS3Kag,fLDIAl4gEUuLi0Q3TlPyjg,,,N,0,0,,,2010-06-27 10:17,2010-06-27 10:17,admin,admin,,,
235,83148,764,10552,849,1,0,N,N,N,CP_Drtn,TT_Task,DT_FixedDUR2,RV_OK,TK_NotStart,A12230,P.C Under Smells,,264,0,8,0,0,0,8,0,0,0,,,,2010-08-21 08:00,2010-08-21 16:00,,2010-07-13 08:00,2010-07-13 16:00,2010-07-13 08:00,2010-07-13 16:00,2010-07-13 08:00,2010-07-13 16:00,,2010-08-21 08:00,2010-08-21 16:00,,PT_Normal,,,,,/R4oio9dx0mOJNzwPngnPg,FlXhGgnpw0GkCmsXEBXRWQ,,,N,0,0,,,2010-06-27 10:17,2010-06-27 10:17,admin,admin,,,
236,83149,764,10553,849,1,0,N,N,N,CP_Drtn,TT_Task,DT_FixedDUR2,RV_OK,TK_NotStart,A12240,Brick works for 1st floor,,328,0,40,0,0,0,40,0,0,0,,,,2010-11-08 08:00,2010-11-13 16:00,,2010-09-21 08:00,2010-09-26 16:00,2010-09-21 08:00,2010-09-26 16:00,2010-09-21 08:00,2010-09-26 16:00,,2010-11-08 08:00,2010-11-13 16:00,,PT_Normal,,,,,a1x/+sgTRkmir6lzT2463Q,kOCYeDnAmU+jAepIX1uK9w,,,N,0,0,,,2010-06-27 10:17,2010-06-27 10:17,admin,admin,,,
237,83150,764,10553,849,1,0,N,N,N,CP_Drtn,TT_Task,DT_FixedDUR2,RV_OK,TK_NotStart,A12250,Brick works for roof floor,,280,0,40,0,0,0,40,0,0,0,,,,2010-11-14 08:00,2010-11-18 16:00,,2010-10-04 08:00,2010-10-09 16:00,2010-10-04 08:00,2010-10-09 16:00,2010-10-04 08:00,2010-10-09 16:00,,2010-11-14 08:00,2010-11-18 16:00,,PT_Normal,,,,,qzUQB7SD8EqVDx95TUaWjg,EJ7nWL43c0WxEHdvEGhK+A,,,N,0,0,,,2010-06-27 10:17,2010-06-27 10:17,admin,admin,,,
238,83151,764,10555,849,1,0,N,N,N,CP_Drtn,TT_Task,DT_FixedDUR2,RV_OK,TK_NotStart,A12260,Internal plastering for 1st floor,,328,24,64,0,0,0,64,0,0,0,,,,2010-11-16 08:00,2010-11-24 16:00,,2010-09-29 08:00,2010-10-07 16:00,2010-09-29 08:00,2010-10-07 16:00,2010-09-29 08:00,2010-10-07 16:00,,2010-11-16 08:00,2010-11-24 16:00,,PT_Normal,,,,,XEv+OekngUOfj4XU1O1Cpw,OZYDVQCr+Ue1p+gBAlxr1Q,,,N,0,0,,,2010-06-27 10:17,2010-06-27 10:17,admin,admin,,,
239,83152,764,10555,849,1,0,N,N,N,CP_Drtn,TT_Task,DT_FixedDUR2,RV_OK,TK_NotStart,A12270,Internal plastering for roof floor,,304,24,40,0,0,0,40,0,0,0,,,,2010-11-25 08:00,2010-11-30 16:00,,2010-10-12 08:00,2010-10-17 16:00,2010-10-12 08:00,2010-10-17 16:00,2010-10-12 08:00,2010-10-17 16:00,,2010-11-25 08:00,2010-11-30 16:00,,PT_Normal,,,,,a9CPvZ/OPU2xzUK3dl2GIw,m9CEVuHcyEi6o5PfiNvJnA,,,N,0,0,,,2010-06-27 10:17,2010-06-27 10:17,admin,admin,,,
240,83153,764,10554,849,1,0,N,N,N,CP_Drtn,TT_Task,DT_FixedDUR2,RV_OK,TK_NotStart,A12280,electrical conduits for ground floor walls,,336,0,16,0,0,0,16,0,0,0,,,,2010-11-03 08:00,2010-11-04 16:00,,2010-09-15 08:00,2010-09-16 16:00,2010-09-15 08:00,2010-09-16 16:00,2010-09-15 08:00,2010-09-16 16:00,,2010-11-03 08:00,2010-11-04 16:00,,PT_Normal,,,,,N59QlkzcvUSCQUlhA2lvrw,6FAJK9njWUuK/wPtpMyTWw,,,N,0,0,,,2010-06-27 10:17,2010-06-27 10:17,admin,admin,,,
241,83154,764,10554,849,1,0,N,N,N,CP_Drtn,TT_Task,DT_FixedDUR2,RV_OK,TK_NotStart,A12290,electrical conduits for 1st floor walls,,328,0,16,0,0,0,16,0,0,0,,,,2010-11-14 08:00,2010-11-15 16:00,,2010-09-27 08:00,2010-09-28 16:00,2010-09-27 08:00,2010-09-28 16:00,2010-09-27 08:00,2010-09-28 16:00,,2010-11-14 08:00,2010-11-15 16:00,,PT_Normal,,,,,FgRQ3lgJfEeDu+CgOpzlRQ,eXHqLB1ar0ufI1j9zd8ERQ,,,N,0,0,,,2010-06-27 10:17,2010-06-27 10:17,admin,admin,,,
242,83155,764,10554,849,1,0,N,N,N,CP_Drtn,TT_Task,DT_FixedDUR2,RV_OK,TK_NotStart,A12300,electrical conduits for roof floor walls,,304,0,16,0,0,0,16,0,0,0,,,,2010-11-23 08:00,2010-11-24 16:00,,2010-10-10 08:00,2010-10-11 16:00,2010-10-10 08:00,2010-10-11 16:00,2010-10-10 08:00,2010-10-11 16:00,,2010-11-23 08:00,2010-11-24 16:00,,PT_Normal,,,,,NJKylOj/Ckma5QXNJYv5lA,M5dub5Nu70+BLDE/Y7xR3w,,,N,0,0,,,2010-06-27 10:17,2010-06-27 10:17,admin,admin,,,
243,83156,764,10599,841,1,0,N,N,N,CP_Drtn,TT_Task,DT_FixedDUR2,RV_OK,TK_NotStart,A12310,excavation,,248,0,16,0,0,0,16,0,0,0,,,,2010-07-29 08:00,2010-07-31 16:00,,2010-06-23 08:00,2010-06-24 16:00,2010-06-23 08:00,2010-06-24 16:00,2010-06-23 08:00,2010-06-24 16:00,,2010-07-29 08:00,2010-07-31 16:00,,PT_Normal,,,,,N6+geyQo4k+B8rWg7pi5pA,zNzSu00BkEyS5IG8AmH21A,,,N,0,0,,,2010-06-27 10:17,2010-06-27 10:17,admin,admin,,,
244,83157,764,10599,841,1,0,N,N,N,CP_Drtn,TT_Task,DT_FixedDUR2,RV_OK,TK_NotStart,A12320,soil replacement,,248,0,96,0,0,0,96,0,0,0,,,,2010-08-01 08:00,2010-08-14 16:00,,2010-06-26 08:00,2010-07-08 16:00,2010-06-26 08:00,2010-07-08 16:00,2010-06-26 08:00,2010-07-08 16:00,,2010-08-01 08:00,2010-08-14 16:00,,PT_Normal,,,,,15zOcpkdPEytvVrC9efPlw,FDaoUP1DeE6zgRneURQzdg,,,N,0,0,,,2010-06-27 10:17,2010-06-27 10:17,admin,admin,,,
245,83158,764,10559,841,1,0,N,N,N,CP_Drtn,TT_Task,DT_FixedDUR2,RV_OK,TK_NotStart,A12330,Plain Concrete Foundation,,248,0,16,0,0,0,16,0,0,0,,,,2010-08-15 08:00,2010-08-16 16:00,,2010-07-10 08:00,2010-07-11 16:00,2010-07-10 08:00,2010-07-11 16:00,2010-07-10 08:00,2010-07-11 16:00,,2010-08-15 08:00,2010-08-16 16:00,,PT_Normal,,,,,UpAmiCgEvkuvnZnD4sbTLA,CaDMj8OolEqQZsD5YEoTXA,,,N,0,0,,,2010-06-27 10:17,2010-06-27 10:17,admin,admin,,,
246,83159,764,10559,841,1,0,N,N,N,CP_Drtn,TT_Task,DT_FixedDUR2,RV_OK,TK_NotStart,A12340,Reinforced Concrete Foundation,,248,0,56,0,0,0,56,0,0,0,,,,2010-08-22 08:00,2010-08-29 16:00,,2010-07-17 08:00,2010-07-24 16:00,2010-07-17 08:00,2010-07-24 16:00,2010-07-17 08:00,2010-07-24 16:00,,2010-08-22 08:00,2010-08-29 16:00,,PT_Normal,,,,,rwbfsTaRyE6JswQb7EhWYg,L5N/mbiYVkWZQvGm7LFsgA,,,N,0,0,,,2010-06-27 10:17,2010-06-27 10:17,admin,admin,,,
247,83160,764,10559,841,1,0,N,N,N,CP_Drtn,TT_Task,DT_FixedDUR2,RV_OK,TK_NotStart,A12350,under ground  brick works,,248,0,16,0,0,0,16,0,0,0,,,,2010-09-06 08:00,2010-09-07 16:00,,2010-08-01 08:00,2010-08-02 16:00,2010-08-01 08:00,2010-08-02 16:00,2010-08-01 08:00,2010-08-02 16:00,,2010-09-06 08:00,2010-09-07 16:00,,PT_Normal,,,,,ANUyDY1tok+JM/DvQGptHA,/LBa4drJMUWh/Eh3vagE1Q,,,N,0,0,,,2010-06-27 10:17,2010-06-27 10:17,admin,admin,,,
248,83161,764,10559,841,1,0,N,N,N,CP_Drtn,TT_Task,DT_FixedDUR2,RV_OK,TK_NotStart,A12360,under ground insulation for RC & Brick work,,248,0,16,0,0,0,16,0,0,0,,,,2010-09-11 08:00,2010-09-12 16:00,,2010-08-03 08:00,2010-08-04 16:00,2010-08-03 08:00,2010-08-04 16:00,2010-08-03 08:00,2010-08-04 16:00,,2010-09-11 08:00,2010-09-12 16:00,,PT_Normal,,,,,KX+VtVr0AkyoBYKMOlF3Ig,e5v+99N+E0Klq2DbpX14TA,,,N,0,0,,,2010-06-27 10:17,2010-06-27 10:17,admin,admin,,,
249,83162,764,10559,841,1,0,N,N,N,CP_Drtn,TT_Task,DT_FixedDUR2,RV_OK,TK_NotStart,A12370,backfilling for under ground,,248,0,32,0,0,0,32,0,0,0,,,,2010-09-13 08:00,2010-09-16 16:00,,2010-08-05 08:00,2010-08-09 16:00,2010-08-05 08:00,2010-08-09 16:00,2010-08-05 08:00,2010-08-09 16:00,,2010-09-13 08:00,2010-09-16 16:00,,PT_Normal,,,,,8mntefAleEefOBCDim2x5Q,TuSDKnycsE2eZ2/SRyp/jA,,,N,0,0,,,2010-06-27 10:17,2010-06-27 10:17,admin,admin,,,
250,83163,764,10559,841,1,0,N,N,N,CP_Drtn,TT_Task,DT_FixedDUR2,RV_OK,TK_NotStart,A12380,P.C slab on grade 10CM,,320,0,8,0,0,0,8,0,0,0,,,,2010-10-27 08:00,2010-10-27 16:00,,2010-09-11 08:00,2010-09-11 16:00,2010-09-11 08:00,2010-09-11 16:00,2010-09-11 08:00,2010-09-11 16:00,,2010-10-27 08:00,2010-10-27 16:00,,PT_Normal,,,,,r0XjDyQHYEKJu5YLk/OhTQ,+pz/XWu0P0+99kXYHunfWw,,,N,0,0,,,2010-06-27 10:17,2010-06-27 10:17,admin,admin,,,
251,83164,764,10559,841,1,0,N,N,N,CP_Drtn,TT_Task,DT_FixedDUR2,RV_OK,TK_NotStart,A12390,moisture insulation with membrane sheets,,320,0,16,0,0,0,16,0,0,0,,,,2010-10-28 08:00,2010-10-30 16:00,,2010-09-12 08:00,2010-09-13 16:00,2010-09-12 08:00,2010-09-13 16:00,2010-09-12 08:00,2010-09-13 16:00,,2010-10-28 08:00,2010-10-30 16:00,,PT_Normal,,,,,tkyErUqh1kyoVqfc4btmkg,HQwYSvcRV022ZMndecWuxQ,,,N,0,0,,,2010-06-27 10:17,2010-06-27 10:17,admin,admin,,,
252,83165,764,10559,841,1,0,N,N,N,CP_Drtn,TT_Task,DT_FixedDUR2,RV_OK,TK_NotStart,A12400,R.C slab on grade,,320,0,16,0,0,0,16,0,0,0,,,,2010-10-31 08:00,2010-11-01 16:00,,2010-09-14 08:00,2010-09-15 16:00,2010-09-14 08:00,2010-09-15 16:00,2010-09-14 08:00,2010-09-15 16:00,,2010-10-31 08:00,2010-11-01 16:00,,PT_Normal,,,,,oM4fKmiEaUmDP29ViVf4eA,8fJIxMtRhEKgdu7frQP9Dg,,,N,0,0,,,2010-06-27 10:17,2010-06-27 10:17,admin,admin,,,
253,83166,764,10560,841,1,0,N,N,N,CP_Drtn,TT_Task,DT_FixedDUR2,RV_OK,TK_NotStart,A12410,columns for ground floor,,248,0,48,0,0,0,48,0,0,0,,,,2010-08-30 08:00,2010-09-05 16:00,,2010-07-25 08:00,2010-07-31 16:00,2010-07-25 08:00,2010-07-31 16:00,2010-07-25 08:00,2010-07-31 16:00,,2010-08-30 08:00,2010-09-05 16:00,,PT_Normal,,,,,OzOQ8QAm20u9rw9QHBuU9A,HRBZmHNgd0Sja7qjeqaTVw,,,N,0,0,,,2010-06-27 10:17,2010-06-27 10:17,admin,admin,,,
254,83167,764,10560,841,1,0,N,N,N,CP_Drtn,TT_Task,DT_FixedDUR2,RV_OK,TK_NotStart,A12420,slab for ground floor,,248,0,72,0,0,0,72,0,0,0,,,,2010-09-18 08:00,2010-09-27 16:00,,2010-08-10 08:00,2010-08-19 16:00,2010-08-10 08:00,2010-08-19 16:00,2010-08-10 08:00,2010-08-19 16:00,,2010-09-18 08:00,2010-09-27 16:00,,PT_Normal,,,,,NZfEpcu18kquJzrazz8EwQ,3zur18JZm0WQwosfsDqiMw,,,N,0,0,,,2010-06-27 10:17,2010-06-27 10:17,admin,admin,,,
255,83168,764,10560,841,1,0,N,N,N,CP_Drtn,TT_Task,DT_FixedDUR2,RV_OK,TK_NotStart,A12430,columns for 1st floor,,264,0,48,0,0,0,48,0,0,0,,,,2010-10-02 08:00,2010-10-07 16:00,,2010-08-22 08:00,2010-08-28 16:00,2010-08-22 08:00,2010-08-28 16:00,2010-08-22 08:00,2010-08-28 16:00,,2010-10-02 08:00,2010-10-07 16:00,,PT_Normal,,,,,CV/Afv/7Akq/6T45OgB7Iw,pVu2O/JfYECuZCkFpc50Fg,,,N,0,0,,,2010-06-27 10:17,2010-06-27 10:17,admin,admin,,,
256,83169,764,10560,841,1,0,N,N,N,CP_Drtn,TT_Task,DT_FixedDUR2,RV_OK,TK_NotStart,A12440,slab for 1st floor,,264,0,72,0,0,0,72,0,0,0,,,,2010-10-09 08:00,2010-10-18 16:00,,2010-08-29 08:00,2010-09-07 16:00,2010-08-29 08:00,2010-09-07 16:00,2010-08-29 08:00,2010-09-07 16:00,,2010-10-09 08:00,2010-10-18 16:00,,PT_Normal,,,,,34faWIfM8EymlVWYwIl3wA,haHuash5GUC0fXbbKbJjlA,,,N,0,0,,,2010-06-27 10:17,2010-06-27 10:17,admin,admin,,,
257,83170,764,10560,841,1,0,N,N,N,CP_Drtn,TT_Task,DT_FixedDUR2,RV_OK,TK_NotStart,A12450,columns for roof floor,,264,0,32,0,0,0,32,0,0,0,,,,2010-10-23 08:00,2010-10-26 16:00,,2010-09-14 08:00,2010-09-18 16:00,2010-09-14 08:00,2010-09-18 16:00,2010-09-14 08:00,2010-09-18 16:00,,2010-10-23 08:00,2010-10-26 16:00,,PT_Normal,,,,,Vlbk1oRq/EO+1j3NL60MeQ,WA9639ZiTEGtnf8q81+xSw,,,N,0,0,,,2010-06-27 10:17,2010-06-27 10:17,admin,admin,,,
258,83171,764,10560,841,1,0,N,N,N,CP_Drtn,TT_Task,DT_FixedDUR2,RV_OK,TK_NotStart,A12460,slab for roof floor,,264,0,48,0,0,0,48,0,0,0,,,,2010-10-27 08:00,2010-11-02 16:00,,2010-09-19 08:00,2010-09-25 16:00,2010-09-19 08:00,2010-09-25 16:00,2010-09-19 08:00,2010-09-25 16:00,,2010-10-27 08:00,2010-11-02 16:00,,PT_Normal,,,,,mWak0ErLL0G/ogV7XTeemA,+F5GXoKtZ0CeJmZCIo48+A,,,N,0,0,,,2010-06-27 10:17,2010-06-27 10:17,admin,admin,,,
259,83172,764,10560,841,1,0,N,N,N,CP_Drtn,TT_Task,DT_FixedDUR2,RV_OK,TK_NotStart,A12470,Brick works for ground floor,,320,0,40,0,0,0,40,0,0,0,,,,2010-10-21 08:00,2010-10-26 16:00,,2010-09-02 08:00,2010-09-07 16:00,2010-09-02 08:00,2010-09-07 16:00,2010-09-02 08:00,2010-09-07 16:00,,2010-10-21 08:00,2010-10-26 16:00,,PT_Normal,,,,,hikZqNLMOkSj1vbdnGw/Sg,EhwHnFQxm0edKR03BZ/5Aw,,,N,0,0,,,2010-06-27 10:17,2010-06-27 10:17,admin,admin,,,
260,83173,764,10561,841,1,0,N,N,N,CP_Drtn,TT_Task,DT_FixedDrtn,RV_OK,TK_NotStart,A12480,electrical conduits for ground floor's slab,,256,8,16,0,0,0,16,0,0,0,,,,2010-09-23 08:00,2010-09-25 16:00,,2010-08-15 08:00,2010-08-16 16:00,2010-08-15 08:00,2010-08-16 16:00,2010-08-15 08:00,2010-08-16 16:00,,2010-09-23 08:00,2010-09-25 16:00,,PT_Normal,,,,,22LXNfWCjUi4m4vlyQZB9w,cUR0ERrfJUyY/5uYeJYWBw,,,N,0,0,,,2010-06-27 10:17,2010-06-27 10:17,admin,admin,,,
261,83174,764,10561,841,1,0,N,N,N,CP_Drtn,TT_Task,DT_FixedDrtn,RV_OK,TK_NotStart,A12490,electrical conduits for 1st floor slab,,272,8,16,0,0,0,16,0,0,0,,,,2010-10-14 08:00,2010-10-16 16:00,,2010-09-02 08:00,2010-09-04 16:00,2010-09-02 08:00,2010-09-04 16:00,2010-09-02 08:00,2010-09-04 16:00,,2010-10-14 08:00,2010-10-16 16:00,,PT_Normal,,,,,pIG0cOLiwkO7OjUqjPqtCw,2g4ksIr9cU+Lep2LZlJgig,,,N,0,0,,,2010-06-27 10:17,2010-06-27 10:17,admin,admin,,,
262,83175,764,10561,841,1,0,N,N,N,CP_Drtn,TT_Task,DT_FixedDrtn,RV_OK,TK_NotStart,A12500,electrical conduits for roof slab,,272,8,8,0,0,0,8,0,0,0,,,,2010-11-01 08:00,2010-11-01 16:00,,2010-09-22 08:00,2010-09-22 16:00,2010-09-22 08:00,2010-09-22 16:00,2010-09-22 08:00,2010-09-22 16:00,,2010-11-01 08:00,2010-11-01 16:00,,PT_Normal,,,,,Iiao7pJtMkyQmwnYfMPXuw,FaAsm8w4f0iWMvdS0gP8mQ,,,N,0,0,,,2010-06-27 10:17,2010-06-27 10:17,admin,admin,,,
263,83176,764,10562,841,1,0,N,N,N,CP_Drtn,TT_Task,DT_FixedDUR2,RV_OK,TK_NotStart,A12510,Internal plastering for ground floor,,320,16,64,0,0,0,64,0,0,0,,,,2010-11-06 08:00,2010-11-14 16:00,,2010-09-20 08:00,2010-09-28 16:00,2010-09-20 08:00,2010-09-28 16:00,2010-09-20 08:00,2010-09-28 16:00,,2010-11-06 08:00,2010-11-14 16:00,,PT_Normal,,,,,4BGnvXE3SkmazpcW96OMqQ,2DcbL733c0+tcLFx4d9M7Q,,,N,0,0,,,2010-06-27 10:17,2010-06-27 10:17,admin,admin,,,
264,83177,764,10562,841,1,0,N,N,N,CP_Drtn,TT_Task,DT_FixedDUR2,RV_OK,TK_NotStart,A12520,External plastering,,232,0,80,0,0,0,80,0,0,0,,,,2010-11-20 08:00,2010-11-30 16:00,,2010-10-12 08:00,2010-10-23 16:00,2010-10-12 08:00,2010-10-23 16:00,2010-10-12 08:00,2010-10-23 16:00,,2010-11-20 08:00,2010-11-30 16:00,,PT_Normal,,,,,K3dMsGclQUCRhNKywJIB+A,2deEIcJRx0WlKUOwyVde7Q,,,N,0,0,,,2010-06-27 10:17,2010-06-27 10:17,admin,admin,,,
265,83178,764,10561,841,1,0,N,N,N,CP_Drtn,TT_Task,DT_FixedDrtn,RV_OK,TK_NotStart,A12530,plumbing connections under slab on grade,,504,184,16,0,0,0,16,0,0,0,,,,2010-10-25 08:00,2010-10-26 16:00,,2010-08-10 08:00,2010-08-11 16:00,2010-08-10 08:00,2010-08-11 16:00,2010-08-10 08:00,2010-08-11 16:00,,2010-10-25 08:00,2010-10-26 16:00,,PT_Normal,,,,,m8ulZ69USkeHiOdoMkYRBg,PIi60t9f9EigUqbWF9jOuA,,,N,0,0,,,2010-06-27 10:17,2010-06-27 10:17,admin,admin,,,
266,83179,764,10598,841,0,0,N,N,N,CP_Drtn,TT_Mile,DT_FixedDrtn,RV_OK,TK_NotStart,A12540,Start Villa construction,,248,0,0,0,0,0,0,0,0,0,,,,2010-07-27 08:00,2010-07-27 08:00,,2010-06-21 08:00,2010-06-21 08:00,2010-06-21 08:00,2010-06-21 08:00,2010-06-21 08:00,2010-06-21 08:00,,2010-07-27 08:00,2010-07-27 08:00,,PT_Normal,,,,,zcm5QcfDQkG3x7UGMltgqA,Pp3AtUNpokaa7ijDGqFqPg,,,N,0,0,,,2010-06-27 10:17,2010-06-27 10:17,admin,admin,,,
267,83180,764,10598,841,0,0,N,N,N,CP_Drtn,TT_FinMile,DT_FixedDrtn,RV_OK,TK_NotStart,A12550,finish Villa construction,,232,232,0,0,0,0,0,0,0,0,,,,2010-11-30 16:00,2010-11-30 16:00,,2010-10-23 16:00,2010-10-23 16:00,2010-10-23 16:00,2010-10-23 16:00,2010-10-23 16:00,2010-10-23 16:00,,2010-11-30 16:00,2010-11-30 16:00,,PT_Normal,,,,,A3xj5jhJB0+MyvNSVK+GNw,i5HedUQQfkWBXoHFTlIaQQ,,,N,0,0,,,2010-06-27 10:17,2010-06-27 10:17,admin,admin,,,
268,83181,764,10598,841,0,0,N,N,N,CP_Drtn,TT_Mile,DT_FixedDrtn,RV_OK,TK_NotStart,A12560,IFC drawings,,248,0,0,0,0,0,0,0,0,0,,,,2010-07-27 08:00,2010-07-27 08:00,,2010-06-21 08:00,2010-06-21 08:00,2010-06-21 08:00,2010-06-21 08:00,2010-06-21 08:00,2010-06-21 08:00,,2010-07-27 08:00,2010-07-27 08:00,,PT_Normal,,,,,+das7ou70EqvCztKiJ+aRQ,s8do7i3qcUqJClqF4GVsFQ,,,N,0,0,,,2010-06-27 10:17,2010-06-27 10:17,admin,admin,,,
269,83182,764,10560,841,1,0,N,N,N,CP_Drtn,TT_Task,DT_FixedDUR2,RV_OK,TK_NotStart,A12570,pouring for ground floor's slab,,248,0,8,0,0,0,8,0,0,0,,,,2010-09-28 08:00,2010-09-28 16:00,,2010-08-21 08:00,2010-08-21 16:00,2010-08-21 08:00,2010-08-21 16:00,2010-08-21 08:00,2010-08-21 16:00,,2010-09-28 08:00,2010-09-28 16:00,,PT_Normal,,,,,xsu1fTT2F0m5bJ/cum+WRA,gCZl0Yd3B0u/1602qQHG6g,,,N,0,0,,,2010-06-27 10:17,2010-06-27 10:17,admin,admin,,,
270,83183,764,10560,841,1,0,N,N,N,CP_Drtn,TT_Task,DT_FixedDUR2,RV_OK,TK_NotStart,A12580,pouring for 1st floor's slab,,264,0,8,0,0,0,8,0,0,0,,,,2010-10-19 08:00,2010-10-19 16:00,,2010-09-11 08:00,2010-09-11 16:00,2010-09-11 08:00,2010-09-11 16:00,2010-09-11 08:00,2010-09-11 16:00,,2010-10-19 08:00,2010-10-19 16:00,,PT_Normal,,,,,SQfIls13NEOEDA3erhnedw,1IWZttG2MEu7pU9PfOUhsA,,,N,0,0,,,2010-06-27 10:17,2010-06-27 10:17,admin,admin,,,
271,83184,764,10560,841,1,0,N,N,N,CP_Drtn,TT_Task,DT_FixedDUR2,RV_OK,TK_NotStart,A12590,pouring for roof floor's slab,,264,0,8,0,0,0,8,0,0,0,,,,2010-11-03 08:00,2010-11-03 16:00,,2010-09-26 08:00,2010-09-26 16:00,2010-09-26 08:00,2010-09-26 16:00,2010-09-26 08:00,2010-09-26 16:00,,2010-11-03 08:00,2010-11-03 16:00,,PT_Normal,,,,,M5cpO39pYEyFSZx9j9B2hA,yEn0B0HmOESCYf8Z5C0O8Q,,,N,0,0,,,2010-06-27 10:17,2010-06-27 10:17,admin,admin,,,
272,83185,764,10560,841,1,0,N,N,N,CP_Drtn,TT_Task,DT_FixedDrtn,RV_OK,TK_NotStart,A12600,Fence work,,248,16,400,0,0,0,400,0,0,0,,,,2010-09-29 08:00,2010-11-30 16:00,,2010-08-22 08:00,2010-10-20 16:00,2010-08-22 08:00,2010-10-20 16:00,2010-08-22 08:00,2010-10-20 16:00,,2010-09-29 08:00,2010-11-30 16:00,,PT_Normal,,,,,NmO/zp7P5EOHZUDw4WW/lw,jeKd0yDmjE+DPqpqOMpWKA,,,N,0,0,,,2010-06-27 10:17,2010-06-27 10:17,admin,admin,,,
273,83186,764,10598,841,1,0,N,N,N,CP_Drtn,TT_Task,DT_FixedDUR2,RV_OK,TK_NotStart,A12610,Fence Drawings IFC,,584,336,8,0,0,0,8,0,0,0,,,,2010-09-16 08:00,2010-09-16 16:00,,2010-06-21 08:00,2010-06-21 16:00,2010-06-21 08:00,2010-06-21 16:00,2010-06-21 08:00,2010-06-21 16:00,,2010-09-16 08:00,2010-09-16 16:00,,PT_Normal,,,,,Bj9D1ct4WUGaC284rt60TA,GG8aZzmzIkCQFZnfqlzaAQ,,,N,0,0,,,2010-06-27 10:17,2010-06-27 10:17,admin,admin,,,
274,83187,764,10559,849,1,0,N,N,N,CP_Drtn,TT_Task,DT_FixedDUR2,RV_OK,TK_NotStart,A12620,backfilling between P.C Foundation,,248,0,16,0,0,0,16,0,0,0,,,,2010-08-18 08:00,2010-08-19 16:00,,2010-07-13 08:00,2010-07-14 16:00,2010-07-13 08:00,2010-07-14 16:00,2010-07-13 08:00,2010-07-14 16:00,,2010-08-18 08:00,2010-08-19 16:00,,PT_Normal,,,,,HD4/TO+x+E62Er2amwnanQ,Dr686zDX5kqymBGXm7j29A,,,N,0,0,,,2010-06-27 10:17,2010-06-27 10:17,admin,admin,,,
275,83188,764,10559,849,1,0,N,N,N,CP_Drtn,TT_Task,DT_FixedDUR2,RV_OK,TK_NotStart,A12630,P.C Under Smells,,248,0,8,0,0,0,8,0,0,0,,,,2010-08-21 08:00,2010-08-21 16:00,,2010-07-15 08:00,2010-07-15 16:00,2010-07-15 08:00,2010-07-15 16:00,2010-07-15 08:00,2010-07-15 16:00,,2010-08-21 08:00,2010-08-21 16:00,,PT_Normal,,,,,yEhE6/Nnv0ScIOBuNTX65g,AtEHTMnWcEqoQH8epnGhEw,,,N,0,0,,,2010-06-27 10:17,2010-06-27 10:17,admin,admin,,,
276,83189,764,10560,849,1,0,N,N,N,CP_Drtn,TT_Task,DT_FixedDUR2,RV_OK,TK_NotStart,A12640,Brick works for 1st floor,,312,0,40,0,0,0,40,0,0,0,,,,2010-11-08 08:00,2010-11-13 16:00,,2010-09-23 08:00,2010-09-28 16:00,2010-09-23 08:00,2010-09-28 16:00,2010-09-23 08:00,2010-09-28 16:00,,2010-11-08 08:00,2010-11-13 16:00,,PT_Normal,,,,,2khr/jbKEEOM14Fk43zw8g,IRjpwHOueEGAfGoS7PF5Ow,,,N,0,0,,,2010-06-27 10:17,2010-06-27 10:17,admin,admin,,,
277,83190,764,10560,849,1,0,N,N,N,CP_Drtn,TT_Task,DT_FixedDUR2,RV_OK,TK_NotStart,A12650,Brick works for roof floor,,264,0,40,0,0,0,40,0,0,0,,,,2010-11-14 08:00,2010-11-18 16:00,,2010-10-06 08:00,2010-10-11 16:00,2010-10-06 08:00,2010-10-11 16:00,2010-10-06 08:00,2010-10-11 16:00,,2010-11-14 08:00,2010-11-18 16:00,,PT_Normal,,,,,R7kGBBUsEk2h2W5tfoUuBA,qjG+29/hBEi8ths6j2Vwmg,,,N,0,0,,,2010-06-27 10:17,2010-06-27 10:17,admin,admin,,,
278,83191,764,10562,849,1,0,N,N,N,CP_Drtn,TT_Task,DT_FixedDUR2,RV_OK,TK_NotStart,A12660,Internal plastering for 1st floor,,312,24,64,0,0,0,64,0,0,0,,,,2010-11-16 08:00,2010-11-24 16:00,,2010-10-02 08:00,2010-10-10 16:00,2010-10-02 08:00,2010-10-10 16:00,2010-10-02 08:00,2010-10-10 16:00,,2010-11-16 08:00,2010-11-24 16:00,,PT_Normal,,,,,yhWp52fNHka5vwMy9Uk4nw,JeiVv37HcE6j2/W7RfvhiA,,,N,0,0,,,2010-06-27 10:17,2010-06-27 10:17,admin,admin,,,
279,83192,764,10562,849,1,0,N,N,N,CP_Drtn,TT_Task,DT_FixedDUR2,RV_OK,TK_NotStart,A12670,Internal plastering for roof floor,,288,24,40,0,0,0,40,0,0,0,,,,2010-11-25 08:00,2010-11-30 16:00,,2010-10-14 08:00,2010-10-19 16:00,2010-10-14 08:00,2010-10-19 16:00,2010-10-14 08:00,2010-10-19 16:00,,2010-11-25 08:00,2010-11-30 16:00,,PT_Normal,,,,,airZksYdgEefD5fW3taXSw,8B2hmb56wEiJs5LDlLY/Ng,,,N,0,0,,,2010-06-27 10:17,2010-06-27 10:17,admin,admin,,,
280,83193,764,10561,849,1,0,N,N,N,CP_Drtn,TT_Task,DT_FixedDUR2,RV_OK,TK_NotStart,A12680,electrical conduits for ground floor walls,,320,0,16,0,0,0,16,0,0,0,,,,2010-11-03 08:00,2010-11-04 16:00,,2010-09-18 08:00,2010-09-19 16:00,2010-09-18 08:00,2010-09-19 16:00,2010-09-18 08:00,2010-09-19 16:00,,2010-11-03 08:00,2010-11-04 16:00,,PT_Normal,,,,,otCi0r+iYkWKTfMMmzf3LA,sWiMI/xVkUmBmYy/MpKVMg,,,N,0,0,,,2010-06-27 10:17,2010-06-27 10:17,admin,admin,,,
281,83194,764,10561,849,1,0,N,N,N,CP_Drtn,TT_Task,DT_FixedDUR2,RV_OK,TK_NotStart,A12690,electrical conduits for 1st floor walls,,312,0,16,0,0,0,16,0,0,0,,,,2010-11-14 08:00,2010-11-15 16:00,,2010-09-29 08:00,2010-09-30 16:00,2010-09-29 08:00,2010-09-30 16:00,2010-09-29 08:00,2010-09-30 16:00,,2010-11-14 08:00,2010-11-15 16:00,,PT_Normal,,,,,failWMdzbkWX8q5Hy14NsQ,8gOggm+rAkaWxSQ9LBrOJQ,,,N,0,0,,,2010-06-27 10:17,2010-06-27 10:17,admin,admin,,,
282,83195,764,10561,849,1,0,N,N,N,CP_Drtn,TT_Task,DT_FixedDUR2,RV_OK,TK_NotStart,A12700,electrical conduits for roof floor walls,,288,0,16,0,0,0,16,0,0,0,,,,2010-11-23 08:00,2010-11-24 16:00,,2010-10-12 08:00,2010-10-13 16:00,2010-10-12 08:00,2010-10-13 16:00,2010-10-12 08:00,2010-10-13 16:00,,2010-11-23 08:00,2010-11-24 16:00,,PT_Normal,,,,,LLGAhiZur0anSn3pr1wGmA,KHaiZIDdhkGp7Cseu+hNcA,,,N,0,0,,,2010-06-27 10:17,2010-06-27 10:17,admin,admin,,,
283,83196,764,10606,841,1,0,N,N,N,CP_Drtn,TT_Task,DT_FixedDUR2,RV_OK,TK_NotStart,A12710,excavation,,248,0,16,0,0,0,16,0,0,0,,,,2010-07-29 08:00,2010-07-31 16:00,,2010-06-23 08:00,2010-06-24 16:00,2010-06-23 08:00,2010-06-24 16:00,2010-06-23 08:00,2010-06-24 16:00,,2010-07-29 08:00,2010-07-31 16:00,,PT_Normal,,,,,D9cIyM+7A0ORrGROX6m2Yw,XwKu+rMM+0WpYtfdKc9/qw,,,N,0,0,,,2010-06-27 10:17,2010-06-27 10:17,admin,admin,,,
284,83197,764,10606,841,1,0,N,N,N,CP_Drtn,TT_Task,DT_FixedDUR2,RV_OK,TK_NotStart,A12720,soil replacement,,248,0,96,0,0,0,96,0,0,0,,,,2010-08-01 08:00,2010-08-14 16:00,,2010-06-26 08:00,2010-07-08 16:00,2010-06-26 08:00,2010-07-08 16:00,2010-06-26 08:00,2010-07-08 16:00,,2010-08-01 08:00,2010-08-14 16:00,,PT_Normal,,,,,wjYK5BnQnESu287CMEFY1g,BTFQ2Hxc00KF77xuVI8hCA,,,N,0,0,,,2010-06-27 10:17,2010-06-27 10:17,admin,admin,,,
285,83198,764,10566,841,1,0,N,N,N,CP_Drtn,TT_Task,DT_FixedDUR2,RV_OK,TK_NotStart,A12730,Plain Concrete Foundation,,248,0,16,0,0,0,16,0,0,0,,,,2010-08-15 08:00,2010-08-16 16:00,,2010-07-10 08:00,2010-07-11 16:00,2010-07-10 08:00,2010-07-11 16:00,2010-07-10 08:00,2010-07-11 16:00,,2010-08-15 08:00,2010-08-16 16:00,,PT_Normal,,,,,q6b1AGfl+UCoiVcTs/RYjg,YZA2axZR5UuAzy4jqzZgkw,,,N,0,0,,,2010-06-27 10:17,2010-06-27 10:17,admin,admin,,,
286,83199,764,10566,841,1,0,N,N,N,CP_Drtn,TT_Task,DT_FixedDUR2,RV_OK,TK_NotStart,A12740,Reinforced Concrete Foundation,,248,0,56,0,0,0,56,0,0,0,,,,2010-08-22 08:00,2010-08-29 16:00,,2010-07-17 08:00,2010-07-24 16:00,2010-07-17 08:00,2010-07-24 16:00,2010-07-17 08:00,2010-07-24 16:00,,2010-08-22 08:00,2010-08-29 16:00,,PT_Normal,,,,,jvoPIYfSx0WGppUGFF2Lmw,uxOZtbGMEUuWCg0SZl/ldA,,,N,0,0,,,2010-06-27 10:17,2010-06-27 10:17,admin,admin,,,
287,83200,764,10566,841,1,0,N,N,N,CP_Drtn,TT_Task,DT_FixedDUR2,RV_OK,TK_NotStart,A12750,under ground  brick works,,248,0,16,0,0,0,16,0,0,0,,,,2010-09-06 08:00,2010-09-07 16:00,,2010-08-01 08:00,2010-08-02 16:00,2010-08-01 08:00,2010-08-02 16:00,2010-08-01 08:00,2010-08-02 16:00,,2010-09-06 08:00,2010-09-07 16:00,,PT_Normal,,,,,Yl+aFurS3UeXi5kXeLA3kg,fksrMmN380+P9L9LcRMl0g,,,N,0,0,,,2010-06-27 10:17,2010-06-27 10:17,admin,admin,,,
288,83201,764,10566,841,1,0,N,N,N,CP_Drtn,TT_Task,DT_FixedDUR2,RV_OK,TK_NotStart,A12760,under ground insulation for RC & Brick work,,248,0,16,0,0,0,16,0,0,0,,,,2010-09-11 08:00,2010-09-12 16:00,,2010-08-03 08:00,2010-08-04 16:00,2010-08-03 08:00,2010-08-04 16:00,2010-08-03 08:00,2010-08-04 16:00,,2010-09-11 08:00,2010-09-12 16:00,,PT_Normal,,,,,ZWrl2n3YXEGBUThPZ9Y5IQ,OR5GhISf8UOfIOgOUZax1A,,,N,0,0,,,2010-06-27 10:17,2010-06-27 10:17,admin,admin,,,
289,83202,764,10566,841,1,0,N,N,N,CP_Drtn,TT_Task,DT_FixedDUR2,RV_OK,TK_NotStart,A12770,backfilling for under ground,,248,0,32,0,0,0,32,0,0,0,,,,2010-09-13 08:00,2010-09-16 16:00,,2010-08-05 08:00,2010-08-09 16:00,2010-08-05 08:00,2010-08-09 16:00,2010-08-05 08:00,2010-08-09 16:00,,2010-09-13 08:00,2010-09-16 16:00,,PT_Normal,,,,,gMf3mzAb+k+rJv3EW7NDJQ,/48+gpzLJUWpRAWx1kqceQ,,,N,0,0,,,2010-06-27 10:17,2010-06-27 10:17,admin,admin,,,
290,83203,764,10566,841,1,0,N,N,N,CP_Drtn,TT_Task,DT_FixedDUR2,RV_OK,TK_NotStart,A12780,P.C slab on grade 10CM,,320,0,8,0,0,0,8,0,0,0,,,,2010-10-27 08:00,2010-10-27 16:00,,2010-09-11 08:00,2010-09-11 16:00,2010-09-11 08:00,2010-09-11 16:00,2010-09-11 08:00,2010-09-11 16:00,,2010-10-27 08:00,2010-10-27 16:00,,PT_Normal,,,,,oeDJAjuJ+UyERd2PiDv5PA,WsvcwIAxoUCphpa/M0cLLw,,,N,0,0,,,2010-06-27 10:17,2010-06-27 10:17,admin,admin,,,
291,83204,764,10566,841,1,0,N,N,N,CP_Drtn,TT_Task,DT_FixedDUR2,RV_OK,TK_NotStart,A12790,moisture insulation with membrane sheets,,320,0,16,0,0,0,16,0,0,0,,,,2010-10-28 08:00,2010-10-30 16:00,,2010-09-12 08:00,2010-09-13 16:00,2010-09-12 08:00,2010-09-13 16:00,2010-09-12 08:00,2010-09-13 16:00,,2010-10-28 08:00,2010-10-30 16:00,,PT_Normal,,,,,X3FMpPTUTkGCY/kSKUgBxA,HTxO2Ckib0SHLqZXrxsZRw,,,N,0,0,,,2010-06-27 10:17,2010-06-27 10:17,admin,admin,,,
292,83205,764,10566,841,1,0,N,N,N,CP_Drtn,TT_Task,DT_FixedDUR2,RV_OK,TK_NotStart,A12800,R.C slab on grade,,320,0,16,0,0,0,16,0,0,0,,,,2010-10-31 08:00,2010-11-01 16:00,,2010-09-14 08:00,2010-09-15 16:00,2010-09-14 08:00,2010-09-15 16:00,2010-09-14 08:00,2010-09-15 16:00,,2010-10-31 08:00,2010-11-01 16:00,,PT_Normal,,,,,WoWFuKtHBUaFri2+dQL/mA,W95mqSNEgUy12+Cxv4X+Gw,,,N,0,0,,,2010-06-27 10:17,2010-06-27 10:17,admin,admin,,,
293,83206,764,10567,841,1,0,N,N,N,CP_Drtn,TT_Task,DT_FixedDUR2,RV_OK,TK_NotStart,A12810,columns for ground floor,,248,0,48,0,0,0,48,0,0,0,,,,2010-08-30 08:00,2010-09-05 16:00,,2010-07-25 08:00,2010-07-31 16:00,2010-07-25 08:00,2010-07-31 16:00,2010-07-25 08:00,2010-07-31 16:00,,2010-08-30 08:00,2010-09-05 16:00,,PT_Normal,,,,,Ybi5U1CMBk23zWBDp9sCsg,GyLT5RSnhkGhXtWNwVv80g,,,N,0,0,,,2010-06-27 10:17,2010-06-27 10:17,admin,admin,,,
294,83207,764,10567,841,1,0,N,N,N,CP_Drtn,TT_Task,DT_FixedDUR2,RV_OK,TK_NotStart,A12820,slab for ground floor,,248,0,72,0,0,0,72,0,0,0,,,,2010-09-18 08:00,2010-09-27 16:00,,2010-08-10 08:00,2010-08-19 16:00,2010-08-10 08:00,2010-08-19 16:00,2010-08-10 08:00,2010-08-19 16:00,,2010-09-18 08:00,2010-09-27 16:00,,PT_Normal,,,,,KG+s7KObBUeiX91d7ecjrA,txezDK22YUSNYSmia/FV6g,,,N,0,0,,,2010-06-27 10:17,2010-06-27 10:17,admin,admin,,,
295,83208,764,10567,841,1,0,N,N,N,CP_Drtn,TT_Task,DT_FixedDUR2,RV_OK,TK_NotStart,A12830,columns for 1st floor,,264,0,48,0,0,0,48,0,0,0,,,,2010-10-02 08:00,2010-10-07 16:00,,2010-08-22 08:00,2010-08-28 16:00,2010-08-22 08:00,2010-08-28 16:00,2010-08-22 08:00,2010-08-28 16:00,,2010-10-02 08:00,2010-10-07 16:00,,PT_Normal,,,,,fxyNNlnP70ePpBf0sYM2fw,zZn+Nrtoikyq/pE+5TB/iA,,,N,0,0,,,2010-06-27 10:17,2010-06-27 10:17,admin,admin,,,
296,83209,764,10567,841,1,0,N,N,N,CP_Drtn,TT_Task,DT_FixedDUR2,RV_OK,TK_NotStart,A12840,slab for 1st floor,,264,0,72,0,0,0,72,0,0,0,,,,2010-10-09 08:00,2010-10-18 16:00,,2010-08-29 08:00,2010-09-07 16:00,2010-08-29 08:00,2010-09-07 16:00,2010-08-29 08:00,2010-09-07 16:00,,2010-10-09 08:00,2010-10-18 16:00,,PT_Normal,,,,,G8z0ONzZGkOZlNe4WYyVKA,o9cSeinKL0ahHV4LfVVW1w,,,N,0,0,,,2010-06-27 10:17,2010-06-27 10:17,admin,admin,,,
297,83210,764,10567,841,1,0,N,N,N,CP_Drtn,TT_Task,DT_FixedDUR2,RV_OK,TK_NotStart,A12850,columns for roof floor,,264,0,32,0,0,0,32,0,0,0,,,,2010-10-23 08:00,2010-10-26 16:00,,2010-09-14 08:00,2010-09-18 16:00,2010-09-14 08:00,2010-09-18 16:00,2010-09-14 08:00,2010-09-18 16:00,,2010-10-23 08:00,2010-10-26 16:00,,PT_Normal,,,,,icrXnmUNtkCUv6ADZQ/PcQ,9DWLHYP3m0CAYcQQ+OVD1Q,,,N,0,0,,,2010-06-27 10:17,2010-06-27 10:17,admin,admin,,,
298,83211,764,10567,841,1,0,N,N,N,CP_Drtn,TT_Task,DT_FixedDUR2,RV_OK,TK_NotStart,A12860,slab for roof floor,,264,0,48,0,0,0,48,0,0,0,,,,2010-10-27 08:00,2010-11-02 16:00,,2010-09-19 08:00,2010-09-25 16:00,2010-09-19 08:00,2010-09-25 16:00,2010-09-19 08:00,2010-09-25 16:00,,2010-10-27 08:00,2010-11-02 16:00,,PT_Normal,,,,,R8XmfVCE40a1nMoSpqzUpA,15Nc5ZcY8E2qhi5HbU99UQ,,,N,0,0,,,2010-06-27 10:17,2010-06-27 10:17,admin,admin,,,
299,83212,764,10567,841,1,0,N,N,N,CP_Drtn,TT_Task,DT_FixedDUR2,RV_OK,TK_NotStart,A12870,Brick works for ground floor,,320,0,40,0,0,0,40,0,0,0,,,,2010-10-21 08:00,2010-10-26 16:00,,2010-09-02 08:00,2010-09-07 16:00,2010-09-02 08:00,2010-09-07 16:00,2010-09-02 08:00,2010-09-07 16:00,,2010-10-21 08:00,2010-10-26 16:00,,PT_Normal,,,,,YjzOVZ4HRUW9XwxNarIaBw,MB4INp+ZtkuEs4bjy4Q/cA,,,N,0,0,,,2010-06-27 10:17,2010-06-27 10:17,admin,admin,,,
300,83213,764,10568,841,1,0,N,N,N,CP_Drtn,TT_Task,DT_FixedDrtn,RV_OK,TK_NotStart,A12880,electrical conduits for ground floor's slab,,256,8,16,0,0,0,16,0,0,0,,,,2010-09-23 08:00,2010-09-25 16:00,,2010-08-15 08:00,2010-08-16 16:00,2010-08-15 08:00,2010-08-16 16:00,2010-08-15 08:00,2010-08-16 16:00,,2010-09-23 08:00,2010-09-25 16:00,,PT_Normal,,,,,2Nh1pFMWJ0uU0uDWprr7Rg,J73eIPbwZEaWlDVeMCFCig,,,N,0,0,,,2010-06-27 10:17,2010-06-27 10:17,admin,admin,,,
301,83214,764,10568,841,1,0,N,N,N,CP_Drtn,TT_Task,DT_FixedDrtn,RV_OK,TK_NotStart,A12890,electrical conduits for 1st floor slab,,272,8,16,0,0,0,16,0,0,0,,,,2010-10-14 08:00,2010-10-16 16:00,,2010-09-02 08:00,2010-09-04 16:00,2010-09-02 08:00,2010-09-04 16:00,2010-09-02 08:00,2010-09-04 16:00,,2010-10-14 08:00,2010-10-16 16:00,,PT_Normal,,,,,VzsKAJhW/0Si6DnxSkMTmg,/fOIYhFGf0uPnnpEhlJqKA,,,N,0,0,,,2010-06-27 10:17,2010-06-27 10:17,admin,admin,,,
302,83215,764,10568,841,1,0,N,N,N,CP_Drtn,TT_Task,DT_FixedDrtn,RV_OK,TK_NotStart,A12900,electrical conduits for roof slab,,272,8,8,0,0,0,8,0,0,0,,,,2010-11-01 08:00,2010-11-01 16:00,,2010-09-22 08:00,2010-09-22 16:00,2010-09-22 08:00,2010-09-22 16:00,2010-09-22 08:00,2010-09-22 16:00,,2010-11-01 08:00,2010-11-01 16:00,,PT_Normal,,,,,H2TJCL4zwE+3/VPtvTOT8A,TMTjSAXv+k+JV9zYOi1VUQ,,,N,0,0,,,2010-06-27 10:17,2010-06-27 10:17,admin,admin,,,
303,83216,764,10569,841,1,0,N,N,N,CP_Drtn,TT_Task,DT_FixedDUR2,RV_OK,TK_NotStart,A12910,Internal plastering for ground floor,,320,16,64,0,0,0,64,0,0,0,,,,2010-11-06 08:00,2010-11-14 16:00,,2010-09-20 08:00,2010-09-28 16:00,2010-09-20 08:00,2010-09-28 16:00,2010-09-20 08:00,2010-09-28 16:00,,2010-11-06 08:00,2010-11-14 16:00,,PT_Normal,,,,,jgzZhssadEGBpelDEjD/2g,s5dCuKE51EiF0TjFEPUO3g,,,N,0,0,,,2010-06-27 10:17,2010-06-27 10:17,admin,admin,,,
304,83217,764,10569,841,1,0,N,N,N,CP_Drtn,TT_Task,DT_FixedDUR2,RV_OK,TK_NotStart,A12920,External plastering,,232,0,80,0,0,0,80,0,0,0,,,,2010-11-20 08:00,2010-11-30 16:00,,2010-10-12 08:00,2010-10-23 16:00,2010-10-12 08:00,2010-10-23 16:00,2010-10-12 08:00,2010-10-23 16:00,,2010-11-20 08:00,2010-11-30 16:00,,PT_Normal,,,,,lb7q+2Fug0KGQ2O18/7tQQ,+ZlDdNyHfEqRKoyQ4OMQJQ,,,N,0,0,,,2010-06-27 10:17,2010-06-27 10:17,admin,admin,,,
305,83218,764,10568,841,1,0,N,N,N,CP_Drtn,TT_Task,DT_FixedDrtn,RV_OK,TK_NotStart,A12930,plumbing connections under slab on grade,,504,184,16,0,0,0,16,0,0,0,,,,2010-10-25 08:00,2010-10-26 16:00,,2010-08-10 08:00,2010-08-11 16:00,2010-08-10 08:00,2010-08-11 16:00,2010-08-10 08:00,2010-08-11 16:00,,2010-10-25 08:00,2010-10-26 16:00,,PT_Normal,,,,,twuqbXFel0WuPxMwXU4N0Q,P7MLtDD7+0qXN5cPkuVN0w,,,N,0,0,,,2010-06-27 10:17,2010-06-27 10:17,admin,admin,,,
306,83219,764,10605,841,0,0,N,N,N,CP_Drtn,TT_Mile,DT_FixedDrtn,RV_OK,TK_NotStart,A12940,Start Villa construction,,248,0,0,0,0,0,0,0,0,0,,,,2010-07-27 08:00,2010-07-27 08:00,,2010-06-21 08:00,2010-06-21 08:00,2010-06-21 08:00,2010-06-21 08:00,2010-06-21 08:00,2010-06-21 08:00,,2010-07-27 08:00,2010-07-27 08:00,,PT_Normal,,,,,omDm1ydE4ke6FeqbSpGdJA,8o/6gy37OE2MPSkWwkXIfA,,,N,0,0,,,2010-06-27 10:17,2010-06-27 10:17,admin,admin,,,
307,83220,764,10605,841,0,0,N,N,N,CP_Drtn,TT_FinMile,DT_FixedDrtn,RV_OK,TK_NotStart,A12950,finish Villa construction,,232,232,0,0,0,0,0,0,0,0,,,,2010-11-30 16:00,2010-11-30 16:00,,2010-10-23 16:00,2010-10-23 16:00,2010-10-23 16:00,2010-10-23 16:00,2010-10-23 16:00,2010-10-23 16:00,,2010-11-30 16:00,2010-11-30 16:00,,PT_Normal,,,,,JmZInnzyVEy8/4E40tvnUA,ARnSLy0ROU2d3oProFnP8Q,,,N,0,0,,,2010-06-27 10:17,2010-06-27 10:17,admin,admin,,,
308,83221,764,10605,841,0,0,N,N,N,CP_Drtn,TT_Mile,DT_FixedDrtn,RV_OK,TK_NotStart,A12960,IFC drawings,,248,0,0,0,0,0,0,0,0,0,,,,2010-07-27 08:00,2010-07-27 08:00,,2010-06-21 08:00,2010-06-21 08:00,2010-06-21 08:00,2010-06-21 08:00,2010-06-21 08:00,2010-06-21 08:00,,2010-07-27 08:00,2010-07-27 08:00,,PT_Normal,,,,,LZo4OS59M02PI60uOHzjGA,KKCAr57vM0KCnXwzIAcLWQ,,,N,0,0,,,2010-06-27 10:17,2010-06-27 10:17,admin,admin,,,
309,83222,764,10567,841,1,0,N,N,N,CP_Drtn,TT_Task,DT_FixedDUR2,RV_OK,TK_NotStart,A12970,pouring for ground floor's slab,,248,0,8,0,0,0,8,0,0,0,,,,2010-09-28 08:00,2010-09-28 16:00,,2010-08-21 08:00,2010-08-21 16:00,2010-08-21 08:00,2010-08-21 16:00,2010-08-21 08:00,2010-08-21 16:00,,2010-09-28 08:00,2010-09-28 16:00,,PT_Normal,,,,,2LuEN4AFKEeAA8wuiZ75pg,qIxmwHcHDE2o3li0mZPaMA,,,N,0,0,,,2010-06-27 10:17,2010-06-27 10:17,admin,admin,,,
310,83223,764,10567,841,1,0,N,N,N,CP_Drtn,TT_Task,DT_FixedDUR2,RV_OK,TK_NotStart,A12980,pouring for 1st floor's slab,,264,0,8,0,0,0,8,0,0,0,,,,2010-10-19 08:00,2010-10-19 16:00,,2010-09-11 08:00,2010-09-11 16:00,2010-09-11 08:00,2010-09-11 16:00,2010-09-11 08:00,2010-09-11 16:00,,2010-10-19 08:00,2010-10-19 16:00,,PT_Normal,,,,,1E2aIpht9EqSC9VowYIm7A,NYNSKnhEzkSPDdgNAzbalg,,,N,0,0,,,2010-06-27 10:17,2010-06-27 10:17,admin,admin,,,
311,83224,764,10567,841,1,0,N,N,N,CP_Drtn,TT_Task,DT_FixedDUR2,RV_OK,TK_NotStart,A12990,pouring for roof floor's slab,,264,0,8,0,0,0,8,0,0,0,,,,2010-11-03 08:00,2010-11-03 16:00,,2010-09-26 08:00,2010-09-26 16:00,2010-09-26 08:00,2010-09-26 16:00,2010-09-26 08:00,2010-09-26 16:00,,2010-11-03 08:00,2010-11-03 16:00,,PT_Normal,,,,,QIeOp/XXd0yY9/69O2ck+w,XTM5kI6/CEWi6b4fGrbPiw,,,N,0,0,,,2010-06-27 10:17,2010-06-27 10:17,admin,admin,,,
312,83225,764,10567,841,1,0,N,N,N,CP_Drtn,TT_Task,DT_FixedDrtn,RV_OK,TK_NotStart,A13000,Fence work,,248,16,400,0,0,0,400,0,0,0,,,,2010-09-29 08:00,2010-11-30 16:00,,2010-08-22 08:00,2010-10-20 16:00,2010-08-22 08:00,2010-10-20 16:00,2010-08-22 08:00,2010-10-20 16:00,,2010-09-29 08:00,2010-11-30 16:00,,PT_Normal,,,,,nU7oMTk11kydGTE6ceDLDg,vx5aDDsZpEi0GvnojgMHPg,,,N,0,0,,,2010-06-27 10:17,2010-06-27 10:17,admin,admin,,,
313,83226,764,10605,841,1,0,N,N,N,CP_Drtn,TT_Task,DT_FixedDUR2,RV_OK,TK_NotStart,A13010,Fence Drawings IFC,,584,336,8,0,0,0,8,0,0,0,,,,2010-09-16 08:00,2010-09-16 16:00,,2010-06-21 08:00,2010-06-21 16:00,2010-06-21 08:00,2010-06-21 16:00,2010-06-21 08:00,2010-06-21 16:00,,2010-09-16 08:00,2010-09-16 16:00,,PT_Normal,,,,,LxnZnNLEn06Goh902UvNsA,Ewk2vGsPUUK9Dw4M84USkg,,,N,0,0,,,2010-06-27 10:17,2010-06-27 10:17,admin,admin,,,
314,83227,764,10566,849,1,0,N,N,N,CP_Drtn,TT_Task,DT_FixedDUR2,RV_OK,TK_NotStart,A13020,backfilling between P.C Foundation,,248,0,16,0,0,0,16,0,0,0,,,,2010-08-18 08:00,2010-08-19 16:00,,2010-07-13 08:00,2010-07-14 16:00,2010-07-13 08:00,2010-07-14 16:00,2010-07-13 08:00,2010-07-14 16:00,,2010-08-18 08:00,2010-08-19 16:00,,PT_Normal,,,,,h4EiipwSu0al2n4ivoHSgQ,bpqjLW3GNUyMWdEDC3296w,,,N,0,0,,,2010-06-27 10:17,2010-06-27 10:17,admin,admin,,,
315,83228,764,10566,849,1,0,N,N,N,CP_Drtn,TT_Task,DT_FixedDUR2,RV_OK,TK_NotStart,A13030,P.C Under Smells,,248,0,8,0,0,0,8,0,0,0,,,,2010-08-21 08:00,2010-08-21 16:00,,2010-07-15 08:00,2010-07-15 16:00,2010-07-15 08:00,2010-07-15 16:00,2010-07-15 08:00,2010-07-15 16:00,,2010-08-21 08:00,2010-08-21 16:00,,PT_Normal,,,,,HBPfo4kJSUWo6J5YDLaAjw,xjiK8jouyEG6GbHSovThAA,,,N,0,0,,,2010-06-27 10:17,2010-06-27 10:17,admin,admin,,,
316,83229,764,10567,849,1,0,N,N,N,CP_Drtn,TT_Task,DT_FixedDUR2,RV_OK,TK_NotStart,A13040,Brick works for 1st floor,,312,0,40,0,0,0,40,0,0,0,,,,2010-11-08 08:00,2010-11-13 16:00,,2010-09-23 08:00,2010-09-28 16:00,2010-09-23 08:00,2010-09-28 16:00,2010-09-23 08:00,2010-09-28 16:00,,2010-11-08 08:00,2010-11-13 16:00,,PT_Normal,,,,,ypZO9a/y/EWCe5EivsGwXQ,4SE6xW4pkkyXhajWw5cPYg,,,N,0,0,,,2010-06-27 10:17,2010-06-27 10:17,admin,admin,,,
317,83230,764,10567,849,1,0,N,N,N,CP_Drtn,TT_Task,DT_FixedDUR2,RV_OK,TK_NotStart,A13050,Brick works for roof floor,,264,0,40,0,0,0,40,0,0,0,,,,2010-11-14 08:00,2010-11-18 16:00,,2010-10-06 08:00,2010-10-11 16:00,2010-10-06 08:00,2010-10-11 16:00,2010-10-06 08:00,2010-10-11 16:00,,2010-11-14 08:00,2010-11-18 16:00,,PT_Normal,,,,,Zm7cBnsOH0aWn7tiph3lgg,JdmALZkIikOz0VdSkmzJRA,,,N,0,0,,,2010-06-27 10:17,2010-06-27 10:17,admin,admin,,,
318,83231,764,10569,849,1,0,N,N,N,CP_Drtn,TT_Task,DT_FixedDUR2,RV_OK,TK_NotStart,A13060,Internal plastering for 1st floor,,312,24,64,0,0,0,64,0,0,0,,,,2010-11-16 08:00,2010-11-24 16:00,,2010-10-02 08:00,2010-10-10 16:00,2010-10-02 08:00,2010-10-10 16:00,2010-10-02 08:00,2010-10-10 16:00,,2010-11-16 08:00,2010-11-24 16:00,,PT_Normal,,,,,aLuHzNgGTU+Lm4PdVXAXeA,D3d+1OJiT0qaHNO9f3X6hg,,,N,0,0,,,2010-06-27 10:17,2010-06-27 10:17,admin,admin,,,
319,83232,764,10569,849,1,0,N,N,N,CP_Drtn,TT_Task,DT_FixedDUR2,RV_OK,TK_NotStart,A13070,Internal plastering for roof floor,,288,24,40,0,0,0,40,0,0,0,,,,2010-11-25 08:00,2010-11-30 16:00,,2010-10-14 08:00,2010-10-19 16:00,2010-10-14 08:00,2010-10-19 16:00,2010-10-14 08:00,2010-10-19 16:00,,2010-11-25 08:00,2010-11-30 16:00,,PT_Normal,,,,,tV8szMhOt0+CoRakKyz+ZQ,vDHKilJ9mESzfcvqRMVN7w,,,N,0,0,,,2010-06-27 10:17,2010-06-27 10:17,admin,admin,,,
320,83233,764,10568,849,1,0,N,N,N,CP_Drtn,TT_Task,DT_FixedDUR2,RV_OK,TK_NotStart,A13080,electrical conduits for ground floor walls,,320,0,16,0,0,0,16,0,0,0,,,,2010-11-03 08:00,2010-11-04 16:00,,2010-09-18 08:00,2010-09-19 16:00,2010-09-18 08:00,2010-09-19 16:00,2010-09-18 08:00,2010-09-19 16:00,,2010-11-03 08:00,2010-11-04 16:00,,PT_Normal,,,,,sTOF3IuL6EWMzEm2EkpWbQ,IHVMktZ2wkaxba+GfwatGg,,,N,0,0,,,2010-06-27 10:17,2010-06-27 10:17,admin,admin,,,
321,83234,764,10568,849,1,0,N,N,N,CP_Drtn,TT_Task,DT_FixedDUR2,RV_OK,TK_NotStart,A13090,electrical conduits for 1st floor walls,,312,0,16,0,0,0,16,0,0,0,,,,2010-11-14 08:00,2010-11-15 16:00,,2010-09-29 08:00,2010-09-30 16:00,2010-09-29 08:00,2010-09-30 16:00,2010-09-29 08:00,2010-09-30 16:00,,2010-11-14 08:00,2010-11-15 16:00,,PT_Normal,,,,,On9toLpnp0Wp72z6fmHJZQ,y0pv2t7o9UmDj9aqwxvZdQ,,,N,0,0,,,2010-06-27 10:17,2010-06-27 10:17,admin,admin,,,
322,83235,764,10568,849,1,0,N,N,N,CP_Drtn,TT_Task,DT_FixedDUR2,RV_OK,TK_NotStart,A13100,electrical conduits for roof floor walls,,288,0,16,0,0,0,16,0,0,0,,,,2010-11-23 08:00,2010-11-24 16:00,,2010-10-12 08:00,2010-10-13 16:00,2010-10-12 08:00,2010-10-13 16:00,2010-10-12 08:00,2010-10-13 16:00,,2010-11-23 08:00,2010-11-24 16:00,,PT_Normal,,,,,xhQ3UaVuYUyxBQc2Vu+ZTg,qjYl5MpHrUSJDj9O74+/rg,,,N,0,0,,,2010-06-27 10:17,2010-06-27 10:17,admin,admin,,,
323,83236,764,10613,841,1,0,N,N,N,CP_Drtn,TT_Task,DT_FixedDUR2,RV_OK,TK_NotStart,A13110,excavation,,152,0,16,0,0,0,16,0,0,0,,,,2010-07-29 08:00,2010-07-31 16:00,,2010-07-07 08:00,2010-07-08 16:00,2010-07-07 08:00,2010-07-08 16:00,2010-07-07 08:00,2010-07-08 16:00,,2010-07-29 08:00,2010-07-31 16:00,,PT_Normal,,,,,lLzu1ZOLU0mDMMX7c9DXbA,R3TNM3yzdUO76dQMhf/3Qw,,,N,0,0,,,2010-06-27 10:17,2010-06-27 10:17,admin,admin,,,
324,83237,764,10613,841,1,0,N,N,N,CP_Drtn,TT_Task,DT_FixedDUR2,RV_OK,TK_NotStart,A13120,soil replacement,,152,0,96,0,0,0,96,0,0,0,,,,2010-08-01 08:00,2010-08-14 16:00,,2010-07-10 08:00,2010-07-22 16:00,2010-07-10 08:00,2010-07-22 16:00,2010-07-10 08:00,2010-07-22 16:00,,2010-08-01 08:00,2010-08-14 16:00,,PT_Normal,,,,,Li1bqPBiG0GPuhtNLXvZaA,olbk3N9Gi06NPrYsp9x03w,,,N,0,0,,,2010-06-27 10:17,2010-06-27 10:17,admin,admin,,,
325,83238,764,10573,841,1,0,N,N,N,CP_Drtn,TT_Task,DT_FixedDUR2,RV_OK,TK_NotStart,A13130,Plain Concrete Foundation,,152,0,16,0,0,0,16,0,0,0,,,,2010-08-15 08:00,2010-08-16 16:00,,2010-07-24 08:00,2010-07-25 16:00,2010-07-24 08:00,2010-07-25 16:00,2010-07-24 08:00,2010-07-25 16:00,,2010-08-15 08:00,2010-08-16 16:00,,PT_Normal,,,,,Y/WVTHYceEWoUbfQNrxC/g,hGn66stRRU26I1qNTSI0Iw,,,N,0,0,,,2010-06-27 10:17,2010-06-27 10:17,admin,admin,,,
326,83239,764,10573,841,1,0,N,N,N,CP_Drtn,TT_Task,DT_FixedDUR2,RV_OK,TK_NotStart,A13140,Reinforced Concrete Foundation,,152,0,56,0,0,0,56,0,0,0,,,,2010-08-22 08:00,2010-08-29 16:00,,2010-07-31 08:00,2010-08-07 16:00,2010-07-31 08:00,2010-08-07 16:00,2010-07-31 08:00,2010-08-07 16:00,,2010-08-22 08:00,2010-08-29 16:00,,PT_Normal,,,,,yjRhZtVSzUim22vafy+3lw,DvGEJc+/vUuA0sZS0a7UJw,,,N,0,0,,,2010-06-27 10:17,2010-06-27 10:17,admin,admin,,,
327,83240,764,10573,841,1,0,N,N,N,CP_Drtn,TT_Task,DT_FixedDUR2,RV_OK,TK_NotStart,A13150,under ground  brick works,,152,0,16,0,0,0,16,0,0,0,,,,2010-09-06 08:00,2010-09-07 16:00,,2010-08-15 08:00,2010-08-16 16:00,2010-08-15 08:00,2010-08-16 16:00,2010-08-15 08:00,2010-08-16 16:00,,2010-09-06 08:00,2010-09-07 16:00,,PT_Normal,,,,,1CI8qf1cBkCXCFp3SddfUw,JNwW+g/EO0uoJ0R4gOJzSg,,,N,0,0,,,2010-06-27 10:17,2010-06-27 10:17,admin,admin,,,
328,83241,764,10573,841,1,0,N,N,N,CP_Drtn,TT_Task,DT_FixedDUR2,RV_OK,TK_NotStart,A13160,under ground insulation for RC & Brick work,,152,0,16,0,0,0,16,0,0,0,,,,2010-09-11 08:00,2010-09-12 16:00,,2010-08-17 08:00,2010-08-18 16:00,2010-08-17 08:00,2010-08-18 16:00,2010-08-17 08:00,2010-08-18 16:00,,2010-09-11 08:00,2010-09-12 16:00,,PT_Normal,,,,,ofLgxaAVIUagmvkaKy8tDA,90nY4pHAJ0+MgRqBtxlrng,,,N,0,0,,,2010-06-27 10:17,2010-06-27 10:17,admin,admin,,,
329,83242,764,10573,841,1,0,N,N,N,CP_Drtn,TT_Task,DT_FixedDUR2,RV_OK,TK_NotStart,A13170,backfilling for under ground,,152,0,32,0,0,0,32,0,0,0,,,,2010-09-13 08:00,2010-09-16 16:00,,2010-08-19 08:00,2010-08-23 16:00,2010-08-19 08:00,2010-08-23 16:00,2010-08-19 08:00,2010-08-23 16:00,,2010-09-13 08:00,2010-09-16 16:00,,PT_Normal,,,,,Z+GAB7pnkkiNAYIytTes/A,GpWSRcCfzEuVNfadvOmIeQ,,,N,0,0,,,2010-06-27 10:17,2010-06-27 10:17,admin,admin,,,
330,83243,764,10573,841,1,0,N,N,N,CP_Drtn,TT_Task,DT_FixedDUR2,RV_OK,TK_NotStart,A13180,P.C slab on grade 10CM,,224,0,8,0,0,0,8,0,0,0,,,,2010-10-27 08:00,2010-10-27 16:00,,2010-09-25 08:00,2010-09-25 16:00,2010-09-25 08:00,2010-09-25 16:00,2010-09-25 08:00,2010-09-25 16:00,,2010-10-27 08:00,2010-10-27 16:00,,PT_Normal,,,,,GLwxF66SXkqQGToSkwLGgw,cOPUN0PoHUqR6tQ+ljWEEw,,,N,0,0,,,2010-06-27 10:17,2010-06-27 10:17,admin,admin,,,
331,83244,764,10573,841,1,0,N,N,N,CP_Drtn,TT_Task,DT_FixedDUR2,RV_OK,TK_NotStart,A13190,moisture insulation with membrane sheets,,224,0,16,0,0,0,16,0,0,0,,,,2010-10-28 08:00,2010-10-30 16:00,,2010-09-26 08:00,2010-09-27 16:00,2010-09-26 08:00,2010-09-27 16:00,2010-09-26 08:00,2010-09-27 16:00,,2010-10-28 08:00,2010-10-30 16:00,,PT_Normal,,,,,V0tM96chzEmmfCfaIBZ6dA,p9dlsWItDEeGY+LrjE9diA,,,N,0,0,,,2010-06-27 10:17,2010-06-27 10:17,admin,admin,,,
332,83245,764,10573,841,1,0,N,N,N,CP_Drtn,TT_Task,DT_FixedDUR2,RV_OK,TK_NotStart,A13200,R.C slab on grade,,224,0,16,0,0,0,16,0,0,0,,,,2010-10-31 08:00,2010-11-01 16:00,,2010-09-28 08:00,2010-09-29 16:00,2010-09-28 08:00,2010-09-29 16:00,2010-09-28 08:00,2010-09-29 16:00,,2010-10-31 08:00,2010-11-01 16:00,,PT_Normal,,,,,1sKqZs9j3kyumFOzHJ1H6g,lyQlXuoagkmp7YuXCdiU8A,,,N,0,0,,,2010-06-27 10:17,2010-06-27 10:17,admin,admin,,,
333,83246,764,10574,841,1,0,N,N,N,CP_Drtn,TT_Task,DT_FixedDUR2,RV_OK,TK_NotStart,A13210,columns for ground floor,,152,0,48,0,0,0,48,0,0,0,,,,2010-08-30 08:00,2010-09-05 16:00,,2010-08-08 08:00,2010-08-14 16:00,2010-08-08 08:00,2010-08-14 16:00,2010-08-08 08:00,2010-08-14 16:00,,2010-08-30 08:00,2010-09-05 16:00,,PT_Normal,,,,,Ssxugp0YzkWMtFyQKJNocw,DYvU2MVPFk+0PMDQud24ww,,,N,0,0,,,2010-06-27 10:17,2010-06-27 10:17,admin,admin,,,
334,83247,764,10574,841,1,0,N,N,N,CP_Drtn,TT_Task,DT_FixedDUR2,RV_OK,TK_NotStart,A13220,slab for ground floor,,152,0,72,0,0,0,72,0,0,0,,,,2010-09-18 08:00,2010-09-27 16:00,,2010-08-24 08:00,2010-09-02 16:00,2010-08-24 08:00,2010-09-02 16:00,2010-08-24 08:00,2010-09-02 16:00,,2010-09-18 08:00,2010-09-27 16:00,,PT_Normal,,,,,JnF2+yklMk+wq5mABjVE7g,W+KtvF2ZJka4pcFRjmlGHQ,,,N,0,0,,,2010-06-27 10:17,2010-06-27 10:17,admin,admin,,,
335,83248,764,10574,841,1,0,N,N,N,CP_Drtn,TT_Task,DT_FixedDUR2,RV_OK,TK_NotStart,A13230,columns for 1st floor,,168,0,48,0,0,0,48,0,0,0,,,,2010-10-02 08:00,2010-10-07 16:00,,2010-09-05 08:00,2010-09-13 16:00,2010-09-05 08:00,2010-09-13 16:00,2010-09-05 08:00,2010-09-13 16:00,,2010-10-02 08:00,2010-10-07 16:00,,PT_Normal,,,,,eEn5C6BD10q28Nv5davivA,C+sCg2EM5E+cjP1C+SHrhg,,,N,0,0,,,2010-06-27 10:17,2010-06-27 10:17,admin,admin,,,
336,83249,764,10574,841,1,0,N,N,N,CP_Drtn,TT_Task,DT_FixedDUR2,RV_OK,TK_NotStart,A13240,slab for 1st floor,,168,0,72,0,0,0,72,0,0,0,,,,2010-10-09 08:00,2010-10-18 16:00,,2010-09-14 08:00,2010-09-23 16:00,2010-09-14 08:00,2010-09-23 16:00,2010-09-14 08:00,2010-09-23 16:00,,2010-10-09 08:00,2010-10-18 16:00,,PT_Normal,,,,,PsyFtap2h0y4CyoBBlLUeg,OSG26RUpp0WENFHxpX/i8g,,,N,0,0,,,2010-06-27 10:17,2010-06-27 10:17,admin,admin,,,
337,83250,764,10574,841,1,0,N,N,N,CP_Drtn,TT_Task,DT_FixedDUR2,RV_OK,TK_NotStart,A13250,columns for roof floor,,168,0,32,0,0,0,32,0,0,0,,,,2010-10-23 08:00,2010-10-26 16:00,,2010-09-28 08:00,2010-10-02 16:00,2010-09-28 08:00,2010-10-02 16:00,2010-09-28 08:00,2010-10-02 16:00,,2010-10-23 08:00,2010-10-26 16:00,,PT_Normal,,,,,Dw6++UIFS0izu6mNtnHwsg,CIA1H2lF1Eipy2/3R4jSZg,,,N,0,0,,,2010-06-27 10:17,2010-06-27 10:17,admin,admin,,,
338,83251,764,10574,841,1,0,N,N,N,CP_Drtn,TT_Task,DT_FixedDUR2,RV_OK,TK_NotStart,A13260,slab for roof floor,,168,0,48,0,0,0,48,0,0,0,,,,2010-10-27 08:00,2010-11-02 16:00,,2010-10-03 08:00,2010-10-09 16:00,2010-10-03 08:00,2010-10-09 16:00,2010-10-03 08:00,2010-10-09 16:00,,2010-10-27 08:00,2010-11-02 16:00,,PT_Normal,,,,,pJq3DN0OTUanCORLJcjBcg,hPu25p5PeEieAgio9RotTw,,,N,0,0,,,2010-06-27 10:17,2010-06-27 10:17,admin,admin,,,
339,83252,764,10574,841,1,0,N,N,N,CP_Drtn,TT_Task,DT_FixedDUR2,RV_OK,TK_NotStart,A13270,Brick works for ground floor,,224,0,40,0,0,0,40,0,0,0,,,,2010-10-21 08:00,2010-10-26 16:00,,2010-09-19 08:00,2010-09-23 16:00,2010-09-19 08:00,2010-09-23 16:00,2010-09-19 08:00,2010-09-23 16:00,,2010-10-21 08:00,2010-10-26 16:00,,PT_Normal,,,,,LPQQUQZwxUawn3OuOo1blQ,82VQjNyoGUG4lvrTA+8q5A,,,N,0,0,,,2010-06-27 10:17,2010-06-27 10:17,admin,admin,,,
340,83253,764,10575,841,1,0,N,N,N,CP_Drtn,TT_Task,DT_FixedDrtn,RV_OK,TK_NotStart,A13280,electrical conduits for ground floor's slab,,160,8,16,0,0,0,16,0,0,0,,,,2010-09-23 08:00,2010-09-25 16:00,,2010-08-29 08:00,2010-08-30 16:00,2010-08-29 08:00,2010-08-30 16:00,2010-08-29 08:00,2010-08-30 16:00,,2010-09-23 08:00,2010-09-25 16:00,,PT_Normal,,,,,mWJGxeAG6UuypN5nSgSpKA,JH14ZrZa5EKYF7uKV7Xznw,,,N,0,0,,,2010-06-27 10:17,2010-06-27 10:17,admin,admin,,,
341,83254,764,10575,841,1,0,N,N,N,CP_Drtn,TT_Task,DT_FixedDrtn,RV_OK,TK_NotStart,A13290,electrical conduits for 1st floor slab,,176,8,16,0,0,0,16,0,0,0,,,,2010-10-14 08:00,2010-10-16 16:00,,2010-09-19 08:00,2010-09-20 16:00,2010-09-19 08:00,2010-09-20 16:00,2010-09-19 08:00,2010-09-20 16:00,,2010-10-14 08:00,2010-10-16 16:00,,PT_Normal,,,,,h2VNdTnMU0+81z/RQri3Og,74Iqj17s10STe9TEsidkcw,,,N,0,0,,,2010-06-27 10:17,2010-06-27 10:17,admin,admin,,,
342,83255,764,10575,841,1,0,N,N,N,CP_Drtn,TT_Task,DT_FixedDrtn,RV_OK,TK_NotStart,A13300,electrical conduits for roof slab,,176,8,8,0,0,0,8,0,0,0,,,,2010-11-01 08:00,2010-11-01 16:00,,2010-10-06 08:00,2010-10-06 16:00,2010-10-06 08:00,2010-10-06 16:00,2010-10-06 08:00,2010-10-06 16:00,,2010-11-01 08:00,2010-11-01 16:00,,PT_Normal,,,,,fXduHHOmGke+HV+YAV6fkg,jlDGG74onUehTH9YWfhjuw,,,N,0,0,,,2010-06-27 10:17,2010-06-27 10:17,admin,admin,,,
343,83256,764,10576,841,1,0,N,N,N,CP_Drtn,TT_Task,DT_FixedDUR2,RV_OK,TK_NotStart,A13310,Internal plastering for ground floor,,224,16,64,0,0,0,64,0,0,0,,,,2010-11-06 08:00,2010-11-14 16:00,,2010-10-04 08:00,2010-10-12 16:00,2010-10-04 08:00,2010-10-12 16:00,2010-10-04 08:00,2010-10-12 16:00,,2010-11-06 08:00,2010-11-14 16:00,,PT_Normal,,,,,xBVfw7WpdkyRYU6+U0QKEg,f3jeNT1nJE+c5lm3M0mkFQ,,,N,0,0,,,2010-06-27 10:17,2010-06-27 10:17,admin,admin,,,
344,83257,764,10576,841,1,0,N,N,N,CP_Drtn,TT_Task,DT_FixedDUR2,RV_OK,TK_NotStart,A13320,External plastering,,136,0,80,0,0,0,80,0,0,0,,,,2010-11-20 08:00,2010-11-30 16:00,,2010-10-26 08:00,2010-11-06 16:00,2010-10-26 08:00,2010-11-06 16:00,2010-10-26 08:00,2010-11-06 16:00,,2010-11-20 08:00,2010-11-30 16:00,,PT_Normal,,,,,GLmrGATmWUaCYmT8klA08w,1t5xH0Z8XkS/Dq2jauSd5A,,,N,0,0,,,2010-06-27 10:17,2010-06-27 10:17,admin,admin,,,
345,83258,764,10575,841,1,0,N,N,N,CP_Drtn,TT_Task,DT_FixedDrtn,RV_OK,TK_NotStart,A13330,plumbing connections under slab on grade,,408,184,16,0,0,0,16,0,0,0,,,,2010-10-25 08:00,2010-10-26 16:00,,2010-08-24 08:00,2010-08-25 16:00,2010-08-24 08:00,2010-08-25 16:00,2010-08-24 08:00,2010-08-25 16:00,,2010-10-25 08:00,2010-10-26 16:00,,PT_Normal,,,,,vTsX+KhBlkOQFYxI7QIAqQ,MdefTGyqL0mv2GPYK5Xqeg,,,N,0,0,,,2010-06-27 10:17,2010-06-27 10:17,admin,admin,,,
346,83259,764,10612,841,0,0,N,N,N,CP_Drtn,TT_Mile,DT_FixedDrtn,RV_OK,TK_NotStart,A13340,Start Villa construction,,152,0,0,0,0,0,0,0,0,0,,,,2010-07-13 08:00,2010-07-13 08:00,,2010-06-21 08:00,2010-06-21 08:00,2010-06-21 08:00,2010-06-21 08:00,2010-06-21 08:00,2010-06-21 08:00,,2010-07-13 08:00,2010-07-13 08:00,,PT_Normal,,,,,tAOcEYjaHE2DPbnoUr7p1g,P+mx5C6tjE+3haelspixPQ,,,N,0,0,,,2010-06-27 10:17,2010-06-27 10:17,admin,admin,,,
347,83260,764,10612,841,0,0,N,N,N,CP_Drtn,TT_FinMile,DT_FixedDrtn,RV_OK,TK_NotStart,A13350,finish Villa construction,,136,136,0,0,0,0,0,0,0,0,,,,2010-11-30 16:00,2010-11-30 16:00,,2010-11-06 16:00,2010-11-06 16:00,2010-11-06 16:00,2010-11-06 16:00,2010-11-06 16:00,2010-11-06 16:00,,2010-11-30 16:00,2010-11-30 16:00,,PT_Normal,,,,,O03towxlgUCGqgWUvaNjWg,8eDhE+m6z0unUmlGDdpvZg,,,N,0,0,,,2010-06-27 10:17,2010-06-27 10:17,admin,admin,,,
348,83261,764,10612,841,0,0,N,N,N,CP_Drtn,TT_Mile,DT_FixedDrtn,RV_OK,TK_NotStart,A13360,IFC drawings,,152,0,0,0,0,0,0,0,0,0,,,,2010-07-13 08:00,2010-07-13 08:00,,2010-06-21 08:00,2010-06-21 08:00,2010-06-21 08:00,2010-06-21 08:00,2010-06-21 08:00,2010-06-21 08:00,,2010-07-13 08:00,2010-07-13 08:00,,PT_Normal,,,,,F91AEDVl1USbaZEiR16itA,PSZ6WAYfhUKMCgZbuMqjng,,,N,0,0,,,2010-06-27 10:17,2010-06-27 10:17,admin,admin,,,
349,83262,764,10574,841,1,0,N,N,N,CP_Drtn,TT_Task,DT_FixedDUR2,RV_OK,TK_NotStart,A13370,pouring for ground floor's slab,,152,0,8,0,0,0,8,0,0,0,,,,2010-09-28 08:00,2010-09-28 16:00,,2010-09-04 08:00,2010-09-04 16:00,2010-09-04 08:00,2010-09-04 16:00,2010-09-04 08:00,2010-09-04 16:00,,2010-09-28 08:00,2010-09-28 16:00,,PT_Normal,,,,,wmzZn4Fv4EeQ67kb4og7Tw,jr7OwDGe+0q9Izf8AZpEVg,,,N,0,0,,,2010-06-27 10:17,2010-06-27 10:17,admin,admin,,,
350,83263,764,10574,841,1,0,N,N,N,CP_Drtn,TT_Task,DT_FixedDUR2,RV_OK,TK_NotStart,A13380,pouring for 1st floor's slab,,168,0,8,0,0,0,8,0,0,0,,,,2010-10-19 08:00,2010-10-19 16:00,,2010-09-25 08:00,2010-09-25 16:00,2010-09-25 08:00,2010-09-25 16:00,2010-09-25 08:00,2010-09-25 16:00,,2010-10-19 08:00,2010-10-19 16:00,,PT_Normal,,,,,aRuVD0UfekWETx5cYFd5Vg,ojkd5ORbYEm5JasxAPXQRQ,,,N,0,0,,,2010-06-27 10:17,2010-06-27 10:17,admin,admin,,,
351,83264,764,10574,841,1,0,N,N,N,CP_Drtn,TT_Task,DT_FixedDUR2,RV_OK,TK_NotStart,A13390,pouring for roof floor's slab,,168,0,8,0,0,0,8,0,0,0,,,,2010-11-03 08:00,2010-11-03 16:00,,2010-10-10 08:00,2010-10-10 16:00,2010-10-10 08:00,2010-10-10 16:00,2010-10-10 08:00,2010-10-10 16:00,,2010-11-03 08:00,2010-11-03 16:00,,PT_Normal,,,,,bh0kPbu4UEacyO0HP3F0fg,SACJHqMoB0iyjXHyz3mrqA,,,N,0,0,,,2010-06-27 10:17,2010-06-27 10:17,admin,admin,,,
352,83265,764,10574,841,1,0,N,N,N,CP_Drtn,TT_Task,DT_FixedDrtn,RV_OK,TK_NotStart,A13400,Fence work,,152,16,400,0,0,0,400,0,0,0,,,,2010-09-29 08:00,2010-11-30 16:00,,2010-09-05 08:00,2010-11-03 16:00,2010-09-05 08:00,2010-11-03 16:00,2010-09-05 08:00,2010-11-03 16:00,,2010-09-29 08:00,2010-11-30 16:00,,PT_Normal,,,,,txta3a5W3ES7+YDWvtuLgQ,pj49oOZlwkSEU6ApSkmhVQ,,,N,0,0,,,2010-06-27 10:17,2010-06-27 10:17,admin,admin,,,
353,83266,764,10612,841,1,0,N,N,N,CP_Drtn,TT_Task,DT_FixedDUR2,RV_OK,TK_NotStart,A13410,Fence Drawings IFC,,584,432,8,0,0,0,8,0,0,0,,,,2010-09-16 08:00,2010-09-16 16:00,,2010-06-21 08:00,2010-06-21 16:00,2010-06-21 08:00,2010-06-21 16:00,2010-06-21 08:00,2010-06-21 16:00,,2010-09-16 08:00,2010-09-16 16:00,,PT_Normal,,,,,ct2p8Gin6ky5spccb+6i2w,TZp1iY5VGk2DPlVArCc85g,,,N,0,0,,,2010-06-27 10:17,2010-06-27 10:17,admin,admin,,,
354,83267,764,10573,849,1,0,N,N,N,CP_Drtn,TT_Task,DT_FixedDUR2,RV_OK,TK_NotStart,A13420,backfilling between P.C Foundation,,152,0,16,0,0,0,16,0,0,0,,,,2010-08-18 08:00,2010-08-19 16:00,,2010-07-27 08:00,2010-07-28 16:00,2010-07-27 08:00,2010-07-28 16:00,2010-07-27 08:00,2010-07-28 16:00,,2010-08-18 08:00,2010-08-19 16:00,,PT_Normal,,,,,9g/+nAKQekebd2/xLNExdA,0UEJlEeWJEqbWGYtMaSNeQ,,,N,0,0,,,2010-06-27 10:17,2010-06-27 10:17,admin,admin,,,
355,83268,764,10573,849,1,0,N,N,N,CP_Drtn,TT_Task,DT_FixedDUR2,RV_OK,TK_NotStart,A13430,P.C Under Smells,,152,0,8,0,0,0,8,0,0,0,,,,2010-08-21 08:00,2010-08-21 16:00,,2010-07-29 08:00,2010-07-29 16:00,2010-07-29 08:00,2010-07-29 16:00,2010-07-29 08:00,2010-07-29 16:00,,2010-08-21 08:00,2010-08-21 16:00,,PT_Normal,,,,,36aiuxrbw02GV0M7qB+xvA,lX7pmnhDIU6mRbB51Sge6A,,,N,0,0,,,2010-06-27 10:17,2010-06-27 10:17,admin,admin,,,
356,83269,764,10574,849,1,0,N,N,N,CP_Drtn,TT_Task,DT_FixedDUR2,RV_OK,TK_NotStart,A13440,Brick works for 1st floor,,216,0,40,0,0,0,40,0,0,0,,,,2010-11-08 08:00,2010-11-13 16:00,,2010-10-07 08:00,2010-10-12 16:00,2010-10-07 08:00,2010-10-12 16:00,2010-10-07 08:00,2010-10-12 16:00,,2010-11-08 08:00,2010-11-13 16:00,,PT_Normal,,,,,QuWHqnUpHEWMSdWL6kJCfw,M8VTYmjp1UeeDye6NQLPCg,,,N,0,0,,,2010-06-27 10:17,2010-06-27 10:17,admin,admin,,,
357,83270,764,10574,849,1,0,N,N,N,CP_Drtn,TT_Task,DT_FixedDUR2,RV_OK,TK_NotStart,A13450,Brick works for roof floor,,168,0,40,0,0,0,40,0,0,0,,,,2010-11-14 08:00,2010-11-18 16:00,,2010-10-20 08:00,2010-10-25 16:00,2010-10-20 08:00,2010-10-25 16:00,2010-10-20 08:00,2010-10-25 16:00,,2010-11-14 08:00,2010-11-18 16:00,,PT_Normal,,,,,dzqx5PREkkyiAghCmUyA/A,I5Z+AbVfOka0zQnFc7P2og,,,N,0,0,,,2010-06-27 10:17,2010-06-27 10:17,admin,admin,,,
358,83271,764,10576,849,1,0,N,N,N,CP_Drtn,TT_Task,DT_FixedDUR2,RV_OK,TK_NotStart,A13460,Internal plastering for 1st floor,,216,24,64,0,0,0,64,0,0,0,,,,2010-11-16 08:00,2010-11-24 16:00,,2010-10-16 08:00,2010-10-24 16:00,2010-10-16 08:00,2010-10-24 16:00,2010-10-16 08:00,2010-10-24 16:00,,2010-11-16 08:00,2010-11-24 16:00,,PT_Normal,,,,,UMM+bUeA9UWhfqpEeczKvg,lXcx/TrK5EGc+3utfL7ufw,,,N,0,0,,,2010-06-27 10:17,2010-06-27 10:17,admin,admin,,,
359,83272,764,10576,849,1,0,N,N,N,CP_Drtn,TT_Task,DT_FixedDUR2,RV_OK,TK_NotStart,A13470,Internal plastering for roof floor,,192,24,40,0,0,0,40,0,0,0,,,,2010-11-25 08:00,2010-11-30 16:00,,2010-10-28 08:00,2010-11-02 16:00,2010-10-28 08:00,2010-11-02 16:00,2010-10-28 08:00,2010-11-02 16:00,,2010-11-25 08:00,2010-11-30 16:00,,PT_Normal,,,,,kaUI1szTmkGDmvDdXw3gfQ,IyaVAAbbGUm0BtRqJfbW6w,,,N,0,0,,,2010-06-27 10:17,2010-06-27 10:17,admin,admin,,,
360,83273,764,10575,849,1,0,N,N,N,CP_Drtn,TT_Task,DT_FixedDUR2,RV_OK,TK_NotStart,A13480,electrical conduits for ground floor walls,,224,0,16,0,0,0,16,0,0,0,,,,2010-11-03 08:00,2010-11-04 16:00,,2010-10-02 08:00,2010-10-03 16:00,2010-10-02 08:00,2010-10-03 16:00,2010-10-02 08:00,2010-10-03 16:00,,2010-11-03 08:00,2010-11-04 16:00,,PT_Normal,,,,,vb6nfCf220W/CvZFmUtkdw,qIWWuwOWOU2tc71T+/HxZg,,,N,0,0,,,2010-06-27 10:17,2010-06-27 10:17,admin,admin,,,
361,83274,764,10575,849,1,0,N,N,N,CP_Drtn,TT_Task,DT_FixedDUR2,RV_OK,TK_NotStart,A13490,electrical conduits for 1st floor walls,,216,0,16,0,0,0,16,0,0,0,,,,2010-11-14 08:00,2010-11-15 16:00,,2010-10-13 08:00,2010-10-14 16:00,2010-10-13 08:00,2010-10-14 16:00,2010-10-13 08:00,2010-10-14 16:00,,2010-11-14 08:00,2010-11-15 16:00,,PT_Normal,,,,,3YOBmD9MdESJcIuJqDaL/Q,z0Xhfc2z8EKfnXY6gJnZmg,,,N,0,0,,,2010-06-27 10:17,2010-06-27 10:17,admin,admin,,,
362,83275,764,10575,849,1,0,N,N,N,CP_Drtn,TT_Task,DT_FixedDUR2,RV_OK,TK_NotStart,A13500,electrical conduits for roof floor walls,,192,0,16,0,0,0,16,0,0,0,,,,2010-11-23 08:00,2010-11-24 16:00,,2010-10-26 08:00,2010-10-27 16:00,2010-10-26 08:00,2010-10-27 16:00,2010-10-26 08:00,2010-10-27 16:00,,2010-11-23 08:00,2010-11-24 16:00,,PT_Normal,,,,,ExaZi2SKHUigGp5wpJes5A,8c2RU0mgxU6E+A+HTvIAvg,,,N,0,0,,,2010-06-27 10:17,2010-06-27 10:17,admin,admin,,,
363,83276,764,10620,841,1,0,N,N,N,CP_Drtn,TT_Task,DT_FixedDUR2,RV_OK,TK_NotStart,A13510,excavation,,144,0,0,0,0,0,0,0,0,0,,,,2010-07-28 16:00,2010-07-28 16:00,,2010-07-08 08:00,2010-07-08 08:00,2010-07-08 08:00,2010-07-08 08:00,2010-07-08 08:00,2010-07-08 08:00,,2010-07-28 16:00,2010-07-28 16:00,,PT_Normal,,,,,CECgJMVmrUmK2U5CeYUuZQ,AII/mqfHlEG1z9TiqijJlQ,,,N,0,0,,,2010-06-27 10:17,2010-06-27 10:17,admin,admin,,,
364,83277,764,10620,841,1,0,N,N,N,CP_Drtn,TT_Task,DT_FixedDUR2,RV_OK,TK_NotStart,A13520,soil replacement,,144,0,112,0,0,0,112,0,0,0,,,,2010-07-29 08:00,2010-08-14 16:00,,2010-07-08 08:00,2010-07-24 16:00,2010-07-08 08:00,2010-07-24 16:00,2010-07-08 08:00,2010-07-24 16:00,,2010-07-29 08:00,2010-08-14 16:00,,PT_Normal,,,,,CVo5GMgOI0KRPE3tSBbuew,eEOQNFmwyk2ZCvRHlMKsvw,,,N,0,0,,,2010-06-27 10:17,2010-06-27 10:17,admin,admin,,,
365,83278,764,10580,841,1,0,N,N,N,CP_Drtn,TT_Task,DT_FixedDUR2,RV_OK,TK_NotStart,A13530,Plain Concrete Foundation,,144,0,16,0,0,0,16,0,0,0,,,,2010-08-15 08:00,2010-08-16 16:00,,2010-07-25 08:00,2010-07-26 16:00,2010-07-25 08:00,2010-07-26 16:00,2010-07-25 08:00,2010-07-26 16:00,,2010-08-15 08:00,2010-08-16 16:00,,PT_Normal,,,,,L4Sjgd1FUki+LVuZN+L6Bw,0uDrUp2lUE6XOMFr2A33qg,,,N,0,0,,,2010-06-27 10:17,2010-06-27 10:17,admin,admin,,,
366,83279,764,10580,841,1,0,N,N,N,CP_Drtn,TT_Task,DT_FixedDUR2,RV_OK,TK_NotStart,A13540,Reinforced Concrete Foundation,,144,0,56,0,0,0,56,0,0,0,,,,2010-08-22 08:00,2010-08-29 16:00,,2010-08-01 08:00,2010-08-08 16:00,2010-08-01 08:00,2010-08-08 16:00,2010-08-01 08:00,2010-08-08 16:00,,2010-08-22 08:00,2010-08-29 16:00,,PT_Normal,,,,,Wtcn7MqG/kWlmuB1Z3SVmg,XHIVQP19K0W3rmpFVhxO5g,,,N,0,0,,,2010-06-27 10:17,2010-06-27 10:17,admin,admin,,,
367,83280,764,10580,841,1,0,N,N,N,CP_Drtn,TT_Task,DT_FixedDUR2,RV_OK,TK_NotStart,A13550,under ground  brick works,,144,0,16,0,0,0,16,0,0,0,,,,2010-09-06 08:00,2010-09-07 16:00,,2010-08-16 08:00,2010-08-17 16:00,2010-08-16 08:00,2010-08-17 16:00,2010-08-16 08:00,2010-08-17 16:00,,2010-09-06 08:00,2010-09-07 16:00,,PT_Normal,,,,,grfFRxz1IEKSZRlQRNv8qg,hD7fhCY9skmGdDK3iA1bMg,,,N,0,0,,,2010-06-27 10:17,2010-06-27 10:17,admin,admin,,,
368,83281,764,10580,841,1,0,N,N,N,CP_Drtn,TT_Task,DT_FixedDUR2,RV_OK,TK_NotStart,A13560,under ground insulation for RC & Brick work,,144,0,16,0,0,0,16,0,0,0,,,,2010-09-11 08:00,2010-09-12 16:00,,2010-08-18 08:00,2010-08-19 16:00,2010-08-18 08:00,2010-08-19 16:00,2010-08-18 08:00,2010-08-19 16:00,,2010-09-11 08:00,2010-09-12 16:00,,PT_Normal,,,,,UWjnvqpRTESabUlSd4yoVA,bdDxtV8M302PjCLrrUMvqA,,,N,0,0,,,2010-06-27 10:17,2010-06-27 10:17,admin,admin,,,
369,83282,764,10580,841,1,0,N,N,N,CP_Drtn,TT_Task,DT_FixedDUR2,RV_OK,TK_NotStart,A13570,backfilling for under ground,,144,0,32,0,0,0,32,0,0,0,,,,2010-09-13 08:00,2010-09-16 16:00,,2010-08-21 08:00,2010-08-24 16:00,2010-08-21 08:00,2010-08-24 16:00,2010-08-21 08:00,2010-08-24 16:00,,2010-09-13 08:00,2010-09-16 16:00,,PT_Normal,,,,,FPm4woIu2kWwQwzJXxLXJA,rO0FiPuMX0iPufGgW7dxIg,,,N,0,0,,,2010-06-27 10:17,2010-06-27 10:17,admin,admin,,,
370,83283,764,10580,841,1,0,N,N,N,CP_Drtn,TT_Task,DT_FixedDUR2,RV_OK,TK_NotStart,A13580,P.C slab on grade 10CM,,216,0,8,0,0,0,8,0,0,0,,,,2010-10-27 08:00,2010-10-27 16:00,,2010-09-26 08:00,2010-09-26 16:00,2010-09-26 08:00,2010-09-26 16:00,2010-09-26 08:00,2010-09-26 16:00,,2010-10-27 08:00,2010-10-27 16:00,,PT_Normal,,,,,CYm6kQVhaUSlnA1dCyVXCg,LEWfIFgPAkuTZkCvHznUtA,,,N,0,0,,,2010-06-27 10:17,2010-06-27 10:17,admin,admin,,,
371,83284,764,10580,841,1,0,N,N,N,CP_Drtn,TT_Task,DT_FixedDUR2,RV_OK,TK_NotStart,A13590,moisture insulation with membrane sheets,,216,0,16,0,0,0,16,0,0,0,,,,2010-10-28 08:00,2010-10-30 16:00,,2010-09-27 08:00,2010-09-28 16:00,2010-09-27 08:00,2010-09-28 16:00,2010-09-27 08:00,2010-09-28 16:00,,2010-10-28 08:00,2010-10-30 16:00,,PT_Normal,,,,,zDlXjTzYREegcUxZVLDWSA,0KAe2gFWSkG44E2dApWJgg,,,N,0,0,,,2010-06-27 10:17,2010-06-27 10:17,admin,admin,,,
372,83285,764,10580,841,1,0,N,N,N,CP_Drtn,TT_Task,DT_FixedDUR2,RV_OK,TK_NotStart,A13600,R.C slab on grade,,216,0,16,0,0,0,16,0,0,0,,,,2010-10-31 08:00,2010-11-01 16:00,,2010-09-29 08:00,2010-09-30 16:00,2010-09-29 08:00,2010-09-30 16:00,2010-09-29 08:00,2010-09-30 16:00,,2010-10-31 08:00,2010-11-01 16:00,,PT_Normal,,,,,EQsPhGvd0U+MVTIR0oGyQA,EUyO56q9X0KwB48f0INPJQ,,,N,0,0,,,2010-06-27 10:17,2010-06-27 10:17,admin,admin,,,
373,83286,764,10581,841,1,0,N,N,N,CP_Drtn,TT_Task,DT_FixedDUR2,RV_OK,TK_NotStart,A13610,columns for ground floor,,144,0,48,0,0,0,48,0,0,0,,,,2010-08-30 08:00,2010-09-05 16:00,,2010-08-09 08:00,2010-08-15 16:00,2010-08-09 08:00,2010-08-15 16:00,2010-08-09 08:00,2010-08-15 16:00,,2010-08-30 08:00,2010-09-05 16:00,,PT_Normal,,,,,ARA3jp1UP0+LTsg7txONUA,WZLY/VLYsUu/HSP7Xs4rWg,,,N,0,0,,,2010-06-27 10:17,2010-06-27 10:17,admin,admin,,,
374,83287,764,10581,841,1,0,N,N,N,CP_Drtn,TT_Task,DT_FixedDUR2,RV_OK,TK_NotStart,A13620,slab for ground floor,,144,0,72,0,0,0,72,0,0,0,,,,2010-09-18 08:00,2010-09-27 16:00,,2010-08-25 08:00,2010-09-04 16:00,2010-08-25 08:00,2010-09-04 16:00,2010-08-25 08:00,2010-09-04 16:00,,2010-09-18 08:00,2010-09-27 16:00,,PT_Normal,,,,,klpjaORhdk+Y5lJjREXVIQ,hiEqHLAR+EuGtoWHBrMVXw,,,N,0,0,,,2010-06-27 10:17,2010-06-27 10:17,admin,admin,,,
375,83288,764,10581,841,1,0,N,N,N,CP_Drtn,TT_Task,DT_FixedDUR2,RV_OK,TK_NotStart,A13630,columns for 1st floor,,160,0,48,0,0,0,48,0,0,0,,,,2010-10-02 08:00,2010-10-07 16:00,,2010-09-06 08:00,2010-09-14 16:00,2010-09-06 08:00,2010-09-14 16:00,2010-09-06 08:00,2010-09-14 16:00,,2010-10-02 08:00,2010-10-07 16:00,,PT_Normal,,,,,M307OVKtbUmL6phF/Z1i0Q,2404/r+0G0yu/4M/ZtuxKw,,,N,0,0,,,2010-06-27 10:17,2010-06-27 10:17,admin,admin,,,
376,83289,764,10581,841,1,0,N,N,N,CP_Drtn,TT_Task,DT_FixedDUR2,RV_OK,TK_NotStart,A13640,slab for 1st floor,,160,0,72,0,0,0,72,0,0,0,,,,2010-10-09 08:00,2010-10-18 16:00,,2010-09-15 08:00,2010-09-25 16:00,2010-09-15 08:00,2010-09-25 16:00,2010-09-15 08:00,2010-09-25 16:00,,2010-10-09 08:00,2010-10-18 16:00,,PT_Normal,,,,,dA9Id+UUM0qJVYXbjCVjmA,gyoPI+QC6UW4lehrjuy17Q,,,N,0,0,,,2010-06-27 10:17,2010-06-27 10:17,admin,admin,,,
377,83290,764,10581,841,1,0,N,N,N,CP_Drtn,TT_Task,DT_FixedDUR2,RV_OK,TK_NotStart,A13650,columns for roof floor,,160,0,32,0,0,0,32,0,0,0,,,,2010-10-23 08:00,2010-10-26 16:00,,2010-09-29 08:00,2010-10-03 16:00,2010-09-29 08:00,2010-10-03 16:00,2010-09-29 08:00,2010-10-03 16:00,,2010-10-23 08:00,2010-10-26 16:00,,PT_Normal,,,,,NkXNB7MCLUGaXtm1LIcoOA,4QSawfaE80WwVBTmi/PcIQ,,,N,0,0,,,2010-06-27 10:17,2010-06-27 10:17,admin,admin,,,
378,83291,764,10581,841,1,0,N,N,N,CP_Drtn,TT_Task,DT_FixedDUR2,RV_OK,TK_NotStart,A13660,slab for roof floor,,160,0,48,0,0,0,48,0,0,0,,,,2010-10-27 08:00,2010-11-02 16:00,,2010-10-04 08:00,2010-10-10 16:00,2010-10-04 08:00,2010-10-10 16:00,2010-10-04 08:00,2010-10-10 16:00,,2010-10-27 08:00,2010-11-02 16:00,,PT_Normal,,,,,U9GHcg6AeUetZ6xwziVlLg,dWXZwua9HkqK5AxbiOY5xw,,,N,0,0,,,2010-06-27 10:17,2010-06-27 10:17,admin,admin,,,
379,83292,764,10581,841,1,0,N,N,N,CP_Drtn,TT_Task,DT_FixedDUR2,RV_OK,TK_NotStart,A13670,Brick works for ground floor,,216,0,40,0,0,0,40,0,0,0,,,,2010-10-21 08:00,2010-10-26 16:00,,2010-09-20 08:00,2010-09-25 16:00,2010-09-20 08:00,2010-09-25 16:00,2010-09-20 08:00,2010-09-25 16:00,,2010-10-21 08:00,2010-10-26 16:00,,PT_Normal,,,,,aXiizu9ghUq1WBAxm4kOJQ,eWbshw0Q2UCb0Lj2gh3lyg,,,N,0,0,,,2010-06-27 10:17,2010-06-27 10:17,admin,admin,,,
380,83293,764,10582,841,1,0,N,N,N,CP_Drtn,TT_Task,DT_FixedDrtn,RV_OK,TK_NotStart,A13680,electrical conduits for ground floor's slab,,152,8,16,0,0,0,16,0,0,0,,,,2010-09-23 08:00,2010-09-25 16:00,,2010-08-30 08:00,2010-08-31 16:00,2010-08-30 08:00,2010-08-31 16:00,2010-08-30 08:00,2010-08-31 16:00,,2010-09-23 08:00,2010-09-25 16:00,,PT_Normal,,,,,+dvJACkz8UCRGRtAXQNhRg,lYH/y9IXi0yKkYCgwvRtmA,,,N,0,0,,,2010-06-27 10:17,2010-06-27 10:17,admin,admin,,,
381,83294,764,10582,841,1,0,N,N,N,CP_Drtn,TT_Task,DT_FixedDrtn,RV_OK,TK_NotStart,A13690,electrical conduits for 1st floor slab,,168,8,16,0,0,0,16,0,0,0,,,,2010-10-14 08:00,2010-10-16 16:00,,2010-09-20 08:00,2010-09-21 16:00,2010-09-20 08:00,2010-09-21 16:00,2010-09-20 08:00,2010-09-21 16:00,,2010-10-14 08:00,2010-10-16 16:00,,PT_Normal,,,,,UEQEvF3gREeSp7KqQVQqww,WZwh12UYG06YQjso7Ut+1g,,,N,0,0,,,2010-06-27 10:17,2010-06-27 10:17,admin,admin,,,
382,83295,764,10582,841,1,0,N,N,N,CP_Drtn,TT_Task,DT_FixedDrtn,RV_OK,TK_NotStart,A13700,electrical conduits for roof slab,,168,8,8,0,0,0,8,0,0,0,,,,2010-11-01 08:00,2010-11-01 16:00,,2010-10-07 08:00,2010-10-07 16:00,2010-10-07 08:00,2010-10-07 16:00,2010-10-07 08:00,2010-10-07 16:00,,2010-11-01 08:00,2010-11-01 16:00,,PT_Normal,,,,,t0FGfBiYHU2g8AE27e24YA,IqNp+oh6AkCT6bueOrs4lw,,,N,0,0,,,2010-06-27 10:17,2010-06-27 10:17,admin,admin,,,
383,83296,764,10583,841,1,0,N,N,N,CP_Drtn,TT_Task,DT_FixedDUR2,RV_OK,TK_NotStart,A13710,Internal plastering for ground floor,,216,16,64,0,0,0,64,0,0,0,,,,2010-11-06 08:00,2010-11-14 16:00,,2010-10-05 08:00,2010-10-13 16:00,2010-10-05 08:00,2010-10-13 16:00,2010-10-05 08:00,2010-10-13 16:00,,2010-11-06 08:00,2010-11-14 16:00,,PT_Normal,,,,,a10bCsxanUyAfoqsjSFsCw,EP0hg+PCMEyY/11V1HszCA,,,N,0,0,,,2010-06-27 10:17,2010-06-27 10:17,admin,admin,,,
384,83297,764,10583,841,1,0,N,N,N,CP_Drtn,TT_Task,DT_FixedDUR2,RV_OK,TK_NotStart,A13720,External plastering,,128,0,80,0,0,0,80,0,0,0,,,,2010-11-20 08:00,2010-11-30 16:00,,2010-10-27 08:00,2010-11-07 16:00,2010-10-27 08:00,2010-11-07 16:00,2010-10-27 08:00,2010-11-07 16:00,,2010-11-20 08:00,2010-11-30 16:00,,PT_Normal,,,,,0heEfQribki5jBG7GmYXug,h1+O6XwkOUaEuVScqAcaFA,,,N,0,0,,,2010-06-27 10:17,2010-06-27 10:17,admin,admin,,,
385,83298,764,10582,841,1,0,N,N,N,CP_Drtn,TT_Task,DT_FixedDrtn,RV_OK,TK_NotStart,A13730,plumbing connections under slab on grade,,400,184,16,0,0,0,16,0,0,0,,,,2010-10-25 08:00,2010-10-26 16:00,,2010-08-25 08:00,2010-08-26 16:00,2010-08-25 08:00,2010-08-26 16:00,2010-08-25 08:00,2010-08-26 16:00,,2010-10-25 08:00,2010-10-26 16:00,,PT_Normal,,,,,OIVs5OvTp0mSfV/U7TSMxA,pOd7FW4y2EmyQMIhF0Ng8w,,,N,0,0,,,2010-06-27 10:17,2010-06-27 10:17,admin,admin,,,
386,83299,764,10619,841,0,0,N,N,N,CP_Drtn,TT_Mile,DT_FixedDrtn,RV_OK,TK_NotStart,A13740,Start Villa construction,,144,0,0,0,0,0,0,0,0,0,,,,2010-07-12 08:00,2010-07-12 08:00,,2010-06-21 08:00,2010-06-21 08:00,2010-06-21 08:00,2010-06-21 08:00,2010-06-21 08:00,2010-06-21 08:00,,2010-07-12 08:00,2010-07-12 08:00,,PT_Normal,,,,,/qxVsyYgP0CrGl7N7Az27g,oW5j7VabIEW4aLPsE2Ph9g,,,N,0,0,,,2010-06-27 10:17,2010-06-27 10:17,admin,admin,,,
387,83300,764,10619,841,0,0,N,N,N,CP_Drtn,TT_FinMile,DT_FixedDrtn,RV_OK,TK_NotStart,A13750,finish Villa construction,,128,128,0,0,0,0,0,0,0,0,,,,2010-11-30 16:00,2010-11-30 16:00,,2010-11-07 16:00,2010-11-07 16:00,2010-11-07 16:00,2010-11-07 16:00,2010-11-07 16:00,2010-11-07 16:00,,2010-11-30 16:00,2010-11-30 16:00,,PT_Normal,,,,,dujkuVXDwkmwhXXT0JEeDw,5FQxYTeHR0K4FNWbLTXXGA,,,N,0,0,,,2010-06-27 10:17,2010-06-27 10:17,admin,admin,,,
388,83301,764,10619,841,0,0,N,N,N,CP_Drtn,TT_Mile,DT_FixedDrtn,RV_OK,TK_NotStart,A13760,IFC drawings,,144,0,0,0,0,0,0,0,0,0,,,,2010-07-12 08:00,2010-07-12 08:00,,2010-06-21 08:00,2010-06-21 08:00,2010-06-21 08:00,2010-06-21 08:00,2010-06-21 08:00,2010-06-21 08:00,,2010-07-12 08:00,2010-07-12 08:00,,PT_Normal,,,,,CfA0BlAhHUiyg8EzRrVr5Q,xMeb0Kz1A0ay9nFlAD4SzQ,,,N,0,0,,,2010-06-27 10:17,2010-06-27 10:17,admin,admin,,,
389,83302,764,10581,841,1,0,N,N,N,CP_Drtn,TT_Task,DT_FixedDUR2,RV_OK,TK_NotStart,A13770,pouring for ground floor's slab,,144,0,8,0,0,0,8,0,0,0,,,,2010-09-28 08:00,2010-09-28 16:00,,2010-09-05 08:00,2010-09-05 16:00,2010-09-05 08:00,2010-09-05 16:00,2010-09-05 08:00,2010-09-05 16:00,,2010-09-28 08:00,2010-09-28 16:00,,PT_Normal,,,,,Vf9VZE2cpkeXzcDBkOgEUA,MLzGOim1q0+4pHFcg6ySfQ,,,N,0,0,,,2010-06-27 10:17,2010-06-27 10:17,admin,admin,,,
390,83303,764,10581,841,1,0,N,N,N,CP_Drtn,TT_Task,DT_FixedDUR2,RV_OK,TK_NotStart,A13780,pouring for 1st floor's slab,,160,0,8,0,0,0,8,0,0,0,,,,2010-10-19 08:00,2010-10-19 16:00,,2010-09-26 08:00,2010-09-26 16:00,2010-09-26 08:00,2010-09-26 16:00,2010-09-26 08:00,2010-09-26 16:00,,2010-10-19 08:00,2010-10-19 16:00,,PT_Normal,,,,,wIlHdzhUkkO2ZdPgrkZPNA,Yv183K5Bt0WybfPlTeAGzw,,,N,0,0,,,2010-06-27 10:17,2010-06-27 10:17,admin,admin,,,
391,83304,764,10581,841,1,0,N,N,N,CP_Drtn,TT_Task,DT_FixedDUR2,RV_OK,TK_NotStart,A13790,pouring for roof floor's slab,,160,0,8,0,0,0,8,0,0,0,,,,2010-11-03 08:00,2010-11-03 16:00,,2010-10-11 08:00,2010-10-11 16:00,2010-10-11 08:00,2010-10-11 16:00,2010-10-11 08:00,2010-10-11 16:00,,2010-11-03 08:00,2010-11-03 16:00,,PT_Normal,,,,,wnuhtkkulkekVJS38RcxIg,HdklaBI1uEW1r+4gu+LOPA,,,N,0,0,,,2010-06-27 10:17,2010-06-27 10:17,admin,admin,,,
392,83305,764,10581,841,1,0,N,N,N,CP_Drtn,TT_Task,DT_FixedDrtn,RV_OK,TK_NotStart,A13800,Fence work,,144,16,400,0,0,0,400,0,0,0,,,,2010-09-29 08:00,2010-11-30 16:00,,2010-09-06 08:00,2010-11-04 16:00,2010-09-06 08:00,2010-11-04 16:00,2010-09-06 08:00,2010-11-04 16:00,,2010-09-29 08:00,2010-11-30 16:00,,PT_Normal,,,,,kYZtU3+L/0Cnq4AA5C3log,K7NJnH3zv0O7tQXkak4kLA,,,N,0,0,,,2010-06-27 10:17,2010-06-27 10:17,admin,admin,,,
393,83306,764,10619,841,1,0,N,N,N,CP_Drtn,TT_Task,DT_FixedDUR2,RV_OK,TK_NotStart,A13810,Fence Drawings IFC,,584,440,8,0,0,0,8,0,0,0,,,,2010-09-16 08:00,2010-09-16 16:00,,2010-06-21 08:00,2010-06-21 16:00,2010-06-21 08:00,2010-06-21 16:00,2010-06-21 08:00,2010-06-21 16:00,,2010-09-16 08:00,2010-09-16 16:00,,PT_Normal,,,,,uWFxDzs/xUCynpSFhyoeOw,WgnieKSS0UqpVY2jMWhE1Q,,,N,0,0,,,2010-06-27 10:17,2010-06-27 10:17,admin,admin,,,
394,83307,764,10580,849,1,0,N,N,N,CP_Drtn,TT_Task,DT_FixedDUR2,RV_OK,TK_NotStart,A13820,backfilling between P.C Foundation,,144,0,16,0,0,0,16,0,0,0,,,,2010-08-18 08:00,2010-08-19 16:00,,2010-07-28 08:00,2010-07-29 16:00,2010-07-28 08:00,2010-07-29 16:00,2010-07-28 08:00,2010-07-29 16:00,,2010-08-18 08:00,2010-08-19 16:00,,PT_Normal,,,,,KpSFOGsBXUuyStcKC/SFMg,KyEOMaCKhUWnMX0PIMU1OQ,,,N,0,0,,,2010-06-27 10:17,2010-06-27 10:17,admin,admin,,,
395,83308,764,10580,849,1,0,N,N,N,CP_Drtn,TT_Task,DT_FixedDUR2,RV_OK,TK_NotStart,A13830,P.C Under Smells,,144,0,8,0,0,0,8,0,0,0,,,,2010-08-21 08:00,2010-08-21 16:00,,2010-07-31 08:00,2010-07-31 16:00,2010-07-31 08:00,2010-07-31 16:00,2010-07-31 08:00,2010-07-31 16:00,,2010-08-21 08:00,2010-08-21 16:00,,PT_Normal,,,,,/oQxHFF19U+THNNVh2NMXQ,44ED4iSlx0Crl2hWZ9/iYw,,,N,0,0,,,2010-06-27 10:17,2010-06-27 10:17,admin,admin,,,
396,83309,764,10581,849,1,0,N,N,N,CP_Drtn,TT_Task,DT_FixedDUR2,RV_OK,TK_NotStart,A13840,Brick works for 1st floor,,208,0,40,0,0,0,40,0,0,0,,,,2010-11-08 08:00,2010-11-13 16:00,,2010-10-09 08:00,2010-10-13 16:00,2010-10-09 08:00,2010-10-13 16:00,2010-10-09 08:00,2010-10-13 16:00,,2010-11-08 08:00,2010-11-13 16:00,,PT_Normal,,,,,spMP0fL2z0WrQWHK/WkWUg,gxhE8hv7cEi1U67GGFSJUA,,,N,0,0,,,2010-06-27 10:17,2010-06-27 10:17,admin,admin,,,
397,83310,764,10581,849,1,0,N,N,N,CP_Drtn,TT_Task,DT_FixedDUR2,RV_OK,TK_NotStart,A13850,Brick works for roof floor,,160,0,40,0,0,0,40,0,0,0,,,,2010-11-14 08:00,2010-11-18 16:00,,2010-10-21 08:00,2010-10-26 16:00,2010-10-21 08:00,2010-10-26 16:00,2010-10-21 08:00,2010-10-26 16:00,,2010-11-14 08:00,2010-11-18 16:00,,PT_Normal,,,,,r1qQ6Q+giEmsbASbq5U9bQ,2GX5IGYN3UGIJ3vkhJbB1A,,,N,0,0,,,2010-06-27 10:17,2010-06-27 10:17,admin,admin,,,
398,83311,764,10583,849,1,0,N,N,N,CP_Drtn,TT_Task,DT_FixedDUR2,RV_OK,TK_NotStart,A13860,Internal plastering for 1st floor,,208,24,64,0,0,0,64,0,0,0,,,,2010-11-16 08:00,2010-11-24 16:00,,2010-10-17 08:00,2010-10-25 16:00,2010-10-17 08:00,2010-10-25 16:00,2010-10-17 08:00,2010-10-25 16:00,,2010-11-16 08:00,2010-11-24 16:00,,PT_Normal,,,,,25dWyib3sUuo6ztH4RDJPw,FZ+BZ/6CT0iFbE5fyvVr+w,,,N,0,0,,,2010-06-27 10:17,2010-06-27 10:17,admin,admin,,,
399,83312,764,10583,849,1,0,N,N,N,CP_Drtn,TT_Task,DT_FixedDUR2,RV_OK,TK_NotStart,A13870,Internal plastering for roof floor,,184,24,40,0,0,0,40,0,0,0,,,,2010-11-25 08:00,2010-11-30 16:00,,2010-10-30 08:00,2010-11-03 16:00,2010-10-30 08:00,2010-11-03 16:00,2010-10-30 08:00,2010-11-03 16:00,,2010-11-25 08:00,2010-11-30 16:00,,PT_Normal,,,,,U3phH04GJE6uO/L23ENXZQ,aTS593o6k0uFHhHBv5rvcA,,,N,0,0,,,2010-06-27 10:17,2010-06-27 10:17,admin,admin,,,
400,83313,764,10582,849,1,0,N,N,N,CP_Drtn,TT_Task,DT_FixedDUR2,RV_OK,TK_NotStart,A13880,electrical conduits for ground floor walls,,216,0,16,0,0,0,16,0,0,0,,,,2010-11-03 08:00,2010-11-04 16:00,,2010-10-03 08:00,2010-10-04 16:00,2010-10-03 08:00,2010-10-04 16:00,2010-10-03 08:00,2010-10-04 16:00,,2010-11-03 08:00,2010-11-04 16:00,,PT_Normal,,,,,O0Rb9tbQ0025j+B7ntauzw,H361bLZx10uIqrF0BkckSA,,,N,0,0,,,2010-06-27 10:17,2010-06-27 10:17,admin,admin,,,
401,83314,764,10582,849,1,0,N,N,N,CP_Drtn,TT_Task,DT_FixedDUR2,RV_OK,TK_NotStart,A13890,electrical conduits for 1st floor walls,,208,0,16,0,0,0,16,0,0,0,,,,2010-11-14 08:00,2010-11-15 16:00,,2010-10-14 08:00,2010-10-16 16:00,2010-10-14 08:00,2010-10-16 16:00,2010-10-14 08:00,2010-10-16 16:00,,2010-11-14 08:00,2010-11-15 16:00,,PT_Normal,,,,,ElxM76MzCkKolzWyLxjD2A,qBEcOuv2dEOLAdc4N+jwGQ,,,N,0,0,,,2010-06-27 10:17,2010-06-27 10:17,admin,admin,,,
402,83315,764,10582,849,1,0,N,N,N,CP_Drtn,TT_Task,DT_FixedDUR2,RV_OK,TK_NotStart,A13900,electrical conduits for roof floor walls,,184,0,16,0,0,0,16,0,0,0,,,,2010-11-23 08:00,2010-11-24 16:00,,2010-10-27 08:00,2010-10-28 16:00,2010-10-27 08:00,2010-10-28 16:00,2010-10-27 08:00,2010-10-28 16:00,,2010-11-23 08:00,2010-11-24 16:00,,PT_Normal,,,,,d/qnu0mOG0mNxu2zTYGA9w,D+YF0QDf6kKxhL9/8BQcag,,,N,0,0,,,2010-06-27 10:17,2010-06-27 10:17,admin,admin,,,
403,83316,764,10627,841,1,0,N,N,N,CP_Drtn,TT_Task,DT_FixedDUR2,RV_OK,TK_NotStart,A13910,excavation,,136,0,16,0,0,0,16,0,0,0,,,,2010-07-29 08:00,2010-07-31 16:00,,2010-07-10 08:00,2010-07-11 16:00,2010-07-10 08:00,2010-07-11 16:00,2010-07-10 08:00,2010-07-11 16:00,,2010-07-29 08:00,2010-07-31 16:00,,PT_Normal,,,,,kt+K/K3k/EK5dbEidNn/Og,2m90Sl3qz0W4FBiMh6gpVw,,,N,0,0,,,2010-06-27 10:17,2010-06-27 10:17,admin,admin,,,
404,83317,764,10627,841,1,0,N,N,N,CP_Drtn,TT_Task,DT_FixedDUR2,RV_OK,TK_NotStart,A13920,soil replacement,,136,0,96,0,0,0,96,0,0,0,,,,2010-08-01 08:00,2010-08-14 16:00,,2010-07-12 08:00,2010-07-25 16:00,2010-07-12 08:00,2010-07-25 16:00,2010-07-12 08:00,2010-07-25 16:00,,2010-08-01 08:00,2010-08-14 16:00,,PT_Normal,,,,,L70QStObu0C89V40c7fJ8Q,HxXEqdZThkW7dr7YxDW1FA,,,N,0,0,,,2010-06-27 10:17,2010-06-27 10:17,admin,admin,,,
405,83318,764,10587,841,1,0,N,N,N,CP_Drtn,TT_Task,DT_FixedDUR2,RV_OK,TK_NotStart,A13930,Plain Concrete Foundation,,136,0,16,0,0,0,16,0,0,0,,,,2010-08-15 08:00,2010-08-16 16:00,,2010-07-26 08:00,2010-07-27 16:00,2010-07-26 08:00,2010-07-27 16:00,2010-07-26 08:00,2010-07-27 16:00,,2010-08-15 08:00,2010-08-16 16:00,,PT_Normal,,,,,hWJ6pE9+0EqMUpRLveq6PA,NClZS67vj0CiCVDxHm8AxA,,,N,0,0,,,2010-06-27 10:17,2010-06-27 10:17,admin,admin,,,
406,83319,764,10587,841,1,0,N,N,N,CP_Drtn,TT_Task,DT_FixedDUR2,RV_OK,TK_NotStart,A13940,Reinforced Concrete Foundation,,136,0,56,0,0,0,56,0,0,0,,,,2010-08-22 08:00,2010-08-29 16:00,,2010-08-02 08:00,2010-08-09 16:00,2010-08-02 08:00,2010-08-09 16:00,2010-08-02 08:00,2010-08-09 16:00,,2010-08-22 08:00,2010-08-29 16:00,,PT_Normal,,,,,YQ0b3CkLCk+44SsODar+DQ,mvQyYCVAb0imLVIffsioeA,,,N,0,0,,,2010-06-27 10:17,2010-06-27 10:17,admin,admin,,,
407,83320,764,10587,841,1,0,N,N,N,CP_Drtn,TT_Task,DT_FixedDUR2,RV_OK,TK_NotStart,A13950,under ground  brick works,,136,0,16,0,0,0,16,0,0,0,,,,2010-09-06 08:00,2010-09-07 16:00,,2010-08-17 08:00,2010-08-18 16:00,2010-08-17 08:00,2010-08-18 16:00,2010-08-17 08:00,2010-08-18 16:00,,2010-09-06 08:00,2010-09-07 16:00,,PT_Normal,,,,,A/hQuQl6uUWICxm2WIZ1uA,L60fjOhxQ0SW4kUp0Xt1jg,,,N,0,0,,,2010-06-27 10:17,2010-06-27 10:17,admin,admin,,,
408,83321,764,10587,841,1,0,N,N,N,CP_Drtn,TT_Task,DT_FixedDUR2,RV_OK,TK_NotStart,A13960,under ground insulation for RC & Brick work,,136,0,16,0,0,0,16,0,0,0,,,,2010-09-11 08:00,2010-09-12 16:00,,2010-08-19 08:00,2010-08-21 16:00,2010-08-19 08:00,2010-08-21 16:00,2010-08-19 08:00,2010-08-21 16:00,,2010-09-11 08:00,2010-09-12 16:00,,PT_Normal,,,,,NBIuk41kSkKM18Y8eNki2w,5GRRUVUh30mAxR5rbvm1HQ,,,N,0,0,,,2010-06-27 10:17,2010-06-27 10:17,admin,admin,,,
409,83322,764,10587,841,1,0,N,N,N,CP_Drtn,TT_Task,DT_FixedDUR2,RV_OK,TK_NotStart,A13970,backfilling for under ground,,136,0,32,0,0,0,32,0,0,0,,,,2010-09-13 08:00,2010-09-16 16:00,,2010-08-22 08:00,2010-08-25 16:00,2010-08-22 08:00,2010-08-25 16:00,2010-08-22 08:00,2010-08-25 16:00,,2010-09-13 08:00,2010-09-16 16:00,,PT_Normal,,,,,NE6Gib5ztkOoOP12UFd4cA,+Es3J6c4OEqp86v2z0hPNg,,,N,0,0,,,2010-06-27 10:17,2010-06-27 10:17,admin,admin,,,
410,83323,764,10587,841,1,0,N,N,N,CP_Drtn,TT_Task,DT_FixedDUR2,RV_OK,TK_NotStart,A13980,P.C slab on grade 10CM,,208,0,8,0,0,0,8,0,0,0,,,,2010-10-27 08:00,2010-10-27 16:00,,2010-09-27 08:00,2010-09-27 16:00,2010-09-27 08:00,2010-09-27 16:00,2010-09-27 08:00,2010-09-27 16:00,,2010-10-27 08:00,2010-10-27 16:00,,PT_Normal,,,,,8EkheWJm0E+R1Bqd/TbFFA,WVvK5XK5KEOjb9g2qWvPNg,,,N,0,0,,,2010-06-27 10:17,2010-06-27 10:17,admin,admin,,,
411,83324,764,10587,841,1,0,N,N,N,CP_Drtn,TT_Task,DT_FixedDUR2,RV_OK,TK_NotStart,A13990,moisture insulation with membrane sheets,,208,0,16,0,0,0,16,0,0,0,,,,2010-10-28 08:00,2010-10-30 16:00,,2010-09-28 08:00,2010-09-29 16:00,2010-09-28 08:00,2010-09-29 16:00,2010-09-28 08:00,2010-09-29 16:00,,2010-10-28 08:00,2010-10-30 16:00,,PT_Normal,,,,,1i3kwiGEuUiAcRKHXWzR4A,NNsp+J8ur0qa6d8xVD+xKQ,,,N,0,0,,,2010-06-27 10:17,2010-06-27 10:17,admin,admin,,,
412,83325,764,10587,841,1,0,N,N,N,CP_Drtn,TT_Task,DT_FixedDUR2,RV_OK,TK_NotStart,A14000,R.C slab on grade,,208,0,16,0,0,0,16,0,0,0,,,,2010-10-31 08:00,2010-11-01 16:00,,2010-09-30 08:00,2010-10-02 16:00,2010-09-30 08:00,2010-10-02 16:00,2010-09-30 08:00,2010-10-02 16:00,,2010-10-31 08:00,2010-11-01 16:00,,PT_Normal,,,,,2atNddpP20qWnPUUJjEedg,PPFkve0pDU29E5q5QLeRAQ,,,N,0,0,,,2010-06-27 10:17,2010-06-27 10:17,admin,admin,,,
413,83326,764,10588,841,1,0,N,N,N,CP_Drtn,TT_Task,DT_FixedDUR2,RV_OK,TK_NotStart,A14010,columns for ground floor,,136,0,48,0,0,0,48,0,0,0,,,,2010-08-30 08:00,2010-09-05 16:00,,2010-08-10 08:00,2010-08-16 16:00,2010-08-10 08:00,2010-08-16 16:00,2010-08-10 08:00,2010-08-16 16:00,,2010-08-30 08:00,2010-09-05 16:00,,PT_Normal,,,,,ClwPo2nEaU++375c9/jipA,RPrSL4YI+0aUyRGn5oEVfA,,,N,0,0,,,2010-06-27 10:17,2010-06-27 10:17,admin,admin,,,
414,83327,764,10588,841,1,0,N,N,N,CP_Drtn,TT_Task,DT_FixedDUR2,RV_OK,TK_NotStart,A14020,slab for ground floor,,136,0,72,0,0,0,72,0,0,0,,,,2010-09-18 08:00,2010-09-27 16:00,,2010-08-26 08:00,2010-09-05 16:00,2010-08-26 08:00,2010-09-05 16:00,2010-08-26 08:00,2010-09-05 16:00,,2010-09-18 08:00,2010-09-27 16:00,,PT_Normal,,,,,Vonn6ZNvDU2Ce32z9BTPjw,Q+Zg+MJfBUOsUXaHoTKGiQ,,,N,0,0,,,2010-06-27 10:17,2010-06-27 10:17,admin,admin,,,
415,83328,764,10588,841,1,0,N,N,N,CP_Drtn,TT_Task,DT_FixedDUR2,RV_OK,TK_NotStart,A14030,columns for 1st floor,,152,0,48,0,0,0,48,0,0,0,,,,2010-10-02 08:00,2010-10-07 16:00,,2010-09-07 08:00,2010-09-15 16:00,2010-09-07 08:00,2010-09-15 16:00,2010-09-07 08:00,2010-09-15 16:00,,2010-10-02 08:00,2010-10-07 16:00,,PT_Normal,,,,,LLh7YVOpZEOdnZLc1Z2fPg,VZQgFVxTK0eIgllpsX7jzw,,,N,0,0,,,2010-06-27 10:17,2010-06-27 10:17,admin,admin,,,
416,83329,764,10588,841,1,0,N,N,N,CP_Drtn,TT_Task,DT_FixedDUR2,RV_OK,TK_NotStart,A14040,slab for 1st floor,,152,0,72,0,0,0,72,0,0,0,,,,2010-10-09 08:00,2010-10-18 16:00,,2010-09-16 08:00,2010-09-26 16:00,2010-09-16 08:00,2010-09-26 16:00,2010-09-16 08:00,2010-09-26 16:00,,2010-10-09 08:00,2010-10-18 16:00,,PT_Normal,,,,,WCA++iG68EGTezajS6R2/A,QpT5qNNkOEmDjyQPuEaeLg,,,N,0,0,,,2010-06-27 10:17,2010-06-27 10:17,admin,admin,,,
417,83330,764,10588,841,1,0,N,N,N,CP_Drtn,TT_Task,DT_FixedDUR2,RV_OK,TK_NotStart,A14050,columns for roof floor,,152,0,32,0,0,0,32,0,0,0,,,,2010-10-23 08:00,2010-10-26 16:00,,2010-09-30 08:00,2010-10-04 16:00,2010-09-30 08:00,2010-10-04 16:00,2010-09-30 08:00,2010-10-04 16:00,,2010-10-23 08:00,2010-10-26 16:00,,PT_Normal,,,,,qf7H6EpVRkmnNwkScxOSkw,v9kUUZ0KEU+e+m/giSH16w,,,N,0,0,,,2010-06-27 10:17,2010-06-27 10:17,admin,admin,,,
418,83331,764,10588,841,1,0,N,N,N,CP_Drtn,TT_Task,DT_FixedDUR2,RV_OK,TK_NotStart,A14060,slab for roof floor,,152,0,48,0,0,0,48,0,0,0,,,,2010-10-27 08:00,2010-11-02 16:00,,2010-10-05 08:00,2010-10-11 16:00,2010-10-05 08:00,2010-10-11 16:00,2010-10-05 08:00,2010-10-11 16:00,,2010-10-27 08:00,2010-11-02 16:00,,PT_Normal,,,,,iAP0TGH7TUC/fzFVEx4AIg,C/H1ezUhMUabSjBSFg9a1Q,,,N,0,0,,,2010-06-27 10:17,2010-06-27 10:17,admin,admin,,,
419,83332,764,10588,841,1,0,N,N,N,CP_Drtn,TT_Task,DT_FixedDUR2,RV_OK,TK_NotStart,A14070,Brick works for ground floor,,208,0,40,0,0,0,40,0,0,0,,,,2010-10-21 08:00,2010-10-26 16:00,,2010-09-21 08:00,2010-09-26 16:00,2010-09-21 08:00,2010-09-26 16:00,2010-09-21 08:00,2010-09-26 16:00,,2010-10-21 08:00,2010-10-26 16:00,,PT_Normal,,,,,MMCjTFyDQUKVO42TBEy5eg,ZS/qXWUsQEqjOsr2BOb1Dw,,,N,0,0,,,2010-06-27 10:17,2010-06-27 10:17,admin,admin,,,
420,83333,764,10589,841,1,0,N,N,N,CP_Drtn,TT_Task,DT_FixedDrtn,RV_OK,TK_NotStart,A14080,electrical conduits for ground floor's slab,,144,8,16,0,0,0,16,0,0,0,,,,2010-09-23 08:00,2010-09-25 16:00,,2010-08-31 08:00,2010-09-01 16:00,2010-08-31 08:00,2010-09-01 16:00,2010-08-31 08:00,2010-09-01 16:00,,2010-09-23 08:00,2010-09-25 16:00,,PT_Normal,,,,,4cCv6lETxEOf9S4syrMe/Q,iLybe42ckkSFQJvSH/Rg8Q,,,N,0,0,,,2010-06-27 10:17,2010-06-27 10:17,admin,admin,,,
421,83334,764,10589,841,1,0,N,N,N,CP_Drtn,TT_Task,DT_FixedDrtn,RV_OK,TK_NotStart,A14090,electrical conduits for 1st floor slab,,160,8,16,0,0,0,16,0,0,0,,,,2010-10-14 08:00,2010-10-16 16:00,,2010-09-21 08:00,2010-09-22 16:00,2010-09-21 08:00,2010-09-22 16:00,2010-09-21 08:00,2010-09-22 16:00,,2010-10-14 08:00,2010-10-16 16:00,,PT_Normal,,,,,K2MPh9dLLky+jSHIiq9Z/g,FAJi3siJFkqUYjOOdbdbWA,,,N,0,0,,,2010-06-27 10:17,2010-06-27 10:17,admin,admin,,,
422,83335,764,10589,841,1,0,N,N,N,CP_Drtn,TT_Task,DT_FixedDrtn,RV_OK,TK_NotStart,A14100,electrical conduits for roof slab,,160,8,8,0,0,0,8,0,0,0,,,,2010-11-01 08:00,2010-11-01 16:00,,2010-10-09 08:00,2010-10-09 16:00,2010-10-09 08:00,2010-10-09 16:00,2010-10-09 08:00,2010-10-09 16:00,,2010-11-01 08:00,2010-11-01 16:00,,PT_Normal,,,,,7tN2A+pw40WF09c9XNg+4Q,2lxX2kCcVkmcECLtxkj/gw,,,N,0,0,,,2010-06-27 10:17,2010-06-27 10:17,admin,admin,,,
423,83336,764,10590,841,1,0,N,N,N,CP_Drtn,TT_Task,DT_FixedDUR2,RV_OK,TK_NotStart,A14110,Internal plastering for ground floor,,208,16,64,0,0,0,64,0,0,0,,,,2010-11-06 08:00,2010-11-14 16:00,,2010-10-06 08:00,2010-10-14 16:00,2010-10-06 08:00,2010-10-14 16:00,2010-10-06 08:00,2010-10-14 16:00,,2010-11-06 08:00,2010-11-14 16:00,,PT_Normal,,,,,c0zxG8I/4UewQkLdsqQgig,59SeepcU20Kc7krzJtypfw,,,N,0,0,,,2010-06-27 10:17,2010-06-27 10:17,admin,admin,,,
424,83337,764,10590,841,1,0,N,N,N,CP_Drtn,TT_Task,DT_FixedDUR2,RV_OK,TK_NotStart,A14120,External plastering,,120,0,80,0,0,0,80,0,0,0,,,,2010-11-20 08:00,2010-11-30 16:00,,2010-10-28 08:00,2010-11-08 16:00,2010-10-28 08:00,2010-11-08 16:00,2010-10-28 08:00,2010-11-08 16:00,,2010-11-20 08:00,2010-11-30 16:00,,PT_Normal,,,,,8b0zAUAtWECldYt5HGOUmA,op0LXyzumkmh6EX/PdYnMA,,,N,0,0,,,2010-06-27 10:17,2010-06-27 10:17,admin,admin,,,
425,83338,764,10589,841,1,0,N,N,N,CP_Drtn,TT_Task,DT_FixedDrtn,RV_OK,TK_NotStart,A14130,plumbing connections under slab on grade,,392,184,16,0,0,0,16,0,0,0,,,,2010-10-25 08:00,2010-10-26 16:00,,2010-08-26 08:00,2010-08-28 16:00,2010-08-26 08:00,2010-08-28 16:00,2010-08-26 08:00,2010-08-28 16:00,,2010-10-25 08:00,2010-10-26 16:00,,PT_Normal,,,,,3Kmck0OO5UeT6ShOuQe/ew,gyU8bEzc+EGTG5VHpAXi8w,,,N,0,0,,,2010-06-27 10:17,2010-06-27 10:17,admin,admin,,,
426,83339,764,10626,841,0,0,N,N,N,CP_Drtn,TT_Mile,DT_FixedDrtn,RV_OK,TK_NotStart,A14140,Start Villa construction,,136,0,0,0,0,0,0,0,0,0,,,,2010-07-11 08:00,2010-07-11 08:00,,2010-06-21 08:00,2010-06-21 08:00,2010-06-21 08:00,2010-06-21 08:00,2010-06-21 08:00,2010-06-21 08:00,,2010-07-11 08:00,2010-07-11 08:00,,PT_Normal,,,,,s7WNGGbq0UilvtDHLMjthA,UFQv49ZrCkqFYWVfh8doAA,,,N,0,0,,,2010-06-27 10:17,2010-06-27 10:17,admin,admin,,,
427,83340,764,10626,841,0,0,N,N,N,CP_Drtn,TT_FinMile,DT_FixedDrtn,RV_OK,TK_NotStart,A14150,finish Villa construction,,120,120,0,0,0,0,0,0,0,0,,,,2010-11-30 16:00,2010-11-30 16:00,,2010-11-08 16:00,2010-11-08 16:00,2010-11-08 16:00,2010-11-08 16:00,2010-11-08 16:00,2010-11-08 16:00,,2010-11-30 16:00,2010-11-30 16:00,,PT_Normal,,,,,ILR+YG5cWE27+XvkpYrBbw,Rb3cIictOkWRl6hel5nUzA,,,N,0,0,,,2010-06-27 10:17,2010-06-27 10:17,admin,admin,,,
428,83341,764,10626,841,0,0,N,N,N,CP_Drtn,TT_Mile,DT_FixedDrtn,RV_OK,TK_NotStart,A14160,IFC drawings,,136,0,0,0,0,0,0,0,0,0,,,,2010-07-11 08:00,2010-07-11 08:00,,2010-06-21 08:00,2010-06-21 08:00,2010-06-21 08:00,2010-06-21 08:00,2010-06-21 08:00,2010-06-21 08:00,,2010-07-11 08:00,2010-07-11 08:00,,PT_Normal,,,,,rBOwUZ9aiE+DzzUgAf8ayQ,FzNgGuPo0kCXxr7o4UtCXw,,,N,0,0,,,2010-06-27 10:17,2010-06-27 10:17,admin,admin,,,
429,83342,764,10588,841,1,0,N,N,N,CP_Drtn,TT_Task,DT_FixedDUR2,RV_OK,TK_NotStart,A14170,pouring for ground floor's slab,,136,0,8,0,0,0,8,0,0,0,,,,2010-09-28 08:00,2010-09-28 16:00,,2010-09-06 08:00,2010-09-06 16:00,2010-09-06 08:00,2010-09-06 16:00,2010-09-06 08:00,2010-09-06 16:00,,2010-09-28 08:00,2010-09-28 16:00,,PT_Normal,,,,,Ac48opC8h0OKBY5DPWrrZw,fDJzWhiI6E2TgJlzEltmNw,,,N,0,0,,,2010-06-27 10:17,2010-06-27 10:17,admin,admin,,,
430,83343,764,10588,841,1,0,N,N,N,CP_Drtn,TT_Task,DT_FixedDUR2,RV_OK,TK_NotStart,A14180,pouring for 1st floor's slab,,152,0,8,0,0,0,8,0,0,0,,,,2010-10-19 08:00,2010-10-19 16:00,,2010-09-27 08:00,2010-09-27 16:00,2010-09-27 08:00,2010-09-27 16:00,2010-09-27 08:00,2010-09-27 16:00,,2010-10-19 08:00,2010-10-19 16:00,,PT_Normal,,,,,K178pHcw80640LPKPWarbg,jN9sOFetbUazVZXoAzVH6g,,,N,0,0,,,2010-06-27 10:17,2010-06-27 10:17,admin,admin,,,
431,83344,764,10588,841,1,0,N,N,N,CP_Drtn,TT_Task,DT_FixedDUR2,RV_OK,TK_NotStart,A14190,pouring for roof floor's slab,,152,0,8,0,0,0,8,0,0,0,,,,2010-11-03 08:00,2010-11-03 16:00,,2010-10-12 08:00,2010-10-12 16:00,2010-10-12 08:00,2010-10-12 16:00,2010-10-12 08:00,2010-10-12 16:00,,2010-11-03 08:00,2010-11-03 16:00,,PT_Normal,,,,,eoIoYaYHH0WYtQo5Zot2gQ,cCEmbIaL9k2yyy5QIDc4AQ,,,N,0,0,,,2010-06-27 10:17,2010-06-27 10:17,admin,admin,,,
432,83345,764,10588,841,1,0,N,N,N,CP_Drtn,TT_Task,DT_FixedDrtn,RV_OK,TK_NotStart,A14200,Fence work,,136,16,400,0,0,0,400,0,0,0,,,,2010-09-29 08:00,2010-11-30 16:00,,2010-09-07 08:00,2010-11-06 16:00,2010-09-07 08:00,2010-11-06 16:00,2010-09-07 08:00,2010-11-06 16:00,,2010-09-29 08:00,2010-11-30 16:00,,PT_Normal,,,,,rpXa8tbD5k6V01R5IdBxKw,UAJ5+W1W4kClSIZ5fss7Jg,,,N,0,0,,,2010-06-27 10:17,2010-06-27 10:17,admin,admin,,,
433,83346,764,10626,841,1,0,N,N,N,CP_Drtn,TT_Task,DT_FixedDUR2,RV_OK,TK_NotStart,A14210,Fence Drawings IFC,,584,448,8,0,0,0,8,0,0,0,,,,2010-09-16 08:00,2010-09-16 16:00,,2010-06-21 08:00,2010-06-21 16:00,2010-06-21 08:00,2010-06-21 16:00,2010-06-21 08:00,2010-06-21 16:00,,2010-09-16 08:00,2010-09-16 16:00,,PT_Normal,,,,,Ayzcz8uSIkmYtuEgeRCrUA,4L423wECokm/PvjbQw2w9A,,,N,0,0,,,2010-06-27 10:17,2010-06-27 10:17,admin,admin,,,
434,83347,764,10587,849,1,0,N,N,N,CP_Drtn,TT_Task,DT_FixedDUR2,RV_OK,TK_NotStart,A14220,backfilling between P.C Foundation,,136,0,16,0,0,0,16,0,0,0,,,,2010-08-18 08:00,2010-08-19 16:00,,2010-07-29 08:00,2010-07-31 16:00,2010-07-29 08:00,2010-07-31 16:00,2010-07-29 08:00,2010-07-31 16:00,,2010-08-18 08:00,2010-08-19 16:00,,PT_Normal,,,,,xJKCAV2YJkywzqGTkkwdOA,+YpQqsDgDUeDRDtpd3zoNQ,,,N,0,0,,,2010-06-27 10:17,2010-06-27 10:17,admin,admin,,,
435,83348,764,10587,849,1,0,N,N,N,CP_Drtn,TT_Task,DT_FixedDUR2,RV_OK,TK_NotStart,A14230,P.C Under Smells,,136,0,8,0,0,0,8,0,0,0,,,,2010-08-21 08:00,2010-08-21 16:00,,2010-08-01 08:00,2010-08-01 16:00,2010-08-01 08:00,2010-08-01 16:00,2010-08-01 08:00,2010-08-01 16:00,,2010-08-21 08:00,2010-08-21 16:00,,PT_Normal,,,,,Ixe58fRDZEm1Fh9a85B8IQ,Cfz/3w37Pki/IfkVikKIFw,,,N,0,0,,,2010-06-27 10:17,2010-06-27 10:17,admin,admin,,,
436,83349,764,10588,849,1,0,N,N,N,CP_Drtn,TT_Task,DT_FixedDUR2,RV_OK,TK_NotStart,A14240,Brick works for 1st floor,,200,0,40,0,0,0,40,0,0,0,,,,2010-11-08 08:00,2010-11-13 16:00,,2010-10-10 08:00,2010-10-14 16:00,2010-10-10 08:00,2010-10-14 16:00,2010-10-10 08:00,2010-10-14 16:00,,2010-11-08 08:00,2010-11-13 16:00,,PT_Normal,,,,,sXYr09ds20yttNpBwKSn0g,zxJXlGbSpEqWBkSSMsfvxQ,,,N,0,0,,,2010-06-27 10:17,2010-06-27 10:17,admin,admin,,,
437,83350,764,10588,849,1,0,N,N,N,CP_Drtn,TT_Task,DT_FixedDUR2,RV_OK,TK_NotStart,A14250,Brick works for roof floor,,152,0,40,0,0,0,40,0,0,0,,,,2010-11-14 08:00,2010-11-18 16:00,,2010-10-23 08:00,2010-10-27 16:00,2010-10-23 08:00,2010-10-27 16:00,2010-10-23 08:00,2010-10-27 16:00,,2010-11-14 08:00,2010-11-18 16:00,,PT_Normal,,,,,Rx6ezyPbFEGWDGiuMSyEbQ,pSChgxsEfECRgVNOx05vXw,,,N,0,0,,,2010-06-27 10:17,2010-06-27 10:17,admin,admin,,,
438,83351,764,10590,849,1,0,N,N,N,CP_Drtn,TT_Task,DT_FixedDUR2,RV_OK,TK_NotStart,A14260,Internal plastering for 1st floor,,200,24,64,0,0,0,64,0,0,0,,,,2010-11-16 08:00,2010-11-24 16:00,,2010-10-18 08:00,2010-10-26 16:00,2010-10-18 08:00,2010-10-26 16:00,2010-10-18 08:00,2010-10-26 16:00,,2010-11-16 08:00,2010-11-24 16:00,,PT_Normal,,,,,vipZHx1Uf0SC/QJQnpAF7A,BGb6arqHbkiDOwFNSGmEXA,,,N,0,0,,,2010-06-27 10:17,2010-06-27 10:17,admin,admin,,,
439,83352,764,10590,849,1,0,N,N,N,CP_Drtn,TT_Task,DT_FixedDUR2,RV_OK,TK_NotStart,A14270,Internal plastering for roof floor,,176,24,40,0,0,0,40,0,0,0,,,,2010-11-25 08:00,2010-11-30 16:00,,2010-10-31 08:00,2010-11-04 16:00,2010-10-31 08:00,2010-11-04 16:00,2010-10-31 08:00,2010-11-04 16:00,,2010-11-25 08:00,2010-11-30 16:00,,PT_Normal,,,,,D0Vh7iHKiU6V12Xgv7Tdjw,+/bDQEQqJUejUIgljSD2Gw,,,N,0,0,,,2010-06-27 10:17,2010-06-27 10:17,admin,admin,,,
440,83353,764,10589,849,1,0,N,N,N,CP_Drtn,TT_Task,DT_FixedDUR2,RV_OK,TK_NotStart,A14280,electrical conduits for ground floor walls,,208,0,16,0,0,0,16,0,0,0,,,,2010-11-03 08:00,2010-11-04 16:00,,2010-10-04 08:00,2010-10-05 16:00,2010-10-04 08:00,2010-10-05 16:00,2010-10-04 08:00,2010-10-05 16:00,,2010-11-03 08:00,2010-11-04 16:00,,PT_Normal,,,,,6bvVrF12sU6hoOTR1zyHLg,FBtd3tYE2kGCB++FrZHHtg,,,N,0,0,,,2010-06-27 10:17,2010-06-27 10:17,admin,admin,,,
441,83354,764,10589,849,1,0,N,N,N,CP_Drtn,TT_Task,DT_FixedDUR2,RV_OK,TK_NotStart,A14290,electrical conduits for 1st floor walls,,200,0,16,0,0,0,16,0,0,0,,,,2010-11-14 08:00,2010-11-15 16:00,,2010-10-16 08:00,2010-10-17 16:00,2010-10-16 08:00,2010-10-17 16:00,2010-10-16 08:00,2010-10-17 16:00,,2010-11-14 08:00,2010-11-15 16:00,,PT_Normal,,,,,SKlthvX3rka4GvJDJ6PjFw,SH7q9rK0w0u4PXOqXgDaDw,,,N,0,0,,,2010-06-27 10:17,2010-06-27 10:17,admin,admin,,,
442,83355,764,10589,849,1,0,N,N,N,CP_Drtn,TT_Task,DT_FixedDUR2,RV_OK,TK_NotStart,A14300,electrical conduits for roof floor walls,,176,0,16,0,0,0,16,0,0,0,,,,2010-11-23 08:00,2010-11-24 16:00,,2010-10-28 08:00,2010-10-30 16:00,2010-10-28 08:00,2010-10-30 16:00,2010-10-28 08:00,2010-10-30 16:00,,2010-11-23 08:00,2010-11-24 16:00,,PT_Normal,,,,,UW3DepMKOUqQ8RP1rjw+3g,HGvmVr9l/EyGc94sx8tbsA,,,N,0,0,,,2010-06-27 10:17,2010-06-27 10:17,admin,admin,,,
443,83356,764,10593,841,1,0,N,N,N,CP_Drtn,TT_Task,DT_FixedDUR2,RV_OK,TK_NotStart,A14310,excavation,,128,0,16,0,0,0,16,0,0,0,,,,2010-07-29 08:00,2010-07-31 16:00,,2010-07-11 08:00,2010-07-12 16:00,2010-07-11 08:00,2010-07-12 16:00,2010-07-11 08:00,2010-07-12 16:00,,2010-07-29 08:00,2010-07-31 16:00,,PT_Normal,,,,,/e5mc+a8m06Mdy+IMGjtEw,VxwBtm7Qr02+DoNpRcctfA,,,N,0,0,,,2010-06-27 10:17,2010-06-27 10:17,admin,admin,,,
444,83357,764,10593,841,1,0,N,N,N,CP_Drtn,TT_Task,DT_FixedDUR2,RV_OK,TK_NotStart,A14320,soil replacement,,128,0,96,0,0,0,96,0,0,0,,,,2010-08-01 08:00,2010-08-14 16:00,,2010-07-13 08:00,2010-07-26 16:00,2010-07-13 08:00,2010-07-26 16:00,2010-07-13 08:00,2010-07-26 16:00,,2010-08-01 08:00,2010-08-14 16:00,,PT_Normal,,,,,uGhFBHFO20CK/qZc8caYAg,w1YGFFH9cEKv7mWPfMU26g,,,N,0,0,,,2010-06-27 10:17,2010-06-27 10:17,admin,admin,,,
445,83358,764,10594,841,1,0,N,N,N,CP_Drtn,TT_Task,DT_FixedDUR2,RV_OK,TK_NotStart,A14330,Plain Concrete Foundation,,128,0,16,0,0,0,16,0,0,0,,,,2010-08-15 08:00,2010-08-16 16:00,,2010-07-27 08:00,2010-07-28 16:00,2010-07-27 08:00,2010-07-28 16:00,2010-07-27 08:00,2010-07-28 16:00,,2010-08-15 08:00,2010-08-16 16:00,,PT_Normal,,,,,gvfEzFYkBkG/pc2a0YXX3w,kg1PoEWHZUeNVxz1/Di/FQ,,,N,0,0,,,2010-06-27 10:17,2010-06-27 10:17,admin,admin,,,
446,83359,764,10594,841,1,0,N,N,N,CP_Drtn,TT_Task,DT_FixedDUR2,RV_OK,TK_NotStart,A14340,Reinforced Concrete Foundation,,128,0,56,0,0,0,56,0,0,0,,,,2010-08-22 08:00,2010-08-29 16:00,,2010-08-03 08:00,2010-08-10 16:00,2010-08-03 08:00,2010-08-10 16:00,2010-08-03 08:00,2010-08-10 16:00,,2010-08-22 08:00,2010-08-29 16:00,,PT_Normal,,,,,1HY87wY7bkKdQHXeu8doTg,6xRTtyRlWUu5DJi19PpHNg,,,N,0,0,,,2010-06-27 10:17,2010-06-27 10:17,admin,admin,,,
447,83360,764,10594,841,1,0,N,N,N,CP_Drtn,TT_Task,DT_FixedDUR2,RV_OK,TK_NotStart,A14350,under ground  brick works,,128,0,16,0,0,0,16,0,0,0,,,,2010-09-06 08:00,2010-09-07 16:00,,2010-08-18 08:00,2010-08-19 16:00,2010-08-18 08:00,2010-08-19 16:00,2010-08-18 08:00,2010-08-19 16:00,,2010-09-06 08:00,2010-09-07 16:00,,PT_Normal,,,,,psebow3Y+kehqiPWmLcykw,7Vymva1g3UWLeaGECLRdPQ,,,N,0,0,,,2010-06-27 10:17,2010-06-27 10:17,admin,admin,,,
448,83361,764,10594,841,1,0,N,N,N,CP_Drtn,TT_Task,DT_FixedDUR2,RV_OK,TK_NotStart,A14360,under ground insulation for RC & Brick work,,128,0,16,0,0,0,16,0,0,0,,,,2010-09-11 08:00,2010-09-12 16:00,,2010-08-21 08:00,2010-08-22 16:00,2010-08-21 08:00,2010-08-22 16:00,2010-08-21 08:00,2010-08-22 16:00,,2010-09-11 08:00,2010-09-12 16:00,,PT_Normal,,,,,UE7/xP2AU0+IHTSdcH7nSw,eDMaMboB/UKBuELOCVKqAw,,,N,0,0,,,2010-06-27 10:17,2010-06-27 10:17,admin,admin,,,
449,83362,764,10594,841,1,0,N,N,N,CP_Drtn,TT_Task,DT_FixedDUR2,RV_OK,TK_NotStart,A14370,backfilling for under ground,,128,0,32,0,0,0,32,0,0,0,,,,2010-09-13 08:00,2010-09-16 16:00,,2010-08-23 08:00,2010-08-26 16:00,2010-08-23 08:00,2010-08-26 16:00,2010-08-23 08:00,2010-08-26 16:00,,2010-09-13 08:00,2010-09-16 16:00,,PT_Normal,,,,,Lkp9t4mnC0SZdqKCRzM+Rg,TygJN3uXtEiw0LzMqXejgg,,,N,0,0,,,2010-06-27 10:17,2010-06-27 10:17,admin,admin,,,
450,83363,764,10594,841,1,0,N,N,N,CP_Drtn,TT_Task,DT_FixedDUR2,RV_OK,TK_NotStart,A14380,P.C slab on grade 10CM,,200,0,8,0,0,0,8,0,0,0,,,,2010-10-27 08:00,2010-10-27 16:00,,2010-09-28 08:00,2010-09-28 16:00,2010-09-28 08:00,2010-09-28 16:00,2010-09-28 08:00,2010-09-28 16:00,,2010-10-27 08:00,2010-10-27 16:00,,PT_Normal,,,,,uqA7hGZzSEazv5KXft3/Pw,1JEykNaWh0yN/cXJeaGDCg,,,N,0,0,,,2010-06-27 10:17,2010-06-27 10:17,admin,admin,,,
451,83364,764,10594,841,1,0,N,N,N,CP_Drtn,TT_Task,DT_FixedDUR2,RV_OK,TK_NotStart,A14390,moisture insulation with membrane sheets,,200,0,16,0,0,0,16,0,0,0,,,,2010-10-28 08:00,2010-10-30 16:00,,2010-09-29 08:00,2010-09-30 16:00,2010-09-29 08:00,2010-09-30 16:00,2010-09-29 08:00,2010-09-30 16:00,,2010-10-28 08:00,2010-10-30 16:00,,PT_Normal,,,,,svSXD+gSYkaXivGcOkiXiA,/7JlwSfB5EOEwMx19kk8Ig,,,N,0,0,,,2010-06-27 10:17,2010-06-27 10:17,admin,admin,,,
452,83365,764,10594,841,1,0,N,N,N,CP_Drtn,TT_Task,DT_FixedDUR2,RV_OK,TK_NotStart,A14400,R.C slab on grade,,200,0,16,0,0,0,16,0,0,0,,,,2010-10-31 08:00,2010-11-01 16:00,,2010-10-02 08:00,2010-10-03 16:00,2010-10-02 08:00,2010-10-03 16:00,2010-10-02 08:00,2010-10-03 16:00,,2010-10-31 08:00,2010-11-01 16:00,,PT_Normal,,,,,xrrial9Ask6X1Ri99f8dTA,5OyMMzsqck2ytMNUYFzfWg,,,N,0,0,,,2010-06-27 10:17,2010-06-27 10:17,admin,admin,,,
453,83366,764,10595,841,1,0,N,N,N,CP_Drtn,TT_Task,DT_FixedDUR2,RV_OK,TK_NotStart,A14410,columns for ground floor,,128,0,48,0,0,0,48,0,0,0,,,,2010-08-30 08:00,2010-09-05 16:00,,2010-08-11 08:00,2010-08-17 16:00,2010-08-11 08:00,2010-08-17 16:00,2010-08-11 08:00,2010-08-17 16:00,,2010-08-30 08:00,2010-09-05 16:00,,PT_Normal,,,,,ij7mDoaUiUitsOmYMo0zcQ,VwK13sKHPE2aTkR2/S/N6g,,,N,0,0,,,2010-06-27 10:17,2010-06-27 10:17,admin,admin,,,
454,83367,764,10595,841,1,0,N,N,N,CP_Drtn,TT_Task,DT_FixedDUR2,RV_OK,TK_NotStart,A14420,slab for ground floor,,128,0,72,0,0,0,72,0,0,0,,,,2010-09-18 08:00,2010-09-27 16:00,,2010-08-28 08:00,2010-09-06 16:00,2010-08-28 08:00,2010-09-06 16:00,2010-08-28 08:00,2010-09-06 16:00,,2010-09-18 08:00,2010-09-27 16:00,,PT_Normal,,,,,WIFnMdU0nUWsZHufhPiEaw,TIJQxfBkckGR0AVbYzX0pw,,,N,0,0,,,2010-06-27 10:17,2010-06-27 10:17,admin,admin,,,
455,83368,764,10595,841,1,0,N,N,N,CP_Drtn,TT_Task,DT_FixedDUR2,RV_OK,TK_NotStart,A14430,columns for 1st floor,,144,0,48,0,0,0,48,0,0,0,,,,2010-10-02 08:00,2010-10-07 16:00,,2010-09-11 08:00,2010-09-16 16:00,2010-09-11 08:00,2010-09-16 16:00,2010-09-11 08:00,2010-09-16 16:00,,2010-10-02 08:00,2010-10-07 16:00,,PT_Normal,,,,,d9qlvlA13EioF0Fs4GVN1A,R6/xLJ/cFkCe7KFzNx7dmQ,,,N,0,0,,,2010-06-27 10:17,2010-06-27 10:17,admin,admin,,,
456,83369,764,10595,841,1,0,N,N,N,CP_Drtn,TT_Task,DT_FixedDUR2,RV_OK,TK_NotStart,A14440,slab for 1st floor,,144,0,72,0,0,0,72,0,0,0,,,,2010-10-09 08:00,2010-10-18 16:00,,2010-09-18 08:00,2010-09-27 16:00,2010-09-18 08:00,2010-09-27 16:00,2010-09-18 08:00,2010-09-27 16:00,,2010-10-09 08:00,2010-10-18 16:00,,PT_Normal,,,,,6zRKpbajZkKbBqnyuVKtkA,kHImqFpg/kudVNwk1XMh3A,,,N,0,0,,,2010-06-27 10:17,2010-06-27 10:17,admin,admin,,,
457,83370,764,10595,841,1,0,N,N,N,CP_Drtn,TT_Task,DT_FixedDUR2,RV_OK,TK_NotStart,A14450,columns for roof floor,,144,0,32,0,0,0,32,0,0,0,,,,2010-10-23 08:00,2010-10-26 16:00,,2010-10-02 08:00,2010-10-05 16:00,2010-10-02 08:00,2010-10-05 16:00,2010-10-02 08:00,2010-10-05 16:00,,2010-10-23 08:00,2010-10-26 16:00,,PT_Normal,,,,,caNcKMYKZkOygULXXlX6zw,5L5iB/pyAUCXrW7rfOFpEQ,,,N,0,0,,,2010-06-27 10:17,2010-06-27 10:17,admin,admin,,,
458,83371,764,10595,841,1,0,N,N,N,CP_Drtn,TT_Task,DT_FixedDUR2,RV_OK,TK_NotStart,A14460,slab for roof floor,,144,0,48,0,0,0,48,0,0,0,,,,2010-10-27 08:00,2010-11-02 16:00,,2010-10-06 08:00,2010-10-12 16:00,2010-10-06 08:00,2010-10-12 16:00,2010-10-06 08:00,2010-10-12 16:00,,2010-10-27 08:00,2010-11-02 16:00,,PT_Normal,,,,,KPb6s12XSUu395mbaKx+Tw,3FBRzUfR+0Gk7Sw/TH5+2Q,,,N,0,0,,,2010-06-27 10:17,2010-06-27 10:17,admin,admin,,,
459,83372,764,10595,841,1,0,N,N,N,CP_Drtn,TT_Task,DT_FixedDUR2,RV_OK,TK_NotStart,A14470,Brick works for ground floor,,200,0,40,0,0,0,40,0,0,0,,,,2010-10-21 08:00,2010-10-26 16:00,,2010-09-22 08:00,2010-09-27 16:00,2010-09-22 08:00,2010-09-27 16:00,2010-09-22 08:00,2010-09-27 16:00,,2010-10-21 08:00,2010-10-26 16:00,,PT_Normal,,,,,PACCN0toQE+jib0yHQzeHw,alvY5weq/0OiUkvWq+A1Ag,,,N,0,0,,,2010-06-27 10:17,2010-06-27 10:17,admin,admin,,,
460,83373,764,10596,841,1,0,N,N,N,CP_Drtn,TT_Task,DT_FixedDrtn,RV_OK,TK_NotStart,A14480,electrical conduits for ground floor's slab,,136,8,16,0,0,0,16,0,0,0,,,,2010-09-23 08:00,2010-09-25 16:00,,2010-09-01 08:00,2010-09-02 16:00,2010-09-01 08:00,2010-09-02 16:00,2010-09-01 08:00,2010-09-02 16:00,,2010-09-23 08:00,2010-09-25 16:00,,PT_Normal,,,,,oXwwjrKG5U+iqpRXJXBhEg,W69o0K57W0q6JG5bLgG8uw,,,N,0,0,,,2010-06-27 10:17,2010-06-27 10:17,admin,admin,,,
461,83374,764,10596,841,1,0,N,N,N,CP_Drtn,TT_Task,DT_FixedDrtn,RV_OK,TK_NotStart,A14490,electrical conduits for 1st floor slab,,152,8,16,0,0,0,16,0,0,0,,,,2010-10-14 08:00,2010-10-16 16:00,,2010-09-22 08:00,2010-09-23 16:00,2010-09-22 08:00,2010-09-23 16:00,2010-09-22 08:00,2010-09-23 16:00,,2010-10-14 08:00,2010-10-16 16:00,,PT_Normal,,,,,BTFbKnnYh0WT/uBmR5Sc5A,jl5rQOqH1E6Q34W/ojGH5w,,,N,0,0,,,2010-06-27 10:17,2010-06-27 10:17,admin,admin,,,
462,83375,764,10596,841,1,0,N,N,N,CP_Drtn,TT_Task,DT_FixedDrtn,RV_OK,TK_NotStart,A14500,electrical conduits for roof slab,,152,8,8,0,0,0,8,0,0,0,,,,2010-11-01 08:00,2010-11-01 16:00,,2010-10-10 08:00,2010-10-10 16:00,2010-10-10 08:00,2010-10-10 16:00,2010-10-10 08:00,2010-10-10 16:00,,2010-11-01 08:00,2010-11-01 16:00,,PT_Normal,,,,,twm7WC9BMU2yS7qeAXBjqg,LZjAKFeOLEirxSWBxF3IBQ,,,N,0,0,,,2010-06-27 10:17,2010-06-27 10:17,admin,admin,,,
463,83376,764,10597,841,1,0,N,N,N,CP_Drtn,TT_Task,DT_FixedDUR2,RV_OK,TK_NotStart,A14510,Internal plastering for ground floor,,200,16,64,0,0,0,64,0,0,0,,,,2010-11-06 08:00,2010-11-14 16:00,,2010-10-07 08:00,2010-10-16 16:00,2010-10-07 08:00,2010-10-16 16:00,2010-10-07 08:00,2010-10-16 16:00,,2010-11-06 08:00,2010-11-14 16:00,,PT_Normal,,,,,YpVxpgFcBE6uor1oiEwvvg,CcZ149Y0E060itIUJhxSLQ,,,N,0,0,,,2010-06-27 10:17,2010-06-27 10:17,admin,admin,,,
464,83377,764,10597,841,1,0,N,N,N,CP_Drtn,TT_Task,DT_FixedDUR2,RV_OK,TK_NotStart,A14520,External plastering,,112,0,80,0,0,0,80,0,0,0,,,,2010-11-20 08:00,2010-11-30 16:00,,2010-10-30 08:00,2010-11-09 16:00,2010-10-30 08:00,2010-11-09 16:00,2010-10-30 08:00,2010-11-09 16:00,,2010-11-20 08:00,2010-11-30 16:00,,PT_Normal,,,,,c6p955mM2EGtQwRE8LlSpA,uJtc/hgqUkCFMNa0I4WgTQ,,,N,0,0,,,2010-06-27 10:17,2010-06-27 10:17,admin,admin,,,
465,83378,764,10596,841,1,0,N,N,N,CP_Drtn,TT_Task,DT_FixedDrtn,RV_OK,TK_NotStart,A14530,plumbing connections under slab on grade,,384,184,16,0,0,0,16,0,0,0,,,,2010-10-25 08:00,2010-10-26 16:00,,2010-08-28 08:00,2010-08-29 16:00,2010-08-28 08:00,2010-08-29 16:00,2010-08-28 08:00,2010-08-29 16:00,,2010-10-25 08:00,2010-10-26 16:00,,PT_Normal,,,,,I0/UVTCjHEu5rQRAULKkLQ,/X7yQ2Fm9Eia0K8NhkMOGw,,,N,0,0,,,2010-06-27 10:17,2010-06-27 10:17,admin,admin,,,
466,83379,764,10633,841,0,0,N,N,N,CP_Drtn,TT_Mile,DT_FixedDrtn,RV_OK,TK_NotStart,A14540,Start Villa construction,,128,0,0,0,0,0,0,0,0,0,,,,2010-07-10 08:00,2010-07-10 08:00,,2010-06-21 08:00,2010-06-21 08:00,2010-06-21 08:00,2010-06-21 08:00,2010-06-21 08:00,2010-06-21 08:00,,2010-07-10 08:00,2010-07-10 08:00,,PT_Normal,,,,,6Xj7hVwHSEKoXLrFyrlG0w,HhV9zClD7UacIo3ANWSQ9w,,,N,0,0,,,2010-06-27 10:17,2010-06-27 10:17,admin,admin,,,
467,83380,764,10633,841,0,0,N,N,N,CP_Drtn,TT_FinMile,DT_FixedDrtn,RV_OK,TK_NotStart,A14550,finish Villa construction,,112,112,0,0,0,0,0,0,0,0,,,,2010-11-30 16:00,2010-11-30 16:00,,2010-11-09 16:00,2010-11-09 16:00,2010-11-09 16:00,2010-11-09 16:00,2010-11-09 16:00,2010-11-09 16:00,,2010-11-30 16:00,2010-11-30 16:00,,PT_Normal,,,,,oI9aQExI0EmLo7AjzWKG9w,Ya3cKnqfxUap51RYTiRxtA,,,N,0,0,,,2010-06-27 10:17,2010-06-27 10:17,admin,admin,,,
468,83381,764,10633,841,0,0,N,N,N,CP_Drtn,TT_Mile,DT_FixedDrtn,RV_OK,TK_NotStart,A14560,IFC drawings,,128,0,0,0,0,0,0,0,0,0,,,,2010-07-10 08:00,2010-07-10 08:00,,2010-06-21 08:00,2010-06-21 08:00,2010-06-21 08:00,2010-06-21 08:00,2010-06-21 08:00,2010-06-21 08:00,,2010-07-10 08:00,2010-07-10 08:00,,PT_Normal,,,,,yX0jU/yw8kGf6ZecIgN55w,EQRuTZ5ZrkS2FotWaEbqJw,,,N,0,0,,,2010-06-27 10:17,2010-06-27 10:17,admin,admin,,,
469,83382,764,10595,841,1,0,N,N,N,CP_Drtn,TT_Task,DT_FixedDUR2,RV_OK,TK_NotStart,A14570,pouring for ground floor's slab,,128,0,8,0,0,0,8,0,0,0,,,,2010-09-28 08:00,2010-09-28 16:00,,2010-09-07 08:00,2010-09-07 16:00,2010-09-07 08:00,2010-09-07 16:00,2010-09-07 08:00,2010-09-07 16:00,,2010-09-28 08:00,2010-09-28 16:00,,PT_Normal,,,,,umCycEWJtkyu6DgXy1P+ow,WyGsAf+Uf06wwj355hzIyA,,,N,0,0,,,2010-06-27 10:17,2010-06-27 10:17,admin,admin,,,
470,83383,764,10595,841,1,0,N,N,N,CP_Drtn,TT_Task,DT_FixedDUR2,RV_OK,TK_NotStart,A14580,pouring for 1st floor's slab,,144,0,8,0,0,0,8,0,0,0,,,,2010-10-19 08:00,2010-10-19 16:00,,2010-09-28 08:00,2010-09-28 16:00,2010-09-28 08:00,2010-09-28 16:00,2010-09-28 08:00,2010-09-28 16:00,,2010-10-19 08:00,2010-10-19 16:00,,PT_Normal,,,,,tfYwBFhSXkq0vao/jDbzEg,jxjms2BLsUCiE8y2NtiQsA,,,N,0,0,,,2010-06-27 10:17,2010-06-27 10:17,admin,admin,,,
471,83384,764,10595,841,1,0,N,N,N,CP_Drtn,TT_Task,DT_FixedDUR2,RV_OK,TK_NotStart,A14590,pouring for roof floor's slab,,144,0,8,0,0,0,8,0,0,0,,,,2010-11-03 08:00,2010-11-03 16:00,,2010-10-13 08:00,2010-10-13 16:00,2010-10-13 08:00,2010-10-13 16:00,2010-10-13 08:00,2010-10-13 16:00,,2010-11-03 08:00,2010-11-03 16:00,,PT_Normal,,,,,RIJ6OrWf3kqibhR2aTP7PA,Q6xRm/n/P0CefyT73Kc5ew,,,N,0,0,,,2010-06-27 10:17,2010-06-27 10:17,admin,admin,,,
472,83385,764,10595,841,1,0,N,N,N,CP_Drtn,TT_Task,DT_FixedDrtn,RV_OK,TK_NotStart,A14600,Fence work,,128,16,400,0,0,0,400,0,0,0,,,,2010-09-29 08:00,2010-11-30 16:00,,2010-09-11 08:00,2010-11-07 16:00,2010-09-11 08:00,2010-11-07 16:00,2010-09-11 08:00,2010-11-07 16:00,,2010-09-29 08:00,2010-11-30 16:00,,PT_Normal,,,,,aSvnSafQoES3Yrhz2UKDfg,P3vjFmOb9UGhi8gTitUbgw,,,N,0,0,,,2010-06-27 10:17,2010-06-27 10:17,admin,admin,,,
473,83386,764,10633,841,1,0,N,N,N,CP_Drtn,TT_Task,DT_FixedDUR2,RV_OK,TK_NotStart,A14610,Fence Drawings IFC,,584,456,8,0,0,0,8,0,0,0,,,,2010-09-16 08:00,2010-09-16 16:00,,2010-06-21 08:00,2010-06-21 16:00,2010-06-21 08:00,2010-06-21 16:00,2010-06-21 08:00,2010-06-21 16:00,,2010-09-16 08:00,2010-09-16 16:00,,PT_Normal,,,,,OjqTuYPlGUWl/3G97fa01A,8B3OdyGfZUq1Qlv8jFMb2g,,,N,0,0,,,2010-06-27 10:17,2010-06-27 10:17,admin,admin,,,
474,83387,764,10594,849,1,0,N,N,N,CP_Drtn,TT_Task,DT_FixedDUR2,RV_OK,TK_NotStart,A14620,backfilling between P.C Foundation,,128,0,16,0,0,0,16,0,0,0,,,,2010-08-18 08:00,2010-08-19 16:00,,2010-07-31 08:00,2010-08-01 16:00,2010-07-31 08:00,2010-08-01 16:00,2010-07-31 08:00,2010-08-01 16:00,,2010-08-18 08:00,2010-08-19 16:00,,PT_Normal,,,,,i06RWL5rl0eHnDmNCMl4HA,086riDaba0WW0eVU8QtBDw,,,N,0,0,,,2010-06-27 10:17,2010-06-27 10:17,admin,admin,,,
475,83388,764,10594,849,1,0,N,N,N,CP_Drtn,TT_Task,DT_FixedDUR2,RV_OK,TK_NotStart,A14630,P.C Under Smells,,128,0,8,0,0,0,8,0,0,0,,,,2010-08-21 08:00,2010-08-21 16:00,,2010-08-02 08:00,2010-08-02 16:00,2010-08-02 08:00,2010-08-02 16:00,2010-08-02 08:00,2010-08-02 16:00,,2010-08-21 08:00,2010-08-21 16:00,,PT_Normal,,,,,Qe4vD5U9hE+e9ohEqbJuHw,PkjYWkvbZki5hyUL/s2J4g,,,N,0,0,,,2010-06-27 10:17,2010-06-27 10:17,admin,admin,,,
476,83389,764,10595,849,1,0,N,N,N,CP_Drtn,TT_Task,DT_FixedDUR2,RV_OK,TK_NotStart,A14640,Brick works for 1st floor,,192,0,40,0,0,0,40,0,0,0,,,,2010-11-08 08:00,2010-11-13 16:00,,2010-10-11 08:00,2010-10-16 16:00,2010-10-11 08:00,2010-10-16 16:00,2010-10-11 08:00,2010-10-16 16:00,,2010-11-08 08:00,2010-11-13 16:00,,PT_Normal,,,,,FWOmu/oK7kW4QDv4MADgfg,jxI8gY0Ox06fZpSIx0qOxQ,,,N,0,0,,,2010-06-27 10:17,2010-06-27 10:17,admin,admin,,,
477,83390,764,10595,849,1,0,N,N,N,CP_Drtn,TT_Task,DT_FixedDUR2,RV_OK,TK_NotStart,A14650,Brick works for roof floor,,144,0,40,0,0,0,40,0,0,0,,,,2010-11-14 08:00,2010-11-18 16:00,,2010-10-24 08:00,2010-10-28 16:00,2010-10-24 08:00,2010-10-28 16:00,2010-10-24 08:00,2010-10-28 16:00,,2010-11-14 08:00,2010-11-18 16:00,,PT_Normal,,,,,XXj39jJB2UGkgq9JVKRUMA,N/MN6kbHJkmzwaSzPSLuXQ,,,N,0,0,,,2010-06-27 10:17,2010-06-27 10:17,admin,admin,,,
478,83391,764,10597,849,1,0,N,N,N,CP_Drtn,TT_Task,DT_FixedDUR2,RV_OK,TK_NotStart,A14660,Internal plastering for 1st floor,,192,24,64,0,0,0,64,0,0,0,,,,2010-11-16 08:00,2010-11-24 16:00,,2010-10-19 08:00,2010-10-27 16:00,2010-10-19 08:00,2010-10-27 16:00,2010-10-19 08:00,2010-10-27 16:00,,2010-11-16 08:00,2010-11-24 16:00,,PT_Normal,,,,,I3vmPLqh8Ui4yyil50A7pg,FJtH/UIW2EeDq/rYkG5rQw,,,N,0,0,,,2010-06-27 10:17,2010-06-27 10:17,admin,admin,,,
479,83392,764,10597,849,1,0,N,N,N,CP_Drtn,TT_Task,DT_FixedDUR2,RV_OK,TK_NotStart,A14670,Internal plastering for roof floor,,168,24,40,0,0,0,40,0,0,0,,,,2010-11-25 08:00,2010-11-30 16:00,,2010-11-01 08:00,2010-11-06 16:00,2010-11-01 08:00,2010-11-06 16:00,2010-11-01 08:00,2010-11-06 16:00,,2010-11-25 08:00,2010-11-30 16:00,,PT_Normal,,,,,FKJohaUhckucHnbhCpinXg,d11ZuFuJsEGcKOKg4qONxw,,,N,0,0,,,2010-06-27 10:17,2010-06-27 10:17,admin,admin,,,
480,83393,764,10596,849,1,0,N,N,N,CP_Drtn,TT_Task,DT_FixedDUR2,RV_OK,TK_NotStart,A14680,electrical conduits for ground floor walls,,200,0,16,0,0,0,16,0,0,0,,,,2010-11-03 08:00,2010-11-04 16:00,,2010-10-05 08:00,2010-10-06 16:00,2010-10-05 08:00,2010-10-06 16:00,2010-10-05 08:00,2010-10-06 16:00,,2010-11-03 08:00,2010-11-04 16:00,,PT_Normal,,,,,ieVmvpZtwkKJOm5z9JLtOg,72TF+LTDLU6Cy9P/aBOMLw,,,N,0,0,,,2010-06-27 10:17,2010-06-27 10:17,admin,admin,,,
481,83394,764,10596,849,1,0,N,N,N,CP_Drtn,TT_Task,DT_FixedDUR2,RV_OK,TK_NotStart,A14690,electrical conduits for 1st floor walls,,192,0,16,0,0,0,16,0,0,0,,,,2010-11-14 08:00,2010-11-15 16:00,,2010-10-17 08:00,2010-10-18 16:00,2010-10-17 08:00,2010-10-18 16:00,2010-10-17 08:00,2010-10-18 16:00,,2010-11-14 08:00,2010-11-15 16:00,,PT_Normal,,,,,81YqAzYhCUO50EwdScIs4w,SWo5DOg/dUSmf+J4cxFb0g,,,N,0,0,,,2010-06-27 10:17,2010-06-27 10:17,admin,admin,,,
482,83395,764,10596,849,1,0,N,N,N,CP_Drtn,TT_Task,DT_FixedDUR2,RV_OK,TK_NotStart,A14700,electrical conduits for roof floor walls,,168,0,16,0,0,0,16,0,0,0,,,,2010-11-23 08:00,2010-11-24 16:00,,2010-10-30 08:00,2010-10-31 16:00,2010-10-30 08:00,2010-10-31 16:00,2010-10-30 08:00,2010-10-31 16:00,,2010-11-23 08:00,2010-11-24 16:00,,PT_Normal,,,,,qreaWZ45a0+bvmHOVxWSjA,Qd3oa5UwaE+pqwoZ6xkgpg,,,N,0,0,,,2010-06-27 10:17,2010-06-27 10:17,admin,admin,,,
483,83396,764,10600,841,1,0,N,N,N,CP_Drtn,TT_Task,DT_FixedDUR2,RV_OK,TK_NotStart,A14710,excavation,,120,0,0,0,0,0,0,0,0,0,,,,2010-07-28 16:00,2010-07-28 16:00,,2010-07-12 08:00,2010-07-12 08:00,2010-07-12 08:00,2010-07-12 08:00,2010-07-12 08:00,2010-07-12 08:00,,2010-07-28 16:00,2010-07-28 16:00,,PT_Normal,,,,,bTJHazkEyk281kT1rZlmuw,HTdEg68JmkuKxmh4Yc4FQA,,,N,0,0,,,2010-06-27 10:17,2010-06-27 10:17,admin,admin,,,
484,83397,764,10600,841,1,0,N,N,N,CP_Drtn,TT_Task,DT_FixedDUR2,RV_OK,TK_NotStart,A14720,soil replacement,,120,0,112,0,0,0,112,0,0,0,,,,2010-07-29 08:00,2010-08-14 16:00,,2010-07-12 08:00,2010-07-27 16:00,2010-07-12 08:00,2010-07-27 16:00,2010-07-12 08:00,2010-07-27 16:00,,2010-07-29 08:00,2010-08-14 16:00,,PT_Normal,,,,,to2ptUWOP0iJ1gqSxP7XlA,gK7MA1C+MUmz0zjuNZuu2g,,,N,0,0,,,2010-06-27 10:17,2010-06-27 10:17,admin,admin,,,
485,83398,764,10601,841,1,0,N,N,N,CP_Drtn,TT_Task,DT_FixedDUR2,RV_OK,TK_NotStart,A14730,Plain Concrete Foundation,,120,0,16,0,0,0,16,0,0,0,,,,2010-08-15 08:00,2010-08-16 16:00,,2010-07-28 08:00,2010-07-29 16:00,2010-07-28 08:00,2010-07-29 16:00,2010-07-28 08:00,2010-07-29 16:00,,2010-08-15 08:00,2010-08-16 16:00,,PT_Normal,,,,,DVVdDqsxq02uiZK8Qjfd7g,cV/PSAzmiEi094kDnNHHnw,,,N,0,0,,,2010-06-27 10:17,2010-06-27 10:17,admin,admin,,,
486,83399,764,10601,841,1,0,N,N,N,CP_Drtn,TT_Task,DT_FixedDUR2,RV_OK,TK_NotStart,A14740,Reinforced Concrete Foundation,,120,0,56,0,0,0,56,0,0,0,,,,2010-08-22 08:00,2010-08-29 16:00,,2010-08-04 08:00,2010-08-11 16:00,2010-08-04 08:00,2010-08-11 16:00,2010-08-04 08:00,2010-08-11 16:00,,2010-08-22 08:00,2010-08-29 16:00,,PT_Normal,,,,,9Pl6lgklbk+e5puOfiawiQ,4E/6pLketUeGeEGhhluk8Q,,,N,0,0,,,2010-06-27 10:17,2010-06-27 10:17,admin,admin,,,
487,83400,764,10601,841,1,0,N,N,N,CP_Drtn,TT_Task,DT_FixedDUR2,RV_OK,TK_NotStart,A14750,under ground  brick works,,120,0,16,0,0,0,16,0,0,0,,,,2010-09-06 08:00,2010-09-07 16:00,,2010-08-19 08:00,2010-08-21 16:00,2010-08-19 08:00,2010-08-21 16:00,2010-08-19 08:00,2010-08-21 16:00,,2010-09-06 08:00,2010-09-07 16:00,,PT_Normal,,,,,fY0X6+3L/0uJbqBM1lCnyA,6Waps6IJNES7E6oIJUvsVA,,,N,0,0,,,2010-06-27 10:17,2010-06-27 10:17,admin,admin,,,
488,83401,764,10601,841,1,0,N,N,N,CP_Drtn,TT_Task,DT_FixedDUR2,RV_OK,TK_NotStart,A14760,under ground insulation for RC & Brick work,,120,0,16,0,0,0,16,0,0,0,,,,2010-09-11 08:00,2010-09-12 16:00,,2010-08-22 08:00,2010-08-23 16:00,2010-08-22 08:00,2010-08-23 16:00,2010-08-22 08:00,2010-08-23 16:00,,2010-09-11 08:00,2010-09-12 16:00,,PT_Normal,,,,,gCr8grkVBUy/a904rtftlQ,xT8wr+27RkOocIfAHp0Cag,,,N,0,0,,,2010-06-27 10:17,2010-06-27 10:17,admin,admin,,,
489,83402,764,10601,841,1,0,N,N,N,CP_Drtn,TT_Task,DT_FixedDUR2,RV_OK,TK_NotStart,A14770,backfilling for under ground,,120,0,32,0,0,0,32,0,0,0,,,,2010-09-13 08:00,2010-09-16 16:00,,2010-08-24 08:00,2010-08-28 16:00,2010-08-24 08:00,2010-08-28 16:00,2010-08-24 08:00,2010-08-28 16:00,,2010-09-13 08:00,2010-09-16 16:00,,PT_Normal,,,,,n9XvWY2ZAEe83xUoYFOMXw,x4Kn4XZ490Ge3HHxHO8yMA,,,N,0,0,,,2010-06-27 10:17,2010-06-27 10:17,admin,admin,,,
490,83403,764,10601,841,1,0,N,N,N,CP_Drtn,TT_Task,DT_FixedDUR2,RV_OK,TK_NotStart,A14780,P.C slab on grade 10CM,,192,0,8,0,0,0,8,0,0,0,,,,2010-10-27 08:00,2010-10-27 16:00,,2010-09-29 08:00,2010-09-29 16:00,2010-09-29 08:00,2010-09-29 16:00,2010-09-29 08:00,2010-09-29 16:00,,2010-10-27 08:00,2010-10-27 16:00,,PT_Normal,,,,,4jPt1Cdwe0iQ30Y30f1AJg,6Ro4RwzGeEGggp1znSZDBg,,,N,0,0,,,2010-06-27 10:17,2010-06-27 10:17,admin,admin,,,
491,83404,764,10601,841,1,0,N,N,N,CP_Drtn,TT_Task,DT_FixedDUR2,RV_OK,TK_NotStart,A14790,moisture insulation with membrane sheets,,192,0,16,0,0,0,16,0,0,0,,,,2010-10-28 08:00,2010-10-30 16:00,,2010-09-30 08:00,2010-10-02 16:00,2010-09-30 08:00,2010-10-02 16:00,2010-09-30 08:00,2010-10-02 16:00,,2010-10-28 08:00,2010-10-30 16:00,,PT_Normal,,,,,AuI8AisTJUa8bAFpHVFIHg,5MQttXcViUOBHrBij9FfFw,,,N,0,0,,,2010-06-27 10:17,2010-06-27 10:17,admin,admin,,,
492,83405,764,10601,841,1,0,N,N,N,CP_Drtn,TT_Task,DT_FixedDUR2,RV_OK,TK_NotStart,A14800,R.C slab on grade,,192,0,16,0,0,0,16,0,0,0,,,,2010-10-31 08:00,2010-11-01 16:00,,2010-10-03 08:00,2010-10-04 16:00,2010-10-03 08:00,2010-10-04 16:00,2010-10-03 08:00,2010-10-04 16:00,,2010-10-31 08:00,2010-11-01 16:00,,PT_Normal,,,,,KuqLQrTLEEewOnWC+ZOCfg,qYBMYQbTaEC6bnvnmuD/pA,,,N,0,0,,,2010-06-27 10:17,2010-06-27 10:17,admin,admin,,,
493,83406,764,10602,841,1,0,N,N,N,CP_Drtn,TT_Task,DT_FixedDUR2,RV_OK,TK_NotStart,A14810,columns for ground floor,,120,0,48,0,0,0,48,0,0,0,,,,2010-08-30 08:00,2010-09-05 16:00,,2010-08-12 08:00,2010-08-18 16:00,2010-08-12 08:00,2010-08-18 16:00,2010-08-12 08:00,2010-08-18 16:00,,2010-08-30 08:00,2010-09-05 16:00,,PT_Normal,,,,,rSEOpUE3sU+CPzbsajlpeQ,LOKSBWw6iEOjVhCWpNDkUw,,,N,0,0,,,2010-06-27 10:17,2010-06-27 10:17,admin,admin,,,
494,83407,764,10602,841,1,0,N,N,N,CP_Drtn,TT_Task,DT_FixedDUR2,RV_OK,TK_NotStart,A14820,slab for ground floor,,120,0,72,0,0,0,72,0,0,0,,,,2010-09-18 08:00,2010-09-27 16:00,,2010-08-29 08:00,2010-09-07 16:00,2010-08-29 08:00,2010-09-07 16:00,2010-08-29 08:00,2010-09-07 16:00,,2010-09-18 08:00,2010-09-27 16:00,,PT_Normal,,,,,1H05VxnLYkWMKs1/1OG9cQ,Ba14inbBkEidtv2URw0S3Q,,,N,0,0,,,2010-06-27 10:17,2010-06-27 10:17,admin,admin,,,
495,83408,764,10602,841,1,0,N,N,N,CP_Drtn,TT_Task,DT_FixedDUR2,RV_OK,TK_NotStart,A14830,columns for 1st floor,,136,0,48,0,0,0,48,0,0,0,,,,2010-10-02 08:00,2010-10-07 16:00,,2010-09-12 08:00,2010-09-18 16:00,2010-09-12 08:00,2010-09-18 16:00,2010-09-12 08:00,2010-09-18 16:00,,2010-10-02 08:00,2010-10-07 16:00,,PT_Normal,,,,,Ji+sJWoAL0iRqMkoUycKlQ,AES5fglGJkq9tZr6cMCfdA,,,N,0,0,,,2010-06-27 10:17,2010-06-27 10:17,admin,admin,,,
496,83409,764,10602,841,1,0,N,N,N,CP_Drtn,TT_Task,DT_FixedDUR2,RV_OK,TK_NotStart,A14840,slab for 1st floor,,136,0,72,0,0,0,72,0,0,0,,,,2010-10-09 08:00,2010-10-18 16:00,,2010-09-19 08:00,2010-09-28 16:00,2010-09-19 08:00,2010-09-28 16:00,2010-09-19 08:00,2010-09-28 16:00,,2010-10-09 08:00,2010-10-18 16:00,,PT_Normal,,,,,uh+5PfRG0Eq9NL/cJeQBOw,PtbaWLc7+0aKl9nk1TFKsQ,,,N,0,0,,,2010-06-27 10:17,2010-06-27 10:17,admin,admin,,,
497,83410,764,10602,841,1,0,N,N,N,CP_Drtn,TT_Task,DT_FixedDUR2,RV_OK,TK_NotStart,A14850,columns for roof floor,,136,0,32,0,0,0,32,0,0,0,,,,2010-10-23 08:00,2010-10-26 16:00,,2010-10-03 08:00,2010-10-06 16:00,2010-10-03 08:00,2010-10-06 16:00,2010-10-03 08:00,2010-10-06 16:00,,2010-10-23 08:00,2010-10-26 16:00,,PT_Normal,,,,,y0O6RAmR/0GxRFihRICELw,V0LRwCE92kmSkSce93HueA,,,N,0,0,,,2010-06-27 10:17,2010-06-27 10:17,admin,admin,,,
498,83411,764,10602,841,1,0,N,N,N,CP_Drtn,TT_Task,DT_FixedDUR2,RV_OK,TK_NotStart,A14860,slab for roof floor,,136,0,48,0,0,0,48,0,0,0,,,,2010-10-27 08:00,2010-11-02 16:00,,2010-10-07 08:00,2010-10-13 16:00,2010-10-07 08:00,2010-10-13 16:00,2010-10-07 08:00,2010-10-13 16:00,,2010-10-27 08:00,2010-11-02 16:00,,PT_Normal,,,,,8aYzRIm7iUyvOMbJvAIHEw,8mp7XTy3YkOM5g1z7PRb6Q,,,N,0,0,,,2010-06-27 10:17,2010-06-27 10:17,admin,admin,,,
499,83412,764,10602,841,1,0,N,N,N,CP_Drtn,TT_Task,DT_FixedDUR2,RV_OK,TK_NotStart,A14870,Brick works for ground floor,,192,0,40,0,0,0,40,0,0,0,,,,2010-10-21 08:00,2010-10-26 16:00,,2010-09-23 08:00,2010-09-28 16:00,2010-09-23 08:00,2010-09-28 16:00,2010-09-23 08:00,2010-09-28 16:00,,2010-10-21 08:00,2010-10-26 16:00,,PT_Normal,,,,,WsRroVEGYk2etQqn7rgPGg,tCBpaFHNlEaLrzGDqikSJA,,,N,0,0,,,2010-06-27 10:17,2010-06-27 10:17,admin,admin,,,
500,83413,764,10603,841,1,0,N,N,N,CP_Drtn,TT_Task,DT_FixedDrtn,RV_OK,TK_NotStart,A14880,electrical conduits for ground floor's slab,,128,8,16,0,0,0,16,0,0,0,,,,2010-09-23 08:00,2010-09-25 16:00,,2010-09-02 08:00,2010-09-04 16:00,2010-09-02 08:00,2010-09-04 16:00,2010-09-02 08:00,2010-09-04 16:00,,2010-09-23 08:00,2010-09-25 16:00,,PT_Normal,,,,,EA/BRUqfx0uM8Rkl1Da8JA,3jI1C4mzMEaLNsWaFjnYZA,,,N,0,0,,,2010-06-27 10:17,2010-06-27 10:17,admin,admin,,,
501,83414,764,10603,841,1,0,N,N,N,CP_Drtn,TT_Task,DT_FixedDrtn,RV_OK,TK_NotStart,A14890,electrical conduits for 1st floor slab,,144,8,16,0,0,0,16,0,0,0,,,,2010-10-14 08:00,2010-10-16 16:00,,2010-09-23 08:00,2010-09-25 16:00,2010-09-23 08:00,2010-09-25 16:00,2010-09-23 08:00,2010-09-25 16:00,,2010-10-14 08:00,2010-10-16 16:00,,PT_Normal,,,,,PEt5pIlVAkeA3WHP7WxlRQ,E8DNjXrd5EKyS7QaWNF6jw,,,N,0,0,,,2010-06-27 10:17,2010-06-27 10:17,admin,admin,,,
502,83415,764,10603,841,1,0,N,N,N,CP_Drtn,TT_Task,DT_FixedDrtn,RV_OK,TK_NotStart,A14900,electrical conduits for roof slab,,144,8,8,0,0,0,8,0,0,0,,,,2010-11-01 08:00,2010-11-01 16:00,,2010-10-11 08:00,2010-10-11 16:00,2010-10-11 08:00,2010-10-11 16:00,2010-10-11 08:00,2010-10-11 16:00,,2010-11-01 08:00,2010-11-01 16:00,,PT_Normal,,,,,jzezqe9ZzkGE0LiIupPy/w,sGAH7hFuUE6Item6KNbDTA,,,N,0,0,,,2010-06-27 10:17,2010-06-27 10:17,admin,admin,,,
503,83416,764,10604,841,1,0,N,N,N,CP_Drtn,TT_Task,DT_FixedDUR2,RV_OK,TK_NotStart,A14910,Internal plastering for ground floor,,192,16,64,0,0,0,64,0,0,0,,,,2010-11-06 08:00,2010-11-14 16:00,,2010-10-09 08:00,2010-10-17 16:00,2010-10-09 08:00,2010-10-17 16:00,2010-10-09 08:00,2010-10-17 16:00,,2010-11-06 08:00,2010-11-14 16:00,,PT_Normal,,,,,OnbT7y3Vj0GmWUqA6Vvz6w,kU1Sv/4YtUeGtOwJ0/ZPzA,,,N,0,0,,,2010-06-27 10:17,2010-06-27 10:17,admin,admin,,,
504,83417,764,10604,841,1,0,N,N,N,CP_Drtn,TT_Task,DT_FixedDUR2,RV_OK,TK_NotStart,A14920,External plastering,,104,0,80,0,0,0,80,0,0,0,,,,2010-11-20 08:00,2010-11-30 16:00,,2010-10-31 08:00,2010-11-10 16:00,2010-10-31 08:00,2010-11-10 16:00,2010-10-31 08:00,2010-11-10 16:00,,2010-11-20 08:00,2010-11-30 16:00,,PT_Normal,,,,,9gWVD4puaEyvuUGb6Us8Vw,fC2Ijhbo4kSWXRqKyl/xcg,,,N,0,0,,,2010-06-27 10:17,2010-06-27 10:17,admin,admin,,,
505,83418,764,10603,841,1,0,N,N,N,CP_Drtn,TT_Task,DT_FixedDrtn,RV_OK,TK_NotStart,A14930,plumbing connections under slab on grade,,376,184,16,0,0,0,16,0,0,0,,,,2010-10-25 08:00,2010-10-26 16:00,,2010-08-29 08:00,2010-08-30 16:00,2010-08-29 08:00,2010-08-30 16:00,2010-08-29 08:00,2010-08-30 16:00,,2010-10-25 08:00,2010-10-26 16:00,,PT_Normal,,,,,KCtbD0K390SVs7dqANvpng,MspAADh270upJK2o8exxqw,,,N,0,0,,,2010-06-27 10:17,2010-06-27 10:17,admin,admin,,,
506,83419,764,10640,841,0,0,N,N,N,CP_Drtn,TT_Mile,DT_FixedDrtn,RV_OK,TK_NotStart,A14940,Start Villa construction,,120,0,0,0,0,0,0,0,0,0,,,,2010-07-08 08:00,2010-07-08 08:00,,2010-06-21 08:00,2010-06-21 08:00,2010-06-21 08:00,2010-06-21 08:00,2010-06-21 08:00,2010-06-21 08:00,,2010-07-08 08:00,2010-07-08 08:00,,PT_Normal,,,,,Fs9mfqXBMkmuQeDaRYlGMg,3TJfjNTtd0+vRDC21X5iPA,,,N,0,0,,,2010-06-27 10:17,2010-06-27 10:17,admin,admin,,,
507,83420,764,10640,841,0,0,N,N,N,CP_Drtn,TT_FinMile,DT_FixedDrtn,RV_OK,TK_NotStart,A14950,finish Villa construction,,104,104,0,0,0,0,0,0,0,0,,,,2010-11-30 16:00,2010-11-30 16:00,,2010-11-10 16:00,2010-11-10 16:00,2010-11-10 16:00,2010-11-10 16:00,2010-11-10 16:00,2010-11-10 16:00,,2010-11-30 16:00,2010-11-30 16:00,,PT_Normal,,,,,X3cRtGVp50CbCeXLzYA+Eg,X0Nnjuf6PUyqFQBhdafDlA,,,N,0,0,,,2010-06-27 10:17,2010-06-27 10:17,admin,admin,,,
508,83421,764,10640,841,0,0,N,N,N,CP_Drtn,TT_Mile,DT_FixedDrtn,RV_OK,TK_NotStart,A14960,IFC drawings,,120,0,0,0,0,0,0,0,0,0,,,,2010-07-08 08:00,2010-07-08 08:00,,2010-06-21 08:00,2010-06-21 08:00,2010-06-21 08:00,2010-06-21 08:00,2010-06-21 08:00,2010-06-21 08:00,,2010-07-08 08:00,2010-07-08 08:00,,PT_Normal,,,,,aii85SKAnkmfhRPlWNgcig,CzBRYb2fKEm7PRwsIA1DAw,,,N,0,0,,,2010-06-27 10:17,2010-06-27 10:17,admin,admin,,,
509,83422,764,10602,841,1,0,N,N,N,CP_Drtn,TT_Task,DT_FixedDUR2,RV_OK,TK_NotStart,A14970,pouring for ground floor's slab,,120,0,8,0,0,0,8,0,0,0,,,,2010-09-28 08:00,2010-09-28 16:00,,2010-09-11 08:00,2010-09-11 16:00,2010-09-11 08:00,2010-09-11 16:00,2010-09-11 08:00,2010-09-11 16:00,,2010-09-28 08:00,2010-09-28 16:00,,PT_Normal,,,,,nAMB0v78+kuOZc0xT9EMJw,aIc7YxhwEkqP4MSQ3sFIKA,,,N,0,0,,,2010-06-27 10:17,2010-06-27 10:17,admin,admin,,,
510,83423,764,10602,841,1,0,N,N,N,CP_Drtn,TT_Task,DT_FixedDUR2,RV_OK,TK_NotStart,A14980,pouring for 1st floor's slab,,136,0,8,0,0,0,8,0,0,0,,,,2010-10-19 08:00,2010-10-19 16:00,,2010-09-29 08:00,2010-09-29 16:00,2010-09-29 08:00,2010-09-29 16:00,2010-09-29 08:00,2010-09-29 16:00,,2010-10-19 08:00,2010-10-19 16:00,,PT_Normal,,,,,ThGZCyRkrEu3TCrkFV/TwQ,FPaD4/bR4EGwgqfjRGrPAw,,,N,0,0,,,2010-06-27 10:17,2010-06-27 10:17,admin,admin,,,
511,83424,764,10602,841,1,0,N,N,N,CP_Drtn,TT_Task,DT_FixedDUR2,RV_OK,TK_NotStart,A14990,pouring for roof floor's slab,,136,0,8,0,0,0,8,0,0,0,,,,2010-11-03 08:00,2010-11-03 16:00,,2010-10-14 08:00,2010-10-14 16:00,2010-10-14 08:00,2010-10-14 16:00,2010-10-14 08:00,2010-10-14 16:00,,2010-11-03 08:00,2010-11-03 16:00,,PT_Normal,,,,,0dK51gASJEiLUrJgZP4pHQ,g8hA6GL7E068Vprc1cj1eQ,,,N,0,0,,,2010-06-27 10:17,2010-06-27 10:17,admin,admin,,,
512,83425,764,10602,841,1,0,N,N,N,CP_Drtn,TT_Task,DT_FixedDrtn,RV_OK,TK_NotStart,A15000,Fence work,,120,16,400,0,0,0,400,0,0,0,,,,2010-09-29 08:00,2010-11-30 16:00,,2010-09-12 08:00,2010-11-08 16:00,2010-09-12 08:00,2010-11-08 16:00,2010-09-12 08:00,2010-11-08 16:00,,2010-09-29 08:00,2010-11-30 16:00,,PT_Normal,,,,,CSvS3musQ0mFJtnWjUXKtQ,sFRm1vupLEmBxZfrG+hO2w,,,N,0,0,,,2010-06-27 10:17,2010-06-27 10:17,admin,admin,,,
513,83426,764,10640,841,1,0,N,N,N,CP_Drtn,TT_Task,DT_FixedDUR2,RV_OK,TK_NotStart,A15010,Fence Drawings IFC,,584,464,8,0,0,0,8,0,0,0,,,,2010-09-16 08:00,2010-09-16 16:00,,2010-06-21 08:00,2010-06-21 16:00,2010-06-21 08:00,2010-06-21 16:00,2010-06-21 08:00,2010-06-21 16:00,,2010-09-16 08:00,2010-09-16 16:00,,PT_Normal,,,,,0E6pNqOJdEi23Lb8+ChSww,SJ7H5fTmkEislZCa8kUx7Q,,,N,0,0,,,2010-06-27 10:17,2010-06-27 10:17,admin,admin,,,
514,83427,764,10601,849,1,0,N,N,N,CP_Drtn,TT_Task,DT_FixedDUR2,RV_OK,TK_NotStart,A15020,backfilling between P.C Foundation,,120,0,16,0,0,0,16,0,0,0,,,,2010-08-18 08:00,2010-08-19 16:00,,2010-08-01 08:00,2010-08-02 16:00,2010-08-01 08:00,2010-08-02 16:00,2010-08-01 08:00,2010-08-02 16:00,,2010-08-18 08:00,2010-08-19 16:00,,PT_Normal,,,,,p6LNb+CNwkSt+xDFAdBoPg,CLBaWs8z3ky10ONsYOt32Q,,,N,0,0,,,2010-06-27 10:17,2010-06-27 10:17,admin,admin,,,
515,83428,764,10601,849,1,0,N,N,N,CP_Drtn,TT_Task,DT_FixedDUR2,RV_OK,TK_NotStart,A15030,P.C Under Smells,,120,0,8,0,0,0,8,0,0,0,,,,2010-08-21 08:00,2010-08-21 16:00,,2010-08-03 08:00,2010-08-03 16:00,2010-08-03 08:00,2010-08-03 16:00,2010-08-03 08:00,2010-08-03 16:00,,2010-08-21 08:00,2010-08-21 16:00,,PT_Normal,,,,,EcG0huu8iE+/1msUR+k3iw,TLnCQqheME+Yr4ktwmouZA,,,N,0,0,,,2010-06-27 10:17,2010-06-27 10:17,admin,admin,,,
516,83429,764,10602,849,1,0,N,N,N,CP_Drtn,TT_Task,DT_FixedDUR2,RV_OK,TK_NotStart,A15040,Brick works for 1st floor,,184,0,40,0,0,0,40,0,0,0,,,,2010-11-08 08:00,2010-11-13 16:00,,2010-10-12 08:00,2010-10-17 16:00,2010-10-12 08:00,2010-10-17 16:00,2010-10-12 08:00,2010-10-17 16:00,,2010-11-08 08:00,2010-11-13 16:00,,PT_Normal,,,,,Ke33pynOv0O8GhPB1L7gqA,z7Q/g38H9US9bwL6l006Ig,,,N,0,0,,,2010-06-27 10:17,2010-06-27 10:17,admin,admin,,,
517,83430,764,10602,849,1,0,N,N,N,CP_Drtn,TT_Task,DT_FixedDUR2,RV_OK,TK_NotStart,A15050,Brick works for roof floor,,136,0,40,0,0,0,40,0,0,0,,,,2010-11-14 08:00,2010-11-18 16:00,,2010-10-25 08:00,2010-10-30 16:00,2010-10-25 08:00,2010-10-30 16:00,2010-10-25 08:00,2010-10-30 16:00,,2010-11-14 08:00,2010-11-18 16:00,,PT_Normal,,,,,YTIvfW/U6USDMZ9jHOQ2yA,a274PAaJl06OYu0jccZ8BA,,,N,0,0,,,2010-06-27 10:17,2010-06-27 10:17,admin,admin,,,
518,83431,764,10604,849,1,0,N,N,N,CP_Drtn,TT_Task,DT_FixedDUR2,RV_OK,TK_NotStart,A15060,Internal plastering for 1st floor,,184,24,64,0,0,0,64,0,0,0,,,,2010-11-16 08:00,2010-11-24 16:00,,2010-10-20 08:00,2010-10-28 16:00,2010-10-20 08:00,2010-10-28 16:00,2010-10-20 08:00,2010-10-28 16:00,,2010-11-16 08:00,2010-11-24 16:00,,PT_Normal,,,,,vhucTHBFgEujfp4NW9BPCw,/d/DXSBMN0uPnwsFg05otw,,,N,0,0,,,2010-06-27 10:17,2010-06-27 10:17,admin,admin,,,
519,83432,764,10604,849,1,0,N,N,N,CP_Drtn,TT_Task,DT_FixedDUR2,RV_OK,TK_NotStart,A15070,Internal plastering for roof floor,,160,24,40,0,0,0,40,0,0,0,,,,2010-11-25 08:00,2010-11-30 16:00,,2010-11-02 08:00,2010-11-07 16:00,2010-11-02 08:00,2010-11-07 16:00,2010-11-02 08:00,2010-11-07 16:00,,2010-11-25 08:00,2010-11-30 16:00,,PT_Normal,,,,,9PajHXL7c0u5RBxYcrZQUw,Je9RT6iVC0ihXbCYx3eeHw,,,N,0,0,,,2010-06-27 10:17,2010-06-27 10:17,admin,admin,,,
520,83433,764,10603,849,1,0,N,N,N,CP_Drtn,TT_Task,DT_FixedDUR2,RV_OK,TK_NotStart,A15080,electrical conduits for ground floor walls,,192,0,16,0,0,0,16,0,0,0,,,,2010-11-03 08:00,2010-11-04 16:00,,2010-10-06 08:00,2010-10-07 16:00,2010-10-06 08:00,2010-10-07 16:00,2010-10-06 08:00,2010-10-07 16:00,,2010-11-03 08:00,2010-11-04 16:00,,PT_Normal,,,,,AeoQpGO5x0COIw7qSNBTkA,96OIvWAXrUuHPpIQBe+PKg,,,N,0,0,,,2010-06-27 10:17,2010-06-27 10:17,admin,admin,,,
521,83434,764,10603,849,1,0,N,N,N,CP_Drtn,TT_Task,DT_FixedDUR2,RV_OK,TK_NotStart,A15090,electrical conduits for 1st floor walls,,184,0,16,0,0,0,16,0,0,0,,,,2010-11-14 08:00,2010-11-15 16:00,,2010-10-18 08:00,2010-10-19 16:00,2010-10-18 08:00,2010-10-19 16:00,2010-10-18 08:00,2010-10-19 16:00,,2010-11-14 08:00,2010-11-15 16:00,,PT_Normal,,,,,iPMARaCDGEaYO1hsQ54+5g,A8oJIDC/xUO/0ZeSFTpcdw,,,N,0,0,,,2010-06-27 10:17,2010-06-27 10:17,admin,admin,,,
522,83435,764,10603,849,1,0,N,N,N,CP_Drtn,TT_Task,DT_FixedDUR2,RV_OK,TK_NotStart,A15100,electrical conduits for roof floor walls,,160,0,16,0,0,0,16,0,0,0,,,,2010-11-23 08:00,2010-11-24 16:00,,2010-10-31 08:00,2010-11-01 16:00,2010-10-31 08:00,2010-11-01 16:00,2010-10-31 08:00,2010-11-01 16:00,,2010-11-23 08:00,2010-11-24 16:00,,PT_Normal,,,,,j6iDlM82j0qW2gG/y33dAQ,S1p+ZbDY8EufYOkA/yYujA,,,N,0,0,,,2010-06-27 10:17,2010-06-27 10:17,admin,admin,,,
523,83436,764,10607,841,1,0,N,N,N,CP_Drtn,TT_Task,DT_FixedDUR2,RV_OK,TK_NotStart,A15110,excavation,,112,0,0,0,0,0,0,0,0,0,,,,2010-07-28 16:00,2010-07-28 16:00,,2010-07-13 08:00,2010-07-13 08:00,2010-07-13 08:00,2010-07-13 08:00,2010-07-13 08:00,2010-07-13 08:00,,2010-07-28 16:00,2010-07-28 16:00,,PT_Normal,,,,,B5MtmXEqsUSBnQt01VaZBg,gjnl46IS90WIhjiXQUCy3w,,,N,0,0,,,2010-06-27 10:17,2010-06-27 10:17,admin,admin,,,
524,83437,764,10607,841,1,0,N,N,N,CP_Drtn,TT_Task,DT_FixedDUR2,RV_OK,TK_NotStart,A15120,soil replacement,,112,0,112,0,0,0,112,0,0,0,,,,2010-07-29 08:00,2010-08-14 16:00,,2010-07-13 08:00,2010-07-28 16:00,2010-07-13 08:00,2010-07-28 16:00,2010-07-13 08:00,2010-07-28 16:00,,2010-07-29 08:00,2010-08-14 16:00,,PT_Normal,,,,,uBeVuk3vxUi7f4Z4mSYd9w,ht14OhR+3USvqcdgUY0lXQ,,,N,0,0,,,2010-06-27 10:17,2010-06-27 10:17,admin,admin,,,
525,83438,764,10608,841,1,0,N,N,N,CP_Drtn,TT_Task,DT_FixedDUR2,RV_OK,TK_NotStart,A15130,Plain Concrete Foundation,,112,0,16,0,0,0,16,0,0,0,,,,2010-08-15 08:00,2010-08-16 16:00,,2010-07-29 08:00,2010-07-31 16:00,2010-07-29 08:00,2010-07-31 16:00,2010-07-29 08:00,2010-07-31 16:00,,2010-08-15 08:00,2010-08-16 16:00,,PT_Normal,,,,,rNEgrm4DCEe+W3+1wUspfw,r14fOqwEzEuP3hZycfmNmQ,,,N,0,0,,,2010-06-27 10:17,2010-06-27 10:17,admin,admin,,,
526,83439,764,10608,841,1,0,N,N,N,CP_Drtn,TT_Task,DT_FixedDUR2,RV_OK,TK_NotStart,A15140,Reinforced Concrete Foundation,,112,0,56,0,0,0,56,0,0,0,,,,2010-08-22 08:00,2010-08-29 16:00,,2010-08-05 08:00,2010-08-12 16:00,2010-08-05 08:00,2010-08-12 16:00,2010-08-05 08:00,2010-08-12 16:00,,2010-08-22 08:00,2010-08-29 16:00,,PT_Normal,,,,,fJvFhtMUHUuYf6bVztxA8w,cT7hjIjcikKlUh0pq+VMmg,,,N,0,0,,,2010-06-27 10:17,2010-06-27 10:17,admin,admin,,,
527,83440,764,10608,841,1,0,N,N,N,CP_Drtn,TT_Task,DT_FixedDUR2,RV_OK,TK_NotStart,A15150,under ground  brick works,,112,0,16,0,0,0,16,0,0,0,,,,2010-09-06 08:00,2010-09-07 16:00,,2010-08-21 08:00,2010-08-22 16:00,2010-08-21 08:00,2010-08-22 16:00,2010-08-21 08:00,2010-08-22 16:00,,2010-09-06 08:00,2010-09-07 16:00,,PT_Normal,,,,,AZPDNubDekq7NxgRX3S5mQ,I5rmTprRMESL3H9GL8wPHw,,,N,0,0,,,2010-06-27 10:17,2010-06-27 10:17,admin,admin,,,
528,83441,764,10608,841,1,0,N,N,N,CP_Drtn,TT_Task,DT_FixedDUR2,RV_OK,TK_NotStart,A15160,under ground insulation for RC & Brick work,,112,0,16,0,0,0,16,0,0,0,,,,2010-09-11 08:00,2010-09-12 16:00,,2010-08-23 08:00,2010-08-24 16:00,2010-08-23 08:00,2010-08-24 16:00,2010-08-23 08:00,2010-08-24 16:00,,2010-09-11 08:00,2010-09-12 16:00,,PT_Normal,,,,,T3VRFfmaWkyeKpFy0LpEFA,nw0NqgFssEqkN0H5W0czIg,,,N,0,0,,,2010-06-27 10:17,2010-06-27 10:17,admin,admin,,,
529,83442,764,10608,841,1,0,N,N,N,CP_Drtn,TT_Task,DT_FixedDUR2,RV_OK,TK_NotStart,A15170,backfilling for under ground,,112,0,32,0,0,0,32,0,0,0,,,,2010-09-13 08:00,2010-09-16 16:00,,2010-08-25 08:00,2010-08-29 16:00,2010-08-25 08:00,2010-08-29 16:00,2010-08-25 08:00,2010-08-29 16:00,,2010-09-13 08:00,2010-09-16 16:00,,PT_Normal,,,,,RRIDa0hXq0a9NZ6wAKk8Pg,RFKsF6FFKUuwzRDqqZhhDg,,,N,0,0,,,2010-06-27 10:17,2010-06-27 10:17,admin,admin,,,
530,83443,764,10608,841,1,0,N,N,N,CP_Drtn,TT_Task,DT_FixedDUR2,RV_OK,TK_NotStart,A15180,P.C slab on grade 10CM,,184,0,8,0,0,0,8,0,0,0,,,,2010-10-27 08:00,2010-10-27 16:00,,2010-09-30 08:00,2010-09-30 16:00,2010-09-30 08:00,2010-09-30 16:00,2010-09-30 08:00,2010-09-30 16:00,,2010-10-27 08:00,2010-10-27 16:00,,PT_Normal,,,,,tE+21nDepkKV7SFcJWlHew,bGQKy3+ASUqr/tUTRYb/RA,,,N,0,0,,,2010-06-27 10:17,2010-06-27 10:17,admin,admin,,,
531,83444,764,10608,841,1,0,N,N,N,CP_Drtn,TT_Task,DT_FixedDUR2,RV_OK,TK_NotStart,A15190,moisture insulation with membrane sheets,,184,0,16,0,0,0,16,0,0,0,,,,2010-10-28 08:00,2010-10-30 16:00,,2010-10-02 08:00,2010-10-03 16:00,2010-10-02 08:00,2010-10-03 16:00,2010-10-02 08:00,2010-10-03 16:00,,2010-10-28 08:00,2010-10-30 16:00,,PT_Normal,,,,,K9bDYgDBzEuXEddOQq3u7Q,YT87NfWnykeZnnXZOmO2XA,,,N,0,0,,,2010-06-27 10:17,2010-06-27 10:17,admin,admin,,,
532,83445,764,10608,841,1,0,N,N,N,CP_Drtn,TT_Task,DT_FixedDUR2,RV_OK,TK_NotStart,A15200,R.C slab on grade,,184,0,16,0,0,0,16,0,0,0,,,,2010-10-31 08:00,2010-11-01 16:00,,2010-10-04 08:00,2010-10-05 16:00,2010-10-04 08:00,2010-10-05 16:00,2010-10-04 08:00,2010-10-05 16:00,,2010-10-31 08:00,2010-11-01 16:00,,PT_Normal,,,,,1CKJyy+P2keGpLuklLQuDA,ZaeDBbeeCUyIoFLb4MFVZw,,,N,0,0,,,2010-06-27 10:17,2010-06-27 10:17,admin,admin,,,
533,83446,764,10609,841,1,0,N,N,N,CP_Drtn,TT_Task,DT_FixedDUR2,RV_OK,TK_NotStart,A15210,columns for ground floor,,112,0,48,0,0,0,48,0,0,0,,,,2010-08-30 08:00,2010-09-05 16:00,,2010-08-14 08:00,2010-08-19 16:00,2010-08-14 08:00,2010-08-19 16:00,2010-08-14 08:00,2010-08-19 16:00,,2010-08-30 08:00,2010-09-05 16:00,,PT_Normal,,,,,vn/pK+KUukef8jxbA0JTgw,MWaWhsEJHESldi/SfmnvtQ,,,N,0,0,,,2010-06-27 10:17,2010-06-27 10:17,admin,admin,,,
534,83447,764,10609,841,1,0,N,N,N,CP_Drtn,TT_Task,DT_FixedDUR2,RV_OK,TK_NotStart,A15220,slab for ground floor,,112,0,72,0,0,0,72,0,0,0,,,,2010-09-18 08:00,2010-09-27 16:00,,2010-08-30 08:00,2010-09-11 16:00,2010-08-30 08:00,2010-09-11 16:00,2010-08-30 08:00,2010-09-11 16:00,,2010-09-18 08:00,2010-09-27 16:00,,PT_Normal,,,,,ZeFgGTMxFEqRt9aXhxJZxw,disbAZgPEkylyqB8pn8a2A,,,N,0,0,,,2010-06-27 10:17,2010-06-27 10:17,admin,admin,,,
535,83448,764,10609,841,1,0,N,N,N,CP_Drtn,TT_Task,DT_FixedDUR2,RV_OK,TK_NotStart,A15230,columns for 1st floor,,128,0,48,0,0,0,48,0,0,0,,,,2010-10-02 08:00,2010-10-07 16:00,,2010-09-13 08:00,2010-09-19 16:00,2010-09-13 08:00,2010-09-19 16:00,2010-09-13 08:00,2010-09-19 16:00,,2010-10-02 08:00,2010-10-07 16:00,,PT_Normal,,,,,G53tSTGZmUmtoHT4NFjOKg,sUYXH6Z5gUCPzUvNj++E3A,,,N,0,0,,,2010-06-27 10:17,2010-06-27 10:17,admin,admin,,,
536,83449,764,10609,841,1,0,N,N,N,CP_Drtn,TT_Task,DT_FixedDUR2,RV_OK,TK_NotStart,A15240,slab for 1st floor,,128,0,72,0,0,0,72,0,0,0,,,,2010-10-09 08:00,2010-10-18 16:00,,2010-09-20 08:00,2010-09-29 16:00,2010-09-20 08:00,2010-09-29 16:00,2010-09-20 08:00,2010-09-29 16:00,,2010-10-09 08:00,2010-10-18 16:00,,PT_Normal,,,,,J0cWe1JJdUmtek2/tkOmsg,dwQIuFKfbkeLwupXj1s4zQ,,,N,0,0,,,2010-06-27 10:17,2010-06-27 10:17,admin,admin,,,
537,83450,764,10609,841,1,0,N,N,N,CP_Drtn,TT_Task,DT_FixedDUR2,RV_OK,TK_NotStart,A15250,columns for roof floor,,128,0,32,0,0,0,32,0,0,0,,,,2010-10-23 08:00,2010-10-26 16:00,,2010-10-04 08:00,2010-10-07 16:00,2010-10-04 08:00,2010-10-07 16:00,2010-10-04 08:00,2010-10-07 16:00,,2010-10-23 08:00,2010-10-26 16:00,,PT_Normal,,,,,wMVP9B6ag0SFjugfzf1X1g,n5mEcOUaYEiZlBtVlAg3Mg,,,N,0,0,,,2010-06-27 10:17,2010-06-27 10:17,admin,admin,,,
538,83451,764,10609,841,1,0,N,N,N,CP_Drtn,TT_Task,DT_FixedDUR2,RV_OK,TK_NotStart,A15260,slab for roof floor,,128,0,48,0,0,0,48,0,0,0,,,,2010-10-27 08:00,2010-11-02 16:00,,2010-10-09 08:00,2010-10-14 16:00,2010-10-09 08:00,2010-10-14 16:00,2010-10-09 08:00,2010-10-14 16:00,,2010-10-27 08:00,2010-11-02 16:00,,PT_Normal,,,,,YtPkzxJtbEiPUbFQ3gIewg,+knOImiHZ0i+dhZX/ZFHzA,,,N,0,0,,,2010-06-27 10:17,2010-06-27 10:17,admin,admin,,,
539,83452,764,10609,841,1,0,N,N,N,CP_Drtn,TT_Task,DT_FixedDUR2,RV_OK,TK_NotStart,A15270,Brick works for ground floor,,184,0,40,0,0,0,40,0,0,0,,,,2010-10-21 08:00,2010-10-26 16:00,,2010-09-25 08:00,2010-09-29 16:00,2010-09-25 08:00,2010-09-29 16:00,2010-09-25 08:00,2010-09-29 16:00,,2010-10-21 08:00,2010-10-26 16:00,,PT_Normal,,,,,OE7Le5eLdk+7pNocLXAw/A,tPW5D+1810yk+Tw6aN5lbQ,,,N,0,0,,,2010-06-27 10:17,2010-06-27 10:17,admin,admin,,,
540,83453,764,10610,841,1,0,N,N,N,CP_Drtn,TT_Task,DT_FixedDrtn,RV_OK,TK_NotStart,A15280,electrical conduits for ground floor's slab,,120,8,16,0,0,0,16,0,0,0,,,,2010-09-23 08:00,2010-09-25 16:00,,2010-09-04 08:00,2010-09-05 16:00,2010-09-04 08:00,2010-09-05 16:00,2010-09-04 08:00,2010-09-05 16:00,,2010-09-23 08:00,2010-09-25 16:00,,PT_Normal,,,,,EX2Yx8N+0ECqBCBXqwJMjQ,P0wYYmgdAEi9Eg7zXcSrUA,,,N,0,0,,,2010-06-27 10:17,2010-06-27 10:17,admin,admin,,,
541,83454,764,10610,841,1,0,N,N,N,CP_Drtn,TT_Task,DT_FixedDrtn,RV_OK,TK_NotStart,A15290,electrical conduits for 1st floor slab,,136,8,16,0,0,0,16,0,0,0,,,,2010-10-14 08:00,2010-10-16 16:00,,2010-09-25 08:00,2010-09-26 16:00,2010-09-25 08:00,2010-09-26 16:00,2010-09-25 08:00,2010-09-26 16:00,,2010-10-14 08:00,2010-10-16 16:00,,PT_Normal,,,,,wmXojSMsw0C/EgzZiW/Qmw,KApd//h4kUK8RUomeWnW+Q,,,N,0,0,,,2010-06-27 10:17,2010-06-27 10:17,admin,admin,,,
542,83455,764,10610,841,1,0,N,N,N,CP_Drtn,TT_Task,DT_FixedDrtn,RV_OK,TK_NotStart,A15300,electrical conduits for roof slab,,136,8,8,0,0,0,8,0,0,0,,,,2010-11-01 08:00,2010-11-01 16:00,,2010-10-12 08:00,2010-10-12 16:00,2010-10-12 08:00,2010-10-12 16:00,2010-10-12 08:00,2010-10-12 16:00,,2010-11-01 08:00,2010-11-01 16:00,,PT_Normal,,,,,Di5bG43T1E2mzMaIAvs0AA,lR1P6e4RK0SgK/X3y3+k7g,,,N,0,0,,,2010-06-27 10:17,2010-06-27 10:17,admin,admin,,,
543,83456,764,10611,841,1,0,N,N,N,CP_Drtn,TT_Task,DT_FixedDUR2,RV_OK,TK_NotStart,A15310,Internal plastering for ground floor,,184,16,64,0,0,0,64,0,0,0,,,,2010-11-06 08:00,2010-11-14 16:00,,2010-10-10 08:00,2010-10-18 16:00,2010-10-10 08:00,2010-10-18 16:00,2010-10-10 08:00,2010-10-18 16:00,,2010-11-06 08:00,2010-11-14 16:00,,PT_Normal,,,,,6o2cI8c6fkSF72WgXV4HRg,MSRPI2oDfUOv4kiptN+yNw,,,N,0,0,,,2010-06-27 10:17,2010-06-27 10:17,admin,admin,,,
544,83457,764,10611,841,1,0,N,N,N,CP_Drtn,TT_Task,DT_FixedDUR2,RV_OK,TK_NotStart,A15320,External plastering,,96,0,80,0,0,0,80,0,0,0,,,,2010-11-20 08:00,2010-11-30 16:00,,2010-11-01 08:00,2010-11-11 16:00,2010-11-01 08:00,2010-11-11 16:00,2010-11-01 08:00,2010-11-11 16:00,,2010-11-20 08:00,2010-11-30 16:00,,PT_Normal,,,,,HqLe8qinW0OfbnGp9pNRYQ,03EzYkGIJ0iQ/VBkcopgYA,,,N,0,0,,,2010-06-27 10:17,2010-06-27 10:17,admin,admin,,,
545,83458,764,10610,841,1,0,N,N,N,CP_Drtn,TT_Task,DT_FixedDrtn,RV_OK,TK_NotStart,A15330,plumbing connections under slab on grade,,368,184,16,0,0,0,16,0,0,0,,,,2010-10-25 08:00,2010-10-26 16:00,,2010-08-30 08:00,2010-08-31 16:00,2010-08-30 08:00,2010-08-31 16:00,2010-08-30 08:00,2010-08-31 16:00,,2010-10-25 08:00,2010-10-26 16:00,,PT_Normal,,,,,/Uhgxq6+xkS88GRLf0cjSQ,OYUdT6X6Skan+PPgR8qd3w,,,N,0,0,,,2010-06-27 10:17,2010-06-27 10:17,admin,admin,,,
546,83459,764,10647,841,0,0,N,N,N,CP_Drtn,TT_Mile,DT_FixedDrtn,RV_OK,TK_NotStart,A15340,Start Villa construction,,112,0,0,0,0,0,0,0,0,0,,,,2010-07-07 08:00,2010-07-07 08:00,,2010-06-21 08:00,2010-06-21 08:00,2010-06-21 08:00,2010-06-21 08:00,2010-06-21 08:00,2010-06-21 08:00,,2010-07-07 08:00,2010-07-07 08:00,,PT_Normal,,,,,r5ZWYKjeYUunR0XVMjPTCw,nXdC/JZI00KJ5QwDiYXdAg,,,N,0,0,,,2010-06-27 10:17,2010-06-27 10:17,admin,admin,,,
547,83460,764,10647,841,0,0,N,N,N,CP_Drtn,TT_FinMile,DT_FixedDrtn,RV_OK,TK_NotStart,A15350,finish Villa construction,,96,96,0,0,0,0,0,0,0,0,,,,2010-11-30 16:00,2010-11-30 16:00,,2010-11-11 16:00,2010-11-11 16:00,2010-11-11 16:00,2010-11-11 16:00,2010-11-11 16:00,2010-11-11 16:00,,2010-11-30 16:00,2010-11-30 16:00,,PT_Normal,,,,,DHImcWAlN0ua639Gb9skJA,PqHaf7BEBUmvpCXhZvBbtQ,,,N,0,0,,,2010-06-27 10:17,2010-06-27 10:17,admin,admin,,,
548,83461,764,10647,841,0,0,N,N,N,CP_Drtn,TT_Mile,DT_FixedDrtn,RV_OK,TK_NotStart,A15360,IFC drawings,,112,0,0,0,0,0,0,0,0,0,,,,2010-07-07 08:00,2010-07-07 08:00,,2010-06-21 08:00,2010-06-21 08:00,2010-06-21 08:00,2010-06-21 08:00,2010-06-21 08:00,2010-06-21 08:00,,2010-07-07 08:00,2010-07-07 08:00,,PT_Normal,,,,,KtNeS4+Te0aUWVF5Zq4+Jg,hD+reLjOCUa50hyjIUQcnw,,,N,0,0,,,2010-06-27 10:17,2010-06-27 10:17,admin,admin,,,
549,83462,764,10609,841,1,0,N,N,N,CP_Drtn,TT_Task,DT_FixedDUR2,RV_OK,TK_NotStart,A15370,pouring for ground floor's slab,,112,0,8,0,0,0,8,0,0,0,,,,2010-09-28 08:00,2010-09-28 16:00,,2010-09-12 08:00,2010-09-12 16:00,2010-09-12 08:00,2010-09-12 16:00,2010-09-12 08:00,2010-09-12 16:00,,2010-09-28 08:00,2010-09-28 16:00,,PT_Normal,,,,,3g0DmLbWA0utvzlIA0fHgA,1X2DfRwnDkuddFPzJ0VyOw,,,N,0,0,,,2010-06-27 10:17,2010-06-27 10:17,admin,admin,,,
550,83463,764,10609,841,1,0,N,N,N,CP_Drtn,TT_Task,DT_FixedDUR2,RV_OK,TK_NotStart,A15380,pouring for 1st floor's slab,,128,0,8,0,0,0,8,0,0,0,,,,2010-10-19 08:00,2010-10-19 16:00,,2010-09-30 08:00,2010-09-30 16:00,2010-09-30 08:00,2010-09-30 16:00,2010-09-30 08:00,2010-09-30 16:00,,2010-10-19 08:00,2010-10-19 16:00,,PT_Normal,,,,,qbjWOsUpe06prFHAn8xX7Q,Ned47nHZv0KFhn+g8C67sw,,,N,0,0,,,2010-06-27 10:17,2010-06-27 10:17,admin,admin,,,
551,83464,764,10609,841,1,0,N,N,N,CP_Drtn,TT_Task,DT_FixedDUR2,RV_OK,TK_NotStart,A15390,pouring for roof floor's slab,,128,0,8,0,0,0,8,0,0,0,,,,2010-11-03 08:00,2010-11-03 16:00,,2010-10-16 08:00,2010-10-16 16:00,2010-10-16 08:00,2010-10-16 16:00,2010-10-16 08:00,2010-10-16 16:00,,2010-11-03 08:00,2010-11-03 16:00,,PT_Normal,,,,,XCoD+JzaEEmHuXz+ZEkhzg,6TtnoPS5xkCaULwqkYn2UA,,,N,0,0,,,2010-06-27 10:17,2010-06-27 10:17,admin,admin,,,
552,83465,764,10609,841,1,0,N,N,N,CP_Drtn,TT_Task,DT_FixedDrtn,RV_OK,TK_NotStart,A15400,Fence work,,112,16,400,0,0,0,400,0,0,0,,,,2010-09-29 08:00,2010-11-30 16:00,,2010-09-13 08:00,2010-11-09 16:00,2010-09-13 08:00,2010-11-09 16:00,2010-09-13 08:00,2010-11-09 16:00,,2010-09-29 08:00,2010-11-30 16:00,,PT_Normal,,,,,Bfif4CzFeUeUFKdlbh1Yog,MJIvRlq+CEOu+lN0ROxmbA,,,N,0,0,,,2010-06-27 10:17,2010-06-27 10:17,admin,admin,,,
553,83466,764,10647,841,1,0,N,N,N,CP_Drtn,TT_Task,DT_FixedDUR2,RV_OK,TK_NotStart,A15410,Fence Drawings IFC,,584,472,8,0,0,0,8,0,0,0,,,,2010-09-16 08:00,2010-09-16 16:00,,2010-06-21 08:00,2010-06-21 16:00,2010-06-21 08:00,2010-06-21 16:00,2010-06-21 08:00,2010-06-21 16:00,,2010-09-16 08:00,2010-09-16 16:00,,PT_Normal,,,,,lkUcFX5O5k+ZspJ1Y0y4Ag,GC31y4wyI0Wfu+egTOy8nQ,,,N,0,0,,,2010-06-27 10:17,2010-06-27 10:17,admin,admin,,,
554,83467,764,10608,849,1,0,N,N,N,CP_Drtn,TT_Task,DT_FixedDUR2,RV_OK,TK_NotStart,A15420,backfilling between P.C Foundation,,112,0,16,0,0,0,16,0,0,0,,,,2010-08-18 08:00,2010-08-19 16:00,,2010-08-02 08:00,2010-08-03 16:00,2010-08-02 08:00,2010-08-03 16:00,2010-08-02 08:00,2010-08-03 16:00,,2010-08-18 08:00,2010-08-19 16:00,,PT_Normal,,,,,5EI1cKUyuUu9CDFBFZemaQ,xXhSerHVvkysgbVgWFZNtQ,,,N,0,0,,,2010-06-27 10:17,2010-06-27 10:17,admin,admin,,,
555,83468,764,10608,849,1,0,N,N,N,CP_Drtn,TT_Task,DT_FixedDUR2,RV_OK,TK_NotStart,A15430,P.C Under Smells,,112,0,8,0,0,0,8,0,0,0,,,,2010-08-21 08:00,2010-08-21 16:00,,2010-08-04 08:00,2010-08-04 16:00,2010-08-04 08:00,2010-08-04 16:00,2010-08-04 08:00,2010-08-04 16:00,,2010-08-21 08:00,2010-08-21 16:00,,PT_Normal,,,,,L1tGgxLGsEu5CIinl/hkLw,4+qOfNeik0Wf7/4F1ky18w,,,N,0,0,,,2010-06-27 10:17,2010-06-27 10:17,admin,admin,,,
556,83469,764,10609,849,1,0,N,N,N,CP_Drtn,TT_Task,DT_FixedDUR2,RV_OK,TK_NotStart,A15440,Brick works for 1st floor,,176,0,40,0,0,0,40,0,0,0,,,,2010-11-08 08:00,2010-11-13 16:00,,2010-10-13 08:00,2010-10-18 16:00,2010-10-13 08:00,2010-10-18 16:00,2010-10-13 08:00,2010-10-18 16:00,,2010-11-08 08:00,2010-11-13 16:00,,PT_Normal,,,,,xAyEVSJRMk2jXLvO6qTsiA,XBinRbYBek2xGmJdR8186g,,,N,0,0,,,2010-06-27 10:17,2010-06-27 10:17,admin,admin,,,
557,83470,764,10609,849,1,0,N,N,N,CP_Drtn,TT_Task,DT_FixedDUR2,RV_OK,TK_NotStart,A15450,Brick works for roof floor,,128,0,40,0,0,0,40,0,0,0,,,,2010-11-14 08:00,2010-11-18 16:00,,2010-10-26 08:00,2010-10-31 16:00,2010-10-26 08:00,2010-10-31 16:00,2010-10-26 08:00,2010-10-31 16:00,,2010-11-14 08:00,2010-11-18 16:00,,PT_Normal,,,,,UsPDUs84z0+2kO5Z3I5Jxw,gCQrllyYP0+602uCLO5TkA,,,N,0,0,,,2010-06-27 10:17,2010-06-27 10:17,admin,admin,,,
558,83471,764,10611,849,1,0,N,N,N,CP_Drtn,TT_Task,DT_FixedDUR2,RV_OK,TK_NotStart,A15460,Internal plastering for 1st floor,,176,24,64,0,0,0,64,0,0,0,,,,2010-11-16 08:00,2010-11-24 16:00,,2010-10-21 08:00,2010-10-30 16:00,2010-10-21 08:00,2010-10-30 16:00,2010-10-21 08:00,2010-10-30 16:00,,2010-11-16 08:00,2010-11-24 16:00,,PT_Normal,,,,,zhj6cQyQL0yWohmf7ZLt3Q,iGyjlJVJMEuqNPsDAs3zzg,,,N,0,0,,,2010-06-27 10:17,2010-06-27 10:17,admin,admin,,,
559,83472,764,10611,849,1,0,N,N,N,CP_Drtn,TT_Task,DT_FixedDUR2,RV_OK,TK_NotStart,A15470,Internal plastering for roof floor,,152,24,40,0,0,0,40,0,0,0,,,,2010-11-25 08:00,2010-11-30 16:00,,2010-11-03 08:00,2010-11-08 16:00,2010-11-03 08:00,2010-11-08 16:00,2010-11-03 08:00,2010-11-08 16:00,,2010-11-25 08:00,2010-11-30 16:00,,PT_Normal,,,,,rJnZ9bCiaESxSrJykzesRg,6TEDXsxFoEm2c5/ehkUEGA,,,N,0,0,,,2010-06-27 10:17,2010-06-27 10:17,admin,admin,,,
560,83473,764,10610,849,1,0,N,N,N,CP_Drtn,TT_Task,DT_FixedDUR2,RV_OK,TK_NotStart,A15480,electrical conduits for ground floor walls,,184,0,16,0,0,0,16,0,0,0,,,,2010-11-03 08:00,2010-11-04 16:00,,2010-10-07 08:00,2010-10-09 16:00,2010-10-07 08:00,2010-10-09 16:00,2010-10-07 08:00,2010-10-09 16:00,,2010-11-03 08:00,2010-11-04 16:00,,PT_Normal,,,,,dVvL72oiE0eJ6qBOa+n0YQ,QEXmylWvQUaYSdgv50pzpw,,,N,0,0,,,2010-06-27 10:17,2010-06-27 10:17,admin,admin,,,
561,83474,764,10610,849,1,0,N,N,N,CP_Drtn,TT_Task,DT_FixedDUR2,RV_OK,TK_NotStart,A15490,electrical conduits for 1st floor walls,,176,0,16,0,0,0,16,0,0,0,,,,2010-11-14 08:00,2010-11-15 16:00,,2010-10-19 08:00,2010-10-20 16:00,2010-10-19 08:00,2010-10-20 16:00,2010-10-19 08:00,2010-10-20 16:00,,2010-11-14 08:00,2010-11-15 16:00,,PT_Normal,,,,,IlV36EIuM06tmqSdJsdZHQ,V7zvC6ZQHU6T5K7kDVHXQw,,,N,0,0,,,2010-06-27 10:17,2010-06-27 10:17,admin,admin,,,
562,83475,764,10610,849,1,0,N,N,N,CP_Drtn,TT_Task,DT_FixedDUR2,RV_OK,TK_NotStart,A15500,electrical conduits for roof floor walls,,152,0,16,0,0,0,16,0,0,0,,,,2010-11-23 08:00,2010-11-24 16:00,,2010-11-01 08:00,2010-11-02 16:00,2010-11-01 08:00,2010-11-02 16:00,2010-11-01 08:00,2010-11-02 16:00,,2010-11-23 08:00,2010-11-24 16:00,,PT_Normal,,,,,lwxhTycfL0Kh69/3LtnMiA,vm2Ep/eUqEe0g75Wk4zCiA,,,N,0,0,,,2010-06-27 10:17,2010-06-27 10:17,admin,admin,,,
563,83476,764,10614,841,1,0,N,N,N,CP_Drtn,TT_Task,DT_FixedDUR2,RV_OK,TK_NotStart,A15510,excavation,,120,0,16,0,0,0,16,0,0,0,,,,2010-07-29 08:00,2010-07-31 16:00,,2010-07-12 08:00,2010-07-13 16:00,2010-07-12 08:00,2010-07-13 16:00,2010-07-12 08:00,2010-07-13 16:00,,2010-07-29 08:00,2010-07-31 16:00,,PT_Normal,,,,,QqHf92gOc0uPy9ar/DzRLQ,AClEWpaIhEmsuYVS1NTBPw,,,N,0,0,,,2010-06-27 10:17,2010-06-27 10:17,admin,admin,,,
564,83477,764,10614,841,1,0,N,N,N,CP_Drtn,TT_Task,DT_FixedDUR2,RV_OK,TK_NotStart,A15520,soil replacement,,120,0,96,0,0,0,96,0,0,0,,,,2010-08-01 08:00,2010-08-14 16:00,,2010-07-14 08:00,2010-07-27 16:00,2010-07-14 08:00,2010-07-27 16:00,2010-07-14 08:00,2010-07-27 16:00,,2010-08-01 08:00,2010-08-14 16:00,,PT_Normal,,,,,7lvkSJmtukaRg8/y6ucUuQ,WRFWiqXkMUWIhtit++5Jsg,,,N,0,0,,,2010-06-27 10:17,2010-06-27 10:17,admin,admin,,,
565,83478,764,10615,841,1,0,N,N,N,CP_Drtn,TT_Task,DT_FixedDUR2,RV_OK,TK_NotStart,A15530,Plain Concrete Foundation,,120,0,16,0,0,0,16,0,0,0,,,,2010-08-15 08:00,2010-08-16 16:00,,2010-07-28 08:00,2010-07-29 16:00,2010-07-28 08:00,2010-07-29 16:00,2010-07-28 08:00,2010-07-29 16:00,,2010-08-15 08:00,2010-08-16 16:00,,PT_Normal,,,,,r8NNU3EUPUKf0yUQAwPPDg,dpY+zaALyUywuPyZpM3Jdg,,,N,0,0,,,2010-06-27 10:17,2010-06-27 10:17,admin,admin,,,
566,83479,764,10615,841,1,0,N,N,N,CP_Drtn,TT_Task,DT_FixedDUR2,RV_OK,TK_NotStart,A15540,Reinforced Concrete Foundation,,120,0,56,0,0,0,56,0,0,0,,,,2010-08-22 08:00,2010-08-29 16:00,,2010-08-04 08:00,2010-08-11 16:00,2010-08-04 08:00,2010-08-11 16:00,2010-08-04 08:00,2010-08-11 16:00,,2010-08-22 08:00,2010-08-29 16:00,,PT_Normal,,,,,5MWjMg/1SE+RNW3OgpnBZA,ae+Cu5E3s0alg0NJCjCxUA,,,N,0,0,,,2010-06-27 10:17,2010-06-27 10:17,admin,admin,,,
567,83480,764,10615,841,1,0,N,N,N,CP_Drtn,TT_Task,DT_FixedDUR2,RV_OK,TK_NotStart,A15550,under ground  brick works,,120,0,16,0,0,0,16,0,0,0,,,,2010-09-06 08:00,2010-09-07 16:00,,2010-08-19 08:00,2010-08-21 16:00,2010-08-19 08:00,2010-08-21 16:00,2010-08-19 08:00,2010-08-21 16:00,,2010-09-06 08:00,2010-09-07 16:00,,PT_Normal,,,,,7UrKs6FRj0ax2XLLUlQHTA,4MGDo1ggCUuSZGV+7gTdFQ,,,N,0,0,,,2010-06-27 10:17,2010-06-27 10:17,admin,admin,,,
568,83481,764,10615,841,1,0,N,N,N,CP_Drtn,TT_Task,DT_FixedDUR2,RV_OK,TK_NotStart,A15560,under ground insulation for RC & Brick work,,120,0,16,0,0,0,16,0,0,0,,,,2010-09-11 08:00,2010-09-12 16:00,,2010-08-22 08:00,2010-08-23 16:00,2010-08-22 08:00,2010-08-23 16:00,2010-08-22 08:00,2010-08-23 16:00,,2010-09-11 08:00,2010-09-12 16:00,,PT_Normal,,,,,pwbz0gXbr0ietHWR/Lmkig,Wm0k+JLcB0qGvaxcmX+WcA,,,N,0,0,,,2010-06-27 10:17,2010-06-27 10:17,admin,admin,,,
569,83482,764,10615,841,1,0,N,N,N,CP_Drtn,TT_Task,DT_FixedDUR2,RV_OK,TK_NotStart,A15570,backfilling for under ground,,120,0,32,0,0,0,32,0,0,0,,,,2010-09-13 08:00,2010-09-16 16:00,,2010-08-24 08:00,2010-08-28 16:00,2010-08-24 08:00,2010-08-28 16:00,2010-08-24 08:00,2010-08-28 16:00,,2010-09-13 08:00,2010-09-16 16:00,,PT_Normal,,,,,tpRrug8AvUq7ql7FwP+5JA,Azii2ZjA8EKjwhUm1koPqw,,,N,0,0,,,2010-06-27 10:17,2010-06-27 10:17,admin,admin,,,
570,83483,764,10615,841,1,0,N,N,N,CP_Drtn,TT_Task,DT_FixedDUR2,RV_OK,TK_NotStart,A15580,P.C slab on grade 10CM,,192,0,8,0,0,0,8,0,0,0,,,,2010-10-27 08:00,2010-10-27 16:00,,2010-09-29 08:00,2010-09-29 16:00,2010-09-29 08:00,2010-09-29 16:00,2010-09-29 08:00,2010-09-29 16:00,,2010-10-27 08:00,2010-10-27 16:00,,PT_Normal,,,,,kCQI0WwsWkG2zUbRmoWLyA,ivOwBjDSlkunB5PIX07BRQ,,,N,0,0,,,2010-06-27 10:17,2010-06-27 10:17,admin,admin,,,
571,83484,764,10615,841,1,0,N,N,N,CP_Drtn,TT_Task,DT_FixedDUR2,RV_OK,TK_NotStart,A15590,moisture insulation with membrane sheets,,192,0,16,0,0,0,16,0,0,0,,,,2010-10-28 08:00,2010-10-30 16:00,,2010-09-30 08:00,2010-10-02 16:00,2010-09-30 08:00,2010-10-02 16:00,2010-09-30 08:00,2010-10-02 16:00,,2010-10-28 08:00,2010-10-30 16:00,,PT_Normal,,,,,cO8XQqyhL0eLh63PsKx92g,wE2qao6JdkWHqOyCAqT3+g,,,N,0,0,,,2010-06-27 10:17,2010-06-27 10:17,admin,admin,,,
572,83485,764,10615,841,1,0,N,N,N,CP_Drtn,TT_Task,DT_FixedDUR2,RV_OK,TK_NotStart,A15600,R.C slab on grade,,192,0,16,0,0,0,16,0,0,0,,,,2010-10-31 08:00,2010-11-01 16:00,,2010-10-03 08:00,2010-10-04 16:00,2010-10-03 08:00,2010-10-04 16:00,2010-10-03 08:00,2010-10-04 16:00,,2010-10-31 08:00,2010-11-01 16:00,,PT_Normal,,,,,q2xfkQHHv0KKNH5JyUuzYw,yqIzlVA4DkOJxEZif56kfA,,,N,0,0,,,2010-06-27 10:17,2010-06-27 10:17,admin,admin,,,
573,83486,764,10616,841,1,0,N,N,N,CP_Drtn,TT_Task,DT_FixedDUR2,RV_OK,TK_NotStart,A15610,columns for ground floor,,120,0,48,0,0,0,48,0,0,0,,,,2010-08-30 08:00,2010-09-05 16:00,,2010-08-12 08:00,2010-08-18 16:00,2010-08-12 08:00,2010-08-18 16:00,2010-08-12 08:00,2010-08-18 16:00,,2010-08-30 08:00,2010-09-05 16:00,,PT_Normal,,,,,dpLsHp18zUmQCL6jKti91Q,KoGZ5EdTK0KmyeqaiLD3lA,,,N,0,0,,,2010-06-27 10:17,2010-06-27 10:17,admin,admin,,,
574,83487,764,10616,841,1,0,N,N,N,CP_Drtn,TT_Task,DT_FixedDUR2,RV_OK,TK_NotStart,A15620,slab for ground floor,,120,0,72,0,0,0,72,0,0,0,,,,2010-09-18 08:00,2010-09-27 16:00,,2010-08-29 08:00,2010-09-07 16:00,2010-08-29 08:00,2010-09-07 16:00,2010-08-29 08:00,2010-09-07 16:00,,2010-09-18 08:00,2010-09-27 16:00,,PT_Normal,,,,,0qJtQ/pRSEyQCYxSoy6toA,Rkmy/yjsOEmlh8PTCxZVVg,,,N,0,0,,,2010-06-27 10:17,2010-06-27 10:17,admin,admin,,,
575,83488,764,10616,841,1,0,N,N,N,CP_Drtn,TT_Task,DT_FixedDUR2,RV_OK,TK_NotStart,A15630,columns for 1st floor,,136,0,48,0,0,0,48,0,0,0,,,,2010-10-02 08:00,2010-10-07 16:00,,2010-09-12 08:00,2010-09-18 16:00,2010-09-12 08:00,2010-09-18 16:00,2010-09-12 08:00,2010-09-18 16:00,,2010-10-02 08:00,2010-10-07 16:00,,PT_Normal,,,,,Us2/Nol2OUelk4GtE6OsLw,teiw2GMYXU68sel5ZATHsw,,,N,0,0,,,2010-06-27 10:17,2010-06-27 10:17,admin,admin,,,
576,83489,764,10616,841,1,0,N,N,N,CP_Drtn,TT_Task,DT_FixedDUR2,RV_OK,TK_NotStart,A15640,slab for 1st floor,,136,0,72,0,0,0,72,0,0,0,,,,2010-10-09 08:00,2010-10-18 16:00,,2010-09-19 08:00,2010-09-28 16:00,2010-09-19 08:00,2010-09-28 16:00,2010-09-19 08:00,2010-09-28 16:00,,2010-10-09 08:00,2010-10-18 16:00,,PT_Normal,,,,,5tHuE7M/WU+JzA+fy5P8ag,RAk+gFuQYkS17VMgEMd55g,,,N,0,0,,,2010-06-27 10:17,2010-06-27 10:17,admin,admin,,,
577,83490,764,10616,841,1,0,N,N,N,CP_Drtn,TT_Task,DT_FixedDUR2,RV_OK,TK_NotStart,A15650,columns for roof floor,,136,0,32,0,0,0,32,0,0,0,,,,2010-10-23 08:00,2010-10-26 16:00,,2010-10-03 08:00,2010-10-06 16:00,2010-10-03 08:00,2010-10-06 16:00,2010-10-03 08:00,2010-10-06 16:00,,2010-10-23 08:00,2010-10-26 16:00,,PT_Normal,,,,,fwqMJpk8f0yuRpQAfDIBEQ,pAWeS1rNWUKsmXXmcI7g8g,,,N,0,0,,,2010-06-27 10:17,2010-06-27 10:17,admin,admin,,,
578,83491,764,10616,841,1,0,N,N,N,CP_Drtn,TT_Task,DT_FixedDUR2,RV_OK,TK_NotStart,A15660,slab for roof floor,,136,0,48,0,0,0,48,0,0,0,,,,2010-10-27 08:00,2010-11-02 16:00,,2010-10-07 08:00,2010-10-13 16:00,2010-10-07 08:00,2010-10-13 16:00,2010-10-07 08:00,2010-10-13 16:00,,2010-10-27 08:00,2010-11-02 16:00,,PT_Normal,,,,,gwhE4wlIaUWa2nsI27hKEg,BjlJO31jfUG4oXL4hNjKAw,,,N,0,0,,,2010-06-27 10:17,2010-06-27 10:17,admin,admin,,,
579,83492,764,10616,841,1,0,N,N,N,CP_Drtn,TT_Task,DT_FixedDUR2,RV_OK,TK_NotStart,A15670,Brick works for ground floor,,192,0,40,0,0,0,40,0,0,0,,,,2010-10-21 08:00,2010-10-26 16:00,,2010-09-23 08:00,2010-09-28 16:00,2010-09-23 08:00,2010-09-28 16:00,2010-09-23 08:00,2010-09-28 16:00,,2010-10-21 08:00,2010-10-26 16:00,,PT_Normal,,,,,I4j2VikTF0ecFH6vC4MHVQ,hSlEJls6NU+TdMksO63DJA,,,N,0,0,,,2010-06-27 10:17,2010-06-27 10:17,admin,admin,,,
580,83493,764,10617,841,1,0,N,N,N,CP_Drtn,TT_Task,DT_FixedDrtn,RV_OK,TK_NotStart,A15680,electrical conduits for ground floor's slab,,128,8,16,0,0,0,16,0,0,0,,,,2010-09-23 08:00,2010-09-25 16:00,,2010-09-02 08:00,2010-09-04 16:00,2010-09-02 08:00,2010-09-04 16:00,2010-09-02 08:00,2010-09-04 16:00,,2010-09-23 08:00,2010-09-25 16:00,,PT_Normal,,,,,af6XxqBlkU62lLcbzQbX6w,GHw6RGDcy0ChAd0cPj2miQ,,,N,0,0,,,2010-06-27 10:17,2010-06-27 10:17,admin,admin,,,
581,83494,764,10617,841,1,0,N,N,N,CP_Drtn,TT_Task,DT_FixedDrtn,RV_OK,TK_NotStart,A15690,electrical conduits for 1st floor slab,,144,8,16,0,0,0,16,0,0,0,,,,2010-10-14 08:00,2010-10-16 16:00,,2010-09-23 08:00,2010-09-25 16:00,2010-09-23 08:00,2010-09-25 16:00,2010-09-23 08:00,2010-09-25 16:00,,2010-10-14 08:00,2010-10-16 16:00,,PT_Normal,,,,,gGaVGEakVUSwLsRqKo0rvA,Qd/Ol3XBn0WEjvZi11gYlQ,,,N,0,0,,,2010-06-27 10:17,2010-06-27 10:17,admin,admin,,,
582,83495,764,10617,841,1,0,N,N,N,CP_Drtn,TT_Task,DT_FixedDrtn,RV_OK,TK_NotStart,A15700,electrical conduits for roof slab,,144,8,8,0,0,0,8,0,0,0,,,,2010-11-01 08:00,2010-11-01 16:00,,2010-10-11 08:00,2010-10-11 16:00,2010-10-11 08:00,2010-10-11 16:00,2010-10-11 08:00,2010-10-11 16:00,,2010-11-01 08:00,2010-11-01 16:00,,PT_Normal,,,,,z0SCkXPtTkiyRHnBDnXdIA,oCqOoDYe7EmRkbi4ju5URA,,,N,0,0,,,2010-06-27 10:17,2010-06-27 10:17,admin,admin,,,
583,83496,764,10618,841,1,0,N,N,N,CP_Drtn,TT_Task,DT_FixedDUR2,RV_OK,TK_NotStart,A15710,Internal plastering for ground floor,,192,16,64,0,0,0,64,0,0,0,,,,2010-11-06 08:00,2010-11-14 16:00,,2010-10-09 08:00,2010-10-17 16:00,2010-10-09 08:00,2010-10-17 16:00,2010-10-09 08:00,2010-10-17 16:00,,2010-11-06 08:00,2010-11-14 16:00,,PT_Normal,,,,,MO9G8h3YfEiZalJ9W5iVXQ,0cH9BwUYD0e8EUoq30Ffrg,,,N,0,0,,,2010-06-27 10:17,2010-06-27 10:17,admin,admin,,,
584,83497,764,10618,841,1,0,N,N,N,CP_Drtn,TT_Task,DT_FixedDUR2,RV_OK,TK_NotStart,A15720,External plastering,,104,0,80,0,0,0,80,0,0,0,,,,2010-11-20 08:00,2010-11-30 16:00,,2010-10-31 08:00,2010-11-10 16:00,2010-10-31 08:00,2010-11-10 16:00,2010-10-31 08:00,2010-11-10 16:00,,2010-11-20 08:00,2010-11-30 16:00,,PT_Normal,,,,,mnsjPenbvkqaKzKJPQel4Q,5I6EzmGJ0EOVbQ6SEhtnzA,,,N,0,0,,,2010-06-27 10:17,2010-06-27 10:17,admin,admin,,,
585,83498,764,10617,841,1,0,N,N,N,CP_Drtn,TT_Task,DT_FixedDrtn,RV_OK,TK_NotStart,A15730,plumbing connections under slab on grade,,376,184,16,0,0,0,16,0,0,0,,,,2010-10-25 08:00,2010-10-26 16:00,,2010-08-29 08:00,2010-08-30 16:00,2010-08-29 08:00,2010-08-30 16:00,2010-08-29 08:00,2010-08-30 16:00,,2010-10-25 08:00,2010-10-26 16:00,,PT_Normal,,,,,HxYh3GHtFEa4XX0TsbumMQ,s5Y56OM6D02I6eJ7eg5Z5Q,,,N,0,0,,,2010-06-27 10:17,2010-06-27 10:17,admin,admin,,,
586,83499,764,10654,841,0,0,N,N,N,CP_Drtn,TT_Mile,DT_FixedDrtn,RV_OK,TK_NotStart,A15740,Start Villa construction,,120,0,0,0,0,0,0,0,0,0,,,,2010-07-08 08:00,2010-07-08 08:00,,2010-06-21 08:00,2010-06-21 08:00,2010-06-21 08:00,2010-06-21 08:00,2010-06-21 08:00,2010-06-21 08:00,,2010-07-08 08:00,2010-07-08 08:00,,PT_Normal,,,,,VmgoWCxjlEuRNqCCQB0LWw,byG9qUsnlku4Cjs6H6TZWw,,,N,0,0,,,2010-06-27 10:17,2010-06-27 10:17,admin,admin,,,
587,83500,764,10654,841,0,0,N,N,N,CP_Drtn,TT_FinMile,DT_FixedDrtn,RV_OK,TK_NotStart,A15750,finish Villa construction,,104,104,0,0,0,0,0,0,0,0,,,,2010-11-30 16:00,2010-11-30 16:00,,2010-11-10 16:00,2010-11-10 16:00,2010-11-10 16:00,2010-11-10 16:00,2010-11-10 16:00,2010-11-10 16:00,,2010-11-30 16:00,2010-11-30 16:00,,PT_Normal,,,,,qQ6vjZORWUetiXAJphsL3Q,Y9BXSlCVFUm9QzPNe3h4pQ,,,N,0,0,,,2010-06-27 10:17,2010-06-27 10:17,admin,admin,,,
588,83501,764,10654,841,0,0,N,N,N,CP_Drtn,TT_Mile,DT_FixedDrtn,RV_OK,TK_NotStart,A15760,IFC drawings,,120,0,0,0,0,0,0,0,0,0,,,,2010-07-08 08:00,2010-07-08 08:00,,2010-06-21 08:00,2010-06-21 08:00,2010-06-21 08:00,2010-06-21 08:00,2010-06-21 08:00,2010-06-21 08:00,,2010-07-08 08:00,2010-07-08 08:00,,PT_Normal,,,,,KFAxKeNUbUicUO0eOAyTHw,fJJQLs21U0W7rr9lMMr5+A,,,N,0,0,,,2010-06-27 10:17,2010-06-27 10:17,admin,admin,,,
589,83502,764,10616,841,1,0,N,N,N,CP_Drtn,TT_Task,DT_FixedDUR2,RV_OK,TK_NotStart,A15770,pouring for ground floor's slab,,120,0,8,0,0,0,8,0,0,0,,,,2010-09-28 08:00,2010-09-28 16:00,,2010-09-11 08:00,2010-09-11 16:00,2010-09-11 08:00,2010-09-11 16:00,2010-09-11 08:00,2010-09-11 16:00,,2010-09-28 08:00,2010-09-28 16:00,,PT_Normal,,,,,+ySUPIXMF0CnI6G+yfpVHw,N+upNZIgVEytoCBEutk+Zw,,,N,0,0,,,2010-06-27 10:17,2010-06-27 10:17,admin,admin,,,
590,83503,764,10616,841,1,0,N,N,N,CP_Drtn,TT_Task,DT_FixedDUR2,RV_OK,TK_NotStart,A15780,pouring for 1st floor's slab,,136,0,8,0,0,0,8,0,0,0,,,,2010-10-19 08:00,2010-10-19 16:00,,2010-09-29 08:00,2010-09-29 16:00,2010-09-29 08:00,2010-09-29 16:00,2010-09-29 08:00,2010-09-29 16:00,,2010-10-19 08:00,2010-10-19 16:00,,PT_Normal,,,,,EAlmAuvGiEGb/9zwlJh+Gw,huDUDO07/Eil37KjpH/Wvw,,,N,0,0,,,2010-06-27 10:17,2010-06-27 10:17,admin,admin,,,
591,83504,764,10616,841,1,0,N,N,N,CP_Drtn,TT_Task,DT_FixedDUR2,RV_OK,TK_NotStart,A15790,pouring for roof floor's slab,,136,0,8,0,0,0,8,0,0,0,,,,2010-11-03 08:00,2010-11-03 16:00,,2010-10-14 08:00,2010-10-14 16:00,2010-10-14 08:00,2010-10-14 16:00,2010-10-14 08:00,2010-10-14 16:00,,2010-11-03 08:00,2010-11-03 16:00,,PT_Normal,,,,,6VncCH19uUqAoPE4wUcKTQ,RlaqUtbus0eQTlEAUgwkeA,,,N,0,0,,,2010-06-27 10:17,2010-06-27 10:17,admin,admin,,,
592,83505,764,10616,841,1,0,N,N,N,CP_Drtn,TT_Task,DT_FixedDrtn,RV_OK,TK_NotStart,A15800,Fence work,,120,16,400,0,0,0,400,0,0,0,,,,2010-09-29 08:00,2010-11-30 16:00,,2010-09-12 08:00,2010-11-08 16:00,2010-09-12 08:00,2010-11-08 16:00,2010-09-12 08:00,2010-11-08 16:00,,2010-09-29 08:00,2010-11-30 16:00,,PT_Normal,,,,,sA/T3nyxD0iAa06mhTxZcA,/+oL5YjnFESpDvJ/L75FnA,,,N,0,0,,,2010-06-27 10:17,2010-06-27 10:17,admin,admin,,,
593,83506,764,10654,841,1,0,N,N,N,CP_Drtn,TT_Task,DT_FixedDUR2,RV_OK,TK_NotStart,A15810,Fence Drawings IFC,,584,464,8,0,0,0,8,0,0,0,,,,2010-09-16 08:00,2010-09-16 16:00,,2010-06-21 08:00,2010-06-21 16:00,2010-06-21 08:00,2010-06-21 16:00,2010-06-21 08:00,2010-06-21 16:00,,2010-09-16 08:00,2010-09-16 16:00,,PT_Normal,,,,,gViOoMawcU63eNH79bh9kQ,7XX9inT6wk2dvTtLJgT6Og,,,N,0,0,,,2010-06-27 10:17,2010-06-27 10:17,admin,admin,,,
594,83507,764,10615,849,1,0,N,N,N,CP_Drtn,TT_Task,DT_FixedDUR2,RV_OK,TK_NotStart,A15820,backfilling between P.C Foundation,,120,0,16,0,0,0,16,0,0,0,,,,2010-08-18 08:00,2010-08-19 16:00,,2010-08-01 08:00,2010-08-02 16:00,2010-08-01 08:00,2010-08-02 16:00,2010-08-01 08:00,2010-08-02 16:00,,2010-08-18 08:00,2010-08-19 16:00,,PT_Normal,,,,,ce83E9ZpZEiQPbMZKuKXMA,YkAxgpUlT0mB9uyVOsKsAA,,,N,0,0,,,2010-06-27 10:17,2010-06-27 10:17,admin,admin,,,
595,83508,764,10615,849,1,0,N,N,N,CP_Drtn,TT_Task,DT_FixedDUR2,RV_OK,TK_NotStart,A15830,P.C Under Smells,,120,0,8,0,0,0,8,0,0,0,,,,2010-08-21 08:00,2010-08-21 16:00,,2010-08-03 08:00,2010-08-03 16:00,2010-08-03 08:00,2010-08-03 16:00,2010-08-03 08:00,2010-08-03 16:00,,2010-08-21 08:00,2010-08-21 16:00,,PT_Normal,,,,,WNt72xOCckykTf3Itu3nmA,ODlIotu0gkC0PdAN138XXg,,,N,0,0,,,2010-06-27 10:17,2010-06-27 10:17,admin,admin,,,
596,83509,764,10616,849,1,0,N,N,N,CP_Drtn,TT_Task,DT_FixedDUR2,RV_OK,TK_NotStart,A15840,Brick works for 1st floor,,184,0,40,0,0,0,40,0,0,0,,,,2010-11-08 08:00,2010-11-13 16:00,,2010-10-12 08:00,2010-10-17 16:00,2010-10-12 08:00,2010-10-17 16:00,2010-10-12 08:00,2010-10-17 16:00,,2010-11-08 08:00,2010-11-13 16:00,,PT_Normal,,,,,Jdqf4/cvU0e5zJuOpjTLMw,qh/438fwMkGy6IOHe+yckg,,,N,0,0,,,2010-06-27 10:17,2010-06-27 10:17,admin,admin,,,
597,83510,764,10616,849,1,0,N,N,N,CP_Drtn,TT_Task,DT_FixedDUR2,RV_OK,TK_NotStart,A15850,Brick works for roof floor,,136,0,40,0,0,0,40,0,0,0,,,,2010-11-14 08:00,2010-11-18 16:00,,2010-10-25 08:00,2010-10-30 16:00,2010-10-25 08:00,2010-10-30 16:00,2010-10-25 08:00,2010-10-30 16:00,,2010-11-14 08:00,2010-11-18 16:00,,PT_Normal,,,,,NKkcKQlA/0+JfLv/roW6Sg,qVYPM81S4EaE4mYToW94/A,,,N,0,0,,,2010-06-27 10:17,2010-06-27 10:17,admin,admin,,,
598,83511,764,10618,849,1,0,N,N,N,CP_Drtn,TT_Task,DT_FixedDUR2,RV_OK,TK_NotStart,A15860,Internal plastering for 1st floor,,184,24,64,0,0,0,64,0,0,0,,,,2010-11-16 08:00,2010-11-24 16:00,,2010-10-20 08:00,2010-10-28 16:00,2010-10-20 08:00,2010-10-28 16:00,2010-10-20 08:00,2010-10-28 16:00,,2010-11-16 08:00,2010-11-24 16:00,,PT_Normal,,,,,+ucUIqIDPUKEbgRZEQluQw,o69oYtf7wk6Mbsc2Ui26KA,,,N,0,0,,,2010-06-27 10:17,2010-06-27 10:17,admin,admin,,,
599,83512,764,10618,849,1,0,N,N,N,CP_Drtn,TT_Task,DT_FixedDUR2,RV_OK,TK_NotStart,A15870,Internal plastering for roof floor,,160,24,40,0,0,0,40,0,0,0,,,,2010-11-25 08:00,2010-11-30 16:00,,2010-11-02 08:00,2010-11-07 16:00,2010-11-02 08:00,2010-11-07 16:00,2010-11-02 08:00,2010-11-07 16:00,,2010-11-25 08:00,2010-11-30 16:00,,PT_Normal,,,,,1aYcnlO15kqgHi1TkAf4ow,eD1vFzfRLUKq2yc+RcgXsA,,,N,0,0,,,2010-06-27 10:17,2010-06-27 10:17,admin,admin,,,
600,83513,764,10617,849,1,0,N,N,N,CP_Drtn,TT_Task,DT_FixedDUR2,RV_OK,TK_NotStart,A15880,electrical conduits for ground floor walls,,192,0,16,0,0,0,16,0,0,0,,,,2010-11-03 08:00,2010-11-04 16:00,,2010-10-06 08:00,2010-10-07 16:00,2010-10-06 08:00,2010-10-07 16:00,2010-10-06 08:00,2010-10-07 16:00,,2010-11-03 08:00,2010-11-04 16:00,,PT_Normal,,,,,nKmVetP0AkqezsyHbyCRtA,3WThaKhJZkel+MtnIZQspw,,,N,0,0,,,2010-06-27 10:17,2010-06-27 10:17,admin,admin,,,
601,83514,764,10617,849,1,0,N,N,N,CP_Drtn,TT_Task,DT_FixedDUR2,RV_OK,TK_NotStart,A15890,electrical conduits for 1st floor walls,,184,0,16,0,0,0,16,0,0,0,,,,2010-11-14 08:00,2010-11-15 16:00,,2010-10-18 08:00,2010-10-19 16:00,2010-10-18 08:00,2010-10-19 16:00,2010-10-18 08:00,2010-10-19 16:00,,2010-11-14 08:00,2010-11-15 16:00,,PT_Normal,,,,,rT6vjlw2v0Owf8nuTOHA4w,ZI+QY1u+W0+xw7pRHfnGvg,,,N,0,0,,,2010-06-27 10:17,2010-06-27 10:17,admin,admin,,,
602,83515,764,10617,849,1,0,N,N,N,CP_Drtn,TT_Task,DT_FixedDUR2,RV_OK,TK_NotStart,A15900,electrical conduits for roof floor walls,,160,0,16,0,0,0,16,0,0,0,,,,2010-11-23 08:00,2010-11-24 16:00,,2010-10-31 08:00,2010-11-01 16:00,2010-10-31 08:00,2010-11-01 16:00,2010-10-31 08:00,2010-11-01 16:00,,2010-11-23 08:00,2010-11-24 16:00,,PT_Normal,,,,,RxoxYTX99E+mbNlBgavxyg,aHlHfxD8rUSX/rVjLwmAig,,,N,0,0,,,2010-06-27 10:17,2010-06-27 10:17,admin,admin,,,
603,83516,764,10621,841,1,0,N,N,N,CP_Drtn,TT_Task,DT_FixedDUR2,RV_OK,TK_NotStart,A15910,excavation,,112,0,16,0,0,0,16,0,0,0,,,,2010-07-29 08:00,2010-07-31 16:00,,2010-07-13 08:00,2010-07-14 16:00,2010-07-13 08:00,2010-07-14 16:00,2010-07-13 08:00,2010-07-14 16:00,,2010-07-29 08:00,2010-07-31 16:00,,PT_Normal,,,,,CtrDHAhk2UOft3pIYHEdpA,30JDZL4kLU2Pgny/Z425SA,,,N,0,0,,,2010-06-27 10:17,2010-06-27 10:17,admin,admin,,,
604,83517,764,10621,841,1,0,N,N,N,CP_Drtn,TT_Task,DT_FixedDUR2,RV_OK,TK_NotStart,A15920,soil replacement,,112,0,96,0,0,0,96,0,0,0,,,,2010-08-01 08:00,2010-08-14 16:00,,2010-07-15 08:00,2010-07-28 16:00,2010-07-15 08:00,2010-07-28 16:00,2010-07-15 08:00,2010-07-28 16:00,,2010-08-01 08:00,2010-08-14 16:00,,PT_Normal,,,,,H1h4wugli0yw6hisTw51GQ,mY7QOxDLS0Sym/k5hnRgrg,,,N,0,0,,,2010-06-27 10:17,2010-06-27 10:17,admin,admin,,,
605,83518,764,10622,841,1,0,N,N,N,CP_Drtn,TT_Task,DT_FixedDUR2,RV_OK,TK_NotStart,A15930,Plain Concrete Foundation,,112,0,16,0,0,0,16,0,0,0,,,,2010-08-15 08:00,2010-08-16 16:00,,2010-07-29 08:00,2010-07-31 16:00,2010-07-29 08:00,2010-07-31 16:00,2010-07-29 08:00,2010-07-31 16:00,,2010-08-15 08:00,2010-08-16 16:00,,PT_Normal,,,,,DYf21hv3w0C0eFjAv6kDuw,sv4J9zMZDU+G4oRcVaH9Lw,,,N,0,0,,,2010-06-27 10:17,2010-06-27 10:17,admin,admin,,,
606,83519,764,10622,841,1,0,N,N,N,CP_Drtn,TT_Task,DT_FixedDUR2,RV_OK,TK_NotStart,A15940,Reinforced Concrete Foundation,,112,0,56,0,0,0,56,0,0,0,,,,2010-08-22 08:00,2010-08-29 16:00,,2010-08-05 08:00,2010-08-12 16:00,2010-08-05 08:00,2010-08-12 16:00,2010-08-05 08:00,2010-08-12 16:00,,2010-08-22 08:00,2010-08-29 16:00,,PT_Normal,,,,,caHCg5/ge0+b0vL1orkP8A,CLXWXT0dyEKhQtfbXKXFaw,,,N,0,0,,,2010-06-27 10:17,2010-06-27 10:17,admin,admin,,,
607,83520,764,10622,841,1,0,N,N,N,CP_Drtn,TT_Task,DT_FixedDUR2,RV_OK,TK_NotStart,A15950,under ground  brick works,,112,0,16,0,0,0,16,0,0,0,,,,2010-09-06 08:00,2010-09-07 16:00,,2010-08-21 08:00,2010-08-22 16:00,2010-08-21 08:00,2010-08-22 16:00,2010-08-21 08:00,2010-08-22 16:00,,2010-09-06 08:00,2010-09-07 16:00,,PT_Normal,,,,,Pw0jXFiK0UeMd/q9Lcx1Zg,w0hEUJ5kn0O/TTtFx6PWIQ,,,N,0,0,,,2010-06-27 10:17,2010-06-27 10:17,admin,admin,,,
608,83521,764,10622,841,1,0,N,N,N,CP_Drtn,TT_Task,DT_FixedDUR2,RV_OK,TK_NotStart,A15960,under ground insulation for RC & Brick work,,112,0,16,0,0,0,16,0,0,0,,,,2010-09-11 08:00,2010-09-12 16:00,,2010-08-23 08:00,2010-08-24 16:00,2010-08-23 08:00,2010-08-24 16:00,2010-08-23 08:00,2010-08-24 16:00,,2010-09-11 08:00,2010-09-12 16:00,,PT_Normal,,,,,BSBwRejMzEmGssIvCiedMQ,61immPaakka2hzMIuB72IA,,,N,0,0,,,2010-06-27 10:17,2010-06-27 10:17,admin,admin,,,
609,83522,764,10622,841,1,0,N,N,N,CP_Drtn,TT_Task,DT_FixedDUR2,RV_OK,TK_NotStart,A15970,backfilling for under ground,,112,0,32,0,0,0,32,0,0,0,,,,2010-09-13 08:00,2010-09-16 16:00,,2010-08-25 08:00,2010-08-29 16:00,2010-08-25 08:00,2010-08-29 16:00,2010-08-25 08:00,2010-08-29 16:00,,2010-09-13 08:00,2010-09-16 16:00,,PT_Normal,,,,,jNow65NH+EOWCwL51yMAXw,Lkf12CpFWUOhrgUWXlOoNA,,,N,0,0,,,2010-06-27 10:17,2010-06-27 10:17,admin,admin,,,
610,83523,764,10622,841,1,0,N,N,N,CP_Drtn,TT_Task,DT_FixedDUR2,RV_OK,TK_NotStart,A15980,P.C slab on grade 10CM,,184,0,8,0,0,0,8,0,0,0,,,,2010-10-27 08:00,2010-10-27 16:00,,2010-09-30 08:00,2010-09-30 16:00,2010-09-30 08:00,2010-09-30 16:00,2010-09-30 08:00,2010-09-30 16:00,,2010-10-27 08:00,2010-10-27 16:00,,PT_Normal,,,,,5SqKgMHrgUq/HIdJ/A3olw,Ye+e+80GWEqqLT6pHuGirw,,,N,0,0,,,2010-06-27 10:17,2010-06-27 10:17,admin,admin,,,
611,83524,764,10622,841,1,0,N,N,N,CP_Drtn,TT_Task,DT_FixedDUR2,RV_OK,TK_NotStart,A15990,moisture insulation with membrane sheets,,184,0,16,0,0,0,16,0,0,0,,,,2010-10-28 08:00,2010-10-30 16:00,,2010-10-02 08:00,2010-10-03 16:00,2010-10-02 08:00,2010-10-03 16:00,2010-10-02 08:00,2010-10-03 16:00,,2010-10-28 08:00,2010-10-30 16:00,,PT_Normal,,,,,lzOMgjqHdkOmsNFRwPMUIQ,YMMjvloI8UWKJfvKrr3VbQ,,,N,0,0,,,2010-06-27 10:17,2010-06-27 10:17,admin,admin,,,
612,83525,764,10622,841,1,0,N,N,N,CP_Drtn,TT_Task,DT_FixedDUR2,RV_OK,TK_NotStart,A16000,R.C slab on grade,,184,0,16,0,0,0,16,0,0,0,,,,2010-10-31 08:00,2010-11-01 16:00,,2010-10-04 08:00,2010-10-05 16:00,2010-10-04 08:00,2010-10-05 16:00,2010-10-04 08:00,2010-10-05 16:00,,2010-10-31 08:00,2010-11-01 16:00,,PT_Normal,,,,,6OgoXLnC6UejVbklCin25g,2bgJFYDV+kqeCcA6ionNZw,,,N,0,0,,,2010-06-27 10:17,2010-06-27 10:17,admin,admin,,,
613,83526,764,10623,841,1,0,N,N,N,CP_Drtn,TT_Task,DT_FixedDUR2,RV_OK,TK_NotStart,A16010,columns for ground floor,,112,0,48,0,0,0,48,0,0,0,,,,2010-08-30 08:00,2010-09-05 16:00,,2010-08-14 08:00,2010-08-19 16:00,2010-08-14 08:00,2010-08-19 16:00,2010-08-14 08:00,2010-08-19 16:00,,2010-08-30 08:00,2010-09-05 16:00,,PT_Normal,,,,,T27HMbD6XEONgsIMJUc60Q,IJyvdQEHO0qk/KJTOeTqaQ,,,N,0,0,,,2010-06-27 10:17,2010-06-27 10:17,admin,admin,,,
614,83527,764,10623,841,1,0,N,N,N,CP_Drtn,TT_Task,DT_FixedDUR2,RV_OK,TK_NotStart,A16020,slab for ground floor,,112,0,72,0,0,0,72,0,0,0,,,,2010-09-18 08:00,2010-09-27 16:00,,2010-08-30 08:00,2010-09-11 16:00,2010-08-30 08:00,2010-09-11 16:00,2010-08-30 08:00,2010-09-11 16:00,,2010-09-18 08:00,2010-09-27 16:00,,PT_Normal,,,,,+eE8asWcBkSIpMHFgoVCYQ,d31a+66cwUqoNirBtSqv0g,,,N,0,0,,,2010-06-27 10:17,2010-06-27 10:17,admin,admin,,,
615,83528,764,10623,841,1,0,N,N,N,CP_Drtn,TT_Task,DT_FixedDUR2,RV_OK,TK_NotStart,A16030,columns for 1st floor,,128,0,48,0,0,0,48,0,0,0,,,,2010-10-02 08:00,2010-10-07 16:00,,2010-09-13 08:00,2010-09-19 16:00,2010-09-13 08:00,2010-09-19 16:00,2010-09-13 08:00,2010-09-19 16:00,,2010-10-02 08:00,2010-10-07 16:00,,PT_Normal,,,,,DlEB8NFzBUuGsU5YcuwQrQ,/nIRy6gGqECjLHfP5Co3kQ,,,N,0,0,,,2010-06-27 10:17,2010-06-27 10:17,admin,admin,,,
616,83529,764,10623,841,1,0,N,N,N,CP_Drtn,TT_Task,DT_FixedDUR2,RV_OK,TK_NotStart,A16040,slab for 1st floor,,128,0,72,0,0,0,72,0,0,0,,,,2010-10-09 08:00,2010-10-18 16:00,,2010-09-20 08:00,2010-09-29 16:00,2010-09-20 08:00,2010-09-29 16:00,2010-09-20 08:00,2010-09-29 16:00,,2010-10-09 08:00,2010-10-18 16:00,,PT_Normal,,,,,2bxM9KMNqky34qpXANgpyw,xbAvmMv3uESFDgAWkFp80g,,,N,0,0,,,2010-06-27 10:17,2010-06-27 10:17,admin,admin,,,
617,83530,764,10623,841,1,0,N,N,N,CP_Drtn,TT_Task,DT_FixedDUR2,RV_OK,TK_NotStart,A16050,columns for roof floor,,128,0,32,0,0,0,32,0,0,0,,,,2010-10-23 08:00,2010-10-26 16:00,,2010-10-04 08:00,2010-10-07 16:00,2010-10-04 08:00,2010-10-07 16:00,2010-10-04 08:00,2010-10-07 16:00,,2010-10-23 08:00,2010-10-26 16:00,,PT_Normal,,,,,G96TSyVhEkS1+ddoH8ilJg,qeeqSl1XYEWcuT1cbmvxJg,,,N,0,0,,,2010-06-27 10:17,2010-06-27 10:17,admin,admin,,,
618,83531,764,10623,841,1,0,N,N,N,CP_Drtn,TT_Task,DT_FixedDUR2,RV_OK,TK_NotStart,A16060,slab for roof floor,,128,0,48,0,0,0,48,0,0,0,,,,2010-10-27 08:00,2010-11-02 16:00,,2010-10-09 08:00,2010-10-14 16:00,2010-10-09 08:00,2010-10-14 16:00,2010-10-09 08:00,2010-10-14 16:00,,2010-10-27 08:00,2010-11-02 16:00,,PT_Normal,,,,,KFqcq4CVs02vCdVpu/Rwqg,AhucCY3eiEWLdmjJdrNfGQ,,,N,0,0,,,2010-06-27 10:17,2010-06-27 10:17,admin,admin,,,
619,83532,764,10623,841,1,0,N,N,N,CP_Drtn,TT_Task,DT_FixedDUR2,RV_OK,TK_NotStart,A16070,Brick works for ground floor,,184,0,40,0,0,0,40,0,0,0,,,,2010-10-21 08:00,2010-10-26 16:00,,2010-09-25 08:00,2010-09-29 16:00,2010-09-25 08:00,2010-09-29 16:00,2010-09-25 08:00,2010-09-29 16:00,,2010-10-21 08:00,2010-10-26 16:00,,PT_Normal,,,,,FVqkjveWA025GHLqkF+2ww,x0tOL6ez3ky/Pfhx2LfmNA,,,N,0,0,,,2010-06-27 10:17,2010-06-27 10:17,admin,admin,,,
620,83533,764,10624,841,1,0,N,N,N,CP_Drtn,TT_Task,DT_FixedDrtn,RV_OK,TK_NotStart,A16080,electrical conduits for ground floor's slab,,120,8,16,0,0,0,16,0,0,0,,,,2010-09-23 08:00,2010-09-25 16:00,,2010-09-04 08:00,2010-09-05 16:00,2010-09-04 08:00,2010-09-05 16:00,2010-09-04 08:00,2010-09-05 16:00,,2010-09-23 08:00,2010-09-25 16:00,,PT_Normal,,,,,Cf0xnzaWT0y63NBPDi9qig,3cr4FNRTm0y+s7LZH54Uug,,,N,0,0,,,2010-06-27 10:17,2010-06-27 10:17,admin,admin,,,
621,83534,764,10624,841,1,0,N,N,N,CP_Drtn,TT_Task,DT_FixedDrtn,RV_OK,TK_NotStart,A16090,electrical conduits for 1st floor slab,,136,8,16,0,0,0,16,0,0,0,,,,2010-10-14 08:00,2010-10-16 16:00,,2010-09-25 08:00,2010-09-26 16:00,2010-09-25 08:00,2010-09-26 16:00,2010-09-25 08:00,2010-09-26 16:00,,2010-10-14 08:00,2010-10-16 16:00,,PT_Normal,,,,,DoA88qbb5Ee9UWGYhrdnCw,nsPvy4mX0UaBzbYLeVRQnQ,,,N,0,0,,,2010-06-27 10:17,2010-06-27 10:17,admin,admin,,,
622,83535,764,10624,841,1,0,N,N,N,CP_Drtn,TT_Task,DT_FixedDrtn,RV_OK,TK_NotStart,A16100,electrical conduits for roof slab,,136,8,8,0,0,0,8,0,0,0,,,,2010-11-01 08:00,2010-11-01 16:00,,2010-10-12 08:00,2010-10-12 16:00,2010-10-12 08:00,2010-10-12 16:00,2010-10-12 08:00,2010-10-12 16:00,,2010-11-01 08:00,2010-11-01 16:00,,PT_Normal,,,,,WTvp1CxJpUOzePfGbyEpNg,sr2vBobhXkSpHrJ9WsrKgw,,,N,0,0,,,2010-06-27 10:17,2010-06-27 10:17,admin,admin,,,
623,83536,764,10625,841,1,0,N,N,N,CP_Drtn,TT_Task,DT_FixedDUR2,RV_OK,TK_NotStart,A16110,Internal plastering for ground floor,,184,16,64,0,0,0,64,0,0,0,,,,2010-11-06 08:00,2010-11-14 16:00,,2010-10-10 08:00,2010-10-18 16:00,2010-10-10 08:00,2010-10-18 16:00,2010-10-10 08:00,2010-10-18 16:00,,2010-11-06 08:00,2010-11-14 16:00,,PT_Normal,,,,,l+8TNddWSECDoZ+OSRoizA,YW0J/ftJBkyYU8wdAjy5Qw,,,N,0,0,,,2010-06-27 10:17,2010-06-27 10:17,admin,admin,,,
624,83537,764,10625,841,1,0,N,N,N,CP_Drtn,TT_Task,DT_FixedDUR2,RV_OK,TK_NotStart,A16120,External plastering,,96,0,80,0,0,0,80,0,0,0,,,,2010-11-20 08:00,2010-11-30 16:00,,2010-11-01 08:00,2010-11-11 16:00,2010-11-01 08:00,2010-11-11 16:00,2010-11-01 08:00,2010-11-11 16:00,,2010-11-20 08:00,2010-11-30 16:00,,PT_Normal,,,,,8L/HV/9Z0kK0QXkelRw3CQ,YT4/i64bkEmzK62Ror6EJQ,,,N,0,0,,,2010-06-27 10:17,2010-06-27 10:17,admin,admin,,,
625,83538,764,10624,841,1,0,N,N,N,CP_Drtn,TT_Task,DT_FixedDrtn,RV_OK,TK_NotStart,A16130,plumbing connections under slab on grade,,368,184,16,0,0,0,16,0,0,0,,,,2010-10-25 08:00,2010-10-26 16:00,,2010-08-30 08:00,2010-08-31 16:00,2010-08-30 08:00,2010-08-31 16:00,2010-08-30 08:00,2010-08-31 16:00,,2010-10-25 08:00,2010-10-26 16:00,,PT_Normal,,,,,1a7QrPy9yUC/N70fvws2Cw,ILg6t0R2Ckeu2pIa9+iMng,,,N,0,0,,,2010-06-27 10:17,2010-06-27 10:17,admin,admin,,,
626,83539,764,10661,841,0,0,N,N,N,CP_Drtn,TT_Mile,DT_FixedDrtn,RV_OK,TK_NotStart,A16140,Start Villa construction,,112,0,0,0,0,0,0,0,0,0,,,,2010-07-07 08:00,2010-07-07 08:00,,2010-06-21 08:00,2010-06-21 08:00,2010-06-21 08:00,2010-06-21 08:00,2010-06-21 08:00,2010-06-21 08:00,,2010-07-07 08:00,2010-07-07 08:00,,PT_Normal,,,,,WXzi2kM7p0SzmniJpVUbog,YYFrjx8TxUCSNIDYXJLZYQ,,,N,0,0,,,2010-06-27 10:17,2010-06-27 10:17,admin,admin,,,
627,83540,764,10661,841,0,0,N,N,N,CP_Drtn,TT_FinMile,DT_FixedDrtn,RV_OK,TK_NotStart,A16150,finish Villa construction,,96,96,0,0,0,0,0,0,0,0,,,,2010-11-30 16:00,2010-11-30 16:00,,2010-11-11 16:00,2010-11-11 16:00,2010-11-11 16:00,2010-11-11 16:00,2010-11-11 16:00,2010-11-11 16:00,,2010-11-30 16:00,2010-11-30 16:00,,PT_Normal,,,,,muAGJpNrJEKwnk9FVTM68w,WORc7UtAxE+56uz6IVRf6w,,,N,0,0,,,2010-06-27 10:17,2010-06-27 10:17,admin,admin,,,
628,83541,764,10661,841,0,0,N,N,N,CP_Drtn,TT_Mile,DT_FixedDrtn,RV_OK,TK_NotStart,A16160,IFC drawings,,112,0,0,0,0,0,0,0,0,0,,,,2010-07-07 08:00,2010-07-07 08:00,,2010-06-21 08:00,2010-06-21 08:00,2010-06-21 08:00,2010-06-21 08:00,2010-06-21 08:00,2010-06-21 08:00,,2010-07-07 08:00,2010-07-07 08:00,,PT_Normal,,,,,uUD3pGhr2Um7LLxkgYj5zA,yzMPhziIp0mt4y40qT1toQ,,,N,0,0,,,2010-06-27 10:17,2010-06-27 10:17,admin,admin,,,
629,83542,764,10623,841,1,0,N,N,N,CP_Drtn,TT_Task,DT_FixedDUR2,RV_OK,TK_NotStart,A16170,pouring for ground floor's slab,,112,0,8,0,0,0,8,0,0,0,,,,2010-09-28 08:00,2010-09-28 16:00,,2010-09-12 08:00,2010-09-12 16:00,2010-09-12 08:00,2010-09-12 16:00,2010-09-12 08:00,2010-09-12 16:00,,2010-09-28 08:00,2010-09-28 16:00,,PT_Normal,,,,,s6i/UT+bpkuRhFJcWr5zQw,i/WJ0iTDc0Ou9b6+p84yYQ,,,N,0,0,,,2010-06-27 10:17,2010-06-27 10:17,admin,admin,,,
630,83543,764,10623,841,1,0,N,N,N,CP_Drtn,TT_Task,DT_FixedDUR2,RV_OK,TK_NotStart,A16180,pouring for 1st floor's slab,,128,0,8,0,0,0,8,0,0,0,,,,2010-10-19 08:00,2010-10-19 16:00,,2010-09-30 08:00,2010-09-30 16:00,2010-09-30 08:00,2010-09-30 16:00,2010-09-30 08:00,2010-09-30 16:00,,2010-10-19 08:00,2010-10-19 16:00,,PT_Normal,,,,,+8UY3G/Hm0GrJbX7eCKxZw,mP0SkWAddkSIaWuW1J0hhg,,,N,0,0,,,2010-06-27 10:17,2010-06-27 10:17,admin,admin,,,
631,83544,764,10623,841,1,0,N,N,N,CP_Drtn,TT_Task,DT_FixedDUR2,RV_OK,TK_NotStart,A16190,pouring for roof floor's slab,,128,0,8,0,0,0,8,0,0,0,,,,2010-11-03 08:00,2010-11-03 16:00,,2010-10-16 08:00,2010-10-16 16:00,2010-10-16 08:00,2010-10-16 16:00,2010-10-16 08:00,2010-10-16 16:00,,2010-11-03 08:00,2010-11-03 16:00,,PT_Normal,,,,,nbFcYoMQ3EC91Kn1y6gSjw,Se9LX3slK0mazcdJxie72A,,,N,0,0,,,2010-06-27 10:17,2010-06-27 10:17,admin,admin,,,
632,83545,764,10623,841,1,0,N,N,N,CP_Drtn,TT_Task,DT_FixedDrtn,RV_OK,TK_NotStart,A16200,Fence work,,112,16,400,0,0,0,400,0,0,0,,,,2010-09-29 08:00,2010-11-30 16:00,,2010-09-13 08:00,2010-11-09 16:00,2010-09-13 08:00,2010-11-09 16:00,2010-09-13 08:00,2010-11-09 16:00,,2010-09-29 08:00,2010-11-30 16:00,,PT_Normal,,,,,LhLMdOYC/kO+t+6o2G9hog,kVHAtj0vqkSdcNIO5988CQ,,,N,0,0,,,2010-06-27 10:17,2010-06-27 10:17,admin,admin,,,
633,83546,764,10661,841,1,0,N,N,N,CP_Drtn,TT_Task,DT_FixedDUR2,RV_OK,TK_NotStart,A16210,Fence Drawings IFC,,584,472,8,0,0,0,8,0,0,0,,,,2010-09-16 08:00,2010-09-16 16:00,,2010-06-21 08:00,2010-06-21 16:00,2010-06-21 08:00,2010-06-21 16:00,2010-06-21 08:00,2010-06-21 16:00,,2010-09-16 08:00,2010-09-16 16:00,,PT_Normal,,,,,L9yjF0dvRUWaW004EzNK0Q,TFPlMVQUHkCe+HmvDs9hEg,,,N,0,0,,,2010-06-27 10:17,2010-06-27 10:17,admin,admin,,,
634,83547,764,10622,849,1,0,N,N,N,CP_Drtn,TT_Task,DT_FixedDUR2,RV_OK,TK_NotStart,A16220,backfilling between P.C Foundation,,112,0,16,0,0,0,16,0,0,0,,,,2010-08-18 08:00,2010-08-19 16:00,,2010-08-02 08:00,2010-08-03 16:00,2010-08-02 08:00,2010-08-03 16:00,2010-08-02 08:00,2010-08-03 16:00,,2010-08-18 08:00,2010-08-19 16:00,,PT_Normal,,,,,LBq2jq3vRkqp4y7Bq8VdMw,lDlMl5pMxkWgCuEslfjS7w,,,N,0,0,,,2010-06-27 10:17,2010-06-27 10:17,admin,admin,,,
635,83548,764,10622,849,1,0,N,N,N,CP_Drtn,TT_Task,DT_FixedDUR2,RV_OK,TK_NotStart,A16230,P.C Under Smells,,112,0,8,0,0,0,8,0,0,0,,,,2010-08-21 08:00,2010-08-21 16:00,,2010-08-04 08:00,2010-08-04 16:00,2010-08-04 08:00,2010-08-04 16:00,2010-08-04 08:00,2010-08-04 16:00,,2010-08-21 08:00,2010-08-21 16:00,,PT_Normal,,,,,cSylq/Pz6kiKZq09npNRIQ,GJDv64T9K0CJLKUA5TqQFg,,,N,0,0,,,2010-06-27 10:17,2010-06-27 10:17,admin,admin,,,
636,83549,764,10623,849,1,0,N,N,N,CP_Drtn,TT_Task,DT_FixedDUR2,RV_OK,TK_NotStart,A16240,Brick works for 1st floor,,176,0,40,0,0,0,40,0,0,0,,,,2010-11-08 08:00,2010-11-13 16:00,,2010-10-13 08:00,2010-10-18 16:00,2010-10-13 08:00,2010-10-18 16:00,2010-10-13 08:00,2010-10-18 16:00,,2010-11-08 08:00,2010-11-13 16:00,,PT_Normal,,,,,vk8OFvuaKkqC5Qfj2jcsvw,u5VunnHqwkysR1MRaAEgmw,,,N,0,0,,,2010-06-27 10:17,2010-06-27 10:17,admin,admin,,,
637,83550,764,10623,849,1,0,N,N,N,CP_Drtn,TT_Task,DT_FixedDUR2,RV_OK,TK_NotStart,A16250,Brick works for roof floor,,128,0,40,0,0,0,40,0,0,0,,,,2010-11-14 08:00,2010-11-18 16:00,,2010-10-26 08:00,2010-10-31 16:00,2010-10-26 08:00,2010-10-31 16:00,2010-10-26 08:00,2010-10-31 16:00,,2010-11-14 08:00,2010-11-18 16:00,,PT_Normal,,,,,qcxE0p2NwUeaDJ6DsxuZ6A,40KWkXCU9EibGlxw7N0raQ,,,N,0,0,,,2010-06-27 10:17,2010-06-27 10:17,admin,admin,,,
638,83551,764,10625,849,1,0,N,N,N,CP_Drtn,TT_Task,DT_FixedDUR2,RV_OK,TK_NotStart,A16260,Internal plastering for 1st floor,,176,24,64,0,0,0,64,0,0,0,,,,2010-11-16 08:00,2010-11-24 16:00,,2010-10-21 08:00,2010-10-30 16:00,2010-10-21 08:00,2010-10-30 16:00,2010-10-21 08:00,2010-10-30 16:00,,2010-11-16 08:00,2010-11-24 16:00,,PT_Normal,,,,,30aavQ7NdUCMn6WuAstWFg,BMno0IuMfEO/VyF1LUJvSg,,,N,0,0,,,2010-06-27 10:17,2010-06-27 10:17,admin,admin,,,
639,83552,764,10625,849,1,0,N,N,N,CP_Drtn,TT_Task,DT_FixedDUR2,RV_OK,TK_NotStart,A16270,Internal plastering for roof floor,,152,24,40,0,0,0,40,0,0,0,,,,2010-11-25 08:00,2010-11-30 16:00,,2010-11-03 08:00,2010-11-08 16:00,2010-11-03 08:00,2010-11-08 16:00,2010-11-03 08:00,2010-11-08 16:00,,2010-11-25 08:00,2010-11-30 16:00,,PT_Normal,,,,,xSAxCVfYjEeMmI69BDstkg,qYpGyWH8SEiMZAqn9R+XPQ,,,N,0,0,,,2010-06-27 10:17,2010-06-27 10:17,admin,admin,,,
640,83553,764,10624,849,1,0,N,N,N,CP_Drtn,TT_Task,DT_FixedDUR2,RV_OK,TK_NotStart,A16280,electrical conduits for ground floor walls,,184,0,16,0,0,0,16,0,0,0,,,,2010-11-03 08:00,2010-11-04 16:00,,2010-10-07 08:00,2010-10-09 16:00,2010-10-07 08:00,2010-10-09 16:00,2010-10-07 08:00,2010-10-09 16:00,,2010-11-03 08:00,2010-11-04 16:00,,PT_Normal,,,,,7lzqkujIjEypyOSz2ayVgA,4CfV0+Xzlk2Q8YCzIOkb5Q,,,N,0,0,,,2010-06-27 10:17,2010-06-27 10:17,admin,admin,,,
641,83554,764,10624,849,1,0,N,N,N,CP_Drtn,TT_Task,DT_FixedDUR2,RV_OK,TK_NotStart,A16290,electrical conduits for 1st floor walls,,176,0,16,0,0,0,16,0,0,0,,,,2010-11-14 08:00,2010-11-15 16:00,,2010-10-19 08:00,2010-10-20 16:00,2010-10-19 08:00,2010-10-20 16:00,2010-10-19 08:00,2010-10-20 16:00,,2010-11-14 08:00,2010-11-15 16:00,,PT_Normal,,,,,AIbzO29M7kugif3iRKBFMw,kKL2mejwpU23RMNKdWTiaw,,,N,0,0,,,2010-06-27 10:17,2010-06-27 10:17,admin,admin,,,
642,83555,764,10624,849,1,0,N,N,N,CP_Drtn,TT_Task,DT_FixedDUR2,RV_OK,TK_NotStart,A16300,electrical conduits for roof floor walls,,152,0,16,0,0,0,16,0,0,0,,,,2010-11-23 08:00,2010-11-24 16:00,,2010-11-01 08:00,2010-11-02 16:00,2010-11-01 08:00,2010-11-02 16:00,2010-11-01 08:00,2010-11-02 16:00,,2010-11-23 08:00,2010-11-24 16:00,,PT_Normal,,,,,N2APghmhLUGEQkzHWvPnrg,f2dvMKRB+0+6DMEl60hfFw,,,N,0,0,,,2010-06-27 10:17,2010-06-27 10:17,admin,admin,,,
643,83556,764,10628,841,1,0,N,N,N,CP_Drtn,TT_Task,DT_FixedDUR2,RV_OK,TK_NotStart,A16310,excavation,,104,0,16,0,0,0,16,0,0,0,,,,2010-07-29 08:00,2010-07-31 16:00,,2010-07-14 08:00,2010-07-15 16:00,2010-07-14 08:00,2010-07-15 16:00,2010-07-14 08:00,2010-07-15 16:00,,2010-07-29 08:00,2010-07-31 16:00,,PT_Normal,,,,,ixSNhyTjS0OYJ3cdh/1y1g,yUd2TRJ6bEeXT8g+kNMiBA,,,N,0,0,,,2010-06-27 10:17,2010-06-27 10:17,admin,admin,,,
644,83557,764,10628,841,1,0,N,N,N,CP_Drtn,TT_Task,DT_FixedDUR2,RV_OK,TK_NotStart,A16320,soil replacement,,104,0,96,0,0,0,96,0,0,0,,,,2010-08-01 08:00,2010-08-14 16:00,,2010-07-17 08:00,2010-07-29 16:00,2010-07-17 08:00,2010-07-29 16:00,2010-07-17 08:00,2010-07-29 16:00,,2010-08-01 08:00,2010-08-14 16:00,,PT_Normal,,,,,cOTVIXZBZk+z4znxkx7bmw,OuPH8jXhCUyoMpIJNe4uSA,,,N,0,0,,,2010-06-27 10:17,2010-06-27 10:17,admin,admin,,,
645,83558,764,10629,841,1,0,N,N,N,CP_Drtn,TT_Task,DT_FixedDUR2,RV_OK,TK_NotStart,A16330,Plain Concrete Foundation,,104,0,16,0,0,0,16,0,0,0,,,,2010-08-15 08:00,2010-08-16 16:00,,2010-07-31 08:00,2010-08-01 16:00,2010-07-31 08:00,2010-08-01 16:00,2010-07-31 08:00,2010-08-01 16:00,,2010-08-15 08:00,2010-08-16 16:00,,PT_Normal,,,,,ehPDWl/0WUiEoVT6vmIYUQ,8mnJ4JBE2Eaa+lrndWMPLQ,,,N,0,0,,,2010-06-27 10:17,2010-06-27 10:17,admin,admin,,,
646,83559,764,10629,841,1,0,N,N,N,CP_Drtn,TT_Task,DT_FixedDUR2,RV_OK,TK_NotStart,A16340,Reinforced Concrete Foundation,,104,0,56,0,0,0,56,0,0,0,,,,2010-08-22 08:00,2010-08-29 16:00,,2010-08-07 08:00,2010-08-14 16:00,2010-08-07 08:00,2010-08-14 16:00,2010-08-07 08:00,2010-08-14 16:00,,2010-08-22 08:00,2010-08-29 16:00,,PT_Normal,,,,,3ZG7aaBrXEym9DAhuI2nDg,cpCMR0xPeE+uN8Vj5NSODg,,,N,0,0,,,2010-06-27 10:17,2010-06-27 10:17,admin,admin,,,
647,83560,764,10629,841,1,0,N,N,N,CP_Drtn,TT_Task,DT_FixedDUR2,RV_OK,TK_NotStart,A16350,under ground  brick works,,104,0,16,0,0,0,16,0,0,0,,,,2010-09-06 08:00,2010-09-07 16:00,,2010-08-22 08:00,2010-08-23 16:00,2010-08-22 08:00,2010-08-23 16:00,2010-08-22 08:00,2010-08-23 16:00,,2010-09-06 08:00,2010-09-07 16:00,,PT_Normal,,,,,r76CXxR3xEqhIIl1/vdGbA,EH9walp2eEqsOZY6pGCXwQ,,,N,0,0,,,2010-06-27 10:17,2010-06-27 10:17,admin,admin,,,
648,83561,764,10629,841,1,0,N,N,N,CP_Drtn,TT_Task,DT_FixedDUR2,RV_OK,TK_NotStart,A16360,under ground insulation for RC & Brick work,,104,0,16,0,0,0,16,0,0,0,,,,2010-09-11 08:00,2010-09-12 16:00,,2010-08-24 08:00,2010-08-25 16:00,2010-08-24 08:00,2010-08-25 16:00,2010-08-24 08:00,2010-08-25 16:00,,2010-09-11 08:00,2010-09-12 16:00,,PT_Normal,,,,,+hIGSxvwS0uI1qLbDikKWw,zY2NH+TaaUaKhgaZy0FNkQ,,,N,0,0,,,2010-06-27 10:17,2010-06-27 10:17,admin,admin,,,
649,83562,764,10629,841,1,0,N,N,N,CP_Drtn,TT_Task,DT_FixedDUR2,RV_OK,TK_NotStart,A16370,backfilling for under ground,,104,0,32,0,0,0,32,0,0,0,,,,2010-09-13 08:00,2010-09-16 16:00,,2010-08-26 08:00,2010-08-30 16:00,2010-08-26 08:00,2010-08-30 16:00,2010-08-26 08:00,2010-08-30 16:00,,2010-09-13 08:00,2010-09-16 16:00,,PT_Normal,,,,,cRzmhjfTqEm00jnegImHnw,U+NOJ9TMRkqd2dnmXNl8KQ,,,N,0,0,,,2010-06-27 10:17,2010-06-27 10:17,admin,admin,,,
650,83563,764,10629,841,1,0,N,N,N,CP_Drtn,TT_Task,DT_FixedDUR2,RV_OK,TK_NotStart,A16380,P.C slab on grade 10CM,,176,0,8,0,0,0,8,0,0,0,,,,2010-10-27 08:00,2010-10-27 16:00,,2010-10-02 08:00,2010-10-02 16:00,2010-10-02 08:00,2010-10-02 16:00,2010-10-02 08:00,2010-10-02 16:00,,2010-10-27 08:00,2010-10-27 16:00,,PT_Normal,,,,,iEXzEjIlFkeXAyIpiz0OwQ,R0GEpjrDpEqGDZ6oo1oORg,,,N,0,0,,,2010-06-27 10:17,2010-06-27 10:17,admin,admin,,,
651,83564,764,10629,841,1,0,N,N,N,CP_Drtn,TT_Task,DT_FixedDUR2,RV_OK,TK_NotStart,A16390,moisture insulation with membrane sheets,,176,0,16,0,0,0,16,0,0,0,,,,2010-10-28 08:00,2010-10-30 16:00,,2010-10-03 08:00,2010-10-04 16:00,2010-10-03 08:00,2010-10-04 16:00,2010-10-03 08:00,2010-10-04 16:00,,2010-10-28 08:00,2010-10-30 16:00,,PT_Normal,,,,,tsJ3kVKmlUSHuDhEOGyMiA,mQuCvqtWikqC4DlavF4JIg,,,N,0,0,,,2010-06-27 10:17,2010-06-27 10:17,admin,admin,,,
652,83565,764,10629,841,1,0,N,N,N,CP_Drtn,TT_Task,DT_FixedDUR2,RV_OK,TK_NotStart,A16400,R.C slab on grade,,176,0,16,0,0,0,16,0,0,0,,,,2010-10-31 08:00,2010-11-01 16:00,,2010-10-05 08:00,2010-10-06 16:00,2010-10-05 08:00,2010-10-06 16:00,2010-10-05 08:00,2010-10-06 16:00,,2010-10-31 08:00,2010-11-01 16:00,,PT_Normal,,,,,rcdNUOEDoEiXaZAM6PXOMg,+uMixz//iE6eVNzLnisEXw,,,N,0,0,,,2010-06-27 10:17,2010-06-27 10:17,admin,admin,,,
653,83566,764,10630,841,1,0,N,N,N,CP_Drtn,TT_Task,DT_FixedDUR2,RV_OK,TK_NotStart,A16410,columns for ground floor,,104,0,48,0,0,0,48,0,0,0,,,,2010-08-30 08:00,2010-09-05 16:00,,2010-08-15 08:00,2010-08-21 16:00,2010-08-15 08:00,2010-08-21 16:00,2010-08-15 08:00,2010-08-21 16:00,,2010-08-30 08:00,2010-09-05 16:00,,PT_Normal,,,,,9GOf8RMlX0O7GpVgodj1lQ,780SKICtvU+HORrKShRmRg,,,N,0,0,,,2010-06-27 10:17,2010-06-27 10:17,admin,admin,,,
654,83567,764,10630,841,1,0,N,N,N,CP_Drtn,TT_Task,DT_FixedDUR2,RV_OK,TK_NotStart,A16420,slab for ground floor,,104,0,72,0,0,0,72,0,0,0,,,,2010-09-18 08:00,2010-09-27 16:00,,2010-08-31 08:00,2010-09-12 16:00,2010-08-31 08:00,2010-09-12 16:00,2010-08-31 08:00,2010-09-12 16:00,,2010-09-18 08:00,2010-09-27 16:00,,PT_Normal,,,,,hhF2oJmaz0OFFHWxjRg8ng,YdJ8BYxjCUG/eNr1hLgARg,,,N,0,0,,,2010-06-27 10:17,2010-06-27 10:17,admin,admin,,,
655,83568,764,10630,841,1,0,N,N,N,CP_Drtn,TT_Task,DT_FixedDUR2,RV_OK,TK_NotStart,A16430,columns for 1st floor,,120,0,48,0,0,0,48,0,0,0,,,,2010-10-02 08:00,2010-10-07 16:00,,2010-09-14 08:00,2010-09-20 16:00,2010-09-14 08:00,2010-09-20 16:00,2010-09-14 08:00,2010-09-20 16:00,,2010-10-02 08:00,2010-10-07 16:00,,PT_Normal,,,,,ApY3wmgXoEqD6kSLhFmSUQ,Krf/w8wsjUC2tfJAVz4d5g,,,N,0,0,,,2010-06-27 10:17,2010-06-27 10:17,admin,admin,,,
656,83569,764,10630,841,1,0,N,N,N,CP_Drtn,TT_Task,DT_FixedDUR2,RV_OK,TK_NotStart,A16440,slab for 1st floor,,120,0,72,0,0,0,72,0,0,0,,,,2010-10-09 08:00,2010-10-18 16:00,,2010-09-21 08:00,2010-09-30 16:00,2010-09-21 08:00,2010-09-30 16:00,2010-09-21 08:00,2010-09-30 16:00,,2010-10-09 08:00,2010-10-18 16:00,,PT_Normal,,,,,4PaXExVtX06fBY+vtegGlQ,3nhjQBpvVk2Sb8ERttpnjQ,,,N,0,0,,,2010-06-27 10:17,2010-06-27 10:17,admin,admin,,,
657,83570,764,10630,841,1,0,N,N,N,CP_Drtn,TT_Task,DT_FixedDUR2,RV_OK,TK_NotStart,A16450,columns for roof floor,,120,0,32,0,0,0,32,0,0,0,,,,2010-10-23 08:00,2010-10-26 16:00,,2010-10-05 08:00,2010-10-09 16:00,2010-10-05 08:00,2010-10-09 16:00,2010-10-05 08:00,2010-10-09 16:00,,2010-10-23 08:00,2010-10-26 16:00,,PT_Normal,,,,,qCvQBDNisUqGpWrrq95aqQ,0yake6xitUWHPMoWu2Q8vg,,,N,0,0,,,2010-06-27 10:17,2010-06-27 10:17,admin,admin,,,
658,83571,764,10630,841,1,0,N,N,N,CP_Drtn,TT_Task,DT_FixedDUR2,RV_OK,TK_NotStart,A16460,slab for roof floor,,120,0,48,0,0,0,48,0,0,0,,,,2010-10-27 08:00,2010-11-02 16:00,,2010-10-10 08:00,2010-10-16 16:00,2010-10-10 08:00,2010-10-16 16:00,2010-10-10 08:00,2010-10-16 16:00,,2010-10-27 08:00,2010-11-02 16:00,,PT_Normal,,,,,nwDqJUXctkGiLVWS/ND0KA,AAGtuuNdAU6C0yDphmr9CQ,,,N,0,0,,,2010-06-27 10:17,2010-06-27 10:17,admin,admin,,,
659,83572,764,10630,841,1,0,N,N,N,CP_Drtn,TT_Task,DT_FixedDUR2,RV_OK,TK_NotStart,A16470,Brick works for ground floor,,176,0,40,0,0,0,40,0,0,0,,,,2010-10-21 08:00,2010-10-26 16:00,,2010-09-26 08:00,2010-09-30 16:00,2010-09-26 08:00,2010-09-30 16:00,2010-09-26 08:00,2010-09-30 16:00,,2010-10-21 08:00,2010-10-26 16:00,,PT_Normal,,,,,qEXqXIfel0mXtD38w+3TQQ,SEigFZaeskmYVi/1PXz28A,,,N,0,0,,,2010-06-27 10:17,2010-06-27 10:17,admin,admin,,,
660,83573,764,10631,841,1,0,N,N,N,CP_Drtn,TT_Task,DT_FixedDrtn,RV_OK,TK_NotStart,A16480,electrical conduits for ground floor's slab,,112,8,16,0,0,0,16,0,0,0,,,,2010-09-23 08:00,2010-09-25 16:00,,2010-09-05 08:00,2010-09-06 16:00,2010-09-05 08:00,2010-09-06 16:00,2010-09-05 08:00,2010-09-06 16:00,,2010-09-23 08:00,2010-09-25 16:00,,PT_Normal,,,,,crGA8DWHzEmE6kvZ06LW/g,G6f8BQqqS06lKcP0xmWWbw,,,N,0,0,,,2010-06-27 10:17,2010-06-27 10:17,admin,admin,,,
661,83574,764,10631,841,1,0,N,N,N,CP_Drtn,TT_Task,DT_FixedDrtn,RV_OK,TK_NotStart,A16490,electrical conduits for 1st floor slab,,128,8,16,0,0,0,16,0,0,0,,,,2010-10-14 08:00,2010-10-16 16:00,,2010-09-26 08:00,2010-09-27 16:00,2010-09-26 08:00,2010-09-27 16:00,2010-09-26 08:00,2010-09-27 16:00,,2010-10-14 08:00,2010-10-16 16:00,,PT_Normal,,,,,Q8Bku7Ve6U+yEbwdhXJaJg,01KcvK7JUkW3Bu53IDO2Iw,,,N,0,0,,,2010-06-27 10:17,2010-06-27 10:17,admin,admin,,,
662,83575,764,10631,841,1,0,N,N,N,CP_Drtn,TT_Task,DT_FixedDrtn,RV_OK,TK_NotStart,A16500,electrical conduits for roof slab,,128,8,8,0,0,0,8,0,0,0,,,,2010-11-01 08:00,2010-11-01 16:00,,2010-10-13 08:00,2010-10-13 16:00,2010-10-13 08:00,2010-10-13 16:00,2010-10-13 08:00,2010-10-13 16:00,,2010-11-01 08:00,2010-11-01 16:00,,PT_Normal,,,,,Fq7bFDDF9ECNNOUrEFHPzw,1k569ymOt0+1aaihtY6oWg,,,N,0,0,,,2010-06-27 10:17,2010-06-27 10:17,admin,admin,,,
663,83576,764,10632,841,1,0,N,N,N,CP_Drtn,TT_Task,DT_FixedDUR2,RV_OK,TK_NotStart,A16510,Internal plastering for ground floor,,176,16,64,0,0,0,64,0,0,0,,,,2010-11-06 08:00,2010-11-14 16:00,,2010-10-11 08:00,2010-10-19 16:00,2010-10-11 08:00,2010-10-19 16:00,2010-10-11 08:00,2010-10-19 16:00,,2010-11-06 08:00,2010-11-14 16:00,,PT_Normal,,,,,laCEoPBhQE2UpZqKweO/gA,9WCYjCDqWEGEbwnhpWBtew,,,N,0,0,,,2010-06-27 10:17,2010-06-27 10:17,admin,admin,,,
664,83577,764,10632,841,1,0,N,N,N,CP_Drtn,TT_Task,DT_FixedDUR2,RV_OK,TK_NotStart,A16520,External plastering,,88,0,80,0,0,0,80,0,0,0,,,,2010-11-20 08:00,2010-11-30 16:00,,2010-11-02 08:00,2010-11-13 16:00,2010-11-02 08:00,2010-11-13 16:00,2010-11-02 08:00,2010-11-13 16:00,,2010-11-20 08:00,2010-11-30 16:00,,PT_Normal,,,,,bAaikd+uNkKxbCQ+Zq0YXQ,J0nXKQhoJUGyokIUxZHgtw,,,N,0,0,,,2010-06-27 10:17,2010-06-27 10:17,admin,admin,,,
665,83578,764,10631,841,1,0,N,N,N,CP_Drtn,TT_Task,DT_FixedDrtn,RV_OK,TK_NotStart,A16530,plumbing connections under slab on grade,,360,184,16,0,0,0,16,0,0,0,,,,2010-10-25 08:00,2010-10-26 16:00,,2010-08-31 08:00,2010-09-01 16:00,2010-08-31 08:00,2010-09-01 16:00,2010-08-31 08:00,2010-09-01 16:00,,2010-10-25 08:00,2010-10-26 16:00,,PT_Normal,,,,,+ltQEPvfnE+y5jI4p22iow,kyT5ycIn3EmcQo3I8fMsIQ,,,N,0,0,,,2010-06-27 10:17,2010-06-27 10:17,admin,admin,,,
666,83579,764,10668,841,0,0,N,N,N,CP_Drtn,TT_Mile,DT_FixedDrtn,RV_OK,TK_NotStart,A16540,Start Villa construction,,104,0,0,0,0,0,0,0,0,0,,,,2010-07-06 08:00,2010-07-06 08:00,,2010-06-21 08:00,2010-06-21 08:00,2010-06-21 08:00,2010-06-21 08:00,2010-06-21 08:00,2010-06-21 08:00,,2010-07-06 08:00,2010-07-06 08:00,,PT_Normal,,,,,IgpP/isCHEO4sMyDv9Idxw,K8HOj6KI90WcOyEsHpGUFg,,,N,0,0,,,2010-06-27 10:17,2010-06-27 10:17,admin,admin,,,
667,83580,764,10668,841,0,0,N,N,N,CP_Drtn,TT_FinMile,DT_FixedDrtn,RV_OK,TK_NotStart,A16550,finish Villa construction,,88,88,0,0,0,0,0,0,0,0,,,,2010-11-30 16:00,2010-11-30 16:00,,2010-11-13 16:00,2010-11-13 16:00,2010-11-13 16:00,2010-11-13 16:00,2010-11-13 16:00,2010-11-13 16:00,,2010-11-30 16:00,2010-11-30 16:00,,PT_Normal,,,,,ZPM22+tM8EKSmMk/BYAtuA,/wYNoSR65U2n3A8yJpTiJA,,,N,0,0,,,2010-06-27 10:17,2010-06-27 10:17,admin,admin,,,
668,83581,764,10668,841,0,0,N,N,N,CP_Drtn,TT_Mile,DT_FixedDrtn,RV_OK,TK_NotStart,A16560,IFC drawings,,104,0,0,0,0,0,0,0,0,0,,,,2010-07-06 08:00,2010-07-06 08:00,,2010-06-21 08:00,2010-06-21 08:00,2010-06-21 08:00,2010-06-21 08:00,2010-06-21 08:00,2010-06-21 08:00,,2010-07-06 08:00,2010-07-06 08:00,,PT_Normal,,,,,+riqwUWCvEGqzC+w0qAMEA,yAdLKFAN/0GX792PCDHGFg,,,N,0,0,,,2010-06-27 10:17,2010-06-27 10:17,admin,admin,,,
669,83582,764,10630,841,1,0,N,N,N,CP_Drtn,TT_Task,DT_FixedDUR2,RV_OK,TK_NotStart,A16570,pouring for ground floor's slab,,104,0,8,0,0,0,8,0,0,0,,,,2010-09-28 08:00,2010-09-28 16:00,,2010-09-13 08:00,2010-09-13 16:00,2010-09-13 08:00,2010-09-13 16:00,2010-09-13 08:00,2010-09-13 16:00,,2010-09-28 08:00,2010-09-28 16:00,,PT_Normal,,,,,esAw4rdqdUuNKlCv0n7IHg,lH9xlVQrBU2N9cc6D2nJjw,,,N,0,0,,,2010-06-27 10:17,2010-06-27 10:17,admin,admin,,,
670,83583,764,10630,841,1,0,N,N,N,CP_Drtn,TT_Task,DT_FixedDUR2,RV_OK,TK_NotStart,A16580,pouring for 1st floor's slab,,120,0,8,0,0,0,8,0,0,0,,,,2010-10-19 08:00,2010-10-19 16:00,,2010-10-02 08:00,2010-10-02 16:00,2010-10-02 08:00,2010-10-02 16:00,2010-10-02 08:00,2010-10-02 16:00,,2010-10-19 08:00,2010-10-19 16:00,,PT_Normal,,,,,sggm7Uu9FEW5vHD8U4yHEQ,j7BLZk/q+EO+1yVm2W+9SQ,,,N,0,0,,,2010-06-27 10:17,2010-06-27 10:17,admin,admin,,,
671,83584,764,10630,841,1,0,N,N,N,CP_Drtn,TT_Task,DT_FixedDUR2,RV_OK,TK_NotStart,A16590,pouring for roof floor's slab,,120,0,8,0,0,0,8,0,0,0,,,,2010-11-03 08:00,2010-11-03 16:00,,2010-10-17 08:00,2010-10-17 16:00,2010-10-17 08:00,2010-10-17 16:00,2010-10-17 08:00,2010-10-17 16:00,,2010-11-03 08:00,2010-11-03 16:00,,PT_Normal,,,,,Bu/qU1jSckOmPlhCCo0LyA,TK9LqPoFMECHkfmLE4uE6g,,,N,0,0,,,2010-06-27 10:17,2010-06-27 10:17,admin,admin,,,
672,83585,764,10630,841,1,0,N,N,N,CP_Drtn,TT_Task,DT_FixedDrtn,RV_OK,TK_NotStart,A16600,Fence work,,104,16,400,0,0,0,400,0,0,0,,,,2010-09-29 08:00,2010-11-30 16:00,,2010-09-14 08:00,2010-11-10 16:00,2010-09-14 08:00,2010-11-10 16:00,2010-09-14 08:00,2010-11-10 16:00,,2010-09-29 08:00,2010-11-30 16:00,,PT_Normal,,,,,MvrkszQ09kCSi87N7LbNbQ,rRlsl9Hda0WVGOcfWlcAjw,,,N,0,0,,,2010-06-27 10:17,2010-06-27 10:17,admin,admin,,,
673,83586,764,10668,841,1,0,N,N,N,CP_Drtn,TT_Task,DT_FixedDUR2,RV_OK,TK_NotStart,A16610,Fence Drawings IFC,,584,480,8,0,0,0,8,0,0,0,,,,2010-09-16 08:00,2010-09-16 16:00,,2010-06-21 08:00,2010-06-21 16:00,2010-06-21 08:00,2010-06-21 16:00,2010-06-21 08:00,2010-06-21 16:00,,2010-09-16 08:00,2010-09-16 16:00,,PT_Normal,,,,,PKYwVGflckS/fVSfinDPfg,8HPh2Cs3jU2QC0CZ8203xQ,,,N,0,0,,,2010-06-27 10:17,2010-06-27 10:17,admin,admin,,,
674,83587,764,10629,849,1,0,N,N,N,CP_Drtn,TT_Task,DT_FixedDUR2,RV_OK,TK_NotStart,A16620,backfilling between P.C Foundation,,104,0,16,0,0,0,16,0,0,0,,,,2010-08-18 08:00,2010-08-19 16:00,,2010-08-03 08:00,2010-08-04 16:00,2010-08-03 08:00,2010-08-04 16:00,2010-08-03 08:00,2010-08-04 16:00,,2010-08-18 08:00,2010-08-19 16:00,,PT_Normal,,,,,RxfEnaVn7kOc9r9csa+6tg,10orelaC7kinHI/YRuKrQw,,,N,0,0,,,2010-06-27 10:17,2010-06-27 10:17,admin,admin,,,
675,83588,764,10629,849,1,0,N,N,N,CP_Drtn,TT_Task,DT_FixedDUR2,RV_OK,TK_NotStart,A16630,P.C Under Smells,,104,0,8,0,0,0,8,0,0,0,,,,2010-08-21 08:00,2010-08-21 16:00,,2010-08-05 08:00,2010-08-05 16:00,2010-08-05 08:00,2010-08-05 16:00,2010-08-05 08:00,2010-08-05 16:00,,2010-08-21 08:00,2010-08-21 16:00,,PT_Normal,,,,,QH/9L8ZrHkWNS3n6saqtzQ,hepcHNA76kiYVP2J+GPHfA,,,N,0,0,,,2010-06-27 10:17,2010-06-27 10:17,admin,admin,,,
676,83589,764,10630,849,1,0,N,N,N,CP_Drtn,TT_Task,DT_FixedDUR2,RV_OK,TK_NotStart,A16640,Brick works for 1st floor,,168,0,40,0,0,0,40,0,0,0,,,,2010-11-08 08:00,2010-11-13 16:00,,2010-10-14 08:00,2010-10-19 16:00,2010-10-14 08:00,2010-10-19 16:00,2010-10-14 08:00,2010-10-19 16:00,,2010-11-08 08:00,2010-11-13 16:00,,PT_Normal,,,,,Bdjhsud04U+cVzQh8a2cbw,9cJIiKLD+UyW3wxrJA9JEw,,,N,0,0,,,2010-06-27 10:17,2010-06-27 10:17,admin,admin,,,
677,83590,764,10630,849,1,0,N,N,N,CP_Drtn,TT_Task,DT_FixedDUR2,RV_OK,TK_NotStart,A16650,Brick works for roof floor,,120,0,40,0,0,0,40,0,0,0,,,,2010-11-14 08:00,2010-11-18 16:00,,2010-10-27 08:00,2010-11-01 16:00,2010-10-27 08:00,2010-11-01 16:00,2010-10-27 08:00,2010-11-01 16:00,,2010-11-14 08:00,2010-11-18 16:00,,PT_Normal,,,,,4fd3Lbva0kGXjEzJY9tK6A,qpVi8UP8eEuXwhFhIG4HVg,,,N,0,0,,,2010-06-27 10:17,2010-06-27 10:17,admin,admin,,,
678,83591,764,10632,849,1,0,N,N,N,CP_Drtn,TT_Task,DT_FixedDUR2,RV_OK,TK_NotStart,A16660,Internal plastering for 1st floor,,168,24,64,0,0,0,64,0,0,0,,,,2010-11-16 08:00,2010-11-24 16:00,,2010-10-23 08:00,2010-10-31 16:00,2010-10-23 08:00,2010-10-31 16:00,2010-10-23 08:00,2010-10-31 16:00,,2010-11-16 08:00,2010-11-24 16:00,,PT_Normal,,,,,NeLO2f6nkEyMm3yvyRol9Q,GX0m1l0snUqmR93xW/6V9g,,,N,0,0,,,2010-06-27 10:17,2010-06-27 10:17,admin,admin,,,
679,83592,764,10632,849,1,0,N,N,N,CP_Drtn,TT_Task,DT_FixedDUR2,RV_OK,TK_NotStart,A16670,Internal plastering for roof floor,,144,24,40,0,0,0,40,0,0,0,,,,2010-11-25 08:00,2010-11-30 16:00,,2010-11-04 08:00,2010-11-09 16:00,2010-11-04 08:00,2010-11-09 16:00,2010-11-04 08:00,2010-11-09 16:00,,2010-11-25 08:00,2010-11-30 16:00,,PT_Normal,,,,,tp5jT26c6kS1r2X1uBYwFg,UJQ3mzhEDkKpDtcJZbTCTg,,,N,0,0,,,2010-06-27 10:17,2010-06-27 10:17,admin,admin,,,
680,83593,764,10631,849,1,0,N,N,N,CP_Drtn,TT_Task,DT_FixedDUR2,RV_OK,TK_NotStart,A16680,electrical conduits for ground floor walls,,176,0,16,0,0,0,16,0,0,0,,,,2010-11-03 08:00,2010-11-04 16:00,,2010-10-09 08:00,2010-10-10 16:00,2010-10-09 08:00,2010-10-10 16:00,2010-10-09 08:00,2010-10-10 16:00,,2010-11-03 08:00,2010-11-04 16:00,,PT_Normal,,,,,fqk1Nwq3S0mtd676qkmjGg,ddr4BFXtvkWZ+KP52CO8eA,,,N,0,0,,,2010-06-27 10:17,2010-06-27 10:17,admin,admin,,,
681,83594,764,10631,849,1,0,N,N,N,CP_Drtn,TT_Task,DT_FixedDUR2,RV_OK,TK_NotStart,A16690,electrical conduits for 1st floor walls,,168,0,16,0,0,0,16,0,0,0,,,,2010-11-14 08:00,2010-11-15 16:00,,2010-10-20 08:00,2010-10-21 16:00,2010-10-20 08:00,2010-10-21 16:00,2010-10-20 08:00,2010-10-21 16:00,,2010-11-14 08:00,2010-11-15 16:00,,PT_Normal,,,,,NWdHMyYpjUeoELHLFA+5aQ,cuJwPbwGxkmTqeb7ljOAFw,,,N,0,0,,,2010-06-27 10:17,2010-06-27 10:17,admin,admin,,,
682,83595,764,10631,849,1,0,N,N,N,CP_Drtn,TT_Task,DT_FixedDUR2,RV_OK,TK_NotStart,A16700,electrical conduits for roof floor walls,,144,0,16,0,0,0,16,0,0,0,,,,2010-11-23 08:00,2010-11-24 16:00,,2010-11-02 08:00,2010-11-03 16:00,2010-11-02 08:00,2010-11-03 16:00,2010-11-02 08:00,2010-11-03 16:00,,2010-11-23 08:00,2010-11-24 16:00,,PT_Normal,,,,,PYYPA1f3fUKrn6phBD6hHg,qp8a04WIjUiMl9UEjqWBUg,,,N,0,0,,,2010-06-27 10:17,2010-06-27 10:17,admin,admin,,,
683,83596,764,10635,841,1,0,N,N,N,CP_Drtn,TT_Task,DT_FixedDUR2,RV_OK,TK_NotStart,A16710,excavation,,72,0,16,0,0,0,16,0,0,0,,,,2010-07-29 08:00,2010-07-31 16:00,,2010-07-19 08:00,2010-07-20 16:00,2010-07-19 08:00,2010-07-20 16:00,2010-07-19 08:00,2010-07-20 16:00,,2010-07-29 08:00,2010-07-31 16:00,,PT_Normal,,,,,cQUMBughz02gEJaOLXgozw,tunMlJLy6Ueqzkw+w28eSQ,,,N,0,0,,,2010-06-27 10:17,2010-06-27 10:17,admin,admin,,,
684,83597,764,10635,841,1,0,N,N,N,CP_Drtn,TT_Task,DT_FixedDUR2,RV_OK,TK_NotStart,A16720,soil replacement,,72,0,96,0,0,0,96,0,0,0,,,,2010-08-01 08:00,2010-08-14 16:00,,2010-07-21 08:00,2010-08-03 16:00,2010-07-21 08:00,2010-08-03 16:00,2010-07-21 08:00,2010-08-03 16:00,,2010-08-01 08:00,2010-08-14 16:00,,PT_Normal,,,,,rdktY5iGGUGYE4s78uTDuw,xHzU6oYt20mXEQga0bs2hA,,,N,0,0,,,2010-06-27 10:17,2010-06-27 10:17,admin,admin,,,
685,83598,764,10636,841,1,0,N,N,N,CP_Drtn,TT_Task,DT_FixedDUR2,RV_OK,TK_NotStart,A16730,Plain Concrete Foundation,,72,0,16,0,0,0,16,0,0,0,,,,2010-08-15 08:00,2010-08-16 16:00,,2010-08-04 08:00,2010-08-05 16:00,2010-08-04 08:00,2010-08-05 16:00,2010-08-04 08:00,2010-08-05 16:00,,2010-08-15 08:00,2010-08-16 16:00,,PT_Normal,,,,,olSjOCVYCkOnN58kpJwZNA,uUpjdmFUrUepW2NbRNZ4WA,,,N,0,0,,,2010-06-27 10:17,2010-06-27 10:17,admin,admin,,,
686,83599,764,10636,841,1,0,N,N,N,CP_Drtn,TT_Task,DT_FixedDUR2,RV_OK,TK_NotStart,A16740,Reinforced Concrete Foundation,,72,0,56,0,0,0,56,0,0,0,,,,2010-08-22 08:00,2010-08-29 16:00,,2010-08-11 08:00,2010-08-18 16:00,2010-08-11 08:00,2010-08-18 16:00,2010-08-11 08:00,2010-08-18 16:00,,2010-08-22 08:00,2010-08-29 16:00,,PT_Normal,,,,,ykFh6gabOUeBwc6E29xHOg,62KH4/wX6UWcAb2kWl2Tug,,,N,0,0,,,2010-06-27 10:17,2010-06-27 10:17,admin,admin,,,
687,83600,764,10636,841,1,0,N,N,N,CP_Drtn,TT_Task,DT_FixedDUR2,RV_OK,TK_NotStart,A16750,under ground  brick works,,72,0,16,0,0,0,16,0,0,0,,,,2010-09-06 08:00,2010-09-07 16:00,,2010-08-26 08:00,2010-08-28 16:00,2010-08-26 08:00,2010-08-28 16:00,2010-08-26 08:00,2010-08-28 16:00,,2010-09-06 08:00,2010-09-07 16:00,,PT_Normal,,,,,hH7QwBwmukCEk6G/SvQ1rA,mFhxWTVPw0yN2BXu22WMYQ,,,N,0,0,,,2010-06-27 10:17,2010-06-27 10:17,admin,admin,,,
688,83601,764,10636,841,1,0,N,N,N,CP_Drtn,TT_Task,DT_FixedDUR2,RV_OK,TK_NotStart,A16760,under ground insulation for RC & Brick work,,72,0,16,0,0,0,16,0,0,0,,,,2010-09-11 08:00,2010-09-12 16:00,,2010-08-29 08:00,2010-08-30 16:00,2010-08-29 08:00,2010-08-30 16:00,2010-08-29 08:00,2010-08-30 16:00,,2010-09-11 08:00,2010-09-12 16:00,,PT_Normal,,,,,l0jp2GC/ykupbyGw1wF/Ig,oHYiKDY1R0OdAcvikZ6pAg,,,N,0,0,,,2010-06-27 10:17,2010-06-27 10:17,admin,admin,,,
689,83602,764,10636,841,1,0,N,N,N,CP_Drtn,TT_Task,DT_FixedDUR2,RV_OK,TK_NotStart,A16770,backfilling for under ground,,72,0,32,0,0,0,32,0,0,0,,,,2010-09-13 08:00,2010-09-16 16:00,,2010-08-31 08:00,2010-09-04 16:00,2010-08-31 08:00,2010-09-04 16:00,2010-08-31 08:00,2010-09-04 16:00,,2010-09-13 08:00,2010-09-16 16:00,,PT_Normal,,,,,3VdkGT023UuCoEeVdeeZ/Q,tVuKHvWIHEaiDiIPrlXU0w,,,N,0,0,,,2010-06-27 10:17,2010-06-27 10:17,admin,admin,,,
690,83603,764,10636,841,1,0,N,N,N,CP_Drtn,TT_Task,DT_FixedDUR2,RV_OK,TK_NotStart,A16780,P.C slab on grade 10CM,,144,0,8,0,0,0,8,0,0,0,,,,2010-10-27 08:00,2010-10-27 16:00,,2010-10-06 08:00,2010-10-06 16:00,2010-10-06 08:00,2010-10-06 16:00,2010-10-06 08:00,2010-10-06 16:00,,2010-10-27 08:00,2010-10-27 16:00,,PT_Normal,,,,,CRfdJ4sYk0+Z0+pTR94aYA,GhbTxxiFUkG1NE8EoEX1SA,,,N,0,0,,,2010-06-27 10:17,2010-06-27 10:17,admin,admin,,,
691,83604,764,10636,841,1,0,N,N,N,CP_Drtn,TT_Task,DT_FixedDUR2,RV_OK,TK_NotStart,A16790,moisture insulation with membrane sheets,,144,0,16,0,0,0,16,0,0,0,,,,2010-10-28 08:00,2010-10-30 16:00,,2010-10-07 08:00,2010-10-09 16:00,2010-10-07 08:00,2010-10-09 16:00,2010-10-07 08:00,2010-10-09 16:00,,2010-10-28 08:00,2010-10-30 16:00,,PT_Normal,,,,,+/UCJj8AdkmrIOWIs9gAcA,SX5qnhZH4kWAucYgKRBqYA,,,N,0,0,,,2010-06-27 10:17,2010-06-27 10:17,admin,admin,,,
692,83605,764,10636,841,1,0,N,N,N,CP_Drtn,TT_Task,DT_FixedDUR2,RV_OK,TK_NotStart,A16800,R.C slab on grade,,144,0,16,0,0,0,16,0,0,0,,,,2010-10-31 08:00,2010-11-01 16:00,,2010-10-10 08:00,2010-10-11 16:00,2010-10-10 08:00,2010-10-11 16:00,2010-10-10 08:00,2010-10-11 16:00,,2010-10-31 08:00,2010-11-01 16:00,,PT_Normal,,,,,qIzF4QV/aU2p5giVPRR2Zw,B7jz4EbfRE+MvDJ+5BPlKw,,,N,0,0,,,2010-06-27 10:17,2010-06-27 10:17,admin,admin,,,
693,83606,764,10637,841,1,0,N,N,N,CP_Drtn,TT_Task,DT_FixedDUR2,RV_OK,TK_NotStart,A16810,columns for ground floor,,72,0,48,0,0,0,48,0,0,0,,,,2010-08-30 08:00,2010-09-05 16:00,,2010-08-19 08:00,2010-08-25 16:00,2010-08-19 08:00,2010-08-25 16:00,2010-08-19 08:00,2010-08-25 16:00,,2010-08-30 08:00,2010-09-05 16:00,,PT_Normal,,,,,+9ztNWPXKEebVxlb5QLSZw,gKT7ZBAbU06MvAUlA2JUzg,,,N,0,0,,,2010-06-27 10:17,2010-06-27 10:17,admin,admin,,,
694,83607,764,10637,841,1,0,N,N,N,CP_Drtn,TT_Task,DT_FixedDUR2,RV_OK,TK_NotStart,A16820,slab for ground floor,,72,0,72,0,0,0,72,0,0,0,,,,2010-09-18 08:00,2010-09-27 16:00,,2010-09-05 08:00,2010-09-16 16:00,2010-09-05 08:00,2010-09-16 16:00,2010-09-05 08:00,2010-09-16 16:00,,2010-09-18 08:00,2010-09-27 16:00,,PT_Normal,,,,,EKS61sXGpkOXNR+rzKRTHw,PK5wXdu/GUyXF6wLQ34uGQ,,,N,0,0,,,2010-06-27 10:17,2010-06-27 10:17,admin,admin,,,
695,83608,764,10637,841,1,0,N,N,N,CP_Drtn,TT_Task,DT_FixedDUR2,RV_OK,TK_NotStart,A16830,columns for 1st floor,,88,0,48,0,0,0,48,0,0,0,,,,2010-10-02 08:00,2010-10-07 16:00,,2010-09-19 08:00,2010-09-25 16:00,2010-09-19 08:00,2010-09-25 16:00,2010-09-19 08:00,2010-09-25 16:00,,2010-10-02 08:00,2010-10-07 16:00,,PT_Normal,,,,,mTpTo8xxhUGDWexgq/aFag,RbMrEMLTcEuJgJgsUaWmWQ,,,N,0,0,,,2010-06-27 10:17,2010-06-27 10:17,admin,admin,,,
696,83609,764,10637,841,1,0,N,N,N,CP_Drtn,TT_Task,DT_FixedDUR2,RV_OK,TK_NotStart,A16840,slab for 1st floor,,88,0,72,0,0,0,72,0,0,0,,,,2010-10-09 08:00,2010-10-18 16:00,,2010-09-26 08:00,2010-10-05 16:00,2010-09-26 08:00,2010-10-05 16:00,2010-09-26 08:00,2010-10-05 16:00,,2010-10-09 08:00,2010-10-18 16:00,,PT_Normal,,,,,yasrYM+FS0uUttIqGTyBeg,L5eFzOuPuECCnmNAi0nizQ,,,N,0,0,,,2010-06-27 10:17,2010-06-27 10:17,admin,admin,,,
697,83610,764,10637,841,1,0,N,N,N,CP_Drtn,TT_Task,DT_FixedDUR2,RV_OK,TK_NotStart,A16850,columns for roof floor,,88,0,32,0,0,0,32,0,0,0,,,,2010-10-23 08:00,2010-10-26 16:00,,2010-10-10 08:00,2010-10-13 16:00,2010-10-10 08:00,2010-10-13 16:00,2010-10-10 08:00,2010-10-13 16:00,,2010-10-23 08:00,2010-10-26 16:00,,PT_Normal,,,,,So8zf7i65U+hLiOHPhoRJQ,4RhS0kPHAUqxmfrEOwkVdg,,,N,0,0,,,2010-06-27 10:17,2010-06-27 10:17,admin,admin,,,
698,83611,764,10637,841,1,0,N,N,N,CP_Drtn,TT_Task,DT_FixedDUR2,RV_OK,TK_NotStart,A16860,slab for roof floor,,88,0,48,0,0,0,48,0,0,0,,,,2010-10-27 08:00,2010-11-02 16:00,,2010-10-14 08:00,2010-10-20 16:00,2010-10-14 08:00,2010-10-20 16:00,2010-10-14 08:00,2010-10-20 16:00,,2010-10-27 08:00,2010-11-02 16:00,,PT_Normal,,,,,MJFFzTVuaEqzLykUeT//Tw,xY8+m5M03kiMhNDMaBGIdw,,,N,0,0,,,2010-06-27 10:17,2010-06-27 10:17,admin,admin,,,
699,83612,764,10637,841,1,0,N,N,N,CP_Drtn,TT_Task,DT_FixedDUR2,RV_OK,TK_NotStart,A16870,Brick works for ground floor,,144,0,40,0,0,0,40,0,0,0,,,,2010-10-21 08:00,2010-10-26 16:00,,2010-09-30 08:00,2010-10-05 16:00,2010-09-30 08:00,2010-10-05 16:00,2010-09-30 08:00,2010-10-05 16:00,,2010-10-21 08:00,2010-10-26 16:00,,PT_Normal,,,,,EMopJ8dlrkOKzGGw7+koMA,mANq9CHxlEuub3nJndFF1Q,,,N,0,0,,,2010-06-27 10:17,2010-06-27 10:17,admin,admin,,,
700,83613,764,10638,841,1,0,N,N,N,CP_Drtn,TT_Task,DT_FixedDrtn,RV_OK,TK_NotStart,A16880,electrical conduits for ground floor's slab,,80,8,16,0,0,0,16,0,0,0,,,,2010-09-23 08:00,2010-09-25 16:00,,2010-09-12 08:00,2010-09-13 16:00,2010-09-12 08:00,2010-09-13 16:00,2010-09-12 08:00,2010-09-13 16:00,,2010-09-23 08:00,2010-09-25 16:00,,PT_Normal,,,,,HXRT/aUhk0ah+UiZyTvOqg,qkaghGuGs0y8xDVp9MNAIg,,,N,0,0,,,2010-06-27 10:17,2010-06-27 10:17,admin,admin,,,
701,83614,764,10638,841,1,0,N,N,N,CP_Drtn,TT_Task,DT_FixedDrtn,RV_OK,TK_NotStart,A16890,electrical conduits for 1st floor slab,,96,8,16,0,0,0,16,0,0,0,,,,2010-10-14 08:00,2010-10-16 16:00,,2010-09-30 08:00,2010-10-02 16:00,2010-09-30 08:00,2010-10-02 16:00,2010-09-30 08:00,2010-10-02 16:00,,2010-10-14 08:00,2010-10-16 16:00,,PT_Normal,,,,,L85WJ0QGqUmU0MO2kDhy1g,tNoo/+NPg0O+X3OM6oTFUQ,,,N,0,0,,,2010-06-27 10:17,2010-06-27 10:17,admin,admin,,,
702,83615,764,10638,841,1,0,N,N,N,CP_Drtn,TT_Task,DT_FixedDrtn,RV_OK,TK_NotStart,A16900,electrical conduits for roof slab,,96,8,8,0,0,0,8,0,0,0,,,,2010-11-01 08:00,2010-11-01 16:00,,2010-10-18 08:00,2010-10-18 16:00,2010-10-18 08:00,2010-10-18 16:00,2010-10-18 08:00,2010-10-18 16:00,,2010-11-01 08:00,2010-11-01 16:00,,PT_Normal,,,,,GxfFQwRbUkWtu/NCyPdwrw,HI0eoljNhEq1gUOP32e2/A,,,N,0,0,,,2010-06-27 10:17,2010-06-27 10:17,admin,admin,,,
703,83616,764,10639,841,1,0,N,N,N,CP_Drtn,TT_Task,DT_FixedDUR2,RV_OK,TK_NotStart,A16910,Internal plastering for ground floor,,144,16,64,0,0,0,64,0,0,0,,,,2010-11-06 08:00,2010-11-14 16:00,,2010-10-16 08:00,2010-10-24 16:00,2010-10-16 08:00,2010-10-24 16:00,2010-10-16 08:00,2010-10-24 16:00,,2010-11-06 08:00,2010-11-14 16:00,,PT_Normal,,,,,gm9hhYTl20CLaIQs1UM8Ow,7LYO3LG2rUeGZNJxjbaRYQ,,,N,0,0,,,2010-06-27 10:17,2010-06-27 10:17,admin,admin,,,
704,83617,764,10639,841,1,0,N,N,N,CP_Drtn,TT_Task,DT_FixedDUR2,RV_OK,TK_NotStart,A16920,External plastering,,56,0,80,0,0,0,80,0,0,0,,,,2010-11-20 08:00,2010-11-30 16:00,,2010-11-07 08:00,2010-11-22 16:00,2010-11-07 08:00,2010-11-22 16:00,2010-11-07 08:00,2010-11-22 16:00,,2010-11-20 08:00,2010-11-30 16:00,,PT_Normal,,,,,VByMfHqgIEeSxzFCsPpo+w,ICL0UVpcIUudpw/80lsfyw,,,N,0,0,,,2010-06-27 10:17,2010-06-27 10:17,admin,admin,,,
705,83618,764,10638,841,1,0,N,N,N,CP_Drtn,TT_Task,DT_FixedDrtn,RV_OK,TK_NotStart,A16930,plumbing connections under slab on grade,,328,184,16,0,0,0,16,0,0,0,,,,2010-10-25 08:00,2010-10-26 16:00,,2010-09-05 08:00,2010-09-06 16:00,2010-09-05 08:00,2010-09-06 16:00,2010-09-05 08:00,2010-09-06 16:00,,2010-10-25 08:00,2010-10-26 16:00,,PT_Normal,,,,,c4Kndi3JFUe6PxHUZ5SgSQ,NyjwbqaKJkGtNX9JVwLQrQ,,,N,0,0,,,2010-06-27 10:17,2010-06-27 10:17,admin,admin,,,
706,83619,764,10634,841,0,0,N,N,N,CP_Drtn,TT_Mile,DT_FixedDrtn,RV_OK,TK_NotStart,A16940,Start Villa construction,,72,0,0,0,0,0,0,0,0,0,,,,2010-07-01 08:00,2010-07-01 08:00,,2010-06-21 08:00,2010-06-21 08:00,2010-06-21 08:00,2010-06-21 08:00,2010-06-21 08:00,2010-06-21 08:00,,2010-07-01 08:00,2010-07-01 08:00,,PT_Normal,,,,,nE9BZcRpz0OB1NIrhk779A,qn9EkcxsDEq7Prxg//SrvA,,,N,0,0,,,2010-06-27 10:17,2010-06-27 10:17,admin,admin,,,
707,83620,764,10634,841,0,0,N,N,N,CP_Drtn,TT_FinMile,DT_FixedDrtn,RV_OK,TK_NotStart,A16950,finish Villa construction,,56,56,0,0,0,0,0,0,0,0,,,,2010-11-30 16:00,2010-11-30 16:00,,2010-11-22 16:00,2010-11-22 16:00,2010-11-22 16:00,2010-11-22 16:00,2010-11-22 16:00,2010-11-22 16:00,,2010-11-30 16:00,2010-11-30 16:00,,PT_Normal,,,,,0oCcf7C6Okanl5M4DmapXQ,75JdUJQ0O02z/3t+L++1RQ,,,N,0,0,,,2010-06-27 10:17,2010-06-27 10:17,admin,admin,,,
708,83621,764,10634,841,0,0,N,N,N,CP_Drtn,TT_Mile,DT_FixedDrtn,RV_OK,TK_NotStart,A16960,IFC drawings,,72,0,0,0,0,0,0,0,0,0,,,,2010-07-01 08:00,2010-07-01 08:00,,2010-06-21 08:00,2010-06-21 08:00,2010-06-21 08:00,2010-06-21 08:00,2010-06-21 08:00,2010-06-21 08:00,,2010-07-01 08:00,2010-07-01 08:00,,PT_Normal,,,,,PQZTCOyHkk+0eMX5FaMkfA,2HDVsExtq0e1u5qMLN6ELA,,,N,0,0,,,2010-06-27 10:17,2010-06-27 10:17,admin,admin,,,
709,83622,764,10637,841,1,0,N,N,N,CP_Drtn,TT_Task,DT_FixedDUR2,RV_OK,TK_NotStart,A16970,pouring for ground floor's slab,,72,0,8,0,0,0,8,0,0,0,,,,2010-09-28 08:00,2010-09-28 16:00,,2010-09-18 08:00,2010-09-18 16:00,2010-09-18 08:00,2010-09-18 16:00,2010-09-18 08:00,2010-09-18 16:00,,2010-09-28 08:00,2010-09-28 16:00,,PT_Normal,,,,,3NCrbS+NqEqQwd9bmN3xKg,qTvs2Hr5Tkiev/9vswcoAw,,,N,0,0,,,2010-06-27 10:17,2010-06-27 10:17,admin,admin,,,
710,83623,764,10637,841,1,0,N,N,N,CP_Drtn,TT_Task,DT_FixedDUR2,RV_OK,TK_NotStart,A16980,pouring for 1st floor's slab,,88,0,8,0,0,0,8,0,0,0,,,,2010-10-19 08:00,2010-10-19 16:00,,2010-10-06 08:00,2010-10-06 16:00,2010-10-06 08:00,2010-10-06 16:00,2010-10-06 08:00,2010-10-06 16:00,,2010-10-19 08:00,2010-10-19 16:00,,PT_Normal,,,,,EVNiCiL32EapyKaYKwWkwg,ledZYFyG8kGg8HJfsgJgCA,,,N,0,0,,,2010-06-27 10:17,2010-06-27 10:17,admin,admin,,,
711,83624,764,10637,841,1,0,N,N,N,CP_Drtn,TT_Task,DT_FixedDUR2,RV_OK,TK_NotStart,A16990,pouring for roof floor's slab,,88,0,8,0,0,0,8,0,0,0,,,,2010-11-03 08:00,2010-11-03 16:00,,2010-10-21 08:00,2010-10-21 16:00,2010-10-21 08:00,2010-10-21 16:00,2010-10-21 08:00,2010-10-21 16:00,,2010-11-03 08:00,2010-11-03 16:00,,PT_Normal,,,,,d5EUE+homkeFGGNOuXnVyQ,M9893zCY2kCy1DW+X47xCQ,,,N,0,0,,,2010-06-27 10:17,2010-06-27 10:17,admin,admin,,,
712,83625,764,10637,841,1,0,N,N,N,CP_Drtn,TT_Task,DT_FixedDrtn,RV_OK,TK_NotStart,A17000,Fence work,,72,16,400,0,0,0,400,0,0,0,,,,2010-09-29 08:00,2010-11-30 16:00,,2010-09-19 08:00,2010-11-20 16:00,2010-09-19 08:00,2010-11-20 16:00,2010-09-19 08:00,2010-11-20 16:00,,2010-09-29 08:00,2010-11-30 16:00,,PT_Normal,,,,,GhAFvoXAVEye4knd/Zh/IQ,PUd0XcLXP06VoV2srJu2fA,,,N,0,0,,,2010-06-27 10:17,2010-06-27 10:17,admin,admin,,,
713,83626,764,10634,841,1,0,N,N,N,CP_Drtn,TT_Task,DT_FixedDUR2,RV_OK,TK_NotStart,A17010,Fence Drawings IFC,,584,512,8,0,0,0,8,0,0,0,,,,2010-09-16 08:00,2010-09-16 16:00,,2010-06-21 08:00,2010-06-21 16:00,2010-06-21 08:00,2010-06-21 16:00,2010-06-21 08:00,2010-06-21 16:00,,2010-09-16 08:00,2010-09-16 16:00,,PT_Normal,,,,,ZVoN3z6MMkqlRF6JesZjJw,Gp+eoIeVoUaAyIX/lXkfSA,,,N,0,0,,,2010-06-27 10:17,2010-06-27 10:17,admin,admin,,,
714,83627,764,10636,849,1,0,N,N,N,CP_Drtn,TT_Task,DT_FixedDUR2,RV_OK,TK_NotStart,A17020,backfilling between P.C Foundation,,72,0,16,0,0,0,16,0,0,0,,,,2010-08-18 08:00,2010-08-19 16:00,,2010-08-08 08:00,2010-08-09 16:00,2010-08-08 08:00,2010-08-09 16:00,2010-08-08 08:00,2010-08-09 16:00,,2010-08-18 08:00,2010-08-19 16:00,,PT_Normal,,,,,ed4UUB9dS0yuXNCyd3GaZQ,puHSZL/n0U6BLnZUjer/Pw,,,N,0,0,,,2010-06-27 10:17,2010-06-27 10:17,admin,admin,,,
715,83628,764,10636,849,1,0,N,N,N,CP_Drtn,TT_Task,DT_FixedDUR2,RV_OK,TK_NotStart,A17030,P.C Under Smells,,72,0,8,0,0,0,8,0,0,0,,,,2010-08-21 08:00,2010-08-21 16:00,,2010-08-10 08:00,2010-08-10 16:00,2010-08-10 08:00,2010-08-10 16:00,2010-08-10 08:00,2010-08-10 16:00,,2010-08-21 08:00,2010-08-21 16:00,,PT_Normal,,,,,Mmuqbwn0mE2HDkZxBzQQow,pUA2mBBfYkiqwVkZrquj6A,,,N,0,0,,,2010-06-27 10:17,2010-06-27 10:17,admin,admin,,,
716,83629,764,10637,849,1,0,N,N,N,CP_Drtn,TT_Task,DT_FixedDUR2,RV_OK,TK_NotStart,A17040,Brick works for 1st floor,,136,0,40,0,0,0,40,0,0,0,,,,2010-11-08 08:00,2010-11-13 16:00,,2010-10-19 08:00,2010-10-24 16:00,2010-10-19 08:00,2010-10-24 16:00,2010-10-19 08:00,2010-10-24 16:00,,2010-11-08 08:00,2010-11-13 16:00,,PT_Normal,,,,,E1QyevJRv0KFj5mVFIbrKw,mwlwVq1zB0mZYXFWcqe9bw,,,N,0,0,,,2010-06-27 10:17,2010-06-27 10:17,admin,admin,,,
717,83630,764,10637,849,1,0,N,N,N,CP_Drtn,TT_Task,DT_FixedDUR2,RV_OK,TK_NotStart,A17050,Brick works for roof floor,,88,0,40,0,0,0,40,0,0,0,,,,2010-11-14 08:00,2010-11-18 16:00,,2010-11-01 08:00,2010-11-06 16:00,2010-11-01 08:00,2010-11-06 16:00,2010-11-01 08:00,2010-11-06 16:00,,2010-11-14 08:00,2010-11-18 16:00,,PT_Normal,,,,,sRnDoim0wUyGmHvhRSCguA,mLQS+UkpLkOKqebXcXCMFw,,,N,0,0,,,2010-06-27 10:17,2010-06-27 10:17,admin,admin,,,
718,83631,764,10639,849,1,0,N,N,N,CP_Drtn,TT_Task,DT_FixedDUR2,RV_OK,TK_NotStart,A17060,Internal plastering for 1st floor,,136,24,64,0,0,0,64,0,0,0,,,,2010-11-16 08:00,2010-11-24 16:00,,2010-10-27 08:00,2010-11-04 16:00,2010-10-27 08:00,2010-11-04 16:00,2010-10-27 08:00,2010-11-04 16:00,,2010-11-16 08:00,2010-11-24 16:00,,PT_Normal,,,,,1EWv8m31uEeYsgbDFLONTQ,4usfBrmreESKmsjS3yKTeg,,,N,0,0,,,2010-06-27 10:17,2010-06-27 10:17,admin,admin,,,
719,83632,764,10639,849,1,0,N,N,N,CP_Drtn,TT_Task,DT_FixedDUR2,RV_OK,TK_NotStart,A17070,Internal plastering for roof floor,,112,56,40,0,0,0,40,0,0,0,,,,2010-11-25 08:00,2010-11-30 16:00,,2010-11-09 08:00,2010-11-14 16:00,2010-11-09 08:00,2010-11-14 16:00,2010-11-09 08:00,2010-11-14 16:00,,2010-11-25 08:00,2010-11-30 16:00,,PT_Normal,,,,,CKiskZUT9kWe4FCg/CpKzA,wpqax4d/lkSsNS/3R6RFcQ,,,N,0,0,,,2010-06-27 10:17,2010-06-27 10:17,admin,admin,,,
720,83633,764,10638,849,1,0,N,N,N,CP_Drtn,TT_Task,DT_FixedDUR2,RV_OK,TK_NotStart,A17080,electrical conduits for ground floor walls,,144,0,16,0,0,0,16,0,0,0,,,,2010-11-03 08:00,2010-11-04 16:00,,2010-10-13 08:00,2010-10-14 16:00,2010-10-13 08:00,2010-10-14 16:00,2010-10-13 08:00,2010-10-14 16:00,,2010-11-03 08:00,2010-11-04 16:00,,PT_Normal,,,,,22Ot8rYdzk6vVfPdVdLS2w,GqxzRXTw50WhgeOsWqay1Q,,,N,0,0,,,2010-06-27 10:17,2010-06-27 10:17,admin,admin,,,
721,83634,764,10638,849,1,0,N,N,N,CP_Drtn,TT_Task,DT_FixedDUR2,RV_OK,TK_NotStart,A17090,electrical conduits for 1st floor walls,,136,0,16,0,0,0,16,0,0,0,,,,2010-11-14 08:00,2010-11-15 16:00,,2010-10-25 08:00,2010-10-26 16:00,2010-10-25 08:00,2010-10-26 16:00,2010-10-25 08:00,2010-10-26 16:00,,2010-11-14 08:00,2010-11-15 16:00,,PT_Normal,,,,,xYjBIqosd0CrJe7k/hS6/w,DYD7I1uJ1EaaVzuO/Arxrw,,,N,0,0,,,2010-06-27 10:17,2010-06-27 10:17,admin,admin,,,
722,83635,764,10638,849,1,0,N,N,N,CP_Drtn,TT_Task,DT_FixedDUR2,RV_OK,TK_NotStart,A17100,electrical conduits for roof floor walls,,112,0,16,0,0,0,16,0,0,0,,,,2010-11-23 08:00,2010-11-24 16:00,,2010-11-07 08:00,2010-11-08 16:00,2010-11-07 08:00,2010-11-08 16:00,2010-11-07 08:00,2010-11-08 16:00,,2010-11-23 08:00,2010-11-24 16:00,,PT_Normal,,,,,WQGCq7ylzkaj/KFPTALeUA,9FyEVWb44Uq3KXFnN73aPw,,,N,0,0,,,2010-06-27 10:17,2010-06-27 10:17,admin,admin,,,
723,83636,764,10642,841,1,0,N,N,N,CP_Drtn,TT_Task,DT_FixedDUR2,RV_OK,TK_NotStart,A17110,excavation,,0,0,80,0,0,0,80,0,0,0,,,,2010-07-20 08:00,2010-07-31 16:00,,2010-07-20 08:00,2010-07-31 16:00,2010-07-20 08:00,2010-07-31 16:00,2010-07-20 08:00,2010-07-31 16:00,,2010-07-20 08:00,2010-07-31 16:00,,PT_Normal,,,,,PCLVhRktWUGN9E/LDCVwtw,xpIrArW2LkeP6Md9A5acuw,,,Y,0,0,,,2010-06-27 10:17,2010-06-27 10:17,admin,admin,,,
724,83637,764,10642,841,1,0,N,N,N,CP_Drtn,TT_Task,DT_FixedDUR2,RV_OK,TK_NotStart,A17120,soil replacement,,0,0,96,0,0,0,96,0,0,0,,,,2010-08-01 08:00,2010-08-14 16:00,,2010-08-01 08:00,2010-08-14 16:00,2010-08-01 08:00,2010-08-14 16:00,2010-08-01 08:00,2010-08-14 16:00,,2010-08-01 08:00,2010-08-14 16:00,,PT_Normal,,,,,Vakd3MsJyEqp7BGx6jTbeA,Wrp+uILxS0KONhsAk7Caxw,,,Y,0,0,,,2010-06-27 10:17,2010-06-27 10:17,admin,admin,,,
725,83638,764,10643,841,1,0,N,N,N,CP_Drtn,TT_Task,DT_FixedDUR2,RV_OK,TK_NotStart,A17130,Plain Concrete Foundation,,0,0,16,0,0,0,16,0,0,0,,,,2010-08-15 08:00,2010-08-16 16:00,,2010-08-15 08:00,2010-08-16 16:00,2010-08-15 08:00,2010-08-16 16:00,2010-08-15 08:00,2010-08-16 16:00,,2010-08-15 08:00,2010-08-16 16:00,,PT_Normal,,,,,kM/0LzhM+0q5vZLyreTJeA,5P/qRrn8G0KGtvZlZvi7Rw,,,Y,0,0,,,2010-06-27 10:17,2010-06-27 10:17,admin,admin,,,
726,83639,764,10643,841,1,0,N,N,N,CP_Drtn,TT_Task,DT_FixedDUR2,RV_OK,TK_NotStart,A17140,Reinforced Concrete Foundation,,0,0,56,0,0,0,56,0,0,0,,,,2010-08-22 08:00,2010-08-29 16:00,,2010-08-22 08:00,2010-08-29 16:00,2010-08-22 08:00,2010-08-29 16:00,2010-08-22 08:00,2010-08-29 16:00,,2010-08-22 08:00,2010-08-29 16:00,,PT_Normal,,,,,febOJFF5FUim/3RQ54AUEw,1KpFclH2jE+5N0OtVbpNUA,,,Y,0,0,,,2010-06-27 10:17,2010-06-27 10:17,admin,admin,,,
727,83640,764,10643,841,1,0,N,N,N,CP_Drtn,TT_Task,DT_FixedDUR2,RV_OK,TK_NotStart,A17150,under ground  brick works,,0,0,16,0,0,0,16,0,0,0,,,,2010-09-06 08:00,2010-09-07 16:00,,2010-09-06 08:00,2010-09-07 16:00,2010-09-06 08:00,2010-09-07 16:00,2010-09-06 08:00,2010-09-07 16:00,,2010-09-06 08:00,2010-09-07 16:00,,PT_Normal,,,,,Lu+hCrnoiUm7z7vEmm84Iw,7mHNdJlkskGxu6/jgE8Syw,,,Y,0,0,,,2010-06-27 10:17,2010-06-27 10:17,admin,admin,,,
728,83641,764,10643,841,1,0,N,N,N,CP_Drtn,TT_Task,DT_FixedDUR2,RV_OK,TK_NotStart,A17160,under ground insulation for RC & Brick work,,0,0,16,0,0,0,16,0,0,0,,,,2010-09-11 08:00,2010-09-12 16:00,,2010-09-11 08:00,2010-09-12 16:00,2010-09-11 08:00,2010-09-12 16:00,2010-09-11 08:00,2010-09-12 16:00,,2010-09-11 08:00,2010-09-12 16:00,,PT_Normal,,,,,UeGFd8T3ok6ew2aB7ImSeg,Aw7cDPRsgkqvOFMt3z7ceA,,,Y,0,0,,,2010-06-27 10:17,2010-06-27 10:17,admin,admin,,,
729,83642,764,10643,841,1,0,N,N,N,CP_Drtn,TT_Task,DT_FixedDUR2,RV_OK,TK_NotStart,A17170,backfilling for under ground,,0,0,32,0,0,0,32,0,0,0,,,,2010-09-13 08:00,2010-09-16 16:00,,2010-09-13 08:00,2010-09-16 16:00,2010-09-13 08:00,2010-09-16 16:00,2010-09-13 08:00,2010-09-16 16:00,,2010-09-13 08:00,2010-09-16 16:00,,PT_Normal,,,,,aNOiE2utE060AtOSC/t0Yw,TAm/kp7CMU+ZsA6s8gaGwQ,,,Y,0,0,,,2010-06-27 10:17,2010-06-27 10:17,admin,admin,,,
730,83643,764,10643,841,1,0,N,N,N,CP_Drtn,TT_Task,DT_FixedDUR2,RV_OK,TK_NotStart,A17180,P.C slab on grade 10CM,,72,0,8,0,0,0,8,0,0,0,,,,2010-10-27 08:00,2010-10-27 16:00,,2010-10-17 08:00,2010-10-17 16:00,2010-10-17 08:00,2010-10-17 16:00,2010-10-17 08:00,2010-10-17 16:00,,2010-10-27 08:00,2010-10-27 16:00,,PT_Normal,,,,,KwkykevxrEOsYCd2x7eBXQ,t/h1vrvLCUC1Nwb1N2cMpw,,,N,0,0,,,2010-06-27 10:17,2010-06-27 10:17,admin,admin,,,
731,83644,764,10643,841,1,0,N,N,N,CP_Drtn,TT_Task,DT_FixedDUR2,RV_OK,TK_NotStart,A17190,moisture insulation with membrane sheets,,72,0,16,0,0,0,16,0,0,0,,,,2010-10-28 08:00,2010-10-30 16:00,,2010-10-18 08:00,2010-10-19 16:00,2010-10-18 08:00,2010-10-19 16:00,2010-10-18 08:00,2010-10-19 16:00,,2010-10-28 08:00,2010-10-30 16:00,,PT_Normal,,,,,S4XhftikDU+RqJGuOJBcUA,W05Kz15h00CCtrqxF9ThmQ,,,N,0,0,,,2010-06-27 10:17,2010-06-27 10:17,admin,admin,,,
732,83645,764,10643,841,1,0,N,N,N,CP_Drtn,TT_Task,DT_FixedDUR2,RV_OK,TK_NotStart,A17200,R.C slab on grade,,72,0,16,0,0,0,16,0,0,0,,,,2010-10-31 08:00,2010-11-01 16:00,,2010-10-20 08:00,2010-10-21 16:00,2010-10-20 08:00,2010-10-21 16:00,2010-10-20 08:00,2010-10-21 16:00,,2010-10-31 08:00,2010-11-01 16:00,,PT_Normal,,,,,/ZfsA8MmZ02ZBw4iNyAEiQ,Xf3dWA/Z4kazRKTEoJbU1Q,,,N,0,0,,,2010-06-27 10:17,2010-06-27 10:17,admin,admin,,,
733,83646,764,10644,841,1,0,N,N,N,CP_Drtn,TT_Task,DT_FixedDUR2,RV_OK,TK_NotStart,A17210,columns for ground floor,,0,0,48,0,0,0,48,0,0,0,,,,2010-08-30 08:00,2010-09-05 16:00,,2010-08-30 08:00,2010-09-05 16:00,2010-08-30 08:00,2010-09-05 16:00,2010-08-30 08:00,2010-09-05 16:00,,2010-08-30 08:00,2010-09-05 16:00,,PT_Normal,,,,,cRv7hYIK5EOfYkMGEy/JtQ,zvqE06Ax80+FDqIdXC8lhg,,,Y,0,0,,,2010-06-27 10:17,2010-06-27 10:17,admin,admin,,,
734,83647,764,10644,841,1,0,N,N,N,CP_Drtn,TT_Task,DT_FixedDUR2,RV_OK,TK_NotStart,A17220,slab for ground floor,,0,0,72,0,0,0,72,0,0,0,,,,2010-09-18 08:00,2010-09-27 16:00,,2010-09-18 08:00,2010-09-27 16:00,2010-09-18 08:00,2010-09-27 16:00,2010-09-18 08:00,2010-09-27 16:00,,2010-09-18 08:00,2010-09-27 16:00,,PT_Normal,,,,,kYw+i4xL4EueA7NOLVts9Q,b6VgE5AxHUK6VuwTj7w6AQ,,,Y,0,0,,,2010-06-27 10:17,2010-06-27 10:17,admin,admin,,,
735,83648,764,10644,841,1,0,N,N,N,CP_Drtn,TT_Task,DT_FixedDUR2,RV_OK,TK_NotStart,A17230,columns for 1st floor,,16,0,48,0,0,0,48,0,0,0,,,,2010-10-02 08:00,2010-10-07 16:00,,2010-09-29 08:00,2010-10-05 16:00,2010-09-29 08:00,2010-10-05 16:00,2010-09-29 08:00,2010-10-05 16:00,,2010-10-02 08:00,2010-10-07 16:00,,PT_Normal,,,,,l36pynfkzkiEZvJSut13Aw,XNPaD7XszkameGKcs/u5Lg,,,Y,0,0,,,2010-06-27 10:17,2010-06-27 10:17,admin,admin,,,
736,83649,764,10644,841,1,0,N,N,N,CP_Drtn,TT_Task,DT_FixedDUR2,RV_OK,TK_NotStart,A17240,slab for 1st floor,,16,0,72,0,0,0,72,0,0,0,,,,2010-10-09 08:00,2010-10-18 16:00,,2010-10-06 08:00,2010-10-16 16:00,2010-10-06 08:00,2010-10-16 16:00,2010-10-06 08:00,2010-10-16 16:00,,2010-10-09 08:00,2010-10-18 16:00,,PT_Normal,,,,,jqoMHpm3rU28+0tRZG67iA,7uQU7/ePskeeZnsotjj3HA,,,Y,0,0,,,2010-06-27 10:17,2010-06-27 10:17,admin,admin,,,
737,83650,764,10644,841,1,0,N,N,N,CP_Drtn,TT_Task,DT_FixedDUR2,RV_OK,TK_NotStart,A17250,columns for roof floor,,16,0,32,0,0,0,32,0,0,0,,,,2010-10-23 08:00,2010-10-26 16:00,,2010-10-20 08:00,2010-10-24 16:00,2010-10-20 08:00,2010-10-24 16:00,2010-10-20 08:00,2010-10-24 16:00,,2010-10-23 08:00,2010-10-26 16:00,,PT_Normal,,,,,eGVq1IKQqEuAm30T3mypVw,3KkhoU2ZzEuG5iL2V7K0MQ,,,Y,0,0,,,2010-06-27 10:17,2010-06-27 10:17,admin,admin,,,
738,83651,764,10644,841,1,0,N,N,N,CP_Drtn,TT_Task,DT_FixedDUR2,RV_OK,TK_NotStart,A17260,slab for roof floor,,16,0,48,0,0,0,48,0,0,0,,,,2010-10-27 08:00,2010-11-02 16:00,,2010-10-25 08:00,2010-10-31 16:00,2010-10-25 08:00,2010-10-31 16:00,2010-10-25 08:00,2010-10-31 16:00,,2010-10-27 08:00,2010-11-02 16:00,,PT_Normal,,,,,4m95i0qoAEC3OfRpQqAMFg,M9tBQnmhV0yfHErzKn87Ew,,,Y,0,0,,,2010-06-27 10:17,2010-06-27 10:17,admin,admin,,,
739,83652,764,10644,841,1,0,N,N,N,CP_Drtn,TT_Task,DT_FixedDUR2,RV_OK,TK_NotStart,A17270,Brick works for ground floor,,72,0,40,0,0,0,40,0,0,0,,,,2010-10-21 08:00,2010-10-26 16:00,,2010-10-11 08:00,2010-10-16 16:00,2010-10-11 08:00,2010-10-16 16:00,2010-10-11 08:00,2010-10-16 16:00,,2010-10-21 08:00,2010-10-26 16:00,,PT_Normal,,,,,i169MnX9H0q+q8jkBFcl/g,QGQqPobFt0CpF1wkhmqXkA,,,N,0,0,,,2010-06-27 10:17,2010-06-27 10:17,admin,admin,,,
740,83653,764,10645,841,1,0,N,N,N,CP_Drtn,TT_Task,DT_FixedDrtn,RV_OK,TK_NotStart,A17280,electrical conduits for ground floor's slab,,8,8,16,0,0,0,16,0,0,0,,,,2010-09-23 08:00,2010-09-25 16:00,,2010-09-22 08:00,2010-09-23 16:00,2010-09-22 08:00,2010-09-23 16:00,2010-09-22 08:00,2010-09-23 16:00,,2010-09-23 08:00,2010-09-25 16:00,,PT_Normal,,,,,yqkLQfUJnUCe5Um5Oqaf9w,46okozi8WEGH2+MU1N/mzQ,,,N,0,0,,,2010-06-27 10:17,2010-06-27 10:17,admin,admin,,,
741,83654,764,10645,841,1,0,N,N,N,CP_Drtn,TT_Task,DT_FixedDrtn,RV_OK,TK_NotStart,A17290,electrical conduits for 1st floor slab,,24,8,16,0,0,0,16,0,0,0,,,,2010-10-14 08:00,2010-10-16 16:00,,2010-10-11 08:00,2010-10-12 16:00,2010-10-11 08:00,2010-10-12 16:00,2010-10-11 08:00,2010-10-12 16:00,,2010-10-14 08:00,2010-10-16 16:00,,PT_Normal,,,,,BK3M7ytYDUuH5mMpFE2fXQ,5lOsXnpbZEOrQXwJwsSzBw,,,N,0,0,,,2010-06-27 10:17,2010-06-27 10:17,admin,admin,,,
742,83655,764,10645,841,1,0,N,N,N,CP_Drtn,TT_Task,DT_FixedDrtn,RV_OK,TK_NotStart,A17300,electrical conduits for roof slab,,24,8,8,0,0,0,8,0,0,0,,,,2010-11-01 08:00,2010-11-01 16:00,,2010-10-28 08:00,2010-10-28 16:00,2010-10-28 08:00,2010-10-28 16:00,2010-10-28 08:00,2010-10-28 16:00,,2010-11-01 08:00,2010-11-01 16:00,,PT_Normal,,,,,J0kFLjqwp0StbaOwcQAtXA,av9K10b8oEWwpMijtCiqWg,,,N,0,0,,,2010-06-27 10:17,2010-06-27 10:17,admin,admin,,,
743,83656,764,10646,841,1,0,N,N,N,CP_Drtn,TT_Task,DT_FixedDUR2,RV_OK,TK_NotStart,A17310,Internal plastering for ground floor,,72,16,64,0,0,0,64,0,0,0,,,,2010-11-06 08:00,2010-11-14 16:00,,2010-10-26 08:00,2010-11-03 16:00,2010-10-26 08:00,2010-11-03 16:00,2010-10-26 08:00,2010-11-03 16:00,,2010-11-06 08:00,2010-11-14 16:00,,PT_Normal,,,,,FNNU7RvMykuteE64Q0ab0w,uPJIOExc20K62UL/ZKS9aQ,,,N,0,0,,,2010-06-27 10:17,2010-06-27 10:17,admin,admin,,,
744,83657,764,10646,841,1,0,N,N,N,CP_Drtn,TT_Task,DT_FixedDUR2,RV_OK,TK_NotStart,A17320,External plastering,,0,0,80,0,0,0,80,0,0,0,,,,2010-11-20 08:00,2010-11-30 16:00,,2010-11-20 08:00,2010-11-30 16:00,2010-11-20 08:00,2010-11-30 16:00,2010-11-20 08:00,2010-11-30 16:00,,2010-11-20 08:00,2010-11-30 16:00,,PT_Normal,,,,,RUpZfn/thE+Xje6S23zUDg,FvRR4yePN0mH/wxUyRPdhA,,,Y,0,0,,,2010-06-27 10:17,2010-06-27 10:17,admin,admin,,,
745,83658,764,10645,841,1,0,N,N,N,CP_Drtn,TT_Task,DT_FixedDrtn,RV_OK,TK_NotStart,A17330,plumbing connections under slab on grade,,256,184,16,0,0,0,16,0,0,0,,,,2010-10-25 08:00,2010-10-26 16:00,,2010-09-18 08:00,2010-09-19 16:00,2010-09-18 08:00,2010-09-19 16:00,2010-09-18 08:00,2010-09-19 16:00,,2010-10-25 08:00,2010-10-26 16:00,,PT_Normal,,,,,bP4Hke6ebUeB6e52TFPOhg,j9KAFraTzEKuJli1ErsDUA,,,N,0,0,,,2010-06-27 10:17,2010-06-27 10:17,admin,admin,,,
746,83659,764,10641,841,0,0,N,N,N,CP_Drtn,TT_Mile,DT_FixedDrtn,RV_OK,TK_NotStart,A17340,Start Villa construction,,0,0,0,0,0,0,0,0,0,0,,,,2010-06-21 08:00,2010-06-21 08:00,,2010-06-21 08:00,2010-06-21 08:00,2010-06-21 08:00,2010-06-21 08:00,2010-06-21 08:00,2010-06-21 08:00,,2010-06-21 08:00,2010-06-21 08:00,,PT_Normal,,,,,ulz50LaZHEChCl5GaFGSuA,IK6NMQYkpE6WdRQQgp4y/A,,,Y,0,0,,,2010-06-27 10:17,2010-06-27 10:17,admin,admin,,,
747,83660,764,10641,841,0,0,N,N,N,CP_Drtn,TT_FinMile,DT_FixedDrtn,RV_OK,TK_NotStart,A17350,finish Villa construction,,0,0,0,0,0,0,0,0,0,0,,,,2010-11-30 16:00,2010-11-30 16:00,,2010-11-30 16:00,2010-11-30 16:00,2010-11-30 16:00,2010-11-30 16:00,2010-11-30 16:00,2010-11-30 16:00,,2010-11-30 16:00,2010-11-30 16:00,,PT_Normal,,,,,p+jVTGJ7ukGccTchI0cT/A,9D5MPkjKqUG790+2S8kcyg,,,Y,0,0,,,2010-06-27 10:17,2010-06-27 10:17,admin,admin,,,
748,83661,764,10641,841,0,0,N,N,N,CP_Drtn,TT_Mile,DT_FixedDrtn,RV_OK,TK_NotStart,A17360,IFC drawings,,0,0,0,0,0,0,0,0,0,0,,,,2010-06-21 08:00,2010-06-21 08:00,,2010-06-21 08:00,2010-06-21 08:00,2010-06-21 08:00,2010-06-21 08:00,2010-06-21 08:00,2010-06-21 08:00,,2010-06-21 08:00,2010-06-21 08:00,,PT_Normal,,,,,d2eWcLptDkOvdct+eyFsnw,tinbWYnhU0edL712vdp1VQ,,,Y,0,0,,,2010-06-27 10:17,2010-06-27 10:17,admin,admin,,,
749,83662,764,10644,841,1,0,N,N,N,CP_Drtn,TT_Task,DT_FixedDUR2,RV_OK,TK_NotStart,A17370,pouring for ground floor's slab,,0,0,8,0,0,0,8,0,0,0,,,,2010-09-28 08:00,2010-09-28 16:00,,2010-09-28 08:00,2010-09-28 16:00,2010-09-28 08:00,2010-09-28 16:00,2010-09-28 08:00,2010-09-28 16:00,,2010-09-28 08:00,2010-09-28 16:00,,PT_Normal,,,,,Z4zGAA6LTky/3da9tsqrrw,7Xq8rR3Ym0O6scZXonbuKQ,,,Y,0,0,,,2010-06-27 10:17,2010-06-27 10:17,admin,admin,,,
750,83663,764,10644,841,1,0,N,N,N,CP_Drtn,TT_Task,DT_FixedDUR2,RV_OK,TK_NotStart,A17380,pouring for 1st floor's slab,,16,0,8,0,0,0,8,0,0,0,,,,2010-10-19 08:00,2010-10-19 16:00,,2010-10-17 08:00,2010-10-17 16:00,2010-10-17 08:00,2010-10-17 16:00,2010-10-17 08:00,2010-10-17 16:00,,2010-10-19 08:00,2010-10-19 16:00,,PT_Normal,,,,,BbzQ08OBdkGVPwAR4xgmKg,ZsHqprKcXUiscCSCpoBzrA,,,Y,0,0,,,2010-06-27 10:17,2010-06-27 10:17,admin,admin,,,
751,83664,764,10644,841,1,0,N,N,N,CP_Drtn,TT_Task,DT_FixedDUR2,RV_OK,TK_NotStart,A17390,pouring for roof floor's slab,,16,0,8,0,0,0,8,0,0,0,,,,2010-11-03 08:00,2010-11-03 16:00,,2010-11-01 08:00,2010-11-01 16:00,2010-11-01 08:00,2010-11-01 16:00,2010-11-01 08:00,2010-11-01 16:00,,2010-11-03 08:00,2010-11-03 16:00,,PT_Normal,,,,,T9Gg3zch1UiIsZDaCr2VVw,rPtdArb6EUOPJxmaQKLNsQ,,,Y,0,0,,,2010-06-27 10:17,2010-06-27 10:17,admin,admin,,,
752,83665,764,10644,841,1,0,N,N,N,CP_Drtn,TT_Task,DT_FixedDrtn,RV_OK,TK_NotStart,A17400,Fence work,,0,0,400,0,0,0,400,0,0,0,,,,2010-09-29 08:00,2010-11-30 16:00,,2010-09-29 08:00,2010-11-30 16:00,2010-09-29 08:00,2010-11-30 16:00,2010-09-29 08:00,2010-11-30 16:00,,2010-09-29 08:00,2010-11-30 16:00,,PT_Normal,,,,,63aBF6vQwUObZqeulRJVMw,2fR19rh50kOmzZGZdvBL+g,,,Y,0,0,,,2010-06-27 10:17,2010-06-27 10:17,admin,admin,,,
753,83666,764,10641,841,1,0,N,N,N,CP_Drtn,TT_Task,DT_FixedDUR2,RV_OK,TK_NotStart,A17410,Fence Drawings IFC,,584,584,8,0,0,0,8,0,0,0,,,,2010-09-16 08:00,2010-09-16 16:00,,2010-06-21 08:00,2010-06-21 16:00,2010-06-21 08:00,2010-06-21 16:00,2010-06-21 08:00,2010-06-21 16:00,,2010-09-16 08:00,2010-09-16 16:00,,PT_Normal,,,,,p/sS9dzk3kSmR4UO0xy0mQ,BQd3Ly8KZk+X956Tg0zFaQ,,,N,0,0,,,2010-06-27 10:17,2010-06-27 10:17,admin,admin,,,
754,83667,764,10643,849,1,0,N,N,N,CP_Drtn,TT_Task,DT_FixedDUR2,RV_OK,TK_NotStart,A17420,backfilling between P.C Foundation,,0,0,16,0,0,0,16,0,0,0,,,,2010-08-18 08:00,2010-08-19 16:00,,2010-08-18 08:00,2010-08-19 16:00,2010-08-18 08:00,2010-08-19 16:00,2010-08-18 08:00,2010-08-19 16:00,,2010-08-18 08:00,2010-08-19 16:00,,PT_Normal,,,,,n9dTg5cPQkq09NHN9OL8oA,VTZuVjVjxkyNuj8a/FRcsw,,,Y,0,0,,,2010-06-27 10:17,2010-06-27 10:17,admin,admin,,,
755,83668,764,10643,849,1,0,N,N,N,CP_Drtn,TT_Task,DT_FixedDUR2,RV_OK,TK_NotStart,A17430,P.C Under Smells,,0,0,8,0,0,0,8,0,0,0,,,,2010-08-21 08:00,2010-08-21 16:00,,2010-08-21 08:00,2010-08-21 16:00,2010-08-21 08:00,2010-08-21 16:00,2010-08-21 08:00,2010-08-21 16:00,,2010-08-21 08:00,2010-08-21 16:00,,PT_Normal,,,,,kW3FdXYdskuA9+9UEO3wiw,DRgFwV0Ggky3NdLQM/ohqQ,,,Y,0,0,,,2010-06-27 10:17,2010-06-27 10:17,admin,admin,,,
756,83669,764,10644,849,1,0,N,N,N,CP_Drtn,TT_Task,DT_FixedDUR2,RV_OK,TK_NotStart,A17440,Brick works for 1st floor,,64,0,40,0,0,0,40,0,0,0,,,,2010-11-08 08:00,2010-11-13 16:00,,2010-10-30 08:00,2010-11-03 16:00,2010-10-30 08:00,2010-11-03 16:00,2010-10-30 08:00,2010-11-03 16:00,,2010-11-08 08:00,2010-11-13 16:00,,PT_Normal,,,,,6JlcbwS9AU6CqHodtHcWCQ,D/Sy0ieXUkiVlrhBs2NZsw,,,N,0,0,,,2010-06-27 10:17,2010-06-27 10:17,admin,admin,,,
757,83670,764,10644,849,1,0,N,N,N,CP_Drtn,TT_Task,DT_FixedDUR2,RV_OK,TK_NotStart,A17450,Brick works for roof floor,,16,0,40,0,0,0,40,0,0,0,,,,2010-11-14 08:00,2010-11-18 16:00,,2010-11-11 08:00,2010-11-16 16:00,2010-11-11 08:00,2010-11-16 16:00,2010-11-11 08:00,2010-11-16 16:00,,2010-11-14 08:00,2010-11-18 16:00,,PT_Normal,,,,,3AmkgiJiHEiL91L5CwrsCA,mE34MiVZME+CZtXRQwGhPQ,,,Y,0,0,,,2010-06-27 10:17,2010-06-27 10:17,admin,admin,,,
758,83671,764,10646,849,1,0,N,N,N,CP_Drtn,TT_Task,DT_FixedDUR2,RV_OK,TK_NotStart,A17460,Internal plastering for 1st floor,,64,24,64,0,0,0,64,0,0,0,,,,2010-11-16 08:00,2010-11-24 16:00,,2010-11-07 08:00,2010-11-15 16:00,2010-11-07 08:00,2010-11-15 16:00,2010-11-07 08:00,2010-11-15 16:00,,2010-11-16 08:00,2010-11-24 16:00,,PT_Normal,,,,,tfAMKlJaCECQHtJSz2V4tQ,kaC+W5T/Pk2Z/AfCp0RbRA,,,N,0,0,,,2010-06-27 10:17,2010-06-27 10:17,admin,admin,,,
759,83672,764,10646,849,1,0,N,N,N,CP_Drtn,TT_Task,DT_FixedDUR2,RV_OK,TK_NotStart,A17470,Internal plastering for roof floor,,40,40,40,0,0,0,40,0,0,0,,,,2010-11-25 08:00,2010-11-30 16:00,,2010-11-20 08:00,2010-11-24 16:00,2010-11-20 08:00,2010-11-24 16:00,2010-11-20 08:00,2010-11-24 16:00,,2010-11-25 08:00,2010-11-30 16:00,,PT_Normal,,,,,Gm6Zw1EWnUSQTulxyNzveA,o38elzh8YU6LPfnVtJFG/w,,,N,0,0,,,2010-06-27 10:17,2010-06-27 10:17,admin,admin,,,
760,83673,764,10645,849,1,0,N,N,N,CP_Drtn,TT_Task,DT_FixedDUR2,RV_OK,TK_NotStart,A17480,electrical conduits for ground floor walls,,72,0,16,0,0,0,16,0,0,0,,,,2010-11-03 08:00,2010-11-04 16:00,,2010-10-24 08:00,2010-10-25 16:00,2010-10-24 08:00,2010-10-25 16:00,2010-10-24 08:00,2010-10-25 16:00,,2010-11-03 08:00,2010-11-04 16:00,,PT_Normal,,,,,5ttwUgJjlEmbwKiTbh4ZOg,tBbgXgRJEkuY4z9fJ+rreg,,,N,0,0,,,2010-06-27 10:17,2010-06-27 10:17,admin,admin,,,
761,83674,764,10645,849,1,0,N,N,N,CP_Drtn,TT_Task,DT_FixedDUR2,RV_OK,TK_NotStart,A17490,electrical conduits for 1st floor walls,,64,0,16,0,0,0,16,0,0,0,,,,2010-11-14 08:00,2010-11-15 16:00,,2010-11-04 08:00,2010-11-06 16:00,2010-11-04 08:00,2010-11-06 16:00,2010-11-04 08:00,2010-11-06 16:00,,2010-11-14 08:00,2010-11-15 16:00,,PT_Normal,,,,,HepTVelRl0yXFEDI/TBI+Q,IT3ELc43kUKJj6rMYssaTw,,,N,0,0,,,2010-06-27 10:17,2010-06-27 10:17,admin,admin,,,
762,83675,764,10645,849,1,0,N,N,N,CP_Drtn,TT_Task,DT_FixedDUR2,RV_OK,TK_NotStart,A17500,electrical conduits for roof floor walls,,40,0,16,0,0,0,16,0,0,0,,,,2010-11-23 08:00,2010-11-24 16:00,,2010-11-17 08:00,2010-11-18 16:00,2010-11-17 08:00,2010-11-18 16:00,2010-11-17 08:00,2010-11-18 16:00,,2010-11-23 08:00,2010-11-24 16:00,,PT_Normal,,,,,hBXmkEEW00SCD3HWpW+Ekw,ddBSStXL9Uqvgr00vllvUA,,,N,0,0,,,2010-06-27 10:17,2010-06-27 10:17,admin,admin,,,
763,83676,764,10649,841,1,0,N,N,N,CP_Drtn,TT_Task,DT_FixedDUR2,RV_OK,TK_NotStart,A17510,excavation,,16,0,80,0,0,0,80,0,0,0,,,,2010-07-20 08:00,2010-07-31 16:00,,2010-07-18 08:00,2010-07-28 16:00,2010-07-18 08:00,2010-07-28 16:00,2010-07-18 08:00,2010-07-28 16:00,,2010-07-20 08:00,2010-07-31 16:00,,PT_Normal,,,,,OPtgHOg8b0OVeac4SRXetw,gObVAUc7vUGj2dRRel9WBg,,,Y,0,0,,,2010-06-27 10:17,2010-06-27 10:17,admin,admin,,,
764,83677,764,10649,841,1,0,N,N,N,CP_Drtn,TT_Task,DT_FixedDUR2,RV_OK,TK_NotStart,A17520,soil replacement,,16,0,96,0,0,0,96,0,0,0,,,,2010-08-01 08:00,2010-08-14 16:00,,2010-07-29 08:00,2010-08-11 16:00,2010-07-29 08:00,2010-08-11 16:00,2010-07-29 08:00,2010-08-11 16:00,,2010-08-01 08:00,2010-08-14 16:00,,PT_Normal,,,,,6Id0SFzXy02uSE+SVA16Gw,2ZnNSzLuZEGzwX9aJmeN0g,,,Y,0,0,,,2010-06-27 10:17,2010-06-27 10:17,admin,admin,,,
765,83678,764,10650,841,1,0,N,N,N,CP_Drtn,TT_Task,DT_FixedDUR2,RV_OK,TK_NotStart,A17530,Plain Concrete Foundation,,16,0,16,0,0,0,16,0,0,0,,,,2010-08-15 08:00,2010-08-16 16:00,,2010-08-12 08:00,2010-08-14 16:00,2010-08-12 08:00,2010-08-14 16:00,2010-08-12 08:00,2010-08-14 16:00,,2010-08-15 08:00,2010-08-16 16:00,,PT_Normal,,,,,yrkqeF9EFkK+eqVZEvTrWA,I32qIASIGESK5+zbSvwLeQ,,,Y,0,0,,,2010-06-27 10:17,2010-06-27 10:17,admin,admin,,,
766,83679,764,10650,841,1,0,N,N,N,CP_Drtn,TT_Task,DT_FixedDUR2,RV_OK,TK_NotStart,A17540,Reinforced Concrete Foundation,,16,0,56,0,0,0,56,0,0,0,,,,2010-08-22 08:00,2010-08-29 16:00,,2010-08-19 08:00,2010-08-26 16:00,2010-08-19 08:00,2010-08-26 16:00,2010-08-19 08:00,2010-08-26 16:00,,2010-08-22 08:00,2010-08-29 16:00,,PT_Normal,,,,,kc/b0TxnWUCPAOf4AH/TSg,6N6fEzy7AESsZBgaOn1H9w,,,Y,0,0,,,2010-06-27 10:17,2010-06-27 10:17,admin,admin,,,
767,83680,764,10650,841,1,0,N,N,N,CP_Drtn,TT_Task,DT_FixedDUR2,RV_OK,TK_NotStart,A17550,under ground  brick works,,16,0,16,0,0,0,16,0,0,0,,,,2010-09-06 08:00,2010-09-07 16:00,,2010-09-04 08:00,2010-09-05 16:00,2010-09-04 08:00,2010-09-05 16:00,2010-09-04 08:00,2010-09-05 16:00,,2010-09-06 08:00,2010-09-07 16:00,,PT_Normal,,,,,FhYFBHpffUi4F5J9qZC1tQ,28ca+4yAiEeVDZTdhUBH2g,,,Y,0,0,,,2010-06-27 10:17,2010-06-27 10:17,admin,admin,,,
768,83681,764,10650,841,1,0,N,N,N,CP_Drtn,TT_Task,DT_FixedDUR2,RV_OK,TK_NotStart,A17560,under ground insulation for RC & Brick work,,16,0,16,0,0,0,16,0,0,0,,,,2010-09-11 08:00,2010-09-12 16:00,,2010-09-06 08:00,2010-09-07 16:00,2010-09-06 08:00,2010-09-07 16:00,2010-09-06 08:00,2010-09-07 16:00,,2010-09-11 08:00,2010-09-12 16:00,,PT_Normal,,,,,adgpsKxhf0W8Aab5/QZ1Ng,QTdrhJkawUm8+xgn1tvnwA,,,Y,0,0,,,2010-06-27 10:17,2010-06-27 10:17,admin,admin,,,
769,83682,764,10650,841,1,0,N,N,N,CP_Drtn,TT_Task,DT_FixedDUR2,RV_OK,TK_NotStart,A17570,backfilling for under ground,,16,0,32,0,0,0,32,0,0,0,,,,2010-09-13 08:00,2010-09-16 16:00,,2010-09-11 08:00,2010-09-14 16:00,2010-09-11 08:00,2010-09-14 16:00,2010-09-11 08:00,2010-09-14 16:00,,2010-09-13 08:00,2010-09-16 16:00,,PT_Normal,,,,,rT7QZ2T4Y0qwZVtB+NpvCQ,bXXhdksOk02CWORrQjqPIQ,,,Y,0,0,,,2010-06-27 10:17,2010-06-27 10:17,admin,admin,,,
770,83683,764,10650,841,1,0,N,N,N,CP_Drtn,TT_Task,DT_FixedDUR2,RV_OK,TK_NotStart,A17580,P.C slab on grade 10CM,,88,0,8,0,0,0,8,0,0,0,,,,2010-10-27 08:00,2010-10-27 16:00,,2010-10-14 08:00,2010-10-14 16:00,2010-10-14 08:00,2010-10-14 16:00,2010-10-14 08:00,2010-10-14 16:00,,2010-10-27 08:00,2010-10-27 16:00,,PT_Normal,,,,,I0vcV+XzrUqZ7RGwyPx4jQ,GMXu6mVxQEeCz3bxeJNn+A,,,N,0,0,,,2010-06-27 10:17,2010-06-27 10:17,admin,admin,,,
771,83684,764,10650,841,1,0,N,N,N,CP_Drtn,TT_Task,DT_FixedDUR2,RV_OK,TK_NotStart,A17590,moisture insulation with membrane sheets,,88,0,16,0,0,0,16,0,0,0,,,,2010-10-28 08:00,2010-10-30 16:00,,2010-10-16 08:00,2010-10-17 16:00,2010-10-16 08:00,2010-10-17 16:00,2010-10-16 08:00,2010-10-17 16:00,,2010-10-28 08:00,2010-10-30 16:00,,PT_Normal,,,,,whS41CVzjUmf8rGqRzGtYA,YRfZcO+82U2Io+AkGu7bhg,,,N,0,0,,,2010-06-27 10:17,2010-06-27 10:17,admin,admin,,,
772,83685,764,10650,841,1,0,N,N,N,CP_Drtn,TT_Task,DT_FixedDUR2,RV_OK,TK_NotStart,A17600,R.C slab on grade,,88,0,16,0,0,0,16,0,0,0,,,,2010-10-31 08:00,2010-11-01 16:00,,2010-10-18 08:00,2010-10-19 16:00,2010-10-18 08:00,2010-10-19 16:00,2010-10-18 08:00,2010-10-19 16:00,,2010-10-31 08:00,2010-11-01 16:00,,PT_Normal,,,,,kQP9R2zqfkqyq4uv/0zCJw,/TBdyh8QE0W4CBw2UjqSFw,,,N,0,0,,,2010-06-27 10:17,2010-06-27 10:17,admin,admin,,,
773,83686,764,10651,841,1,0,N,N,N,CP_Drtn,TT_Task,DT_FixedDUR2,RV_OK,TK_NotStart,A17610,columns for ground floor,,16,0,48,0,0,0,48,0,0,0,,,,2010-08-30 08:00,2010-09-05 16:00,,2010-08-28 08:00,2010-09-02 16:00,2010-08-28 08:00,2010-09-02 16:00,2010-08-28 08:00,2010-09-02 16:00,,2010-08-30 08:00,2010-09-05 16:00,,PT_Normal,,,,,iJFSStyM30inxIaIBS+POg,cgaG45tiWEi1iVBds9sGZA,,,Y,0,0,,,2010-06-27 10:17,2010-06-27 10:17,admin,admin,,,
774,83687,764,10651,841,1,0,N,N,N,CP_Drtn,TT_Task,DT_FixedDUR2,RV_OK,TK_NotStart,A17620,slab for ground floor,,16,0,72,0,0,0,72,0,0,0,,,,2010-09-18 08:00,2010-09-27 16:00,,2010-09-15 08:00,2010-09-25 16:00,2010-09-15 08:00,2010-09-25 16:00,2010-09-15 08:00,2010-09-25 16:00,,2010-09-18 08:00,2010-09-27 16:00,,PT_Normal,,,,,zgOc/HNDcUawi6GlaJdaVQ,ID4snHcqH0iY5FKJVa6w6w,,,Y,0,0,,,2010-06-27 10:17,2010-06-27 10:17,admin,admin,,,
775,83688,764,10651,841,1,0,N,N,N,CP_Drtn,TT_Task,DT_FixedDUR2,RV_OK,TK_NotStart,A17630,columns for 1st floor,,32,0,48,0,0,0,48,0,0,0,,,,2010-10-02 08:00,2010-10-07 16:00,,2010-09-27 08:00,2010-10-03 16:00,2010-09-27 08:00,2010-10-03 16:00,2010-09-27 08:00,2010-10-03 16:00,,2010-10-02 08:00,2010-10-07 16:00,,PT_Normal,,,,,hUwZdXhi1U+KK83Wibqp8g,kycaiqTzgE6UMAIgQXKyWQ,,,Y,0,0,,,2010-06-27 10:17,2010-06-27 10:17,admin,admin,,,
776,83689,764,10651,841,1,0,N,N,N,CP_Drtn,TT_Task,DT_FixedDUR2,RV_OK,TK_NotStart,A17640,slab for 1st floor,,32,0,72,0,0,0,72,0,0,0,,,,2010-10-09 08:00,2010-10-18 16:00,,2010-10-04 08:00,2010-10-13 16:00,2010-10-04 08:00,2010-10-13 16:00,2010-10-04 08:00,2010-10-13 16:00,,2010-10-09 08:00,2010-10-18 16:00,,PT_Normal,,,,,o/iBFseUiUyMd91fl49New,5AUcy5NUnE+z7gt3jGpWcg,,,Y,0,0,,,2010-06-27 10:17,2010-06-27 10:17,admin,admin,,,
777,83690,764,10651,841,1,0,N,N,N,CP_Drtn,TT_Task,DT_FixedDUR2,RV_OK,TK_NotStart,A17650,columns for roof floor,,32,0,32,0,0,0,32,0,0,0,,,,2010-10-23 08:00,2010-10-26 16:00,,2010-10-18 08:00,2010-10-21 16:00,2010-10-18 08:00,2010-10-21 16:00,2010-10-18 08:00,2010-10-21 16:00,,2010-10-23 08:00,2010-10-26 16:00,,PT_Normal,,,,,MCHIDKc5dk+N59GNiR7h4A,oLbwppsnREq11mDJv5G5rA,,,Y,0,0,,,2010-06-27 10:17,2010-06-27 10:17,admin,admin,,,
778,83691,764,10651,841,1,0,N,N,N,CP_Drtn,TT_Task,DT_FixedDUR2,RV_OK,TK_NotStart,A17660,slab for roof floor,,32,0,48,0,0,0,48,0,0,0,,,,2010-10-27 08:00,2010-11-02 16:00,,2010-10-23 08:00,2010-10-28 16:00,2010-10-23 08:00,2010-10-28 16:00,2010-10-23 08:00,2010-10-28 16:00,,2010-10-27 08:00,2010-11-02 16:00,,PT_Normal,,,,,Hj0LfhC7lkyf/b16DYtIew,crTbcp1J7U6ZmzujSiHEqg,,,Y,0,0,,,2010-06-27 10:17,2010-06-27 10:17,admin,admin,,,
779,83692,764,10651,841,1,0,N,N,N,CP_Drtn,TT_Task,DT_FixedDUR2,RV_OK,TK_NotStart,A17670,Brick works for ground floor,,88,0,40,0,0,0,40,0,0,0,,,,2010-10-21 08:00,2010-10-26 16:00,,2010-10-09 08:00,2010-10-13 16:00,2010-10-09 08:00,2010-10-13 16:00,2010-10-09 08:00,2010-10-13 16:00,,2010-10-21 08:00,2010-10-26 16:00,,PT_Normal,,,,,yDNN+qwNsEmg6O9wZMqz/g,NXIXs1EEAE+M3ddobo1e9g,,,N,0,0,,,2010-06-27 10:17,2010-06-27 10:17,admin,admin,,,
780,83693,764,10652,841,1,0,N,N,N,CP_Drtn,TT_Task,DT_FixedDrtn,RV_OK,TK_NotStart,A17680,electrical conduits for ground floor's slab,,24,8,16,0,0,0,16,0,0,0,,,,2010-09-23 08:00,2010-09-25 16:00,,2010-09-20 08:00,2010-09-21 16:00,2010-09-20 08:00,2010-09-21 16:00,2010-09-20 08:00,2010-09-21 16:00,,2010-09-23 08:00,2010-09-25 16:00,,PT_Normal,,,,,sI/V6gYF5UuK9Fz6g4HoGg,iQpi5WuMKkywP9+enbBfIA,,,N,0,0,,,2010-06-27 10:17,2010-06-27 10:17,admin,admin,,,
781,83694,764,10652,841,1,0,N,N,N,CP_Drtn,TT_Task,DT_FixedDrtn,RV_OK,TK_NotStart,A17690,electrical conduits for 1st floor slab,,40,8,16,0,0,0,16,0,0,0,,,,2010-10-14 08:00,2010-10-16 16:00,,2010-10-09 08:00,2010-10-10 16:00,2010-10-09 08:00,2010-10-10 16:00,2010-10-09 08:00,2010-10-10 16:00,,2010-10-14 08:00,2010-10-16 16:00,,PT_Normal,,,,,0uMcM8tEsk+BLGf+c8Q+UA,b+Se6N+iSkuihWpcqCWf9Q,,,N,0,0,,,2010-06-27 10:17,2010-06-27 10:17,admin,admin,,,
782,83695,764,10652,841,1,0,N,N,N,CP_Drtn,TT_Task,DT_FixedDrtn,RV_OK,TK_NotStart,A17700,electrical conduits for roof slab,,40,8,8,0,0,0,8,0,0,0,,,,2010-11-01 08:00,2010-11-01 16:00,,2010-10-26 08:00,2010-10-26 16:00,2010-10-26 08:00,2010-10-26 16:00,2010-10-26 08:00,2010-10-26 16:00,,2010-11-01 08:00,2010-11-01 16:00,,PT_Normal,,,,,JP/vYMGU1E2Bl7dxn5BIsA,gx0d94oujE+HnzyjesW13Q,,,N,0,0,,,2010-06-27 10:17,2010-06-27 10:17,admin,admin,,,
783,83696,764,10653,841,1,0,N,N,N,CP_Drtn,TT_Task,DT_FixedDUR2,RV_OK,TK_NotStart,A17710,Internal plastering for ground floor,,88,16,64,0,0,0,64,0,0,0,,,,2010-11-06 08:00,2010-11-14 16:00,,2010-10-24 08:00,2010-11-01 16:00,2010-10-24 08:00,2010-11-01 16:00,2010-10-24 08:00,2010-11-01 16:00,,2010-11-06 08:00,2010-11-14 16:00,,PT_Normal,,,,,aGdjRwVbZEqgJQhiofW/sA,fcl+mPaXA0WnAXc7iT0Mfg,,,N,0,0,,,2010-06-27 10:17,2010-06-27 10:17,admin,admin,,,
784,83697,764,10653,841,1,0,N,N,N,CP_Drtn,TT_Task,DT_FixedDUR2,RV_OK,TK_NotStart,A17720,External plastering,,0,0,80,0,0,0,80,0,0,0,,,,2010-11-20 08:00,2010-11-30 16:00,,2010-11-20 08:00,2010-11-30 16:00,2010-11-20 08:00,2010-11-30 16:00,2010-11-20 08:00,2010-11-30 16:00,,2010-11-20 08:00,2010-11-30 16:00,,PT_Normal,,,,,COu8x0LDxk64HzpDaZn5fQ,NGQLzeHobE+PX9AdaixYqA,,,Y,0,0,,,2010-06-27 10:17,2010-06-27 10:17,admin,admin,,,
785,83698,764,10652,841,1,0,N,N,N,CP_Drtn,TT_Task,DT_FixedDrtn,RV_OK,TK_NotStart,A17730,plumbing connections under slab on grade,,272,184,16,0,0,0,16,0,0,0,,,,2010-10-25 08:00,2010-10-26 16:00,,2010-09-15 08:00,2010-09-16 16:00,2010-09-15 08:00,2010-09-16 16:00,2010-09-15 08:00,2010-09-16 16:00,,2010-10-25 08:00,2010-10-26 16:00,,PT_Normal,,,,,RRGxKO7p+0WAlDTg+lXpXg,FKHZto0v4Uqot5+BY5Leew,,,N,0,0,,,2010-06-27 10:17,2010-06-27 10:17,admin,admin,,,
786,83699,764,10648,841,0,0,N,N,N,CP_Drtn,TT_Mile,DT_FixedDrtn,RV_OK,TK_NotStart,A17740,Start Villa construction,,16,0,0,0,0,0,0,0,0,0,,,,2010-06-23 08:00,2010-06-23 08:00,,2010-06-21 08:00,2010-06-21 08:00,2010-06-21 08:00,2010-06-21 08:00,2010-06-21 08:00,2010-06-21 08:00,,2010-06-23 08:00,2010-06-23 08:00,,PT_Normal,,,,,BtAG81nXrUOLo/h6tSIGcA,mezuNliU3Eat2RDNeNznCA,,,Y,0,0,,,2010-06-27 10:17,2010-06-27 10:17,admin,admin,,,
787,83700,764,10648,841,0,0,N,N,N,CP_Drtn,TT_FinMile,DT_FixedDrtn,RV_OK,TK_NotStart,A17750,finish Villa construction,,0,0,0,0,0,0,0,0,0,0,,,,2010-11-30 16:00,2010-11-30 16:00,,2010-11-30 16:00,2010-11-30 16:00,2010-11-30 16:00,2010-11-30 16:00,2010-11-30 16:00,2010-11-30 16:00,,2010-11-30 16:00,2010-11-30 16:00,,PT_Normal,,,,,fTU306zlzEuttVDhmFsUpQ,0ZM1sCb2WUCtAQq5DrmESw,,,Y,0,0,,,2010-06-27 10:17,2010-06-27 10:17,admin,admin,,,
788,83701,764,10648,841,0,0,N,N,N,CP_Drtn,TT_Mile,DT_FixedDrtn,RV_OK,TK_NotStart,A17760,IFC drawings,,16,0,0,0,0,0,0,0,0,0,,,,2010-06-23 08:00,2010-06-23 08:00,,2010-06-21 08:00,2010-06-21 08:00,2010-06-21 08:00,2010-06-21 08:00,2010-06-21 08:00,2010-06-21 08:00,,2010-06-23 08:00,2010-06-23 08:00,,PT_Normal,,,,,uhw2du2zckilUc+5/ktFRg,3k/Qhh2ZeU+RAqxQ8fvU+A,,,Y,0,0,,,2010-06-27 10:17,2010-06-27 10:17,admin,admin,,,
789,83702,764,10651,841,1,0,N,N,N,CP_Drtn,TT_Task,DT_FixedDUR2,RV_OK,TK_NotStart,A17770,pouring for ground floor's slab,,16,0,8,0,0,0,8,0,0,0,,,,2010-09-28 08:00,2010-09-28 16:00,,2010-09-26 08:00,2010-09-26 16:00,2010-09-26 08:00,2010-09-26 16:00,2010-09-26 08:00,2010-09-26 16:00,,2010-09-28 08:00,2010-09-28 16:00,,PT_Normal,,,,,NY+3sS/Rt0yNIxlWnhCbuw,kXmcYva8iUSrolrqduKQHg,,,Y,0,0,,,2010-06-27 10:17,2010-06-27 10:17,admin,admin,,,
790,83703,764,10651,841,1,0,N,N,N,CP_Drtn,TT_Task,DT_FixedDUR2,RV_OK,TK_NotStart,A17780,pouring for 1st floor's slab,,32,0,8,0,0,0,8,0,0,0,,,,2010-10-19 08:00,2010-10-19 16:00,,2010-10-14 08:00,2010-10-14 16:00,2010-10-14 08:00,2010-10-14 16:00,2010-10-14 08:00,2010-10-14 16:00,,2010-10-19 08:00,2010-10-19 16:00,,PT_Normal,,,,,+CxObyDdpEOmGx/UXwMaSw,vPG01kzchUSIjjTQRgTcMg,,,Y,0,0,,,2010-06-27 10:17,2010-06-27 10:17,admin,admin,,,
791,83704,764,10651,841,1,0,N,N,N,CP_Drtn,TT_Task,DT_FixedDUR2,RV_OK,TK_NotStart,A17790,pouring for roof floor's slab,,32,0,8,0,0,0,8,0,0,0,,,,2010-11-03 08:00,2010-11-03 16:00,,2010-10-30 08:00,2010-10-30 16:00,2010-10-30 08:00,2010-10-30 16:00,2010-10-30 08:00,2010-10-30 16:00,,2010-11-03 08:00,2010-11-03 16:00,,PT_Normal,,,,,jmF0kEG4ok+nx5biphOu1Q,MKbes0zSEka6slxb0pKbgQ,,,Y,0,0,,,2010-06-27 10:17,2010-06-27 10:17,admin,admin,,,
792,83705,764,10651,841,1,0,N,N,N,CP_Drtn,TT_Task,DT_FixedDrtn,RV_OK,TK_NotStart,A17800,Fence work,,16,16,400,0,0,0,400,0,0,0,,,,2010-09-29 08:00,2010-11-30 16:00,,2010-09-27 08:00,2010-11-28 16:00,2010-09-27 08:00,2010-11-28 16:00,2010-09-27 08:00,2010-11-28 16:00,,2010-09-29 08:00,2010-11-30 16:00,,PT_Normal,,,,,WWkWhsv8g02GsTIpeKdyvQ,LsLgDx49RkuwQ6LoyHFWYA,,,N,0,0,,,2010-06-27 10:17,2010-06-27 10:17,admin,admin,,,
793,83706,764,10648,841,1,0,N,N,N,CP_Drtn,TT_Task,DT_FixedDUR2,RV_OK,TK_NotStart,A17810,Fence Drawings IFC,,584,568,8,0,0,0,8,0,0,0,,,,2010-09-16 08:00,2010-09-16 16:00,,2010-06-21 08:00,2010-06-21 16:00,2010-06-21 08:00,2010-06-21 16:00,2010-06-21 08:00,2010-06-21 16:00,,2010-09-16 08:00,2010-09-16 16:00,,PT_Normal,,,,,TE9WJno4kkKn3hHzEtU0mA,yNCTnQceC0205r7m19mxOQ,,,N,0,0,,,2010-06-27 10:17,2010-06-27 10:17,admin,admin,,,
794,83707,764,10650,849,1,0,N,N,N,CP_Drtn,TT_Task,DT_FixedDUR2,RV_OK,TK_NotStart,A17820,backfilling between P.C Foundation,,16,0,16,0,0,0,16,0,0,0,,,,2010-08-18 08:00,2010-08-19 16:00,,2010-08-16 08:00,2010-08-17 16:00,2010-08-16 08:00,2010-08-17 16:00,2010-08-16 08:00,2010-08-17 16:00,,2010-08-18 08:00,2010-08-19 16:00,,PT_Normal,,,,,PxVsg8hM5ESLuBEZob30tA,7nLsu61eC0q3cJnFDtsZuA,,,Y,0,0,,,2010-06-27 10:17,2010-06-27 10:17,admin,admin,,,
795,83708,764,10650,849,1,0,N,N,N,CP_Drtn,TT_Task,DT_FixedDUR2,RV_OK,TK_NotStart,A17830,P.C Under Smells,,16,0,8,0,0,0,8,0,0,0,,,,2010-08-21 08:00,2010-08-21 16:00,,2010-08-18 08:00,2010-08-18 16:00,2010-08-18 08:00,2010-08-18 16:00,2010-08-18 08:00,2010-08-18 16:00,,2010-08-21 08:00,2010-08-21 16:00,,PT_Normal,,,,,xxxS4iwY6k6fMSU0Tksc5g,OKZKJ9uKxUC7CccEtXn5ig,,,Y,0,0,,,2010-06-27 10:17,2010-06-27 10:17,admin,admin,,,
796,83709,764,10651,849,1,0,N,N,N,CP_Drtn,TT_Task,DT_FixedDUR2,RV_OK,TK_NotStart,A17840,Brick works for 1st floor,,80,0,40,0,0,0,40,0,0,0,,,,2010-11-08 08:00,2010-11-13 16:00,,2010-10-27 08:00,2010-11-01 16:00,2010-10-27 08:00,2010-11-01 16:00,2010-10-27 08:00,2010-11-01 16:00,,2010-11-08 08:00,2010-11-13 16:00,,PT_Normal,,,,,NRZx9w0JJE6NCRGR6Dxq8w,jy52tFQy1UaVIL6AjQ3Imw,,,N,0,0,,,2010-06-27 10:17,2010-06-27 10:17,admin,admin,,,
797,83710,764,10651,849,1,0,N,N,N,CP_Drtn,TT_Task,DT_FixedDUR2,RV_OK,TK_NotStart,A17850,Brick works for roof floor,,32,0,40,0,0,0,40,0,0,0,,,,2010-11-14 08:00,2010-11-18 16:00,,2010-11-09 08:00,2010-11-14 16:00,2010-11-09 08:00,2010-11-14 16:00,2010-11-09 08:00,2010-11-14 16:00,,2010-11-14 08:00,2010-11-18 16:00,,PT_Normal,,,,,oCpi1jTu8Um47vrs0HWR0g,g+1r7tk/Z0CCjFVK63kV9A,,,Y,0,0,,,2010-06-27 10:17,2010-06-27 10:17,admin,admin,,,
798,83711,764,10653,849,1,0,N,N,N,CP_Drtn,TT_Task,DT_FixedDUR2,RV_OK,TK_NotStart,A17860,Internal plastering for 1st floor,,80,24,64,0,0,0,64,0,0,0,,,,2010-11-16 08:00,2010-11-24 16:00,,2010-11-04 08:00,2010-11-13 16:00,2010-11-04 08:00,2010-11-13 16:00,2010-11-04 08:00,2010-11-13 16:00,,2010-11-16 08:00,2010-11-24 16:00,,PT_Normal,,,,,2a49wqwzH0S2cUdTle0kdg,HdVibnPj+U6ie49FKsBFGQ,,,N,0,0,,,2010-06-27 10:17,2010-06-27 10:17,admin,admin,,,
799,83712,764,10653,849,1,0,N,N,N,CP_Drtn,TT_Task,DT_FixedDUR2,RV_OK,TK_NotStart,A17870,Internal plastering for roof floor,,56,56,40,0,0,0,40,0,0,0,,,,2010-11-25 08:00,2010-11-30 16:00,,2010-11-17 08:00,2010-11-22 16:00,2010-11-17 08:00,2010-11-22 16:00,2010-11-17 08:00,2010-11-22 16:00,,2010-11-25 08:00,2010-11-30 16:00,,PT_Normal,,,,,V61uqu/sD0CzA6aI+JN3MQ,2dxyuSzIpEGnZYq73CC7Bg,,,N,0,0,,,2010-06-27 10:17,2010-06-27 10:17,admin,admin,,,
800,83713,764,10652,849,1,0,N,N,N,CP_Drtn,TT_Task,DT_FixedDUR2,RV_OK,TK_NotStart,A17880,electrical conduits for ground floor walls,,88,0,16,0,0,0,16,0,0,0,,,,2010-11-03 08:00,2010-11-04 16:00,,2010-10-21 08:00,2010-10-23 16:00,2010-10-21 08:00,2010-10-23 16:00,2010-10-21 08:00,2010-10-23 16:00,,2010-11-03 08:00,2010-11-04 16:00,,PT_Normal,,,,,5tH3Z+Rj4kWLNaY8PHA30g,gv6DaogXwU6HKgFk8uy0lA,,,N,0,0,,,2010-06-27 10:17,2010-06-27 10:17,admin,admin,,,
801,83714,764,10652,849,1,0,N,N,N,CP_Drtn,TT_Task,DT_FixedDUR2,RV_OK,TK_NotStart,A17890,electrical conduits for 1st floor walls,,80,0,16,0,0,0,16,0,0,0,,,,2010-11-14 08:00,2010-11-15 16:00,,2010-11-02 08:00,2010-11-03 16:00,2010-11-02 08:00,2010-11-03 16:00,2010-11-02 08:00,2010-11-03 16:00,,2010-11-14 08:00,2010-11-15 16:00,,PT_Normal,,,,,t/OM4KgwC0qZ2kVBus8POw,xAZS6rW5wUC31p3FbQe0Uw,,,N,0,0,,,2010-06-27 10:17,2010-06-27 10:17,admin,admin,,,
802,83715,764,10652,849,1,0,N,N,N,CP_Drtn,TT_Task,DT_FixedDUR2,RV_OK,TK_NotStart,A17900,electrical conduits for roof floor walls,,56,0,16,0,0,0,16,0,0,0,,,,2010-11-23 08:00,2010-11-24 16:00,,2010-11-15 08:00,2010-11-16 16:00,2010-11-15 08:00,2010-11-16 16:00,2010-11-15 08:00,2010-11-16 16:00,,2010-11-23 08:00,2010-11-24 16:00,,PT_Normal,,,,,Lbi+Ul0UU0+JD8xdBz3QQQ,IJlAeW1XTEWjB7TQkBMxaA,,,N,0,0,,,2010-06-27 10:17,2010-06-27 10:17,admin,admin,,,
803,83716,764,10656,841,1,0,N,N,N,CP_Drtn,TT_Task,DT_FixedDUR2,RV_OK,TK_NotStart,A17910,excavation,,40,0,80,0,0,0,80,0,0,0,,,,2010-07-20 08:00,2010-07-31 16:00,,2010-07-14 08:00,2010-07-25 16:00,2010-07-14 08:00,2010-07-25 16:00,2010-07-14 08:00,2010-07-25 16:00,,2010-07-20 08:00,2010-07-31 16:00,,PT_Normal,,,,,Bc7ImUiyeUeju11d9apewQ,GtZwNOoOpk+a+2DLeVzYEQ,,,N,0,0,,,2010-06-27 10:17,2010-06-27 10:17,admin,admin,,,
804,83717,764,10656,841,1,0,N,N,N,CP_Drtn,TT_Task,DT_FixedDUR2,RV_OK,TK_NotStart,A17920,soil replacement,,40,0,96,0,0,0,96,0,0,0,,,,2010-08-01 08:00,2010-08-14 16:00,,2010-07-26 08:00,2010-08-08 16:00,2010-07-26 08:00,2010-08-08 16:00,2010-07-26 08:00,2010-08-08 16:00,,2010-08-01 08:00,2010-08-14 16:00,,PT_Normal,,,,,Q5Ofdeewb0Oj9c0w2aF1uA,+ViCExrJ8EGc51hyIkwZtQ,,,N,0,0,,,2010-06-27 10:17,2010-06-27 10:17,admin,admin,,,
805,83718,764,10657,841,1,0,N,N,N,CP_Drtn,TT_Task,DT_FixedDUR2,RV_OK,TK_NotStart,A17930,Plain Concrete Foundation,,40,0,16,0,0,0,16,0,0,0,,,,2010-08-15 08:00,2010-08-16 16:00,,2010-08-09 08:00,2010-08-10 16:00,2010-08-09 08:00,2010-08-10 16:00,2010-08-09 08:00,2010-08-10 16:00,,2010-08-15 08:00,2010-08-16 16:00,,PT_Normal,,,,,WjLheACjZkeBSjAOi3bnzw,RbbSDZ7gv0qGgbRaSHoUIA,,,N,0,0,,,2010-06-27 10:17,2010-06-27 10:17,admin,admin,,,
806,83719,764,10657,841,1,0,N,N,N,CP_Drtn,TT_Task,DT_FixedDUR2,RV_OK,TK_NotStart,A17940,Reinforced Concrete Foundation,,40,0,56,0,0,0,56,0,0,0,,,,2010-08-22 08:00,2010-08-29 16:00,,2010-08-16 08:00,2010-08-23 16:00,2010-08-16 08:00,2010-08-23 16:00,2010-08-16 08:00,2010-08-23 16:00,,2010-08-22 08:00,2010-08-29 16:00,,PT_Normal,,,,,hlZa6K1n9U+Kqxzc30okDg,CB6/VPcJykeN1hj7k0yNWA,,,N,0,0,,,2010-06-27 10:17,2010-06-27 10:17,admin,admin,,,
807,83720,764,10657,841,1,0,N,N,N,CP_Drtn,TT_Task,DT_FixedDUR2,RV_OK,TK_NotStart,A17950,under ground  brick works,,40,0,16,0,0,0,16,0,0,0,,,,2010-09-06 08:00,2010-09-07 16:00,,2010-08-31 08:00,2010-09-01 16:00,2010-08-31 08:00,2010-09-01 16:00,2010-08-31 08:00,2010-09-01 16:00,,2010-09-06 08:00,2010-09-07 16:00,,PT_Normal,,,,,fx8LmwXNY0uF+Moqnootzw,pp2c068T+UKoR11oHfmp7Q,,,N,0,0,,,2010-06-27 10:17,2010-06-27 10:17,admin,admin,,,
808,83721,764,10657,841,1,0,N,N,N,CP_Drtn,TT_Task,DT_FixedDUR2,RV_OK,TK_NotStart,A17960,under ground insulation for RC & Brick work,,40,0,16,0,0,0,16,0,0,0,,,,2010-09-11 08:00,2010-09-12 16:00,,2010-09-02 08:00,2010-09-04 16:00,2010-09-02 08:00,2010-09-04 16:00,2010-09-02 08:00,2010-09-04 16:00,,2010-09-11 08:00,2010-09-12 16:00,,PT_Normal,,,,,GRjwtE8x/UeDN4ThufwZTw,/xSGXzUcoUO35UHOpJInBw,,,N,0,0,,,2010-06-27 10:17,2010-06-27 10:17,admin,admin,,,
809,83722,764,10657,841,1,0,N,N,N,CP_Drtn,TT_Task,DT_FixedDUR2,RV_OK,TK_NotStart,A17970,backfilling for under ground,,40,0,32,0,0,0,32,0,0,0,,,,2010-09-13 08:00,2010-09-16 16:00,,2010-09-05 08:00,2010-09-11 16:00,2010-09-05 08:00,2010-09-11 16:00,2010-09-05 08:00,2010-09-11 16:00,,2010-09-13 08:00,2010-09-16 16:00,,PT_Normal,,,,,BvOJ2FywEkKsdG75hQWAQg,dj9K7gSOXU+VyFf1YqRkKQ,,,N,0,0,,,2010-06-27 10:17,2010-06-27 10:17,admin,admin,,,
810,83723,764,10657,841,1,0,N,N,N,CP_Drtn,TT_Task,DT_FixedDUR2,RV_OK,TK_NotStart,A17980,P.C slab on grade 10CM,,112,0,8,0,0,0,8,0,0,0,,,,2010-10-27 08:00,2010-10-27 16:00,,2010-10-11 08:00,2010-10-11 16:00,2010-10-11 08:00,2010-10-11 16:00,2010-10-11 08:00,2010-10-11 16:00,,2010-10-27 08:00,2010-10-27 16:00,,PT_Normal,,,,,Ql5CqvutuEa5YUxdLATjgA,AL9/Yeu05kCkWptRjzbdrg,,,N,0,0,,,2010-06-27 10:17,2010-06-27 10:17,admin,admin,,,
811,83724,764,10657,841,1,0,N,N,N,CP_Drtn,TT_Task,DT_FixedDUR2,RV_OK,TK_NotStart,A17990,moisture insulation with membrane sheets,,112,0,16,0,0,0,16,0,0,0,,,,2010-10-28 08:00,2010-10-30 16:00,,2010-10-12 08:00,2010-10-13 16:00,2010-10-12 08:00,2010-10-13 16:00,2010-10-12 08:00,2010-10-13 16:00,,2010-10-28 08:00,2010-10-30 16:00,,PT_Normal,,,,,kPji6+txs0G/DSAJGUkLwg,5O0DF6vhLUCIch28LgOsDw,,,N,0,0,,,2010-06-27 10:17,2010-06-27 10:17,admin,admin,,,
812,83725,764,10657,841,1,0,N,N,N,CP_Drtn,TT_Task,DT_FixedDUR2,RV_OK,TK_NotStart,A18000,R.C slab on grade,,112,0,16,0,0,0,16,0,0,0,,,,2010-10-31 08:00,2010-11-01 16:00,,2010-10-14 08:00,2010-10-16 16:00,2010-10-14 08:00,2010-10-16 16:00,2010-10-14 08:00,2010-10-16 16:00,,2010-10-31 08:00,2010-11-01 16:00,,PT_Normal,,,,,p9rX4+BXokSmMWZWHNiOaA,98CaGxKyrECtGkuWaFn2gg,,,N,0,0,,,2010-06-27 10:17,2010-06-27 10:17,admin,admin,,,
813,83726,764,10658,841,1,0,N,N,N,CP_Drtn,TT_Task,DT_FixedDUR2,RV_OK,TK_NotStart,A18010,columns for ground floor,,40,0,48,0,0,0,48,0,0,0,,,,2010-08-30 08:00,2010-09-05 16:00,,2010-08-24 08:00,2010-08-30 16:00,2010-08-24 08:00,2010-08-30 16:00,2010-08-24 08:00,2010-08-30 16:00,,2010-08-30 08:00,2010-09-05 16:00,,PT_Normal,,,,,Ru1pcSdYtESfsR+DOyEoCA,qMZDbf3ExkaHLj7eyNIOEw,,,N,0,0,,,2010-06-27 10:17,2010-06-27 10:17,admin,admin,,,
814,83727,764,10658,841,1,0,N,N,N,CP_Drtn,TT_Task,DT_FixedDUR2,RV_OK,TK_NotStart,A18020,slab for ground floor,,40,0,72,0,0,0,72,0,0,0,,,,2010-09-18 08:00,2010-09-27 16:00,,2010-09-12 08:00,2010-09-21 16:00,2010-09-12 08:00,2010-09-21 16:00,2010-09-12 08:00,2010-09-21 16:00,,2010-09-18 08:00,2010-09-27 16:00,,PT_Normal,,,,,0lyan7UfPUSa4YGYMlvtxQ,sCRhH1u6+kCve0qINaLcpA,,,N,0,0,,,2010-06-27 10:17,2010-06-27 10:17,admin,admin,,,
815,83728,764,10658,841,1,0,N,N,N,CP_Drtn,TT_Task,DT_FixedDUR2,RV_OK,TK_NotStart,A18030,columns for 1st floor,,56,0,48,0,0,0,48,0,0,0,,,,2010-10-02 08:00,2010-10-07 16:00,,2010-09-23 08:00,2010-09-29 16:00,2010-09-23 08:00,2010-09-29 16:00,2010-09-23 08:00,2010-09-29 16:00,,2010-10-02 08:00,2010-10-07 16:00,,PT_Normal,,,,,jJKjxPhhV0+hLKZ9u6MpTw,4rN1vOKMTki778DxDRngnA,,,N,0,0,,,2010-06-27 10:17,2010-06-27 10:17,admin,admin,,,
816,83729,764,10658,841,1,0,N,N,N,CP_Drtn,TT_Task,DT_FixedDUR2,RV_OK,TK_NotStart,A18040,slab for 1st floor,,56,0,72,0,0,0,72,0,0,0,,,,2010-10-09 08:00,2010-10-18 16:00,,2010-09-30 08:00,2010-10-10 16:00,2010-09-30 08:00,2010-10-10 16:00,2010-09-30 08:00,2010-10-10 16:00,,2010-10-09 08:00,2010-10-18 16:00,,PT_Normal,,,,,irj5hDWEwEmBemDjdONToA,fxoipnaaVkCPYGoMy+tx6Q,,,N,0,0,,,2010-06-27 10:17,2010-06-27 10:17,admin,admin,,,
817,83730,764,10658,841,1,0,N,N,N,CP_Drtn,TT_Task,DT_FixedDUR2,RV_OK,TK_NotStart,A18050,columns for roof floor,,56,0,32,0,0,0,32,0,0,0,,,,2010-10-23 08:00,2010-10-26 16:00,,2010-10-14 08:00,2010-10-18 16:00,2010-10-14 08:00,2010-10-18 16:00,2010-10-14 08:00,2010-10-18 16:00,,2010-10-23 08:00,2010-10-26 16:00,,PT_Normal,,,,,JDyPqmCfh0KoDIh8n2A+oA,KoSSqk2p5k+6Fmqmp3XtJQ,,,N,0,0,,,2010-06-27 10:17,2010-06-27 10:17,admin,admin,,,
818,83731,764,10658,841,1,0,N,N,N,CP_Drtn,TT_Task,DT_FixedDUR2,RV_OK,TK_NotStart,A18060,slab for roof floor,,56,0,48,0,0,0,48,0,0,0,,,,2010-10-27 08:00,2010-11-02 16:00,,2010-10-19 08:00,2010-10-25 16:00,2010-10-19 08:00,2010-10-25 16:00,2010-10-19 08:00,2010-10-25 16:00,,2010-10-27 08:00,2010-11-02 16:00,,PT_Normal,,,,,UueTg0jE7UCO+yuYtKrUrQ,8E4EmOkmL0KzUR/BoWFoOA,,,N,0,0,,,2010-06-27 10:17,2010-06-27 10:17,admin,admin,,,
819,83732,764,10658,841,1,0,N,N,N,CP_Drtn,TT_Task,DT_FixedDUR2,RV_OK,TK_NotStart,A18070,Brick works for ground floor,,112,0,40,0,0,0,40,0,0,0,,,,2010-10-21 08:00,2010-10-26 16:00,,2010-10-05 08:00,2010-10-10 16:00,2010-10-05 08:00,2010-10-10 16:00,2010-10-05 08:00,2010-10-10 16:00,,2010-10-21 08:00,2010-10-26 16:00,,PT_Normal,,,,,fGN4rZ+rHkueEZII5JyJpQ,MpumRqxu7kalYEf0KIY9ag,,,N,0,0,,,2010-06-27 10:17,2010-06-27 10:17,admin,admin,,,
820,83733,764,10659,841,1,0,N,N,N,CP_Drtn,TT_Task,DT_FixedDrtn,RV_OK,TK_NotStart,A18080,electrical conduits for ground floor's slab,,48,8,16,0,0,0,16,0,0,0,,,,2010-09-23 08:00,2010-09-25 16:00,,2010-09-16 08:00,2010-09-18 16:00,2010-09-16 08:00,2010-09-18 16:00,2010-09-16 08:00,2010-09-18 16:00,,2010-09-23 08:00,2010-09-25 16:00,,PT_Normal,,,,,3UGfhYXrVkaWmA1T0EwQ7w,XbOCWH5Rvk+DQ/77sTRQ1A,,,N,0,0,,,2010-06-27 10:17,2010-06-27 10:17,admin,admin,,,
821,83734,764,10659,841,1,0,N,N,N,CP_Drtn,TT_Task,DT_FixedDrtn,RV_OK,TK_NotStart,A18090,electrical conduits for 1st floor slab,,64,8,16,0,0,0,16,0,0,0,,,,2010-10-14 08:00,2010-10-16 16:00,,2010-10-05 08:00,2010-10-06 16:00,2010-10-05 08:00,2010-10-06 16:00,2010-10-05 08:00,2010-10-06 16:00,,2010-10-14 08:00,2010-10-16 16:00,,PT_Normal,,,,,3fXA7qaJFUi93fbqP3x1wA,UxLmYhx4sUKMnuCDS1e7Bw,,,N,0,0,,,2010-06-27 10:17,2010-06-27 10:17,admin,admin,,,
822,83735,764,10659,841,1,0,N,N,N,CP_Drtn,TT_Task,DT_FixedDrtn,RV_OK,TK_NotStart,A18100,electrical conduits for roof slab,,64,8,8,0,0,0,8,0,0,0,,,,2010-11-01 08:00,2010-11-01 16:00,,2010-10-23 08:00,2010-10-23 16:00,2010-10-23 08:00,2010-10-23 16:00,2010-10-23 08:00,2010-10-23 16:00,,2010-11-01 08:00,2010-11-01 16:00,,PT_Normal,,,,,HPVB7nx1BECi8IZ9UovPzg,1EE1HC4acka9wz7Kh4h+Fg,,,N,0,0,,,2010-06-27 10:17,2010-06-27 10:17,admin,admin,,,
823,83736,764,10660,841,1,0,N,N,N,CP_Drtn,TT_Task,DT_FixedDUR2,RV_OK,TK_NotStart,A18110,Internal plastering for ground floor,,112,16,64,0,0,0,64,0,0,0,,,,2010-11-06 08:00,2010-11-14 16:00,,2010-10-20 08:00,2010-10-28 16:00,2010-10-20 08:00,2010-10-28 16:00,2010-10-20 08:00,2010-10-28 16:00,,2010-11-06 08:00,2010-11-14 16:00,,PT_Normal,,,,,2k1Zbuj2JE+9GXvC0nsrNg,/MRY9Ur/skiGJdJxDDXFRA,,,N,0,0,,,2010-06-27 10:17,2010-06-27 10:17,admin,admin,,,
824,83737,764,10660,841,1,0,N,N,N,CP_Drtn,TT_Task,DT_FixedDUR2,RV_OK,TK_NotStart,A18120,External plastering,,24,0,80,0,0,0,80,0,0,0,,,,2010-11-20 08:00,2010-11-30 16:00,,2010-11-11 08:00,2010-11-27 16:00,2010-11-11 08:00,2010-11-27 16:00,2010-11-11 08:00,2010-11-27 16:00,,2010-11-20 08:00,2010-11-30 16:00,,PT_Normal,,,,,T73RuKonEkeD+sL08VwM1w,+mEckG2cX0KSnA7ikEQ/PA,,,N,0,0,,,2010-06-27 10:17,2010-06-27 10:17,admin,admin,,,
825,83738,764,10659,841,1,0,N,N,N,CP_Drtn,TT_Task,DT_FixedDrtn,RV_OK,TK_NotStart,A18130,plumbing connections under slab on grade,,296,184,16,0,0,0,16,0,0,0,,,,2010-10-25 08:00,2010-10-26 16:00,,2010-09-12 08:00,2010-09-13 16:00,2010-09-12 08:00,2010-09-13 16:00,2010-09-12 08:00,2010-09-13 16:00,,2010-10-25 08:00,2010-10-26 16:00,,PT_Normal,,,,,8+moZKghS0W7PkdoOP7HHw,WNX6NN/igUebGWUS98esjQ,,,N,0,0,,,2010-06-27 10:17,2010-06-27 10:17,admin,admin,,,
826,83739,764,10655,841,0,0,N,N,N,CP_Drtn,TT_Mile,DT_FixedDrtn,RV_OK,TK_NotStart,A18140,Start Villa construction,,40,0,0,0,0,0,0,0,0,0,,,,2010-06-27 08:00,2010-06-27 08:00,,2010-06-21 08:00,2010-06-21 08:00,2010-06-21 08:00,2010-06-21 08:00,2010-06-21 08:00,2010-06-21 08:00,,2010-06-27 08:00,2010-06-27 08:00,,PT_Normal,,,,,6rX+VIbckEGHHboC3itRBA,K3Z0ekBBLUuQtyAwlA6LMA,,,N,0,0,,,2010-06-27 10:17,2010-06-27 10:17,admin,admin,,,
827,83740,764,10655,841,0,0,N,N,N,CP_Drtn,TT_FinMile,DT_FixedDrtn,RV_OK,TK_NotStart,A18150,finish Villa construction,,24,24,0,0,0,0,0,0,0,0,,,,2010-11-30 16:00,2010-11-30 16:00,,2010-11-27 16:00,2010-11-27 16:00,2010-11-27 16:00,2010-11-27 16:00,2010-11-27 16:00,2010-11-27 16:00,,2010-11-30 16:00,2010-11-30 16:00,,PT_Normal,,,,,jI85PNDFAkqKLrSZHfh2cQ,MeSAQwOyz0+dcJBYxFHWZg,,,N,0,0,,,2010-06-27 10:17,2010-06-27 10:17,admin,admin,,,
828,83741,764,10655,841,0,0,N,N,N,CP_Drtn,TT_Mile,DT_FixedDrtn,RV_OK,TK_NotStart,A18160,IFC drawings,,40,0,0,0,0,0,0,0,0,0,,,,2010-06-27 08:00,2010-06-27 08:00,,2010-06-21 08:00,2010-06-21 08:00,2010-06-21 08:00,2010-06-21 08:00,2010-06-21 08:00,2010-06-21 08:00,,2010-06-27 08:00,2010-06-27 08:00,,PT_Normal,,,,,/0CW+tQzkkCz8po4ZB+vMw,ihfuoWZdakWNumz9qkPkKw,,,N,0,0,,,2010-06-27 10:17,2010-06-27 10:17,admin,admin,,,
829,83742,764,10658,841,1,0,N,N,N,CP_Drtn,TT_Task,DT_FixedDUR2,RV_OK,TK_NotStart,A18170,pouring for ground floor's slab,,40,0,8,0,0,0,8,0,0,0,,,,2010-09-28 08:00,2010-09-28 16:00,,2010-09-22 08:00,2010-09-22 16:00,2010-09-22 08:00,2010-09-22 16:00,2010-09-22 08:00,2010-09-22 16:00,,2010-09-28 08:00,2010-09-28 16:00,,PT_Normal,,,,,Ie5uRLrM60S2NprrqCYPeQ,a3/4FLDmwkahbHEIMOMOzw,,,N,0,0,,,2010-06-27 10:17,2010-06-27 10:17,admin,admin,,,
830,83743,764,10658,841,1,0,N,N,N,CP_Drtn,TT_Task,DT_FixedDUR2,RV_OK,TK_NotStart,A18180,pouring for 1st floor's slab,,56,0,8,0,0,0,8,0,0,0,,,,2010-10-19 08:00,2010-10-19 16:00,,2010-10-11 08:00,2010-10-11 16:00,2010-10-11 08:00,2010-10-11 16:00,2010-10-11 08:00,2010-10-11 16:00,,2010-10-19 08:00,2010-10-19 16:00,,PT_Normal,,,,,GN21QXH6xkmZTOCP6N1XBg,9ilm4IKKJUSofuiZdW+CLw,,,N,0,0,,,2010-06-27 10:17,2010-06-27 10:17,admin,admin,,,
831,83744,764,10658,841,1,0,N,N,N,CP_Drtn,TT_Task,DT_FixedDUR2,RV_OK,TK_NotStart,A18190,pouring for roof floor's slab,,56,0,8,0,0,0,8,0,0,0,,,,2010-11-03 08:00,2010-11-03 16:00,,2010-10-26 08:00,2010-10-26 16:00,2010-10-26 08:00,2010-10-26 16:00,2010-10-26 08:00,2010-10-26 16:00,,2010-11-03 08:00,2010-11-03 16:00,,PT_Normal,,,,,6kguReqchEKZHIGAcWjLvA,PQnzJHSVZkiYi4ojdvTXTw,,,N,0,0,,,2010-06-27 10:17,2010-06-27 10:17,admin,admin,,,
832,83745,764,10658,841,1,0,N,N,N,CP_Drtn,TT_Task,DT_FixedDrtn,RV_OK,TK_NotStart,A18200,Fence work,,40,16,400,0,0,0,400,0,0,0,,,,2010-09-29 08:00,2010-11-30 16:00,,2010-09-23 08:00,2010-11-24 16:00,2010-09-23 08:00,2010-11-24 16:00,2010-09-23 08:00,2010-11-24 16:00,,2010-09-29 08:00,2010-11-30 16:00,,PT_Normal,,,,,Rg7Y5CFXhECf6XJbfTOOKQ,djEJRlcy1EGhPEsBZo/OZw,,,N,0,0,,,2010-06-27 10:17,2010-06-27 10:17,admin,admin,,,
833,83746,764,10655,841,1,0,N,N,N,CP_Drtn,TT_Task,DT_FixedDUR2,RV_OK,TK_NotStart,A18210,Fence Drawings IFC,,584,544,8,0,0,0,8,0,0,0,,,,2010-09-16 08:00,2010-09-16 16:00,,2010-06-21 08:00,2010-06-21 16:00,2010-06-21 08:00,2010-06-21 16:00,2010-06-21 08:00,2010-06-21 16:00,,2010-09-16 08:00,2010-09-16 16:00,,PT_Normal,,,,,adn8jrf9b0GHaXoWT4xENQ,MLYy8rk4a06o13MtujNFEA,,,N,0,0,,,2010-06-27 10:17,2010-06-27 10:17,admin,admin,,,
834,83747,764,10657,849,1,0,N,N,N,CP_Drtn,TT_Task,DT_FixedDUR2,RV_OK,TK_NotStart,A18220,backfilling between P.C Foundation,,40,0,16,0,0,0,16,0,0,0,,,,2010-08-18 08:00,2010-08-19 16:00,,2010-08-12 08:00,2010-08-14 16:00,2010-08-12 08:00,2010-08-14 16:00,2010-08-12 08:00,2010-08-14 16:00,,2010-08-18 08:00,2010-08-19 16:00,,PT_Normal,,,,,fuXz4aDrP0iTA8jEYcO+7w,eXnUcZUvI0Cj8R8YYWZVng,,,N,0,0,,,2010-06-27 10:17,2010-06-27 10:17,admin,admin,,,
835,83748,764,10657,849,1,0,N,N,N,CP_Drtn,TT_Task,DT_FixedDUR2,RV_OK,TK_NotStart,A18230,P.C Under Smells,,40,0,8,0,0,0,8,0,0,0,,,,2010-08-21 08:00,2010-08-21 16:00,,2010-08-15 08:00,2010-08-15 16:00,2010-08-15 08:00,2010-08-15 16:00,2010-08-15 08:00,2010-08-15 16:00,,2010-08-21 08:00,2010-08-21 16:00,,PT_Normal,,,,,aomS/oh7LkW+8Zb2hh4Csw,EmNJM+JAmk6MHFzd/aLtTw,,,N,0,0,,,2010-06-27 10:17,2010-06-27 10:17,admin,admin,,,
836,83749,764,10658,849,1,0,N,N,N,CP_Drtn,TT_Task,DT_FixedDUR2,RV_OK,TK_NotStart,A18240,Brick works for 1st floor,,104,0,40,0,0,0,40,0,0,0,,,,2010-11-08 08:00,2010-11-13 16:00,,2010-10-24 08:00,2010-10-28 16:00,2010-10-24 08:00,2010-10-28 16:00,2010-10-24 08:00,2010-10-28 16:00,,2010-11-08 08:00,2010-11-13 16:00,,PT_Normal,,,,,RxBPVL+RY0WR6baixhJWdA,PuTRU/oCeE2WRCqJ9/e1Rg,,,N,0,0,,,2010-06-27 10:17,2010-06-27 10:17,admin,admin,,,
837,83750,764,10658,849,1,0,N,N,N,CP_Drtn,TT_Task,DT_FixedDUR2,RV_OK,TK_NotStart,A18250,Brick works for roof floor,,56,0,40,0,0,0,40,0,0,0,,,,2010-11-14 08:00,2010-11-18 16:00,,2010-11-06 08:00,2010-11-10 16:00,2010-11-06 08:00,2010-11-10 16:00,2010-11-06 08:00,2010-11-10 16:00,,2010-11-14 08:00,2010-11-18 16:00,,PT_Normal,,,,,onQ7J6YG20eeLS0BynkVWQ,tJcJJ+yzgUKaTo6GO7t7Tg,,,N,0,0,,,2010-06-27 10:17,2010-06-27 10:17,admin,admin,,,
838,83751,764,10660,849,1,0,N,N,N,CP_Drtn,TT_Task,DT_FixedDUR2,RV_OK,TK_NotStart,A18260,Internal plastering for 1st floor,,104,24,64,0,0,0,64,0,0,0,,,,2010-11-16 08:00,2010-11-24 16:00,,2010-11-01 08:00,2010-11-09 16:00,2010-11-01 08:00,2010-11-09 16:00,2010-11-01 08:00,2010-11-09 16:00,,2010-11-16 08:00,2010-11-24 16:00,,PT_Normal,,,,,bBgwteJ3YkqkBZk+kIjIAw,tNLkLy2kV0OLvsjmToEIWg,,,N,0,0,,,2010-06-27 10:17,2010-06-27 10:17,admin,admin,,,
839,83752,764,10660,849,1,0,N,N,N,CP_Drtn,TT_Task,DT_FixedDUR2,RV_OK,TK_NotStart,A18270,Internal plastering for roof floor,,80,56,40,0,0,0,40,0,0,0,,,,2010-11-25 08:00,2010-11-30 16:00,,2010-11-14 08:00,2010-11-18 16:00,2010-11-14 08:00,2010-11-18 16:00,2010-11-14 08:00,2010-11-18 16:00,,2010-11-25 08:00,2010-11-30 16:00,,PT_Normal,,,,,x1jgqypaqE+EDJ8psjRSBw,hgRlg+sohkSdKazpmrfS8g,,,N,0,0,,,2010-06-27 10:17,2010-06-27 10:17,admin,admin,,,
840,83753,764,10659,849,1,0,N,N,N,CP_Drtn,TT_Task,DT_FixedDUR2,RV_OK,TK_NotStart,A18280,electrical conduits for ground floor walls,,112,0,16,0,0,0,16,0,0,0,,,,2010-11-03 08:00,2010-11-04 16:00,,2010-10-18 08:00,2010-10-19 16:00,2010-10-18 08:00,2010-10-19 16:00,2010-10-18 08:00,2010-10-19 16:00,,2010-11-03 08:00,2010-11-04 16:00,,PT_Normal,,,,,hAhHCvEAEUGWANyw5tHsJQ,GzZ+DCOYXEqcye6vUhbBaQ,,,N,0,0,,,2010-06-27 10:17,2010-06-27 10:17,admin,admin,,,
841,83754,764,10659,849,1,0,N,N,N,CP_Drtn,TT_Task,DT_FixedDUR2,RV_OK,TK_NotStart,A18290,electrical conduits for 1st floor walls,,104,0,16,0,0,0,16,0,0,0,,,,2010-11-14 08:00,2010-11-15 16:00,,2010-10-30 08:00,2010-10-31 16:00,2010-10-30 08:00,2010-10-31 16:00,2010-10-30 08:00,2010-10-31 16:00,,2010-11-14 08:00,2010-11-15 16:00,,PT_Normal,,,,,SGGVW3wZ2EOXFVF0L/5I3Q,R0/s2ngJIUuixvAkzvYTuA,,,N,0,0,,,2010-06-27 10:17,2010-06-27 10:17,admin,admin,,,
842,83755,764,10659,849,1,0,N,N,N,CP_Drtn,TT_Task,DT_FixedDUR2,RV_OK,TK_NotStart,A18300,electrical conduits for roof floor walls,,80,0,16,0,0,0,16,0,0,0,,,,2010-11-23 08:00,2010-11-24 16:00,,2010-11-11 08:00,2010-11-13 16:00,2010-11-11 08:00,2010-11-13 16:00,2010-11-11 08:00,2010-11-13 16:00,,2010-11-23 08:00,2010-11-24 16:00,,PT_Normal,,,,,1IL5JZyfJ0OZRBuxDOKRSQ,GvgXBR5v3kuXdLMGKeH5kw,,,N,0,0,,,2010-06-27 10:17,2010-06-27 10:17,admin,admin,,,
843,83756,764,10663,841,1,0,N,N,N,CP_Drtn,TT_Task,DT_FixedDUR2,RV_OK,TK_NotStart,A18310,excavation,,64,0,16,0,0,0,16,0,0,0,,,,2010-07-29 08:00,2010-07-31 16:00,,2010-07-20 08:00,2010-07-21 16:00,2010-07-20 08:00,2010-07-21 16:00,2010-07-20 08:00,2010-07-21 16:00,,2010-07-29 08:00,2010-07-31 16:00,,PT_Normal,,,,,Bt//9YuOuECJUhs/lY+htg,cQlwGyNIgUyTVfyW6/b42w,,,N,0,0,,,2010-06-27 10:17,2010-06-27 10:17,admin,admin,,,
844,83757,764,10663,841,1,0,N,N,N,CP_Drtn,TT_Task,DT_FixedDUR2,RV_OK,TK_NotStart,A18320,soil replacement,,64,0,96,0,0,0,96,0,0,0,,,,2010-08-01 08:00,2010-08-14 16:00,,2010-07-22 08:00,2010-08-04 16:00,2010-07-22 08:00,2010-08-04 16:00,2010-07-22 08:00,2010-08-04 16:00,,2010-08-01 08:00,2010-08-14 16:00,,PT_Normal,,,,,bihWObQ3qkGA/mbO63pRjA,BO5g2CsilUSzhxurgCo4nA,,,N,0,0,,,2010-06-27 10:17,2010-06-27 10:17,admin,admin,,,
845,83758,764,10664,841,1,0,N,N,N,CP_Drtn,TT_Task,DT_FixedDUR2,RV_OK,TK_NotStart,A18330,Plain Concrete Foundation,,64,0,16,0,0,0,16,0,0,0,,,,2010-08-15 08:00,2010-08-16 16:00,,2010-08-05 08:00,2010-08-07 16:00,2010-08-05 08:00,2010-08-07 16:00,2010-08-05 08:00,2010-08-07 16:00,,2010-08-15 08:00,2010-08-16 16:00,,PT_Normal,,,,,5B1IzEBFxEyUZG3F9eggQg,2CufNcHgbU6oZDGLZofbXA,,,N,0,0,,,2010-06-27 10:17,2010-06-27 10:17,admin,admin,,,
846,83759,764,10664,841,1,0,N,N,N,CP_Drtn,TT_Task,DT_FixedDUR2,RV_OK,TK_NotStart,A18340,Reinforced Concrete Foundation,,64,0,56,0,0,0,56,0,0,0,,,,2010-08-22 08:00,2010-08-29 16:00,,2010-08-12 08:00,2010-08-19 16:00,2010-08-12 08:00,2010-08-19 16:00,2010-08-12 08:00,2010-08-19 16:00,,2010-08-22 08:00,2010-08-29 16:00,,PT_Normal,,,,,oKFyaMT2OkmvU3onK3xUCA,2SgAYgcxoEGKu9UVQMtzUQ,,,N,0,0,,,2010-06-27 10:17,2010-06-27 10:17,admin,admin,,,
847,83760,764,10664,841,1,0,N,N,N,CP_Drtn,TT_Task,DT_FixedDUR2,RV_OK,TK_NotStart,A18350,under ground  brick works,,64,0,16,0,0,0,16,0,0,0,,,,2010-09-06 08:00,2010-09-07 16:00,,2010-08-28 08:00,2010-08-29 16:00,2010-08-28 08:00,2010-08-29 16:00,2010-08-28 08:00,2010-08-29 16:00,,2010-09-06 08:00,2010-09-07 16:00,,PT_Normal,,,,,KwrhD5/XD0uDrEzr76bBUw,nDXiD7PKokyB2drYnL3A9w,,,N,0,0,,,2010-06-27 10:17,2010-06-27 10:17,admin,admin,,,
848,83761,764,10664,841,1,0,N,N,N,CP_Drtn,TT_Task,DT_FixedDUR2,RV_OK,TK_NotStart,A18360,under ground insulation for RC & Brick work,,64,0,16,0,0,0,16,0,0,0,,,,2010-09-11 08:00,2010-09-12 16:00,,2010-08-30 08:00,2010-08-31 16:00,2010-08-30 08:00,2010-08-31 16:00,2010-08-30 08:00,2010-08-31 16:00,,2010-09-11 08:00,2010-09-12 16:00,,PT_Normal,,,,,TeUKZFHGHUK7tGWfObJvgA,7oJGusM++Uao6Kh3SiWlqA,,,N,0,0,,,2010-06-27 10:17,2010-06-27 10:17,admin,admin,,,
849,83762,764,10664,841,1,0,N,N,N,CP_Drtn,TT_Task,DT_FixedDUR2,RV_OK,TK_NotStart,A18370,backfilling for under ground,,64,0,32,0,0,0,32,0,0,0,,,,2010-09-13 08:00,2010-09-16 16:00,,2010-09-01 08:00,2010-09-05 16:00,2010-09-01 08:00,2010-09-05 16:00,2010-09-01 08:00,2010-09-05 16:00,,2010-09-13 08:00,2010-09-16 16:00,,PT_Normal,,,,,4scsrvDxCkize+U63jveKw,DVqWwzkdmUySvCYkVytD3w,,,N,0,0,,,2010-06-27 10:17,2010-06-27 10:17,admin,admin,,,
850,83763,764,10664,841,1,0,N,N,N,CP_Drtn,TT_Task,DT_FixedDUR2,RV_OK,TK_NotStart,A18380,P.C slab on grade 10CM,,136,0,8,0,0,0,8,0,0,0,,,,2010-10-27 08:00,2010-10-27 16:00,,2010-10-07 08:00,2010-10-07 16:00,2010-10-07 08:00,2010-10-07 16:00,2010-10-07 08:00,2010-10-07 16:00,,2010-10-27 08:00,2010-10-27 16:00,,PT_Normal,,,,,nt5GAqsiZEyd1WVRvQNsgQ,FuTEuXRBP0SwDOR3wqKQjg,,,N,0,0,,,2010-06-27 10:17,2010-06-27 10:17,admin,admin,,,
851,83764,764,10664,841,1,0,N,N,N,CP_Drtn,TT_Task,DT_FixedDUR2,RV_OK,TK_NotStart,A18390,moisture insulation with membrane sheets,,136,0,16,0,0,0,16,0,0,0,,,,2010-10-28 08:00,2010-10-30 16:00,,2010-10-09 08:00,2010-10-10 16:00,2010-10-09 08:00,2010-10-10 16:00,2010-10-09 08:00,2010-10-10 16:00,,2010-10-28 08:00,2010-10-30 16:00,,PT_Normal,,,,,4YZsbt0yZkexxQHj4aux7Q,qUoRg0KE4kK1nwzAFhQqeQ,,,N,0,0,,,2010-06-27 10:17,2010-06-27 10:17,admin,admin,,,
852,83765,764,10664,841,1,0,N,N,N,CP_Drtn,TT_Task,DT_FixedDUR2,RV_OK,TK_NotStart,A18400,R.C slab on grade,,136,0,16,0,0,0,16,0,0,0,,,,2010-10-31 08:00,2010-11-01 16:00,,2010-10-11 08:00,2010-10-12 16:00,2010-10-11 08:00,2010-10-12 16:00,2010-10-11 08:00,2010-10-12 16:00,,2010-10-31 08:00,2010-11-01 16:00,,PT_Normal,,,,,+H9oKyDwWkWqlzEJUjfPyA,9gWMZQhgEkuz9dDARJsdBQ,,,N,0,0,,,2010-06-27 10:17,2010-06-27 10:17,admin,admin,,,
853,83766,764,10665,841,1,0,N,N,N,CP_Drtn,TT_Task,DT_FixedDUR2,RV_OK,TK_NotStart,A18410,columns for ground floor,,64,0,48,0,0,0,48,0,0,0,,,,2010-08-30 08:00,2010-09-05 16:00,,2010-08-21 08:00,2010-08-26 16:00,2010-08-21 08:00,2010-08-26 16:00,2010-08-21 08:00,2010-08-26 16:00,,2010-08-30 08:00,2010-09-05 16:00,,PT_Normal,,,,,DeFsLiBkEUWUlYyXPdpwOg,4mAqBIiTpUCJFthd125nNg,,,N,0,0,,,2010-06-27 10:17,2010-06-27 10:17,admin,admin,,,
854,83767,764,10665,841,1,0,N,N,N,CP_Drtn,TT_Task,DT_FixedDUR2,RV_OK,TK_NotStart,A18420,slab for ground floor,,64,0,72,0,0,0,72,0,0,0,,,,2010-09-18 08:00,2010-09-27 16:00,,2010-09-06 08:00,2010-09-18 16:00,2010-09-06 08:00,2010-09-18 16:00,2010-09-06 08:00,2010-09-18 16:00,,2010-09-18 08:00,2010-09-27 16:00,,PT_Normal,,,,,Ik29uKksPEqdh8PN+z9j5A,XkxJEtvmrUa6LwKtcvn80g,,,N,0,0,,,2010-06-27 10:17,2010-06-27 10:17,admin,admin,,,
855,83768,764,10665,841,1,0,N,N,N,CP_Drtn,TT_Task,DT_FixedDUR2,RV_OK,TK_NotStart,A18430,columns for 1st floor,,80,0,48,0,0,0,48,0,0,0,,,,2010-10-02 08:00,2010-10-07 16:00,,2010-09-20 08:00,2010-09-26 16:00,2010-09-20 08:00,2010-09-26 16:00,2010-09-20 08:00,2010-09-26 16:00,,2010-10-02 08:00,2010-10-07 16:00,,PT_Normal,,,,,GkVagoIrq0yXcF+MdCZU2w,BFrSfEKNLEGnusVxj4nByw,,,N,0,0,,,2010-06-27 10:17,2010-06-27 10:17,admin,admin,,,
856,83769,764,10665,841,1,0,N,N,N,CP_Drtn,TT_Task,DT_FixedDUR2,RV_OK,TK_NotStart,A18440,slab for 1st floor,,80,0,72,0,0,0,72,0,0,0,,,,2010-10-09 08:00,2010-10-18 16:00,,2010-09-27 08:00,2010-10-06 16:00,2010-09-27 08:00,2010-10-06 16:00,2010-09-27 08:00,2010-10-06 16:00,,2010-10-09 08:00,2010-10-18 16:00,,PT_Normal,,,,,NX+oHKkd906HqXMuSF3gKg,SaXn3hkwIkiahXODAGWVdA,,,N,0,0,,,2010-06-27 10:17,2010-06-27 10:17,admin,admin,,,
857,83770,764,10665,841,1,0,N,N,N,CP_Drtn,TT_Task,DT_FixedDUR2,RV_OK,TK_NotStart,A18450,columns for roof floor,,80,0,32,0,0,0,32,0,0,0,,,,2010-10-23 08:00,2010-10-26 16:00,,2010-10-11 08:00,2010-10-14 16:00,2010-10-11 08:00,2010-10-14 16:00,2010-10-11 08:00,2010-10-14 16:00,,2010-10-23 08:00,2010-10-26 16:00,,PT_Normal,,,,,i+OdS0cEP0yrY83ulirLLQ,U9Y3ME1xkkG3cjyfKXoOBg,,,N,0,0,,,2010-06-27 10:17,2010-06-27 10:17,admin,admin,,,
858,83771,764,10665,841,1,0,N,N,N,CP_Drtn,TT_Task,DT_FixedDUR2,RV_OK,TK_NotStart,A18460,slab for roof floor,,80,0,48,0,0,0,48,0,0,0,,,,2010-10-27 08:00,2010-11-02 16:00,,2010-10-16 08:00,2010-10-21 16:00,2010-10-16 08:00,2010-10-21 16:00,2010-10-16 08:00,2010-10-21 16:00,,2010-10-27 08:00,2010-11-02 16:00,,PT_Normal,,,,,z0Nb7+St2EehgL1Tagbz6g,IlMiSSKtAUeWZeCMSPsYkQ,,,N,0,0,,,2010-06-27 10:17,2010-06-27 10:17,admin,admin,,,
859,83772,764,10665,841,1,0,N,N,N,CP_Drtn,TT_Task,DT_FixedDUR2,RV_OK,TK_NotStart,A18470,Brick works for ground floor,,136,0,40,0,0,0,40,0,0,0,,,,2010-10-21 08:00,2010-10-26 16:00,,2010-10-02 08:00,2010-10-06 16:00,2010-10-02 08:00,2010-10-06 16:00,2010-10-02 08:00,2010-10-06 16:00,,2010-10-21 08:00,2010-10-26 16:00,,PT_Normal,,,,,yVyU9QmGV0KeDfMyyALhsQ,eDf5CRDDXkqG7Mv+AK4LCg,,,N,0,0,,,2010-06-27 10:17,2010-06-27 10:17,admin,admin,,,
860,83773,764,10666,841,1,0,N,N,N,CP_Drtn,TT_Task,DT_FixedDrtn,RV_OK,TK_NotStart,A18480,electrical conduits for ground floor's slab,,72,8,16,0,0,0,16,0,0,0,,,,2010-09-23 08:00,2010-09-25 16:00,,2010-09-13 08:00,2010-09-14 16:00,2010-09-13 08:00,2010-09-14 16:00,2010-09-13 08:00,2010-09-14 16:00,,2010-09-23 08:00,2010-09-25 16:00,,PT_Normal,,,,,mW88rIpFuUagmKU329Z9cA,ZJp4cwKYlUO5aIeTkxfYKA,,,N,0,0,,,2010-06-27 10:17,2010-06-27 10:17,admin,admin,,,
861,83774,764,10666,841,1,0,N,N,N,CP_Drtn,TT_Task,DT_FixedDrtn,RV_OK,TK_NotStart,A18490,electrical conduits for 1st floor slab,,88,8,16,0,0,0,16,0,0,0,,,,2010-10-14 08:00,2010-10-16 16:00,,2010-10-02 08:00,2010-10-03 16:00,2010-10-02 08:00,2010-10-03 16:00,2010-10-02 08:00,2010-10-03 16:00,,2010-10-14 08:00,2010-10-16 16:00,,PT_Normal,,,,,ZagYwHxFHkOKaJ7efo6Jug,p9mqkx6ZmEy1kKhnVQ8GPw,,,N,0,0,,,2010-06-27 10:17,2010-06-27 10:17,admin,admin,,,
862,83775,764,10666,841,1,0,N,N,N,CP_Drtn,TT_Task,DT_FixedDrtn,RV_OK,TK_NotStart,A18500,electrical conduits for roof slab,,88,8,8,0,0,0,8,0,0,0,,,,2010-11-01 08:00,2010-11-01 16:00,,2010-10-19 08:00,2010-10-19 16:00,2010-10-19 08:00,2010-10-19 16:00,2010-10-19 08:00,2010-10-19 16:00,,2010-11-01 08:00,2010-11-01 16:00,,PT_Normal,,,,,bORZuyQLV0OjhV6UBqxctQ,o/IFfUt/H0SjN2xt/C04ow,,,N,0,0,,,2010-06-27 10:17,2010-06-27 10:17,admin,admin,,,
863,83776,764,10667,841,1,0,N,N,N,CP_Drtn,TT_Task,DT_FixedDUR2,RV_OK,TK_NotStart,A18510,Internal plastering for ground floor,,136,16,64,0,0,0,64,0,0,0,,,,2010-11-06 08:00,2010-11-14 16:00,,2010-10-17 08:00,2010-10-25 16:00,2010-10-17 08:00,2010-10-25 16:00,2010-10-17 08:00,2010-10-25 16:00,,2010-11-06 08:00,2010-11-14 16:00,,PT_Normal,,,,,HWz7oy2nX0qyLmyYW+Dt5g,qemUBgjWKEmxqVfVWieIOQ,,,N,0,0,,,2010-06-27 10:17,2010-06-27 10:17,admin,admin,,,
864,83777,764,10667,841,1,0,N,N,N,CP_Drtn,TT_Task,DT_FixedDUR2,RV_OK,TK_NotStart,A18520,External plastering,,48,0,80,0,0,0,80,0,0,0,,,,2010-11-20 08:00,2010-11-30 16:00,,2010-11-08 08:00,2010-11-23 16:00,2010-11-08 08:00,2010-11-23 16:00,2010-11-08 08:00,2010-11-23 16:00,,2010-11-20 08:00,2010-11-30 16:00,,PT_Normal,,,,,bayVHEiP1Uy22wPK2LDCRQ,gD4YSJap5kqTgz64aQ7CYA,,,N,0,0,,,2010-06-27 10:17,2010-06-27 10:17,admin,admin,,,
865,83778,764,10666,841,1,0,N,N,N,CP_Drtn,TT_Task,DT_FixedDrtn,RV_OK,TK_NotStart,A18530,plumbing connections under slab on grade,,320,184,16,0,0,0,16,0,0,0,,,,2010-10-25 08:00,2010-10-26 16:00,,2010-09-06 08:00,2010-09-07 16:00,2010-09-06 08:00,2010-09-07 16:00,2010-09-06 08:00,2010-09-07 16:00,,2010-10-25 08:00,2010-10-26 16:00,,PT_Normal,,,,,7SDMbBiSs0ShxWcKBXVcAQ,vMaJNKksOE6XvTkQq9lH+w,,,N,0,0,,,2010-06-27 10:17,2010-06-27 10:17,admin,admin,,,
866,83779,764,10662,841,0,0,N,N,N,CP_Drtn,TT_Mile,DT_FixedDrtn,RV_OK,TK_NotStart,A18540,Start Villa construction,,64,0,0,0,0,0,0,0,0,0,,,,2010-06-30 08:00,2010-06-30 08:00,,2010-06-21 08:00,2010-06-21 08:00,2010-06-21 08:00,2010-06-21 08:00,2010-06-21 08:00,2010-06-21 08:00,,2010-06-30 08:00,2010-06-30 08:00,,PT_Normal,,,,,gdKPh1erKkOuesj2nCrUGw,l8OHXQMEM0S+9pc7LKA+zQ,,,N,0,0,,,2010-06-27 10:17,2010-06-27 10:17,admin,admin,,,
867,83780,764,10662,841,0,0,N,N,N,CP_Drtn,TT_FinMile,DT_FixedDrtn,RV_OK,TK_NotStart,A18550,finish Villa construction,,48,48,0,0,0,0,0,0,0,0,,,,2010-11-30 16:00,2010-11-30 16:00,,2010-11-23 16:00,2010-11-23 16:00,2010-11-23 16:00,2010-11-23 16:00,2010-11-23 16:00,2010-11-23 16:00,,2010-11-30 16:00,2010-11-30 16:00,,PT_Normal,,,,,6z/rR6pqrUe4Zt1whsi6bg,DvVWD6ThmE62ara2Aodong,,,N,0,0,,,2010-06-27 10:17,2010-06-27 10:17,admin,admin,,,
868,83781,764,10662,841,0,0,N,N,N,CP_Drtn,TT_Mile,DT_FixedDrtn,RV_OK,TK_NotStart,A18560,IFC drawings,,64,0,0,0,0,0,0,0,0,0,,,,2010-06-30 08:00,2010-06-30 08:00,,2010-06-21 08:00,2010-06-21 08:00,2010-06-21 08:00,2010-06-21 08:00,2010-06-21 08:00,2010-06-21 08:00,,2010-06-30 08:00,2010-06-30 08:00,,PT_Normal,,,,,h1SrXpcJ5UqE7idA0vFTIg,7de/Gbu6KU+hoq5/SFPhVw,,,N,0,0,,,2010-06-27 10:17,2010-06-27 10:17,admin,admin,,,
869,83782,764,10665,841,1,0,N,N,N,CP_Drtn,TT_Task,DT_FixedDUR2,RV_OK,TK_NotStart,A18570,pouring for ground floor's slab,,64,0,8,0,0,0,8,0,0,0,,,,2010-09-28 08:00,2010-09-28 16:00,,2010-09-19 08:00,2010-09-19 16:00,2010-09-19 08:00,2010-09-19 16:00,2010-09-19 08:00,2010-09-19 16:00,,2010-09-28 08:00,2010-09-28 16:00,,PT_Normal,,,,,FtdGdQUs30OCp7SucTao8Q,+Pa1kNWX3kuQUxjQAORX3A,,,N,0,0,,,2010-06-27 10:17,2010-06-27 10:17,admin,admin,,,
870,83783,764,10665,841,1,0,N,N,N,CP_Drtn,TT_Task,DT_FixedDUR2,RV_OK,TK_NotStart,A18580,pouring for 1st floor's slab,,80,0,8,0,0,0,8,0,0,0,,,,2010-10-19 08:00,2010-10-19 16:00,,2010-10-07 08:00,2010-10-07 16:00,2010-10-07 08:00,2010-10-07 16:00,2010-10-07 08:00,2010-10-07 16:00,,2010-10-19 08:00,2010-10-19 16:00,,PT_Normal,,,,,1TsaxsjU00ey+1ehV8eIzQ,uiExpzkGwU+Er5VTiN+pkQ,,,N,0,0,,,2010-06-27 10:17,2010-06-27 10:17,admin,admin,,,
871,83784,764,10665,841,1,0,N,N,N,CP_Drtn,TT_Task,DT_FixedDUR2,RV_OK,TK_NotStart,A18590,pouring for roof floor's slab,,80,0,8,0,0,0,8,0,0,0,,,,2010-11-03 08:00,2010-11-03 16:00,,2010-10-23 08:00,2010-10-23 16:00,2010-10-23 08:00,2010-10-23 16:00,2010-10-23 08:00,2010-10-23 16:00,,2010-11-03 08:00,2010-11-03 16:00,,PT_Normal,,,,,0h1FcOTaXkGv7JZfOEHJrQ,UoeBe2JgP0mXYxZ7DN+pYQ,,,N,0,0,,,2010-06-27 10:17,2010-06-27 10:17,admin,admin,,,
872,83785,764,10665,841,1,0,N,N,N,CP_Drtn,TT_Task,DT_FixedDrtn,RV_OK,TK_NotStart,A18600,Fence work,,64,16,400,0,0,0,400,0,0,0,,,,2010-09-29 08:00,2010-11-30 16:00,,2010-09-20 08:00,2010-11-21 16:00,2010-09-20 08:00,2010-11-21 16:00,2010-09-20 08:00,2010-11-21 16:00,,2010-09-29 08:00,2010-11-30 16:00,,PT_Normal,,,,,GT8JeqpxKEuGPvxXYsAPaQ,38itMXU+j0yrkispKiVxsw,,,N,0,0,,,2010-06-27 10:17,2010-06-27 10:17,admin,admin,,,
873,83786,764,10662,841,1,0,N,N,N,CP_Drtn,TT_Task,DT_FixedDUR2,RV_OK,TK_NotStart,A18610,Fence Drawings IFC,,584,520,8,0,0,0,8,0,0,0,,,,2010-09-16 08:00,2010-09-16 16:00,,2010-06-21 08:00,2010-06-21 16:00,2010-06-21 08:00,2010-06-21 16:00,2010-06-21 08:00,2010-06-21 16:00,,2010-09-16 08:00,2010-09-16 16:00,,PT_Normal,,,,,ClwpriH4SkmOuTq+XNnSoQ,Ub+xX7RB30+KPetHnnkapA,,,N,0,0,,,2010-06-27 10:17,2010-06-27 10:17,admin,admin,,,
874,83787,764,10664,849,1,0,N,N,N,CP_Drtn,TT_Task,DT_FixedDUR2,RV_OK,TK_NotStart,A18620,backfilling between P.C Foundation,,64,0,16,0,0,0,16,0,0,0,,,,2010-08-18 08:00,2010-08-19 16:00,,2010-08-09 08:00,2010-08-10 16:00,2010-08-09 08:00,2010-08-10 16:00,2010-08-09 08:00,2010-08-10 16:00,,2010-08-18 08:00,2010-08-19 16:00,,PT_Normal,,,,,gmGvljw1VUmkPAOlfGhCxg,va14fVScV06f6nLpxM+naA,,,N,0,0,,,2010-06-27 10:17,2010-06-27 10:17,admin,admin,,,
875,83788,764,10664,849,1,0,N,N,N,CP_Drtn,TT_Task,DT_FixedDUR2,RV_OK,TK_NotStart,A18630,P.C Under Smells,,64,0,8,0,0,0,8,0,0,0,,,,2010-08-21 08:00,2010-08-21 16:00,,2010-08-11 08:00,2010-08-11 16:00,2010-08-11 08:00,2010-08-11 16:00,2010-08-11 08:00,2010-08-11 16:00,,2010-08-21 08:00,2010-08-21 16:00,,PT_Normal,,,,,pWOSHJ8rA069gsv+YXPFMg,goaQcsjY90GYJ2KgBUG+SQ,,,N,0,0,,,2010-06-27 10:17,2010-06-27 10:17,admin,admin,,,
876,83789,764,10665,849,1,0,N,N,N,CP_Drtn,TT_Task,DT_FixedDUR2,RV_OK,TK_NotStart,A18640,Brick works for 1st floor,,128,0,40,0,0,0,40,0,0,0,,,,2010-11-08 08:00,2010-11-13 16:00,,2010-10-20 08:00,2010-10-25 16:00,2010-10-20 08:00,2010-10-25 16:00,2010-10-20 08:00,2010-10-25 16:00,,2010-11-08 08:00,2010-11-13 16:00,,PT_Normal,,,,,eyGLD02wp0uwTmOpUmqKZg,A1QpsZ9dgk+fOZnUAfOkDQ,,,N,0,0,,,2010-06-27 10:17,2010-06-27 10:17,admin,admin,,,
877,83790,764,10665,849,1,0,N,N,N,CP_Drtn,TT_Task,DT_FixedDUR2,RV_OK,TK_NotStart,A18650,Brick works for roof floor,,80,0,40,0,0,0,40,0,0,0,,,,2010-11-14 08:00,2010-11-18 16:00,,2010-11-02 08:00,2010-11-07 16:00,2010-11-02 08:00,2010-11-07 16:00,2010-11-02 08:00,2010-11-07 16:00,,2010-11-14 08:00,2010-11-18 16:00,,PT_Normal,,,,,kLrxQWZrI0id0T2NXqMsaQ,SOTXzLO7OUyctckQg6DTfg,,,N,0,0,,,2010-06-27 10:17,2010-06-27 10:17,admin,admin,,,
878,83791,764,10667,849,1,0,N,N,N,CP_Drtn,TT_Task,DT_FixedDUR2,RV_OK,TK_NotStart,A18660,Internal plastering for 1st floor,,128,24,64,0,0,0,64,0,0,0,,,,2010-11-16 08:00,2010-11-24 16:00,,2010-10-28 08:00,2010-11-06 16:00,2010-10-28 08:00,2010-11-06 16:00,2010-10-28 08:00,2010-11-06 16:00,,2010-11-16 08:00,2010-11-24 16:00,,PT_Normal,,,,,Msy5oofbWUyKhgdn+JxyBA,uxRkovti2EOhxWPGyG9ucg,,,N,0,0,,,2010-06-27 10:17,2010-06-27 10:17,admin,admin,,,
879,83792,764,10667,849,1,0,N,N,N,CP_Drtn,TT_Task,DT_FixedDUR2,RV_OK,TK_NotStart,A18670,Internal plastering for roof floor,,104,56,40,0,0,0,40,0,0,0,,,,2010-11-25 08:00,2010-11-30 16:00,,2010-11-10 08:00,2010-11-15 16:00,2010-11-10 08:00,2010-11-15 16:00,2010-11-10 08:00,2010-11-15 16:00,,2010-11-25 08:00,2010-11-30 16:00,,PT_Normal,,,,,RFcMsR4WIkSNqtoGMDMFPA,rslO29XSEU+poJJoD1ybag,,,N,0,0,,,2010-06-27 10:17,2010-06-27 10:17,admin,admin,,,
880,83793,764,10666,849,1,0,N,N,N,CP_Drtn,TT_Task,DT_FixedDUR2,RV_OK,TK_NotStart,A18680,electrical conduits for ground floor walls,,136,0,16,0,0,0,16,0,0,0,,,,2010-11-03 08:00,2010-11-04 16:00,,2010-10-14 08:00,2010-10-16 16:00,2010-10-14 08:00,2010-10-16 16:00,2010-10-14 08:00,2010-10-16 16:00,,2010-11-03 08:00,2010-11-04 16:00,,PT_Normal,,,,,dotHJSGy4USVSRvuigj6BA,2aEH4+Lm2UWPQyMm0ZU7Iw,,,N,0,0,,,2010-06-27 10:17,2010-06-27 10:17,admin,admin,,,
881,83794,764,10666,849,1,0,N,N,N,CP_Drtn,TT_Task,DT_FixedDUR2,RV_OK,TK_NotStart,A18690,electrical conduits for 1st floor walls,,128,0,16,0,0,0,16,0,0,0,,,,2010-11-14 08:00,2010-11-15 16:00,,2010-10-26 08:00,2010-10-27 16:00,2010-10-26 08:00,2010-10-27 16:00,2010-10-26 08:00,2010-10-27 16:00,,2010-11-14 08:00,2010-11-15 16:00,,PT_Normal,,,,,9jELQQSwR0608vACN8eAig,Eo2xGs4GMEmJOJzTQ35ftw,,,N,0,0,,,2010-06-27 10:17,2010-06-27 10:17,admin,admin,,,
882,83795,764,10666,849,1,0,N,N,N,CP_Drtn,TT_Task,DT_FixedDUR2,RV_OK,TK_NotStart,A18700,electrical conduits for roof floor walls,,104,0,16,0,0,0,16,0,0,0,,,,2010-11-23 08:00,2010-11-24 16:00,,2010-11-08 08:00,2010-11-09 16:00,2010-11-08 08:00,2010-11-09 16:00,2010-11-08 08:00,2010-11-09 16:00,,2010-11-23 08:00,2010-11-24 16:00,,PT_Normal,,,,,nuDJ1fVO3kaDTvVmuh1+Sg,/KGDvqu910GNWcK8uEv5Rw,,,N,0,0,,,2010-06-27 10:17,2010-06-27 10:17,admin,admin,,,
883,83796,764,10670,841,1,0,N,N,N,CP_Drtn,TT_Task,DT_FixedDUR2,RV_OK,TK_NotStart,A18710,excavation,,64,0,16,0,0,0,16,0,0,0,,,,2010-07-29 08:00,2010-07-31 16:00,,2010-07-20 08:00,2010-07-21 16:00,2010-07-20 08:00,2010-07-21 16:00,2010-07-20 08:00,2010-07-21 16:00,,2010-07-29 08:00,2010-07-31 16:00,,PT_Normal,,,,,4fig9ajIa0CfRQnufi9OZQ,MaE2vRAleEuNRNOweBuAxw,,,N,0,0,,,2010-06-27 10:17,2010-06-27 10:17,admin,admin,,,
884,83797,764,10670,841,1,0,N,N,N,CP_Drtn,TT_Task,DT_FixedDUR2,RV_OK,TK_NotStart,A18720,soil replacement,,64,0,96,0,0,0,96,0,0,0,,,,2010-08-01 08:00,2010-08-14 16:00,,2010-07-22 08:00,2010-08-04 16:00,2010-07-22 08:00,2010-08-04 16:00,2010-07-22 08:00,2010-08-04 16:00,,2010-08-01 08:00,2010-08-14 16:00,,PT_Normal,,,,,ge7aKQdHVUGJXSHqqmut0Q,R2OMC8lNrE2FjQT9CKg9/w,,,N,0,0,,,2010-06-27 10:17,2010-06-27 10:17,admin,admin,,,
885,83798,764,10671,841,1,0,N,N,N,CP_Drtn,TT_Task,DT_FixedDUR2,RV_OK,TK_NotStart,A18730,Plain Concrete Foundation,,64,0,16,0,0,0,16,0,0,0,,,,2010-08-15 08:00,2010-08-16 16:00,,2010-08-05 08:00,2010-08-07 16:00,2010-08-05 08:00,2010-08-07 16:00,2010-08-05 08:00,2010-08-07 16:00,,2010-08-15 08:00,2010-08-16 16:00,,PT_Normal,,,,,UisAZCIfZkatECqhrjC5Ng,LRJUbRsUtEKMNnUSvGMc7w,,,N,0,0,,,2010-06-27 10:17,2010-06-27 10:17,admin,admin,,,
886,83799,764,10671,841,1,0,N,N,N,CP_Drtn,TT_Task,DT_FixedDUR2,RV_OK,TK_NotStart,A18740,Reinforced Concrete Foundation,,64,0,56,0,0,0,56,0,0,0,,,,2010-08-22 08:00,2010-08-29 16:00,,2010-08-12 08:00,2010-08-19 16:00,2010-08-12 08:00,2010-08-19 16:00,2010-08-12 08:00,2010-08-19 16:00,,2010-08-22 08:00,2010-08-29 16:00,,PT_Normal,,,,,1K7ap0Xo4UaGZiMJY5kvxg,OnQjh5BlHUKEMuNb2iNYQg,,,N,0,0,,,2010-06-27 10:17,2010-06-27 10:17,admin,admin,,,
887,83800,764,10671,841,1,0,N,N,N,CP_Drtn,TT_Task,DT_FixedDUR2,RV_OK,TK_NotStart,A18750,under ground  brick works,,64,0,16,0,0,0,16,0,0,0,,,,2010-09-06 08:00,2010-09-07 16:00,,2010-08-28 08:00,2010-08-29 16:00,2010-08-28 08:00,2010-08-29 16:00,2010-08-28 08:00,2010-08-29 16:00,,2010-09-06 08:00,2010-09-07 16:00,,PT_Normal,,,,,GsbiUbOd9EW5WFZXBCoFbw,L8CxlotzIUC8sVWbjaE1TA,,,N,0,0,,,2010-06-27 10:17,2010-06-27 10:17,admin,admin,,,
888,83801,764,10671,841,1,0,N,N,N,CP_Drtn,TT_Task,DT_FixedDUR2,RV_OK,TK_NotStart,A18760,under ground insulation for RC & Brick work,,64,0,16,0,0,0,16,0,0,0,,,,2010-09-11 08:00,2010-09-12 16:00,,2010-08-30 08:00,2010-08-31 16:00,2010-08-30 08:00,2010-08-31 16:00,2010-08-30 08:00,2010-08-31 16:00,,2010-09-11 08:00,2010-09-12 16:00,,PT_Normal,,,,,HtDig6fLz0+EbVnRzw+2iw,ZZHba1HXZ0S8t3FiJM02Pg,,,N,0,0,,,2010-06-27 10:17,2010-06-27 10:17,admin,admin,,,
889,83802,764,10671,841,1,0,N,N,N,CP_Drtn,TT_Task,DT_FixedDUR2,RV_OK,TK_NotStart,A18770,backfilling for under ground,,64,0,32,0,0,0,32,0,0,0,,,,2010-09-13 08:00,2010-09-16 16:00,,2010-09-01 08:00,2010-09-05 16:00,2010-09-01 08:00,2010-09-05 16:00,2010-09-01 08:00,2010-09-05 16:00,,2010-09-13 08:00,2010-09-16 16:00,,PT_Normal,,,,,ZN4G7D68TUG3mJRMc2ydBA,kMAxwbsCJUawVZ+fsme40g,,,N,0,0,,,2010-06-27 10:17,2010-06-27 10:17,admin,admin,,,
890,83803,764,10671,841,1,0,N,N,N,CP_Drtn,TT_Task,DT_FixedDUR2,RV_OK,TK_NotStart,A18780,P.C slab on grade 10CM,,136,0,8,0,0,0,8,0,0,0,,,,2010-10-27 08:00,2010-10-27 16:00,,2010-10-07 08:00,2010-10-07 16:00,2010-10-07 08:00,2010-10-07 16:00,2010-10-07 08:00,2010-10-07 16:00,,2010-10-27 08:00,2010-10-27 16:00,,PT_Normal,,,,,pdi9/8R7wUCpMDoyMf3p7Q,GKDkMLyu20aKpoZoF+W2hQ,,,N,0,0,,,2010-06-27 10:17,2010-06-27 10:17,admin,admin,,,
891,83804,764,10671,841,1,0,N,N,N,CP_Drtn,TT_Task,DT_FixedDUR2,RV_OK,TK_NotStart,A18790,moisture insulation with membrane sheets,,136,0,16,0,0,0,16,0,0,0,,,,2010-10-28 08:00,2010-10-30 16:00,,2010-10-09 08:00,2010-10-10 16:00,2010-10-09 08:00,2010-10-10 16:00,2010-10-09 08:00,2010-10-10 16:00,,2010-10-28 08:00,2010-10-30 16:00,,PT_Normal,,,,,npkjz13iG0uKoAkzodgMkw,xjUnj/VokEO+rDoLO1X75A,,,N,0,0,,,2010-06-27 10:17,2010-06-27 10:17,admin,admin,,,
892,83805,764,10671,841,1,0,N,N,N,CP_Drtn,TT_Task,DT_FixedDUR2,RV_OK,TK_NotStart,A18800,R.C slab on grade,,136,0,16,0,0,0,16,0,0,0,,,,2010-10-31 08:00,2010-11-01 16:00,,2010-10-11 08:00,2010-10-12 16:00,2010-10-11 08:00,2010-10-12 16:00,2010-10-11 08:00,2010-10-12 16:00,,2010-10-31 08:00,2010-11-01 16:00,,PT_Normal,,,,,rap9EbpZrk2s3binDFuLQA,D5wY96RdD0eV5zdc7ycjGQ,,,N,0,0,,,2010-06-27 10:17,2010-06-27 10:17,admin,admin,,,
893,83806,764,10672,841,1,0,N,N,N,CP_Drtn,TT_Task,DT_FixedDUR2,RV_OK,TK_NotStart,A18810,columns for ground floor,,64,0,48,0,0,0,48,0,0,0,,,,2010-08-30 08:00,2010-09-05 16:00,,2010-08-21 08:00,2010-08-26 16:00,2010-08-21 08:00,2010-08-26 16:00,2010-08-21 08:00,2010-08-26 16:00,,2010-08-30 08:00,2010-09-05 16:00,,PT_Normal,,,,,yodNxwFpuUya7Dlcus0vsA,elBkqLd2A0q1FX7TY5Ub3w,,,N,0,0,,,2010-06-27 10:17,2010-06-27 10:17,admin,admin,,,
894,83807,764,10672,841,1,0,N,N,N,CP_Drtn,TT_Task,DT_FixedDUR2,RV_OK,TK_NotStart,A18820,slab for ground floor,,64,0,72,0,0,0,72,0,0,0,,,,2010-09-18 08:00,2010-09-27 16:00,,2010-09-06 08:00,2010-09-18 16:00,2010-09-06 08:00,2010-09-18 16:00,2010-09-06 08:00,2010-09-18 16:00,,2010-09-18 08:00,2010-09-27 16:00,,PT_Normal,,,,,MYEjkgw91ECZG1kTLIgE5w,289x7HU4ZEWz70S3HkcsgA,,,N,0,0,,,2010-06-27 10:17,2010-06-27 10:17,admin,admin,,,
895,83808,764,10672,841,1,0,N,N,N,CP_Drtn,TT_Task,DT_FixedDUR2,RV_OK,TK_NotStart,A18830,columns for 1st floor,,80,0,48,0,0,0,48,0,0,0,,,,2010-10-02 08:00,2010-10-07 16:00,,2010-09-20 08:00,2010-09-26 16:00,2010-09-20 08:00,2010-09-26 16:00,2010-09-20 08:00,2010-09-26 16:00,,2010-10-02 08:00,2010-10-07 16:00,,PT_Normal,,,,,H2yrNy+RWUaC1vjqzjzZ6Q,f1QDGtZ1DEavrvMvcczXUg,,,N,0,0,,,2010-06-27 10:17,2010-06-27 10:17,admin,admin,,,
896,83809,764,10672,841,1,0,N,N,N,CP_Drtn,TT_Task,DT_FixedDUR2,RV_OK,TK_NotStart,A18840,slab for 1st floor,,80,0,72,0,0,0,72,0,0,0,,,,2010-10-09 08:00,2010-10-18 16:00,,2010-09-27 08:00,2010-10-06 16:00,2010-09-27 08:00,2010-10-06 16:00,2010-09-27 08:00,2010-10-06 16:00,,2010-10-09 08:00,2010-10-18 16:00,,PT_Normal,,,,,sWSkMrs5kUmmXRQLNUxXhw,GAJcLh1d60On9/IpGtRaVg,,,N,0,0,,,2010-06-27 10:17,2010-06-27 10:17,admin,admin,,,
897,83810,764,10672,841,1,0,N,N,N,CP_Drtn,TT_Task,DT_FixedDUR2,RV_OK,TK_NotStart,A18850,columns for roof floor,,80,0,32,0,0,0,32,0,0,0,,,,2010-10-23 08:00,2010-10-26 16:00,,2010-10-11 08:00,2010-10-14 16:00,2010-10-11 08:00,2010-10-14 16:00,2010-10-11 08:00,2010-10-14 16:00,,2010-10-23 08:00,2010-10-26 16:00,,PT_Normal,,,,,hYp0OEBP9Uurr5/9pJzOPw,jp4aiO9GQE+StMYv8vHC3w,,,N,0,0,,,2010-06-27 10:17,2010-06-27 10:17,admin,admin,,,
898,83811,764,10672,841,1,0,N,N,N,CP_Drtn,TT_Task,DT_FixedDUR2,RV_OK,TK_NotStart,A18860,slab for roof floor,,80,0,48,0,0,0,48,0,0,0,,,,2010-10-27 08:00,2010-11-02 16:00,,2010-10-16 08:00,2010-10-21 16:00,2010-10-16 08:00,2010-10-21 16:00,2010-10-16 08:00,2010-10-21 16:00,,2010-10-27 08:00,2010-11-02 16:00,,PT_Normal,,,,,1UYMuGw6RUuXKFNiqO9Qyg,S5BlIHJW9Eq14PbJofkreQ,,,N,0,0,,,2010-06-27 10:17,2010-06-27 10:17,admin,admin,,,
899,83812,764,10672,841,1,0,N,N,N,CP_Drtn,TT_Task,DT_FixedDUR2,RV_OK,TK_NotStart,A18870,Brick works for ground floor,,136,0,40,0,0,0,40,0,0,0,,,,2010-10-21 08:00,2010-10-26 16:00,,2010-10-02 08:00,2010-10-06 16:00,2010-10-02 08:00,2010-10-06 16:00,2010-10-02 08:00,2010-10-06 16:00,,2010-10-21 08:00,2010-10-26 16:00,,PT_Normal,,,,,3EmeV0bKeEuCYwxfxZZT6Q,XOtlTSAGNUK2Po7NtSiN9w,,,N,0,0,,,2010-06-27 10:17,2010-06-27 10:17,admin,admin,,,
900,83813,764,10673,841,1,0,N,N,N,CP_Drtn,TT_Task,DT_FixedDrtn,RV_OK,TK_NotStart,A18880,electrical conduits for ground floor's slab,,72,8,16,0,0,0,16,0,0,0,,,,2010-09-23 08:00,2010-09-25 16:00,,2010-09-13 08:00,2010-09-14 16:00,2010-09-13 08:00,2010-09-14 16:00,2010-09-13 08:00,2010-09-14 16:00,,2010-09-23 08:00,2010-09-25 16:00,,PT_Normal,,,,,JZpBnVxydEWD4ry3QFODhw,79Mm9WcwCEa23bRqkCpinQ,,,N,0,0,,,2010-06-27 10:17,2010-06-27 10:17,admin,admin,,,
901,83814,764,10673,841,1,0,N,N,N,CP_Drtn,TT_Task,DT_FixedDrtn,RV_OK,TK_NotStart,A18890,electrical conduits for 1st floor slab,,88,8,16,0,0,0,16,0,0,0,,,,2010-10-14 08:00,2010-10-16 16:00,,2010-10-02 08:00,2010-10-03 16:00,2010-10-02 08:00,2010-10-03 16:00,2010-10-02 08:00,2010-10-03 16:00,,2010-10-14 08:00,2010-10-16 16:00,,PT_Normal,,,,,kKPbYkx2/UyhFVH6V0MugA,4zYHqlXxr0SFthROuvtXOg,,,N,0,0,,,2010-06-27 10:17,2010-06-27 10:17,admin,admin,,,
902,83815,764,10673,841,1,0,N,N,N,CP_Drtn,TT_Task,DT_FixedDrtn,RV_OK,TK_NotStart,A18900,electrical conduits for roof slab,,88,8,8,0,0,0,8,0,0,0,,,,2010-11-01 08:00,2010-11-01 16:00,,2010-10-19 08:00,2010-10-19 16:00,2010-10-19 08:00,2010-10-19 16:00,2010-10-19 08:00,2010-10-19 16:00,,2010-11-01 08:00,2010-11-01 16:00,,PT_Normal,,,,,jzrhrb6IQkmzhJgsLNPzCQ,kLnbpEFqdUOrk2hz5th+DQ,,,N,0,0,,,2010-06-27 10:17,2010-06-27 10:17,admin,admin,,,
903,83816,764,10674,841,1,0,N,N,N,CP_Drtn,TT_Task,DT_FixedDUR2,RV_OK,TK_NotStart,A18910,Internal plastering for ground floor,,136,16,64,0,0,0,64,0,0,0,,,,2010-11-06 08:00,2010-11-14 16:00,,2010-10-17 08:00,2010-10-25 16:00,2010-10-17 08:00,2010-10-25 16:00,2010-10-17 08:00,2010-10-25 16:00,,2010-11-06 08:00,2010-11-14 16:00,,PT_Normal,,,,,LGTGLh4fsUm1HeiBWOS5vQ,OMZDZiAKkEKpwd0J3o+3Bw,,,N,0,0,,,2010-06-27 10:17,2010-06-27 10:17,admin,admin,,,
904,83817,764,10674,841,1,0,N,N,N,CP_Drtn,TT_Task,DT_FixedDUR2,RV_OK,TK_NotStart,A18920,External plastering,,48,0,80,0,0,0,80,0,0,0,,,,2010-11-20 08:00,2010-11-30 16:00,,2010-11-08 08:00,2010-11-23 16:00,2010-11-08 08:00,2010-11-23 16:00,2010-11-08 08:00,2010-11-23 16:00,,2010-11-20 08:00,2010-11-30 16:00,,PT_Normal,,,,,HEuPr+tRt0mo5hFW9eX0Ew,kwMFZJ8u206+HMtFOdPBcw,,,N,0,0,,,2010-06-27 10:17,2010-06-27 10:17,admin,admin,,,
905,83818,764,10673,841,1,0,N,N,N,CP_Drtn,TT_Task,DT_FixedDrtn,RV_OK,TK_NotStart,A18930,plumbing connections under slab on grade,,320,184,16,0,0,0,16,0,0,0,,,,2010-10-25 08:00,2010-10-26 16:00,,2010-09-06 08:00,2010-09-07 16:00,2010-09-06 08:00,2010-09-07 16:00,2010-09-06 08:00,2010-09-07 16:00,,2010-10-25 08:00,2010-10-26 16:00,,PT_Normal,,,,,91hSf78iHEa3hHMqsjjWFg,LM+me9vmak2AxdVk4PoAyw,,,N,0,0,,,2010-06-27 10:17,2010-06-27 10:17,admin,admin,,,
906,83819,764,10669,841,0,0,N,N,N,CP_Drtn,TT_Mile,DT_FixedDrtn,RV_OK,TK_NotStart,A18940,Start Villa construction,,64,0,0,0,0,0,0,0,0,0,,,,2010-06-30 08:00,2010-06-30 08:00,,2010-06-21 08:00,2010-06-21 08:00,2010-06-21 08:00,2010-06-21 08:00,2010-06-21 08:00,2010-06-21 08:00,,2010-06-30 08:00,2010-06-30 08:00,,PT_Normal,,,,,/RC6mFmMI0K+uuLZ/MnHFQ,tPJJ0Yl0vE22JfYGF4KtDg,,,N,0,0,,,2010-06-27 10:17,2010-06-27 10:17,admin,admin,,,
907,83820,764,10669,841,0,0,N,N,N,CP_Drtn,TT_FinMile,DT_FixedDrtn,RV_OK,TK_NotStart,A18950,finish Villa construction,,48,48,0,0,0,0,0,0,0,0,,,,2010-11-30 16:00,2010-11-30 16:00,,2010-11-23 16:00,2010-11-23 16:00,2010-11-23 16:00,2010-11-23 16:00,2010-11-23 16:00,2010-11-23 16:00,,2010-11-30 16:00,2010-11-30 16:00,,PT_Normal,,,,,dbrRLryabUKKqridDnpF4g,QNALWWtrX0u6Kra6tBf95A,,,N,0,0,,,2010-06-27 10:17,2010-06-27 10:17,admin,admin,,,
908,83821,764,10669,841,0,0,N,N,N,CP_Drtn,TT_Mile,DT_FixedDrtn,RV_OK,TK_NotStart,A18960,IFC drawings,,64,0,0,0,0,0,0,0,0,0,,,,2010-06-30 08:00,2010-06-30 08:00,,2010-06-21 08:00,2010-06-21 08:00,2010-06-21 08:00,2010-06-21 08:00,2010-06-21 08:00,2010-06-21 08:00,,2010-06-30 08:00,2010-06-30 08:00,,PT_Normal,,,,,jf3BTYOmwU+RsEYLq3ycYg,PVtWhHm06UuQlpc7ns5ttw,,,N,0,0,,,2010-06-27 10:17,2010-06-27 10:17,admin,admin,,,
909,83822,764,10672,841,1,0,N,N,N,CP_Drtn,TT_Task,DT_FixedDUR2,RV_OK,TK_NotStart,A18970,pouring for ground floor's slab,,64,0,8,0,0,0,8,0,0,0,,,,2010-09-28 08:00,2010-09-28 16:00,,2010-09-19 08:00,2010-09-19 16:00,2010-09-19 08:00,2010-09-19 16:00,2010-09-19 08:00,2010-09-19 16:00,,2010-09-28 08:00,2010-09-28 16:00,,PT_Normal,,,,,+3J7pftqCUKrTnRorFXkIw,zWZG+wfgUkeHr9mxQkwGeA,,,N,0,0,,,2010-06-27 10:17,2010-06-27 10:17,admin,admin,,,
910,83823,764,10672,841,1,0,N,N,N,CP_Drtn,TT_Task,DT_FixedDUR2,RV_OK,TK_NotStart,A18980,pouring for 1st floor's slab,,80,0,8,0,0,0,8,0,0,0,,,,2010-10-19 08:00,2010-10-19 16:00,,2010-10-07 08:00,2010-10-07 16:00,2010-10-07 08:00,2010-10-07 16:00,2010-10-07 08:00,2010-10-07 16:00,,2010-10-19 08:00,2010-10-19 16:00,,PT_Normal,,,,,LBAqbPBy3E6bywD13OMNWA,WdYu9fn0xkaowylwGHD/rQ,,,N,0,0,,,2010-06-27 10:17,2010-06-27 10:17,admin,admin,,,
911,83824,764,10672,841,1,0,N,N,N,CP_Drtn,TT_Task,DT_FixedDUR2,RV_OK,TK_NotStart,A18990,pouring for roof floor's slab,,80,0,8,0,0,0,8,0,0,0,,,,2010-11-03 08:00,2010-11-03 16:00,,2010-10-23 08:00,2010-10-23 16:00,2010-10-23 08:00,2010-10-23 16:00,2010-10-23 08:00,2010-10-23 16:00,,2010-11-03 08:00,2010-11-03 16:00,,PT_Normal,,,,,KyZNCcXfM0qsCVN/TZP2pg,xy4gAZ1pm0WWjXVVi6mR/Q,,,N,0,0,,,2010-06-27 10:17,2010-06-27 10:17,admin,admin,,,
912,83825,764,10672,841,1,0,N,N,N,CP_Drtn,TT_Task,DT_FixedDrtn,RV_OK,TK_NotStart,A19000,Fence work,,64,16,400,0,0,0,400,0,0,0,,,,2010-09-29 08:00,2010-11-30 16:00,,2010-09-20 08:00,2010-11-21 16:00,2010-09-20 08:00,2010-11-21 16:00,2010-09-20 08:00,2010-11-21 16:00,,2010-09-29 08:00,2010-11-30 16:00,,PT_Normal,,,,,OzbR/lXFU0yBEp3gKXrR7A,k9riRD0wckKF5aspoumchA,,,N,0,0,,,2010-06-27 10:17,2010-06-27 10:17,admin,admin,,,
913,83826,764,10669,841,1,0,N,N,N,CP_Drtn,TT_Task,DT_FixedDUR2,RV_OK,TK_NotStart,A19010,Fence Drawings IFC,,584,520,8,0,0,0,8,0,0,0,,,,2010-09-16 08:00,2010-09-16 16:00,,2010-06-21 08:00,2010-06-21 16:00,2010-06-21 08:00,2010-06-21 16:00,2010-06-21 08:00,2010-06-21 16:00,,2010-09-16 08:00,2010-09-16 16:00,,PT_Normal,,,,,yKlhFftoXUa18VxliGIhaw,4/+065BVAk2V03a+c4Segw,,,N,0,0,,,2010-06-27 10:17,2010-06-27 10:17,admin,admin,,,
914,83827,764,10671,849,1,0,N,N,N,CP_Drtn,TT_Task,DT_FixedDUR2,RV_OK,TK_NotStart,A19020,backfilling between P.C Foundation,,64,0,16,0,0,0,16,0,0,0,,,,2010-08-18 08:00,2010-08-19 16:00,,2010-08-09 08:00,2010-08-10 16:00,2010-08-09 08:00,2010-08-10 16:00,2010-08-09 08:00,2010-08-10 16:00,,2010-08-18 08:00,2010-08-19 16:00,,PT_Normal,,,,,BZ1QRtjwfEOYElcbIfXTaQ,E7TpOVGPZEOjXV7AnczScQ,,,N,0,0,,,2010-06-27 10:17,2010-06-27 10:17,admin,admin,,,
915,83828,764,10671,849,1,0,N,N,N,CP_Drtn,TT_Task,DT_FixedDUR2,RV_OK,TK_NotStart,A19030,P.C Under Smells,,64,0,8,0,0,0,8,0,0,0,,,,2010-08-21 08:00,2010-08-21 16:00,,2010-08-11 08:00,2010-08-11 16:00,2010-08-11 08:00,2010-08-11 16:00,2010-08-11 08:00,2010-08-11 16:00,,2010-08-21 08:00,2010-08-21 16:00,,PT_Normal,,,,,PbVksQZhtU+uottLqoNTKg,16fvaO0uOkKKo/kIs5oZGQ,,,N,0,0,,,2010-06-27 10:17,2010-06-27 10:17,admin,admin,,,
916,83829,764,10672,849,1,0,N,N,N,CP_Drtn,TT_Task,DT_FixedDUR2,RV_OK,TK_NotStart,A19040,Brick works for 1st floor,,128,0,40,0,0,0,40,0,0,0,,,,2010-11-08 08:00,2010-11-13 16:00,,2010-10-20 08:00,2010-10-25 16:00,2010-10-20 08:00,2010-10-25 16:00,2010-10-20 08:00,2010-10-25 16:00,,2010-11-08 08:00,2010-11-13 16:00,,PT_Normal,,,,,dkO3GDYMdESgqhHqCl4mEg,nmnqc1r6DkOmh0XUrMSJAQ,,,N,0,0,,,2010-06-27 10:17,2010-06-27 10:17,admin,admin,,,
917,83830,764,10672,849,1,0,N,N,N,CP_Drtn,TT_Task,DT_FixedDUR2,RV_OK,TK_NotStart,A19050,Brick works for roof floor,,80,0,40,0,0,0,40,0,0,0,,,,2010-11-14 08:00,2010-11-18 16:00,,2010-11-02 08:00,2010-11-07 16:00,2010-11-02 08:00,2010-11-07 16:00,2010-11-02 08:00,2010-11-07 16:00,,2010-11-14 08:00,2010-11-18 16:00,,PT_Normal,,,,,eJgw8EDkxUSabQI2PcJQ5Q,2g61MSRZMECip5cK1jgxOA,,,N,0,0,,,2010-06-27 10:17,2010-06-27 10:17,admin,admin,,,
918,83831,764,10674,849,1,0,N,N,N,CP_Drtn,TT_Task,DT_FixedDUR2,RV_OK,TK_NotStart,A19060,Internal plastering for 1st floor,,128,24,64,0,0,0,64,0,0,0,,,,2010-11-16 08:00,2010-11-24 16:00,,2010-10-28 08:00,2010-11-06 16:00,2010-10-28 08:00,2010-11-06 16:00,2010-10-28 08:00,2010-11-06 16:00,,2010-11-16 08:00,2010-11-24 16:00,,PT_Normal,,,,,jYFb4edzYEycn+XTMlRE6w,Gb9H5c91G0CmED9an13Vig,,,N,0,0,,,2010-06-27 10:17,2010-06-27 10:17,admin,admin,,,
919,83832,764,10674,849,1,0,N,N,N,CP_Drtn,TT_Task,DT_FixedDUR2,RV_OK,TK_NotStart,A19070,Internal plastering for roof floor,,104,56,40,0,0,0,40,0,0,0,,,,2010-11-25 08:00,2010-11-30 16:00,,2010-11-10 08:00,2010-11-15 16:00,2010-11-10 08:00,2010-11-15 16:00,2010-11-10 08:00,2010-11-15 16:00,,2010-11-25 08:00,2010-11-30 16:00,,PT_Normal,,,,,8pzS/Kvcs0+BRZ/Wk+E/1Q,1xNEiFA7/Ee9LUh8RzqDWg,,,N,0,0,,,2010-06-27 10:17,2010-06-27 10:17,admin,admin,,,
920,83833,764,10673,849,1,0,N,N,N,CP_Drtn,TT_Task,DT_FixedDUR2,RV_OK,TK_NotStart,A19080,electrical conduits for ground floor walls,,136,0,16,0,0,0,16,0,0,0,,,,2010-11-03 08:00,2010-11-04 16:00,,2010-10-14 08:00,2010-10-16 16:00,2010-10-14 08:00,2010-10-16 16:00,2010-10-14 08:00,2010-10-16 16:00,,2010-11-03 08:00,2010-11-04 16:00,,PT_Normal,,,,,7yZtAc3R3U+PRlXYTfMlwQ,ShXgUMesDk2KmqYhFppN+A,,,N,0,0,,,2010-06-27 10:17,2010-06-27 10:17,admin,admin,,,
921,83834,764,10673,849,1,0,N,N,N,CP_Drtn,TT_Task,DT_FixedDUR2,RV_OK,TK_NotStart,A19090,electrical conduits for 1st floor walls,,128,0,16,0,0,0,16,0,0,0,,,,2010-11-14 08:00,2010-11-15 16:00,,2010-10-26 08:00,2010-10-27 16:00,2010-10-26 08:00,2010-10-27 16:00,2010-10-26 08:00,2010-10-27 16:00,,2010-11-14 08:00,2010-11-15 16:00,,PT_Normal,,,,,lalzLKsRpEusbAvovyjPRw,frHqUIpWHkmv2uR4vi/rYQ,,,N,0,0,,,2010-06-27 10:17,2010-06-27 10:17,admin,admin,,,
922,83835,764,10673,849,1,0,N,N,N,CP_Drtn,TT_Task,DT_FixedDUR2,RV_OK,TK_NotStart,A19100,electrical conduits for roof floor walls,,104,0,16,0,0,0,16,0,0,0,,,,2010-11-23 08:00,2010-11-24 16:00,,2010-11-08 08:00,2010-11-09 16:00,2010-11-08 08:00,2010-11-09 16:00,2010-11-08 08:00,2010-11-09 16:00,,2010-11-23 08:00,2010-11-24 16:00,,PT_Normal,,,,,ucsK3BOBv0evoVuEWQs8RQ,uIFz5dg5vUWlmlvgOsc8RA,,,N,0,0,,,2010-06-27 10:17,2010-06-27 10:17,admin,admin,,,
