,task_id,proj_id,wbs_id,clndr_id,est_wt,phys_complete_pct,rev_fdbk_flag,lock_plan_flag,auto_compute_act_flag,complete_pct_type,task_type,duration_type,review_type,status_code,task_code,task_name,rsrc_id,total_float_hr_cnt,free_float_hr_cnt,remain_drtn_hr_cnt,act_work_qty,remain_work_qty,target_work_qty,target_drtn_hr_cnt,target_equip_qty,act_equip_qty,remain_equip_qty,cstr_date,act_start_date,act_end_date,late_start_date,late_end_date,expect_end_date,early_start_date,early_end_date,restart_date,reend_date,target_start_date,target_end_date,review_end_date,rem_late_start_date,rem_late_end_date,cstr_type,priority_type,suspend_date,resume_date,float_path,float_path_order,guid,tmpl_guid,cstr_date2,cstr_type2,driving_path_flag,act_this_per_work_qty,act_this_per_equip_qty,external_early_start_date,external_late_end_date,create_date,update_date,create_user,update_user
0,123385,3413,18728,841,0,0,N,N,N,CP_Drtn,TT_Mile,DT_FixedDrtn,RV_OK,TK_NotStart,PO 400,Roll up&over head doors purchase order,,104,0,0,0,0,0,0,0,0,0,,,,2012-08-02 08:00,2012-08-02 08:00,,2012-07-18 08:00,2012-07-18 08:00,2012-07-18 08:00,2012-07-18 08:00,2012-07-18 08:00,2012-07-18 08:00,,2012-08-02 08:00,2012-08-02 08:00,,PT_Normal,,,,,KRECFIzwTOSs/+OF1KfnXA,,,,N,0,0,,,2012-04-26 12:20,2012-04-26 16:01,admin,admin
1,123386,3413,18728,841,0,0,N,N,N,CP_Drtn,TT_Mile,DT_FixedDrtn,RV_OK,TK_NotStart,PO 150,Guard bollard purchase order,,48,0,0,0,0,0,0,0,0,0,,,,2012-11-18 08:00,2012-11-18 08:00,,2012-11-11 08:00,2012-11-11 08:00,2012-11-11 08:00,2012-11-11 08:00,2012-11-11 08:00,2012-11-11 08:00,,2012-11-18 08:00,2012-11-18 08:00,,PT_Normal,,,,,syJ2Ju3SR/OLljeXHAwViw,,,,N,0,0,,,2012-04-26 12:20,2012-04-26 16:01,admin,admin
2,123387,3413,18728,841,0,0,N,N,N,CP_Drtn,TT_Mile,DT_FixedDrtn,RV_OK,TK_NotStart,PO 180,Windows purchase order,,160,0,0,0,0,0,0,0,0,0,,,,2012-09-26 08:00,2012-09-26 08:00,,2012-09-03 08:00,2012-09-03 08:00,2012-09-03 08:00,2012-09-03 08:00,2012-09-03 08:00,2012-09-03 08:00,,2012-09-26 08:00,2012-09-26 08:00,,PT_Normal,,,,,5IhXA9+yS0SfiHrO5p1ghg,+NlCFveHQfO9cPW1Iic19w,,,N,0,0,,,2012-04-26 12:20,2012-04-26 16:01,admin,admin
3,123388,3413,18728,841,0,0,N,N,N,CP_Drtn,TT_Mile,DT_FixedDrtn,RV_OK,TK_NotStart,PO 190,Steel Doors purchase orders,,136,0,0,0,0,0,0,0,0,0,,,,2012-08-07 08:00,2012-08-07 08:00,,2012-07-18 08:00,2012-07-18 08:00,2012-07-18 08:00,2012-07-18 08:00,2012-07-18 08:00,2012-07-18 08:00,,2012-08-07 08:00,2012-08-07 08:00,,PT_Normal,,,,,9mQljvGlTD+cCvCeqe09hg,+NlCFveHQfO9cPW1Iic19w,,,N,0,0,,,2012-04-26 12:20,2012-04-26 16:01,admin,admin
4,123389,3413,18728,841,0,0,N,N,N,CP_Drtn,TT_Mile,DT_FixedDrtn,RV_OK,TK_NotStart,PO 130,Walk on ceiling purchase order,,248,0,0,0,0,0,0,0,0,0,,,,2012-08-17 08:00,2012-08-17 08:00,,2012-07-12 08:00,2012-07-12 08:00,2012-07-12 08:00,2012-07-12 08:00,2012-07-12 08:00,2012-07-12 08:00,,2012-08-17 08:00,2012-08-17 08:00,,PT_Normal,,,,,qfV/cO83RCKfxA/xfkZFtw,,,,N,0,0,,,2012-04-26 12:20,2012-04-26 16:01,admin,admin
5,123391,3413,18728,841,0,0,N,N,N,CP_Drtn,TT_Mile,DT_FixedDrtn,RV_OK,TK_NotStart,PO 110,Sandwich panel purchase order,,96,0,0,0,0,0,0,0,0,0,,,,2012-07-26 08:00,2012-07-26 08:00,,2012-07-12 08:00,2012-07-12 08:00,2012-07-12 08:00,2012-07-12 08:00,2012-07-12 08:00,2012-07-12 08:00,,2012-07-26 08:00,2012-07-26 08:00,,PT_Normal,,,,,YX/7i9qBSNS0qTpjil+w5w,,,,N,0,0,,,2012-04-26 12:20,2012-04-26 16:01,admin,admin
6,123392,3413,18728,841,0,0,N,N,N,CP_Drtn,TT_Mile,DT_FixedDrtn,RV_OK,TK_NotStart,PO 120,Steel structure purchase order,,0,0,0,0,0,0,0,0,0,0,,,,2012-05-15 08:00,2012-05-15 08:00,,2012-05-15 08:00,2012-05-15 08:00,2012-05-15 08:00,2012-05-15 08:00,2012-05-15 08:00,2012-05-15 08:00,,2012-05-15 08:00,2012-05-15 08:00,,PT_Normal,,,,,I3T04LbQRfSZ74fvehgyww,,,,Y,0,0,,,2012-04-26 12:20,2012-04-26 16:01,admin,admin
7,123393,3413,18729,841,1,0,N,N,N,CP_Drtn,TT_Task,DT_FixedDrtn,RV_OK,TK_NotStart,DD110,Steel structure delivery on site,,0,0,56,0,0,0,56,0,0,0,,,,2012-08-11 08:00,2012-08-17 16:00,,2012-08-11 08:00,2012-08-17 16:00,2012-08-11 08:00,2012-08-17 16:00,2012-08-11 08:00,2012-08-17 16:00,,2012-08-11 08:00,2012-08-17 16:00,,PT_Normal,,,,,axJ/HJIoTIG7OqK4vlSZHg,,,,Y,0,0,,,2012-04-26 12:20,2012-04-26 16:01,admin,admin
8,123395,3413,18729,841,0,0,N,N,N,CP_Drtn,TT_Mile,DT_FixedDrtn,RV_OK,TK_NotStart,DD100,Sandwich panel delivery on site,,96,0,0,0,0,0,0,0,0,0,,,,2012-11-19 08:00,2012-11-19 08:00,,2012-11-05 08:00,2012-11-05 08:00,2012-11-05 08:00,2012-11-05 08:00,2012-11-05 08:00,2012-11-05 08:00,,2012-11-19 08:00,2012-11-19 08:00,,PT_Normal,,,,,LHylcRTqTASGCBcctn9Ugg,,,,N,0,0,,,2012-04-26 12:20,2012-04-26 16:01,admin,admin
9,123396,3413,18729,841,0,0,N,N,N,CP_Drtn,TT_Mile,DT_FixedDrtn,RV_OK,TK_NotStart,DD150,Steel stairs Delivery on site,,1360,1040,0,0,0,0,0,0,0,0,,,,2012-12-16 08:00,2012-12-16 08:00,,2012-05-15 08:00,2012-05-15 08:00,2012-05-15 08:00,2012-05-15 08:00,2012-05-15 08:00,2012-05-15 08:00,,2012-12-16 08:00,2012-12-16 08:00,,PT_Normal,,,,,emNN/3tqRs2BCZrWE12fSQ,,,,N,0,0,,,2012-04-26 12:20,2012-04-26 16:01,admin,admin
10,123397,3413,18729,841,0,0,N,N,N,CP_Drtn,TT_Mile,DT_FixedDrtn,RV_OK,TK_NotStart,DD160,Roll up&over head doors delivery on site,,104,0,0,0,0,0,0,0,0,0,,,,2012-12-13 08:00,2012-12-13 08:00,,2012-11-28 08:00,2012-11-28 08:00,2012-11-28 08:00,2012-11-28 08:00,2012-11-28 08:00,2012-11-28 08:00,,2012-12-13 08:00,2012-12-13 08:00,,PT_Normal,,,,,lz+virsNTHSkCTtGv1iSxQ,,,,N,0,0,,,2012-04-26 12:20,2012-04-26 16:02,admin,admin
11,123398,3413,18729,841,0,0,N,N,N,CP_Drtn,TT_Mile,DT_FixedDrtn,RV_OK,TK_NotStart,DD170,Guard bollard delivery on site,,48,0,0,0,0,0,0,0,0,0,,,,2012-12-18 08:00,2012-12-18 08:00,,2012-12-11 08:00,2012-12-11 08:00,2012-12-11 08:00,2012-12-11 08:00,2012-12-11 08:00,2012-12-11 08:00,,2012-12-18 08:00,2012-12-18 08:00,,PT_Normal,,,,,sNM0geMWQsSrNH65g7GObg,,,,N,0,0,,,2012-04-26 12:20,2012-04-26 16:01,admin,admin
12,123399,3413,18729,841,0,0,N,N,N,CP_Drtn,TT_Mile,DT_FixedDrtn,RV_OK,TK_NotStart,DD200,Windows delivery on site,,160,40,0,0,0,0,0,0,0,0,,,,2012-12-16 08:00,2012-12-16 08:00,,2012-11-22 08:00,2012-11-22 08:00,2012-11-22 08:00,2012-11-22 08:00,2012-11-22 08:00,2012-11-22 08:00,,2012-12-16 08:00,2012-12-16 08:00,,PT_Normal,,,,,VaLI4W9xRh6o5n7sTdXPng,yG244tJxSSyUfgdrznr8kA,,,N,0,0,,,2012-04-26 12:20,2012-04-26 16:01,admin,admin
13,123400,3413,18729,841,0,0,N,N,N,CP_Drtn,TT_Mile,DT_FixedDrtn,RV_OK,TK_NotStart,DD210,Steel Doors delivery on site,,136,0,0,0,0,0,0,0,0,0,,,,2012-12-18 08:00,2012-12-18 08:00,,2012-11-28 08:00,2012-11-28 08:00,2012-11-28 08:00,2012-11-28 08:00,2012-11-28 08:00,2012-11-28 08:00,,2012-12-18 08:00,2012-12-18 08:00,,PT_Normal,,,,,BVXFZpR6R+6qoWDuE3hoWg,LwxOL0OA70ir27sTopBkvQ,,,N,0,0,,,2012-04-26 12:20,2012-04-26 16:02,admin,admin
14,123401,3413,18729,841,0,0,N,N,N,CP_Drtn,TT_Mile,DT_FixedDrtn,RV_OK,TK_NotStart,DD120,walk-on-ceiling delivery on site,,248,184,0,0,0,0,0,0,0,0,,,,2012-12-11 08:00,2012-12-11 08:00,,2012-11-05 08:00,2012-11-05 08:00,2012-11-05 08:00,2012-11-05 08:00,2012-11-05 08:00,2012-11-05 08:00,,2012-12-11 08:00,2012-12-11 08:00,,PT_Normal,,,,,+HyUF1jSTVS8m/W7SJ4tyA,,,,N,0,0,,,2012-04-26 12:20,2012-04-26 16:01,admin,admin
15,123402,3413,18730,841,0,0,N,N,N,CP_Drtn,TT_Mile,DT_FixedDrtn,RV_OK,TK_NotStart,Ms 105,Site handing over to the contractor,,0,0,0,0,0,0,0,0,0,0,,,,2012-05-15 08:00,2012-05-15 08:00,,2012-05-15 08:00,2012-05-15 08:00,2012-05-15 08:00,2012-05-15 08:00,2012-05-15 08:00,2012-05-15 08:00,,2012-05-15 08:00,2012-05-15 08:00,,PT_Normal,,,,,lcSMlhLaTjujSpmKpIN6fg,,,,Y,0,0,,,2012-04-26 12:20,2012-04-26 14:49,admin,admin
16,123403,3413,18730,841,0,0,N,N,N,CP_Drtn,TT_Mile,DT_FixedDrtn,RV_OK,TK_NotStart,Ms 106,Contract agreement,,0,0,0,0,0,0,0,0,0,0,,,,2012-05-15 08:00,2012-05-15 08:00,,2012-05-15 08:00,2012-05-15 08:00,2012-05-15 08:00,2012-05-15 08:00,2012-05-15 08:00,2012-05-15 08:00,,2012-05-15 08:00,2012-05-15 08:00,,PT_Normal,,,,,Y7RqYTOBQ0ejwhmETXMS7w,,,,Y,0,0,,,2012-04-26 12:20,2012-04-26 14:49,admin,admin
17,123404,3413,18730,841,0,0,N,N,N,CP_Drtn,TT_Mile,DT_FixedDrtn,RV_OK,TK_NotStart,Ms 107,Receive advanced payment,,0,0,0,0,0,0,0,0,0,0,,,,2012-05-15 08:00,2012-05-15 08:00,,2012-05-15 08:00,2012-05-15 08:00,2012-05-15 08:00,2012-05-15 08:00,2012-05-15 08:00,2012-05-15 08:00,,2012-05-15 08:00,2012-05-15 08:00,,PT_Normal,,,,,0BjL+BPRSrK8xJl45o2/HA,,,,Y,0,0,,,2012-04-26 12:20,2012-04-26 14:49,admin,admin
18,123405,3413,18730,841,1,0,N,N,N,CP_Drtn,TT_Task,DT_FixedDUR2,RV_OK,TK_NotStart,Ms 210,Demobilization & Dismantling all temporary facilities,,0,0,56,0,0,0,56,0,0,0,,,,2012-12-22 08:00,2012-12-29 16:00,,2012-12-22 08:00,2012-12-29 16:00,2012-12-22 08:00,2012-12-29 16:00,2012-12-22 08:00,2012-12-29 16:00,,2012-12-22 08:00,2012-12-29 16:00,,PT_Normal,,,,,fJr5koz7RqukKosM/wmvww,,,,Y,0,0,,,2012-04-26 12:20,2012-04-26 17:09,admin,admin
19,123406,3413,18730,841,0,0,N,N,N,CP_Drtn,TT_FinMile,DT_FixedDrtn,RV_OK,TK_NotStart,Ms 170,Pet filling finish date,,0,0,0,0,0,0,0,0,0,0,,,,2012-12-29 16:00,2012-12-29 16:00,,2012-12-29 16:00,2012-12-29 16:00,2012-12-29 16:00,2012-12-29 16:00,2012-12-29 16:00,2012-12-29 16:00,,2012-12-29 16:00,2012-12-29 16:00,,PT_Normal,,,,,Afwn/0OrRaG5cgg7SjCUBg,,,,Y,0,0,,,2012-04-26 12:20,2012-04-26 17:09,admin,admin
20,123407,3413,18730,841,0,0,N,N,N,CP_Drtn,TT_FinMile,DT_FixedDrtn,RV_OK,TK_NotStart,Ms 180,Snag list finish dates,,0,0,0,0,0,0,0,0,0,0,,,,2012-12-29 16:00,2012-12-29 16:00,,2012-12-29 16:00,2012-12-29 16:00,2012-12-29 16:00,2012-12-29 16:00,2012-12-29 16:00,2012-12-29 16:00,,2012-12-29 16:00,2012-12-29 16:00,,PT_Normal,,,,,XvKLePU0SZKNuoDfuIIJbA,,,,Y,0,0,,,2012-04-26 12:20,2012-04-26 17:09,admin,admin
21,123408,3413,18730,841,0,0,N,N,N,CP_Drtn,TT_FinMile,DT_FixedDrtn,RV_OK,TK_NotStart,Ms 120,As built drawings,,0,0,0,0,0,0,0,0,0,0,,,,2012-12-29 16:00,2012-12-29 16:00,,2012-12-29 16:00,2012-12-29 16:00,2012-12-29 16:00,2012-12-29 16:00,2012-12-29 16:00,2012-12-29 16:00,,2012-12-29 16:00,2012-12-29 16:00,,PT_Normal,,,,,zIjcLgePTrK8OhZe56nVhQ,,,,Y,0,0,,,2012-04-26 12:20,2012-04-29 14:04,admin,admin
22,123409,3413,18730,841,0,0,N,N,N,CP_Drtn,TT_FinMile,DT_FixedDrtn,RV_OK,TK_NotStart,Ms 200,Project completion & final handing over,,0,0,0,0,0,0,0,0,0,0,,,,2012-12-29 16:00,2012-12-29 16:00,,2012-12-29 16:00,2012-12-29 16:00,2012-12-29 16:00,2012-12-29 16:00,2012-12-29 16:00,2012-12-29 16:00,,2012-12-29 16:00,2012-12-29 16:00,,PT_Normal,,,,,tCBRC5MzS9KzLLIUh/BOvg,,,,Y,0,0,,,2012-04-26 12:20,2012-04-26 17:09,admin,admin
23,123410,3413,18730,841,0,0,N,N,N,CP_Drtn,TT_Mile,DT_FixedDrtn,RV_OK,TK_NotStart,Ms 100,Letter of Acceptance,,0,0,0,0,0,0,0,0,0,0,,,,2012-05-15 08:00,2012-05-15 08:00,,2012-05-15 08:00,2012-05-15 08:00,2012-05-15 08:00,2012-05-15 08:00,2012-05-15 08:00,2012-05-15 08:00,,2012-05-15 08:00,2012-05-15 08:00,,PT_Normal,,,,,NzACRX2pTOe/aTZlonDPGQ,,,,Y,0,0,,,2012-04-26 12:20,2012-04-26 14:49,admin,admin
24,123411,3413,18730,841,0,0,N,N,N,CP_Drtn,TT_Mile,DT_FixedDrtn,RV_OK,TK_NotStart,Ms 108,Commencement date,,8,0,0,0,0,0,0,0,0,0,,,,2012-05-16 08:00,2012-05-16 08:00,,2012-05-15 08:00,2012-05-15 08:00,2012-05-15 08:00,2012-05-15 08:00,2012-05-15 08:00,2012-05-15 08:00,,2012-05-16 08:00,2012-05-16 08:00,,PT_Normal,,,,,k3lhIoN9TSS3dsa9p5vU1Q,W2mC3VMFx0aaA1fISCa4IA,,,N,0,0,,,2012-04-26 12:20,2012-04-26 16:01,admin,admin
25,123412,3413,18734,841,1,0,N,N,N,CP_Drtn,TT_Task,DT_FixedDUR2,RV_OK,TK_NotStart,PET-Z2-AR-130,Steel structure paintings(fire rated),,400,296,160,0,0,0,160,0,0,0,,,,2012-11-12 08:00,2012-12-04 16:00,,2012-09-04 08:00,2012-09-26 16:00,2012-09-04 08:00,2012-09-26 16:00,2012-09-04 08:00,2012-09-26 16:00,,2012-11-12 08:00,2012-12-04 16:00,,PT_Normal,,,,,BhEUbMhKSZS8xXxnxWztfw,,,,N,0,0,,,2012-04-26 12:20,2012-04-26 16:30,admin,admin
26,123413,3413,18734,841,1,0,N,N,N,CP_Drtn,TT_Task,DT_FixedDUR2,RV_OK,TK_NotStart,PET-Z2-AR-180,Guard bollard erection,,48,0,40,0,0,0,40,0,0,0,,,,2012-12-18 08:00,2012-12-23 16:00,,2012-12-11 08:00,2012-12-16 16:00,2012-12-11 08:00,2012-12-16 16:00,2012-12-11 08:00,2012-12-16 16:00,,2012-12-18 08:00,2012-12-23 16:00,,PT_Normal,,,,,k6u6IvkDQDW0hoMtnQfw0w,,,,N,0,0,,,2012-04-26 12:20,2012-04-26 16:01,admin,admin
27,123414,3413,18734,841,1,0,N,N,N,CP_Drtn,TT_Task,DT_FixedDUR2,RV_OK,TK_NotStart,PET-Z2-AR-740,Masonry under slab on grade,,192,0,112,0,0,0,112,0,0,0,,,,2012-08-09 08:00,2012-08-30 16:00,,2012-07-12 08:00,2012-07-28 16:00,2012-07-12 08:00,2012-07-28 16:00,2012-07-12 08:00,2012-07-28 16:00,,2012-08-09 08:00,2012-08-30 16:00,,PT_Normal,,,,,JzVOBGoLS5ezY4wP5JJHGQ,,,,N,0,0,,,2012-04-26 12:20,2012-04-26 16:24,admin,admin
28,123416,3413,18734,841,1,0,N,N,N,CP_Drtn,TT_Task,DT_FixedDUR2,RV_OK,TK_NotStart,PET-Z2-AR-310,Stainless steel doors erection,,136,0,40,0,0,0,40,0,0,0,,,,2012-12-18 08:00,2012-12-23 16:00,,2012-11-28 08:00,2012-12-03 16:00,2012-11-28 08:00,2012-12-03 16:00,2012-11-28 08:00,2012-12-03 16:00,,2012-12-18 08:00,2012-12-23 16:00,,PT_Normal,,,,,D3ihjeXiRzqEwH8fl/r42A,,,,N,0,0,,,2012-04-26 12:20,2012-04-26 16:02,admin,admin
29,123417,3413,18734,841,1,0,N,N,N,CP_Drtn,TT_Task,DT_FixedDUR2,RV_OK,TK_NotStart,PET-Z2-AR-320,Roll up shutter doors erection,,104,56,72,0,0,0,72,0,0,0,,,,2012-12-13 08:00,2012-12-23 16:00,,2012-11-28 08:00,2012-12-08 16:00,2012-11-28 08:00,2012-12-08 16:00,2012-11-28 08:00,2012-12-08 16:00,,2012-12-13 08:00,2012-12-23 16:00,,PT_Normal,,,,,musvonsETL6wGP/qGN9EVA,,,,N,0,0,,,2012-04-26 12:20,2012-04-26 16:02,admin,admin
30,123418,3413,18734,841,1,0,N,N,N,CP_Drtn,TT_Task,DT_FixedDUR2,RV_OK,TK_NotStart,PET-Z2-AR-330,Galvanized steel flashing&pur foam,,528,520,80,0,0,0,80,0,0,0,,,,2012-12-18 08:00,2012-12-29 16:00,,2012-09-22 08:00,2012-10-02 16:00,2012-09-22 08:00,2012-10-02 16:00,2012-09-22 08:00,2012-10-02 16:00,,2012-12-18 08:00,2012-12-29 16:00,,PT_Normal,,,,,ChPLokvJQO6yCwhIvU/sjw,,,,N,0,0,,,2012-04-26 12:20,2012-04-26 17:09,admin,admin
31,123419,3413,18734,841,1,0,N,N,N,CP_Drtn,TT_Task,DT_FixedDUR2,RV_OK,TK_NotStart,PET-Z2-AR-190,Dismantle Works (doors & windows),,152,104,24,0,0,0,24,0,0,0,,,,2012-12-20 08:00,2012-12-23 16:00,,2012-11-28 08:00,2012-12-01 16:00,2012-11-28 08:00,2012-12-01 16:00,2012-11-28 08:00,2012-12-01 16:00,,2012-12-20 08:00,2012-12-23 16:00,,PT_Normal,,,,,gIHW2QTgRhWKI0I32DM98Q,Te7T52zcp0++MK3LV1guww,,,N,0,0,,,2012-04-26 12:20,2012-04-26 16:39,admin,admin
32,123420,3413,18734,841,1,0,N,N,N,CP_Drtn,TT_Task,DT_FixedDUR2,RV_OK,TK_NotStart,PET-Z2-AR-150,Sandwich Panel For Walls,,104,0,160,0,0,0,160,0,0,0,,,,2012-11-20 08:00,2012-12-12 16:00,,2012-11-05 08:00,2012-11-27 16:00,2012-11-05 08:00,2012-11-27 16:00,2012-11-05 08:00,2012-11-27 16:00,,2012-11-20 08:00,2012-12-12 16:00,,PT_Normal,,,,,P5DEsg2+TU+Bs5oke/9uLA,+3StPaSLHkOtWSUB+w7wYA,,,N,0,0,,,2012-04-26 12:20,2012-04-26 16:01,admin,admin
33,123421,3413,18734,841,1,0,N,N,N,CP_Drtn,TT_Task,DT_FixedDUR2,RV_OK,TK_NotStart,PET-Z2-AR-200,Steel Doors erection,,136,0,40,0,0,0,40,0,0,0,,,,2012-12-18 08:00,2012-12-23 16:00,,2012-11-28 08:00,2012-12-03 16:00,2012-11-28 08:00,2012-12-03 16:00,2012-11-28 08:00,2012-12-03 16:00,,2012-12-18 08:00,2012-12-23 16:00,,PT_Normal,,,,,I4PYppTvR5287OkPPRGU9g,QYKXBPsHOUajUxp/raVuWw,,,N,0,0,,,2012-04-26 12:20,2012-04-26 16:02,admin,admin
34,123422,3413,18734,841,1,0,N,N,N,CP_Drtn,TT_Task,DT_FixedDUR2,RV_OK,TK_NotStart,PET-Z2-AR-120,Erection of Roof Sandwich Panel,,528,0,160,0,0,0,160,0,0,0,,,,2012-12-06 08:00,2012-12-29 16:00,,2012-09-10 08:00,2012-10-02 16:00,2012-09-10 08:00,2012-10-02 16:00,2012-09-10 08:00,2012-10-02 16:00,,2012-12-06 08:00,2012-12-29 16:00,,PT_Normal,,,,,LE2ikbfJRDC5U9I5ny9v4g,,,,N,0,0,,,2012-04-26 12:20,2012-04-26 17:09,admin,admin
35,123423,3413,18734,841,1,0,N,N,N,CP_Drtn,TT_Task,DT_FixedDUR2,RV_OK,TK_NotStart,PET-Z2-AR-220,Windows erection,,120,72,56,0,0,0,56,0,0,0,,,,2012-12-16 08:00,2012-12-23 16:00,,2012-11-28 08:00,2012-12-05 16:00,2012-11-28 08:00,2012-12-05 16:00,2012-11-28 08:00,2012-12-05 16:00,,2012-12-16 08:00,2012-12-23 16:00,,PT_Normal,,,,,v5rjQObfRnacm68n9V98EA,,,,N,0,0,,,2012-04-26 12:20,2012-04-26 16:01,admin,admin
36,123424,3413,18734,841,1,0,N,N,N,CP_Drtn,TT_Task,DT_FixedDUR2,RV_OK,TK_NotStart,PET-Z2-AR-140,Fair face conc. guard base(kerb),,192,144,120,0,0,0,120,0,0,0,,,,2012-12-06 08:00,2012-12-23 16:00,,2012-11-08 08:00,2012-11-25 16:00,2012-11-08 08:00,2012-11-25 16:00,2012-11-08 08:00,2012-11-25 16:00,,2012-12-06 08:00,2012-12-23 16:00,,PT_Normal,,,,,ogwYJAKeQ/ax8ianFBt7gg,,,,N,0,0,,,2012-04-26 12:20,2012-04-26 16:24,admin,admin
37,123425,3413,18734,841,1,0,N,N,N,CP_Drtn,TT_Task,DT_FixedDUR2,RV_OK,TK_NotStart,PET-Z2-AR-260,Handing over & comissioning,,48,48,24,0,0,0,24,0,0,0,,,,2012-12-26 08:00,2012-12-29 16:00,,2012-12-19 08:00,2012-12-22 16:00,2012-12-19 08:00,2012-12-22 16:00,2012-12-19 08:00,2012-12-22 16:00,,2012-12-26 08:00,2012-12-29 16:00,,PT_Normal,,,,,0y/SahJTRSC6WIv34cc5sA,,,,N,0,0,,,2012-04-26 12:20,2012-04-26 16:01,admin,admin
38,123426,3413,18734,841,1,0,N,N,N,CP_Drtn,TT_Task,DT_FixedDUR2,RV_OK,TK_NotStart,PET-Z2-AR-250,Final touch up,,48,0,16,0,0,0,16,0,0,0,,,,2012-12-24 08:00,2012-12-25 16:00,,2012-12-17 08:00,2012-12-18 16:00,2012-12-17 08:00,2012-12-18 16:00,2012-12-17 08:00,2012-12-18 16:00,,2012-12-24 08:00,2012-12-25 16:00,,PT_Normal,,,,,LTYGOwdkR4eAXKecNaorwA,,,,N,0,0,,,2012-04-26 12:20,2012-04-26 16:01,admin,admin
39,123427,3413,18734,841,1,0,N,N,N,CP_Drtn,TT_Task,DT_FixedDUR2,RV_OK,TK_NotStart,PET-Z2-AR-210,Louvers erection,,136,88,40,0,0,0,40,0,0,0,,,,2012-12-18 08:00,2012-12-23 16:00,,2012-11-28 08:00,2012-12-03 16:00,2012-11-28 08:00,2012-12-03 16:00,2012-11-28 08:00,2012-12-03 16:00,,2012-12-18 08:00,2012-12-23 16:00,,PT_Normal,,,,,rbhWhOL1QV245qtaFUw8+w,,,,N,0,0,,,2012-04-26 12:20,2012-04-26 16:01,admin,admin
40,123428,3413,18734,841,1,0,N,N,N,CP_Drtn,TT_Task,DT_FixedDUR2,RV_OK,TK_NotStart,PET-Z2-AR-730,Steel structure paintings,,528,0,160,0,0,0,160,0,0,0,,,,2012-12-01 08:00,2012-12-23 16:00,,2012-09-04 08:00,2012-09-26 16:00,2012-09-04 08:00,2012-09-26 16:00,2012-09-04 08:00,2012-09-26 16:00,,2012-12-01 08:00,2012-12-23 16:00,,PT_Normal,,,,,XE+274mbSZq/efHM8iqXZQ,,,,N,0,0,,,2012-04-26 12:20,2012-04-26 17:09,admin,admin
41,123431,3413,18735,841,1,0,N,N,N,CP_Drtn,TT_Task,DT_FixedDUR2,RV_OK,TK_NotStart,PET-Z2-CC-200,Anchors for steel structure,,192,0,80,0,0,0,80,0,0,0,,,,2012-07-24 08:00,2012-08-04 16:00,,2012-06-26 08:00,2012-07-07 16:00,2012-06-26 08:00,2012-07-07 16:00,2012-06-26 08:00,2012-07-07 16:00,,2012-07-24 08:00,2012-08-04 16:00,,PT_Normal,,,,,QCGVE+rsR6OBH+wvd4I4Tg,,,,N,0,0,,,2012-04-26 12:20,2012-04-26 16:24,admin,admin
42,123432,3413,18735,841,1,0,N,N,N,CP_Drtn,TT_Task,DT_FixedDUR2,RV_OK,TK_NotStart,PET-Z2-CC-230,Plain concrete 50mm thick,,192,0,40,0,0,0,40,0,0,0,,,,2012-10-17 08:00,2012-10-22 16:00,,2012-09-19 08:00,2012-09-24 16:00,2012-09-19 08:00,2012-09-24 16:00,2012-09-19 08:00,2012-09-24 16:00,,2012-10-17 08:00,2012-10-22 16:00,,PT_Normal,,,,,xfXH7sCuQOutVlBQuofj5g,,,,N,0,0,,,2012-04-26 12:20,2012-04-26 16:24,admin,admin
43,123433,3413,18735,841,1,0,N,N,N,CP_Drtn,TT_Task,DT_FixedDUR2,RV_OK,TK_NotStart,PET-Z2-CC-290,Steel structure erection(purlins & tie rods),2118,528,0,160,0,30,30,160,0,0,0,,,,2012-12-03 08:00,2012-12-25 16:00,,2012-09-06 08:00,2012-09-29 16:00,2012-09-06 08:00,2012-09-29 16:00,2012-09-06 08:00,2012-09-29 16:00,,2012-12-03 08:00,2012-12-25 16:00,,PT_Normal,,,,,Ach6J1LnR+WqlqGONw8O4w,,,,N,0,0,,,2012-04-26 12:20,2012-04-26 17:09,admin,admin
44,123434,3413,18735,841,1,0,N,N,N,CP_Drtn,TT_Task,DT_FixedDUR2,RV_OK,TK_NotStart,PET-Z2-CC-110,Excavation,,192,0,112,0,0,0,112,0,0,0,,,,2012-06-12 08:00,2012-06-27 16:00,,2012-05-15 08:00,2012-05-30 16:00,2012-05-15 08:00,2012-05-30 16:00,2012-05-15 08:00,2012-05-30 16:00,,2012-06-12 08:00,2012-06-27 16:00,,PT_Normal,,,,,OR8s0VQ0QXaDieQnwwNPxg,QRUsee8KtEOOppZIwEDmpA,,,N,0,0,,,2012-04-26 12:20,2012-04-26 16:24,admin,admin
45,123435,3413,18735,841,1,0,N,N,N,CP_Drtn,TT_Task,DT_FixedDUR2,RV_OK,TK_NotStart,PET-Z2-CC-130,Replacement Under Footings,,192,0,96,0,0,0,96,0,0,0,,,,2012-06-18 08:00,2012-07-01 16:00,,2012-05-21 08:00,2012-06-03 16:00,2012-05-21 08:00,2012-06-03 16:00,2012-05-21 08:00,2012-06-03 16:00,,2012-06-18 08:00,2012-07-01 16:00,,PT_Normal,,,,,WqL58D4DSo+ajjerzwccww,eoilmfaoLEKNxI0neTli5Q,,,N,0,0,,,2012-04-26 12:20,2012-04-26 16:24,admin,admin
46,123436,3413,18735,841,1,0,N,N,N,CP_Drtn,TT_Task,DT_FixedDUR2,RV_OK,TK_NotStart,PET-Z2-CC-150,Plain Concrete footings,2104,192,0,80,0,12,12,80,0,0,0,,,,2012-07-02 08:00,2012-07-12 16:00,,2012-06-04 08:00,2012-06-14 16:00,2012-06-04 08:00,2012-06-14 16:00,2012-06-04 08:00,2012-06-14 16:00,,2012-07-02 08:00,2012-07-12 16:00,,PT_Normal,,,,,wlelc0anTuS+m/mGeeJdYg,5YIA18cGaUuRiz10mjnkkQ,,,N,0,0,,,2012-04-26 12:20,2012-04-26 16:24,admin,admin
47,123437,3413,18735,841,1,0,N,N,N,CP_Drtn,TT_Task,DT_FixedDUR2,RV_OK,TK_NotStart,PET-Z2-CC-160,R.C. footings & tie beams &planting tie beams,2104,192,0,120,0,185,185,120,0,0,0,,,,2012-07-07 08:00,2012-07-23 16:00,,2012-06-09 08:00,2012-06-25 16:00,2012-06-09 08:00,2012-06-25 16:00,2012-06-09 08:00,2012-06-25 16:00,,2012-07-07 08:00,2012-07-23 16:00,,PT_Normal,,,,,24JSbSuPQVmeerxZb2bmnQ,wa6WUAxUu0extTooVW3Kfg,,,N,0,0,,,2012-04-26 12:20,2012-04-26 16:24,admin,admin
48,123438,3413,18735,841,1,0,N,N,N,CP_Drtn,TT_Task,DT_FixedDUR2,RV_OK,TK_NotStart,PET-Z2-CC-170,Bituminous waterproofing for foundations,,192,0,80,0,0,0,80,0,0,0,,,,2012-07-29 08:00,2012-08-08 16:00,,2012-07-01 08:00,2012-07-11 16:00,2012-07-01 08:00,2012-07-11 16:00,2012-07-01 08:00,2012-07-11 16:00,,2012-07-29 08:00,2012-08-08 16:00,,PT_Normal,,,,,QbWvQD+/QpGOgko4cEh/9A,YI+ANGE/jUuQxgTw7kfnZA,,,N,0,0,,,2012-04-26 12:20,2012-04-26 16:24,admin,admin
49,123439,3413,18735,841,1,0,N,N,N,CP_Drtn,TT_Task,DT_FixedDUR2,RV_OK,TK_NotStart,PET-Z2-CC-220,Steel structure erection(columns&rafters&bracings),2118,192,0,160,0,100,100,160,0,0,0,,,,2012-09-24 08:00,2012-10-16 16:00,,2012-08-27 08:00,2012-09-18 16:00,2012-08-27 08:00,2012-09-18 16:00,2012-08-27 08:00,2012-09-18 16:00,,2012-09-24 08:00,2012-10-16 16:00,,PT_Normal,,,,,RIPVycw8T3m5LjWS2EnOgw,oI/+HulBMUCqedQEBMoQPw,,,N,0,0,,,2012-04-26 12:20,2012-04-26 16:24,admin,admin
50,123440,3413,18735,841,1,0,N,N,N,CP_Drtn,TT_Task,DT_FixedDUR2,RV_OK,TK_NotStart,PET-Z2-CC-190,Backfilling between foundations,,192,0,80,0,0,0,80,0,0,0,,,,2012-08-25 08:00,2012-09-04 16:00,,2012-07-22 08:00,2012-08-01 16:00,2012-07-22 08:00,2012-08-01 16:00,2012-07-22 08:00,2012-08-01 16:00,,2012-08-25 08:00,2012-09-04 16:00,,PT_Normal,,,,,4fCDe01zTOOgXeGZpXv9zg,HzfXh1d0a0qG8YubyfOiTQ,,,N,0,0,,,2012-04-26 12:20,2012-04-26 16:24,admin,admin
51,123441,3413,18735,841,1,0,N,N,N,CP_Drtn,TT_Task,DT_FixedDUR2,RV_OK,TK_NotStart,PET-Z2-CC-250,Slab On Grade,,192,0,112,0,0,0,112,0,0,0,,,,2012-11-03 08:00,2012-11-18 16:00,,2012-09-25 08:00,2012-10-10 16:00,2012-09-25 08:00,2012-10-10 16:00,2012-09-25 08:00,2012-10-10 16:00,,2012-11-03 08:00,2012-11-18 16:00,,PT_Normal,,,,,wMRxmd40RBKDd89yhhpG+g,x4jGlTe66UizPyxg35xOgg,,,N,0,0,,,2012-04-26 12:20,2012-04-26 16:24,admin,admin
52,123442,3413,18735,841,1,0,N,N,N,CP_Drtn,TT_Task,DT_FixedDUR2,RV_OK,TK_NotStart,PET-Z2-CC-260,Concrete Screed,,192,0,120,0,0,0,120,0,0,0,,,,2012-11-19 08:00,2012-12-05 16:00,,2012-10-11 08:00,2012-11-07 16:00,2012-10-11 08:00,2012-11-07 16:00,2012-10-11 08:00,2012-11-07 16:00,,2012-11-19 08:00,2012-12-05 16:00,,PT_Normal,,,,,5H4nhaXYSrasd9X+A3XuxQ,CuUH5Tx5y0WYB4bgDxsYvA,,,N,0,0,,,2012-04-26 12:20,2012-04-26 16:24,admin,admin
53,123443,3413,18735,841,1,0,N,N,N,CP_Drtn,TT_Task,DT_FixedDUR2,RV_OK,TK_NotStart,PET-Z2-CC-180,RC for pedestals,,192,0,80,0,0,0,80,0,0,0,,,,2012-07-24 08:00,2012-08-04 16:00,,2012-06-26 08:00,2012-07-07 16:00,2012-06-26 08:00,2012-07-07 16:00,2012-06-26 08:00,2012-07-07 16:00,,2012-07-24 08:00,2012-08-04 16:00,,PT_Normal,,,,,GlRcVrkhQKOOYsMXwjkjuw,,,,N,0,0,,,2012-04-26 12:20,2012-04-26 16:24,admin,admin
54,123444,3413,18735,841,1,0,N,N,N,CP_Drtn,TT_Task,DT_FixedDUR2,RV_OK,TK_NotStart,PET-Z2-CC-280,Expansion joint,,312,264,56,0,0,0,56,0,0,0,,,,2012-12-16 08:00,2012-12-23 16:00,,2012-10-21 08:00,2012-11-07 16:00,2012-10-21 08:00,2012-11-07 16:00,2012-10-21 08:00,2012-11-07 16:00,,2012-12-16 08:00,2012-12-23 16:00,,PT_Normal,,,,,84WIwZZPTq6eBPg9QY7XZA,,,,N,0,0,,,2012-04-26 12:20,2012-04-26 16:24,admin,admin
55,123445,3413,18735,841,1,0,N,N,N,CP_Drtn,TT_Task,DT_FixedDUR2,RV_OK,TK_NotStart,PET-Z2-CC-240,Membrane sheet 400 micron,,192,0,40,0,0,0,40,0,0,0,,,,2012-10-17 08:00,2012-10-22 16:00,,2012-09-19 08:00,2012-09-24 16:00,2012-09-19 08:00,2012-09-24 16:00,2012-09-19 08:00,2012-09-24 16:00,,2012-10-17 08:00,2012-10-22 16:00,,PT_Normal,,,,,CqtloFC5TO+NJbZNE2nl2Q,,,,N,0,0,,,2012-04-26 12:20,2012-04-26 16:24,admin,admin
56,123448,3413,18737,841,1,0,N,N,N,CP_Drtn,TT_Task,DT_FixedDUR2,RV_OK,TK_NotStart,PET-Z1-CC-390,Backfilling between foundations,,8,0,96,0,0,0,96,0,0,0,,,,2012-07-17 08:00,2012-07-30 16:00,,2012-07-16 08:00,2012-07-29 16:00,2012-07-16 08:00,2012-07-29 16:00,2012-07-16 08:00,2012-07-29 16:00,,2012-07-17 08:00,2012-07-30 16:00,,PT_Normal,,,,,zGpH1W1nSeGRjcuyKsUhSg,,,,N,0,0,,,2012-04-26 12:20,2012-04-26 16:01,admin,admin
57,123449,3413,18737,841,1,0,N,N,N,CP_Drtn,TT_Task,DT_FixedDUR2,RV_OK,TK_NotStart,PET-Z1-ID-40,Excavation for drainage system,,0,0,16,0,0,0,16,0,0,0,,,,2012-09-26 08:00,2012-09-27 16:00,,2012-09-26 08:00,2012-09-27 16:00,2012-09-26 08:00,2012-09-27 16:00,2012-09-26 08:00,2012-09-27 16:00,,2012-09-26 08:00,2012-09-27 16:00,,PT_Normal,,,,,Zp15RgrgSj6ZRwzaiu3m5g,a36eoCZPTCCj8mxoNSM0Ig,,,Y,0,0,,,2012-04-26 12:20,2012-04-26 16:01,admin,admin
58,123450,3413,18737,841,1,0,N,N,N,CP_Drtn,TT_Task,DT_FixedDUR2,RV_OK,TK_NotStart,PET-Z1-ID-50,Compaction&Backfilling with clean sand 10 cm,,0,0,16,0,0,0,16,0,0,0,,,,2012-09-29 08:00,2012-09-30 16:00,,2012-09-29 08:00,2012-09-30 16:00,2012-09-29 08:00,2012-09-30 16:00,2012-09-29 08:00,2012-09-30 16:00,,2012-09-29 08:00,2012-09-30 16:00,,PT_Normal,,,,,dgl6UVguSxCzGQQ9nvf5Lg,q3tfT4mOSj2cTvkqbPiqIg,,,Y,0,0,,,2012-04-26 12:20,2012-04-26 16:01,admin,admin
59,123451,3413,18737,841,1,0,N,N,N,CP_Drtn,TT_Task,DT_FixedDUR2,RV_OK,TK_NotStart,PET-Z1-ID-60,Installing pipes,,0,0,80,0,0,0,80,0,0,0,,,,2012-10-03 08:00,2012-10-14 16:00,,2012-10-03 08:00,2012-10-14 16:00,2012-10-03 08:00,2012-10-14 16:00,2012-10-03 08:00,2012-10-14 16:00,,2012-10-03 08:00,2012-10-14 16:00,,PT_Normal,,,,,GwdbDOe+RcG7VMwD2c6jYw,II89ohz9Sci3LSsncHvhkA,,,Y,0,0,,,2012-04-26 12:20,2012-04-26 16:01,admin,admin
60,123452,3413,18737,841,1,0,N,N,N,CP_Drtn,TT_Task,DT_FixedDUR2,RV_OK,TK_NotStart,PET-Z1-ID-70,Testing the line,,0,0,24,0,0,0,24,0,0,0,,,,2012-10-15 08:00,2012-10-17 16:00,,2012-10-15 08:00,2012-10-17 16:00,2012-10-15 08:00,2012-10-17 16:00,2012-10-15 08:00,2012-10-17 16:00,,2012-10-15 08:00,2012-10-17 16:00,,PT_Normal,,,,,4g5RCJmyR/uugi7v0fTPBw,GqLCUjIeS3uglX9mXHDCag,,,Y,0,0,,,2012-04-26 12:20,2012-04-26 16:01,admin,admin
61,123453,3413,18737,841,1,0,N,N,N,CP_Drtn,TT_Task,DT_FixedDUR2,RV_OK,TK_NotStart,PET-Z1-ID-80,Compaction&Backfilling with clean sand 30cm,,0,0,24,0,0,0,24,0,0,0,,,,2012-10-18 08:00,2012-10-21 16:00,,2012-10-18 08:00,2012-10-21 16:00,2012-10-18 08:00,2012-10-21 16:00,2012-10-18 08:00,2012-10-21 16:00,,2012-10-18 08:00,2012-10-21 16:00,,PT_Normal,,,,,SdQzpTluQi+57JyRsYAsSw,LwYNOGBoTO+XhDbSZi+blw,,,Y,0,0,,,2012-04-26 12:20,2012-04-26 16:01,admin,admin
62,123454,3413,18737,841,1,0,N,N,N,CP_Drtn,TT_Task,DT_FixedDUR2,RV_OK,TK_NotStart,PET-Z1-CC-220,Steel structure erection(columns&rafters&bracings),2118,0,0,160,0,100,100,160,0,0,0,,,,2012-08-25 08:00,2012-09-16 16:00,,2012-08-25 08:00,2012-09-16 16:00,2012-08-25 08:00,2012-09-16 16:00,2012-08-25 08:00,2012-09-16 16:00,,2012-08-25 08:00,2012-09-16 16:00,,PT_Normal,,,,,VhlczdxVSYiSCPy7NEuMzA,3O7cWzgq+UGId5uhN7jfWg,,,Y,0,0,,,2012-04-26 12:20,2012-04-26 16:01,admin,admin
63,123455,3413,18737,841,1,0,N,N,N,CP_Drtn,TT_Task,DT_FixedDUR2,RV_OK,TK_NotStart,PET-Z1-CC-330,Expansion joint,,192,192,56,0,0,0,56,0,0,0,,,,2012-12-22 08:00,2012-12-29 16:00,,2012-11-24 08:00,2012-12-01 16:00,2012-11-24 08:00,2012-12-01 16:00,2012-11-24 08:00,2012-12-01 16:00,,2012-12-22 08:00,2012-12-29 16:00,,PT_Normal,,,,,MySv3sSQTQKEf0pr3jYMeg,,,,N,0,0,,,2012-04-26 12:20,2012-04-26 17:09,admin,admin
64,123456,3413,18737,841,1,0,N,N,N,CP_Drtn,TT_Task,DT_FixedDUR2,RV_OK,TK_NotStart,PET-Z1-CC-340,Stainless steel pane fixation,,176,176,56,0,0,0,56,0,0,0,,,,2012-12-19 08:00,2012-12-26 16:00,,2012-11-24 08:00,2012-12-01 16:00,2012-11-24 08:00,2012-12-01 16:00,2012-11-24 08:00,2012-12-01 16:00,,2012-12-19 08:00,2012-12-26 16:00,,PT_Normal,,,,,H+U+bkfzSrmQT4UFHrsdHQ,,,,N,0,0,,,2012-04-26 12:20,2012-04-26 16:01,admin,admin
65,123457,3413,18737,841,1,0,N,N,N,CP_Drtn,TT_Task,DT_FixedDUR2,RV_OK,TK_NotStart,PET-Z1-CC-110,Excavation,,8,0,112,0,0,0,112,0,0,0,,,,2012-05-16 08:00,2012-05-31 16:00,,2012-05-15 08:00,2012-05-30 16:00,2012-05-15 08:00,2012-05-30 16:00,2012-05-15 08:00,2012-05-30 16:00,,2012-05-16 08:00,2012-05-31 16:00,,PT_Normal,,,,,qR1zsI07SPK/YOBxz5dghQ,MSaLJRU8cUm3CbmnxibhzQ,,,N,0,0,,,2012-04-26 12:20,2012-04-26 16:01,admin,admin
66,123458,3413,18737,841,1,0,N,N,N,CP_Drtn,TT_Task,DT_FixedDUR2,RV_OK,TK_NotStart,PET-Z1-CC-130,Replacement Under Footings,,8,0,120,0,0,0,120,0,0,0,,,,2012-05-22 08:00,2012-06-07 16:00,,2012-05-21 08:00,2012-06-06 16:00,2012-05-21 08:00,2012-06-06 16:00,2012-05-21 08:00,2012-06-06 16:00,,2012-05-22 08:00,2012-06-07 16:00,,PT_Normal,,,,,QqPgL9pOT7CWC3RmqIcNoA,9bHVXVTL/0aPQF6hdJUm1w,,,N,0,0,,,2012-04-26 12:20,2012-04-26 16:01,admin,admin
67,123459,3413,18737,841,1,0,N,N,N,CP_Drtn,TT_Task,DT_FixedDUR2,RV_OK,TK_NotStart,PET-Z1-CC-150,Plain Concrete footings,2104,8,0,96,0,12,12,96,0,0,0,,,,2012-06-09 08:00,2012-06-21 16:00,,2012-06-07 08:00,2012-06-20 16:00,2012-06-07 08:00,2012-06-20 16:00,2012-06-07 08:00,2012-06-20 16:00,,2012-06-09 08:00,2012-06-21 16:00,,PT_Normal,,,,,mkjw/x0XQo+xVn3UeDHiyA,Cjqm7hEM30Smwsm9TIWThg,,,N,0,0,,,2012-04-26 12:20,2012-04-26 16:01,admin,admin
68,123460,3413,18737,841,1,0,N,N,N,CP_Drtn,TT_Task,DT_FixedDUR2,RV_OK,TK_NotStart,PET-Z1-CC-160,R.C. footings & tie beams & planting tie beams,2103,8,0,96,0,185,185,96,0,0,0,,,,2012-06-13 08:00,2012-06-26 16:00,,2012-06-12 08:00,2012-06-25 16:00,2012-06-12 08:00,2012-06-25 16:00,2012-06-12 08:00,2012-06-25 16:00,,2012-06-13 08:00,2012-06-26 16:00,,PT_Normal,,,,,2y7vWHM+TMKitGqUfVJVKg,YfOhGsLwDUi+LZKW20xkzg,,,N,0,0,,,2012-04-26 12:20,2012-04-26 16:01,admin,admin
69,123461,3413,18737,841,1,0,N,N,N,CP_Drtn,TT_Task,DT_FixedDUR2,RV_OK,TK_NotStart,PET-Z1-CC-170,Bituminous waterproofing for foundations,,8,0,120,0,0,0,120,0,0,0,,,,2012-06-26 08:00,2012-07-12 16:00,,2012-06-25 08:00,2012-07-11 16:00,2012-06-25 08:00,2012-07-11 16:00,2012-06-25 08:00,2012-07-11 16:00,,2012-06-26 08:00,2012-07-12 16:00,,PT_Normal,,,,,PJgNPIWsS3+XEO75uy0zWQ,Am45y1gIDEK9yVLNYScl0g,,,N,0,0,,,2012-04-26 12:20,2012-04-26 16:01,admin,admin
70,123463,3413,18737,841,1,0,N,N,N,CP_Drtn,TT_Task,DT_FixedDUR2,RV_OK,TK_NotStart,PET-Z1-CC-260,Slab On Grade,,0,0,120,0,0,0,120,0,0,0,,,,2012-11-07 08:00,2012-11-24 16:00,,2012-11-07 08:00,2012-11-24 16:00,2012-11-07 08:00,2012-11-24 16:00,2012-11-07 08:00,2012-11-24 16:00,,2012-11-07 08:00,2012-11-24 16:00,,PT_Normal,,,,,l1uMH0KGRy6TBJKWTyTA8g,mpZVAqlBzEKYmf8fsHMpeg,,,Y,0,0,,,2012-04-26 12:20,2012-04-26 16:01,admin,admin
71,123464,3413,18737,841,1,0,N,N,N,CP_Drtn,TT_Task,DT_FixedDUR2,RV_OK,TK_NotStart,PET-Z1-CC-300,Concrete Screed,,0,0,112,0,0,0,112,0,0,0,,,,2012-11-15 08:00,2012-12-01 16:00,,2012-11-15 08:00,2012-12-01 16:00,2012-11-15 08:00,2012-12-01 16:00,2012-11-15 08:00,2012-12-01 16:00,,2012-11-15 08:00,2012-12-01 16:00,,PT_Normal,,,,,jEl9zQwrS2C8LUJT0FG/EA,cIu6GkUhzEiqmLEM0ORnbA,,,Y,0,0,,,2012-04-26 12:20,2012-04-26 16:01,admin,admin
72,123465,3413,18737,841,1,0,N,N,N,CP_Drtn,TT_Task,DT_FixedDUR2,RV_OK,TK_NotStart,PET-Z1-CC-180,RC for pedestals,,8,0,80,0,0,0,80,0,0,0,,,,2012-06-27 08:00,2012-07-08 16:00,,2012-06-26 08:00,2012-07-07 16:00,2012-06-26 08:00,2012-07-07 16:00,2012-06-26 08:00,2012-07-07 16:00,,2012-06-27 08:00,2012-07-08 16:00,,PT_Normal,,,,,d8EDcxwBTYm0kGI4aNSNmw,1zrznmK5F0mqUCTTiGyGtQ,,,N,0,0,,,2012-04-26 12:20,2012-04-26 16:01,admin,admin
73,123466,3413,18737,841,1,0,N,N,N,CP_Drtn,TT_Task,DT_FixedDUR2,RV_OK,TK_NotStart,PET-Z1-CC-230,Plain concrete 50mm thick,,0,0,40,0,0,0,40,0,0,0,,,,2012-10-22 08:00,2012-11-06 16:00,,2012-10-22 08:00,2012-11-06 16:00,2012-10-22 08:00,2012-11-06 16:00,2012-10-22 08:00,2012-11-06 16:00,,2012-10-22 08:00,2012-11-06 16:00,,PT_Normal,,,,,4f50xcKCTrSjxqSopAVzKA,JC6SVhJaikeuTpMNyU+y8g,,,Y,0,0,,,2012-04-26 12:20,2012-04-26 16:01,admin,admin
74,123467,3413,18737,842,1,0,N,N,N,CP_Drtn,TT_Task,DT_FixedDUR2,RV_OK,TK_NotStart,PET-Z1-CC-280,walk on ceiling installation ( @level 15) area-1,,65,65,112,0,0,0,112,0,0,0,,,,2012-12-11 08:00,2012-12-26 17:00,,2012-12-01 16:00,2012-12-17 16:00,2012-12-01 16:00,2012-12-17 16:00,2012-12-01 16:00,2012-12-17 16:00,,2012-12-11 08:00,2012-12-26 17:00,,PT_Normal,,,,,K/yoxs1dREG+YUp61wTVAw,,,,N,0,0,,,2012-04-26 12:20,2012-04-26 16:01,admin,admin
75,123468,3413,18737,841,1,0,N,N,N,CP_Drtn,TT_Task,DT_FixedDUR2,RV_OK,TK_NotStart,PET-Z1-CC-310,corrugated sheet (@level 17) area-1,,296,0,80,0,0,0,80,0,0,0,,,,2012-11-19 08:00,2012-11-29 16:00,,2012-09-26 08:00,2012-10-07 16:00,2012-09-26 08:00,2012-10-07 16:00,2012-09-26 08:00,2012-10-07 16:00,,2012-11-19 08:00,2012-11-29 16:00,,PT_Normal,,,,,VWeV0m8JSceFci3BGqfbTA,,,,N,0,0,,,2012-04-26 12:20,2012-04-26 16:01,admin,admin
76,123469,3413,18737,841,1,0,N,N,N,CP_Drtn,TT_Task,DT_FixedDUR2,RV_OK,TK_NotStart,PET-Z1-CC-320,RC casting for deck floor (area-1),,384,0,24,0,0,0,24,0,0,0,,,,2012-12-13 08:00,2012-12-16 16:00,,2012-10-08 08:00,2012-10-10 16:00,2012-10-08 08:00,2012-10-10 16:00,2012-10-08 08:00,2012-10-10 16:00,,2012-12-13 08:00,2012-12-16 16:00,,PT_Normal,,,,,OKpxdKFNTE6sA/ojAQo2Rw,,,,N,0,0,,,2012-04-26 12:20,2012-04-26 16:01,admin,admin
77,123470,3413,18737,841,1,0,N,N,N,CP_Drtn,TT_Task,DT_FixedDUR2,RV_OK,TK_NotStart,PET-Z1-CC-250,corrugated sheet (@level 16) area-2,,296,0,80,0,0,0,80,0,0,0,,,,2012-12-01 08:00,2012-12-11 16:00,,2012-10-08 08:00,2012-10-18 16:00,2012-10-08 08:00,2012-10-18 16:00,2012-10-08 08:00,2012-10-18 16:00,,2012-12-01 08:00,2012-12-11 16:00,,PT_Normal,,,,,i2MdNEBbQ3KOT/1vp38YIw,,,,N,0,0,,,2012-04-26 12:20,2012-04-26 16:01,admin,admin
78,123471,3413,18737,841,1,0,N,N,N,CP_Drtn,TT_Task,DT_FixedDUR2,RV_OK,TK_NotStart,PET-Z1-CC-350,Steel structure erection(purlins & tie rods),2118,0,0,112,0,30,30,112,0,0,0,,,,2012-09-10 08:00,2012-09-25 16:00,,2012-09-10 08:00,2012-09-25 16:00,2012-09-10 08:00,2012-09-25 16:00,2012-09-10 08:00,2012-09-25 16:00,,2012-09-10 08:00,2012-09-25 16:00,,PT_Normal,,,,,i617LT5RT/GXrFgAmt7gdg,,,,Y,0,0,,,2012-04-26 12:20,2012-04-26 16:01,admin,admin
79,123472,3413,18737,841,1,0,N,N,N,CP_Drtn,TT_Task,DT_FixedDUR2,RV_OK,TK_NotStart,PET-Z1-CC-270,RC casting for deck floors (area-2),,296,0,24,0,0,0,24,0,0,0,,,,2012-12-12 08:00,2012-12-15 16:00,,2012-10-20 08:00,2012-10-22 16:00,2012-10-20 08:00,2012-10-22 16:00,2012-10-20 08:00,2012-10-22 16:00,,2012-12-12 08:00,2012-12-15 16:00,,PT_Normal,,,,,1FFRpMW4RhC+82SI1HfZCg,,,,N,0,0,,,2012-04-26 12:20,2012-04-26 16:01,admin,admin
80,123473,3413,18737,842,1,0,N,N,N,CP_Drtn,TT_Task,DT_FixedDUR2,RV_OK,TK_NotStart,PET-Z1-CC-290,walk on ceiling installation ( @level 17.2) area-2,,65,65,112,0,0,0,112,0,0,0,,,,2012-12-11 08:00,2012-12-26 17:00,,2012-12-01 16:00,2012-12-17 16:00,2012-12-01 16:00,2012-12-17 16:00,2012-12-01 16:00,2012-12-17 16:00,,2012-12-11 08:00,2012-12-26 17:00,,PT_Normal,,,,,/eaBoR88SfeEP+ghMI9N9g,W/8j0RH9FEys56Y7z3MyVg,,,N,0,0,,,2012-04-26 12:20,2012-04-26 16:01,admin,admin
81,123474,3413,18737,841,1,0,N,N,N,CP_Drtn,TT_Task,DT_FixedDUR2,RV_OK,TK_NotStart,PET-Z1-CC-190,Anchors for steel structure,,8,0,80,0,0,0,80,0,0,0,,,,2012-06-27 08:00,2012-07-08 16:00,,2012-06-26 08:00,2012-07-07 16:00,2012-06-26 08:00,2012-07-07 16:00,2012-06-26 08:00,2012-07-07 16:00,,2012-06-27 08:00,2012-07-08 16:00,,PT_Normal,,,,,69lcaL0qQ5aCkHenB3AZYg,,,,N,0,0,,,2012-04-26 12:20,2012-04-26 16:01,admin,admin
82,123476,3413,18737,841,1,0,N,N,N,CP_Drtn,TT_Task,DT_FixedDUR2,RV_OK,TK_NotStart,PET-Z1-CC-240,Membrane sheet 400 micron,,0,0,40,0,0,0,40,0,0,0,,,,2012-10-22 08:00,2012-11-06 16:00,,2012-10-22 08:00,2012-11-06 16:00,2012-10-22 08:00,2012-11-06 16:00,2012-10-22 08:00,2012-11-06 16:00,,2012-10-22 08:00,2012-11-06 16:00,,PT_Normal,,,,,yHYBIEOeTriAZCLd6VuSzg,,,,Y,0,0,,,2012-04-26 12:20,2012-04-26 16:01,admin,admin
83,123477,3413,18738,841,1,0,N,N,N,CP_Drtn,TT_Task,DT_FixedDUR2,RV_OK,TK_NotStart,PET-Z1-AR-730,Masonry under slab on grade,,8,0,80,0,0,0,80,0,0,0,,,,2012-07-14 08:00,2012-07-24 16:00,,2012-07-12 08:00,2012-07-23 16:00,2012-07-12 08:00,2012-07-23 16:00,2012-07-12 08:00,2012-07-23 16:00,,2012-07-14 08:00,2012-07-24 16:00,,PT_Normal,,,,,sEhW0j54QeiOpzq169ESmg,,,,N,0,0,,,2012-04-26 12:20,2012-04-26 16:01,admin,admin
84,123479,3413,18738,841,1,0,N,N,N,CP_Drtn,TT_Task,DT_FixedDUR2,RV_OK,TK_NotStart,PET-Z1-AR-240,Steel Doors erection,,152,152,32,0,0,0,32,0,0,0,,,,2012-12-24 08:00,2012-12-27 16:00,,2012-12-02 08:00,2012-12-05 16:00,2012-12-02 08:00,2012-12-05 16:00,2012-12-02 08:00,2012-12-05 16:00,,2012-12-24 08:00,2012-12-27 16:00,,PT_Normal,,,,,1ni1ROYHRtiHJk+uYI8lOg,VEJ1vuTwWk2+O1LEcDfaxw,,,N,0,0,,,2012-04-26 12:20,2012-04-26 16:01,admin,admin
85,123480,3413,18738,841,1,0,N,N,N,CP_Drtn,TT_Task,DT_FixedDUR2,RV_OK,TK_NotStart,PET-Z1-AR-170,Epoxy Paint for walls,2106,24,0,80,0,16,16,80,0,0,0,,,,2012-12-05 08:00,2012-12-16 16:00,,2012-12-02 08:00,2012-12-12 16:00,2012-12-02 08:00,2012-12-12 16:00,2012-12-02 08:00,2012-12-12 16:00,,2012-12-05 08:00,2012-12-16 16:00,,PT_Normal,,,,,c3HqWc7PTW2RV2AzSge5Zg,v3RoKZnmLEqpj6ddluFxtw,,,N,0,0,,,2012-04-26 12:20,2012-04-26 16:01,admin,admin
86,123481,3413,18738,841,1,0,N,N,N,CP_Drtn,TT_Task,DT_FixedDUR2,RV_OK,TK_NotStart,PET-Z1-AR-130,Sandwich Panel For roof,,416,416,200,0,0,0,200,0,0,0,,,,2012-11-28 08:00,2012-12-26 16:00,,2012-09-18 08:00,2012-10-16 16:00,2012-09-18 08:00,2012-10-16 16:00,2012-09-18 08:00,2012-10-16 16:00,,2012-11-28 08:00,2012-12-26 16:00,,PT_Normal,,,,,UK5LLcjPTGeB2WCMyqGCKA,NGko0tNVlkO+GM/b8P5SNA,,,N,0,0,,,2012-04-26 12:20,2012-04-26 16:31,admin,admin
87,123482,3413,18738,841,1,0,N,N,N,CP_Drtn,TT_Task,DT_FixedDUR2,RV_OK,TK_NotStart,PET-Z1-AR-140,Epoxy Paint (@level 15) area-2,2106,296,296,80,0,4,4,80,0,0,0,,,,2012-12-16 08:00,2012-12-26 16:00,,2012-11-03 08:00,2012-11-13 16:00,2012-11-03 08:00,2012-11-13 16:00,2012-11-03 08:00,2012-11-13 16:00,,2012-12-16 08:00,2012-12-26 16:00,,PT_Normal,,,,,oKd8vGwPR96oc67idG7uGg,,,,N,0,0,,,2012-04-26 12:20,2012-04-26 16:01,admin,admin
88,123483,3413,18738,841,1,0,N,N,N,CP_Drtn,TT_Task,DT_FixedDUR2,RV_OK,TK_NotStart,PET-Z1-AR-220,Acrylic paint for external plaster,2105,24,24,80,0,12,12,80,0,0,0,,,,2012-12-16 08:00,2012-12-26 16:00,,2012-12-12 08:00,2012-12-23 16:00,2012-12-12 08:00,2012-12-23 16:00,2012-12-12 08:00,2012-12-23 16:00,,2012-12-16 08:00,2012-12-26 16:00,,PT_Normal,,,,,C1/WlyndSueRkHmJFcldKw,,,,N,0,0,,,2012-04-26 12:20,2012-04-26 16:01,admin,admin
89,123484,3413,18738,841,1,0,N,N,N,CP_Drtn,TT_Task,DT_FixedDUR2,RV_OK,TK_NotStart,PET-Z1-AR-180,Epoxy Paint (@level 17.8) area-1,2106,384,384,72,0,20,20,72,0,0,0,,,,2012-12-17 08:00,2012-12-26 16:00,,2012-10-11 08:00,2012-10-21 16:00,2012-10-11 08:00,2012-10-21 16:00,2012-10-11 08:00,2012-10-21 16:00,,2012-12-17 08:00,2012-12-26 16:00,,PT_Normal,,,,,9Ke+oq8ARBSl9ibgC0c2gw,Hdfusjx5TEGeZsTQP+Cw1g,,,N,0,0,,,2012-04-26 12:20,2012-04-26 16:01,admin,admin
90,123485,3413,18738,841,1,0,N,N,N,CP_Drtn,TT_Task,DT_FixedDUR2,RV_OK,TK_NotStart,PET-Z1-AR-150,Fair face conc. guard base(kerb),,16,16,112,0,0,0,112,0,0,0,,,,2012-11-24 08:00,2012-12-09 16:00,,2012-11-21 08:00,2012-12-06 16:00,2012-11-21 08:00,2012-12-06 16:00,2012-11-21 08:00,2012-12-06 16:00,,2012-11-24 08:00,2012-12-09 16:00,,PT_Normal,,,,,OGX6SU7+T2O8CclT3/QHRQ,,,,N,0,0,,,2012-04-26 12:20,2012-04-26 16:01,admin,admin
91,123486,3413,18738,841,1,0,N,N,N,CP_Drtn,TT_Task,DT_FixedDUR2,RV_OK,TK_NotStart,PET-Z1-AR-280,Final touch up,,0,0,8,0,0,0,8,0,0,0,,,,2012-12-27 08:00,2012-12-27 16:00,,2012-12-27 08:00,2012-12-27 16:00,2012-12-27 08:00,2012-12-27 16:00,2012-12-27 08:00,2012-12-27 16:00,,2012-12-27 08:00,2012-12-27 16:00,,PT_Normal,,,,,I2x5xQkOQSi3x25wCxF1iQ,,,,Y,0,0,,,2012-04-26 12:20,2012-04-26 16:01,admin,admin
92,123487,3413,18738,841,1,0,N,N,N,CP_Drtn,TT_Task,DT_FixedDUR2,RV_OK,TK_NotStart,PET-Z1-AR-290,Handing over & comissioning,,0,0,8,0,0,0,8,0,0,0,,,,2012-12-29 08:00,2012-12-29 16:00,,2012-12-29 08:00,2012-12-29 16:00,2012-12-29 08:00,2012-12-29 16:00,2012-12-29 08:00,2012-12-29 16:00,,2012-12-29 08:00,2012-12-29 16:00,,PT_Normal,,,,,tpHRuIc7Q+ugkw8SMdqBeQ,,,,Y,0,0,,,2012-04-26 12:20,2012-04-26 16:01,admin,admin
93,123488,3413,18738,841,1,0,N,N,N,CP_Drtn,TT_Task,DT_FixedDUR2,RV_OK,TK_NotStart,PET-Z1-AR-250,Louvers erection,,136,136,72,0,0,0,72,0,0,0,,,,2012-12-19 08:00,2012-12-29 16:00,,2012-11-29 08:00,2012-12-09 16:00,2012-11-29 08:00,2012-12-09 16:00,2012-11-29 08:00,2012-12-09 16:00,,2012-12-19 08:00,2012-12-29 16:00,,PT_Normal,,,,,sszphuKGQ4OTyX8QncmY/g,JqDJGf9oOEeYVvR5RLbg1g,,,N,0,0,,,2012-04-26 12:20,2012-04-26 17:09,admin,admin
94,123489,3413,18738,841,1,0,N,N,N,CP_Drtn,TT_Task,DT_FixedDUR2,RV_OK,TK_NotStart,PET-Z1-AR-260,Windows erection,,136,136,72,0,0,0,72,0,0,0,,,,2012-12-19 08:00,2012-12-29 16:00,,2012-11-29 08:00,2012-12-09 16:00,2012-11-29 08:00,2012-12-09 16:00,2012-11-29 08:00,2012-12-09 16:00,,2012-12-19 08:00,2012-12-29 16:00,,PT_Normal,,,,,quHcW3unTw+zEYIsTFdlSg,ZKeZk6dzcE6TuFyYuw0aXw,,,N,0,0,,,2012-04-26 12:20,2012-04-26 17:09,admin,admin
95,123490,3413,18738,841,1,0,N,N,N,CP_Drtn,TT_Task,DT_FixedDUR2,RV_OK,TK_NotStart,PET-Z1-AR-270,Erection of Steel ladder & handrail & cheker plates& painting,,320,320,80,0,0,0,80,0,0,0,,,,2012-12-16 08:00,2012-12-26 16:00,,2012-10-20 08:00,2012-11-10 16:00,2012-10-20 08:00,2012-11-10 16:00,2012-10-20 08:00,2012-11-10 16:00,,2012-12-16 08:00,2012-12-26 16:00,,PT_Normal,,,,,BghZEMO3SWG7/aOVpJTr6A,byFoe6Be20ydjmst+mmm7Q,,,N,0,0,,,2012-04-26 12:20,2012-04-26 16:01,admin,admin
96,123491,3413,18738,841,1,0,N,N,N,CP_Drtn,TT_Task,DT_FixedDUR2,RV_OK,TK_NotStart,PET-Z1-AR-120,Steel structure paintings,,0,0,160,0,0,0,160,0,0,0,,,,2012-09-02 08:00,2012-09-24 16:00,,2012-09-02 08:00,2012-09-24 16:00,2012-09-02 08:00,2012-09-24 16:00,2012-09-02 08:00,2012-09-24 16:00,,2012-09-02 08:00,2012-09-24 16:00,,PT_Normal,,,,,7JYKnA/+SrWGo5ZmAZRkLQ,,,,Y,0,0,,,2012-04-26 12:20,2012-04-26 16:01,admin,admin
97,123492,3413,18738,841,1,0,N,N,N,CP_Drtn,TT_Task,DT_FixedDUR2,RV_OK,TK_NotStart,PET-Z1-AR-210,Guard bollard erection,,0,0,40,0,0,0,40,0,0,0,,,,2012-12-22 08:00,2012-12-26 16:00,,2012-12-22 08:00,2012-12-26 16:00,2012-12-22 08:00,2012-12-26 16:00,2012-12-22 08:00,2012-12-26 16:00,,2012-12-22 08:00,2012-12-26 16:00,,PT_Normal,,,,,RFWpCH0uS5SPcWCD210ZBw,,,,Y,0,0,,,2012-04-26 12:20,2012-04-26 16:01,admin,admin
98,123494,3413,18738,841,1,0,N,N,N,CP_Drtn,TT_Task,DT_FixedDUR2,RV_OK,TK_NotStart,PET-Z1-AR-350,Stainless steel doors erection,,152,152,40,0,0,0,40,0,0,0,,,,2012-12-24 08:00,2012-12-29 16:00,,2012-12-02 08:00,2012-12-06 16:00,2012-12-02 08:00,2012-12-06 16:00,2012-12-02 08:00,2012-12-06 16:00,,2012-12-24 08:00,2012-12-29 16:00,,PT_Normal,,,,,TffiH2GWR/G2JDcVzv0+TA,,,,N,0,0,,,2012-04-26 12:20,2012-04-26 17:09,admin,admin
99,123495,3413,18738,841,1,0,N,N,N,CP_Drtn,TT_Task,DT_FixedDUR2,RV_OK,TK_NotStart,PET-Z1-AR-300,Roll up shutter doors erection,,96,96,72,0,0,0,72,0,0,0,,,,2012-12-17 08:00,2012-12-26 16:00,,2012-12-03 08:00,2012-12-12 16:00,2012-12-03 08:00,2012-12-12 16:00,2012-12-03 08:00,2012-12-12 16:00,,2012-12-17 08:00,2012-12-26 16:00,,PT_Normal,,,,,JwubLR4HQqqTEa0BxgLYpw,,,,N,0,0,,,2012-04-26 12:20,2012-04-26 16:01,admin,admin
100,123496,3413,18738,841,1,0,N,N,N,CP_Drtn,TT_Task,DT_FixedDUR2,RV_OK,TK_NotStart,PET-Z1-AR-200,Polyurethane Flooring,,0,0,120,0,0,0,120,0,0,0,,,,2012-12-10 08:00,2012-12-26 16:00,,2012-12-10 08:00,2012-12-26 16:00,2012-12-10 08:00,2012-12-26 16:00,2012-12-10 08:00,2012-12-26 16:00,,2012-12-10 08:00,2012-12-26 16:00,,PT_Normal,,,,,9DkVmwnjQECeDh22coRvzg,,,,Y,0,0,,,2012-04-26 12:20,2012-04-26 16:01,admin,admin
101,123497,3413,18738,841,1,0,N,N,N,CP_Drtn,TT_Task,DT_FixedDUR2,RV_OK,TK_NotStart,PET-Z1-AR-230,Dismantle Works (doors & windows),,96,0,24,0,0,0,24,0,0,0,,,,2012-12-13 08:00,2012-12-16 16:00,,2012-11-29 08:00,2012-12-02 16:00,2012-11-29 08:00,2012-12-02 16:00,2012-11-29 08:00,2012-12-02 16:00,,2012-12-13 08:00,2012-12-16 16:00,,PT_Normal,,,,,4y06PT29Sd6iYSgtPWncmw,nk6cZ6YC4k2iLZXO4yU53w,,,N,0,0,,,2012-04-26 12:20,2012-04-26 16:01,admin,admin
102,123498,3413,18738,841,1,0,N,N,N,CP_Drtn,TT_Task,DT_FixedDUR2,RV_OK,TK_NotStart,PET-Z1-AR-190,Sandwich Panel For Walls,,96,0,168,0,0,0,168,0,0,0,,,,2012-11-19 08:00,2012-12-12 16:00,,2012-11-05 08:00,2012-11-28 16:00,2012-11-05 08:00,2012-11-28 16:00,2012-11-05 08:00,2012-11-28 16:00,,2012-11-19 08:00,2012-12-12 16:00,,PT_Normal,,,,,NdnNcZ9uT6yp2N4o34VDsA,OffvCNVCsEyr8HyLD8rrpA,,,N,0,0,,,2012-04-26 12:20,2012-04-26 16:01,admin,admin
103,123499,3413,18738,841,1,0,N,N,N,CP_Drtn,TT_Task,DT_FixedDUR2,RV_OK,TK_NotStart,PET-Z1-AR-100,Masonry,2108,320,0,160,0,120,120,160,0,0,0,,,,2012-10-09 08:00,2012-11-11 16:00,,2012-08-17 08:00,2012-09-15 16:00,2012-08-17 08:00,2012-09-15 16:00,2012-08-17 08:00,2012-09-15 16:00,,2012-10-09 08:00,2012-11-11 16:00,,PT_Normal,,,,,TRdor71PQBaASthOP3P+7w,K9HYqWP7GEiNw2kt8Snsjw,,,N,0,0,,,2012-04-26 12:20,2012-04-26 16:01,admin,admin
104,123500,3413,18738,841,1,0,N,N,N,CP_Drtn,TT_Task,DT_FixedDUR2,RV_OK,TK_NotStart,PET-Z1-AR-160,External Cement Plaster,2107,320,296,160,0,20,20,160,0,0,0,,,,2012-11-12 08:00,2012-12-04 16:00,,2012-09-16 08:00,2012-10-08 16:00,2012-09-16 08:00,2012-10-08 16:00,2012-09-16 08:00,2012-10-08 16:00,,2012-11-12 08:00,2012-12-04 16:00,,PT_Normal,,,,,b/Pmi9KNQQOIpubEVDSJEg,EU0iKbww5kutwnfneGe6Aw,,,N,0,0,,,2012-04-26 12:20,2012-04-26 16:01,admin,admin
105,123501,3413,18738,841,1,0,N,N,N,CP_Drtn,TT_Task,DT_FixedDUR2,RV_OK,TK_NotStart,PET-Z1-AR-720,Steel structure paintings (fire rated),,352,56,112,0,0,0,112,0,0,0,,,,2012-11-03 08:00,2012-11-18 16:00,,2012-09-02 08:00,2012-09-17 16:00,2012-09-02 08:00,2012-09-17 16:00,2012-09-02 08:00,2012-09-17 16:00,,2012-11-03 08:00,2012-11-18 16:00,,PT_Normal,,,,,1MZauEC1R1+nY7akq/Fl3w,,,,N,0,0,,,2012-04-26 12:20,2012-04-26 16:01,admin,admin
106,123502,3413,18737,841,1,0,N,N,N,CP_Drtn,TT_Task,DT_FixedDUR2,RV_OK,TK_NotStart,PET-Z1-CC-400,Base course under S.O.G,,8,0,128,0,0,0,128,0,0,0,,,,2012-07-31 08:00,2012-08-17 16:00,,2012-07-30 08:00,2012-08-16 16:00,2012-07-30 08:00,2012-08-16 16:00,2012-07-30 08:00,2012-08-16 16:00,,2012-07-31 08:00,2012-08-17 16:00,,PT_Normal,,,,,1aqQtQxpIECKHGcH+c/ejw,,,,N,0,0,,,2012-04-26 12:55,2012-04-26 16:01,admin,admin
107,123503,3413,18742,841,1,0,N,N,N,CP_Drtn,TT_Task,DT_FixedDUR2,RV_OK,TK_NotStart,SD 240,Steel structure  Approval,,0,0,8,0,0,0,8,0,0,0,,,,2012-06-12 08:00,2012-06-12 16:00,,2012-06-12 08:00,2012-06-12 16:00,2012-06-12 08:00,2012-06-12 16:00,2012-06-12 08:00,2012-06-12 16:00,,2012-06-12 08:00,2012-06-12 16:00,,PT_Normal,,,,,jn2a84rCk0aXc/B9cnBc4w,PlNnomYzRIW124XnqRFx0w,,,Y,0,0,,,2012-04-26 14:53,2012-04-26 16:01,admin,admin
108,123504,3413,18742,841,1,0,N,N,N,CP_Drtn,TT_Task,DT_FixedDUR2,RV_OK,TK_NotStart,SD 270,Windows Approval,,160,0,8,0,0,0,8,0,0,0,,,,2012-09-25 08:00,2012-09-25 16:00,,2012-09-02 08:00,2012-09-02 16:00,2012-09-02 08:00,2012-09-02 16:00,2012-09-02 08:00,2012-09-02 16:00,,2012-09-25 08:00,2012-09-25 16:00,,PT_Normal,,,,,wedmnF8/x0qITGW1G68sEQ,OdVJUzLZSIuRD4ZY6+MSHQ,,,N,0,0,,,2012-04-26 14:53,2012-04-26 16:01,admin,admin
109,123505,3413,18742,841,1,0,N,N,N,CP_Drtn,TT_Task,DT_FixedDUR2,RV_OK,TK_NotStart,SD 290,Louvers  Approval,,216,0,8,0,0,0,8,0,0,0,,,,2012-09-27 08:00,2012-09-27 16:00,,2012-08-27 08:00,2012-08-27 16:00,2012-08-27 08:00,2012-08-27 16:00,2012-08-27 08:00,2012-08-27 16:00,,2012-09-27 08:00,2012-09-27 16:00,,PT_Normal,,,,,EKuMixIsikOfshx8pF99Eg,ori3OurYRgyPTA9NvLD4zg,,,N,0,0,,,2012-04-26 14:53,2012-04-26 16:01,admin,admin
110,123508,3413,18742,841,1,0,N,N,N,CP_Drtn,TT_Task,DT_FixedDrtn,RV_OK,TK_NotStart,SD 170,Walk on ceiling Approval,,248,0,8,0,0,0,8,0,0,0,,,,2012-09-20 08:00,2012-09-20 16:00,,2012-08-09 08:00,2012-08-09 16:00,2012-08-09 08:00,2012-08-09 16:00,2012-08-09 08:00,2012-08-09 16:00,,2012-09-20 08:00,2012-09-20 16:00,,PT_Normal,,,,,sLPVen3D4UmzOH4AuRVc0g,F9L+iDxmQEqESoOjETQbZw,,,N,0,0,,,2012-04-26 14:53,2012-04-26 16:01,admin,admin
111,123509,3413,18742,841,1,0,N,N,N,CP_Drtn,TT_Task,DT_FixedDUR2,RV_OK,TK_NotStart,SD 450,Roll up&over head doors approval,,104,0,8,0,0,0,8,0,0,0,,,,2012-09-05 08:00,2012-09-05 16:00,,2012-08-15 08:00,2012-08-15 16:00,2012-08-15 08:00,2012-08-15 16:00,2012-08-15 08:00,2012-08-15 16:00,,2012-09-05 08:00,2012-09-05 16:00,,PT_Normal,,,,,B0TvvpurVESm5G/QF7f2pA,z1yQvTGrTgWtxBsEl4aeSw,,,N,0,0,,,2012-04-26 14:53,2012-04-26 16:01,admin,admin
112,123510,3413,18742,841,1,0,N,N,N,CP_Drtn,TT_Task,DT_FixedDUR2,RV_OK,TK_NotStart,SD 180,R.C footings Approval,,80,72,8,0,0,0,8,0,0,0,,,,2012-06-12 08:00,2012-06-12 16:00,,2012-05-31 08:00,2012-05-31 16:00,2012-05-31 08:00,2012-05-31 16:00,2012-05-31 08:00,2012-05-31 16:00,,2012-06-12 08:00,2012-06-12 16:00,,PT_Normal,,,,,46uqWv/r+0GQ7fK6asjbiA,nhjN7dtOQo6PL5DPxvUSeQ,,,N,0,0,,,2012-04-26 14:53,2012-04-26 16:01,admin,admin
113,123511,3413,18742,841,1,0,N,N,N,CP_Drtn,TT_Task,DT_FixedDrtn,RV_OK,TK_NotStart,SD 260,Steel Doors  Approval,,136,0,8,0,0,0,8,0,0,0,,,,2012-09-10 08:00,2012-09-10 16:00,,2012-08-15 08:00,2012-08-15 16:00,2012-08-15 08:00,2012-08-15 16:00,2012-08-15 08:00,2012-08-15 16:00,,2012-09-10 08:00,2012-09-10 16:00,,PT_Normal,,,,,9svit2geREiATT8Q3PVH4A,D1mkOKeoRkyJOQXjShWyew,,,N,0,0,,,2012-04-26 14:53,2012-04-26 16:01,admin,admin
114,123512,3413,18742,841,1,0,N,N,N,CP_Drtn,TT_Task,DT_FixedDUR2,RV_OK,TK_NotStart,SD 250,Masonry Approval,,48,40,8,0,0,0,8,0,0,0,,,,2012-07-12 08:00,2012-07-12 16:00,,2012-07-05 08:00,2012-07-05 16:00,2012-07-05 08:00,2012-07-05 16:00,2012-07-05 08:00,2012-07-05 16:00,,2012-07-12 08:00,2012-07-12 16:00,,PT_Normal,,,,,E8Ctm8CBVUus3HLuB0pQ6g,MHDPQYamT+eQL0kjmbVbbA,,,N,0,0,,,2012-04-26 14:53,2012-04-26 16:14,admin,admin
115,123514,3413,18742,841,1,0,N,N,N,CP_Drtn,TT_Task,DT_FixedDUR2,RV_OK,TK_NotStart,SD 150,Plain concrete footings Approval,,48,40,8,0,0,0,8,0,0,0,,,,2012-06-07 08:00,2012-06-07 16:00,,2012-05-31 08:00,2012-05-31 16:00,2012-05-31 08:00,2012-05-31 16:00,2012-05-31 08:00,2012-05-31 16:00,,2012-06-07 08:00,2012-06-07 16:00,,PT_Normal,,,,,aQkumUVjB0CzznYdXjoMlQ,1aKhBuGTSNSXnAfno37AEA,,,N,0,0,,,2012-04-26 14:53,2012-04-26 16:01,admin,admin
116,123515,3413,18742,841,1,0,N,N,N,CP_Drtn,TT_Task,DT_FixedDUR2,RV_OK,TK_NotStart,SD 190,Sandwich panel  Approval,,96,0,8,0,0,0,8,0,0,0,,,,2012-08-29 08:00,2012-08-29 16:00,,2012-08-09 08:00,2012-08-09 16:00,2012-08-09 08:00,2012-08-09 16:00,2012-08-09 08:00,2012-08-09 16:00,,2012-08-29 08:00,2012-08-29 16:00,,PT_Normal,,,,,Zl0GD61qnU2jHTkPth6bJQ,xyLSYSxZQ8ehkgUdcMgiTQ,,,N,0,0,,,2012-04-26 14:53,2012-04-26 16:01,admin,admin
117,123516,3413,18741,841,1,0,N,N,N,CP_Drtn,TT_Task,DT_FixedDrtn,RV_OK,TK_NotStart,SD 230,Louvers submittal,,216,0,8,0,0,0,8,0,0,0,,,,2012-09-11 08:00,2012-09-11 16:00,,2012-08-05 08:00,2012-08-05 16:00,2012-08-05 08:00,2012-08-05 16:00,2012-08-05 08:00,2012-08-05 16:00,,2012-09-11 08:00,2012-09-11 16:00,,PT_Normal,,,,,crsFQS3SH066xcOhHvdfmg,yKRnULCsTYyZNThZ6To9cw,,,N,0,0,,,2012-04-26 14:53,2012-04-26 16:01,admin,admin
118,123517,3413,18741,841,1,0,N,N,N,CP_Drtn,TT_Task,DT_FixedDrtn,RV_OK,TK_NotStart,SD 140,Steel structure submittal,,0,0,8,0,0,0,8,0,0,0,,,,2012-05-27 08:00,2012-05-27 16:00,,2012-05-27 08:00,2012-05-27 16:00,2012-05-27 08:00,2012-05-27 16:00,2012-05-27 08:00,2012-05-27 16:00,,2012-05-27 08:00,2012-05-27 16:00,,PT_Normal,,,,,MojPj10GDkKZCD9mAjCytQ,1Pvd0H0KThaYCZnWx5TM7Q,,,Y,0,0,,,2012-04-26 14:53,2012-04-26 16:01,admin,admin
119,123518,3413,18741,841,1,0,N,N,N,CP_Drtn,TT_Task,DT_FixedDrtn,RV_OK,TK_NotStart,SD 160,Masonry submittal,,48,0,8,0,0,0,8,0,0,0,,,,2012-06-26 08:00,2012-06-26 16:00,,2012-06-19 08:00,2012-06-19 16:00,2012-06-19 08:00,2012-06-19 16:00,2012-06-19 08:00,2012-06-19 16:00,,2012-06-26 08:00,2012-06-26 16:00,,PT_Normal,,,,,0ej4RVCFbUW+amJUzXyMRg,JW5YbpvXTIitANFhLdPXyA,,,N,0,0,,,2012-04-26 14:53,2012-04-26 16:01,admin,admin
120,123520,3413,18741,841,1,0,N,N,N,CP_Drtn,TT_Task,DT_FixedDUR2,RV_OK,TK_NotStart,SD 130,Sandwich panel submittal,,96,0,8,0,0,0,8,0,0,0,,,,2012-08-07 08:00,2012-08-07 16:00,,2012-07-24 08:00,2012-07-24 16:00,2012-07-24 08:00,2012-07-24 16:00,2012-07-24 08:00,2012-07-24 16:00,,2012-08-07 08:00,2012-08-07 16:00,,PT_Normal,,,,,rjOzEhiD3ESdezdh/Bz27A,oktYrv8JQ2mbmvhPrHXiMw,,,N,0,0,,,2012-04-26 14:53,2012-04-26 16:01,admin,admin
121,123521,3413,18741,841,1,0,N,N,N,CP_Drtn,TT_Task,DT_FixedDrtn,RV_OK,TK_NotStart,SD 120,R.C footings submittal,,80,0,8,0,0,0,8,0,0,0,,,,2012-05-27 08:00,2012-05-27 16:00,,2012-05-15 08:00,2012-05-15 16:00,2012-05-15 08:00,2012-05-15 16:00,2012-05-15 08:00,2012-05-15 16:00,,2012-05-27 08:00,2012-05-27 16:00,,PT_Normal,,,,,2wrynQMKREG8M8fQjSFUpQ,WvOOUdNPSjS2Zsal4yOMBg,,,N,0,0,,,2012-04-26 14:53,2012-04-26 16:01,admin,admin
122,123522,3413,18741,841,1,0,N,N,N,CP_Drtn,TT_Task,DT_FixedDrtn,RV_OK,TK_NotStart,SD 210,Windows submittal,,160,0,8,0,0,0,8,0,0,0,,,,2012-09-09 08:00,2012-09-09 16:00,,2012-08-11 08:00,2012-08-11 16:00,2012-08-11 08:00,2012-08-11 16:00,2012-08-11 08:00,2012-08-11 16:00,,2012-09-09 08:00,2012-09-09 16:00,,PT_Normal,,,,,3QMi8cD7NEichkJY+TauKg,xQdmCgsST++1IEHCgrgHwQ,,,N,0,0,,,2012-04-26 14:53,2012-04-26 16:01,admin,admin
123,123523,3413,18741,841,1,0,N,N,N,CP_Drtn,TT_Task,DT_FixedDrtn,RV_OK,TK_NotStart,SD 110,Walk on ceiling submittal,,248,0,8,0,0,0,8,0,0,0,,,,2012-09-04 08:00,2012-09-04 16:00,,2012-07-24 08:00,2012-07-24 16:00,2012-07-24 08:00,2012-07-24 16:00,2012-07-24 08:00,2012-07-24 16:00,,2012-09-04 08:00,2012-09-04 16:00,,PT_Normal,,,,,8F4c9ZqaskKioC8hQUZd/Q,GCJelBB3QZKYnvmVaxYH7w,,,N,0,0,,,2012-04-26 14:53,2012-04-26 16:01,admin,admin
124,123524,3413,18741,841,0,0,N,N,N,CP_Drtn,TT_FinMile,DT_FixedDrtn,RV_OK,TK_NotStart,SD 300,As built submittal,,8,8,0,0,0,0,0,0,0,0,,,,2012-12-29 16:00,2012-12-29 16:00,,2012-12-27 16:00,2012-12-27 16:00,2012-12-27 16:00,2012-12-27 16:00,2012-12-27 16:00,2012-12-27 16:00,,2012-12-29 16:00,2012-12-29 16:00,,PT_Normal,,,,,GlJBSD1X/kSs9iZBbF04Mw,JSI7jYDxR0K66G2Ac8AX5Q,,,N,0,0,,,2012-04-26 14:53,2012-04-26 17:09,admin,admin
125,123525,3413,18741,841,1,0,N,N,N,CP_Drtn,TT_Task,DT_FixedDrtn,RV_OK,TK_NotStart,SD 200,Steel Doors submittal,,136,0,8,0,0,0,8,0,0,0,,,,2012-08-25 08:00,2012-08-25 16:00,,2012-07-30 08:00,2012-07-30 16:00,2012-07-30 08:00,2012-07-30 16:00,2012-07-30 08:00,2012-07-30 16:00,,2012-08-25 08:00,2012-08-25 16:00,,PT_Normal,,,,,HMxmU71EZ0SVBBh8P1qzbA,49Zm7x6xSEG8wj2a4P/Lfw,,,N,0,0,,,2012-04-26 14:53,2012-04-26 16:01,admin,admin
126,123527,3413,18741,841,1,0,N,N,N,CP_Drtn,TT_Task,DT_FixedDUR2,RV_OK,TK_NotStart,SD 400,Roll up&over head doors submittal,,104,0,8,0,0,0,8,0,0,0,,,,2012-08-14 08:00,2012-08-14 16:00,,2012-07-30 08:00,2012-07-30 16:00,2012-07-30 08:00,2012-07-30 16:00,2012-07-30 08:00,2012-07-30 16:00,,2012-08-14 08:00,2012-08-14 16:00,,PT_Normal,,,,,RrQ2HCDgnUKiOO7P+Pymmw,7eSz5rSHTKOIi0qDIphyaQ,,,N,0,0,,,2012-04-26 14:53,2012-04-26 16:01,admin,admin
127,123529,3413,18741,841,1,0,N,N,N,CP_Drtn,TT_Task,DT_FixedDrtn,RV_OK,TK_NotStart,SD 100,Plain concrete footings submittal,,48,0,8,0,0,0,8,0,0,0,,,,2012-05-22 08:00,2012-05-22 16:00,,2012-05-15 08:00,2012-05-15 16:00,2012-05-15 08:00,2012-05-15 16:00,2012-05-15 08:00,2012-05-15 16:00,,2012-05-22 08:00,2012-05-22 16:00,,PT_Normal,,,,,LXSW5FFyjUiuREWOCzEefA,guhVr7xLTcOc/me9agGBjA,,,N,0,0,,,2012-04-26 14:53,2012-04-26 16:01,admin,admin
128,123530,3413,18729,841,0,0,N,N,N,CP_Drtn,TT_FinMile,DT_FixedDrtn,RV_OK,TK_NotStart,DD180,Louvers delivery on site,,216,80,0,0,0,0,0,0,0,0,,,,2012-12-17 16:00,2012-12-17 16:00,,2012-11-15 16:00,2012-11-15 16:00,2012-11-15 16:00,2012-11-15 16:00,2012-11-15 16:00,2012-11-15 16:00,,2012-12-17 16:00,2012-12-17 16:00,,PT_Normal,,,,,/h76+D1A/kyddgt5hREufg,,,,N,0,0,,,2012-04-26 15:19,2012-04-26 16:01,admin,admin
129,123531,3413,18728,841,0,0,N,N,N,CP_Drtn,TT_Mile,DT_FixedDrtn,RV_OK,TK_NotStart,PO 200,Louvers purchase order,,216,0,0,0,0,0,0,0,0,0,,,,2012-08-30 08:00,2012-08-30 08:00,,2012-07-24 08:00,2012-07-24 08:00,2012-07-24 08:00,2012-07-24 08:00,2012-07-24 08:00,2012-07-24 08:00,,2012-08-30 08:00,2012-08-30 08:00,,PT_Normal,,,,,kvqig+/AzEaZtBmunYFcew,,,,N,0,0,,,2012-04-26 15:28,2012-04-26 16:01,admin,admin
130,123532,3413,18735,841,1,0,N,N,N,CP_Drtn,TT_Task,DT_FixedDUR2,RV_OK,TK_NotStart,PET-Z1-CC-410,Base course under S.O.G,,192,0,128,0,0,0,128,0,0,0,,,,2012-09-05 08:00,2012-09-23 16:00,,2012-08-02 08:00,2012-08-26 16:00,2012-08-02 08:00,2012-08-26 16:00,2012-08-02 08:00,2012-08-26 16:00,,2012-09-05 08:00,2012-09-23 16:00,,PT_Normal,,,,,76PXGJEFW0GIAzL8ZLNPEA,1aqQtQxpIECKHGcH+c/ejw,,,N,0,0,,,2012-04-26 16:13,2012-04-26 16:24,admin,admin
131,123533,3413,18728,841,0,0,N,N,N,CP_Drtn,TT_Mile,DT_FixedDrtn,RV_OK,TK_NotStart,PO 100,Anchors purchase order,,128,0,0,0,0,0,0,0,0,0,,,,2012-06-26 08:00,2012-06-26 08:00,,2012-06-07 08:00,2012-06-07 08:00,2012-06-07 08:00,2012-06-07 08:00,2012-06-07 08:00,2012-06-07 08:00,,2012-06-26 08:00,2012-06-26 08:00,,PT_Normal,,,,,A1x76D9j0Uegc5tVDawmOw,,,,N,0,0,,,2012-04-26 16:40,2012-04-26 17:04,admin,admin
132,123534,3413,18729,841,1,0,N,N,N,CP_Drtn,TT_Task,DT_FixedDUR2,RV_OK,TK_NotStart,DD130,Anchors delivery on site,,128,120,8,0,0,0,8,0,0,0,,,,2012-06-26 08:00,2012-06-26 16:00,,2012-06-07 08:00,2012-06-07 16:00,2012-06-07 08:00,2012-06-07 16:00,2012-06-07 08:00,2012-06-07 16:00,,2012-06-26 08:00,2012-06-26 16:00,,PT_Normal,,,,,O0K1dXTfR06ydHDaHw+KUQ,,,,N,0,0,,,2012-04-26 16:42,2012-04-26 17:04,admin,admin
133,123535,3413,18734,841,1,0,N,N,N,CP_Drtn,TT_Task,DT_FixedDUR2,RV_OK,TK_NotStart,PET-Z2-AR-750,Dock leveler erection,,144,96,80,0,0,0,80,0,0,0,,,,2012-12-12 08:00,2012-12-23 16:00,,2012-11-21 08:00,2012-12-02 16:00,2012-11-21 08:00,2012-12-02 16:00,2012-11-21 08:00,2012-12-02 16:00,,2012-12-12 08:00,2012-12-23 16:00,,PT_Normal,,,,,FSflNaPjlEOK7TPCS2Sz2g,,,,N,0,0,,,2012-04-26 16:44,2012-04-26 17:04,admin,admin
134,123536,3413,18728,841,0,0,N,N,N,CP_Drtn,TT_Mile,DT_FixedDrtn,RV_OK,TK_NotStart,PO 140,Dock leveler purchase order,,144,0,0,0,0,0,0,0,0,0,,,,2012-07-10 08:00,2012-07-10 08:00,,2012-06-19 08:00,2012-06-19 08:00,2012-06-19 08:00,2012-06-19 08:00,2012-06-19 08:00,2012-06-19 08:00,,2012-07-10 08:00,2012-07-10 08:00,,PT_Normal,,,,,haaqTluYx0SnQWRyfAD3xw,,,,N,0,0,,,2012-04-26 16:45,2012-04-26 17:04,admin,admin
135,123537,3413,18729,841,0,0,N,N,N,CP_Drtn,TT_FinMile,DT_FixedDrtn,RV_OK,TK_NotStart,DD140,Dock leveler delivery on site,,144,0,0,0,0,0,0,0,0,0,,,,2012-12-11 16:00,2012-12-11 16:00,,2012-11-20 16:00,2012-11-20 16:00,2012-11-20 16:00,2012-11-20 16:00,2012-11-20 16:00,2012-11-20 16:00,,2012-12-11 16:00,2012-12-11 16:00,,PT_Normal,,,,,q8QflRvAXU6sx/iXd0OUJg,,,,N,0,0,,,2012-04-26 16:45,2012-04-26 17:04,admin,admin
136,123538,3413,18741,841,1,0,N,N,N,CP_Drtn,TT_Task,DT_FixedDUR2,RV_OK,TK_NotStart,SD 105,Dock leveler submittal,,144,0,8,0,0,0,8,0,0,0,,,,2012-07-26 08:00,2012-07-26 16:00,,2012-07-05 08:00,2012-07-05 16:00,2012-07-05 08:00,2012-07-05 16:00,2012-07-05 08:00,2012-07-05 16:00,,2012-07-26 08:00,2012-07-26 16:00,,PT_Normal,,,,,YEoDxI/upUOhOh+WlR0Hvg,,,,N,0,0,,,2012-04-26 16:46,2012-04-26 17:04,admin,admin
137,123539,3413,18742,841,1,0,N,N,N,CP_Drtn,TT_Task,DT_FixedDUR2,RV_OK,TK_NotStart,SD 220,Dock levelerApproval,,144,0,8,0,0,0,8,0,0,0,,,,2012-08-12 08:00,2012-08-12 16:00,,2012-07-22 08:00,2012-07-22 16:00,2012-07-22 08:00,2012-07-22 16:00,2012-07-22 08:00,2012-07-22 16:00,,2012-08-12 08:00,2012-08-12 16:00,,PT_Normal,,,,,74AmG8wj8UO9pFkvhIRpmg,,,,N,0,0,,,2012-04-26 16:46,2012-04-26 17:04,admin,admin
138,123542,3413,18735,841,1,0,N,N,N,CP_Drtn,TT_Task,DT_FixedDUR2,RV_OK,TK_NotStart,PET-Z2-CC-210,Dock leveler structure system,,392,248,112,0,0,0,112,0,0,0,,,,2012-11-26 08:00,2012-12-11 16:00,,2012-09-19 08:00,2012-10-04 16:00,2012-09-19 08:00,2012-10-04 16:00,2012-09-19 08:00,2012-10-04 16:00,,2012-11-26 08:00,2012-12-11 16:00,,PT_Normal,,,,,s3Y0GM5x1EyFYYjNBjeu0g,,,,N,0,0,,,2012-04-26 17:00,2012-04-26 17:04,admin,admin
