,task_id,proj_id,wbs_id,clndr_id,est_wt,phys_complete_pct,rev_fdbk_flag,lock_plan_flag,auto_compute_act_flag,complete_pct_type,task_type,duration_type,review_type,status_code,task_code,task_name,rsrc_id,total_float_hr_cnt,free_float_hr_cnt,remain_drtn_hr_cnt,act_work_qty,remain_work_qty,target_work_qty,target_drtn_hr_cnt,target_equip_qty,act_equip_qty,remain_equip_qty,cstr_date,act_start_date,act_end_date,late_start_date,late_end_date,expect_end_date,early_start_date,early_end_date,restart_date,reend_date,target_start_date,target_end_date,review_end_date,rem_late_start_date,rem_late_end_date,cstr_type,priority_type,suspend_date,resume_date,float_path,float_path_order,guid,tmpl_guid,cstr_date2,cstr_type2,driving_path_flag,act_this_per_work_qty,act_this_per_equip_qty,external_early_start_date,external_late_end_date,create_date,update_date,create_user,update_user,old_restart_date,old_reend_date,old_remain_drtn_hr_cnt
0,90494,793,11878,841,0,0,N,N,N,CP_Drtn,TT_Mile,DT_FixedDrtn,RV_OK,TK_NotStart,A1000,Start project,,0,0,0,0,0,0,0,0,0,0,,,,2010-07-01 08:00,2010-07-01 08:00,,2010-07-01 08:00,2010-07-01 08:00,2010-07-01 08:00,2010-07-01 08:00,2010-07-01 08:00,2010-07-01 08:00,,2010-07-01 08:00,2010-07-01 08:00,,PT_Normal,,,,,XpJJExDQokuN0wPtrcq36g,,,,Y,0,0,,,2010-08-28 10:04,2010-08-28 13:36,admin,admin,2010-07-01 08:00,2010-07-01 08:00,0
1,90495,793,11878,841,0,0,N,N,N,CP_Drtn,TT_FinMile,DT_FixedDrtn,RV_OK,TK_NotStart,A1010,Finish project,,0,0,0,0,0,0,0,0,0,0,,,,2010-10-07 16:00,2010-10-07 16:00,,2010-10-07 16:00,2010-10-07 16:00,2010-10-07 16:00,2010-10-07 16:00,2010-10-07 16:00,2010-10-07 16:00,,2010-10-07 16:00,2010-10-07 16:00,,PT_Normal,,,,,wDr5xkawYkWsENvs5KEHng,,,,Y,0,0,,,2010-08-28 10:04,2010-08-28 13:36,admin,admin,2010-10-07 16:00,2010-10-07 16:00,0
2,90496,793,11878,841,1,0,N,N,N,CP_Drtn,TT_Task,DT_FixedDUR2,RV_OK,TK_NotStart,A1020,Mobilization,,608,608,64,0,0,0,64,0,0,0,,,,2010-09-29 08:00,2010-10-07 16:00,,2010-07-01 08:00,2010-07-10 16:00,2010-07-01 08:00,2010-07-10 16:00,2010-07-01 08:00,2010-07-10 16:00,,2010-09-29 08:00,2010-10-07 16:00,,PT_Normal,,,,,jare7oAx2EyTNGryoKJ5tQ,,,,N,0,0,,,2010-08-28 10:04,2010-08-28 13:34,admin,admin,2010-07-01 08:00,2010-07-10 16:00,64
3,90497,793,11878,841,0,0,N,N,N,CP_Drtn,TT_Mile,DT_FixedDrtn,RV_OK,TK_NotStart,A1320,Receive issue for construction drawings,,7.98333333333333,8,0,0,0,0,0,0,0,0,,,,2010-07-01 15:59,2010-07-01 15:59,,2010-07-01 08:00,2010-07-01 08:00,2010-07-01 08:00,2010-07-01 08:00,2010-07-01 08:00,2010-07-01 08:00,,2010-07-01 15:59,2010-07-01 15:59,,PT_Normal,,,,,gIUFbvdJmUu3QOAOpxfKbw,,,,N,0,0,,,2010-08-28 10:04,2010-08-28 13:34,admin,admin,2010-07-01 08:00,2010-07-01 08:00,0
4,90498,793,11885,841,1,0,N,N,N,CP_Drtn,TT_Task,DT_FixedDUR2,RV_OK,TK_NotStart,A2060,Formworks for R.C raft,,0,0,16,0,80,80,16,0,0,0,,,,2010-07-21 08:00,2010-07-22 16:00,,2010-07-21 08:00,2010-07-22 16:00,2010-07-21 08:00,2010-07-22 16:00,2010-07-21 08:00,2010-07-22 16:00,,2010-07-21 08:00,2010-07-22 16:00,,PT_Normal,,,,,ENDoiNrxM0GUxOTA+VROEA,,,,Y,0,0,,,2010-08-28 10:04,2010-08-28 13:36,admin,admin,2010-07-21 08:00,2010-07-22 16:00,16
5,90499,793,11885,841,1,0,N,N,N,CP_Drtn,TT_Task,DT_FixedDUR2,RV_OK,TK_NotStart,A2070,Rebar for R.C raft,2117,0,0,24,0,120,120,24,0,0,0,,,,2010-07-24 08:00,2010-07-26 16:00,,2010-07-24 08:00,2010-07-26 16:00,2010-07-24 08:00,2010-07-26 16:00,2010-07-24 08:00,2010-07-26 16:00,,2010-07-24 08:00,2010-07-26 16:00,,PT_Normal,,,,,VXVraN27506Pdhebiox5GQ,,,,Y,0,0,,,2010-08-28 10:04,2010-08-28 13:36,admin,admin,2010-07-24 08:00,2010-07-26 16:00,24
6,90500,793,11885,841,1,0,N,N,N,CP_Drtn,TT_Task,DT_FixedDUR2,RV_OK,TK_NotStart,A2080,Pouring For R.C raft,,0,0,8,0,40,40,8,0,0,0,,,,2010-07-27 08:00,2010-07-27 16:00,,2010-07-27 08:00,2010-07-27 16:00,2010-07-27 08:00,2010-07-27 16:00,2010-07-27 08:00,2010-07-27 16:00,,2010-07-27 08:00,2010-07-27 16:00,,PT_Normal,,,,,crEzemkkhESBJHcdsLEhXQ,,,,Y,0,0,,,2010-08-28 10:04,2010-08-28 13:36,admin,admin,2010-07-27 08:00,2010-07-27 16:00,8
7,90501,793,11885,841,1,0,N,N,N,CP_Drtn,TT_Task,DT_FixedDUR2,RV_OK,TK_NotStart,A2090,Formwork For Tank walls,,0,0,64,0,240,240,64,0,0,0,,,,2010-07-28 08:00,2010-08-05 16:00,,2010-07-28 08:00,2010-08-05 16:00,2010-07-28 08:00,2010-08-05 16:00,2010-07-28 08:00,2010-08-05 16:00,,2010-07-28 08:00,2010-08-05 16:00,,PT_Normal,,,,,dW02tXC6ukilVUzw72581g,,,,Y,0,0,,,2010-08-28 10:04,2010-08-28 13:36,admin,admin,2010-07-28 08:00,2010-08-05 16:00,64
8,90502,793,11885,841,1,0,N,N,N,CP_Drtn,TT_Task,DT_FixedDUR2,RV_OK,TK_NotStart,A2100,Rebar For Tank walls,2117,0,0,48,0,120,120,48,0,0,0,,,,2010-08-07 08:00,2010-08-12 16:00,,2010-08-07 08:00,2010-08-12 16:00,2010-08-07 08:00,2010-08-12 16:00,2010-08-07 08:00,2010-08-12 16:00,,2010-08-07 08:00,2010-08-12 16:00,,PT_Normal,,,,,y2mQPOL6EUC5JCPK4ORe1g,,,,Y,0,0,,,2010-08-28 10:04,2010-08-28 13:36,admin,admin,2010-08-07 08:00,2010-08-12 16:00,48
9,90503,793,11885,841,1,0,N,N,N,CP_Drtn,TT_Task,DT_FixedDUR2,RV_OK,TK_NotStart,A2110,Pouring For Tank walls,,0,0,8,0,40,40,8,0,0,0,,,,2010-08-14 08:00,2010-08-14 16:00,,2010-08-14 08:00,2010-08-14 16:00,2010-08-14 08:00,2010-08-14 16:00,2010-08-14 08:00,2010-08-14 16:00,,2010-08-14 08:00,2010-08-14 16:00,,PT_Normal,,,,,vlwWIdHsR0Wt5+AUQ5Ft4Q,,,,Y,0,0,,,2010-08-28 10:04,2010-08-28 13:36,admin,admin,2010-08-14 08:00,2010-08-14 16:00,8
10,90504,793,11885,841,1,0,N,N,N,CP_Drtn,TT_Task,DT_FixedDUR2,RV_OK,TK_NotStart,A2120,Formwork For Tank Slab,,0,0,80,0,120,120,80,0,0,0,,,,2010-08-15 08:00,2010-08-25 16:00,,2010-08-15 08:00,2010-08-25 16:00,2010-08-15 08:00,2010-08-25 16:00,2010-08-15 08:00,2010-08-25 16:00,,2010-08-15 08:00,2010-08-25 16:00,,PT_Normal,,,,,EWJt+fChDEiaEFomyfPCqA,,,,Y,0,0,,,2010-08-28 10:04,2010-08-28 13:36,admin,admin,2010-08-15 08:00,2010-08-25 16:00,80
11,90505,793,11885,841,1,0,N,N,N,CP_Drtn,TT_Task,DT_FixedDUR2,RV_OK,TK_NotStart,A2130,Rebar For Tank Slab,2117,0,0,48,0,160,160,48,0,0,0,,,,2010-08-26 08:00,2010-09-01 16:00,,2010-08-26 08:00,2010-09-01 16:00,2010-08-26 08:00,2010-09-01 16:00,2010-08-26 08:00,2010-09-01 16:00,,2010-08-26 08:00,2010-09-01 16:00,,PT_Normal,,,,,MkPWQbnLI0STcrvYC/9e0w,,,,Y,0,0,,,2010-08-28 10:04,2010-08-28 13:36,admin,admin,2010-08-26 08:00,2010-09-01 16:00,48
12,90506,793,11885,841,1,0,N,N,N,CP_Drtn,TT_Task,DT_FixedDUR2,RV_OK,TK_NotStart,A2140,Pouring  For Tank slab,,0,0,8,0,40,40,8,0,0,0,,,,2010-09-02 08:00,2010-09-02 16:00,,2010-09-02 08:00,2010-09-02 16:00,2010-09-02 08:00,2010-09-02 16:00,2010-09-02 08:00,2010-09-02 16:00,,2010-09-02 08:00,2010-09-02 16:00,,PT_Normal,,,,,jLcz7IiQvkiugF1DKP6Zxg,,,,Y,0,0,,,2010-08-28 10:04,2010-08-28 13:36,admin,admin,2010-09-02 08:00,2010-09-02 16:00,8
13,90507,793,11885,841,1,0,N,N,N,CP_Drtn,TT_Task,DT_FixedDUR2,RV_OK,TK_NotStart,A2150,Internal insulation,,0,0,120,0,0,0,120,0,0,0,,,,2010-09-04 08:00,2010-09-21 16:00,,2010-09-04 08:00,2010-09-21 16:00,2010-09-04 08:00,2010-09-21 16:00,2010-09-04 08:00,2010-09-21 16:00,,2010-09-04 08:00,2010-09-21 16:00,,PT_Normal,,,,,z99TBcNbEUS8b6fx7LjcQg,,,,Y,0,0,,,2010-08-28 10:04,2010-08-28 13:36,admin,admin,2010-09-04 08:00,2010-09-21 16:00,120
14,90508,793,11885,841,1,0,N,N,N,CP_Drtn,TT_Task,DT_FixedDUR2,RV_OK,TK_NotStart,A2160,External insulation,,0,0,80,0,0,0,80,0,0,0,,,,2010-09-22 08:00,2010-10-03 16:00,,2010-09-22 08:00,2010-10-03 16:00,2010-09-22 08:00,2010-10-03 16:00,2010-09-22 08:00,2010-10-03 16:00,,2010-09-22 08:00,2010-10-03 16:00,,PT_Normal,,,,,zzhaafXnRE2+4XGp8zKh+w,,,,Y,0,0,,,2010-08-28 10:04,2010-08-28 13:36,admin,admin,2010-09-22 08:00,2010-10-03 16:00,80
15,90509,793,11885,841,0,0,N,N,N,CP_Drtn,TT_FinMile,DT_FixedDrtn,RV_OK,TK_NotStart,A2079,M&E conduits For R.C raft (by others),,7.98333333333333,7.98333333333333,0,0,0,0,0,0,0,0,,,,2010-07-25 16:00,2010-07-25 16:00,,2010-07-25 08:01,2010-07-25 08:01,2010-07-25 08:01,2010-07-25 08:01,2010-07-25 08:01,2010-07-25 08:01,,2010-07-25 16:00,2010-07-25 16:00,,PT_Normal,,,,,9hOfICYTHEihIc6BPgH5Eg,,,,N,0,0,,,2010-08-28 10:04,2010-08-28 13:34,admin,admin,2010-07-25 08:01,2010-07-25 08:01,0
16,90510,793,11885,841,0,0,N,N,N,CP_Drtn,TT_FinMile,DT_FixedDrtn,RV_OK,TK_NotStart,A2119,M&E conduits For tank's slab (by others),,7.98333333333333,7.98333333333333,0,0,0,0,0,0,0,0,,,,2010-08-31 16:00,2010-08-31 16:00,,2010-08-31 08:01,2010-08-31 08:01,2010-08-31 08:01,2010-08-31 08:01,2010-08-31 08:01,2010-08-31 08:01,,2010-08-31 16:00,2010-08-31 16:00,,PT_Normal,,,,,xCyMbXo+mUKd0YaLA8z9dg,,,,N,0,0,,,2010-08-28 10:04,2010-08-28 13:34,admin,admin,2010-08-31 08:01,2010-08-31 08:01,0
17,90511,793,11885,841,0,0,N,N,N,CP_Drtn,TT_FinMile,DT_FixedDrtn,RV_OK,TK_NotStart,A2109,M&E conduits For R.C walls (by others),,7.98333333333333,7.98333333333333,0,0,0,0,0,0,0,0,,,,2010-08-11 16:00,2010-08-11 16:00,,2010-08-11 08:01,2010-08-11 08:01,2010-08-11 08:01,2010-08-11 08:01,2010-08-11 08:01,2010-08-11 08:01,,2010-08-11 16:00,2010-08-11 16:00,,PT_Normal,,,,,gOj5YZEOnkOIiH0NHlAubg,,,,N,0,0,,,2010-08-28 10:04,2010-08-28 13:34,admin,admin,2010-08-11 08:01,2010-08-11 08:01,0
18,90512,793,11894,841,1,0,N,N,N,CP_Drtn,TT_Task,DT_FixedDUR2,RV_OK,TK_NotStart,A2380,Backfilling Around Foundation,,152,152,96,0,0,0,96,0,0,0,,,,2010-09-18 08:00,2010-09-30 16:00,,2010-08-25 08:00,2010-09-07 16:00,2010-08-25 08:00,2010-09-07 16:00,2010-08-25 08:00,2010-09-07 16:00,,2010-09-18 08:00,2010-09-30 16:00,,PT_Normal,,,,,CxyZ3IVt9EabUZPqsf64PQ,,,,N,0,0,,,2010-08-28 10:04,2010-08-28 13:34,admin,admin,2010-08-25 08:00,2010-09-07 16:00,96
19,90513,793,11895,841,1,0,N,N,N,CP_Drtn,TT_Task,DT_FixedDUR2,RV_OK,TK_NotStart,A2400,Handingover,,0,0,48,0,0,0,48,0,0,0,,,,2010-10-02 08:00,2010-10-07 16:00,,2010-10-02 08:00,2010-10-07 16:00,2010-10-02 08:00,2010-10-07 16:00,2010-10-02 08:00,2010-10-07 16:00,,2010-10-02 08:00,2010-10-07 16:00,,PT_Normal,,,,,SbsRA/L8nkemO3BHl7bpKw,,,,Y,0,0,,,2010-08-28 10:04,2010-08-28 13:36,admin,admin,2010-10-02 08:00,2010-10-07 16:00,48
20,90514,793,11892,841,1,0,N,N,N,CP_Drtn,TT_Task,DT_FixedDUR2,RV_OK,TK_NotStart,A2370,Backfilling Around Foundation,,144,144,88,0,0,0,88,0,0,0,,,,2010-09-23 08:00,2010-10-05 16:00,,2010-09-01 08:00,2010-09-14 16:00,2010-09-01 08:00,2010-09-14 16:00,2010-09-01 08:00,2010-09-14 16:00,,2010-09-23 08:00,2010-10-05 16:00,,PT_Normal,,,,,dTc6fGhT+E6JyIcRrU0v1A,,,,N,0,0,,,2010-08-28 10:04,2010-08-28 13:34,admin,admin,2010-09-01 08:00,2010-09-14 16:00,88
21,90515,793,11893,841,1,0,N,N,N,CP_Drtn,TT_Task,DT_FixedDUR2,RV_OK,TK_NotStart,A2390,Handingover,,0,0,16,0,0,0,16,0,0,0,,,,2010-10-06 08:00,2010-10-07 16:00,,2010-10-06 08:00,2010-10-07 16:00,2010-10-06 08:00,2010-10-07 16:00,2010-10-06 08:00,2010-10-07 16:00,,2010-10-06 08:00,2010-10-07 16:00,,PT_Normal,,,,,5ZRorqaX40m30D1+NELZQw,,,,Y,0,0,,,2010-08-28 10:04,2010-08-28 13:36,admin,admin,2010-10-06 08:00,2010-10-07 16:00,16
22,90516,793,11882,841,0,0,N,N,N,CP_Drtn,TT_FinMile,DT_FixedDrtn,RV_OK,TK_NotStart,A1260,submittals of all tank's shop drawings,,0,0,0,0,0,0,0,0,0,0,,,,2010-07-08 16:00,2010-07-08 16:00,,2010-07-08 16:00,2010-07-08 16:00,2010-07-08 16:00,2010-07-08 16:00,2010-07-08 16:00,2010-07-08 16:00,,2010-07-08 16:00,2010-07-08 16:00,,PT_Normal,,,,,PrNy+qgaDkuSM7voyuYDFA,,,,Y,0,0,,,2010-08-28 10:04,2010-08-28 13:36,admin,admin,2010-07-08 16:00,2010-07-08 16:00,0
23,90517,793,11882,841,0,0,N,N,N,CP_Drtn,TT_FinMile,DT_FixedDrtn,RV_OK,TK_NotStart,A2170,Approval of all tank's shop drawings,,0,0,0,0,0,0,0,0,0,0,,,,2010-07-12 16:00,2010-07-12 16:00,,2010-07-12 16:00,2010-07-12 16:00,2010-07-12 16:00,2010-07-12 16:00,2010-07-12 16:00,2010-07-12 16:00,,2010-07-12 16:00,2010-07-12 16:00,,PT_Normal,,,,,GEiE9DzWoE+ZcY5abTqX5w,,,,Y,0,0,,,2010-08-28 10:04,2010-08-28 13:36,admin,admin,2010-07-12 16:00,2010-07-12 16:00,0
24,90518,793,11887,841,0,0,N,N,N,CP_Drtn,TT_FinMile,DT_FixedDrtn,RV_OK,TK_NotStart,A1200,Submittal of All R.C raft dimension,,0,0,0,0,0,0,0,0,0,0,,,,2010-07-11 16:00,2010-07-11 16:00,,2010-07-11 16:00,2010-07-11 16:00,2010-07-11 16:00,2010-07-11 16:00,2010-07-11 16:00,2010-07-11 16:00,,2010-07-11 16:00,2010-07-11 16:00,,PT_Normal,,,,,F18MQwdWzEqHInqeqHu6zQ,TnE0Il9fMEmUAPp54M1FxQ,,,Y,0,0,,,2010-08-28 10:04,2010-08-28 13:36,admin,admin,2010-07-11 16:00,2010-07-11 16:00,0
25,90519,793,11887,841,0,0,N,N,N,CP_Drtn,TT_FinMile,DT_FixedDrtn,RV_OK,TK_NotStart,A1210,Submittal of All column layout,,24,0,0,0,0,0,0,0,0,0,,,,2010-07-14 16:00,2010-07-14 16:00,,2010-07-11 16:00,2010-07-11 16:00,2010-07-11 16:00,2010-07-11 16:00,2010-07-11 16:00,2010-07-11 16:00,,2010-07-14 16:00,2010-07-14 16:00,,PT_Normal,,,,,oVS7rdvDOU6H+6c3WoasXw,Gp+LX5Ae4kObTifd8mF+VA,,,N,0,0,,,2010-08-28 10:04,2010-08-28 13:34,admin,admin,2010-07-11 16:00,2010-07-11 16:00,0
26,90520,793,11887,841,0,0,N,N,N,CP_Drtn,TT_FinMile,DT_FixedDrtn,RV_OK,TK_NotStart,A1220,Submittal of All R.C raft RFT&starters,,504,0,0,0,0,0,0,0,0,0,,,,2010-10-04 16:00,2010-10-04 16:00,,2010-07-21 16:00,2010-07-21 16:00,2010-07-21 16:00,2010-07-21 16:00,2010-07-21 16:00,2010-07-21 16:00,,2010-10-04 16:00,2010-10-04 16:00,,PT_Normal,,,,,6QlunVhxWU6LnKeBpvakiw,xzvMiT8HoUauXhFY1S+PkA,,,N,0,0,,,2010-08-28 10:04,2010-08-28 13:34,admin,admin,2010-07-21 16:00,2010-07-21 16:00,0
27,90521,793,11887,841,0,0,N,N,N,CP_Drtn,TT_FinMile,DT_FixedDrtn,RV_OK,TK_NotStart,A1230,Submittal of All basement columns & walls RFT,,464,0,0,0,0,0,0,0,0,0,,,,2010-10-05 16:00,2010-10-05 16:00,,2010-07-28 16:00,2010-07-28 16:00,2010-07-28 16:00,2010-07-28 16:00,2010-07-28 16:00,2010-07-28 16:00,,2010-10-05 16:00,2010-10-05 16:00,,PT_Normal,,,,,Agr4a6le50GAiEs89xNokw,vizYnfHl90u2hozwrJxUGA,,,N,0,0,,,2010-08-28 10:04,2010-08-28 13:34,admin,admin,2010-07-28 16:00,2010-07-28 16:00,0
28,90522,793,11887,841,0,0,N,N,N,CP_Drtn,TT_FinMile,DT_FixedDrtn,RV_OK,TK_NotStart,A1240,Submittal of All basement slab concrete dimension,,72,0,0,0,0,0,0,0,0,0,,,,2010-08-15 16:00,2010-08-15 16:00,,2010-08-04 16:00,2010-08-04 16:00,2010-08-04 16:00,2010-08-04 16:00,2010-08-04 16:00,2010-08-04 16:00,,2010-08-15 16:00,2010-08-15 16:00,,PT_Normal,,,,,GHMTzFlpnEO9eNydgRWkwA,YjPP8Mnn70CflT1uK45yIg,,,N,0,0,,,2010-08-28 10:04,2010-08-28 13:34,admin,admin,2010-08-04 16:00,2010-08-04 16:00,0
29,90523,793,11887,841,0,0,N,N,N,CP_Drtn,TT_FinMile,DT_FixedDrtn,RV_OK,TK_NotStart,A1250,Submittal of All basement slab RFT,,48,0,0,0,0,0,0,0,0,0,,,,2010-08-22 16:00,2010-08-22 16:00,,2010-08-15 16:00,2010-08-15 16:00,2010-08-15 16:00,2010-08-15 16:00,2010-08-15 16:00,2010-08-15 16:00,,2010-08-22 16:00,2010-08-22 16:00,,PT_Normal,,,,,sE6PLZBVt0yAex6+4Kq+og,dOxninhx50WjRMbSb0UpMw,,,N,0,0,,,2010-08-28 10:04,2010-08-28 13:34,admin,admin,2010-08-15 16:00,2010-08-15 16:00,0
30,90524,793,11888,841,0,0,N,N,N,CP_Drtn,TT_FinMile,DT_FixedDrtn,RV_OK,TK_NotStart,A1201,Approval of All R.C raft dimension,,0,0,0,0,0,0,0,0,0,0,,,,2010-07-14 16:00,2010-07-14 16:00,,2010-07-14 16:00,2010-07-14 16:00,2010-07-14 16:00,2010-07-14 16:00,2010-07-14 16:00,2010-07-14 16:00,,2010-07-14 16:00,2010-07-14 16:00,,PT_Normal,,,,,6Q52hTxvX0ehjUILrToMoQ,TQUwoveBKEO+M4EHNTWADA,,,Y,0,0,,,2010-08-28 10:04,2010-08-28 13:36,admin,admin,2010-07-14 16:00,2010-07-14 16:00,0
31,90525,793,11888,841,0,0,N,N,N,CP_Drtn,TT_FinMile,DT_FixedDrtn,RV_OK,TK_NotStart,A1211,Approval of All column layout,,24,24,0,0,0,0,0,0,0,0,,,,2010-07-18 16:00,2010-07-18 16:00,,2010-07-14 16:00,2010-07-14 16:00,2010-07-14 16:00,2010-07-14 16:00,2010-07-14 16:00,2010-07-14 16:00,,2010-07-18 16:00,2010-07-18 16:00,,PT_Normal,,,,,NuCg6wq0WkeZMGKCILNOgA,ZHXePO0d70+Nlw1C97nwNQ,,,N,0,0,,,2010-08-28 10:04,2010-08-28 13:34,admin,admin,2010-07-14 16:00,2010-07-14 16:00,0
32,90526,793,11888,841,0,0,N,N,N,CP_Drtn,TT_FinMile,DT_FixedDrtn,RV_OK,TK_NotStart,A1221,Approval of All R.C raft RFT&starters,,504,504,0,0,0,0,0,0,0,0,,,,2010-10-07 16:00,2010-10-07 16:00,,2010-07-25 16:00,2010-07-25 16:00,2010-07-25 16:00,2010-07-25 16:00,2010-07-25 16:00,2010-07-25 16:00,,2010-10-07 16:00,2010-10-07 16:00,,PT_Normal,,,,,BZW9DFYsAk2NOJViXESUDA,hEK1OTMaS023lip5X1r4aw,,,N,0,0,,,2010-08-28 10:04,2010-08-28 13:34,admin,admin,2010-07-25 16:00,2010-07-25 16:00,0
33,90527,793,11888,841,0,0,N,N,N,CP_Drtn,TT_FinMile,DT_FixedDrtn,RV_OK,TK_NotStart,A1231,Approval of All basement columns & walls RFT,,464,464,0,0,0,0,0,0,0,0,,,,2010-10-07 16:00,2010-10-07 16:00,,2010-07-31 16:00,2010-07-31 16:00,2010-07-31 16:00,2010-07-31 16:00,2010-07-31 16:00,2010-07-31 16:00,,2010-10-07 16:00,2010-10-07 16:00,,PT_Normal,,,,,TeYLmTvZLkuEj5AUgVIvog,FncT+B/w9ku+6p55HRGrYg,,,N,0,0,,,2010-08-28 10:04,2010-08-28 13:34,admin,admin,2010-07-31 16:00,2010-07-31 16:00,0
34,90528,793,11888,841,0,0,N,N,N,CP_Drtn,TT_FinMile,DT_FixedDrtn,RV_OK,TK_NotStart,A1241,Approval of All basement slab concrete dimension,,72,72,0,0,0,0,0,0,0,0,,,,2010-08-18 16:00,2010-08-18 16:00,,2010-08-08 16:00,2010-08-08 16:00,2010-08-08 16:00,2010-08-08 16:00,2010-08-08 16:00,2010-08-08 16:00,,2010-08-18 16:00,2010-08-18 16:00,,PT_Normal,,,,,F7gjgc74vEiqtUlgRijCxQ,hfb3em5cr0aQv21tG6zahA,,,N,0,0,,,2010-08-28 10:04,2010-08-28 13:34,admin,admin,2010-08-08 16:00,2010-08-08 16:00,0
35,90529,793,11888,841,0,0,N,N,N,CP_Drtn,TT_FinMile,DT_FixedDrtn,RV_OK,TK_NotStart,A1251,Approval of All basement slab RFT,,48,48,0,0,0,0,0,0,0,0,,,,2010-08-25 16:00,2010-08-25 16:00,,2010-08-18 16:00,2010-08-18 16:00,2010-08-18 16:00,2010-08-18 16:00,2010-08-18 16:00,2010-08-18 16:00,,2010-08-25 16:00,2010-08-25 16:00,,PT_Normal,,,,,3JeZPGVVgUm6zSzRdrLRfg,UjuoEPoriEmi2KpzXdDJUQ,,,N,0,0,,,2010-08-28 10:04,2010-08-28 13:34,admin,admin,2010-08-18 16:00,2010-08-18 16:00,0
36,90530,793,11889,841,0,0,N,N,N,CP_Drtn,TT_FinMile,DT_FixedDrtn,RV_OK,TK_NotStart,A1140,Submittal of All R.C raft dimension,,0,0,0,0,0,0,0,0,0,0,,,,2010-07-01 16:00,2010-07-01 16:00,,2010-07-01 16:00,2010-07-01 16:00,2010-07-01 16:00,2010-07-01 16:00,2010-07-01 16:00,2010-07-01 16:00,,2010-07-01 16:00,2010-07-01 16:00,,PT_Normal,,,,,5T7SKwd7fkqez1Ne5RZR6Q,,,,Y,0,0,,,2010-08-28 10:04,2010-08-28 13:36,admin,admin,2010-07-01 16:00,2010-07-01 16:00,0
37,90531,793,11889,841,0,0,N,N,N,CP_Drtn,TT_FinMile,DT_FixedDrtn,RV_OK,TK_NotStart,A1150,Submittal of All column layout,,16,0,0,0,0,0,0,0,0,0,,,,2010-07-04 16:00,2010-07-04 16:00,,2010-07-01 16:00,2010-07-01 16:00,2010-07-01 16:00,2010-07-01 16:00,2010-07-01 16:00,2010-07-01 16:00,,2010-07-04 16:00,2010-07-04 16:00,,PT_Normal,,,,,pMK7xwjd4U+ejjnp0Laoyg,,,,N,0,0,,,2010-08-28 10:04,2010-08-28 13:34,admin,admin,2010-07-01 16:00,2010-07-01 16:00,0
38,90532,793,11889,841,0,0,N,N,N,CP_Drtn,TT_FinMile,DT_FixedDrtn,RV_OK,TK_NotStart,A1160,Submittal of All R.C raft RFT&starters,,576,0,0,0,0,0,0,0,0,0,,,,2010-10-04 16:00,2010-10-04 16:00,,2010-07-11 16:00,2010-07-11 16:00,2010-07-11 16:00,2010-07-11 16:00,2010-07-11 16:00,2010-07-11 16:00,,2010-10-04 16:00,2010-10-04 16:00,,PT_Normal,,,,,kJlLfZDJZE2565Dc+3jVHw,,,,N,0,0,,,2010-08-28 10:04,2010-08-28 13:34,admin,admin,2010-07-11 16:00,2010-07-11 16:00,0
39,90533,793,11889,841,0,0,N,N,N,CP_Drtn,TT_FinMile,DT_FixedDrtn,RV_OK,TK_NotStart,A1170,Submittal of All basement columns & walls RFT,,8,0,0,0,0,0,0,0,0,0,,,,2010-07-22 16:00,2010-07-22 16:00,,2010-07-21 16:00,2010-07-21 16:00,2010-07-21 16:00,2010-07-21 16:00,2010-07-21 16:00,2010-07-21 16:00,,2010-07-22 16:00,2010-07-22 16:00,,PT_Normal,,,,,c0ds5nsBWUavdiIDoqlJIw,,,,N,0,0,,,2010-08-28 10:04,2010-08-28 13:34,admin,admin,2010-07-21 16:00,2010-07-21 16:00,0
40,90534,793,11889,841,0,0,N,N,N,CP_Drtn,TT_FinMile,DT_FixedDrtn,RV_OK,TK_NotStart,A1180,Submittal of All basement slab concrete dimension,,32,0,0,0,0,0,0,0,0,0,,,,2010-08-02 16:00,2010-08-02 16:00,,2010-07-28 16:00,2010-07-28 16:00,2010-07-28 16:00,2010-07-28 16:00,2010-07-28 16:00,2010-07-28 16:00,,2010-08-02 16:00,2010-08-02 16:00,,PT_Normal,,,,,vCWPdbb2aUaGRHHpug/yjQ,,,,N,0,0,,,2010-08-28 10:04,2010-08-28 13:34,admin,admin,2010-07-28 16:00,2010-07-28 16:00,0
41,90535,793,11889,841,0,0,N,N,N,CP_Drtn,TT_FinMile,DT_FixedDrtn,RV_OK,TK_NotStart,A1190,Submittal of All basement slab RFT,,32,0,0,0,0,0,0,0,0,0,,,,2010-08-09 16:00,2010-08-09 16:00,,2010-08-04 16:00,2010-08-04 16:00,2010-08-04 16:00,2010-08-04 16:00,2010-08-04 16:00,2010-08-04 16:00,,2010-08-09 16:00,2010-08-09 16:00,,PT_Normal,,,,,+yc3sWIZHUCc0rNUxryu1w,,,,N,0,0,,,2010-08-28 10:04,2010-08-28 13:34,admin,admin,2010-08-04 16:00,2010-08-04 16:00,0
42,90536,793,11891,841,0,0,N,N,N,CP_Drtn,TT_FinMile,DT_FixedDrtn,RV_OK,TK_NotStart,A1141,Approval of All R.C raft dimension,,0,0,0,0,0,0,0,0,0,0,,,,2010-07-05 16:00,2010-07-05 16:00,,2010-07-05 16:00,2010-07-05 16:00,2010-07-05 16:00,2010-07-05 16:00,2010-07-05 16:00,2010-07-05 16:00,,2010-07-05 16:00,2010-07-05 16:00,,PT_Normal,,,,,zcBc5mhSOEGCFur7Ni0htw,,,,Y,0,0,,,2010-08-28 10:04,2010-08-28 13:36,admin,admin,2010-07-05 16:00,2010-07-05 16:00,0
43,90537,793,11891,841,0,0,N,N,N,CP_Drtn,TT_FinMile,DT_FixedDrtn,RV_OK,TK_NotStart,A1151,Approval of All column layout,,16,16,0,0,0,0,0,0,0,0,,,,2010-07-07 16:00,2010-07-07 16:00,,2010-07-05 16:00,2010-07-05 16:00,2010-07-05 16:00,2010-07-05 16:00,2010-07-05 16:00,2010-07-05 16:00,,2010-07-07 16:00,2010-07-07 16:00,,PT_Normal,,,,,1LRbm5ruRkasUuGE5Vqd0g,,,,N,0,0,,,2010-08-28 10:04,2010-08-28 13:34,admin,admin,2010-07-05 16:00,2010-07-05 16:00,0
44,90538,793,11891,841,0,0,N,N,N,CP_Drtn,TT_FinMile,DT_FixedDrtn,RV_OK,TK_NotStart,A1161,Approval of All R.C raft RFT&starters,,576,576,0,0,0,0,0,0,0,0,,,,2010-10-07 16:00,2010-10-07 16:00,,2010-07-14 16:00,2010-07-14 16:00,2010-07-14 16:00,2010-07-14 16:00,2010-07-14 16:00,2010-07-14 16:00,,2010-10-07 16:00,2010-10-07 16:00,,PT_Normal,,,,,Y5CGvyOk10+NnvmrURx7Mg,,,,N,0,0,,,2010-08-28 10:04,2010-08-28 13:34,admin,admin,2010-07-14 16:00,2010-07-14 16:00,0
45,90539,793,11891,841,0,0,N,N,N,CP_Drtn,TT_FinMile,DT_FixedDrtn,RV_OK,TK_NotStart,A1171,Approval of All basement columns & walls RFT,,8,8,0,0,0,0,0,0,0,0,,,,2010-07-26 16:00,2010-07-26 16:00,,2010-07-25 16:00,2010-07-25 16:00,2010-07-25 16:00,2010-07-25 16:00,2010-07-25 16:00,2010-07-25 16:00,,2010-07-26 16:00,2010-07-26 16:00,,PT_Normal,,,,,0jq0jzmHOUOUNEOXRbp/eg,,,,N,0,0,,,2010-08-28 10:04,2010-08-28 13:34,admin,admin,2010-07-25 16:00,2010-07-25 16:00,0
46,90540,793,11891,841,0,0,N,N,N,CP_Drtn,TT_FinMile,DT_FixedDrtn,RV_OK,TK_NotStart,A1181,Approval of All basement slab concrete dimension,,32,32,0,0,0,0,0,0,0,0,,,,2010-08-05 16:00,2010-08-05 16:00,,2010-08-01 16:00,2010-08-01 16:00,2010-08-01 16:00,2010-08-01 16:00,2010-08-01 16:00,2010-08-01 16:00,,2010-08-05 16:00,2010-08-05 16:00,,PT_Normal,,,,,3fj18hUR006+jRxNDZG7sw,,,,N,0,0,,,2010-08-28 10:04,2010-08-28 13:34,admin,admin,2010-08-01 16:00,2010-08-01 16:00,0
47,90541,793,11891,841,0,0,N,N,N,CP_Drtn,TT_FinMile,DT_FixedDrtn,RV_OK,TK_NotStart,A1191,Approval of All basement slab RFT,,32,32,0,0,0,0,0,0,0,0,,,,2010-08-12 16:00,2010-08-12 16:00,,2010-08-08 16:00,2010-08-08 16:00,2010-08-08 16:00,2010-08-08 16:00,2010-08-08 16:00,2010-08-08 16:00,,2010-08-12 16:00,2010-08-12 16:00,,PT_Normal,,,,,27HtnVanuECnFidtu9qD3g,,,,N,0,0,,,2010-08-28 10:04,2010-08-28 13:34,admin,admin,2010-08-08 16:00,2010-08-08 16:00,0
48,90542,793,11896,841,1,0,N,N,N,CP_Drtn,TT_Task,DT_FixedDUR2,RV_OK,TK_NotStart,A2410,Formwork For R.C raft,2118,0,0,208,0,480,480,208,0,0,0,,,,2010-07-06 08:00,2010-08-04 16:00,,2010-07-06 08:00,2010-08-04 16:00,2010-07-06 08:00,2010-08-04 16:00,2010-07-06 08:00,2010-08-04 16:00,,2010-07-06 08:00,2010-08-04 16:00,,PT_Normal,,,,,Um+ghubRQEOhe0j6pnL3uA,qetCTp0rSLK91WD/Lb1Mkw,,,Y,0,0,,,2010-08-28 10:04,2010-08-28 13:42,admin,admin,2010-07-06 08:00,2010-08-04 16:00,208
49,90543,793,11896,841,1,0,N,N,N,CP_Drtn,TT_Task,DT_FixedDUR2,RV_OK,TK_NotStart,A2420,Rebar For R.C raft,2117,0,0,192,0,3488,3488,192,0,0,0,,,,2010-07-08 08:00,2010-08-04 16:00,,2010-07-08 08:00,2010-08-04 16:00,2010-07-08 08:00,2010-08-04 16:00,2010-07-08 08:00,2010-08-04 16:00,,2010-07-08 08:00,2010-08-04 16:00,,PT_Normal,,,,,a+yQr4i2DEe+d+zp0hwgMA,7roFrbcxSn+PJu9WogPbfw,,,Y,0,0,,,2010-08-28 10:04,2010-08-28 13:36,admin,admin,2010-07-08 08:00,2010-08-04 16:00,192
50,90544,793,11896,841,1,0,N,N,N,CP_Drtn,TT_Task,DT_FixedDrtn,RV_OK,TK_NotStart,A2440,Pouring For R.C raft (area 3),2120,0,0,8,0,56,56,8,0,0,0,,,,2010-08-05 08:00,2010-08-05 16:00,,2010-08-05 08:00,2010-08-05 16:00,2010-08-05 08:00,2010-08-05 16:00,2010-08-05 08:00,2010-08-05 16:00,,2010-08-05 08:00,2010-08-05 16:00,,PT_Normal,,,,,BN+pY4l45EqmJTSZZvQPGw,Aym3WQk5Qqq4wzZge+5qdw,,,Y,0,0,,,2010-08-28 10:04,2010-08-28 13:36,admin,admin,2010-08-05 08:00,2010-08-05 16:00,8
51,90545,793,11897,841,1,0,N,N,N,CP_Drtn,TT_Task,DT_FixedDUR2,RV_OK,TK_NotStart,A2450,Formwork For basement walls & col.,2118,0,0,184,0,2400,2400,184,0,0,0,,,,2010-07-25 08:00,2010-08-19 16:00,,2010-07-25 08:00,2010-08-19 16:00,2010-07-25 08:00,2010-08-19 16:00,2010-07-25 08:00,2010-08-19 16:00,,2010-07-25 08:00,2010-08-19 16:00,,PT_Normal,,,,,12SfR4A30EmFZQT2nrwGnQ,agErBgSIQ0mDuyTjNKs1Cg,,,Y,0,0,,,2010-08-28 10:04,2010-08-28 13:36,admin,admin,2010-07-25 08:00,2010-08-19 16:00,184
52,90546,793,11897,841,1,0,N,N,N,CP_Drtn,TT_Task,DT_FixedDUR2,RV_OK,TK_NotStart,A2460,Rebar For  basement walls & col.,2117,0,0,160,0,2400,2400,160,0,0,0,,,,2010-07-27 08:00,2010-08-18 16:00,,2010-07-27 08:00,2010-08-18 16:00,2010-07-27 08:00,2010-08-18 16:00,2010-07-27 08:00,2010-08-18 16:00,,2010-07-27 08:00,2010-08-18 16:00,,PT_Normal,,,,,79f9TeHsjk+pXx5z2WcDYQ,FMB0pPDZRGK2HCmuOFVr6Q,,,Y,0,0,,,2010-08-28 10:04,2010-08-28 13:36,admin,admin,2010-07-27 08:00,2010-08-18 16:00,160
53,90547,793,11897,841,1,0,N,N,N,CP_Drtn,TT_Task,DT_FixedDUR2,RV_OK,TK_NotStart,A2470,Pouring For  basement walls & col.,2120,0,0,144,0,160,160,144,0,0,0,,,,2010-08-01 08:00,2010-08-21 16:00,,2010-08-01 08:00,2010-08-21 16:00,2010-08-01 08:00,2010-08-21 16:00,2010-08-01 08:00,2010-08-21 16:00,,2010-08-01 08:00,2010-08-21 16:00,,PT_Normal,,,,,iLY8e9rLt028NBCY7auekw,H5DvIcyiQCKJmfiChJtriA,,,Y,0,0,,,2010-08-28 10:04,2010-08-28 13:36,admin,admin,2010-08-01 08:00,2010-08-21 16:00,144
54,90548,793,11898,841,1,0,N,N,N,CP_Drtn,TT_Task,DT_FixedDUR2,RV_OK,TK_NotStart,A2480,Formwork For basement Slab & stairs,2118,0,0,352,0,4800,4800,352,0,0,0,,,,2010-08-07 08:00,2010-09-27 16:00,,2010-08-07 08:00,2010-09-27 16:00,2010-08-07 08:00,2010-09-27 16:00,2010-08-07 08:00,2010-09-27 16:00,,2010-08-07 08:00,2010-09-27 16:00,,PT_Normal,,,,,LUMBzfggE0G/tiFMv4zm2A,SGi0tMn6TwOjOFX8ETZGlw,,,Y,0,0,,,2010-08-28 10:04,2010-08-28 13:36,admin,admin,2010-08-07 08:00,2010-09-27 16:00,352
55,90549,793,11898,841,1,0,N,N,N,CP_Drtn,TT_Task,DT_FixedDUR2,RV_OK,TK_NotStart,A2490,Rebar For basement Slab & stairs,2117,0,0,320,0,1800,1800,320,0,0,0,,,,2010-08-14 08:00,2010-09-29 16:00,,2010-08-14 08:00,2010-09-29 16:00,2010-08-14 08:00,2010-09-29 16:00,2010-08-14 08:00,2010-09-29 16:00,,2010-08-14 08:00,2010-09-29 16:00,,PT_Normal,,,,,qTQXJDe4FUCtjew/5qirFg,2BiKow7mRmCTREMPcbfiMA,,,Y,0,0,,,2010-08-28 10:04,2010-08-28 13:36,admin,admin,2010-08-14 08:00,2010-09-29 16:00,320
56,90550,793,11898,841,0,0,N,N,N,CP_Drtn,TT_FinMile,DT_FixedDrtn,RV_OK,TK_NotStart,A2500,M&E conduits For basement Slab & stairs (by others) Area 1,,0,0,0,0,0,0,0,0,0,0,,,,2010-09-27 16:00,2010-09-27 16:00,,2010-09-27 16:00,2010-09-27 16:00,2010-09-27 16:00,2010-09-27 16:00,2010-09-27 16:00,2010-09-27 16:00,,2010-09-27 16:00,2010-09-27 16:00,,PT_Normal,,,,,CVQxafsCqEG0n0XP6MZTTQ,mnIyvvLuQe6HoBlEJr35Eg,,,Y,0,0,,,2010-08-28 10:04,2010-08-28 13:36,admin,admin,2010-09-27 16:00,2010-09-27 16:00,0
57,90551,793,11898,841,1,0,N,N,N,CP_Drtn,TT_Task,DT_FixedDrtn,RV_OK,TK_NotStart,A2510,Pouring For basement Slab & stairs ( Area 1),2120,0,0,8,0,32,32,8,0,0,0,,,,2010-09-30 08:00,2010-09-30 16:00,,2010-09-30 08:00,2010-09-30 16:00,2010-09-30 08:00,2010-09-30 16:00,2010-09-30 08:00,2010-09-30 16:00,,2010-09-30 08:00,2010-09-30 16:00,,PT_Normal,,,,,vJXjw2TrJkeoaHj4TpIvrw,8T+BuoQKRwi+waGA8qGWNA,,,Y,0,0,,,2010-08-28 10:04,2010-08-28 13:36,admin,admin,2010-09-30 08:00,2010-09-30 16:00,8
58,90552,793,11899,841,1,0,N,N,N,CP_Drtn,TT_Task,DT_FixedDUR2,RV_OK,TK_NotStart,A2530,Isolation For Foundation bituminous emulsion,2121,176,32,160,0,1280,1280,160,0,0,0,,,,2010-08-30 08:00,2010-09-22 16:00,,2010-08-04 08:00,2010-08-26 16:00,2010-08-04 08:00,2010-08-26 16:00,2010-08-04 08:00,2010-08-26 16:00,,2010-08-30 08:00,2010-09-22 16:00,,PT_Normal,,,,,4ZSznLSvCUmCQqZws/UF+A,Fdq21RC3TAq3tmvlK3EKkQ,,,N,0,0,,,2010-08-28 10:04,2010-08-28 13:34,admin,admin,2010-08-04 08:00,2010-08-26 16:00,160
59,90553,793,11899,841,1,0,N,N,N,CP_Drtn,TT_Task,DT_FixedDUR2,RV_OK,TK_NotStart,A2520,Water proofing bituminous membrane,2121,144,0,160,0,400,400,160,0,0,0,,,,2010-08-26 08:00,2010-09-19 16:00,,2010-08-05 08:00,2010-08-28 16:00,2010-08-05 08:00,2010-08-28 16:00,2010-08-05 08:00,2010-08-28 16:00,,2010-08-26 08:00,2010-09-19 16:00,,PT_Normal,,,,,138/FD/4TE2g+it9jNaUHw,tB3UCDmjRoCtOZ30R+Au0Q,,,N,0,0,,,2010-08-28 10:04,2010-08-28 13:34,admin,admin,2010-08-05 08:00,2010-08-28 16:00,160
60,90554,793,11899,841,1,0,N,N,N,CP_Drtn,TT_Task,DT_FixedDUR2,RV_OK,TK_NotStart,A2540,Water proofing protection layer cartonal,2121,144,0,128,0,1360,1360,128,0,0,0,,,,2010-09-04 08:00,2010-09-22 16:00,,2010-08-14 08:00,2010-08-31 16:00,2010-08-14 08:00,2010-08-31 16:00,2010-08-14 08:00,2010-08-31 16:00,,2010-09-04 08:00,2010-09-22 16:00,,PT_Normal,,,,,Y9rBFinBaU+DxJ9Qn24iLw,e2NKrus5SRKeIVnzyrWvQg,,,N,0,0,,,2010-08-28 10:04,2010-08-28 13:34,admin,admin,2010-08-14 08:00,2010-08-31 16:00,128
61,90555,793,11900,841,1,0,N,N,N,CP_Drtn,TT_Task,DT_FixedDUR2,RV_OK,TK_NotStart,A2550,Formwork For R.C raft,2118,0,0,160,0,480,480,160,0,0,0,,,,2010-07-17 08:00,2010-08-08 16:00,,2010-07-17 08:00,2010-08-08 16:00,2010-07-17 08:00,2010-08-08 16:00,2010-07-17 08:00,2010-08-08 16:00,,2010-07-17 08:00,2010-08-08 16:00,,PT_Normal,,,,,i9+ZkNC9zUSSC3Q0FxAMQA,+j54bVqFOUCb4a5lf5IKjw,,,Y,0,0,,,2010-08-28 10:04,2010-08-28 13:36,admin,admin,2010-07-17 08:00,2010-08-08 16:00,160
62,90556,793,11900,841,1,0,N,N,N,CP_Drtn,TT_Task,DT_FixedDUR2,RV_OK,TK_NotStart,A2560,Rebar For R.C raft,2117,0,0,160,0,3488,3488,160,0,0,0,,,,2010-07-19 08:00,2010-08-10 16:00,,2010-07-19 08:00,2010-08-10 16:00,2010-07-19 08:00,2010-08-10 16:00,2010-07-19 08:00,2010-08-10 16:00,,2010-07-19 08:00,2010-08-10 16:00,,PT_Normal,,,,,PvqhBwwwyk6ENhVzyPx2FA,gdIv9b4mNkGwZ9lY6yhesA,,,Y,0,0,,,2010-08-28 10:04,2010-08-28 13:36,admin,admin,2010-07-19 08:00,2010-08-10 16:00,160
63,90557,793,11900,841,0,0,N,N,N,CP_Drtn,TT_FinMile,DT_FixedDrtn,RV_OK,TK_NotStart,A2570,M&E conduits For R.C raft (by others) Area 1,,0,0,0,0,0,0,0,0,0,0,,,,2010-07-24 16:00,2010-07-24 16:00,,2010-07-24 16:00,2010-07-24 16:00,2010-07-24 16:00,2010-07-24 16:00,2010-07-24 16:00,2010-07-24 16:00,,2010-07-24 16:00,2010-07-24 16:00,,PT_Normal,,,,,QE4mXAx1jUaQCNG8SuUASg,dJEexCTzpUO3LWtffZvT3Q,,,Y,0,0,,,2010-08-28 10:04,2010-08-28 13:36,admin,admin,2010-07-24 16:00,2010-07-24 16:00,0
64,90558,793,11900,841,1,0,N,N,N,CP_Drtn,TT_Task,DT_FixedDrtn,RV_OK,TK_NotStart,A2580,Pouring For R.C raft (Area 1),2120,0,0,8,0,56,56,8,0,0,0,,,,2010-07-27 08:00,2010-07-27 16:00,,2010-07-27 08:00,2010-07-27 16:00,2010-07-27 08:00,2010-07-27 16:00,2010-07-27 08:00,2010-07-27 16:00,,2010-07-27 08:00,2010-07-27 16:00,,PT_Normal,,,,,1uiXoXOiL02snowK1wstTw,WXepSmm2YE+E16Q6FY/1ag,,,Y,0,0,,,2010-08-28 10:04,2010-08-28 13:36,admin,admin,2010-07-27 08:00,2010-07-27 16:00,8
65,90559,793,11901,841,1,0,N,N,N,CP_Drtn,TT_Task,DT_FixedDUR2,RV_OK,TK_NotStart,A2590,Formwork For basement walls & col.,2118,0,0,120,0,2400,2400,120,0,0,0,,,,2010-07-31 08:00,2010-08-16 16:00,,2010-07-31 08:00,2010-08-16 16:00,2010-07-31 08:00,2010-08-16 16:00,2010-07-31 08:00,2010-08-16 16:00,,2010-07-31 08:00,2010-08-16 16:00,,PT_Normal,,,,,gm1IGloXLEumZTBJ8riixA,WIYPqZzqhUO+wFyG4mOkUg,,,Y,0,0,,,2010-08-28 10:04,2010-08-28 13:36,admin,admin,2010-07-31 08:00,2010-08-16 16:00,120
66,90560,793,11901,841,1,0,N,N,N,CP_Drtn,TT_Task,DT_FixedDUR2,RV_OK,TK_NotStart,A2600,Rebar For  basement walls & col.,2117,0,0,96,0,2400,2400,96,0,0,0,,,,2010-08-02 08:00,2010-08-15 16:00,,2010-08-02 08:00,2010-08-15 16:00,2010-08-02 08:00,2010-08-15 16:00,2010-08-02 08:00,2010-08-15 16:00,,2010-08-02 08:00,2010-08-15 16:00,,PT_Normal,,,,,0+/COXgMYEGz9CF+aLjBxQ,Nbmx82SYpU2phnPHWoAfZw,,,Y,0,0,,,2010-08-28 10:04,2010-08-28 13:36,admin,admin,2010-08-02 08:00,2010-08-15 16:00,96
67,90561,793,11901,841,1,0,N,N,N,CP_Drtn,TT_Task,DT_FixedDUR2,RV_OK,TK_NotStart,A2610,Pouring For  basement walls & col.,2120,0,0,48,0,160,160,48,0,0,0,,,,2010-08-11 08:00,2010-08-17 16:00,,2010-08-11 08:00,2010-08-17 16:00,2010-08-11 08:00,2010-08-17 16:00,2010-08-11 08:00,2010-08-17 16:00,,2010-08-11 08:00,2010-08-17 16:00,,PT_Normal,,,,,q3XeP0ZMUEGTFapBp331MQ,cS/Fb1LxqEOhkWxJKV7edg,,,Y,0,0,,,2010-08-28 10:04,2010-08-28 13:36,admin,admin,2010-08-11 08:00,2010-08-17 16:00,48
68,90562,793,11902,841,1,0,N,N,N,CP_Drtn,TT_Task,DT_FixedDUR2,RV_OK,TK_NotStart,A2620,Formwork For basement Slab & stairs,2118,0,0,184,0,4800,4800,184,0,0,0,,,,2010-08-19 08:00,2010-09-15 16:00,,2010-08-19 08:00,2010-09-15 16:00,2010-08-19 08:00,2010-09-15 16:00,2010-08-19 08:00,2010-09-15 16:00,,2010-08-19 08:00,2010-09-15 16:00,,PT_Normal,,,,,mKi6oW/PzkKeSGlxpYZ5Gg,I1nLGWlQdkORAJpdeumUUQ,,,Y,0,0,,,2010-08-28 10:04,2010-08-28 13:36,admin,admin,2010-08-19 08:00,2010-09-15 16:00,184
69,90563,793,11902,841,1,0,N,N,N,CP_Drtn,TT_Task,DT_FixedDUR2,RV_OK,TK_NotStart,A2630,Rebar For basement Slab & stairs,2117,0,0,176,0,1800,1800,176,0,0,0,,,,2010-08-26 08:00,2010-09-21 16:00,,2010-08-26 08:00,2010-09-21 16:00,2010-08-26 08:00,2010-09-21 16:00,2010-08-26 08:00,2010-09-21 16:00,,2010-08-26 08:00,2010-09-21 16:00,,PT_Normal,,,,,MFhTKhbEN0+QJnu3zBJ46Q,areLa3+6aUOw66Dpb8LeAQ,,,Y,0,0,,,2010-08-28 10:04,2010-08-28 13:36,admin,admin,2010-08-26 08:00,2010-09-21 16:00,176
70,90564,793,11902,841,0,0,N,N,N,CP_Drtn,TT_FinMile,DT_FixedDrtn,RV_OK,TK_NotStart,A2640,M&E conduits For basement Slab & stairs (by others) Area 1,,152,0,0,0,0,0,0,0,0,0,,,,2010-09-20 16:00,2010-09-20 16:00,,2010-08-28 16:00,2010-08-28 16:00,2010-08-28 16:00,2010-08-28 16:00,2010-08-28 16:00,2010-08-28 16:00,,2010-09-20 16:00,2010-09-20 16:00,,PT_Normal,,,,,LVI0VdLbkkmvm7c/d7/akA,MqkP0s+94EG5EcIe62mFZg,,,N,0,0,,,2010-08-28 10:04,2010-08-28 13:36,admin,admin,2010-08-28 16:00,2010-08-28 16:00,0
71,90565,793,11902,841,1,0,N,N,N,CP_Drtn,TT_Task,DT_FixedDrtn,RV_OK,TK_NotStart,A2650,Pouring For basement Slab & stairs (Area 1),2120,152,152,8,0,32,32,8,0,0,0,,,,2010-09-22 08:00,2010-09-22 16:00,,2010-08-30 08:00,2010-08-30 16:00,2010-08-30 08:00,2010-08-30 16:00,2010-08-30 08:00,2010-08-30 16:00,,2010-09-22 08:00,2010-09-22 16:00,,PT_Normal,,,,,EPgENiIF4kujJrXWp+D0ZA,aJKz1v2Byk+8OiZMa2GMYw,,,N,0,0,,,2010-08-28 10:04,2010-08-28 13:34,admin,admin,2010-08-30 08:00,2010-08-30 16:00,8
72,90566,793,11903,841,1,0,N,N,N,CP_Drtn,TT_Task,DT_FixedDUR2,RV_OK,TK_NotStart,A2660,Isolation For Foundation bituminous emulsion,2121,152,0,48,0,1280,1280,48,0,0,0,,,,2010-09-04 08:00,2010-09-11 16:00,,2010-08-12 08:00,2010-08-18 16:00,2010-08-12 08:00,2010-08-18 16:00,2010-08-12 08:00,2010-08-18 16:00,,2010-09-04 08:00,2010-09-11 16:00,,PT_Normal,,,,,5ITG4YF/IEqkJpZEMw0Zww,DzVR0fDmR0ylpLSyL05ZfQ,,,N,0,0,,,2010-08-28 10:04,2010-08-28 13:34,admin,admin,2010-08-12 08:00,2010-08-18 16:00,48
73,90567,793,11903,841,1,0,N,N,N,CP_Drtn,TT_Task,DT_FixedDUR2,RV_OK,TK_NotStart,A2670,Water proofing bituminous membrane,2121,328,328,48,0,400,400,48,0,0,0,,,,2010-10-02 08:00,2010-10-07 16:00,,2010-08-14 08:00,2010-08-19 16:00,2010-08-14 08:00,2010-08-19 16:00,2010-08-14 08:00,2010-08-19 16:00,,2010-10-02 08:00,2010-10-07 16:00,,PT_Normal,,,,,3ss2mJa4PkKQmhMWZ7NFbQ,IY78leh5hkuzkucwdyhBxw,,,N,0,0,,,2010-08-28 10:04,2010-08-28 13:34,admin,admin,2010-08-14 08:00,2010-08-19 16:00,48
74,90568,793,11903,841,1,0,N,N,N,CP_Drtn,TT_Task,DT_FixedDUR2,RV_OK,TK_NotStart,A2680,Water proofing protection layer cartonal,2121,152,0,48,0,1360,1360,48,0,0,0,,,,2010-09-11 08:00,2010-09-16 16:00,,2010-08-18 08:00,2010-08-24 16:00,2010-08-18 08:00,2010-08-24 16:00,2010-08-18 08:00,2010-08-24 16:00,,2010-09-11 08:00,2010-09-16 16:00,,PT_Normal,,,,,ifO9eIj2UEK8rgSDTZHheQ,4nBYl5jF30eLB7hFVwtV3g,,,N,0,0,,,2010-08-28 10:04,2010-08-28 13:34,admin,admin,2010-08-18 08:00,2010-08-24 16:00,48
75,90569,793,11896,841,0,0,N,N,N,CP_Drtn,TT_FinMile,DT_FixedDrtn,RV_OK,TK_NotStart,A2690,M&E conduits For R.C raft (by others) area 2,,0,0,0,0,0,0,0,0,0,0,,,,2010-07-22 16:00,2010-07-22 16:00,,2010-07-22 16:00,2010-07-22 16:00,2010-07-22 16:00,2010-07-22 16:00,2010-07-22 16:00,2010-07-22 16:00,,2010-07-22 16:00,2010-07-22 16:00,,PT_Normal,,,,,Os+XPZ1DN0C8aUqaoDQ2PA,dJEexCTzpUO3LWtffZvT3Q,,,Y,0,0,,,2010-08-28 10:04,2010-08-28 13:36,admin,admin,2010-07-22 16:00,2010-07-22 16:00,0
76,90570,793,11896,841,0,0,N,N,N,CP_Drtn,TT_FinMile,DT_FixedDrtn,RV_OK,TK_NotStart,A2700,M&E conduits For R.C raft (by others) area 1,,24,0,0,0,0,0,0,0,0,0,,,,2010-07-22 16:00,2010-07-22 16:00,,2010-07-19 16:00,2010-07-19 16:00,2010-07-19 16:00,2010-07-19 16:00,2010-07-19 16:00,2010-07-19 16:00,,2010-07-22 16:00,2010-07-22 16:00,,PT_Normal,,,,,xGy1/+MwCUSfVRnRc4fVGA,dJEexCTzpUO3LWtffZvT3Q,,,N,0,0,,,2010-08-28 10:04,2010-08-28 13:34,admin,admin,2010-07-19 16:00,2010-07-19 16:00,0
77,90571,793,11896,841,0,0,N,N,N,CP_Drtn,TT_FinMile,DT_FixedDrtn,RV_OK,TK_NotStart,A2710,M&E conduits For R.C raft (by others) area 3,,0,0,0,0,0,0,0,0,0,0,,,,2010-08-04 16:00,2010-08-04 16:00,,2010-08-04 16:00,2010-08-04 16:00,2010-08-04 16:00,2010-08-04 16:00,2010-08-04 16:00,2010-08-04 16:00,,2010-08-04 16:00,2010-08-04 16:00,,PT_Normal,,,,,jeV0QAKA1U674WGIwkzCvw,dJEexCTzpUO3LWtffZvT3Q,,,Y,0,0,,,2010-08-28 10:04,2010-08-28 13:36,admin,admin,2010-08-04 16:00,2010-08-04 16:00,0
78,90572,793,11900,841,0,0,N,N,N,CP_Drtn,TT_FinMile,DT_FixedDrtn,RV_OK,TK_NotStart,A2720,M&E conduits For R.C raft (by others) Area 2,,432,0,0,0,0,0,0,0,0,0,,,,2010-10-04 16:00,2010-10-04 16:00,,2010-08-01 16:00,2010-08-01 16:00,2010-08-01 16:00,2010-08-01 16:00,2010-08-01 16:00,2010-08-01 16:00,,2010-10-04 16:00,2010-10-04 16:00,,PT_Normal,,,,,tnkIp0PaVkaekjSRLs7c3Q,H3gnbNM6Tkal8XrJWUp4oA,,,N,0,0,,,2010-08-28 10:04,2010-08-28 13:34,admin,admin,2010-08-01 16:00,2010-08-01 16:00,0
79,90573,793,11900,841,0,0,N,N,N,CP_Drtn,TT_FinMile,DT_FixedDrtn,RV_OK,TK_NotStart,A2730,M&E conduits For R.C raft (by others) Area 3,,384,0,0,0,0,0,0,0,0,0,,,,2010-10-05 16:00,2010-10-05 16:00,,2010-08-09 16:00,2010-08-09 16:00,2010-08-09 16:00,2010-08-09 16:00,2010-08-09 16:00,2010-08-09 16:00,,2010-10-05 16:00,2010-10-05 16:00,,PT_Normal,,,,,Jwvxyeiyik68uBrh2RHQdA,H3gnbNM6Tkal8XrJWUp4oA,,,N,0,0,,,2010-08-28 10:04,2010-08-28 13:34,admin,admin,2010-08-09 16:00,2010-08-09 16:00,0
80,90574,793,11902,841,0,0,N,N,N,CP_Drtn,TT_FinMile,DT_FixedDrtn,RV_OK,TK_NotStart,A2740,M&E conduits For basement Slab & stairs (by others) Area 2,,128,0,0,0,0,0,0,0,0,0,,,,2010-09-28 16:00,2010-09-28 16:00,,2010-09-08 16:00,2010-09-08 16:00,2010-09-08 16:00,2010-09-08 16:00,2010-09-08 16:00,2010-09-08 16:00,,2010-09-28 16:00,2010-09-28 16:00,,PT_Normal,,,,,Dhaqkk2+g0+qlxFS12cH2A,DhyXM3lCaUa3LgrBNS4d9Q,,,N,0,0,,,2010-08-28 10:04,2010-08-28 13:34,admin,admin,2010-09-12 16:00,2010-09-12 16:00,0
81,90575,793,11902,841,0,0,N,N,N,CP_Drtn,TT_FinMile,DT_FixedDrtn,RV_OK,TK_NotStart,A2750,M&E conduits For basement Slab & stairs (by others) Area 3,,0,0,0,0,0,0,0,0,0,0,,,,2010-09-20 16:00,2010-09-20 16:00,,2010-09-20 16:00,2010-09-20 16:00,2010-09-20 16:00,2010-09-20 16:00,2010-09-20 16:00,2010-09-20 16:00,,2010-09-20 16:00,2010-09-20 16:00,,PT_Normal,,,,,ngOVMIJZPEeq03sv+sDABg,DhyXM3lCaUa3LgrBNS4d9Q,,,Y,0,0,,,2010-08-28 10:04,2010-08-28 13:36,admin,admin,2010-09-20 16:00,2010-09-20 16:00,0
82,90576,793,11898,841,0,0,N,N,N,CP_Drtn,TT_FinMile,DT_FixedDrtn,RV_OK,TK_NotStart,A2760,M&E conduits For basement Slab & stairs (by others) Area 2,,280,0,0,0,0,0,0,0,0,0,,,,2010-10-02 16:00,2010-10-02 16:00,,2010-08-21 16:00,2010-08-21 16:00,2010-08-21 16:00,2010-08-21 16:00,2010-08-21 16:00,2010-08-21 16:00,,2010-10-02 16:00,2010-10-02 16:00,,PT_Normal,,,,,L8zf4RT+00uEpBkCQ5KE8A,MqkP0s+94EG5EcIe62mFZg,,,N,0,0,,,2010-08-28 10:04,2010-08-28 13:34,admin,admin,2010-08-21 16:00,2010-08-21 16:00,0
83,90577,793,11898,841,0,0,N,N,N,CP_Drtn,TT_FinMile,DT_FixedDrtn,RV_OK,TK_NotStart,A2770,M&E conduits For basement Slab & stairs (by others) Area 3,,312,0,0,0,0,0,0,0,0,0,,,,2010-10-03 16:00,2010-10-03 16:00,,2010-08-17 16:00,2010-08-17 16:00,2010-08-17 16:00,2010-08-17 16:00,2010-08-17 16:00,2010-08-17 16:00,,2010-10-03 16:00,2010-10-03 16:00,,PT_Normal,,,,,89usMWxwMUu8aVEpsDk7zA,MqkP0s+94EG5EcIe62mFZg,,,N,0,0,,,2010-08-28 10:04,2010-08-28 13:34,admin,admin,2010-08-17 16:00,2010-08-17 16:00,0
84,90578,793,11896,841,1,0,N,N,N,CP_Drtn,TT_Task,DT_FixedDrtn,RV_OK,TK_NotStart,A2780,Pouring For R.C raft (area 1),2120,24,24,8,0,168,168,8,0,0,0,,,,2010-07-24 08:00,2010-07-24 16:00,,2010-07-20 08:00,2010-07-20 16:00,2010-07-20 08:00,2010-07-20 16:00,2010-07-20 08:00,2010-07-20 16:00,,2010-07-24 08:00,2010-07-24 16:00,,PT_Normal,,,,,5/i6zZhUQ0yIOvUBqt271A,BN+pY4l45EqmJTSZZvQPGw,,,N,0,0,,,2010-08-28 10:14,2010-08-28 13:34,admin,admin,2010-07-20 08:00,2010-07-20 16:00,8
85,90579,793,11896,841,1,0,N,N,N,CP_Drtn,TT_Task,DT_FixedDrtn,RV_OK,TK_NotStart,A2790,Pouring For R.C raft (area 2),2120,0,0,8,0,56,56,8,0,0,0,,,,2010-07-24 08:00,2010-07-24 16:00,,2010-07-24 08:00,2010-07-24 16:00,2010-07-24 08:00,2010-07-24 16:00,2010-07-24 08:00,2010-07-24 16:00,,2010-07-24 08:00,2010-07-24 16:00,,PT_Normal,,,,,oTwjdtOGO0mZX9miaagUdg,BN+pY4l45EqmJTSZZvQPGw,,,Y,0,0,,,2010-08-28 10:15,2010-08-28 13:36,admin,admin,2010-07-24 08:00,2010-07-24 16:00,8
86,90581,793,11898,841,1,0,N,N,N,CP_Drtn,TT_Task,DT_FixedDrtn,RV_OK,TK_NotStart,A2800,Pouring For basement Slab & stairs (Area 3),2120,312,312,8,0,32,32,8,0,0,0,,,,2010-10-05 08:00,2010-10-05 16:00,,2010-08-19 08:00,2010-08-19 16:00,2010-08-19 08:00,2010-08-19 16:00,2010-08-19 08:00,2010-08-19 16:00,,2010-10-05 08:00,2010-10-05 16:00,,PT_Normal,,,,,LD89X2yxTkuawQFRKQCwzA,vJXjw2TrJkeoaHj4TpIvrw,,,N,0,0,,,2010-08-28 10:31,2010-08-28 13:34,admin,admin,2010-08-19 08:00,2010-08-19 16:00,8
87,90582,793,11898,841,1,0,N,N,N,CP_Drtn,TT_Task,DT_FixedDrtn,RV_OK,TK_NotStart,A2810,Pouring For basement Slab & stairs (Area 2),2120,280,280,8,0,96,96,8,0,0,0,,,,2010-10-05 08:00,2010-10-05 16:00,,2010-08-24 08:00,2010-08-24 16:00,2010-08-24 08:00,2010-08-24 16:00,2010-08-24 08:00,2010-08-24 16:00,,2010-10-05 08:00,2010-10-05 16:00,,PT_Normal,,,,,fTAInHG/o06AH1LrO7FYFA,vJXjw2TrJkeoaHj4TpIvrw,,,N,0,0,,,2010-08-28 10:31,2010-08-28 13:34,admin,admin,2010-08-24 08:00,2010-08-24 16:00,8
88,90583,793,11900,841,1,0,N,N,N,CP_Drtn,TT_Task,DT_FixedDrtn,RV_OK,TK_NotStart,A2820,Pouring For R.C raft (Area 2),2120,432,432,8,0,168,168,8,0,0,0,,,,2010-10-07 08:00,2010-10-07 16:00,,2010-08-04 08:00,2010-08-04 16:00,2010-08-04 08:00,2010-08-04 16:00,2010-08-04 08:00,2010-08-04 16:00,,2010-10-07 08:00,2010-10-07 16:00,,PT_Normal,,,,,jjbdQOO8EE+BYch5cKvscw,1uiXoXOiL02snowK1wstTw,,,N,0,0,,,2010-08-28 10:53,2010-08-28 13:34,admin,admin,2010-08-04 08:00,2010-08-04 16:00,8
89,90584,793,11900,841,1,0,N,N,N,CP_Drtn,TT_Task,DT_FixedDrtn,RV_OK,TK_NotStart,A2830,Pouring For R.C raft (Area 3),2120,384,384,8,0,56,56,8,0,0,0,,,,2010-10-07 08:00,2010-10-07 16:00,,2010-08-11 08:00,2010-08-11 16:00,2010-08-11 08:00,2010-08-11 16:00,2010-08-11 08:00,2010-08-11 16:00,,2010-10-07 08:00,2010-10-07 16:00,,PT_Normal,,,,,GlHtor5W/0yFtjSIjy8dMg,1uiXoXOiL02snowK1wstTw,,,N,0,0,,,2010-08-28 10:53,2010-08-28 13:34,admin,admin,2010-08-11 08:00,2010-08-11 16:00,8
90,90585,793,11902,841,1,0,N,N,N,CP_Drtn,TT_Task,DT_FixedDrtn,RV_OK,TK_NotStart,A2840,Pouring For basement Slab & stairs (Area 2),2120,128,128,8,0,96,96,8,0,0,0,,,,2010-09-30 08:00,2010-09-30 16:00,,2010-09-12 08:00,2010-09-12 16:00,2010-09-12 08:00,2010-09-12 16:00,2010-09-12 08:00,2010-09-12 16:00,,2010-09-30 08:00,2010-09-30 16:00,,PT_Normal,,,,,RmfoYDP6x0u0Zvipv12M0w,EPgENiIF4kujJrXWp+D0ZA,,,N,0,0,,,2010-08-28 11:10,2010-08-28 13:34,admin,admin,2010-09-14 08:00,2010-09-14 16:00,8
91,90586,793,11902,841,1,0,N,N,N,CP_Drtn,TT_Task,DT_FixedDrtn,RV_OK,TK_NotStart,A2850,Pouring For basement Slab & stairs (Area3),2120,0,0,8,0,32,32,8,0,0,0,,,,2010-09-22 08:00,2010-09-22 16:00,,2010-09-22 08:00,2010-09-22 16:00,2010-09-22 08:00,2010-09-22 16:00,2010-09-22 08:00,2010-09-22 16:00,,2010-09-22 08:00,2010-09-22 16:00,,PT_Normal,,,,,O8mYEGpJN0yv5Ka6Q2dWNQ,EPgENiIF4kujJrXWp+D0ZA,,,Y,0,0,,,2010-08-28 11:10,2010-08-28 13:36,admin,admin,2010-09-22 08:00,2010-09-22 16:00,8
92,90587,793,11885,841,1,0,N,N,N,CP_Drtn,TT_Task,DT_FixedDUR2,RV_OK,TK_NotStart,A2180,Testing & Handingover,,0,0,32,0,0,0,32,0,0,0,,,,2010-10-04 08:00,2010-10-07 16:00,,2010-10-04 08:00,2010-10-07 16:00,2010-10-04 08:00,2010-10-07 16:00,2010-10-04 08:00,2010-10-07 16:00,,2010-10-04 08:00,2010-10-07 16:00,,PT_Normal,,,,,SymQcnw6tkK1zcSe+tNdsQ,,,,Y,0,0,,,2010-08-28 12:25,2010-08-28 13:36,admin,admin,2010-10-04 08:00,2010-10-07 16:00,32
