,task_id,proj_id,wbs_id,clndr_id,est_wt,phys_complete_pct,rev_fdbk_flag,lock_plan_flag,auto_compute_act_flag,complete_pct_type,task_type,duration_type,review_type,status_code,task_code,task_name,rsrc_id,total_float_hr_cnt,free_float_hr_cnt,remain_drtn_hr_cnt,act_work_qty,remain_work_qty,target_work_qty,target_drtn_hr_cnt,target_equip_qty,act_equip_qty,remain_equip_qty,cstr_date,act_start_date,act_end_date,late_start_date,late_end_date,expect_end_date,early_start_date,early_end_date,restart_date,reend_date,target_start_date,target_end_date,review_end_date,rem_late_start_date,rem_late_end_date,cstr_type,priority_type,suspend_date,resume_date,float_path,float_path_order,guid,tmpl_guid,cstr_date2,cstr_type2,driving_path_flag,act_this_per_work_qty,act_this_per_equip_qty,external_early_start_date,external_late_end_date,create_date,update_date,create_user,update_user,old_restart_date,old_reend_date,old_remain_drtn_hr_cnt
0,87770,799,11136,866,0,0,N,N,N,CP_Drtn,TT_Mile,DT_FixedDrtn,RV_OK,TK_NotStart,A1020,Receive issue for construction,,0,0,0,0,0,0,0,0,0,0,,,,2010-06-20 08:00,2010-06-20 08:00,,2010-06-20 08:00,2010-06-20 08:00,2010-06-20 08:00,2010-06-20 08:00,2010-06-20 08:00,2010-06-20 08:00,,2010-06-20 08:00,2010-06-20 08:00,,PT_Normal,,,,,H0fCF6vuS5GjUe1uyeSYcg,,,,Y,0,0,,,2010-08-08 17:50,2010-08-10 10:29,admin,admin,2010-06-20 08:00,2010-06-20 08:00,0
1,87771,799,11138,866,1,0,N,N,N,CP_Drtn,TT_Task,DT_FixedDUR2,RV_OK,TK_NotStart,A1050,Form work for columns,,8,0,48,0,0,0,48,0,0,0,,,,2010-06-28 08:00,2010-07-04 16:00,,2010-06-27 08:00,2010-07-03 16:00,2010-06-27 08:00,2010-07-03 16:00,2010-06-27 08:00,2010-07-03 16:00,,2010-06-28 08:00,2010-07-04 16:00,,PT_Normal,,,,,B97JLgmERFud25wEyCBkpw,,,,N,0,0,,,2010-08-08 17:50,2010-08-10 10:08,admin,admin,2010-06-27 08:00,2010-07-03 16:00,48
2,87772,799,11138,866,1,0,N,N,N,CP_Drtn,TT_Task,DT_FixedDUR2,RV_OK,TK_NotStart,A1060,Rebar for columns,,8,0,24,0,0,0,24,0,0,0,,,,2010-06-30 08:00,2010-07-03 16:00,,2010-06-29 08:00,2010-07-01 16:00,2010-06-29 08:00,2010-07-01 16:00,2010-06-29 08:00,2010-07-01 16:00,,2010-06-30 08:00,2010-07-03 16:00,,PT_Normal,,,,,lnAI3aKKSeOIbj8Srku6GQ,,,,N,0,0,,,2010-08-08 17:50,2010-08-10 10:08,admin,admin,2010-06-29 08:00,2010-07-01 16:00,24
3,87773,799,11138,866,1,0,N,N,N,CP_Drtn,TT_Task,DT_FixedDUR2,RV_OK,TK_NotStart,A1070,Pouring for columns,,8,8,8,0,0,0,8,0,0,0,,,,2010-07-06 08:00,2010-07-06 16:00,,2010-07-05 08:00,2010-07-05 16:00,2010-07-05 08:00,2010-07-05 16:00,2010-07-05 08:00,2010-07-05 16:00,,2010-07-06 08:00,2010-07-06 16:00,,PT_Normal,,,,,K6wMcoLfT+yO4rM85Skl1w,,,,N,0,0,,,2010-08-08 17:50,2010-08-10 10:08,admin,admin,2010-07-05 08:00,2010-07-05 16:00,8
4,87774,799,11138,866,1,0,N,N,N,CP_Drtn,TT_Task,DT_FixedDUR2,RV_OK,TK_NotStart,A1080,Form work for retaining walls,,0,0,56,0,0,0,56,0,0,0,,,,2010-07-14 08:00,2010-07-21 16:00,,2010-07-14 08:00,2010-07-21 16:00,2010-07-14 08:00,2010-07-21 16:00,2010-07-14 08:00,2010-07-21 16:00,,2010-07-14 08:00,2010-07-21 16:00,,PT_Normal,,,,,O8DvmAHsRWGSPQD9HzZTMg,,,,Y,0,0,,,2010-08-08 17:50,2010-08-10 10:29,admin,admin,2010-07-14 08:00,2010-07-21 16:00,56
5,87775,799,11138,866,1,0,N,N,N,CP_Drtn,TT_Task,DT_FixedDUR2,RV_OK,TK_NotStart,A1090,Rebar for retaining walls,,0,0,48,0,0,0,48,0,0,0,,,,2010-07-07 08:00,2010-07-13 16:00,,2010-07-07 08:00,2010-07-13 16:00,2010-07-07 08:00,2010-07-13 16:00,2010-07-07 08:00,2010-07-13 16:00,,2010-07-07 08:00,2010-07-13 16:00,,PT_Normal,,,,,2bKfir3jS/2qHecL768iXQ,,,,Y,0,0,,,2010-08-08 17:50,2010-08-10 10:29,admin,admin,2010-07-07 08:00,2010-07-13 16:00,48
6,87776,799,11138,866,1,0,N,N,N,CP_Drtn,TT_Task,DT_FixedDUR2,RV_OK,TK_NotStart,A1100,Pouring for retaining walls,,0,0,8,0,0,0,8,0,0,0,,,,2010-07-22 08:00,2010-07-22 16:00,,2010-07-22 08:00,2010-07-22 16:00,2010-07-22 08:00,2010-07-22 16:00,2010-07-22 08:00,2010-07-22 16:00,,2010-07-22 08:00,2010-07-22 16:00,,PT_Normal,,,,,E7z9FQYDQw2v9c0+FPZekA,,,,Y,0,0,,,2010-08-08 17:50,2010-08-10 10:29,admin,admin,2010-07-22 08:00,2010-07-22 16:00,8
7,87777,799,11138,866,1,0,N,N,N,CP_Drtn,TT_Task,DT_FixedDUR2,RV_OK,TK_NotStart,A1110,Form work for slab,,0,0,48,0,0,0,48,0,0,0,,,,2010-07-25 08:00,2010-07-31 16:00,,2010-07-25 08:00,2010-07-31 16:00,2010-07-25 08:00,2010-07-31 16:00,2010-07-25 08:00,2010-07-31 16:00,,2010-07-25 08:00,2010-07-31 16:00,,PT_Normal,,,,,5a07p5bRRtObX6iKHpbLng,,,,Y,0,0,,,2010-08-08 17:50,2010-08-10 10:29,admin,admin,2010-07-25 08:00,2010-07-31 16:00,48
8,87778,799,11138,866,1,0,N,N,N,CP_Drtn,TT_Task,DT_FixedDUR2,RV_OK,TK_NotStart,A1120,Rebar for slab,,0,0,48,0,0,0,48,0,0,0,,,,2010-08-01 08:00,2010-08-07 16:00,,2010-08-01 08:00,2010-08-07 16:00,2010-08-01 08:00,2010-08-07 16:00,2010-08-01 08:00,2010-08-07 16:00,,2010-08-01 08:00,2010-08-07 16:00,,PT_Normal,,,,,ETDqxO6sS7ilWivTfutIQA,,,,Y,0,0,,,2010-08-08 17:50,2010-08-10 10:29,admin,admin,2010-08-01 08:00,2010-08-07 16:00,48
9,87779,799,11138,866,1,0,N,N,N,CP_Drtn,TT_Task,DT_FixedDUR2,RV_OK,TK_NotStart,A1130,pouring for slab,,0,0,8,0,0,0,8,0,0,0,,,,2010-08-08 08:00,2010-08-08 16:00,,2010-08-08 08:00,2010-08-08 16:00,2010-08-08 08:00,2010-08-08 16:00,2010-08-08 08:00,2010-08-08 16:00,,2010-08-08 08:00,2010-08-08 16:00,,PT_Normal,,,,,+Qx4TjeYSSa72DW0iAM45g,,,,Y,0,0,,,2010-08-08 17:50,2010-08-10 10:29,admin,admin,2010-08-08 08:00,2010-08-08 16:00,8
10,87780,799,11138,866,1,0,N,N,N,CP_Drtn,TT_Task,DT_FixedDrtn,RV_OK,TK_NotStart,A1129,E&M works for slab,,16,16,16,0,0,0,16,0,0,0,,,,2010-08-05 08:00,2010-08-07 16:00,,2010-08-03 08:00,2010-08-04 16:00,2010-08-03 08:00,2010-08-04 16:00,2010-08-03 08:00,2010-08-04 16:00,,2010-08-05 08:00,2010-08-07 16:00,,PT_Normal,,,,,l+DpuhmlRmeUKFifmo5gRQ,,,,N,0,0,,,2010-08-08 17:50,2010-08-10 10:08,admin,admin,2010-08-03 08:00,2010-08-04 16:00,16
11,87784,799,11139,866,1,0,N,N,N,CP_Drtn,TT_Task,DT_FixedDUR2,RV_OK,TK_NotStart,A1191,Form work for retaining walls,,0,0,40,0,0,0,40,0,0,0,,,,2010-08-14 08:00,2010-08-18 16:00,,2010-08-14 08:00,2010-08-18 16:00,2010-08-14 08:00,2010-08-18 16:00,2010-08-14 08:00,2010-08-18 16:00,,2010-08-14 08:00,2010-08-18 16:00,,PT_Normal,,,,,R1bbHsdKRLq9kwpxoE+6IQ,vRXyPmc7gUOcbYUsvzhRbA,,,Y,0,0,,,2010-08-08 17:50,2010-08-10 10:29,admin,admin,2010-08-14 08:00,2010-08-18 16:00,40
12,87785,799,11139,866,1,0,N,N,N,CP_Drtn,TT_Task,DT_FixedDUR2,RV_OK,TK_NotStart,A1190,Rebar for retaining walls,,0,0,32,0,0,0,32,0,0,0,,,,2010-08-11 08:00,2010-08-15 16:00,,2010-08-11 08:00,2010-08-15 16:00,2010-08-11 08:00,2010-08-15 16:00,2010-08-11 08:00,2010-08-15 16:00,,2010-08-11 08:00,2010-08-15 16:00,,PT_Normal,,,,,yWpXSLj1QnqMvd2h5VbEPA,xAMwC1jJkUCj99FuY9RzzQ,,,Y,0,0,,,2010-08-08 17:50,2010-08-10 10:29,admin,admin,2010-08-11 08:00,2010-08-15 16:00,32
13,87786,799,11139,866,1,0,N,N,N,CP_Drtn,TT_Task,DT_FixedDUR2,RV_OK,TK_NotStart,A1210,Pouring for retaining walls,,0,0,8,0,0,0,8,0,0,0,,,,2010-08-19 08:00,2010-08-19 16:00,,2010-08-19 08:00,2010-08-19 16:00,2010-08-19 08:00,2010-08-19 16:00,2010-08-19 08:00,2010-08-19 16:00,,2010-08-19 08:00,2010-08-19 16:00,,PT_Normal,,,,,JxKEkNIlTqWuzOArCo4WTw,giX3GUgtd0qofwiMjSI2wg,,,Y,0,0,,,2010-08-08 17:50,2010-08-10 10:29,admin,admin,2010-08-19 08:00,2010-08-19 16:00,8
14,87791,799,11140,866,1,0,N,N,N,CP_Drtn,TT_Task,DT_FixedDUR2,RV_OK,TK_NotStart,A1030,pouring for R.C raft,,0,0,32,0,0,0,32,0,0,0,,,,2010-06-20 08:00,2010-06-23 16:00,,2010-06-20 08:00,2010-06-23 16:00,2010-06-20 08:00,2010-06-23 16:00,2010-06-20 08:00,2010-06-23 16:00,,2010-06-20 08:00,2010-06-23 16:00,,PT_Normal,,,,,FC7+eSmtRaGiFBjsHfzDaQ,,,,Y,0,0,,,2010-08-08 17:50,2010-08-10 10:29,admin,admin,2010-06-20 08:00,2010-06-23 16:00,32
15,87792,799,11140,866,1,0,N,N,N,CP_Drtn,TT_Task,DT_FixedDUR2,RV_OK,TK_NotStart,A1040,Piles surface preparation,,0,0,32,0,0,0,32,0,0,0,,,,2010-06-24 08:00,2010-06-28 16:00,,2010-06-24 08:00,2010-06-28 16:00,2010-06-24 08:00,2010-06-28 16:00,2010-06-24 08:00,2010-06-28 16:00,,2010-06-24 08:00,2010-06-28 16:00,,PT_Normal,,,,,VYjTOnfXQRi39LOxhPCTxg,,,,Y,0,0,,,2010-08-08 17:50,2010-08-10 10:29,admin,admin,2010-06-24 08:00,2010-06-28 16:00,32
16,87793,799,11140,866,1,0,N,N,N,CP_Drtn,TT_Task,DT_FixedDUR2,RV_OK,TK_NotStart,A1150,removing the pile's steel bracing,,0,0,40,0,0,0,40,0,0,0,,,,2010-08-23 08:00,2010-08-28 16:00,,2010-08-23 08:00,2010-08-28 16:00,2010-08-23 08:00,2010-08-28 16:00,2010-08-23 08:00,2010-08-28 16:00,,2010-08-23 08:00,2010-08-28 16:00,,PT_Normal,,,,,GHGz6TqzSySvmA1w3c9STw,,,,Y,0,0,,,2010-08-08 17:50,2010-08-10 10:29,admin,admin,2010-08-23 08:00,2010-08-28 16:00,40
17,87794,799,11140,866,1,0,N,N,N,CP_Drtn,TT_Task,DT_FixedDUR2,RV_OK,TK_NotStart,A1041,PVC Insulation,,0,0,56,0,0,0,56,0,0,0,,,,2010-06-29 08:00,2010-07-06 16:00,,2010-06-29 08:00,2010-07-06 16:00,2010-06-29 08:00,2010-07-06 16:00,2010-06-29 08:00,2010-07-06 16:00,,2010-06-29 08:00,2010-07-06 16:00,,PT_Normal,,,,,e+okF3dmQfqA9kAuagD0HA,,,,Y,0,0,,,2010-08-08 17:50,2010-08-10 10:29,admin,admin,2010-06-29 08:00,2010-07-06 16:00,56
18,87795,799,11141,866,1,0,N,N,N,CP_Drtn,TT_Task,DT_FixedDUR2,RV_OK,TK_NotStart,A1260,Form work for slabs & columns,,0,0,96,0,0,0,96,0,0,0,,,,2010-09-20 08:00,2010-10-03 16:00,,2010-09-20 08:00,2010-10-03 16:00,2010-09-20 08:00,2010-10-03 16:00,2010-09-20 08:00,2010-10-03 16:00,,2010-09-20 08:00,2010-10-03 16:00,,PT_Normal,,,,,l3GdTHhQRVCmiOtVoD8dLg,to9NxUVcf0qj+j9dyR6EgQ,,,Y,0,0,,,2010-08-08 17:50,2010-08-10 10:29,admin,admin,2010-09-20 08:00,2010-10-03 16:00,96
19,87796,799,11141,866,1,0,N,N,N,CP_Drtn,TT_Task,DT_FixedDUR2,RV_OK,TK_NotStart,A1270,Rebar for columns,,0,0,32,0,0,0,32,0,0,0,,,,2010-09-20 08:00,2010-09-23 16:00,,2010-09-20 08:00,2010-09-23 16:00,2010-09-20 08:00,2010-09-23 16:00,2010-09-20 08:00,2010-09-23 16:00,,2010-09-20 08:00,2010-09-23 16:00,,PT_Normal,,,,,tj1NPHsFSXmI1ETQBou/ng,fZbXSpzznEW7RtclLwDjxA,,,Y,0,0,,,2010-08-08 17:50,2010-08-10 10:29,admin,admin,2010-09-20 08:00,2010-09-23 16:00,32
20,87797,799,11141,866,1,0,N,N,N,CP_Drtn,TT_Task,DT_FixedDUR2,RV_OK,TK_NotStart,A1280,Pouring for columns,,0,0,8,0,0,0,8,0,0,0,,,,2010-09-27 08:00,2010-09-27 16:00,,2010-09-27 08:00,2010-09-27 16:00,2010-09-27 08:00,2010-09-27 16:00,2010-09-27 08:00,2010-09-27 16:00,,2010-09-27 08:00,2010-09-27 16:00,,PT_Normal,,,,,6KBKSTL7TuC24TYtR3BmVg,ihLqIg/rE0mdCeqKNf0/fg,,,Y,0,0,,,2010-08-08 17:50,2010-08-10 10:29,admin,admin,2010-09-26 08:00,2010-09-26 16:00,8
21,87799,799,11141,866,1,0,N,N,N,CP_Drtn,TT_Task,DT_FixedDUR2,RV_OK,TK_NotStart,A1330,Rebar for slab,,0,0,40,0,0,0,40,0,0,0,,,,2010-09-28 08:00,2010-10-03 16:00,,2010-09-28 08:00,2010-10-03 16:00,2010-09-28 08:00,2010-10-03 16:00,2010-09-28 08:00,2010-10-03 16:00,,2010-09-28 08:00,2010-10-03 16:00,,PT_Normal,,,,,BapV5rjURiSw12a6rz/BKQ,6bhogHwNhUyBUg3LaYnaig,,,Y,0,0,,,2010-08-08 17:50,2010-08-10 10:29,admin,admin,2010-09-27 08:00,2010-10-02 16:00,40
22,87800,799,11141,866,1,0,N,N,N,CP_Drtn,TT_Task,DT_FixedDUR2,RV_OK,TK_NotStart,A1350,pouring for slab,,0,0,8,0,0,0,8,0,0,0,,,,2010-10-04 08:00,2010-10-04 16:00,,2010-10-04 08:00,2010-10-04 16:00,2010-10-04 08:00,2010-10-04 16:00,2010-10-04 08:00,2010-10-04 16:00,,2010-10-04 08:00,2010-10-04 16:00,,PT_Normal,,,,,SZjSa2idTuiZ+rnJ7cgKFg,e/tCGzn+C0yxiB6FvSu7Ig,,,Y,0,0,,,2010-08-08 17:50,2010-08-10 10:29,admin,admin,2010-10-03 08:00,2010-10-03 16:00,8
23,87801,799,11141,866,1,0,N,N,N,CP_Drtn,TT_Task,DT_FixedDrtn,RV_OK,TK_NotStart,A1340,E&M works for slab,,0,0,16,0,0,0,16,0,0,0,,,,2010-10-02 08:00,2010-10-03 16:00,,2010-10-02 08:00,2010-10-03 16:00,2010-10-02 08:00,2010-10-03 16:00,2010-10-02 08:00,2010-10-03 16:00,,2010-10-02 08:00,2010-10-03 16:00,,PT_Normal,,,,,KJyO3iYETQuC6qpHHmN0wA,SIHhPIWVok6DcngE2cMjBg,,,Y,0,0,,,2010-08-08 17:50,2010-08-10 10:29,admin,admin,2010-09-30 08:00,2010-10-02 16:00,16
24,87873,799,11152,866,0,0,N,N,N,CP_Drtn,TT_Mile,DT_FixedDrtn,RV_OK,TK_NotStart,A1000,start project,,0,0,0,0,0,0,0,0,0,0,,,,2010-06-20 08:00,2010-06-20 08:00,,2010-06-20 08:00,2010-06-20 08:00,2010-06-20 08:00,2010-06-20 08:00,2010-06-20 08:00,2010-06-20 08:00,,2010-06-20 08:00,2010-06-20 08:00,,PT_Normal,,,,,ICvgexR4QSKaupmfIPzHsg,,,,Y,0,0,,,2010-08-08 17:50,2010-08-10 10:29,admin,admin,2010-06-20 08:00,2010-06-20 08:00,0
25,87874,799,11152,866,0,0,N,N,N,CP_Drtn,TT_FinMile,DT_FixedDrtn,RV_OK,TK_NotStart,A1010,finish project,,1752,1752,0,0,0,0,0,0,0,0,,,,2011-03-22 16:00,2011-03-22 16:00,,2010-06-28 16:00,2010-06-28 16:00,2010-06-28 16:00,2010-06-28 16:00,2010-06-28 16:00,2010-06-28 16:00,,2011-03-22 16:00,2011-03-22 16:00,,PT_Normal,,,,,wBjfqPkvRn65WoKcK7TezA,,,,N,0,0,,,2010-08-08 17:50,2010-08-10 10:29,admin,admin,2010-06-28 16:00,2010-06-28 16:00,0
26,87929,799,11139,866,1,0,N,N,N,CP_Drtn,TT_Task,DT_FixedDUR2,RV_OK,TK_NotStart,A2900,Form work for slabs & columns,,0,0,80,0,0,0,80,0,0,0,,,,2010-08-30 08:00,2010-09-14 16:00,,2010-08-30 08:00,2010-09-14 16:00,2010-08-30 08:00,2010-09-14 16:00,2010-08-30 08:00,2010-09-14 16:00,,2010-08-30 08:00,2010-09-14 16:00,,PT_Normal,,,,,Jy3Z0j70HUu09r0XKllpGA,l3GdTHhQRVCmiOtVoD8dLg,,,Y,0,0,,,2010-08-10 10:03,2010-08-10 10:29,admin,admin,2010-08-30 08:00,2010-09-14 16:00,80
27,87930,799,11139,866,1,0,N,N,N,CP_Drtn,TT_Task,DT_FixedDUR2,RV_OK,TK_NotStart,A2910,Rebar for columns,,0,0,24,0,0,0,24,0,0,0,,,,2010-09-01 08:00,2010-09-04 16:00,,2010-09-01 08:00,2010-09-04 16:00,2010-09-01 08:00,2010-09-04 16:00,2010-09-01 08:00,2010-09-04 16:00,,2010-09-01 08:00,2010-09-04 16:00,,PT_Normal,,,,,5MleIVQnv0iJv8WWfAb0cg,tj1NPHsFSXmI1ETQBou/ng,,,Y,0,0,,,2010-08-10 10:03,2010-08-10 10:29,admin,admin,2010-09-01 08:00,2010-09-04 16:00,24
28,87931,799,11139,866,1,0,N,N,N,CP_Drtn,TT_Task,DT_FixedDUR2,RV_OK,TK_NotStart,A2920,Pouring for columns,,0,0,8,0,0,0,8,0,0,0,,,,2010-09-07 08:00,2010-09-07 16:00,,2010-09-07 08:00,2010-09-07 16:00,2010-09-07 08:00,2010-09-07 16:00,2010-09-07 08:00,2010-09-07 16:00,,2010-09-07 08:00,2010-09-07 16:00,,PT_Normal,,,,,ceQrc1NXzE67Qr8byGjdCQ,6KBKSTL7TuC24TYtR3BmVg,,,Y,0,0,,,2010-08-10 10:03,2010-08-10 10:29,admin,admin,2010-09-07 08:00,2010-09-07 16:00,8
29,87932,799,11139,866,1,0,N,N,N,CP_Drtn,TT_Task,DT_FixedDUR2,RV_OK,TK_NotStart,A2930,Rebar for slab,,0,0,32,0,0,0,32,0,0,0,,,,2010-09-13 08:00,2010-09-16 16:00,,2010-09-13 08:00,2010-09-16 16:00,2010-09-13 08:00,2010-09-16 16:00,2010-09-13 08:00,2010-09-16 16:00,,2010-09-13 08:00,2010-09-16 16:00,,PT_Normal,,,,,zYE38Ter4kqPdH1xD/pZ+Q,BapV5rjURiSw12a6rz/BKQ,,,Y,0,0,,,2010-08-10 10:03,2010-08-10 10:29,admin,admin,2010-09-13 08:00,2010-09-16 16:00,32
30,87933,799,11139,866,1,0,N,N,N,CP_Drtn,TT_Task,DT_FixedDUR2,RV_OK,TK_NotStart,A2950,pouring for slab,,0,0,8,0,0,0,8,0,0,0,,,,2010-09-18 08:00,2010-09-18 16:00,,2010-09-18 08:00,2010-09-18 16:00,2010-09-18 08:00,2010-09-18 16:00,2010-09-18 08:00,2010-09-18 16:00,,2010-09-18 08:00,2010-09-18 16:00,,PT_Normal,,,,,UetUlhi4JUmAZJtWDuNBRA,SZjSa2idTuiZ+rnJ7cgKFg,,,Y,0,0,,,2010-08-10 10:03,2010-08-10 10:29,admin,admin,2010-09-18 08:00,2010-09-18 16:00,8
31,87934,799,11139,866,1,0,N,N,N,CP_Drtn,TT_Task,DT_FixedDrtn,RV_OK,TK_NotStart,A2940,E&M works for slab,,0,0,16,0,0,0,16,0,0,0,,,,2010-09-15 08:00,2010-09-16 16:00,,2010-09-15 08:00,2010-09-16 16:00,2010-09-15 08:00,2010-09-16 16:00,2010-09-15 08:00,2010-09-16 16:00,,2010-09-15 08:00,2010-09-16 16:00,,PT_Normal,,,,,Nrkj57Pl5E2P6xAheyFvQg,KJyO3iYETQuC6qpHHmN0wA,,,Y,0,0,,,2010-08-10 10:03,2010-08-10 10:29,admin,admin,2010-09-15 08:00,2010-09-16 16:00,16
32,87935,799,11162,866,1,0,N,N,N,CP_Drtn,TT_Task,DT_FixedDUR2,RV_OK,TK_NotStart,A2960,Form work for slabs & columns,,0,0,96,0,0,0,96,0,0,0,,,,2010-10-06 08:00,2010-10-19 16:00,,2010-10-06 08:00,2010-10-19 16:00,2010-10-06 08:00,2010-10-19 16:00,2010-10-06 08:00,2010-10-19 16:00,,2010-10-06 08:00,2010-10-19 16:00,,PT_Normal,,,,,c2ogE2a0P0yE4F2fPXQGvQ,l3GdTHhQRVCmiOtVoD8dLg,,,Y,0,0,,,2010-08-10 10:19,2010-08-10 10:29,admin,admin,2010-10-05 08:00,2010-10-18 16:00,96
33,87936,799,11162,866,1,0,N,N,N,CP_Drtn,TT_Task,DT_FixedDUR2,RV_OK,TK_NotStart,A2970,Rebar for columns,,0,0,32,0,0,0,32,0,0,0,,,,2010-10-06 08:00,2010-10-10 16:00,,2010-10-06 08:00,2010-10-10 16:00,2010-10-06 08:00,2010-10-10 16:00,2010-10-06 08:00,2010-10-10 16:00,,2010-10-06 08:00,2010-10-10 16:00,,PT_Normal,,,,,M8jgALNzJ0m00THLJTkoUg,tj1NPHsFSXmI1ETQBou/ng,,,Y,0,0,,,2010-08-10 10:19,2010-08-10 10:29,admin,admin,2010-10-05 08:00,2010-10-09 16:00,32
34,87937,799,11162,866,1,0,N,N,N,CP_Drtn,TT_Task,DT_FixedDUR2,RV_OK,TK_NotStart,A2980,Pouring for columns,,0,0,8,0,0,0,8,0,0,0,,,,2010-10-13 08:00,2010-10-13 16:00,,2010-10-13 08:00,2010-10-13 16:00,2010-10-13 08:00,2010-10-13 16:00,2010-10-13 08:00,2010-10-13 16:00,,2010-10-13 08:00,2010-10-13 16:00,,PT_Normal,,,,,2p/gIxT5V0a8+AGsVGQzQQ,6KBKSTL7TuC24TYtR3BmVg,,,Y,0,0,,,2010-08-10 10:19,2010-08-10 10:29,admin,admin,2010-10-12 08:00,2010-10-12 16:00,8
35,87938,799,11162,866,1,0,N,N,N,CP_Drtn,TT_Task,DT_FixedDUR2,RV_OK,TK_NotStart,A2990,Rebar for slab,,0,0,40,0,0,0,40,0,0,0,,,,2010-10-14 08:00,2010-10-19 16:00,,2010-10-14 08:00,2010-10-19 16:00,2010-10-14 08:00,2010-10-19 16:00,2010-10-14 08:00,2010-10-19 16:00,,2010-10-14 08:00,2010-10-19 16:00,,PT_Normal,,,,,6w1lJW3zAE2xvTfQc68uJw,BapV5rjURiSw12a6rz/BKQ,,,Y,0,0,,,2010-08-10 10:19,2010-08-10 10:29,admin,admin,2010-10-13 08:00,2010-10-18 16:00,40
36,87939,799,11162,866,1,0,N,N,N,CP_Drtn,TT_Task,DT_FixedDUR2,RV_OK,TK_NotStart,A3000,pouring for slab,,0,0,8,0,0,0,8,0,0,0,,,,2010-10-20 08:00,2010-10-20 16:00,,2010-10-20 08:00,2010-10-20 16:00,2010-10-20 08:00,2010-10-20 16:00,2010-10-20 08:00,2010-10-20 16:00,,2010-10-20 08:00,2010-10-20 16:00,,PT_Normal,,,,,nCAHWAx3Jk+RBGTT06Lbpw,SZjSa2idTuiZ+rnJ7cgKFg,,,Y,0,0,,,2010-08-10 10:19,2010-08-10 10:29,admin,admin,2010-10-19 08:00,2010-10-19 16:00,8
37,87940,799,11162,866,1,0,N,N,N,CP_Drtn,TT_Task,DT_FixedDrtn,RV_OK,TK_NotStart,A3010,E&M works for slab,,0,0,16,0,0,0,16,0,0,0,,,,2010-10-18 08:00,2010-10-19 16:00,,2010-10-18 08:00,2010-10-19 16:00,2010-10-18 08:00,2010-10-19 16:00,2010-10-18 08:00,2010-10-19 16:00,,2010-10-18 08:00,2010-10-19 16:00,,PT_Normal,,,,,aumM5nKCGkudTdtnUBjYFA,KJyO3iYETQuC6qpHHmN0wA,,,Y,0,0,,,2010-08-10 10:19,2010-08-10 10:29,admin,admin,2010-10-17 08:00,2010-10-18 16:00,16
38,87941,799,11163,866,1,0,N,N,N,CP_Drtn,TT_Task,DT_FixedDUR2,RV_OK,TK_NotStart,A3020,Form work for slabs & columns,,0,0,96,0,0,0,96,0,0,0,,,,2010-10-23 08:00,2010-11-04 16:00,,2010-10-23 08:00,2010-11-04 16:00,2010-10-23 08:00,2010-11-04 16:00,2010-10-23 08:00,2010-11-04 16:00,,2010-10-23 08:00,2010-11-04 16:00,,PT_Normal,,,,,HSiFSmdAT0W4TWdT0LBROQ,c2ogE2a0P0yE4F2fPXQGvQ,,,Y,0,0,,,2010-08-10 10:19,2010-08-10 10:29,admin,admin,2010-10-21 08:00,2010-11-03 16:00,96
39,87942,799,11163,866,1,0,N,N,N,CP_Drtn,TT_Task,DT_FixedDUR2,RV_OK,TK_NotStart,A3030,Rebar for columns,,0,0,32,0,0,0,32,0,0,0,,,,2010-10-23 08:00,2010-10-26 16:00,,2010-10-23 08:00,2010-10-26 16:00,2010-10-23 08:00,2010-10-26 16:00,2010-10-23 08:00,2010-10-26 16:00,,2010-10-23 08:00,2010-10-26 16:00,,PT_Normal,,,,,JTmjfiz96UabmsyFHjdU4g,M8jgALNzJ0m00THLJTkoUg,,,Y,0,0,,,2010-08-10 10:19,2010-08-10 10:29,admin,admin,2010-10-21 08:00,2010-10-25 16:00,32
40,87943,799,11163,866,1,0,N,N,N,CP_Drtn,TT_Task,DT_FixedDUR2,RV_OK,TK_NotStart,A3040,Pouring for columns,,0,0,8,0,0,0,8,0,0,0,,,,2010-10-30 08:00,2010-10-30 16:00,,2010-10-30 08:00,2010-10-30 16:00,2010-10-30 08:00,2010-10-30 16:00,2010-10-30 08:00,2010-10-30 16:00,,2010-10-30 08:00,2010-10-30 16:00,,PT_Normal,,,,,+6MdoHKGwUO3VOuH4yFslg,2p/gIxT5V0a8+AGsVGQzQQ,,,Y,0,0,,,2010-08-10 10:19,2010-08-10 10:29,admin,admin,2010-10-28 08:00,2010-10-28 16:00,8
41,87944,799,11163,866,1,0,N,N,N,CP_Drtn,TT_Task,DT_FixedDUR2,RV_OK,TK_NotStart,A3050,Rebar for slab,,0,0,40,0,0,0,40,0,0,0,,,,2010-10-31 08:00,2010-11-04 16:00,,2010-10-31 08:00,2010-11-04 16:00,2010-10-31 08:00,2010-11-04 16:00,2010-10-31 08:00,2010-11-04 16:00,,2010-10-31 08:00,2010-11-04 16:00,,PT_Normal,,,,,zLkgovNlX0S0tOvNVpfZMw,6w1lJW3zAE2xvTfQc68uJw,,,Y,0,0,,,2010-08-10 10:19,2010-08-10 10:29,admin,admin,2010-10-30 08:00,2010-11-03 16:00,40
42,87945,799,11163,866,1,0,N,N,N,CP_Drtn,TT_Task,DT_FixedDUR2,RV_OK,TK_NotStart,A3060,pouring for slab,,0,0,8,0,0,0,8,0,0,0,,,,2010-11-06 08:00,2010-11-06 16:00,,2010-11-06 08:00,2010-11-06 16:00,2010-11-06 08:00,2010-11-06 16:00,2010-11-06 08:00,2010-11-06 16:00,,2010-11-06 08:00,2010-11-06 16:00,,PT_Normal,,,,,cfRKRN7AFUWGO+LDqAh99w,nCAHWAx3Jk+RBGTT06Lbpw,,,Y,0,0,,,2010-08-10 10:19,2010-08-10 10:29,admin,admin,2010-11-04 08:00,2010-11-04 16:00,8
43,87946,799,11163,866,1,0,N,N,N,CP_Drtn,TT_Task,DT_FixedDrtn,RV_OK,TK_NotStart,A3070,E&M works for slab,,0,0,16,0,0,0,16,0,0,0,,,,2010-11-03 08:00,2010-11-04 16:00,,2010-11-03 08:00,2010-11-04 16:00,2010-11-03 08:00,2010-11-04 16:00,2010-11-03 08:00,2010-11-04 16:00,,2010-11-03 08:00,2010-11-04 16:00,,PT_Normal,,,,,mCEb97K8V0GaRT+Nc84sgg,aumM5nKCGkudTdtnUBjYFA,,,Y,0,0,,,2010-08-10 10:19,2010-08-10 10:29,admin,admin,2010-11-02 08:00,2010-11-03 16:00,16
44,87947,799,11164,866,1,0,N,N,N,CP_Drtn,TT_Task,DT_FixedDUR2,RV_OK,TK_NotStart,A3080,Form work for slabs & columns,,0,0,96,0,0,0,96,0,0,0,,,,2010-12-18 08:00,2010-12-30 16:00,,2010-12-18 08:00,2010-12-30 16:00,2010-12-18 08:00,2010-12-30 16:00,2010-12-18 08:00,2010-12-30 16:00,,2010-12-18 08:00,2010-12-30 16:00,,PT_Normal,,,,,rHDrN/gz6kyp9mYAzW5sOw,l3GdTHhQRVCmiOtVoD8dLg,,,Y,0,0,,,2010-08-10 10:19,2010-08-10 10:29,admin,admin,2010-12-16 08:00,2010-12-29 16:00,96
45,87948,799,11164,866,1,0,N,N,N,CP_Drtn,TT_Task,DT_FixedDUR2,RV_OK,TK_NotStart,A3090,Rebar for columns,,0,0,32,0,0,0,32,0,0,0,,,,2010-12-18 08:00,2010-12-21 16:00,,2010-12-18 08:00,2010-12-21 16:00,2010-12-18 08:00,2010-12-21 16:00,2010-12-18 08:00,2010-12-21 16:00,,2010-12-18 08:00,2010-12-21 16:00,,PT_Normal,,,,,qY0SzJwLtEmbDOz3ZOTOuA,tj1NPHsFSXmI1ETQBou/ng,,,Y,0,0,,,2010-08-10 10:19,2010-08-10 10:29,admin,admin,2010-12-16 08:00,2010-12-20 16:00,32
46,87949,799,11164,866,1,0,N,N,N,CP_Drtn,TT_Task,DT_FixedDUR2,RV_OK,TK_NotStart,A3100,Pouring for columns,,0,0,8,0,0,0,8,0,0,0,,,,2010-12-25 08:00,2010-12-25 16:00,,2010-12-25 08:00,2010-12-25 16:00,2010-12-25 08:00,2010-12-25 16:00,2010-12-25 08:00,2010-12-25 16:00,,2010-12-25 08:00,2010-12-25 16:00,,PT_Normal,,,,,vD8goqxX8kWyRnqaMQZhEg,6KBKSTL7TuC24TYtR3BmVg,,,Y,0,0,,,2010-08-10 10:19,2010-08-10 10:29,admin,admin,2010-12-23 08:00,2010-12-23 16:00,8
47,87950,799,11164,866,1,0,N,N,N,CP_Drtn,TT_Task,DT_FixedDUR2,RV_OK,TK_NotStart,A3110,Rebar for slab,,0,0,40,0,0,0,40,0,0,0,,,,2010-12-26 08:00,2010-12-30 16:00,,2010-12-26 08:00,2010-12-30 16:00,2010-12-26 08:00,2010-12-30 16:00,2010-12-26 08:00,2010-12-30 16:00,,2010-12-26 08:00,2010-12-30 16:00,,PT_Normal,,,,,WSBgKfZJDk+ayi2SdV/agQ,BapV5rjURiSw12a6rz/BKQ,,,Y,0,0,,,2010-08-10 10:19,2010-08-10 10:29,admin,admin,2010-12-25 08:00,2010-12-29 16:00,40
48,87951,799,11164,866,1,0,N,N,N,CP_Drtn,TT_Task,DT_FixedDUR2,RV_OK,TK_NotStart,A3120,pouring for slab,,0,0,8,0,0,0,8,0,0,0,,,,2011-01-01 08:00,2011-01-01 16:00,,2011-01-01 08:00,2011-01-01 16:00,2011-01-01 08:00,2011-01-01 16:00,2011-01-01 08:00,2011-01-01 16:00,,2011-01-01 08:00,2011-01-01 16:00,,PT_Normal,,,,,wUUFJ7LEsEaZr7ynmx25qQ,SZjSa2idTuiZ+rnJ7cgKFg,,,Y,0,0,,,2010-08-10 10:19,2010-08-10 10:29,admin,admin,2010-12-30 08:00,2010-12-30 16:00,8
49,87952,799,11164,866,1,0,N,N,N,CP_Drtn,TT_Task,DT_FixedDrtn,RV_OK,TK_NotStart,A3130,E&M works for slab,,0,0,16,0,0,0,16,0,0,0,,,,2010-12-29 08:00,2010-12-30 16:00,,2010-12-29 08:00,2010-12-30 16:00,2010-12-29 08:00,2010-12-30 16:00,2010-12-29 08:00,2010-12-30 16:00,,2010-12-29 08:00,2010-12-30 16:00,,PT_Normal,,,,,EHUdqZxSB0uvetnP4X8mNA,KJyO3iYETQuC6qpHHmN0wA,,,Y,0,0,,,2010-08-10 10:19,2010-08-10 10:29,admin,admin,2010-12-28 08:00,2010-12-29 16:00,16
50,87953,799,11165,866,1,0,N,N,N,CP_Drtn,TT_Task,DT_FixedDUR2,RV_OK,TK_NotStart,A3140,Form work for slabs & columns,,0,0,96,0,0,0,96,0,0,0,,,,2010-12-01 08:00,2010-12-14 16:00,,2010-12-01 08:00,2010-12-14 16:00,2010-12-01 08:00,2010-12-14 16:00,2010-12-01 08:00,2010-12-14 16:00,,2010-12-01 08:00,2010-12-14 16:00,,PT_Normal,,,,,I9jZ9mPypUifd9kKDsQ9Ig,c2ogE2a0P0yE4F2fPXQGvQ,,,Y,0,0,,,2010-08-10 10:19,2010-08-10 10:29,admin,admin,2010-11-30 08:00,2010-12-13 16:00,96
51,87954,799,11165,866,1,0,N,N,N,CP_Drtn,TT_Task,DT_FixedDUR2,RV_OK,TK_NotStart,A3150,Rebar for columns,,0,0,32,0,0,0,32,0,0,0,,,,2010-12-01 08:00,2010-12-05 16:00,,2010-12-01 08:00,2010-12-05 16:00,2010-12-01 08:00,2010-12-05 16:00,2010-12-01 08:00,2010-12-05 16:00,,2010-12-01 08:00,2010-12-05 16:00,,PT_Normal,,,,,MQJN48PfG0i35SJvGcLVKQ,M8jgALNzJ0m00THLJTkoUg,,,Y,0,0,,,2010-08-10 10:19,2010-08-10 10:29,admin,admin,2010-11-30 08:00,2010-12-04 16:00,32
52,87955,799,11165,866,1,0,N,N,N,CP_Drtn,TT_Task,DT_FixedDUR2,RV_OK,TK_NotStart,A3160,Pouring for columns,,0,0,8,0,0,0,8,0,0,0,,,,2010-12-08 08:00,2010-12-08 16:00,,2010-12-08 08:00,2010-12-08 16:00,2010-12-08 08:00,2010-12-08 16:00,2010-12-08 08:00,2010-12-08 16:00,,2010-12-08 08:00,2010-12-08 16:00,,PT_Normal,,,,,uXXxoyv7XEufe28SQUhHyg,2p/gIxT5V0a8+AGsVGQzQQ,,,Y,0,0,,,2010-08-10 10:19,2010-08-10 10:29,admin,admin,2010-12-07 08:00,2010-12-07 16:00,8
53,87956,799,11165,866,1,0,N,N,N,CP_Drtn,TT_Task,DT_FixedDUR2,RV_OK,TK_NotStart,A3170,Rebar for slab,,0,0,40,0,0,0,40,0,0,0,,,,2010-12-09 08:00,2010-12-14 16:00,,2010-12-09 08:00,2010-12-14 16:00,2010-12-09 08:00,2010-12-14 16:00,2010-12-09 08:00,2010-12-14 16:00,,2010-12-09 08:00,2010-12-14 16:00,,PT_Normal,,,,,hdXstkZOHEmGqskhTkiBdw,6w1lJW3zAE2xvTfQc68uJw,,,Y,0,0,,,2010-08-10 10:19,2010-08-10 10:29,admin,admin,2010-12-08 08:00,2010-12-13 16:00,40
54,87957,799,11165,866,1,0,N,N,N,CP_Drtn,TT_Task,DT_FixedDUR2,RV_OK,TK_NotStart,A3180,pouring for slab,,0,0,8,0,0,0,8,0,0,0,,,,2010-12-15 08:00,2010-12-15 16:00,,2010-12-15 08:00,2010-12-15 16:00,2010-12-15 08:00,2010-12-15 16:00,2010-12-15 08:00,2010-12-15 16:00,,2010-12-15 08:00,2010-12-15 16:00,,PT_Normal,,,,,vT5xp5MowEObwfkT5pZZkg,nCAHWAx3Jk+RBGTT06Lbpw,,,Y,0,0,,,2010-08-10 10:19,2010-08-10 10:29,admin,admin,2010-12-14 08:00,2010-12-14 16:00,8
55,87958,799,11165,866,1,0,N,N,N,CP_Drtn,TT_Task,DT_FixedDrtn,RV_OK,TK_NotStart,A3190,E&M works for slab,,0,0,16,0,0,0,16,0,0,0,,,,2010-12-13 08:00,2010-12-14 16:00,,2010-12-13 08:00,2010-12-14 16:00,2010-12-13 08:00,2010-12-14 16:00,2010-12-13 08:00,2010-12-14 16:00,,2010-12-13 08:00,2010-12-14 16:00,,PT_Normal,,,,,I1VrhUFqFkmDqhWnYftWLA,aumM5nKCGkudTdtnUBjYFA,,,Y,0,0,,,2010-08-10 10:19,2010-08-10 10:29,admin,admin,2010-12-12 08:00,2010-12-13 16:00,16
56,87959,799,11166,866,1,0,N,N,N,CP_Drtn,TT_Task,DT_FixedDUR2,RV_OK,TK_NotStart,A3200,Form work for slabs & columns,,0,0,96,0,0,0,96,0,0,0,,,,2010-11-08 08:00,2010-11-28 16:00,,2010-11-08 08:00,2010-11-28 16:00,2010-11-08 08:00,2010-11-28 16:00,2010-11-08 08:00,2010-11-28 16:00,,2010-11-08 08:00,2010-11-28 16:00,,PT_Normal,,,,,rxodXj6wsk23suEOFlVFpQ,HSiFSmdAT0W4TWdT0LBROQ,,,Y,0,0,,,2010-08-10 10:19,2010-08-10 10:29,admin,admin,2010-11-07 08:00,2010-11-27 16:00,96
57,87960,799,11166,866,1,0,N,N,N,CP_Drtn,TT_Task,DT_FixedDUR2,RV_OK,TK_NotStart,A3210,Rebar for columns,,0,0,32,0,0,0,32,0,0,0,,,,2010-11-08 08:00,2010-11-11 16:00,,2010-11-08 08:00,2010-11-11 16:00,2010-11-08 08:00,2010-11-11 16:00,2010-11-08 08:00,2010-11-11 16:00,,2010-11-08 08:00,2010-11-11 16:00,,PT_Normal,,,,,MAmy7oimh0aPOrSGVvLsSQ,JTmjfiz96UabmsyFHjdU4g,,,Y,0,0,,,2010-08-10 10:19,2010-08-10 10:29,admin,admin,2010-11-07 08:00,2010-11-10 16:00,32
58,87961,799,11166,866,1,0,N,N,N,CP_Drtn,TT_Task,DT_FixedDUR2,RV_OK,TK_NotStart,A3220,Pouring for columns,,0,0,8,0,0,0,8,0,0,0,,,,2010-11-22 08:00,2010-11-22 16:00,,2010-11-22 08:00,2010-11-22 16:00,2010-11-22 08:00,2010-11-22 16:00,2010-11-22 08:00,2010-11-22 16:00,,2010-11-22 08:00,2010-11-22 16:00,,PT_Normal,,,,,ouDPITWVqUCzY4BXqr5QdQ,+6MdoHKGwUO3VOuH4yFslg,,,Y,0,0,,,2010-08-10 10:19,2010-08-10 10:29,admin,admin,2010-11-21 08:00,2010-11-21 16:00,8
59,87962,799,11166,866,1,0,N,N,N,CP_Drtn,TT_Task,DT_FixedDUR2,RV_OK,TK_NotStart,A3230,Rebar for slab,,0,0,40,0,0,0,40,0,0,0,,,,2010-11-23 08:00,2010-11-28 16:00,,2010-11-23 08:00,2010-11-28 16:00,2010-11-23 08:00,2010-11-28 16:00,2010-11-23 08:00,2010-11-28 16:00,,2010-11-23 08:00,2010-11-28 16:00,,PT_Normal,,,,,423rBDJJDkSWuffllnneZA,zLkgovNlX0S0tOvNVpfZMw,,,Y,0,0,,,2010-08-10 10:19,2010-08-10 10:29,admin,admin,2010-11-22 08:00,2010-11-27 16:00,40
60,87963,799,11166,866,1,0,N,N,N,CP_Drtn,TT_Task,DT_FixedDUR2,RV_OK,TK_NotStart,A3240,pouring for slab,,0,0,8,0,0,0,8,0,0,0,,,,2010-11-29 08:00,2010-11-29 16:00,,2010-11-29 08:00,2010-11-29 16:00,2010-11-29 08:00,2010-11-29 16:00,2010-11-29 08:00,2010-11-29 16:00,,2010-11-29 08:00,2010-11-29 16:00,,PT_Normal,,,,,vwd0zFmb/EO7ypgZATSz/A,cfRKRN7AFUWGO+LDqAh99w,,,Y,0,0,,,2010-08-10 10:19,2010-08-10 10:29,admin,admin,2010-11-28 08:00,2010-11-28 16:00,8
61,87964,799,11166,866,1,0,N,N,N,CP_Drtn,TT_Task,DT_FixedDrtn,RV_OK,TK_NotStart,A3250,E&M works for slab,,0,0,16,0,0,0,16,0,0,0,,,,2010-11-27 08:00,2010-11-28 16:00,,2010-11-27 08:00,2010-11-28 16:00,2010-11-27 08:00,2010-11-28 16:00,2010-11-27 08:00,2010-11-28 16:00,,2010-11-27 08:00,2010-11-28 16:00,,PT_Normal,,,,,TMHnJnTJv0u/fW+VOEu8SA,mCEb97K8V0GaRT+Nc84sgg,,,Y,0,0,,,2010-08-10 10:19,2010-08-10 10:29,admin,admin,2010-11-25 08:00,2010-11-27 16:00,16
62,87971,799,11168,866,1,0,N,N,N,CP_Drtn,TT_Task,DT_FixedDUR2,RV_OK,TK_NotStart,A3320,Form work for slabs & columns,,0,0,96,0,0,0,96,0,0,0,,,,2011-01-03 08:00,2011-01-16 16:00,,2011-01-03 08:00,2011-01-16 16:00,2011-01-03 08:00,2011-01-16 16:00,2011-01-03 08:00,2011-01-16 16:00,,2011-01-03 08:00,2011-01-16 16:00,,PT_Normal,,,,,/b3iXzZWZECVYuWhOQAIZg,c2ogE2a0P0yE4F2fPXQGvQ,,,Y,0,0,,,2010-08-10 10:20,2010-08-10 10:29,admin,admin,2011-01-02 08:00,2011-01-15 16:00,96
63,87972,799,11168,866,1,0,N,N,N,CP_Drtn,TT_Task,DT_FixedDUR2,RV_OK,TK_NotStart,A3330,Rebar for columns,,0,0,32,0,0,0,32,0,0,0,,,,2011-01-03 08:00,2011-01-06 16:00,,2011-01-03 08:00,2011-01-06 16:00,2011-01-03 08:00,2011-01-06 16:00,2011-01-03 08:00,2011-01-06 16:00,,2011-01-03 08:00,2011-01-06 16:00,,PT_Normal,,,,,seyTRvjxBEKy9WF9h8JeWw,M8jgALNzJ0m00THLJTkoUg,,,Y,0,0,,,2010-08-10 10:20,2010-08-10 10:29,admin,admin,2011-01-02 08:00,2011-01-05 16:00,32
64,87973,799,11168,866,1,0,N,N,N,CP_Drtn,TT_Task,DT_FixedDUR2,RV_OK,TK_NotStart,A3340,Pouring for columns,,0,0,8,0,0,0,8,0,0,0,,,,2011-01-10 08:00,2011-01-10 16:00,,2011-01-10 08:00,2011-01-10 16:00,2011-01-10 08:00,2011-01-10 16:00,2011-01-10 08:00,2011-01-10 16:00,,2011-01-10 08:00,2011-01-10 16:00,,PT_Normal,,,,,TXBBNoQxNk+pnZqbynh43g,2p/gIxT5V0a8+AGsVGQzQQ,,,Y,0,0,,,2010-08-10 10:20,2010-08-10 10:29,admin,admin,2011-01-09 08:00,2011-01-09 16:00,8
65,87974,799,11168,866,1,0,N,N,N,CP_Drtn,TT_Task,DT_FixedDUR2,RV_OK,TK_NotStart,A3350,Rebar for slab,,0,0,40,0,0,0,40,0,0,0,,,,2011-01-11 08:00,2011-01-16 16:00,,2011-01-11 08:00,2011-01-16 16:00,2011-01-11 08:00,2011-01-16 16:00,2011-01-11 08:00,2011-01-16 16:00,,2011-01-11 08:00,2011-01-16 16:00,,PT_Normal,,,,,6uwe++k4DUmmJ6wfwNvc2w,6w1lJW3zAE2xvTfQc68uJw,,,Y,0,0,,,2010-08-10 10:20,2010-08-10 10:29,admin,admin,2011-01-10 08:00,2011-01-15 16:00,40
66,87975,799,11168,866,1,0,N,N,N,CP_Drtn,TT_Task,DT_FixedDUR2,RV_OK,TK_NotStart,A3360,pouring for slab,,0,0,8,0,0,0,8,0,0,0,,,,2011-01-17 08:00,2011-01-17 16:00,,2011-01-17 08:00,2011-01-17 16:00,2011-01-17 08:00,2011-01-17 16:00,2011-01-17 08:00,2011-01-17 16:00,,2011-01-17 08:00,2011-01-17 16:00,,PT_Normal,,,,,1oz7ODvgqkeLNIBt9M01Pw,nCAHWAx3Jk+RBGTT06Lbpw,,,Y,0,0,,,2010-08-10 10:20,2010-08-10 10:29,admin,admin,2011-01-16 08:00,2011-01-16 16:00,8
67,87976,799,11168,866,1,0,N,N,N,CP_Drtn,TT_Task,DT_FixedDrtn,RV_OK,TK_NotStart,A3370,E&M works for slab,,0,0,16,0,0,0,16,0,0,0,,,,2011-01-15 08:00,2011-01-16 16:00,,2011-01-15 08:00,2011-01-16 16:00,2011-01-15 08:00,2011-01-16 16:00,2011-01-15 08:00,2011-01-16 16:00,,2011-01-15 08:00,2011-01-16 16:00,,PT_Normal,,,,,J0ZhVdaKh0S9LM9cVn6uUw,aumM5nKCGkudTdtnUBjYFA,,,Y,0,0,,,2010-08-10 10:20,2010-08-10 10:29,admin,admin,2011-01-13 08:00,2011-01-15 16:00,16
68,87977,799,11169,866,1,0,N,N,N,CP_Drtn,TT_Task,DT_FixedDUR2,RV_OK,TK_NotStart,A3380,Form work for slabs & columns,,0,0,96,0,0,0,96,0,0,0,,,,2011-01-19 08:00,2011-02-01 16:00,,2011-01-19 08:00,2011-02-01 16:00,2011-01-19 08:00,2011-02-01 16:00,2011-01-19 08:00,2011-02-01 16:00,,2011-01-19 08:00,2011-02-01 16:00,,PT_Normal,,,,,dsKZKejCkkmI1VWB2Li+yQ,HSiFSmdAT0W4TWdT0LBROQ,,,Y,0,0,,,2010-08-10 10:20,2010-08-10 10:29,admin,admin,2011-01-18 08:00,2011-01-31 16:00,96
69,87978,799,11169,866,1,0,N,N,N,CP_Drtn,TT_Task,DT_FixedDUR2,RV_OK,TK_NotStart,A3390,Rebar for columns,,0,0,32,0,0,0,32,0,0,0,,,,2011-01-19 08:00,2011-01-23 16:00,,2011-01-19 08:00,2011-01-23 16:00,2011-01-19 08:00,2011-01-23 16:00,2011-01-19 08:00,2011-01-23 16:00,,2011-01-19 08:00,2011-01-23 16:00,,PT_Normal,,,,,U/1zrDrPdUmcUrujAEndfg,JTmjfiz96UabmsyFHjdU4g,,,Y,0,0,,,2010-08-10 10:20,2010-08-10 10:29,admin,admin,2011-01-18 08:00,2011-01-22 16:00,32
70,87979,799,11169,866,1,0,N,N,N,CP_Drtn,TT_Task,DT_FixedDUR2,RV_OK,TK_NotStart,A3400,Pouring for columns,,0,0,8,0,0,0,8,0,0,0,,,,2011-01-26 08:00,2011-01-26 16:00,,2011-01-26 08:00,2011-01-26 16:00,2011-01-26 08:00,2011-01-26 16:00,2011-01-26 08:00,2011-01-26 16:00,,2011-01-26 08:00,2011-01-26 16:00,,PT_Normal,,,,,VXPAZ5zrv0qsWBOdS5ZeSg,+6MdoHKGwUO3VOuH4yFslg,,,Y,0,0,,,2010-08-10 10:20,2010-08-10 10:29,admin,admin,2011-01-25 08:00,2011-01-25 16:00,8
71,87980,799,11169,866,1,0,N,N,N,CP_Drtn,TT_Task,DT_FixedDUR2,RV_OK,TK_NotStart,A3410,Rebar for slab,,0,0,40,0,0,0,40,0,0,0,,,,2011-01-27 08:00,2011-02-01 16:00,,2011-01-27 08:00,2011-02-01 16:00,2011-01-27 08:00,2011-02-01 16:00,2011-01-27 08:00,2011-02-01 16:00,,2011-01-27 08:00,2011-02-01 16:00,,PT_Normal,,,,,MQiUAbLLh0WJVidPhFbtIQ,zLkgovNlX0S0tOvNVpfZMw,,,Y,0,0,,,2010-08-10 10:20,2010-08-10 10:29,admin,admin,2011-01-26 08:00,2011-01-31 16:00,40
72,87981,799,11169,866,1,0,N,N,N,CP_Drtn,TT_Task,DT_FixedDUR2,RV_OK,TK_NotStart,A3420,pouring for slab,,0,0,8,0,0,0,8,0,0,0,,,,2011-02-02 08:00,2011-02-02 16:00,,2011-02-02 08:00,2011-02-02 16:00,2011-02-02 08:00,2011-02-02 16:00,2011-02-02 08:00,2011-02-02 16:00,,2011-02-02 08:00,2011-02-02 16:00,,PT_Normal,,,,,dYGhvYUjVkuu0gwXBkUvEw,cfRKRN7AFUWGO+LDqAh99w,,,Y,0,0,,,2010-08-10 10:20,2010-08-10 10:29,admin,admin,2011-02-01 08:00,2011-02-01 16:00,8
73,87982,799,11169,866,1,0,N,N,N,CP_Drtn,TT_Task,DT_FixedDrtn,RV_OK,TK_NotStart,A3430,E&M works for slab,,0,0,16,0,0,0,16,0,0,0,,,,2011-01-31 08:00,2011-02-01 16:00,,2011-01-31 08:00,2011-02-01 16:00,2011-01-31 08:00,2011-02-01 16:00,2011-01-31 08:00,2011-02-01 16:00,,2011-01-31 08:00,2011-02-01 16:00,,PT_Normal,,,,,xdY7/H7Otk2P4QMLnjFF8A,mCEb97K8V0GaRT+Nc84sgg,,,Y,0,0,,,2010-08-10 10:20,2010-08-10 10:29,admin,admin,2011-01-30 08:00,2011-01-31 16:00,16
74,87989,799,11171,866,1,0,N,N,N,CP_Drtn,TT_Task,DT_FixedDUR2,RV_OK,TK_NotStart,A3500,Form work for slabs & columns,,0,0,96,0,0,0,96,0,0,0,,,,2011-02-05 08:00,2011-02-17 16:00,,2011-02-05 08:00,2011-02-17 16:00,2011-02-05 08:00,2011-02-17 16:00,2011-02-05 08:00,2011-02-17 16:00,,2011-02-05 08:00,2011-02-17 16:00,,PT_Normal,,,,,gvuIAKGStUyqDioaEpkc7A,I9jZ9mPypUifd9kKDsQ9Ig,,,Y,0,0,,,2010-08-10 10:20,2010-08-10 10:29,admin,admin,2011-02-03 08:00,2011-02-16 16:00,96
75,87990,799,11171,866,1,0,N,N,N,CP_Drtn,TT_Task,DT_FixedDUR2,RV_OK,TK_NotStart,A3510,Rebar for columns,,0,0,32,0,0,0,32,0,0,0,,,,2011-02-05 08:00,2011-02-08 16:00,,2011-02-05 08:00,2011-02-08 16:00,2011-02-05 08:00,2011-02-08 16:00,2011-02-05 08:00,2011-02-08 16:00,,2011-02-05 08:00,2011-02-08 16:00,,PT_Normal,,,,,444FbrvxeU2Qrx7COaJvsw,MQJN48PfG0i35SJvGcLVKQ,,,Y,0,0,,,2010-08-10 10:20,2010-08-10 10:29,admin,admin,2011-02-03 08:00,2011-02-07 16:00,32
76,87991,799,11171,866,1,0,N,N,N,CP_Drtn,TT_Task,DT_FixedDUR2,RV_OK,TK_NotStart,A3520,Pouring for columns,,0,0,8,0,0,0,8,0,0,0,,,,2011-02-12 08:00,2011-02-12 16:00,,2011-02-12 08:00,2011-02-12 16:00,2011-02-12 08:00,2011-02-12 16:00,2011-02-12 08:00,2011-02-12 16:00,,2011-02-12 08:00,2011-02-12 16:00,,PT_Normal,,,,,qMCgsP0vJ0Ce3rs4PSk/6g,uXXxoyv7XEufe28SQUhHyg,,,Y,0,0,,,2010-08-10 10:20,2010-08-10 10:29,admin,admin,2011-02-10 08:00,2011-02-10 16:00,8
77,87992,799,11171,866,1,0,N,N,N,CP_Drtn,TT_Task,DT_FixedDUR2,RV_OK,TK_NotStart,A3530,Rebar for slab,,0,0,40,0,0,0,40,0,0,0,,,,2011-02-13 08:00,2011-02-17 16:00,,2011-02-13 08:00,2011-02-17 16:00,2011-02-13 08:00,2011-02-17 16:00,2011-02-13 08:00,2011-02-17 16:00,,2011-02-13 08:00,2011-02-17 16:00,,PT_Normal,,,,,yMjWOOVGxEW9NlJnRDcYGQ,hdXstkZOHEmGqskhTkiBdw,,,Y,0,0,,,2010-08-10 10:20,2010-08-10 10:29,admin,admin,2011-02-12 08:00,2011-02-16 16:00,40
78,87993,799,11171,866,1,0,N,N,N,CP_Drtn,TT_Task,DT_FixedDUR2,RV_OK,TK_NotStart,A3540,pouring for slab,,0,0,8,0,0,0,8,0,0,0,,,,2011-02-19 08:00,2011-02-19 16:00,,2011-02-19 08:00,2011-02-19 16:00,2011-02-19 08:00,2011-02-19 16:00,2011-02-19 08:00,2011-02-19 16:00,,2011-02-19 08:00,2011-02-19 16:00,,PT_Normal,,,,,8ZE47N+aKkiU77asInM3nA,vT5xp5MowEObwfkT5pZZkg,,,Y,0,0,,,2010-08-10 10:20,2010-08-10 10:29,admin,admin,2011-02-17 08:00,2011-02-17 16:00,8
79,87994,799,11171,866,1,0,N,N,N,CP_Drtn,TT_Task,DT_FixedDrtn,RV_OK,TK_NotStart,A3550,E&M works for slab,,0,0,16,0,0,0,16,0,0,0,,,,2011-02-16 08:00,2011-02-17 16:00,,2011-02-16 08:00,2011-02-17 16:00,2011-02-16 08:00,2011-02-17 16:00,2011-02-16 08:00,2011-02-17 16:00,,2011-02-16 08:00,2011-02-17 16:00,,PT_Normal,,,,,r3phdIuMmkiNx/vBLq9VJg,I1VrhUFqFkmDqhWnYftWLA,,,Y,0,0,,,2010-08-10 10:20,2010-08-10 10:29,admin,admin,2011-02-15 08:00,2011-02-16 16:00,16
80,87995,799,11170,866,1,0,N,N,N,CP_Drtn,TT_Task,DT_FixedDUR2,RV_OK,TK_NotStart,A3560,Form work for slabs & columns,,0,0,96,0,0,0,96,0,0,0,,,,2011-02-21 08:00,2011-03-06 16:00,,2011-02-21 08:00,2011-03-06 16:00,2011-02-21 08:00,2011-03-06 16:00,2011-02-21 08:00,2011-03-06 16:00,,2011-02-21 08:00,2011-03-06 16:00,,PT_Normal,,,,,64kMu0mdeUW4MX6szuYnyg,rxodXj6wsk23suEOFlVFpQ,,,Y,0,0,,,2010-08-10 10:20,2010-08-10 10:29,admin,admin,2011-02-20 08:00,2011-03-05 16:00,96
81,87996,799,11170,866,1,0,N,N,N,CP_Drtn,TT_Task,DT_FixedDUR2,RV_OK,TK_NotStart,A3570,Rebar for columns,,0,0,32,0,0,0,32,0,0,0,,,,2011-02-21 08:00,2011-02-24 16:00,,2011-02-21 08:00,2011-02-24 16:00,2011-02-21 08:00,2011-02-24 16:00,2011-02-21 08:00,2011-02-24 16:00,,2011-02-21 08:00,2011-02-24 16:00,,PT_Normal,,,,,8DNfdnRuq0qs1JTFg2wyUA,MAmy7oimh0aPOrSGVvLsSQ,,,Y,0,0,,,2010-08-10 10:20,2010-08-10 10:29,admin,admin,2011-02-20 08:00,2011-02-23 16:00,32
82,87997,799,11170,866,1,0,N,N,N,CP_Drtn,TT_Task,DT_FixedDUR2,RV_OK,TK_NotStart,A3580,Pouring for columns,,0,0,8,0,0,0,8,0,0,0,,,,2011-02-28 08:00,2011-02-28 16:00,,2011-02-28 08:00,2011-02-28 16:00,2011-02-28 08:00,2011-02-28 16:00,2011-02-28 08:00,2011-02-28 16:00,,2011-02-28 08:00,2011-02-28 16:00,,PT_Normal,,,,,iEFCeMNDUEKsel/hKGQXsA,ouDPITWVqUCzY4BXqr5QdQ,,,Y,0,0,,,2010-08-10 10:20,2010-08-10 10:29,admin,admin,2011-02-27 08:00,2011-02-27 16:00,8
83,87998,799,11170,866,1,0,N,N,N,CP_Drtn,TT_Task,DT_FixedDUR2,RV_OK,TK_NotStart,A3590,Rebar for slab,,0,0,40,0,0,0,40,0,0,0,,,,2011-03-01 08:00,2011-03-06 16:00,,2011-03-01 08:00,2011-03-06 16:00,2011-03-01 08:00,2011-03-06 16:00,2011-03-01 08:00,2011-03-06 16:00,,2011-03-01 08:00,2011-03-06 16:00,,PT_Normal,,,,,DKZxzJHnlUa4ZI6ByYXVcw,423rBDJJDkSWuffllnneZA,,,Y,0,0,,,2010-08-10 10:20,2010-08-10 10:29,admin,admin,2011-02-28 08:00,2011-03-05 16:00,40
84,87999,799,11170,866,1,0,N,N,N,CP_Drtn,TT_Task,DT_FixedDUR2,RV_OK,TK_NotStart,A3600,pouring for slab,,0,0,8,0,0,0,8,0,0,0,,,,2011-03-07 08:00,2011-03-07 16:00,,2011-03-07 08:00,2011-03-07 16:00,2011-03-07 08:00,2011-03-07 16:00,2011-03-07 08:00,2011-03-07 16:00,,2011-03-07 08:00,2011-03-07 16:00,,PT_Normal,,,,,1CQHMReFj0eeGBeDt46mmA,vwd0zFmb/EO7ypgZATSz/A,,,Y,0,0,,,2010-08-10 10:20,2010-08-10 10:29,admin,admin,2011-03-06 08:00,2011-03-06 16:00,8
85,88000,799,11170,866,1,0,N,N,N,CP_Drtn,TT_Task,DT_FixedDrtn,RV_OK,TK_NotStart,A3610,E&M works for slab,,0,0,16,0,0,0,16,0,0,0,,,,2011-03-05 08:00,2011-03-06 16:00,,2011-03-05 08:00,2011-03-06 16:00,2011-03-05 08:00,2011-03-06 16:00,2011-03-05 08:00,2011-03-06 16:00,,2011-03-05 08:00,2011-03-06 16:00,,PT_Normal,,,,,uV4l6UO+S0m4T/cDj4nSuA,TMHnJnTJv0u/fW+VOEu8SA,,,Y,0,0,,,2010-08-10 10:20,2010-08-10 10:29,admin,admin,2011-03-03 08:00,2011-03-05 16:00,16
86,88001,799,11173,866,1,0,N,N,N,CP_Drtn,TT_Task,DT_FixedDUR2,RV_OK,TK_NotStart,A3620,Form work for slabs & columns,,0,0,96,0,0,0,96,0,0,0,,,,2011-03-08 08:00,2011-03-21 16:00,,2011-03-08 08:00,2011-03-21 16:00,2011-03-08 08:00,2011-03-21 16:00,2011-03-08 08:00,2011-03-21 16:00,,2011-03-08 08:00,2011-03-21 16:00,,PT_Normal,,,,,i9j+ocBAc0OpvRR4R6ZSVA,64kMu0mdeUW4MX6szuYnyg,,,Y,0,0,,,2010-08-10 10:26,2010-08-10 10:29,admin,admin,2011-03-07 08:00,2011-03-20 16:00,96
87,88002,799,11173,866,1,0,N,N,N,CP_Drtn,TT_Task,DT_FixedDUR2,RV_OK,TK_NotStart,A3630,Rebar for columns,,0,0,32,0,0,0,32,0,0,0,,,,2011-03-08 08:00,2011-03-12 16:00,,2011-03-08 08:00,2011-03-12 16:00,2011-03-08 08:00,2011-03-12 16:00,2011-03-08 08:00,2011-03-12 16:00,,2011-03-08 08:00,2011-03-12 16:00,,PT_Normal,,,,,jO0hs/lEzkCzSWOmAt+zLQ,8DNfdnRuq0qs1JTFg2wyUA,,,Y,0,0,,,2010-08-10 10:26,2010-08-10 10:29,admin,admin,2011-03-07 08:00,2011-03-10 16:00,32
88,88003,799,11173,866,1,0,N,N,N,CP_Drtn,TT_Task,DT_FixedDUR2,RV_OK,TK_NotStart,A3640,Pouring for columns,,0,0,8,0,0,0,8,0,0,0,,,,2011-03-15 08:00,2011-03-15 16:00,,2011-03-15 08:00,2011-03-15 16:00,2011-03-15 08:00,2011-03-15 16:00,2011-03-15 08:00,2011-03-15 16:00,,2011-03-15 08:00,2011-03-15 16:00,,PT_Normal,,,,,+tO9EwwXAECQJEjkvltnbQ,iEFCeMNDUEKsel/hKGQXsA,,,Y,0,0,,,2010-08-10 10:26,2010-08-10 10:29,admin,admin,2011-03-14 08:00,2011-03-14 16:00,8
89,88004,799,11173,866,1,0,N,N,N,CP_Drtn,TT_Task,DT_FixedDUR2,RV_OK,TK_NotStart,A3650,Rebar for slab,,0,0,40,0,0,0,40,0,0,0,,,,2011-03-16 08:00,2011-03-21 16:00,,2011-03-16 08:00,2011-03-21 16:00,2011-03-16 08:00,2011-03-21 16:00,2011-03-16 08:00,2011-03-21 16:00,,2011-03-16 08:00,2011-03-21 16:00,,PT_Normal,,,,,2WHb9eDpLk20i+BaVF13ig,DKZxzJHnlUa4ZI6ByYXVcw,,,Y,0,0,,,2010-08-10 10:26,2010-08-10 10:29,admin,admin,2011-03-15 08:00,2011-03-20 16:00,40
90,88005,799,11173,866,1,0,N,N,N,CP_Drtn,TT_Task,DT_FixedDUR2,RV_OK,TK_NotStart,A3660,pouring for slab,,0,0,8,0,0,0,8,0,0,0,,,,2011-03-22 08:00,2011-03-22 16:00,,2011-03-22 08:00,2011-03-22 16:00,2011-03-22 08:00,2011-03-22 16:00,2011-03-22 08:00,2011-03-22 16:00,,2011-03-22 08:00,2011-03-22 16:00,,PT_Normal,,,,,k5hmljJ6nUexVYzJPgFlxw,1CQHMReFj0eeGBeDt46mmA,,,Y,0,0,,,2010-08-10 10:26,2010-08-10 10:29,admin,admin,2011-03-21 08:00,2011-03-21 16:00,8
91,88006,799,11173,866,1,0,N,N,N,CP_Drtn,TT_Task,DT_FixedDrtn,RV_OK,TK_NotStart,A3670,E&M works for slab,,0,0,16,0,0,0,16,0,0,0,,,,2011-03-20 08:00,2011-03-21 16:00,,2011-03-20 08:00,2011-03-21 16:00,2011-03-20 08:00,2011-03-21 16:00,2011-03-20 08:00,2011-03-21 16:00,,2011-03-20 08:00,2011-03-21 16:00,,PT_Normal,,,,,LjWLTCIEjkGjYnsXVE963g,uV4l6UO+S0m4T/cDj4nSuA,,,Y,0,0,,,2010-08-10 10:26,2010-08-10 10:29,admin,admin,2011-03-19 08:00,2011-03-20 16:00,16
