,task_id,proj_id,wbs_id,clndr_id,est_wt,phys_complete_pct,rev_fdbk_flag,lock_plan_flag,auto_compute_act_flag,complete_pct_type,task_type,duration_type,review_type,status_code,task_code,task_name,rsrc_id,total_float_hr_cnt,free_float_hr_cnt,remain_drtn_hr_cnt,act_work_qty,remain_work_qty,target_work_qty,target_drtn_hr_cnt,target_equip_qty,act_equip_qty,remain_equip_qty,cstr_date,act_start_date,act_end_date,late_start_date,late_end_date,expect_end_date,early_start_date,early_end_date,restart_date,reend_date,target_start_date,target_end_date,review_end_date,rem_late_start_date,rem_late_end_date,cstr_type,priority_type,suspend_date,resume_date,float_path,float_path_order,guid,tmpl_guid,cstr_date2,cstr_type2,driving_path_flag,act_this_per_work_qty,act_this_per_equip_qty,external_early_start_date,external_late_end_date,create_date,update_date,create_user,update_user
0,136378,4276,21267,794,0,0,N,N,N,CP_Drtn,TT_Mile,DT_FixedDrtn,RV_OK,TK_NotStart,A1230,Commencement date,,0,0,0,0,0,0,0,0,0,0,,,,2013-01-01 09:36,2013-01-01 09:36,,2013-01-01 09:36,2013-01-01 09:36,2013-01-01 09:36,2013-01-01 09:36,2013-01-01 09:36,2013-01-01 09:36,,2013-01-01 09:36,2013-01-01 09:36,,PT_Normal,,,,,D3NFQ+pOSLihs17jm95ZRw,,,,Y,0,0,,,2012-05-17 16:10,2012-06-21 09:54,admin,admin
1,136379,4276,21267,794,0,0,N,N,N,CP_Drtn,TT_FinMile,DT_FixedDrtn,RV_OK,TK_NotStart,A1240,Project handing over,,0,0,0,0,0,0,0,0,0,0,,,,2014-03-29 09:36,2014-03-29 09:36,,2014-03-29 09:36,2014-03-29 09:36,2014-03-29 09:36,2014-03-29 09:36,2014-03-29 09:36,2014-03-29 09:36,,2014-03-29 09:36,2014-03-29 09:36,,PT_Normal,,,,,zQ1xm/laSleCKBF4ZDrieg,,,,Y,0,0,,,2012-05-17 16:10,2012-06-21 09:58,admin,admin
2,136380,4276,21267,794,0,0,N,N,N,CP_Drtn,TT_Mile,DT_FixedDrtn,RV_OK,TK_NotStart,A1250,Site handing over,,0,0,0,0,0,0,0,0,0,0,,,,2013-01-01 08:00,2013-01-01 08:00,,2013-01-01 08:00,2013-01-01 08:00,2013-01-01 08:00,2013-01-01 08:00,2013-01-01 08:00,2013-01-01 08:00,,2013-01-01 08:00,2013-01-01 08:00,,PT_Normal,,,,,YgSybddjQoKr8GygVShDMw,,,,Y,0,0,,,2012-05-17 16:10,2012-06-21 09:54,admin,admin
3,136381,4276,21267,794,0,0,N,N,N,CP_Drtn,TT_Mile,DT_FixedDrtn,RV_OK,TK_NotStart,A1260,Recieve advanced payments,,0,0,0,0,0,0,0,0,0,0,,,,2013-01-01 08:48,2013-01-01 08:48,,2013-01-01 08:48,2013-01-01 08:48,2013-01-01 08:48,2013-01-01 08:48,2013-01-01 08:48,2013-01-01 08:48,,2013-01-01 08:48,2013-01-01 08:48,,PT_Normal,,,,,NFb/FHvxT3Wu783IiOBJEg,,,,Y,0,0,,,2012-05-17 16:10,2012-06-21 09:54,admin,admin
4,136382,4276,21267,794,0,0,N,N,N,CP_Drtn,TT_Mile,DT_FixedDrtn,RV_OK,TK_NotStart,A1270,Contract signature,,0,0,0,0,0,0,0,0,0,0,,,,2013-01-01 08:00,2013-01-01 08:00,,2013-01-01 08:00,2013-01-01 08:00,2013-01-01 08:00,2013-01-01 08:00,2013-01-01 08:00,2013-01-01 08:00,,2013-01-01 08:00,2013-01-01 08:00,,PT_Normal,,,,,z6bhEtQARAaNUQEJtCLb1A,,,,Y,0,0,,,2012-05-17 16:10,2012-06-21 09:54,admin,admin
5,136383,4276,21268,794,1,0,N,N,N,CP_Drtn,TT_Task,DT_FixedDUR2,RV_OK,TK_NotStart,A1200,Mobilization,,0,0,240,0,0,0,240,0,0,0,,,,2013-01-01 09:36,2013-01-31 09:36,,2013-01-01 09:36,2013-01-31 09:36,2013-01-01 09:36,2013-01-31 09:36,2013-01-01 09:36,2013-01-31 09:36,,2013-01-01 09:36,2013-01-31 09:36,,PT_Normal,,,,,osPN9U8fS3KcG8z6dCgSoA,9g1sE2VB1U6pIuVC6r00HQ,,,Y,0,0,,,2012-05-17 16:10,2012-06-21 09:54,admin,admin
6,136384,4276,21268,794,1,0,N,N,N,CP_Drtn,TT_Task,DT_FixedDUR2,RV_OK,TK_NotStart,A1210,Demobilization,,0,0,56,0,0,0,56,0,0,0,,,,2014-03-22 09:36,2014-03-29 09:36,,2014-03-22 09:36,2014-03-29 09:36,2014-03-22 09:36,2014-03-29 09:36,2014-03-22 09:36,2014-03-29 09:36,,2014-03-22 09:36,2014-03-29 09:36,,PT_Normal,,,,,4jLIYaqHRhS09hAn3FPaKg,6UtKfu3ZSky5fTxS8brGMA,,,Y,0,0,,,2012-05-17 16:10,2012-06-21 09:58,admin,admin
7,136411,4276,21331,794,1,0,N,N,N,CP_Drtn,TT_Task,DT_FixedDUR2,RV_OK,TK_NotStart,V-1-10,P.c footing,,0,0,80,0,0,0,80,0,0,0,,,,2013-02-14 09:36,2013-02-24 09:36,,2013-02-14 09:36,2013-02-24 09:36,2013-02-14 09:36,2013-02-24 09:36,2013-02-14 09:36,2013-02-24 09:36,,2013-02-14 09:36,2013-02-24 09:36,,PT_Normal,,,,,SL+hO0E/Qm6Fd5F/q/3bYQ,rWhBAZkh+UeQbamarZIS4w,,,Y,0,0,,,2012-05-17 16:10,2012-06-21 09:54,admin,admin
8,136412,4276,21331,794,1,0,N,N,N,CP_Drtn,TT_Task,DT_FixedDUR2,RV_OK,TK_NotStart,V-1-20,R.c concrete foundations,3926,0,0,112,0,400,400,112,0,0,0,,,,2013-02-24 09:36,2013-03-10 09:36,,2013-02-24 09:36,2013-03-10 09:36,2013-02-24 09:36,2013-03-10 09:36,2013-02-24 09:36,2013-03-10 09:36,,2013-02-24 09:36,2013-03-10 09:36,,PT_Normal,,,,,SudEEe2pTkWxgHjKKrfA6A,fVuZKCCEqUqoIXD0vyQdjg,,,Y,0,0,,,2012-05-17 16:10,2012-06-21 09:54,admin,admin
9,136413,4276,21331,794,1,0,N,N,N,CP_Drtn,TT_Task,DT_FixedDUR2,RV_OK,TK_NotStart,V-1-60,Backfilling under slab on grade,,0,0,56,0,0,0,56,0,0,0,,,,2013-04-07 09:36,2013-04-14 09:36,,2013-04-07 09:36,2013-04-14 09:36,2013-04-07 09:36,2013-04-14 09:36,2013-04-07 09:36,2013-04-14 09:36,,2013-04-07 09:36,2013-04-14 09:36,,PT_Normal,,,,,bIpo8TBoRTmgMKDrbFwAfg,P+laH7BehEKLWy0RRQUK/A,,,Y,0,0,,,2012-05-17 16:10,2012-06-21 09:54,admin,admin
10,136414,4276,21331,794,1,0,N,N,N,CP_Drtn,TT_Task,DT_FixedDUR2,RV_OK,TK_NotStart,V-1-125,Roof parapet,,1904,0,80,0,0,0,80,0,0,0,,,,2014-02-18 09:36,2014-02-28 09:36,,2013-06-25 09:36,2013-07-05 09:36,2013-06-25 09:36,2013-07-05 09:36,2013-06-25 09:36,2013-07-05 09:36,,2014-02-18 09:36,2014-02-28 09:36,,PT_Normal,,,,,aJB0LdJ9S72qQz9eud6H5g,,,,N,0,0,,,2012-05-17 16:10,2012-06-21 09:57,admin,admin
11,136415,4276,21331,794,1,0,N,N,N,CP_Drtn,TT_Task,DT_FixedDUR2,RV_OK,TK_NotStart,V-1-30,Ground floor columns,,0,0,112,0,200,200,112,0,0,0,,,,2013-03-10 09:36,2013-03-24 09:36,,2013-03-10 09:36,2013-03-24 09:36,2013-03-10 09:36,2013-03-24 09:36,2013-03-10 09:36,2013-03-24 09:36,,2013-03-10 09:36,2013-03-24 09:36,,PT_Normal,,,,,O27Ux1mTTWaY1l9woJcosw,5yj8BGn/C0W6NJuhsTVhXg,,,Y,0,0,,,2012-05-17 16:10,2012-06-21 09:54,admin,admin
12,136416,4276,21331,794,1,0,N,N,N,CP_Drtn,TT_Task,DT_FixedDUR2,RV_OK,TK_NotStart,V-1-70,Ground floor slab&beams&staircase,,0,0,200,0,1600,1600,200,0,0,0,,,,2013-04-14 09:36,2013-05-09 09:36,,2013-04-14 09:36,2013-05-09 09:36,2013-04-14 09:36,2013-05-09 09:36,2013-04-14 09:36,2013-05-09 09:36,,2013-04-14 09:36,2013-05-09 09:36,,PT_Normal,,,,,YXp99zgdQJ+881xKBVOsrw,K8QiAQZJ8E2G/KYlcddHdA,,,Y,0,0,,,2012-05-17 16:10,2012-06-21 09:54,admin,admin
13,136417,4276,21331,794,1,0,N,N,N,CP_Drtn,TT_Task,DT_FixedDUR2,RV_OK,TK_NotStart,V-1-80,First floor columns,3926,8,8,112,0,200,200,112,0,0,0,,,,2013-05-10 09:36,2013-05-24 09:36,,2013-05-09 09:36,2013-05-23 09:36,2013-05-09 09:36,2013-05-23 09:36,2013-05-09 09:36,2013-05-23 09:36,,2013-05-10 09:36,2013-05-24 09:36,,PT_Normal,,,,,xirgDdJmQEuTSvohLksokg,eGnUQOIpGkKxFd9hCQ2QWw,,,N,0,0,,,2012-05-17 16:10,2012-06-21 09:54,admin,admin
14,136418,4276,21331,794,1,0,N,N,N,CP_Drtn,TT_Task,DT_FixedDUR2,RV_OK,TK_NotStart,V-1-90,First floor slab&beams&staircase,3926,0,0,200,0,1600,1600,200,0,0,0,,,,2013-05-24 09:36,2013-06-18 09:36,,2013-05-24 09:36,2013-06-18 09:36,2013-05-24 09:36,2013-06-18 09:36,2013-05-24 09:36,2013-06-18 09:36,,2013-05-24 09:36,2013-06-18 09:36,,PT_Normal,,,,,C3TRaUTpTrya+qiPXkn9yg,qchE/fPDA0mMKwCLVYROIg,,,Y,0,0,,,2012-05-17 16:10,2012-06-21 09:54,admin,admin
15,136419,4276,21331,794,1,0,N,N,N,CP_Drtn,TT_Task,DT_FixedDUR2,RV_OK,TK_NotStart,V-1-100,Roof columns,3926,0,0,56,0,132,132,56,0,0,0,,,,2013-06-18 09:36,2013-06-25 09:36,,2013-06-18 09:36,2013-06-25 09:36,2013-06-18 09:36,2013-06-25 09:36,2013-06-18 09:36,2013-06-25 09:36,,2013-06-18 09:36,2013-06-25 09:36,,PT_Normal,,,,,VS3gzRjvTvyY0NN33KszRg,+QYvubRQAkGs6mSahC7qWg,,,Y,0,0,,,2012-05-17 16:10,2012-06-21 09:54,admin,admin
16,136420,4276,21331,794,1,0,N,N,N,CP_Drtn,TT_Task,DT_FixedDUR2,RV_OK,TK_NotStart,V-1-120,Roof slab,3926,0,0,80,0,400,400,80,0,0,0,,,,2013-06-25 09:36,2013-07-05 09:36,,2013-06-25 09:36,2013-07-05 09:36,2013-06-25 09:36,2013-07-05 09:36,2013-06-25 09:36,2013-07-05 09:36,,2013-06-25 09:36,2013-07-05 09:36,,PT_Normal,,,,,OgyJkJMwSxCZo42JCPWjag,3WqknFkuD0eWsVgJp9+EuA,,,Y,0,0,,,2012-05-17 16:10,2012-06-21 09:54,admin,admin
17,136421,4276,21331,794,1,0,N,N,N,CP_Drtn,TT_Task,DT_FixedDUR2,RV_OK,TK_NotStart,V-1-110,Slab on grade(R.C&P.C),,1624,80,40,0,0,0,40,0,0,0,,,,2014-01-07 09:36,2014-01-12 09:36,,2013-06-18 09:36,2013-06-23 09:36,2013-06-18 09:36,2013-06-23 09:36,2013-06-18 09:36,2013-06-23 09:36,,2014-01-07 09:36,2014-01-12 09:36,,PT_Normal,,,,,AtY/AJxLT4u7/Q6yuaqAWA,dEOM/i4yIkSiT98sBjOx3g,,,N,0,0,,,2012-05-17 16:10,2012-06-21 09:57,admin,admin
18,136422,4276,21331,794,1,0,N,N,N,CP_Drtn,TT_Task,DT_FixedDUR2,RV_OK,TK_NotStart,V-1-40,Masonry under slab on grade,3927,0,0,80,0,400,400,80,0,0,0,,,,2013-03-24 09:36,2013-04-03 09:36,,2013-03-24 09:36,2013-04-03 09:36,2013-03-24 09:36,2013-04-03 09:36,2013-03-24 09:36,2013-04-03 09:36,,2013-03-24 09:36,2013-04-03 09:36,,PT_Normal,,,,,bUHrB25ZQcSK8ELca2gIyA,kdLCU35NK06AA/H0CJ4kcQ,,,Y,0,0,,,2012-05-17 16:10,2012-06-21 09:54,admin,admin
19,136423,4276,21332,794,1,0,N,N,N,CP_Drtn,TT_Task,DT_FixedDUR2,RV_OK,TK_NotStart,V-1-140,Masonry works,3927,1544,0,160,0,1700,1700,160,0,0,0,,,,2014-01-12 09:36,2014-02-01 09:36,,2013-07-03 09:36,2013-07-23 09:36,2013-07-03 09:36,2013-07-23 09:36,2013-07-03 09:36,2013-07-23 09:36,,2014-01-12 09:36,2014-02-01 09:36,,PT_Normal,,,,,4T1Pl75SRj6Gulxr2ndXOA,CJq6zTuHLkWrIYXM74TVbA,,,N,0,0,,,2012-05-17 16:10,2012-06-21 09:57,admin,admin
20,136424,4276,21331,794,1,0,N,N,N,CP_Drtn,TT_Task,DT_FixedDUR2,RV_OK,TK_NotStart,V-1-50,Footings&masonry insulation,,0,0,32,0,0,0,32,0,0,0,,,,2013-04-03 09:36,2013-04-07 09:36,,2013-04-03 09:36,2013-04-07 09:36,2013-04-03 09:36,2013-04-07 09:36,2013-04-03 09:36,2013-04-07 09:36,,2013-04-03 09:36,2013-04-07 09:36,,PT_Normal,,,,,L+1Tx9DaRhujTwZt+rcEDA,EV8tQZqf6ESVKFIk0OiwsA,,,Y,0,0,,,2012-05-17 16:10,2012-06-21 09:54,admin,admin
21,136425,4276,21332,794,1,0,N,N,N,CP_Drtn,TT_Task,DT_FixedDUR2,RV_OK,TK_NotStart,V-1-160,Thermal insulation,,1904,0,56,0,0,0,56,0,0,0,,,,2014-03-12 09:36,2014-03-19 09:36,,2013-07-17 09:36,2013-07-24 09:36,2013-07-17 09:36,2013-07-24 09:36,2013-07-17 09:36,2013-07-24 09:36,,2014-03-12 09:36,2014-03-19 09:36,,PT_Normal,,,,,oEcxiSNfRGiivppOh7c0yg,i4Llo7ZmyE2/VD2qHcehjQ,,,N,0,0,,,2012-05-17 16:10,2012-06-21 09:57,admin,admin
22,136426,4276,21332,794,1,0,N,N,N,CP_Drtn,TT_Task,DT_FixedDUR2,RV_OK,TK_NotStart,V-1-150,Water proofing insulation,,1904,0,56,0,0,0,56,0,0,0,,,,2014-03-05 09:36,2014-03-12 09:36,,2013-07-10 09:36,2013-07-17 09:36,2013-07-10 09:36,2013-07-17 09:36,2013-07-10 09:36,2013-07-17 09:36,,2014-03-05 09:36,2014-03-12 09:36,,PT_Normal,,,,,BPblkb6UQUKJSte5PM9xcg,RXtnIQVT2km1J+qBz2SrGw,,,N,0,0,,,2012-05-17 16:10,2012-06-21 09:57,admin,admin
23,136427,4276,21332,794,1,0,N,N,N,CP_Drtn,TT_Task,DT_FixedDUR2,RV_OK,TK_NotStart,V-1-130,Slopped concrete,,1904,0,40,0,0,0,40,0,0,0,,,,2014-02-28 09:36,2014-03-05 09:36,,2013-07-05 09:36,2013-07-10 09:36,2013-07-05 09:36,2013-07-10 09:36,2013-07-05 09:36,2013-07-10 09:36,,2014-02-28 09:36,2014-03-05 09:36,,PT_Normal,,,,,/DGFa8ThS9e1BRoddDFQNQ,v7RYkWjI6EyC3oEf/ySU9A,,,N,0,0,,,2012-05-17 16:10,2012-06-21 09:57,admin,admin
24,136428,4276,21332,794,1,0,N,N,N,CP_Drtn,TT_Task,DT_FixedDUR2,RV_OK,TK_NotStart,V-1-170,Terrazzo tiles,,1904,1904,80,0,0,0,80,0,0,0,,,,2014-03-19 09:36,2014-03-29 09:36,,2013-07-24 09:36,2013-08-03 09:36,2013-07-24 09:36,2013-08-03 09:36,2013-07-24 09:36,2013-08-03 09:36,,2014-03-19 09:36,2014-03-29 09:36,,PT_Normal,,,,,1QKrwqUMQTiajKqZpAe48Q,hqnubqZTckaJEFiWb5ejgg,,,N,0,0,,,2012-05-17 16:10,2012-06-21 09:57,admin,admin
25,136429,4276,21332,794,1,0,N,N,N,CP_Drtn,TT_Task,DT_FixedDUR2,RV_OK,TK_NotStart,V-1-180,External plaster works,,1544,0,168,0,400,400,168,0,0,0,,,,2014-02-01 09:36,2014-02-22 09:36,,2013-07-23 09:36,2013-08-13 09:36,2013-07-23 09:36,2013-08-13 09:36,2013-07-23 09:36,2013-08-13 09:36,,2014-02-01 09:36,2014-02-22 09:36,,PT_Normal,,,,,Hx7NDdSkT8+MeugFYrmodg,vJvp6gwuTEGwkZOdmZmDww,,,N,0,0,,,2012-05-17 16:10,2012-06-21 09:57,admin,admin
26,136430,4276,21332,794,1,0,N,N,N,CP_Drtn,TT_Task,DT_FixedDUR2,RV_OK,TK_NotStart,V-1-200,Flooring works(garnite& marbles),,1544,0,80,0,0,0,80,0,0,0,,,,2014-02-22 09:36,2014-03-04 09:36,,2013-08-13 09:36,2013-08-23 09:36,2013-08-13 09:36,2013-08-23 09:36,2013-08-13 09:36,2013-08-23 09:36,,2014-02-22 09:36,2014-03-04 09:36,,PT_Normal,,,,,o4sXM0g6RA+9FioMBCkkjA,lYHio5sIrU65FimKnSL+MA,,,N,0,0,,,2012-05-17 16:10,2012-06-21 09:57,admin,admin
27,136431,4276,21332,794,1,0,N,N,N,CP_Drtn,TT_Task,DT_FixedDUR2,RV_OK,TK_NotStart,V-1-210,Stone cladding,,1568,24,56,0,0,0,56,0,0,0,,,,2014-02-25 09:36,2014-03-04 09:36,,2013-08-13 09:36,2013-08-20 09:36,2013-08-13 09:36,2013-08-20 09:36,2013-08-13 09:36,2013-08-20 09:36,,2014-02-25 09:36,2014-03-04 09:36,,PT_Normal,,,,,G0MfRwxET2uaplX4vAwJXg,,,,N,0,0,,,2012-05-17 16:10,2012-06-21 09:57,admin,admin
28,136432,4276,21332,794,1,0,N,N,N,CP_Drtn,TT_Task,DT_FixedDUR2,RV_OK,TK_NotStart,V-1-220,External painting,4332,1544,0,120,0,400,400,120,0,0,0,,,,2014-03-04 09:36,2014-03-19 09:36,,2013-08-23 09:36,2013-09-07 09:36,2013-08-23 09:36,2013-09-07 09:36,2013-08-23 09:36,2013-09-07 09:36,,2014-03-04 09:36,2014-03-19 09:36,,PT_Normal,,,,,rsdHd8BLTh29lqHVKJ6Rtw,Bzy4KMKJRkKejLAEfUGmcA,,,N,0,0,,,2012-05-17 16:10,2012-06-21 09:57,admin,admin
29,136433,4276,21332,794,1,0,N,N,N,CP_Drtn,TT_Task,DT_FixedDUR2,RV_OK,TK_NotStart,V-1-230,Doors & windows erection,,1544,1544,80,0,0,0,80,0,0,0,,,,2014-03-19 09:36,2014-03-29 09:36,,2013-09-07 09:36,2013-09-17 09:36,2013-09-07 09:36,2013-09-17 09:36,2013-09-07 09:36,2013-09-17 09:36,,2014-03-19 09:36,2014-03-29 09:36,,PT_Normal,,,,,SPvqEH6sRTSe2ilKQjbshQ,gWuwP0LZfkGTxvwjcqmJig,,,N,0,0,,,2012-05-17 16:10,2012-06-21 09:58,admin,admin
30,136434,4276,21332,794,1,0,N,N,N,CP_Drtn,TT_Task,DT_FixedDUR2,RV_OK,TK_NotStart,V-1-240,Wood cladding,,1544,1544,80,0,0,0,80,0,0,0,,,,2014-03-19 09:36,2014-03-29 09:36,,2013-09-07 09:36,2013-09-17 09:36,2013-09-07 09:36,2013-09-17 09:36,2013-09-07 09:36,2013-09-17 09:36,,2014-03-19 09:36,2014-03-29 09:36,,PT_Normal,,,,,XA6QPj+ZSreaZw2MHmPUCg,,,,N,0,0,,,2012-05-17 16:10,2012-06-21 09:58,admin,admin
31,136435,4276,21332,794,1,0,N,N,N,CP_Drtn,TT_Task,DT_FixedDUR2,RV_OK,TK_NotStart,V-1-250,Hand rails erection,,1584,1584,40,0,0,0,40,0,0,0,,,,2014-03-24 09:36,2014-03-29 09:36,,2013-09-07 09:36,2013-09-12 09:36,2013-09-07 09:36,2013-09-12 09:36,2013-09-07 09:36,2013-09-12 09:36,,2014-03-24 09:36,2014-03-29 09:36,,PT_Normal,,,,,tLc0G/M4RSqtzJPZuBDhlQ,,,,N,0,0,,,2012-05-17 16:10,2012-06-21 09:58,admin,admin
32,136436,4276,21332,794,1,0,N,N,N,CP_Drtn,TT_Task,DT_FixedDUR2,RV_OK,TK_NotStart,V-1-190,Mechanical & electrical works,,1792,1792,200,0,0,0,200,0,0,0,,,,2014-03-04 09:36,2014-03-29 09:36,,2013-07-23 09:36,2013-08-17 09:36,2013-07-23 09:36,2013-08-17 09:36,2013-07-23 09:36,2013-08-17 09:36,,2014-03-04 09:36,2014-03-29 09:36,,PT_Normal,,,,,PISqpKXMTrmlCMpmVSJhwQ,Zztkg30/z0+sneGM0sNXYQ,,,N,0,0,,,2012-05-17 16:10,2012-06-21 09:57,admin,admin
33,136489,4276,21332,794,1,0,N,N,N,CP_Drtn,TT_Task,DT_FixedDUR2,RV_OK,TK_NotStart,V-1-260,Internal plaster works,,1792,0,160,0,0,0,160,0,0,0,,,,2014-03-04 09:36,2014-03-24 09:36,,2013-07-23 09:36,2013-08-12 09:36,2013-07-23 09:36,2013-08-12 09:36,2013-07-23 09:36,2013-08-12 09:36,,2014-03-04 09:36,2014-03-24 09:36,,PT_Normal,,,,,RsyhsGTLo0eJVjH+d1WA9Q,,,,N,0,0,,,2012-05-17 16:20,2012-06-21 09:57,admin,admin
34,136544,4276,21331,794,1,0,N,N,N,CP_Drtn,TT_Task,DT_FixedDUR2,RV_OK,TK_NotStart,V-1-5,Excavation,,0,0,112,0,0,0,112,0,0,0,,,,2013-01-31 09:36,2013-02-14 09:36,,2013-01-31 09:36,2013-02-14 09:36,2013-01-31 09:36,2013-02-14 09:36,2013-01-31 09:36,2013-02-14 09:36,,2013-01-31 09:36,2013-02-14 09:36,,PT_Normal,,,,,u5gvmFDjY0Ooq2wddKewsw,,,,Y,0,0,,,2012-05-17 16:50,2012-06-21 09:54,NotPrmUser,admin
35,136545,4276,21334,794,1,0,N,N,N,CP_Drtn,TT_Task,DT_FixedDUR2,RV_OK,TK_NotStart,V-3-10,P.c footing,,0,0,80,0,0,0,80,0,0,0,,,,2013-08-21 09:36,2013-08-31 09:36,,2013-08-21 09:36,2013-08-31 09:36,2013-08-21 09:36,2013-08-31 09:36,2013-08-21 09:36,2013-08-31 09:36,,2013-08-21 09:36,2013-08-31 09:36,,PT_Normal,,,,,yGW5ChunH0SzyBQBXtgtWw,SL+hO0E/Qm6Fd5F/q/3bYQ,,,Y,0,0,,,2012-05-17 16:56,2012-06-21 09:54,NotPrmUser,admin
36,136546,4276,21334,794,1,0,N,N,N,CP_Drtn,TT_Task,DT_FixedDUR2,RV_OK,TK_NotStart,V-3-20,R.c concrete foundations,3926,0,0,112,0,400,400,112,0,0,0,,,,2013-08-31 09:36,2013-09-14 09:36,,2013-08-31 09:36,2013-09-14 09:36,2013-08-31 09:36,2013-09-14 09:36,2013-08-31 09:36,2013-09-14 09:36,,2013-08-31 09:36,2013-09-14 09:36,,PT_Normal,,,,,quViZt4YUkKoUt6xU3CwkA,SudEEe2pTkWxgHjKKrfA6A,,,Y,0,0,,,2012-05-17 16:56,2012-06-21 09:54,NotPrmUser,admin
37,136547,4276,21334,794,1,0,N,N,N,CP_Drtn,TT_Task,DT_FixedDUR2,RV_OK,TK_NotStart,V-3-30,Backfilling under slab on grade,,0,0,56,0,0,0,56,0,0,0,,,,2013-10-08 09:36,2013-10-15 09:36,,2013-10-08 09:36,2013-10-15 09:36,2013-10-08 09:36,2013-10-15 09:36,2013-10-08 09:36,2013-10-15 09:36,,2013-10-08 09:36,2013-10-15 09:36,,PT_Normal,,,,,L+5SbbAtV0Kph60M0Fqh/g,bIpo8TBoRTmgMKDrbFwAfg,,,Y,0,0,,,2012-05-17 16:56,2012-06-21 09:54,NotPrmUser,admin
38,136548,4276,21334,794,1,0,N,N,N,CP_Drtn,TT_Task,DT_FixedDUR2,RV_OK,TK_NotStart,V-3-40,Roof parapet,,512,0,80,0,0,0,80,0,0,0,,,,2014-02-18 09:36,2014-02-28 09:36,,2013-12-16 09:36,2013-12-26 09:36,2013-12-16 09:36,2013-12-26 09:36,2013-12-16 09:36,2013-12-26 09:36,,2014-02-18 09:36,2014-02-28 09:36,,PT_Normal,,,,,pwPONC5l00SvrJlUhe6B/w,aJB0LdJ9S72qQz9eud6H5g,,,N,0,0,,,2012-05-17 16:56,2012-06-21 09:57,NotPrmUser,admin
39,136549,4276,21334,794,1,0,N,N,N,CP_Drtn,TT_Task,DT_FixedDUR2,RV_OK,TK_NotStart,V-3-50,Ground floor columns,,0,0,80,0,200,200,80,0,0,0,,,,2013-09-14 09:36,2013-09-24 09:36,,2013-09-14 09:36,2013-09-24 09:36,2013-09-14 09:36,2013-09-24 09:36,2013-09-14 09:36,2013-09-24 09:36,,2013-09-14 09:36,2013-09-24 09:36,,PT_Normal,,,,,1TFvmqXb10m/vDpHqqa8pA,O27Ux1mTTWaY1l9woJcosw,,,Y,0,0,,,2012-05-17 16:56,2012-06-21 09:54,NotPrmUser,admin
40,136550,4276,21334,794,1,0,N,N,N,CP_Drtn,TT_Task,DT_FixedDUR2,RV_OK,TK_NotStart,V-3-60,Ground floor slab&beams&staircase,,0,0,160,0,1600,1600,160,0,0,0,,,,2013-10-15 09:36,2013-11-04 09:36,,2013-10-15 09:36,2013-11-04 09:36,2013-10-15 09:36,2013-11-04 09:36,2013-10-15 09:36,2013-11-04 09:36,,2013-10-15 09:36,2013-11-04 09:36,,PT_Normal,,,,,yl9yPymk+EOMFn9JcJdq5g,YXp99zgdQJ+881xKBVOsrw,,,Y,0,0,,,2012-05-17 16:56,2012-06-21 09:54,NotPrmUser,admin
41,136551,4276,21334,794,1,0,N,N,N,CP_Drtn,TT_Task,DT_FixedDUR2,RV_OK,TK_NotStart,V-3-70,First floor columns,3926,40,40,80,0,200,200,80,0,0,0,,,,2013-11-09 09:36,2013-11-19 09:36,,2013-11-04 09:36,2013-11-14 09:36,2013-11-04 09:36,2013-11-14 09:36,2013-11-04 09:36,2013-11-14 09:36,,2013-11-09 09:36,2013-11-19 09:36,,PT_Normal,,,,,iAwY2lwAPEivBIvHw4rDeg,xirgDdJmQEuTSvohLksokg,,,N,0,0,,,2012-05-17 16:56,2012-06-21 09:54,NotPrmUser,admin
42,136552,4276,21334,794,1,0,N,N,N,CP_Drtn,TT_Task,DT_FixedDUR2,RV_OK,TK_NotStart,V-3-80,First floor slab&beams&staircase,3926,0,0,160,0,1600,1600,160,0,0,0,,,,2013-11-19 09:36,2013-12-09 09:36,,2013-11-19 09:36,2013-12-09 09:36,2013-11-19 09:36,2013-12-09 09:36,2013-11-19 09:36,2013-12-09 09:36,,2013-11-19 09:36,2013-12-09 09:36,,PT_Normal,,,,,PJkoqN00pUmrhrArjWlq+g,C3TRaUTpTrya+qiPXkn9yg,,,Y,0,0,,,2012-05-17 16:56,2012-06-21 09:54,NotPrmUser,admin
43,136553,4276,21334,794,1,0,N,N,N,CP_Drtn,TT_Task,DT_FixedDUR2,RV_OK,TK_NotStart,V-3-90,Roof columns,3926,512,0,56,0,132,132,56,0,0,0,,,,2014-02-11 09:36,2014-02-18 09:36,,2013-12-09 09:36,2013-12-16 09:36,2013-12-09 09:36,2013-12-16 09:36,2013-12-09 09:36,2013-12-16 09:36,,2014-02-11 09:36,2014-02-18 09:36,,PT_Normal,,,,,As1nj56BskeFcFM8KoBZlQ,VS3gzRjvTvyY0NN33KszRg,,,N,0,0,,,2012-05-17 16:56,2012-06-21 09:57,NotPrmUser,admin
44,136554,4276,21334,794,1,0,N,N,N,CP_Drtn,TT_Task,DT_FixedDUR2,RV_OK,TK_NotStart,V-3-100,Roof slab,3926,512,0,80,0,400,400,80,0,0,0,,,,2014-02-18 09:36,2014-02-28 09:36,,2013-12-16 09:36,2013-12-26 09:36,2013-12-16 09:36,2013-12-26 09:36,2013-12-16 09:36,2013-12-26 09:36,,2014-02-18 09:36,2014-02-28 09:36,,PT_Normal,,,,,khtDEBK/mk2vzWxVydm/Dw,OgyJkJMwSxCZo42JCPWjag,,,N,0,0,,,2012-05-17 16:56,2012-06-21 09:57,NotPrmUser,admin
45,136555,4276,21334,794,1,0,N,N,N,CP_Drtn,TT_Task,DT_FixedDUR2,RV_OK,TK_NotStart,V-3-110,Slab on grade(R.C&P.C),,80,80,40,0,0,0,40,0,0,0,,,,2013-12-19 09:36,2013-12-24 09:36,,2013-12-09 09:36,2013-12-14 09:36,2013-12-09 09:36,2013-12-14 09:36,2013-12-09 09:36,2013-12-14 09:36,,2013-12-19 09:36,2013-12-24 09:36,,PT_Normal,,,,,9Kdnr/a5FE2wKZH+QXcfOw,AtY/AJxLT4u7/Q6yuaqAWA,,,N,0,0,,,2012-05-17 16:56,2012-06-21 09:54,NotPrmUser,admin
46,136556,4276,21334,794,1,0,N,N,N,CP_Drtn,TT_Task,DT_FixedDUR2,RV_OK,TK_NotStart,V-3-120,Masonry under slab on grade,3927,0,0,80,0,400,400,80,0,0,0,,,,2013-09-24 09:36,2013-10-04 09:36,,2013-09-24 09:36,2013-10-04 09:36,2013-09-24 09:36,2013-10-04 09:36,2013-09-24 09:36,2013-10-04 09:36,,2013-09-24 09:36,2013-10-04 09:36,,PT_Normal,,,,,VmFgyLalO0ytItp5naiPhA,bUHrB25ZQcSK8ELca2gIyA,,,Y,0,0,,,2012-05-17 16:56,2012-06-21 09:54,NotPrmUser,admin
47,136557,4276,21335,794,1,0,N,N,N,CP_Drtn,TT_Task,DT_FixedDUR2,RV_OK,TK_NotStart,V-3-130,Masonry works,3927,0,0,160,0,1700,1700,160,0,0,0,,,,2013-12-24 09:36,2014-01-13 09:36,,2013-12-24 09:36,2014-01-13 09:36,2013-12-24 09:36,2014-01-13 09:36,2013-12-24 09:36,2014-01-13 09:36,,2013-12-24 09:36,2014-01-13 09:36,,PT_Normal,,,,,TAkb7yDE/ku/CoUuwr7twQ,4T1Pl75SRj6Gulxr2ndXOA,,,Y,0,0,,,2012-05-17 16:56,2012-06-21 09:54,NotPrmUser,admin
48,136558,4276,21334,794,1,0,N,N,N,CP_Drtn,TT_Task,DT_FixedDUR2,RV_OK,TK_NotStart,V-3-140,Footings&masonry insulation,,0,0,32,0,0,0,32,0,0,0,,,,2013-10-04 09:36,2013-10-08 09:36,,2013-10-04 09:36,2013-10-08 09:36,2013-10-04 09:36,2013-10-08 09:36,2013-10-04 09:36,2013-10-08 09:36,,2013-10-04 09:36,2013-10-08 09:36,,PT_Normal,,,,,7cDIU72Uz0GwYSw2o3EG1w,L+1Tx9DaRhujTwZt+rcEDA,,,Y,0,0,,,2012-05-17 16:56,2012-06-21 09:54,NotPrmUser,admin
49,136559,4276,21335,794,1,0,N,N,N,CP_Drtn,TT_Task,DT_FixedDUR2,RV_OK,TK_NotStart,V-3-150,Thermal insulation,,512,0,56,0,0,0,56,0,0,0,,,,2014-03-12 09:36,2014-03-19 09:36,,2014-01-07 09:36,2014-01-14 09:36,2014-01-07 09:36,2014-01-14 09:36,2014-01-07 09:36,2014-01-14 09:36,,2014-03-12 09:36,2014-03-19 09:36,,PT_Normal,,,,,RdSOsjcM2UaaAjpELYZTYA,oEcxiSNfRGiivppOh7c0yg,,,N,0,0,,,2012-05-17 16:56,2012-06-21 09:57,NotPrmUser,admin
50,136560,4276,21335,794,1,0,N,N,N,CP_Drtn,TT_Task,DT_FixedDUR2,RV_OK,TK_NotStart,V-3-160,Water proofing insulation,,512,0,56,0,0,0,56,0,0,0,,,,2014-03-05 09:36,2014-03-12 09:36,,2013-12-31 09:36,2014-01-07 09:36,2013-12-31 09:36,2014-01-07 09:36,2013-12-31 09:36,2014-01-07 09:36,,2014-03-05 09:36,2014-03-12 09:36,,PT_Normal,,,,,X/poCASoWEmbyJO3ov45fQ,BPblkb6UQUKJSte5PM9xcg,,,N,0,0,,,2012-05-17 16:56,2012-06-21 09:57,NotPrmUser,admin
51,136561,4276,21335,794,1,0,N,N,N,CP_Drtn,TT_Task,DT_FixedDUR2,RV_OK,TK_NotStart,V-3-170,Slopped concrete,,512,0,40,0,0,0,40,0,0,0,,,,2014-02-28 09:36,2014-03-05 09:36,,2013-12-26 09:36,2013-12-31 09:36,2013-12-26 09:36,2013-12-31 09:36,2013-12-26 09:36,2013-12-31 09:36,,2014-02-28 09:36,2014-03-05 09:36,,PT_Normal,,,,,niY8x+7JN0+sVKXX7kWmfA,/DGFa8ThS9e1BRoddDFQNQ,,,N,0,0,,,2012-05-17 16:56,2012-06-21 09:57,NotPrmUser,admin
52,136562,4276,21335,794,1,0,N,N,N,CP_Drtn,TT_Task,DT_FixedDUR2,RV_OK,TK_NotStart,V-3-180,Terrazzo tiles,,512,512,80,0,0,0,80,0,0,0,,,,2014-03-19 09:36,2014-03-29 09:36,,2014-01-14 09:36,2014-01-24 09:36,2014-01-14 09:36,2014-01-24 09:36,2014-01-14 09:36,2014-01-24 09:36,,2014-03-19 09:36,2014-03-29 09:36,,PT_Normal,,,,,NmAw9Bkmx0euOZOkIS/xgQ,1QKrwqUMQTiajKqZpAe48Q,,,N,0,0,,,2012-05-17 16:56,2012-06-21 09:57,NotPrmUser,admin
53,136563,4276,21335,794,1,0,N,N,N,CP_Drtn,TT_Task,DT_FixedDUR2,RV_OK,TK_NotStart,V-3-190,External plaster works,,0,0,200,0,400,400,200,0,0,0,,,,2014-01-13 09:36,2014-02-07 09:36,,2014-01-13 09:36,2014-02-07 09:36,2014-01-13 09:36,2014-02-07 09:36,2014-01-13 09:36,2014-02-07 09:36,,2014-01-13 09:36,2014-02-07 09:36,,PT_Normal,,,,,Naw6HOZN+UWExkWJ5ejjSg,Hx7NDdSkT8+MeugFYrmodg,,,Y,0,0,,,2012-05-17 16:56,2012-06-21 09:54,NotPrmUser,admin
54,136564,4276,21335,794,1,0,N,N,N,CP_Drtn,TT_Task,DT_FixedDUR2,RV_OK,TK_NotStart,V-3-200,Flooring works(garnite& marbles),,0,0,120,0,0,0,120,0,0,0,,,,2014-02-07 09:36,2014-02-22 09:36,,2014-02-07 09:36,2014-02-22 09:36,2014-02-07 09:36,2014-02-22 09:36,2014-02-07 09:36,2014-02-22 09:36,,2014-02-07 09:36,2014-02-22 09:36,,PT_Normal,,,,,1E3F5PUM9U6DNDPPG6gIuA,o4sXM0g6RA+9FioMBCkkjA,,,Y,0,0,,,2012-05-17 16:56,2012-06-21 09:54,NotPrmUser,admin
55,136565,4276,21335,794,1,0,N,N,N,CP_Drtn,TT_Task,DT_FixedDUR2,RV_OK,TK_NotStart,V-3-210,Stone cladding,,64,64,56,0,0,0,56,0,0,0,,,,2014-02-15 09:36,2014-02-22 09:36,,2014-02-07 09:36,2014-02-14 09:36,2014-02-07 09:36,2014-02-14 09:36,2014-02-07 09:36,2014-02-14 09:36,,2014-02-15 09:36,2014-02-22 09:36,,PT_Normal,,,,,QqUqW151ukGyVlQCdRo26w,G0MfRwxET2uaplX4vAwJXg,,,N,0,0,,,2012-05-17 16:56,2012-06-21 09:57,NotPrmUser,admin
56,136566,4276,21335,794,1,0,N,N,N,CP_Drtn,TT_Task,DT_FixedDUR2,RV_OK,TK_NotStart,V-3-220,External painting,4332,0,0,120,0,400,400,120,0,0,0,,,,2014-02-22 09:36,2014-03-09 09:36,,2014-02-22 09:36,2014-03-09 09:36,2014-02-22 09:36,2014-03-09 09:36,2014-02-22 09:36,2014-03-09 09:36,,2014-02-22 09:36,2014-03-09 09:36,,PT_Normal,,,,,/nusMV6KAUydY8xdtp5TBw,rsdHd8BLTh29lqHVKJ6Rtw,,,Y,0,0,,,2012-05-17 16:56,2012-06-21 09:54,NotPrmUser,admin
57,136567,4276,21335,794,1,0,N,N,N,CP_Drtn,TT_Task,DT_FixedDUR2,RV_OK,TK_NotStart,V-3-230,Doors & windows erection,,80,80,80,0,0,0,80,0,0,0,,,,2014-03-19 09:36,2014-03-29 09:36,,2014-03-09 09:36,2014-03-19 09:36,2014-03-09 09:36,2014-03-19 09:36,2014-03-09 09:36,2014-03-19 09:36,,2014-03-19 09:36,2014-03-29 09:36,,PT_Normal,,,,,bzv6yBFMXEufqxBun/B45Q,SPvqEH6sRTSe2ilKQjbshQ,,,N,0,0,,,2012-05-17 16:56,2012-06-21 09:57,NotPrmUser,admin
58,136568,4276,21335,794,1,0,N,N,N,CP_Drtn,TT_Task,DT_FixedDUR2,RV_OK,TK_NotStart,V-3-240,Wood cladding,,0,0,80,0,0,0,80,0,0,0,,,,2014-03-09 09:36,2014-03-19 09:36,,2014-03-09 09:36,2014-03-19 09:36,2014-03-09 09:36,2014-03-19 09:36,2014-03-09 09:36,2014-03-19 09:36,,2014-03-09 09:36,2014-03-19 09:36,,PT_Normal,,,,,vrpEmL9+xUu4SFe9f6WnQw,XA6QPj+ZSreaZw2MHmPUCg,,,Y,0,0,,,2012-05-17 16:56,2012-06-21 09:57,NotPrmUser,admin
59,136569,4276,21335,794,1,0,N,N,N,CP_Drtn,TT_Task,DT_FixedDUR2,RV_OK,TK_NotStart,V-3-250,Hand rails erection,,0,0,80,0,0,0,80,0,0,0,,,,2014-03-19 09:36,2014-03-29 09:36,,2014-03-19 09:36,2014-03-29 09:36,2014-03-19 09:36,2014-03-29 09:36,2014-03-19 09:36,2014-03-29 09:36,,2014-03-19 09:36,2014-03-29 09:36,,PT_Normal,,,,,NHSVDUKFL0+dT+Ginfp0rQ,tLc0G/M4RSqtzJPZuBDhlQ,,,Y,0,0,,,2012-05-17 16:56,2012-06-21 09:57,NotPrmUser,admin
60,136570,4276,21335,794,1,0,N,N,N,CP_Drtn,TT_Task,DT_FixedDUR2,RV_OK,TK_NotStart,V-3-260,Mechanical & electrical works,,400,400,200,0,0,0,200,0,0,0,,,,2014-03-04 09:36,2014-03-29 09:36,,2014-01-13 09:36,2014-02-07 09:36,2014-01-13 09:36,2014-02-07 09:36,2014-01-13 09:36,2014-02-07 09:36,,2014-03-04 09:36,2014-03-29 09:36,,PT_Normal,,,,,oTj9nyQ+LUelw9U0GJyqrg,PISqpKXMTrmlCMpmVSJhwQ,,,N,0,0,,,2012-05-17 16:56,2012-06-21 09:57,NotPrmUser,admin
61,136571,4276,21335,794,1,0,N,N,N,CP_Drtn,TT_Task,DT_FixedDUR2,RV_OK,TK_NotStart,V-3-270,Internal plaster works,,400,0,160,0,0,0,160,0,0,0,,,,2014-03-04 09:36,2014-03-24 09:36,,2014-01-13 09:36,2014-02-02 09:36,2014-01-13 09:36,2014-02-02 09:36,2014-01-13 09:36,2014-02-02 09:36,,2014-03-04 09:36,2014-03-24 09:36,,PT_Normal,,,,,AlFjgye54Eyi1pcEkzYMbA,RsyhsGTLo0eJVjH+d1WA9Q,,,N,0,0,,,2012-05-17 16:56,2012-06-21 09:57,NotPrmUser,admin
62,136572,4276,21334,794,1,0,N,N,N,CP_Drtn,TT_Task,DT_FixedDUR2,RV_OK,TK_NotStart,V-3-280,Excavation,,0,0,112,0,0,0,112,0,0,0,,,,2013-08-07 09:36,2013-08-21 09:36,,2013-08-07 09:36,2013-08-21 09:36,2013-08-07 09:36,2013-08-21 09:36,2013-08-07 09:36,2013-08-21 09:36,,2013-08-07 09:36,2013-08-21 09:36,,PT_Normal,,,,,c6eg5PDYI022D/RCzn+CJA,u5gvmFDjY0Ooq2wddKewsw,,,Y,0,0,,,2012-05-17 16:56,2012-06-21 09:54,NotPrmUser,admin
63,136573,4276,21337,794,1,0,N,N,N,CP_Drtn,TT_Task,DT_FixedDUR2,RV_OK,TK_NotStart,V-2-10,P.c footing,,24,0,80,0,0,0,80,0,0,0,,,,2013-05-22 09:36,2013-06-01 09:36,,2013-05-19 09:36,2013-05-29 09:36,2013-05-19 09:36,2013-05-29 09:36,2013-05-19 09:36,2013-05-29 09:36,,2013-05-22 09:36,2013-06-01 09:36,,PT_Normal,,,,,PPF2f71dTUS8gJcZcucdpA,SL+hO0E/Qm6Fd5F/q/3bYQ,,,N,0,0,,,2012-05-17 16:56,2012-06-21 09:54,NotPrmUser,admin
64,136574,4276,21337,794,1,0,N,N,N,CP_Drtn,TT_Task,DT_FixedDUR2,RV_OK,TK_NotStart,V-2-20,R.c concrete foundations,3926,24,0,112,0,400,400,112,0,0,0,,,,2013-06-01 09:36,2013-06-15 09:36,,2013-05-29 09:36,2013-06-12 09:36,2013-05-29 09:36,2013-06-12 09:36,2013-05-29 09:36,2013-06-12 09:36,,2013-06-01 09:36,2013-06-15 09:36,,PT_Normal,,,,,ngTvHp1+c0igFEKQ6CNKiw,SudEEe2pTkWxgHjKKrfA6A,,,N,0,0,,,2012-05-17 16:56,2012-06-21 09:54,NotPrmUser,admin
65,136575,4276,21337,794,1,0,N,N,N,CP_Drtn,TT_Task,DT_FixedDUR2,RV_OK,TK_NotStart,V-2-30,Backfilling under slab on grade,,24,24,56,0,0,0,56,0,0,0,,,,2013-07-13 09:36,2013-07-20 09:36,,2013-07-10 09:36,2013-07-17 09:36,2013-07-10 09:36,2013-07-17 09:36,2013-07-10 09:36,2013-07-17 09:36,,2013-07-13 09:36,2013-07-20 09:36,,PT_Normal,,,,,SrLPtgwhTUuqqAH2put2WA,bIpo8TBoRTmgMKDrbFwAfg,,,N,0,0,,,2012-05-17 16:56,2012-06-21 09:54,NotPrmUser,admin
66,136576,4276,21337,794,1,0,N,N,N,CP_Drtn,TT_Task,DT_FixedDUR2,RV_OK,TK_NotStart,V-2-40,Roof parapet,,1208,0,80,0,0,0,80,0,0,0,,,,2014-02-18 09:36,2014-02-28 09:36,,2013-09-20 09:36,2013-09-30 09:36,2013-09-20 09:36,2013-09-30 09:36,2013-09-20 09:36,2013-09-30 09:36,,2014-02-18 09:36,2014-02-28 09:36,,PT_Normal,,,,,T17/xHsOp0+CkOuxPILk/w,aJB0LdJ9S72qQz9eud6H5g,,,N,0,0,,,2012-05-17 16:56,2012-06-21 09:57,NotPrmUser,admin
67,136577,4276,21337,794,1,0,N,N,N,CP_Drtn,TT_Task,DT_FixedDUR2,RV_OK,TK_NotStart,V-2-50,Ground floor columns,,24,0,112,0,200,200,112,0,0,0,,,,2013-06-15 09:36,2013-06-29 09:36,,2013-06-12 09:36,2013-06-26 09:36,2013-06-12 09:36,2013-06-26 09:36,2013-06-12 09:36,2013-06-26 09:36,,2013-06-15 09:36,2013-06-29 09:36,,PT_Normal,,,,,CMMUCUXOl0qqtOVGpSkjxw,O27Ux1mTTWaY1l9woJcosw,,,N,0,0,,,2012-05-17 16:56,2012-06-21 09:54,NotPrmUser,admin
68,136578,4276,21337,794,1,0,N,N,N,CP_Drtn,TT_Task,DT_FixedDUR2,RV_OK,TK_NotStart,V-2-60,Ground floor slab&beams&staircase,,0,0,160,0,1600,1600,160,0,0,0,,,,2013-07-20 09:36,2013-08-09 09:36,,2013-07-20 09:36,2013-08-09 09:36,2013-07-20 09:36,2013-08-09 09:36,2013-07-20 09:36,2013-08-09 09:36,,2013-07-20 09:36,2013-08-09 09:36,,PT_Normal,,,,,Lg5mPZLkGkm4JntTecpM3Q,YXp99zgdQJ+881xKBVOsrw,,,Y,0,0,,,2012-05-17 16:56,2012-06-21 09:54,NotPrmUser,admin
69,136579,4276,21337,794,1,0,N,N,N,CP_Drtn,TT_Task,DT_FixedDUR2,RV_OK,TK_NotStart,V-2-70,First floor columns,3926,8,8,112,0,200,200,112,0,0,0,,,,2013-08-10 09:36,2013-08-24 09:36,,2013-08-09 09:36,2013-08-23 09:36,2013-08-09 09:36,2013-08-23 09:36,2013-08-09 09:36,2013-08-23 09:36,,2013-08-10 09:36,2013-08-24 09:36,,PT_Normal,,,,,d4TZQOmtQk64b/GwZ09QYw,xirgDdJmQEuTSvohLksokg,,,N,0,0,,,2012-05-17 16:56,2012-06-21 09:54,NotPrmUser,admin
70,136580,4276,21337,794,1,0,N,N,N,CP_Drtn,TT_Task,DT_FixedDUR2,RV_OK,TK_NotStart,V-2-80,First floor slab&beams&staircase,3926,0,0,160,0,1600,1600,160,0,0,0,,,,2013-08-24 09:36,2013-09-13 09:36,,2013-08-24 09:36,2013-09-13 09:36,2013-08-24 09:36,2013-09-13 09:36,2013-08-24 09:36,2013-09-13 09:36,,2013-08-24 09:36,2013-09-13 09:36,,PT_Normal,,,,,YTwykVTxzk+x3TErzZ0DeQ,C3TRaUTpTrya+qiPXkn9yg,,,Y,0,0,,,2012-05-17 16:56,2012-06-21 09:54,NotPrmUser,admin
71,136581,4276,21337,794,1,0,N,N,N,CP_Drtn,TT_Task,DT_FixedDUR2,RV_OK,TK_NotStart,V-2-90,Roof columns,3926,0,0,56,0,132,132,56,0,0,0,,,,2013-09-13 09:36,2013-09-20 09:36,,2013-09-13 09:36,2013-09-20 09:36,2013-09-13 09:36,2013-09-20 09:36,2013-09-13 09:36,2013-09-20 09:36,,2013-09-13 09:36,2013-09-20 09:36,,PT_Normal,,,,,Kt7wWSHpfEaIlvxFr3Uc0g,VS3gzRjvTvyY0NN33KszRg,,,Y,0,0,,,2012-05-17 16:56,2012-06-21 09:54,NotPrmUser,admin
72,136582,4276,21337,794,1,0,N,N,N,CP_Drtn,TT_Task,DT_FixedDUR2,RV_OK,TK_NotStart,V-2-100,Roof slab,3926,0,0,80,0,400,400,80,0,0,0,,,,2013-09-20 09:36,2013-09-30 09:36,,2013-09-20 09:36,2013-09-30 09:36,2013-09-20 09:36,2013-09-30 09:36,2013-09-20 09:36,2013-09-30 09:36,,2013-09-20 09:36,2013-09-30 09:36,,PT_Normal,,,,,aYYH9Ya7tEqYlxbl6/XIbA,OgyJkJMwSxCZo42JCPWjag,,,Y,0,0,,,2012-05-17 16:56,2012-06-21 09:54,NotPrmUser,admin
73,136583,4276,21337,794,1,0,N,N,N,CP_Drtn,TT_Task,DT_FixedDUR2,RV_OK,TK_NotStart,V-2-110,Slab on grade(R.C&P.C),,928,80,40,0,0,0,40,0,0,0,,,,2014-01-07 09:36,2014-01-12 09:36,,2013-09-13 09:36,2013-09-18 09:36,2013-09-13 09:36,2013-09-18 09:36,2013-09-13 09:36,2013-09-18 09:36,,2014-01-07 09:36,2014-01-12 09:36,,PT_Normal,,,,,3qpRyyNDXEurCfhWgCQIVQ,AtY/AJxLT4u7/Q6yuaqAWA,,,N,0,0,,,2012-05-17 16:56,2012-06-21 09:57,NotPrmUser,admin
74,136584,4276,21337,794,1,0,N,N,N,CP_Drtn,TT_Task,DT_FixedDUR2,RV_OK,TK_NotStart,V-2-120,Masonry under slab on grade,3927,24,0,80,0,400,400,80,0,0,0,,,,2013-06-29 09:36,2013-07-09 09:36,,2013-06-26 09:36,2013-07-06 09:36,2013-06-26 09:36,2013-07-06 09:36,2013-06-26 09:36,2013-07-06 09:36,,2013-06-29 09:36,2013-07-09 09:36,,PT_Normal,,,,,22mFMmx37Ear2dM+qcikLw,bUHrB25ZQcSK8ELca2gIyA,,,N,0,0,,,2012-05-17 16:56,2012-06-21 09:54,NotPrmUser,admin
75,136585,4276,21338,794,1,0,N,N,N,CP_Drtn,TT_Task,DT_FixedDUR2,RV_OK,TK_NotStart,V-2-130,Masonry works,3927,848,0,160,0,1700,1700,160,0,0,0,,,,2014-01-12 09:36,2014-02-01 09:36,,2013-09-28 09:36,2013-10-18 09:36,2013-09-28 09:36,2013-10-18 09:36,2013-09-28 09:36,2013-10-18 09:36,,2014-01-12 09:36,2014-02-01 09:36,,PT_Normal,,,,,ySgROWsLYEm6cifO2VW+hg,4T1Pl75SRj6Gulxr2ndXOA,,,N,0,0,,,2012-05-17 16:56,2012-06-21 09:57,NotPrmUser,admin
76,136586,4276,21337,794,1,0,N,N,N,CP_Drtn,TT_Task,DT_FixedDUR2,RV_OK,TK_NotStart,V-2-140,Footings&masonry insulation,,24,0,32,0,0,0,32,0,0,0,,,,2013-07-09 09:36,2013-07-13 09:36,,2013-07-06 09:36,2013-07-10 09:36,2013-07-06 09:36,2013-07-10 09:36,2013-07-06 09:36,2013-07-10 09:36,,2013-07-09 09:36,2013-07-13 09:36,,PT_Normal,,,,,IIlKB19F+k6fkXdJz2mR4w,L+1Tx9DaRhujTwZt+rcEDA,,,N,0,0,,,2012-05-17 16:56,2012-06-21 09:54,NotPrmUser,admin
77,136587,4276,21338,794,1,0,N,N,N,CP_Drtn,TT_Task,DT_FixedDUR2,RV_OK,TK_NotStart,V-2-150,Thermal insulation,,1208,0,56,0,0,0,56,0,0,0,,,,2014-03-12 09:36,2014-03-19 09:36,,2013-10-12 09:36,2013-10-19 09:36,2013-10-12 09:36,2013-10-19 09:36,2013-10-12 09:36,2013-10-19 09:36,,2014-03-12 09:36,2014-03-19 09:36,,PT_Normal,,,,,Xz5AhlPiCEOIuhA61fk2lw,oEcxiSNfRGiivppOh7c0yg,,,N,0,0,,,2012-05-17 16:56,2012-06-21 09:57,NotPrmUser,admin
78,136588,4276,21338,794,1,0,N,N,N,CP_Drtn,TT_Task,DT_FixedDUR2,RV_OK,TK_NotStart,V-2-160,Water proofing insulation,,1208,0,56,0,0,0,56,0,0,0,,,,2014-03-05 09:36,2014-03-12 09:36,,2013-10-05 09:36,2013-10-12 09:36,2013-10-05 09:36,2013-10-12 09:36,2013-10-05 09:36,2013-10-12 09:36,,2014-03-05 09:36,2014-03-12 09:36,,PT_Normal,,,,,spJa0tyVDEuFe3RLayWrNA,BPblkb6UQUKJSte5PM9xcg,,,N,0,0,,,2012-05-17 16:56,2012-06-21 09:57,NotPrmUser,admin
79,136589,4276,21338,794,1,0,N,N,N,CP_Drtn,TT_Task,DT_FixedDUR2,RV_OK,TK_NotStart,V-2-170,Slopped concrete,,1208,0,40,0,0,0,40,0,0,0,,,,2014-02-28 09:36,2014-03-05 09:36,,2013-09-30 09:36,2013-10-05 09:36,2013-09-30 09:36,2013-10-05 09:36,2013-09-30 09:36,2013-10-05 09:36,,2014-02-28 09:36,2014-03-05 09:36,,PT_Normal,,,,,S9LCTnngqUSNVyu5qcXrfg,/DGFa8ThS9e1BRoddDFQNQ,,,N,0,0,,,2012-05-17 16:56,2012-06-21 09:57,NotPrmUser,admin
80,136590,4276,21338,794,1,0,N,N,N,CP_Drtn,TT_Task,DT_FixedDUR2,RV_OK,TK_NotStart,V-2-180,Terrazzo tiles,,1208,1208,80,0,0,0,80,0,0,0,,,,2014-03-19 09:36,2014-03-29 09:36,,2013-10-19 09:36,2013-10-29 09:36,2013-10-19 09:36,2013-10-29 09:36,2013-10-19 09:36,2013-10-29 09:36,,2014-03-19 09:36,2014-03-29 09:36,,PT_Normal,,,,,BkM+T/RT8keFD3DWPDsxSw,1QKrwqUMQTiajKqZpAe48Q,,,N,0,0,,,2012-05-17 16:56,2012-06-21 09:57,NotPrmUser,admin
81,136591,4276,21338,794,1,0,N,N,N,CP_Drtn,TT_Task,DT_FixedDUR2,RV_OK,TK_NotStart,V-2-190,External plaster works,,848,0,168,0,400,400,168,0,0,0,,,,2014-02-01 09:36,2014-02-22 09:36,,2013-10-18 09:36,2013-11-08 09:36,2013-10-18 09:36,2013-11-08 09:36,2013-10-18 09:36,2013-11-08 09:36,,2014-02-01 09:36,2014-02-22 09:36,,PT_Normal,,,,,B2Z2CkmMjkCBaV/4r6fjVw,Hx7NDdSkT8+MeugFYrmodg,,,N,0,0,,,2012-05-17 16:56,2012-06-21 09:57,NotPrmUser,admin
82,136592,4276,21338,794,1,0,N,N,N,CP_Drtn,TT_Task,DT_FixedDUR2,RV_OK,TK_NotStart,V-2-200,Flooring works(garnite& marbles),,848,0,80,0,0,0,80,0,0,0,,,,2014-02-22 09:36,2014-03-04 09:36,,2013-11-08 09:36,2013-11-18 09:36,2013-11-08 09:36,2013-11-18 09:36,2013-11-08 09:36,2013-11-18 09:36,,2014-02-22 09:36,2014-03-04 09:36,,PT_Normal,,,,,88Ljwm+9bEarBS8f5ceLNQ,o4sXM0g6RA+9FioMBCkkjA,,,N,0,0,,,2012-05-17 16:56,2012-06-21 09:57,NotPrmUser,admin
83,136593,4276,21338,794,1,0,N,N,N,CP_Drtn,TT_Task,DT_FixedDUR2,RV_OK,TK_NotStart,V-2-210,Stone cladding,,872,24,56,0,0,0,56,0,0,0,,,,2014-02-25 09:36,2014-03-04 09:36,,2013-11-08 09:36,2013-11-15 09:36,2013-11-08 09:36,2013-11-15 09:36,2013-11-08 09:36,2013-11-15 09:36,,2014-02-25 09:36,2014-03-04 09:36,,PT_Normal,,,,,ZHlEcCwU9Em1gILtczzkyg,G0MfRwxET2uaplX4vAwJXg,,,N,0,0,,,2012-05-17 16:56,2012-06-21 09:57,NotPrmUser,admin
84,136594,4276,21338,794,1,0,N,N,N,CP_Drtn,TT_Task,DT_FixedDUR2,RV_OK,TK_NotStart,V-2-220,External painting,4332,848,0,120,0,400,400,120,0,0,0,,,,2014-03-04 09:36,2014-03-19 09:36,,2013-11-18 09:36,2013-12-03 09:36,2013-11-18 09:36,2013-12-03 09:36,2013-11-18 09:36,2013-12-03 09:36,,2014-03-04 09:36,2014-03-19 09:36,,PT_Normal,,,,,ELy4eLf6ukOwUjZsusCUFw,rsdHd8BLTh29lqHVKJ6Rtw,,,N,0,0,,,2012-05-17 16:56,2012-06-21 09:57,NotPrmUser,admin
85,136595,4276,21338,794,1,0,N,N,N,CP_Drtn,TT_Task,DT_FixedDUR2,RV_OK,TK_NotStart,V-2-230,Doors & windows erection,,848,848,80,0,0,0,80,0,0,0,,,,2014-03-19 09:36,2014-03-29 09:36,,2013-12-03 09:36,2013-12-13 09:36,2013-12-03 09:36,2013-12-13 09:36,2013-12-03 09:36,2013-12-13 09:36,,2014-03-19 09:36,2014-03-29 09:36,,PT_Normal,,,,,CI8kUMAUD0yPhPEc4dJCAQ,SPvqEH6sRTSe2ilKQjbshQ,,,N,0,0,,,2012-05-17 16:56,2012-06-21 09:57,NotPrmUser,admin
86,136596,4276,21338,794,1,0,N,N,N,CP_Drtn,TT_Task,DT_FixedDUR2,RV_OK,TK_NotStart,V-2-240,Wood cladding,,848,848,80,0,0,0,80,0,0,0,,,,2014-03-19 09:36,2014-03-29 09:36,,2013-12-03 09:36,2013-12-13 09:36,2013-12-03 09:36,2013-12-13 09:36,2013-12-03 09:36,2013-12-13 09:36,,2014-03-19 09:36,2014-03-29 09:36,,PT_Normal,,,,,/x2Koyv1HEmcnBtOEZPqRA,XA6QPj+ZSreaZw2MHmPUCg,,,N,0,0,,,2012-05-17 16:56,2012-06-21 09:58,NotPrmUser,admin
87,136597,4276,21338,794,1,0,N,N,N,CP_Drtn,TT_Task,DT_FixedDUR2,RV_OK,TK_NotStart,V-2-250,Hand rails erection,,888,888,40,0,0,0,40,0,0,0,,,,2014-03-24 09:36,2014-03-29 09:36,,2013-12-03 09:36,2013-12-08 09:36,2013-12-03 09:36,2013-12-08 09:36,2013-12-03 09:36,2013-12-08 09:36,,2014-03-24 09:36,2014-03-29 09:36,,PT_Normal,,,,,TDcID6FzVUONGfgUh5RmJg,tLc0G/M4RSqtzJPZuBDhlQ,,,N,0,0,,,2012-05-17 16:56,2012-06-21 09:57,NotPrmUser,admin
88,136598,4276,21338,794,1,0,N,N,N,CP_Drtn,TT_Task,DT_FixedDUR2,RV_OK,TK_NotStart,V-2-260,Mechanical & electrical works,,1096,1096,200,0,0,0,200,0,0,0,,,,2014-03-04 09:36,2014-03-29 09:36,,2013-10-18 09:36,2013-11-12 09:36,2013-10-18 09:36,2013-11-12 09:36,2013-10-18 09:36,2013-11-12 09:36,,2014-03-04 09:36,2014-03-29 09:36,,PT_Normal,,,,,XgcsGi7OS0yLpgd+yY4Vsg,PISqpKXMTrmlCMpmVSJhwQ,,,N,0,0,,,2012-05-17 16:56,2012-06-21 09:57,NotPrmUser,admin
89,136599,4276,21338,794,1,0,N,N,N,CP_Drtn,TT_Task,DT_FixedDUR2,RV_OK,TK_NotStart,V-2-270,Internal plaster works,,1096,0,160,0,0,0,160,0,0,0,,,,2014-03-04 09:36,2014-03-24 09:36,,2013-10-18 09:36,2013-11-07 09:36,2013-10-18 09:36,2013-11-07 09:36,2013-10-18 09:36,2013-11-07 09:36,,2014-03-04 09:36,2014-03-24 09:36,,PT_Normal,,,,,CxHUc/IRLEGhhZgNdqwNjQ,RsyhsGTLo0eJVjH+d1WA9Q,,,N,0,0,,,2012-05-17 16:56,2012-06-21 09:57,NotPrmUser,admin
90,136600,4276,21337,794,1,0,N,N,N,CP_Drtn,TT_Task,DT_FixedDUR2,RV_OK,TK_NotStart,V-2-280,Excavation,,0,0,112,0,0,0,112,0,0,0,,,,2013-05-05 09:36,2013-05-19 09:36,,2013-05-05 09:36,2013-05-19 09:36,2013-05-05 09:36,2013-05-19 09:36,2013-05-05 09:36,2013-05-19 09:36,,2013-05-05 09:36,2013-05-19 09:36,,PT_Normal,,,,,9LsFPyHiq06x7GiZ+CWWfw,u5gvmFDjY0Ooq2wddKewsw,,,Y,0,0,,,2012-05-17 16:56,2012-06-21 09:54,NotPrmUser,admin
91,147291,4276,23298,794,1,0,N,N,N,CP_Drtn,TT_Task,DT_FixedDUR2,RV_OK,TK_NotStart,A1280,Materials submittalls& approvals,,3136,3136,240,0,0,0,240,0,0,0,,,,2014-02-27 09:36,2014-03-29 09:36,,2013-01-31 09:36,2013-03-02 09:36,2013-01-31 09:36,2013-03-02 09:36,2013-01-31 09:36,2013-03-02 09:36,,2014-02-27 09:36,2014-03-29 09:36,,PT_Normal,,,,,O7H/er9Z1EKiL/Ni1ipecQ,,,,N,0,0,,,2012-06-21 09:27,2012-06-21 09:57,admin,admin
92,147292,4276,23299,794,1,0,N,N,N,CP_Drtn,TT_Task,DT_FixedDUR2,RV_OK,TK_NotStart,A1290,Shop drawings submittals& approvals,,3136,3136,240,0,0,0,240,0,0,0,,,,2014-02-27 09:36,2014-03-29 09:36,,2013-01-31 09:36,2013-03-02 09:36,2013-01-31 09:36,2013-03-02 09:36,2013-01-31 09:36,2013-03-02 09:36,,2014-02-27 09:36,2014-03-29 09:36,,PT_Normal,,,,,o7fNfhxCT0KpvtdmHtKfHw,,,,N,0,0,,,2012-06-21 09:27,2012-06-21 09:57,admin,admin
93,147293,4276,23300,794,1,0,N,N,N,CP_Drtn,TT_Task,DT_FixedDUR2,RV_OK,TK_NotStart,A1300,Internal audit-1,,2872,2872,24,0,0,0,24,0,0,0,,,,2014-03-26 09:36,2014-03-29 09:36,,2013-04-01 09:36,2013-04-04 09:36,2013-04-01 09:36,2013-04-04 09:36,2013-04-01 09:36,2013-04-04 09:36,,2014-03-26 09:36,2014-03-29 09:36,,PT_Normal,,,,,N+lorDsI/Ee/l4Hf360TSQ,,,,N,0,0,,,2012-06-21 09:38,2012-06-21 09:57,admin,admin
94,147294,4276,23300,794,1,0,N,N,N,CP_Drtn,TT_Task,DT_FixedDUR2,RV_OK,TK_NotStart,A1310,Internal audit-2,,1408,1408,48,0,0,0,48,0,0,0,,,,2014-03-23 09:36,2014-03-29 09:36,,2013-09-28 09:36,2013-10-04 09:36,2013-09-28 09:36,2013-10-04 09:36,2013-09-28 09:36,2013-10-04 09:36,,2014-03-23 09:36,2014-03-29 09:36,,PT_Normal,,,,,O4md/qw7S0Kz6njv1PfZag,,,,N,0,0,,,2012-06-21 09:38,2012-06-21 09:57,admin,admin
95,147295,4276,23300,794,1,0,N,N,N,CP_Drtn,TT_Task,DT_FixedDUR2,RV_OK,TK_NotStart,A1320,Internal audit-3,,200,200,56,0,0,0,56,0,0,0,,,,2014-03-22 09:36,2014-03-29 09:36,,2014-02-25 09:36,2014-03-04 09:36,2014-02-25 09:36,2014-03-04 09:36,2014-02-25 09:36,2014-03-04 09:36,,2014-03-22 09:36,2014-03-29 09:36,,PT_Normal,,,,,270qR2l69kCkpE8Y07b5Ow,,,,N,0,0,,,2012-06-21 09:38,2012-06-21 09:57,admin,admin
