,task_id,proj_id,wbs_id,clndr_id,est_wt,phys_complete_pct,rev_fdbk_flag,lock_plan_flag,auto_compute_act_flag,complete_pct_type,task_type,duration_type,review_type,status_code,task_code,task_name,rsrc_id,total_float_hr_cnt,free_float_hr_cnt,remain_drtn_hr_cnt,act_work_qty,remain_work_qty,target_work_qty,target_drtn_hr_cnt,target_equip_qty,act_equip_qty,remain_equip_qty,cstr_date,act_start_date,act_end_date,late_start_date,late_end_date,expect_end_date,early_start_date,early_end_date,restart_date,reend_date,target_start_date,target_end_date,review_end_date,rem_late_start_date,rem_late_end_date,cstr_type,priority_type,suspend_date,resume_date,float_path,float_path_order,guid,tmpl_guid,cstr_date2,cstr_type2,driving_path_flag,act_this_per_work_qty,act_this_per_equip_qty,external_early_start_date,external_late_end_date,create_date,update_date,create_user,update_user
0,87770,1288,11921,794,1,0,N,N,N,CP_Drtn,TT_Task,DT_FixedDrtn,RV_OK,TK_NotStart,A160,Shop Drawings submittal,,391,0,56,0,0,0,56,0,0,0,,,,2012-03-20 16:00,2012-03-27 16:00,,2012-02-01 08:00,2012-02-07 17:00,2012-02-01 08:00,2012-02-07 17:00,2012-02-01 08:00,2012-02-07 17:00,,2012-03-20 16:00,2012-03-27 16:00,,PT_Normal,,,,,U2mM0lztI0KA/Zf3ayYzpQ,8FDKh0SH9USGJEz7Q1fOeg,,,N,0,0,,,2011-12-05 11:18,2012-01-19 16:26,admin,admin
1,87771,1288,11921,794,1,0,N,N,N,CP_Drtn,TT_Task,DT_FixedDUR2,RV_OK,TK_NotStart,A260,Shop Drawings Approval,,391,0,56,0,0,0,56,0,0,0,,,,2012-03-27 16:00,2012-04-03 16:00,,2012-02-08 08:00,2012-02-14 17:00,2012-02-08 08:00,2012-02-14 17:00,2012-02-08 08:00,2012-02-14 17:00,,2012-03-27 16:00,2012-04-03 16:00,,PT_Normal,,,,,xV+K2ZIK306vjmM0wgam1w,p3Zt3p92yU66qiPjzR/+uQ,,,N,0,0,,,2011-12-05 11:18,2012-01-19 16:26,admin,admin
2,87772,1288,11929,794,1,0,N,N,N,CP_Drtn,TT_Task,DT_FixedDrtn,RV_OK,TK_NotStart,A180,Shop Drawings submittal,,287,0,56,0,0,0,56,0,0,0,,,,2012-02-24 16:00,2012-03-02 16:00,,2012-01-20 08:00,2012-01-26 17:00,2012-01-20 08:00,2012-01-26 17:00,2012-01-20 08:00,2012-01-26 17:00,,2012-02-24 16:00,2012-03-02 16:00,,PT_Normal,,,,,fYWGToEuH067O8a+RrxEqQ,k9niuQkR+0i3693thUNybg,,,N,0,0,,,2011-12-05 11:18,2012-01-19 16:26,admin,admin
3,87773,1288,11929,794,1,0,N,N,N,CP_Drtn,TT_Task,DT_FixedDUR2,RV_OK,TK_NotStart,A270,Shop Drawings Approval,,287,0,56,0,0,0,56,0,0,0,,,,2012-02-29 16:00,2012-03-07 16:00,,2012-01-25 08:00,2012-01-31 17:00,2012-01-25 08:00,2012-01-31 17:00,2012-01-25 08:00,2012-01-31 17:00,,2012-02-29 16:00,2012-03-07 16:00,,PT_Normal,,,,,HTU2od+YgkCY/m5qFFXenw,RwvIotA2/EyFIBKJT+o3dQ,,,N,0,0,,,2011-12-05 11:18,2012-01-19 16:26,admin,admin
4,87774,1288,11920,794,1,0,N,N,N,CP_Drtn,TT_Task,DT_FixedDrtn,RV_OK,TK_NotStart,A120,Shop Drawings submittal,,159,0,56,0,0,0,56,0,0,0,,,,2012-01-27 16:00,2012-02-03 16:00,,2012-01-08 08:00,2012-01-14 17:00,2012-01-08 08:00,2012-01-14 17:00,2012-01-08 08:00,2012-01-14 17:00,,2012-01-27 16:00,2012-02-03 16:00,,PT_Normal,,,,,iIsNrHzpukCH+cCh0lFEMQ,uow1mgoQnku7cUVQZdO/Rg,,,N,0,0,,,2011-12-05 11:18,2012-01-19 16:26,admin,admin
5,87775,1288,11920,794,1,0,N,N,N,CP_Drtn,TT_Task,DT_FixedDUR2,RV_OK,TK_NotStart,A170,Shop Drawings Approval,,159,0,56,0,0,0,56,0,0,0,,,,2012-02-01 16:00,2012-02-08 16:00,,2012-01-13 08:00,2012-01-19 17:00,2012-01-13 08:00,2012-01-19 17:00,2012-01-13 08:00,2012-01-19 17:00,,2012-02-01 16:00,2012-02-08 16:00,,PT_Normal,,,,,EqayXCG/UkC8Ss9urtFM1w,pL3FJFubdkOiZN5XPIU40g,,,N,0,0,,,2011-12-05 11:18,2012-01-19 16:26,admin,admin
6,87776,1288,11925,794,1,0,N,N,N,CP_Drtn,TT_Task,DT_FixedDUR2,RV_OK,TK_NotStart,A1020,Excavation Works,,0,0,80,0,0,0,80,0,0,0,,,,2012-01-11 08:00,2012-01-20 17:00,,2012-01-11 08:00,2012-01-20 17:00,2012-01-11 08:00,2012-01-20 17:00,2012-01-11 08:00,2012-01-20 17:00,,2012-01-11 08:00,2012-01-20 17:00,,PT_Normal,,,,,X4ta35OusE+LClJB+Q/C2g,LRTTyI1ztUeDUqd25mmz6Q,,,Y,0,0,,,2011-12-05 11:18,2011-12-06 11:16,admin,admin
7,87777,1288,11925,794,1,0,N,N,N,CP_Drtn,TT_Task,DT_FixedDUR2,RV_OK,TK_NotStart,A1040,Backfill Works,,0,0,80,0,0,0,80,0,0,0,,,,2012-03-24 16:00,2012-04-03 16:00,,2012-03-24 16:00,2012-04-03 16:00,2012-03-24 16:00,2012-04-03 16:00,2012-03-24 16:00,2012-04-03 16:00,,2012-03-24 16:00,2012-04-03 16:00,,PT_Normal,,,,,QQVrS5Ghe0+WAm0K6Dc+KQ,igQCME3J2U6HPZn2Da17mQ,,,Y,0,0,,,2011-12-05 11:18,2012-01-19 16:26,admin,admin
8,87778,1288,11910,794,1,0,N,N,N,CP_Drtn,TT_Task,DT_FixedDUR2,RV_OK,TK_NotStart,A1050,Site Preparation Works,,0,0,200,0,0,0,200,0,0,0,,,,2012-01-01 08:00,2012-01-25 17:00,,2012-01-01 08:00,2012-01-25 17:00,2012-01-01 08:00,2012-01-25 17:00,2012-01-01 08:00,2012-01-25 17:00,,2012-01-01 08:00,2012-01-25 17:00,,PT_Normal,,,,,1nZ0qzkiJ0C7hXQITUYEYA,SbkjKOYRmUOWCYlgGNnp5Q,,,Y,0,0,,,2011-12-05 11:18,2011-12-05 14:48,admin,admin
9,87779,1288,11909,794,0,0,N,N,N,CP_Drtn,TT_Mile,DT_FixedDrtn,RV_OK,TK_NotStart,A1060,Project Start,,0,0,0,0,0,0,0,0,0,0,,,,2012-01-01 08:00,2012-01-01 08:00,,2012-01-01 08:00,2012-01-01 08:00,2012-01-01 08:00,2012-01-01 08:00,2012-01-01 08:00,2012-01-01 08:00,,2012-01-01 08:00,2012-01-01 08:00,,PT_Normal,,,,,pUjM0tOi8EeC04sQdjwMeQ,XrEfUROHe0SR5P60zmuSQQ,,,Y,0,0,,,2011-12-05 11:18,2011-12-05 14:46,admin,admin
10,87780,1288,11909,794,0,0,N,N,N,CP_Drtn,TT_FinMile,DT_FixedDrtn,RV_OK,TK_NotStart,A1070,Project Finish,,0,0,0,0,0,0,0,0,0,0,,,,2012-07-17 16:00,2012-07-17 16:00,,2012-07-17 16:00,2012-07-17 16:00,2012-07-17 16:00,2012-07-17 16:00,2012-07-17 16:00,2012-07-17 16:00,,2012-07-17 16:00,2012-07-17 16:00,,PT_Normal,,,,,hISupUinSkCxaMowxY00uw,pMdqDaF/wkuPPP0hZX7+5g,,,Y,0,0,,,2011-12-05 11:18,2012-01-19 16:26,admin,admin
11,87781,1288,11922,794,1,0,N,N,N,CP_Drtn,TT_Task,DT_FixedDUR2,RV_OK,TK_NotStart,A1090,Plain Concrete For Footings,,0,0,160,0,0,0,160,0,0,0,,,,2012-02-06 16:00,2012-02-26 16:00,,2012-02-06 16:00,2012-02-26 16:00,2012-02-06 16:00,2012-02-26 16:00,2012-02-06 16:00,2012-02-26 16:00,,2012-02-06 16:00,2012-02-26 16:00,,PT_Normal,,,,,cBFkEl3HvUSfefBUiHKKtg,3V0u8v9uLEeEGresjZAZ0w,,,Y,0,0,,,2011-12-05 11:18,2012-01-19 16:26,admin,admin
12,87782,1288,11922,794,1,0,N,N,N,CP_Drtn,TT_Task,DT_FixedDUR2,RV_OK,TK_NotStart,A1100,"Reinforced Concrete For Footings , Columns & Retaining Wall",,0,0,160,0,0,0,160,0,0,0,,,,2012-02-16 16:00,2012-03-07 16:00,,2012-02-16 16:00,2012-03-07 16:00,2012-02-16 16:00,2012-03-07 16:00,2012-02-16 16:00,2012-03-07 16:00,,2012-02-16 16:00,2012-03-07 16:00,,PT_Normal,,,,,+osA10j58kKcPQgROEMxpg,4S6lJGZ0n0WFU6kgzRodcg,,,Y,0,0,,,2011-12-05 11:18,2012-01-19 16:26,admin,admin
13,87783,1288,11924,794,1,0,N,N,N,CP_Drtn,TT_Task,DT_FixedDUR2,RV_OK,TK_NotStart,A1120,Cold Bitumen For UnderGround,,0,0,56,0,0,0,56,0,0,0,,,,2012-03-17 16:00,2012-03-24 16:00,,2012-03-17 16:00,2012-03-24 16:00,2012-03-17 16:00,2012-03-24 16:00,2012-03-17 16:00,2012-03-24 16:00,,2012-03-17 16:00,2012-03-24 16:00,,PT_Normal,,,,,5VMpa9rc4Ei2DKKJO92Bjg,QOsDD0nzkUmeFY5qCNUz7w,,,Y,0,0,,,2011-12-05 11:18,2012-01-19 16:26,admin,admin
14,87784,1288,11924,794,1,0,N,N,N,CP_Drtn,TT_Task,DT_FixedDUR2,RV_OK,TK_NotStart,A1130,Polythene Sheets Under Slab On Grade,,400,0,56,0,0,0,56,0,0,0,,,,2012-06-22 16:00,2012-06-29 16:00,,2012-05-03 16:00,2012-05-10 16:00,2012-05-03 16:00,2012-05-10 16:00,2012-05-03 16:00,2012-05-10 16:00,,2012-06-22 16:00,2012-06-29 16:00,,PT_Normal,,,,,46D+glKy7Eax/VZhxsqAcw,tGHOJxIvm06jQSNQAq9Mig,,,N,0,0,,,2011-12-05 11:18,2012-01-19 16:26,admin,admin
15,87785,1288,11922,794,1,0,N,N,N,CP_Drtn,TT_Task,DT_FixedDUR2,RV_OK,TK_NotStart,A1140,Slab On Grade,,400,400,160,0,0,0,160,0,0,0,,,,2012-06-27 16:00,2012-07-17 16:00,,2012-05-08 16:00,2012-05-28 16:00,2012-05-08 16:00,2012-05-28 16:00,2012-05-08 16:00,2012-05-28 16:00,,2012-06-27 16:00,2012-07-17 16:00,,PT_Normal,,,,,PKXR2X+BjkGHxpb0EbyV6A,dKRldDny0U6J9QinE6J8kQ,,,N,0,0,,,2011-12-05 11:18,2012-01-19 16:26,admin,admin
16,87786,1288,11922,794,1,0,N,N,N,CP_Drtn,TT_Task,DT_FixedDUR2,RV_OK,TK_NotStart,A1150,Reinforced Concrete  Slab Above Steel Platform,,264,64,56,0,0,0,56,0,0,0,,,,2012-06-20 16:00,2012-06-27 16:00,,2012-05-18 16:00,2012-05-25 16:00,2012-05-18 16:00,2012-05-25 16:00,2012-05-18 16:00,2012-05-25 16:00,,2012-06-20 16:00,2012-06-27 16:00,,PT_Normal,,,,,Vuo+a63kD0qQQZFVPi6TmA,zHlGhHEySUe9pfOJTGx2ww,,,N,0,0,,,2011-12-05 11:18,2012-01-19 16:26,admin,admin
17,87788,1288,11932,794,1,0,N,N,N,CP_Drtn,TT_Task,DT_FixedDUR2,RV_OK,TK_NotStart,A1170,Steel Structure Erection,,0,0,240,0,0,0,240,0,0,0,,,,2012-04-03 16:00,2012-05-03 16:00,,2012-04-03 16:00,2012-05-03 16:00,2012-04-03 16:00,2012-05-03 16:00,2012-04-03 16:00,2012-05-03 16:00,,2012-04-03 16:00,2012-05-03 16:00,,PT_Normal,,,,,k9kl8KLBFkONcinvLkCiWA,0uMwPb4XFkG7DRQ7JCYrTA,,,Y,0,0,,,2011-12-05 11:18,2012-01-19 16:26,admin,admin
18,87789,1288,11932,794,1,0,N,N,N,CP_Drtn,TT_Task,DT_FixedDUR2,RV_OK,TK_NotStart,A1180,Roof Cladding,,0,0,240,0,0,0,240,0,0,0,,,,2012-04-23 16:00,2012-05-23 16:00,,2012-04-23 16:00,2012-05-23 16:00,2012-04-23 16:00,2012-05-23 16:00,2012-04-23 16:00,2012-05-23 16:00,,2012-04-23 16:00,2012-05-23 16:00,,PT_Normal,,,,,p1NZFZoE50iFUMe+COZ2Tg,qmHq11FN+E+8F/sKEE6vQQ,,,Y,0,0,,,2011-12-05 11:18,2012-01-19 16:26,admin,admin
19,87790,1288,11932,794,1,0,N,N,N,CP_Drtn,TT_Task,DT_FixedDUR2,RV_OK,TK_NotStart,A1190,Steel Platform Erection For Mezzanine,,264,0,120,0,0,0,120,0,0,0,,,,2012-06-05 16:00,2012-06-20 16:00,,2012-05-03 16:00,2012-05-18 16:00,2012-05-03 16:00,2012-05-18 16:00,2012-05-03 16:00,2012-05-18 16:00,,2012-06-05 16:00,2012-06-20 16:00,,PT_Normal,,,,,YamX8B1Nv063jDAePV9dsg,QDPRSEFpME6o8YW4OgiIbQ,,,N,0,0,,,2011-12-05 11:18,2012-01-19 16:26,admin,admin
20,87791,1288,11932,794,1,0,N,N,N,CP_Drtn,TT_Task,DT_FixedDUR2,RV_OK,TK_NotStart,A1200,Vertical Cladding,,200,0,240,0,0,0,240,0,0,0,,,,2012-05-28 16:00,2012-06-27 16:00,,2012-05-03 16:00,2012-06-02 16:00,2012-05-03 16:00,2012-06-02 16:00,2012-05-03 16:00,2012-06-02 16:00,,2012-05-28 16:00,2012-06-27 16:00,,PT_Normal,,,,,TY0jke2K5EK9n+by2XiTDg,YY8oRnNjK0+KyeSPg40/bg,,,N,0,0,,,2011-12-05 11:18,2012-01-19 16:26,admin,admin
21,87794,1288,11923,794,1,0,N,N,N,CP_Drtn,TT_Task,DT_FixedDUR2,RV_OK,TK_NotStart,A1230,Masonry For Substructure,,0,0,80,0,0,0,80,0,0,0,,,,2012-03-07 16:00,2012-03-17 16:00,,2012-03-07 16:00,2012-03-17 16:00,2012-03-07 16:00,2012-03-17 16:00,2012-03-07 16:00,2012-03-17 16:00,,2012-03-07 16:00,2012-03-17 16:00,,PT_Normal,,,,,KesJgldVr06XpJ9pnFDA/g,XtdApsobr0GtzzaefIB3+w,,,Y,0,0,,,2011-12-05 11:18,2012-01-19 16:26,admin,admin
22,87795,1288,11926,794,1,0,N,N,N,CP_Drtn,TT_Task,DT_FixedDUR2,RV_OK,TK_NotStart,A1280,Internal Plaster,,0,0,160,0,0,0,160,0,0,0,,,,2012-05-23 16:00,2012-06-12 16:00,,2012-05-23 16:00,2012-06-12 16:00,2012-05-23 16:00,2012-06-12 16:00,2012-05-23 16:00,2012-06-12 16:00,,2012-05-23 16:00,2012-06-12 16:00,,PT_Normal,,,,,pe7YDaO5O0SQgMjEFvcDyQ,EN2TL8N8TE6HE58vEd3ODw,,,Y,0,0,,,2011-12-05 11:18,2012-01-19 16:26,admin,admin
23,87796,1288,11926,794,1,0,N,N,N,CP_Drtn,TT_Task,DT_FixedDUR2,RV_OK,TK_NotStart,A1300,Internal Painting,,0,0,160,0,0,0,160,0,0,0,,,,2012-06-27 16:00,2012-07-17 16:00,,2012-06-27 16:00,2012-07-17 16:00,2012-06-27 16:00,2012-07-17 16:00,2012-06-27 16:00,2012-07-17 16:00,,2012-06-27 16:00,2012-07-17 16:00,,PT_Normal,,,,,yB6mYPhbn0K8F1VgpBmb+A,v+IHCTf5tE25w+wpyrwmuw,,,Y,0,0,,,2011-12-05 11:18,2012-01-19 16:26,admin,admin
24,87797,1288,11926,794,1,0,N,N,N,CP_Drtn,TT_Task,DT_FixedDUR2,RV_OK,TK_NotStart,A1320,Flooring Works,,0,0,160,0,0,0,160,0,0,0,,,,2012-06-12 16:00,2012-07-02 16:00,,2012-06-12 16:00,2012-07-02 16:00,2012-06-12 16:00,2012-07-02 16:00,2012-06-12 16:00,2012-07-02 16:00,,2012-06-12 16:00,2012-07-02 16:00,,PT_Normal,,,,,ffrGS1qUzUmyLiH4QwVeTQ,nBlOoYe4w0q2PqWJDWtJyw,,,Y,0,0,,,2011-12-05 11:18,2012-01-19 16:26,admin,admin
25,87798,1288,11918,794,1,0,N,N,N,CP_Drtn,TT_Task,DT_FixedDrtn,RV_OK,TK_NotStart,A300,Shop Drawings submittal,,567,0,56,0,0,0,56,0,0,0,,,,2012-04-25 16:00,2012-05-02 16:00,,2012-02-15 08:00,2012-02-21 17:00,2012-02-15 08:00,2012-02-21 17:00,2012-02-15 08:00,2012-02-21 17:00,,2012-04-25 16:00,2012-05-02 16:00,,PT_Normal,,,,,soFHt5BheUy7QIE/+muj6g,msUYE7bNaU+eK0QJyIqmig,,,N,0,0,,,2011-12-05 11:18,2012-01-19 16:26,admin,admin
26,87799,1288,11918,794,1,0,N,N,N,CP_Drtn,TT_Task,DT_FixedDUR2,RV_OK,TK_NotStart,A310,Shop Drawings Approval,,567,0,56,0,0,0,56,0,0,0,,,,2012-05-02 16:00,2012-05-09 16:00,,2012-02-22 08:00,2012-02-28 17:00,2012-02-22 08:00,2012-02-28 17:00,2012-02-22 08:00,2012-02-28 17:00,,2012-05-02 16:00,2012-05-09 16:00,,PT_Normal,,,,,D8SN0hrD6kCWomO1jni/5Q,Cjha1T7GqkajjpqOXrwj5g,,,N,0,0,,,2011-12-05 11:18,2012-01-19 16:26,admin,admin
27,87800,1288,11927,794,1,0,N,N,N,CP_Drtn,TT_Task,DT_FixedDUR2,RV_OK,TK_NotStart,A1330,Windows Erection,,200,0,120,0,0,0,120,0,0,0,,,,2012-06-27 16:00,2012-07-12 16:00,,2012-06-02 16:00,2012-06-17 16:00,2012-06-02 16:00,2012-06-17 16:00,2012-06-02 16:00,2012-06-17 16:00,,2012-06-27 16:00,2012-07-12 16:00,,PT_Normal,,,,,0ceXfCUBG0ymQULpp/xTwQ,bz6LleK1DU+Qdb6J+7rNKw,,,N,0,0,,,2011-12-05 11:18,2012-01-19 16:26,admin,admin
28,87801,1288,11928,794,1,0,N,N,N,CP_Drtn,TT_Task,DT_FixedDUR2,RV_OK,TK_NotStart,A1340,Site Works,,8,8,480,0,0,0,480,0,0,0,,,,2012-05-18 16:00,2012-07-17 16:00,,2012-05-17 16:00,2012-07-16 16:00,2012-05-17 16:00,2012-07-16 16:00,2012-05-17 16:00,2012-07-16 16:00,,2012-05-18 16:00,2012-07-17 16:00,,PT_Normal,,,,,tKp4o1yh502sMifOba35Xg,vCos4CahIU+sj80D2OGyYg,,,N,0,0,,,2011-12-05 11:18,2012-01-19 16:26,admin,admin
29,87802,1288,11933,794,1,0,N,N,N,CP_Drtn,TT_Task,DT_FixedDUR2,RV_OK,TK_NotStart,A1380,Fire Fighting Works,,0,0,280,0,0,0,280,0,0,0,,,,2012-06-12 16:00,2012-07-17 16:00,,2012-06-12 16:00,2012-07-17 16:00,2012-06-12 16:00,2012-07-17 16:00,2012-06-12 16:00,2012-07-17 16:00,,2012-06-12 16:00,2012-07-17 16:00,,PT_Normal,,,,,hpZ/GfzMckWLMdLthI1Alg,nlerN1wf5kSt9uFymNbsTg,,,Y,0,0,,,2011-12-05 11:18,2012-01-19 16:26,admin,admin
30,87803,1288,11934,794,1,0,N,N,N,CP_Drtn,TT_Task,DT_FixedDUR2,RV_OK,TK_NotStart,A1420,Supply works,,0,0,240,0,0,0,240,0,0,0,,,,2012-05-23 16:00,2012-06-22 16:00,,2012-05-23 16:00,2012-06-22 16:00,2012-05-23 16:00,2012-06-22 16:00,2012-05-23 16:00,2012-06-22 16:00,,2012-05-23 16:00,2012-06-22 16:00,,PT_Normal,,,,,hyF7HC0hVkyGav+EPa5vUQ,KstnYNbiFkWq0awmz+UbGA,,,Y,0,0,,,2011-12-05 11:18,2012-01-19 16:26,admin,admin
31,87804,1288,11934,794,1,0,N,N,N,CP_Drtn,TT_Task,DT_FixedDUR2,RV_OK,TK_NotStart,A1430,Drainage works,,0,0,240,0,0,0,240,0,0,0,,,,2012-06-02 16:00,2012-07-02 16:00,,2012-06-02 16:00,2012-07-02 16:00,2012-06-02 16:00,2012-07-02 16:00,2012-06-02 16:00,2012-07-02 16:00,,2012-06-02 16:00,2012-07-02 16:00,,PT_Normal,,,,,bIZuCAZy+km5PqUIFSOfMA,QsO3TDQWD0GHawQHr/mYbg,,,Y,0,0,,,2011-12-05 11:18,2012-01-19 16:26,admin,admin
32,87805,1288,11934,794,1,0,N,N,N,CP_Drtn,TT_Task,DT_FixedDUR2,RV_OK,TK_NotStart,A1440,Plumbing equipments,,0,0,120,0,0,0,120,0,0,0,,,,2012-07-02 16:00,2012-07-17 16:00,,2012-07-02 16:00,2012-07-17 16:00,2012-07-02 16:00,2012-07-17 16:00,2012-07-02 16:00,2012-07-17 16:00,,2012-07-02 16:00,2012-07-17 16:00,,PT_Normal,,,,,drtfitBJokWOavH2javy0w,3vbIlEiGcEe6FRlvogR/wg,,,Y,0,0,,,2011-12-05 11:18,2012-01-19 16:26,admin,admin
33,87806,1288,11930,794,1,0,N,N,N,CP_Drtn,TT_Task,DT_FixedDUR2,RV_OK,TK_NotStart,A1450,Fire alarm system,,0,0,240,0,0,0,240,0,0,0,,,,2012-05-23 16:00,2012-06-22 16:00,,2012-05-23 16:00,2012-06-22 16:00,2012-05-23 16:00,2012-06-22 16:00,2012-05-23 16:00,2012-06-22 16:00,,2012-05-23 16:00,2012-06-22 16:00,,PT_Normal,,,,,+RcsWKKq9UKgoBMlBBZuhw,Di2jUr0lgUChSiLtLQuymA,,,Y,0,0,,,2011-12-05 11:18,2012-01-19 16:26,admin,admin
34,87807,1288,11930,794,1,0,N,N,N,CP_Drtn,TT_Task,DT_FixedDUR2,RV_OK,TK_NotStart,A1460,Lighting works,,0,0,240,0,0,0,240,0,0,0,,,,2012-06-07 16:00,2012-07-07 16:00,,2012-06-07 16:00,2012-07-07 16:00,2012-06-07 16:00,2012-07-07 16:00,2012-06-07 16:00,2012-07-07 16:00,,2012-06-07 16:00,2012-07-07 16:00,,PT_Normal,,,,,Kf8zospdLUKQH2DhFLzbqA,yHuL943Rj0CU6WSyJY6vEQ,,,Y,0,0,,,2011-12-05 11:18,2012-01-19 16:26,admin,admin
35,87808,1288,11930,794,1,0,N,N,N,CP_Drtn,TT_Task,DT_FixedDUR2,RV_OK,TK_NotStart,A1470,Switch board erection,,0,0,160,0,0,0,160,0,0,0,,,,2012-06-27 16:00,2012-07-17 16:00,,2012-06-27 16:00,2012-07-17 16:00,2012-06-27 16:00,2012-07-17 16:00,2012-06-27 16:00,2012-07-17 16:00,,2012-06-27 16:00,2012-07-17 16:00,,PT_Normal,,,,,7LGv/Id5mE+1R9DNwdxUZg,+EB+fcnqIk621QAZ/buxSg,,,Y,0,0,,,2011-12-05 11:18,2012-01-19 16:26,admin,admin
36,87809,1288,11933,794,1,0,N,N,N,CP_Drtn,TT_Task,DT_FixedDUR2,RV_OK,TK_NotStart,A1480,HVAC Works,,160,160,280,0,0,0,280,0,0,0,,,,2012-06-12 16:00,2012-07-17 16:00,,2012-05-23 16:00,2012-06-27 16:00,2012-05-23 16:00,2012-06-27 16:00,2012-05-23 16:00,2012-06-27 16:00,,2012-06-12 16:00,2012-07-17 16:00,,PT_Normal,,,,,fE7urR86ZUC1hi1g2IC6tw,zB6NCreCa0yNLtEqhI84lQ,,,N,0,0,,,2011-12-05 11:18,2012-01-19 16:26,admin,admin
37,87810,1288,11923,794,1,0,N,N,N,CP_Drtn,TT_Task,DT_FixedDUR2,RV_OK,TK_NotStart,A1490,Masonry For Superstructure,,0,0,160,0,0,0,160,0,0,0,,,,2012-05-03 16:00,2012-05-23 16:00,,2012-05-03 16:00,2012-05-23 16:00,2012-05-03 16:00,2012-05-23 16:00,2012-05-03 16:00,2012-05-23 16:00,,2012-05-03 16:00,2012-05-23 16:00,,PT_Normal,,,,,5IGT6mZZtEKpm+m7wHDZUg,+VwNwSLxYU2Nzm8Nch6ThA,,,Y,0,0,,,2011-12-05 11:18,2012-01-19 16:26,admin,admin
38,87811,1288,11919,794,1,0,N,N,N,CP_Drtn,TT_Task,DT_FixedDrtn,RV_OK,TK_NotStart,A340,Shop Drawings submittal,,567,0,56,0,0,0,56,0,0,0,,,,2012-05-09 16:00,2012-05-16 16:00,,2012-02-29 08:00,2012-03-06 17:00,2012-02-29 08:00,2012-03-06 17:00,2012-02-29 08:00,2012-03-06 17:00,,2012-05-09 16:00,2012-05-16 16:00,,PT_Normal,,,,,WEPD5vxS2E2/PMogS9v0Vw,SuG5KFQy5EGTUVeuGFSe2g,,,N,0,0,,,2011-12-05 11:18,2012-01-19 16:26,admin,admin
39,87812,1288,11919,794,1,0,N,N,N,CP_Drtn,TT_Task,DT_FixedDUR2,RV_OK,TK_NotStart,A350,Shop Drawings Approval,,567,567,56,0,0,0,56,0,0,0,,,,2012-05-16 16:00,2012-05-23 16:00,,2012-03-07 08:00,2012-03-13 17:00,2012-03-07 08:00,2012-03-13 17:00,2012-03-07 08:00,2012-03-13 17:00,,2012-05-16 16:00,2012-05-23 16:00,,PT_Normal,,,,,m9T1D5gqb0yWVfCY9UZx1g,6Jkup/8EwkyYSz8H2Itdgg,,,N,0,0,,,2011-12-05 11:18,2012-01-19 16:26,admin,admin
40,87813,1288,11924,794,1,0,N,N,N,CP_Drtn,TT_Task,DT_FixedDUR2,RV_OK,TK_NotStart,A1240,Insulation For Concrete Building Roof,,320,320,120,0,0,0,120,0,0,0,,,,2012-07-02 16:00,2012-07-17 16:00,,2012-05-23 16:00,2012-06-07 16:00,2012-05-23 16:00,2012-06-07 16:00,2012-05-23 16:00,2012-06-07 16:00,,2012-07-02 16:00,2012-07-17 16:00,,PT_Normal,,,,,V/aEUBDnQEeKW6OWSs0fFQ,8HV1AVLggUONGNNFKyCt9w,,,N,0,0,,,2011-12-05 11:18,2012-01-19 16:26,admin,admin
41,87814,1288,11926,794,1,0,N,N,N,CP_Drtn,TT_Task,DT_FixedDUR2,RV_OK,TK_NotStart,A1500,False Ceiling,,0,0,160,0,0,0,160,0,0,0,,,,2012-06-12 16:00,2012-07-02 16:00,,2012-06-12 16:00,2012-07-02 16:00,2012-06-12 16:00,2012-07-02 16:00,2012-06-12 16:00,2012-07-02 16:00,,2012-06-12 16:00,2012-07-02 16:00,,PT_Normal,,,,,6lird6xTlEyjbcYEnl3jLA,CGfkRGiaLUuyJVlasXLpKg,,,Y,0,0,,,2011-12-05 11:18,2012-01-19 16:26,admin,admin
42,87815,1288,11927,794,1,0,N,N,N,CP_Drtn,TT_Task,DT_FixedDUR2,RV_OK,TK_NotStart,A1350,Doors Erection,,200,200,120,0,0,0,120,0,0,0,,,,2012-07-02 16:00,2012-07-17 16:00,,2012-06-07 16:00,2012-06-22 16:00,2012-06-07 16:00,2012-06-22 16:00,2012-06-07 16:00,2012-06-22 16:00,,2012-07-02 16:00,2012-07-17 16:00,,PT_Normal,,,,,EzWTWv3PvkWu0Bp71dVWFA,p0cAq7eKWUOrMD/Ix1pf+w,,,N,0,0,,,2011-12-05 11:18,2012-01-19 16:26,admin,admin
43,87820,1288,11962,794,1,0,N,N,N,CP_Drtn,TT_Task,DT_FixedDUR2,RV_OK,TK_NotStart,A1540,Excavation Works,,151,0,160,0,0,0,160,0,0,0,,,,2012-01-29 16:00,2012-02-18 16:00,,2012-01-11 08:00,2012-01-30 17:00,2012-01-11 08:00,2012-01-30 17:00,2012-01-11 08:00,2012-01-30 17:00,,2012-01-29 16:00,2012-02-18 16:00,,PT_Normal,,,,,jg+unnpYlUSMjjrPJ/4M7Q,,,,N,0,0,,,2011-12-06 10:29,2012-01-19 16:26,admin,admin
44,87821,1288,11962,794,1,0,N,N,N,CP_Drtn,TT_Task,DT_FixedDUR2,RV_OK,TK_NotStart,A1550,Plain Concrete For Footings,,151,0,80,0,0,0,80,0,0,0,,,,2012-02-18 16:00,2012-02-28 16:00,,2012-01-31 08:00,2012-02-09 17:00,2012-01-31 08:00,2012-02-09 17:00,2012-01-31 08:00,2012-02-09 17:00,,2012-02-18 16:00,2012-02-28 16:00,,PT_Normal,,,,,Ust0BhdOqUaJjKe/O4LcTA,,,,N,0,0,,,2011-12-06 10:29,2012-01-19 16:26,admin,admin
45,87822,1288,11962,794,1,0,N,N,N,CP_Drtn,TT_Task,DT_FixedDUR2,RV_OK,TK_NotStart,A1560,Reinforced Concrete For Footings,,151,0,160,0,0,0,160,0,0,0,,,,2012-02-28 16:00,2012-03-19 16:00,,2012-02-10 08:00,2012-02-29 17:00,2012-02-10 08:00,2012-02-29 17:00,2012-02-10 08:00,2012-02-29 17:00,,2012-02-28 16:00,2012-03-19 16:00,,PT_Normal,,,,,NUFDgZfaHESQtGc2lutqjA,,,,N,0,0,,,2011-12-06 10:29,2012-01-19 16:26,admin,admin
46,87823,1288,11962,794,1,0,N,N,N,CP_Drtn,TT_Task,DT_FixedDUR2,RV_OK,TK_NotStart,A1570,Backfill Works,,151,0,80,0,0,0,80,0,0,0,,,,2012-03-19 16:00,2012-03-29 16:00,,2012-03-01 08:00,2012-03-10 17:00,2012-03-01 08:00,2012-03-10 17:00,2012-03-01 08:00,2012-03-10 17:00,,2012-03-19 16:00,2012-03-29 16:00,,PT_Normal,,,,,ehRO12hRDEaprITwTLdUfg,,,,N,0,0,,,2011-12-06 10:29,2012-01-19 16:26,admin,admin
47,87824,1288,11962,794,1,0,N,N,N,CP_Drtn,TT_Task,DT_FixedDUR2,RV_OK,TK_NotStart,A1580,Tank walls,,151,0,240,0,0,0,240,0,0,0,,,,2012-03-29 16:00,2012-04-28 16:00,,2012-03-11 08:00,2012-04-09 17:00,2012-03-11 08:00,2012-04-09 17:00,2012-03-11 08:00,2012-04-09 17:00,,2012-03-29 16:00,2012-04-28 16:00,,PT_Normal,,,,,aR0kpJCcmEO9OZzHMpDSPQ,,,,N,0,0,,,2011-12-06 10:29,2012-01-19 16:26,admin,admin
48,87825,1288,11962,794,1,0,N,N,N,CP_Drtn,TT_Task,DT_FixedDUR2,RV_OK,TK_NotStart,A1590,S.O.G for ground floors,,151,0,80,0,0,0,80,0,0,0,,,,2012-04-28 16:00,2012-05-08 16:00,,2012-04-10 08:00,2012-04-19 17:00,2012-04-10 08:00,2012-04-19 17:00,2012-04-10 08:00,2012-04-19 17:00,,2012-04-28 16:00,2012-05-08 16:00,,PT_Normal,,,,,lYiSY49/l0qT5smmMkn+Dw,,,,N,0,0,,,2011-12-06 10:32,2012-01-19 16:26,admin,admin
49,87826,1288,11962,794,1,0,N,N,N,CP_Drtn,TT_Task,DT_FixedDUR2,RV_OK,TK_NotStart,A1600,Ground floor columns,,439,0,56,0,0,0,56,0,0,0,,,,2012-06-03 16:00,2012-06-10 16:00,,2012-04-10 08:00,2012-04-16 17:00,2012-04-10 08:00,2012-04-16 17:00,2012-04-10 08:00,2012-04-16 17:00,,2012-06-03 16:00,2012-06-10 16:00,,PT_Normal,,,,,1ieTUvlPwkGrduyFx4bb4g,,,,N,0,0,,,2011-12-06 10:35,2012-01-19 16:26,admin,admin
50,87827,1288,11962,794,1,0,N,N,N,CP_Drtn,TT_Task,DT_FixedDUR2,RV_OK,TK_NotStart,A1610,Ground floor roof,,439,0,120,0,0,0,120,0,0,0,,,,2012-06-10 16:00,2012-06-25 16:00,,2012-04-17 08:00,2012-05-01 17:00,2012-04-17 08:00,2012-05-01 17:00,2012-04-17 08:00,2012-05-01 17:00,,2012-06-10 16:00,2012-06-25 16:00,,PT_Normal,,,,,9sOwyZOQ4UOi1ZoSlXs7ug,,,,N,0,0,,,2011-12-06 10:35,2012-01-19 16:26,admin,admin
51,87828,1288,11962,794,1,0,N,N,N,CP_Drtn,TT_Task,DT_FixedDUR2,RV_OK,TK_NotStart,A1620,First floor roof,,439,439,120,0,0,0,120,0,0,0,,,,2012-07-02 16:00,2012-07-17 16:00,,2012-05-09 08:00,2012-05-23 17:00,2012-05-09 08:00,2012-05-23 17:00,2012-05-09 08:00,2012-05-23 17:00,,2012-07-02 16:00,2012-07-17 16:00,,PT_Normal,,,,,Zv6FHzao306NzurbH8F4qQ,,,,N,0,0,,,2011-12-06 10:35,2012-01-19 16:26,admin,admin
52,87829,1288,11962,794,1,0,N,N,N,CP_Drtn,TT_Task,DT_FixedDUR2,RV_OK,TK_NotStart,A1630,First floor cloumns,,439,0,56,0,0,0,56,0,0,0,,,,2012-06-25 16:00,2012-07-02 16:00,,2012-05-02 08:00,2012-05-08 17:00,2012-05-02 08:00,2012-05-08 17:00,2012-05-02 08:00,2012-05-08 17:00,,2012-06-25 16:00,2012-07-02 16:00,,PT_Normal,,,,,lH03Y/YmpkCwvoRTGxzCdg,,,,N,0,0,,,2011-12-06 10:37,2012-01-19 16:26,admin,admin
53,87830,1288,11963,794,1,0,N,N,N,CP_Drtn,TT_Task,DT_FixedDUR2,RV_OK,TK_NotStart,A1640,Masonry works,,151,0,160,0,0,0,160,0,0,0,,,,2012-05-08 16:00,2012-05-28 16:00,,2012-04-20 08:00,2012-05-09 17:00,2012-04-20 08:00,2012-05-09 17:00,2012-04-20 08:00,2012-05-09 17:00,,2012-05-08 16:00,2012-05-28 16:00,,PT_Normal,,,,,C2u2baKflE+vY6mglcyyyQ,,,,N,0,0,,,2011-12-06 10:46,2012-01-19 16:26,admin,admin
54,87831,1288,11963,794,1,0,N,N,N,CP_Drtn,TT_Task,DT_FixedDUR2,RV_OK,TK_NotStart,A1650,Plaster works,,151,0,240,0,0,0,240,0,0,0,,,,2012-05-28 16:00,2012-06-27 16:00,,2012-05-10 08:00,2012-06-08 17:00,2012-05-10 08:00,2012-06-08 17:00,2012-05-10 08:00,2012-06-08 17:00,,2012-05-28 16:00,2012-06-27 16:00,,PT_Normal,,,,,q3THuQMvskGjXco4uP4g7g,,,,N,0,0,,,2011-12-06 10:46,2012-01-19 16:26,admin,admin
55,87832,1288,11963,794,1,0,N,N,N,CP_Drtn,TT_Task,DT_FixedDUR2,RV_OK,TK_NotStart,A1660,Flooring works,,151,0,160,0,0,0,160,0,0,0,,,,2012-06-27 16:00,2012-07-17 16:00,,2012-06-09 08:00,2012-06-28 17:00,2012-06-09 08:00,2012-06-28 17:00,2012-06-09 08:00,2012-06-28 17:00,,2012-06-27 16:00,2012-07-17 16:00,,PT_Normal,,,,,d0hgB6LehUCtlmAD73Qj/Q,,,,N,0,0,,,2011-12-06 10:47,2012-01-19 16:26,admin,admin
56,87833,1288,11963,794,1,0,N,N,N,CP_Drtn,TT_Task,DT_FixedDUR2,RV_OK,TK_NotStart,A1670,Painting works,,151,151,120,0,0,0,120,0,0,0,,,,2012-07-02 16:00,2012-07-17 16:00,,2012-06-14 08:00,2012-06-28 17:00,2012-06-14 08:00,2012-06-28 17:00,2012-06-14 08:00,2012-06-28 17:00,,2012-07-02 16:00,2012-07-17 16:00,,PT_Normal,,,,,Iiw9paGBnkyxiAbVzjVgUA,,,,N,0,0,,,2011-12-06 10:47,2012-01-19 16:26,admin,admin
57,92175,1288,11925,1571,1,0,N,N,N,CP_Drtn,TT_Task,DT_FixedDUR2,RV_OK,TK_NotStart,A1080,Soil replacement&backfilling,,0,0,120,0,0,0,120,0,0,0,,,,2012-01-21 08:00,2012-02-06 16:00,,2012-01-21 08:00,2012-02-06 16:00,2012-01-21 08:00,2012-02-06 16:00,2012-01-21 08:00,2012-02-06 16:00,,2012-01-21 08:00,2012-02-06 16:00,,PT_Normal,,,,,UWsWdUy7bkK+WQ6yBeqSpA,,,,Y,0,0,,,2012-01-19 16:25,2012-01-19 16:26,admin,admin
