,task_id,proj_id,wbs_id,clndr_id,est_wt,phys_complete_pct,rev_fdbk_flag,lock_plan_flag,auto_compute_act_flag,complete_pct_type,task_type,duration_type,review_type,status_code,task_code,task_name,rsrc_id,total_float_hr_cnt,free_float_hr_cnt,remain_drtn_hr_cnt,act_work_qty,remain_work_qty,target_work_qty,target_drtn_hr_cnt,target_equip_qty,act_equip_qty,remain_equip_qty,cstr_date,act_start_date,act_end_date,late_start_date,late_end_date,expect_end_date,early_start_date,early_end_date,restart_date,reend_date,target_start_date,target_end_date,review_end_date,rem_late_start_date,rem_late_end_date,cstr_type,priority_type,suspend_date,resume_date,float_path,float_path_order,guid,tmpl_guid,cstr_date2,cstr_type2,driving_path_flag,act_this_per_work_qty,act_this_per_equip_qty,external_early_start_date,external_late_end_date,create_date,update_date,create_user,update_user
0,158718,7478,26664,794,1,0,N,N,N,CP_Drtn,TT_Task,DT_FixedDUR2,RV_OK,TK_NotStart,A1120,Mobilization,,0,0,112,0,0,0,112,0,0,0,,,,2012-10-01 08:00,2012-10-14 17:00,,2012-10-01 08:00,2012-10-14 17:00,2012-10-01 08:00,2012-10-14 17:00,2012-10-01 08:00,2012-10-14 17:00,,2012-10-01 08:00,2012-10-14 17:00,,PT_Normal,,,,,GPhAdYb3b06l20kVFs6cpA,,,,Y,0,0,,,2012-09-19 16:56,2012-09-19 17:06,admin,admin
1,158719,7478,26664,794,1,0,N,N,N,CP_Drtn,TT_Task,DT_FixedDUR2,RV_OK,TK_NotStart,A1130,Demobilization,,8,8,56,0,0,0,56,0,0,0,,,,2013-03-25 08:00,2013-03-31 17:00,,2013-03-24 08:00,2013-03-30 17:00,2013-03-24 08:00,2013-03-30 17:00,2013-03-24 08:00,2013-03-30 17:00,,2013-03-25 08:00,2013-03-31 17:00,,PT_Normal,,,,,XTHYvj+vd0KuxlzLQ1pDUw,,,,N,0,0,,,2012-09-19 16:56,2012-09-30 13:18,admin,admin
2,158720,7478,26665,794,0,0,N,N,N,CP_Drtn,TT_Mile,DT_FixedDrtn,RV_OK,TK_NotStart,A1140,Letter of acceptance,,0,0,0,0,0,0,0,0,0,0,,,,2012-10-01 08:00,2012-10-01 08:00,,2012-10-01 08:00,2012-10-01 08:00,2012-10-01 08:00,2012-10-01 08:00,2012-10-01 08:00,2012-10-01 08:00,,2012-10-01 08:00,2012-10-01 08:00,,PT_Normal,,,,,6n41C5wQ2kGwouxH7Klctw,,,,Y,0,0,,,2012-09-19 16:59,2012-09-19 17:09,admin,admin
3,158721,7478,26665,794,0,0,N,N,N,CP_Drtn,TT_Mile,DT_FixedDrtn,RV_OK,TK_NotStart,A1150,Site handing over,,0,0,0,0,0,0,0,0,0,0,,,,2012-10-01 08:00,2012-10-01 08:00,,2012-10-01 08:00,2012-10-01 08:00,2012-10-01 08:00,2012-10-01 08:00,2012-10-01 08:00,2012-10-01 08:00,,2012-10-01 08:00,2012-10-01 08:00,,PT_Normal,,,,,4q3LDoatHU6Lumt1WWZOLg,,,,Y,0,0,,,2012-09-19 17:06,2012-09-19 17:09,admin,admin
4,158722,7478,26665,794,0,0,N,N,N,CP_Drtn,TT_Mile,DT_FixedDrtn,RV_OK,TK_NotStart,A1160,Contract agreement,,0,0,0,0,0,0,0,0,0,0,,,,2012-10-01 08:00,2012-10-01 08:00,,2012-10-01 08:00,2012-10-01 08:00,2012-10-01 08:00,2012-10-01 08:00,2012-10-01 08:00,2012-10-01 08:00,,2012-10-01 08:00,2012-10-01 08:00,,PT_Normal,,,,,57WW6kJw7kma9xA0rWlwJA,,,,Y,0,0,,,2012-09-19 17:06,2012-09-19 17:09,admin,admin
5,158723,7478,26665,794,0,0,N,N,N,CP_Drtn,TT_Mile,DT_FixedDrtn,RV_OK,TK_NotStart,A1170,Advanced payment,,0,0,0,0,0,0,0,0,0,0,,,,2012-10-01 08:00,2012-10-01 08:00,,2012-10-01 08:00,2012-10-01 08:00,2012-10-01 08:00,2012-10-01 08:00,2012-10-01 08:00,2012-10-01 08:00,,2012-10-01 08:00,2012-10-01 08:00,,PT_Normal,,,,,koU0wyp0jkG0s+iM3nqn8w,,,,Y,0,0,,,2012-09-19 17:07,2012-09-19 17:09,admin,admin
6,158724,7478,26665,794,0,0,N,N,N,CP_Drtn,TT_Mile,DT_FixedDrtn,RV_OK,TK_NotStart,A1180,Commencement date,,0,0,0,0,0,0,0,0,0,0,,,,2012-10-01 08:00,2012-10-01 08:00,,2012-10-01 08:00,2012-10-01 08:00,2012-10-01 08:00,2012-10-01 08:00,2012-10-01 08:00,2012-10-01 08:00,,2012-10-01 08:00,2012-10-01 08:00,,PT_Normal,,,,,BcmhSKq+Lk6pGy3GRA0xGw,,,,Y,0,0,,,2012-09-19 17:08,2012-09-19 17:09,admin,admin
7,158726,7478,26670,794,1,0,N,N,N,CP_Drtn,TT_Task,DT_FixedDUR2,RV_OK,TK_NotStart,A1200,Demolishing works,,32,0,80,0,0,0,80,0,0,0,,,,2012-10-10 08:00,2012-10-19 17:00,,2012-10-06 08:00,2012-10-15 17:00,2012-10-06 08:00,2012-10-15 17:00,2012-10-06 08:00,2012-10-15 17:00,,2012-10-10 08:00,2012-10-19 17:00,,PT_Normal,,,,,74cMf7Dr9kOgegwSNFg/qw,ZUSbwxD2wUqbg4Ogw2Ggyg,,,N,0,0,,,2012-09-19 17:48,2012-09-30 13:18,admin,admin
8,158727,7478,26670,794,1,0,N,N,N,CP_Drtn,TT_Task,DT_FixedDUR2,RV_OK,TK_NotStart,A1210,Excavation,,32,0,56,0,0,0,56,0,0,0,,,,2012-10-20 08:00,2012-10-26 17:00,,2012-10-16 08:00,2012-10-22 17:00,2012-10-16 08:00,2012-10-22 17:00,2012-10-16 08:00,2012-10-22 17:00,,2012-10-20 08:00,2012-10-26 17:00,,PT_Normal,,,,,m+geVBi7vEqDUIRgAlsQZA,yxwd9jE5S02FU3lFym5bqA,,,N,0,0,,,2012-09-19 17:48,2012-09-30 13:18,admin,admin
9,158728,7478,26670,794,1,0,N,N,N,CP_Drtn,TT_Task,DT_FixedDUR2,RV_OK,TK_NotStart,A1220,P.C footings,,32,0,80,0,0,0,80,0,0,0,,,,2012-10-27 08:00,2012-11-05 17:00,,2012-10-23 08:00,2012-11-01 17:00,2012-10-23 08:00,2012-11-01 17:00,2012-10-23 08:00,2012-11-01 17:00,,2012-10-27 08:00,2012-11-05 17:00,,PT_Normal,,,,,j+OoLbSUTEe6z7tvsOdyow,WGe0TMrrukuj1tIApelnzw,,,N,0,0,,,2012-09-19 17:48,2012-09-30 13:18,admin,admin
10,158729,7478,26670,794,1,0,N,N,N,CP_Drtn,TT_Task,DT_FixedDUR2,RV_OK,TK_Active,A1230,R.C footings,,32,0,160,0,0,0,160,0,0,0,,2012-11-01 08:00,,2012-11-01 08:00,2012-11-20 17:00,,2012-10-28 08:00,2012-11-16 17:00,2012-10-28 08:00,2012-11-16 17:00,2012-11-01 08:00,2012-11-20 17:00,,2012-11-01 08:00,2012-11-20 17:00,,PT_Normal,,,,,YH5ia3ZvNEKBFMCkj6NtLg,rOE9BRsVUkqCQidM1YGyFg,,,N,0,0,,,2012-09-19 17:48,2012-09-30 13:18,admin,admin
11,158730,7478,26670,794,1,0,N,N,N,CP_Drtn,TT_Task,DT_FixedDUR2,RV_OK,TK_NotStart,A1240,R.C for pedestalls,,32,0,120,0,0,0,120,0,0,0,,,,2012-11-11 08:00,2012-11-25 17:00,,2012-11-07 08:00,2012-11-21 17:00,2012-11-07 08:00,2012-11-21 17:00,2012-11-07 08:00,2012-11-21 17:00,,2012-11-11 08:00,2012-11-25 17:00,,PT_Normal,,,,,8VltY8r+WkaHHuwNPRo0Ow,6PKoCHIuCkGG8QIDoNkkSQ,,,N,0,0,,,2012-09-19 17:48,2012-09-30 13:18,admin,admin
12,158731,7478,26670,794,1,0,N,N,N,CP_Drtn,TT_Task,DT_FixedDUR2,RV_OK,TK_NotStart,A1250,Footings insulations,,32,0,120,0,0,0,120,0,0,0,,,,2012-11-21 08:00,2012-12-05 17:00,,2012-11-17 08:00,2012-12-01 17:00,2012-11-17 08:00,2012-12-01 17:00,2012-11-17 08:00,2012-12-01 17:00,,2012-11-21 08:00,2012-12-05 17:00,,PT_Normal,,,,,RH6JslyIfk6qIKLLSLmR+w,/vM1HRizm0eHxIKenwtmNg,,,N,0,0,,,2012-09-19 17:48,2012-09-30 13:18,admin,admin
13,158732,7478,26670,794,1,0,N,N,N,CP_Drtn,TT_Task,DT_FixedDUR2,RV_OK,TK_NotStart,A1270,Backfilling between foundations,,32,8,160,0,0,0,160,0,0,0,,,,2012-12-13 08:00,2013-01-01 17:00,,2012-12-09 08:00,2012-12-28 17:00,2012-12-09 08:00,2012-12-28 17:00,2012-12-09 08:00,2012-12-28 17:00,,2012-12-13 08:00,2013-01-01 17:00,,PT_Normal,,,,,g47c6RQEX02ip5mMhjodoA,eUfKPKOCeUeAps60+/V5rg,,,N,0,0,,,2012-09-19 17:48,2012-09-30 13:37,admin,admin
14,158733,7478,26670,794,1,0,N,N,N,CP_Drtn,TT_Task,DT_FixedDUR2,RV_OK,TK_NotStart,A1260,Masonry under S.O.G,,32,0,144,0,0,0,144,0,0,0,,,,2012-11-25 08:00,2012-12-12 17:00,,2012-11-21 08:00,2012-12-08 17:00,2012-11-21 08:00,2012-12-08 17:00,2012-11-21 08:00,2012-12-08 17:00,,2012-11-25 08:00,2012-12-12 17:00,,PT_Normal,,,,,hgPXpKFy7Em0ikR/R+Mh7A,Vmp2R6yhUEy51J0o/07cPw,,,N,0,0,,,2012-09-19 17:48,2012-09-30 13:18,admin,admin
15,158734,7478,26670,794,1,0,N,N,N,CP_Drtn,TT_Task,DT_FixedDUR2,RV_OK,TK_NotStart,A1280,Steel Structure erection,,24,0,240,0,0,0,240,0,0,0,,,,2013-01-02 08:00,2013-01-31 17:00,,2012-12-30 08:00,2013-01-28 17:00,2012-12-30 08:00,2013-01-28 17:00,2012-12-30 08:00,2013-01-28 17:00,,2013-01-02 08:00,2013-01-31 17:00,,PT_Normal,,,,,HgZFHY7o+kKwNsJoBfNrlQ,z+fQyeR/mUynK5hqQGUBoQ,,,N,0,0,,,2012-09-19 17:48,2012-09-30 13:37,admin,admin
16,158735,7478,26670,794,1,0,N,N,N,CP_Drtn,TT_Task,DT_FixedDUR2,RV_OK,TK_NotStart,A1290,R.C for S.O.G,,24,0,160,0,0,0,160,0,0,0,,,,2013-01-12 08:00,2013-01-31 17:00,,2013-01-09 08:00,2013-01-28 17:00,2013-01-09 08:00,2013-01-28 17:00,2013-01-09 08:00,2013-01-28 17:00,,2013-01-12 08:00,2013-01-31 17:00,,PT_Normal,,,,,MgOHtJGZdkCpfHvO5QDIwA,GCzynM2Xok68ybcJ74eksw,,,N,0,0,,,2012-09-19 17:48,2012-09-30 13:37,admin,admin
17,158737,7478,26670,794,1,0,N,N,N,CP_Drtn,TT_Task,DT_FixedDUR2,RV_OK,TK_NotStart,A1310,Sandwich panel erection,,136,0,200,0,0,0,200,0,0,0,,,,2013-02-15 08:00,2013-03-11 17:00,,2013-01-29 08:00,2013-02-22 17:00,2013-01-29 08:00,2013-02-22 17:00,2013-01-29 08:00,2013-02-22 17:00,,2013-02-15 08:00,2013-03-11 17:00,,PT_Normal,,,,,dgVJ5aNwKkKkMzaBAJDnGg,RMNM3TMpbki2M8ZOk8AYKQ,,,N,0,0,,,2012-09-19 17:48,2012-09-30 13:37,admin,admin
18,158738,7478,26670,794,1,0,N,N,N,CP_Drtn,TT_Task,DT_FixedDUR2,RV_OK,TK_NotStart,A1320,Doors &windows erection,,184,184,112,0,0,0,112,0,0,0,,,,2013-03-18 08:00,2013-03-31 17:00,,2013-02-23 08:00,2013-03-08 17:00,2013-02-23 08:00,2013-03-08 17:00,2013-02-23 08:00,2013-03-08 17:00,,2013-03-18 08:00,2013-03-31 17:00,,PT_Normal,,,,,FkFBS71iakiqaJo57aRslQ,0Qs73nOSZEmylYoK3rY9ig,,,N,0,0,,,2012-09-19 17:48,2012-09-30 13:37,admin,admin
19,158739,7478,26670,794,1,0,N,N,N,CP_Drtn,TT_Task,DT_FixedDUR2,RV_OK,TK_NotStart,A1330,Masonry works,,32,0,112,0,0,0,112,0,0,0,,,,2013-02-02 08:00,2013-02-15 17:00,,2013-01-29 08:00,2013-02-11 17:00,2013-01-29 08:00,2013-02-11 17:00,2013-01-29 08:00,2013-02-11 17:00,,2013-02-02 08:00,2013-02-15 17:00,,PT_Normal,,,,,4Bopg/YI7UKZbqKcJmJBHA,,,,N,0,0,,,2012-09-19 17:56,2012-09-30 13:37,admin,admin
20,158740,7478,26670,794,1,0,N,N,N,CP_Drtn,TT_Task,DT_FixedDUR2,RV_OK,TK_NotStart,A1340,Painting works,,40,32,192,0,0,0,192,0,0,0,,,,2013-03-08 08:00,2013-03-31 17:00,,2013-03-03 08:00,2013-03-26 17:00,2013-03-03 08:00,2013-03-26 17:00,2013-03-03 08:00,2013-03-26 17:00,,2013-03-08 08:00,2013-03-31 17:00,,PT_Normal,,,,,unPLZEmOkkyLBegc1KifjA,,,,N,0,0,,,2012-09-19 17:56,2012-09-30 13:37,admin,admin
21,158741,7478,26671,794,1,0,N,N,N,CP_Drtn,TT_Task,DT_FixedDUR2,RV_OK,TK_NotStart,A1350,HVAC WORKS,,24,16,360,0,0,0,360,0,0,0,,,,2013-02-15 08:00,2013-03-31 17:00,,2013-02-12 08:00,2013-03-28 17:00,2013-02-12 08:00,2013-03-28 17:00,2013-02-12 08:00,2013-03-28 17:00,,2013-02-15 08:00,2013-03-31 17:00,,PT_Normal,,,,,fF3QGnf4TEaEyyjC4Vc9Ig,,,,N,0,0,,,2012-09-19 17:58,2012-09-30 13:37,admin,admin
22,158742,7478,26671,794,1,0,N,N,N,CP_Drtn,TT_Task,DT_FixedDUR2,RV_OK,TK_NotStart,A1360,ELECTRICAL WORKS,,24,16,400,0,0,0,400,0,0,0,,,,2013-02-10 08:00,2013-03-31 17:00,,2013-02-07 08:00,2013-03-28 17:00,2013-02-07 08:00,2013-03-28 17:00,2013-02-07 08:00,2013-03-28 17:00,,2013-02-10 08:00,2013-03-31 17:00,,PT_Normal,,,,,wf88+4l93kKwwbfdmto0+w,,,,N,0,0,,,2012-09-19 17:58,2012-09-30 13:37,admin,admin
23,158743,7478,26671,794,1,0,N,N,N,CP_Drtn,TT_Task,DT_FixedDUR2,RV_OK,TK_NotStart,A1370,Plumbing works,,32,24,240,0,0,0,240,0,0,0,,,,2013-03-02 08:00,2013-03-31 17:00,,2013-02-26 08:00,2013-03-27 17:00,2013-02-26 08:00,2013-03-27 17:00,2013-02-26 08:00,2013-03-27 17:00,,2013-03-02 08:00,2013-03-31 17:00,,PT_Normal,,,,,tL/WETEpl0KdL8OlqlvRvw,,,,N,0,0,,,2012-09-19 17:58,2012-09-30 13:37,admin,admin
24,158744,7478,26670,794,1,0,N,N,N,CP_Drtn,TT_Task,DT_FixedDUR2,RV_OK,TK_NotStart,A1380,Plaster works,,32,0,112,0,0,0,112,0,0,0,,,,2013-02-16 08:00,2013-03-01 17:00,,2013-02-12 08:00,2013-02-25 17:00,2013-02-12 08:00,2013-02-25 17:00,2013-02-12 08:00,2013-02-25 17:00,,2013-02-16 08:00,2013-03-01 17:00,,PT_Normal,,,,,kcF2CxmlCEuVHhrOH6gP8w,,,,N,0,0,,,2012-09-19 17:59,2012-09-30 13:37,admin,admin
25,158745,7478,26674,794,0,0,N,N,N,CP_Drtn,TT_Mile,DT_FixedDrtn,RV_OK,TK_NotStart,A1390,Steel structure,,24,0,0,0,0,0,0,0,0,0,,,,2012-11-02 08:00,2012-11-02 08:00,,2012-10-30 08:00,2012-10-30 08:00,2012-10-30 08:00,2012-10-30 08:00,2012-10-30 08:00,2012-10-30 08:00,,2012-11-02 08:00,2012-11-02 08:00,,PT_Normal,,,,,qj4e/4aYLUSHT63xM3w9Tw,,,,N,0,0,,,2012-09-20 10:32,2012-09-30 13:37,admin,admin
26,158746,7478,26674,794,0,0,N,N,N,CP_Drtn,TT_Mile,DT_FixedDrtn,RV_OK,TK_NotStart,A1400,Corrugated sheets,,40,0,0,0,0,0,0,0,0,0,,,,2012-12-19 08:00,2012-12-19 08:00,,2012-12-14 08:00,2012-12-14 08:00,2012-12-14 08:00,2012-12-14 08:00,2012-12-14 08:00,2012-12-14 08:00,,2012-12-19 08:00,2012-12-19 08:00,,PT_Normal,,,,,RawoT2CjT0ONvxZmmT8qDQ,,,,N,0,0,,,2012-09-20 10:32,2012-09-30 13:06,admin,admin
27,158747,7478,26675,794,1,0,N,N,N,CP_Drtn,TT_Task,DT_FixedDUR2,RV_OK,TK_NotStart,A1410,Steel structure,,24,0,56,0,0,0,56,0,0,0,,,,2012-12-26 08:00,2013-01-01 17:00,,2012-12-23 08:00,2012-12-29 17:00,2012-12-23 08:00,2012-12-29 17:00,2012-12-23 08:00,2012-12-29 17:00,,2012-12-26 08:00,2013-01-01 17:00,,PT_Normal,,,,,oZO2Sv7skEucJv5hrpNuOg,qj4e/4aYLUSHT63xM3w9Tw,,,N,0,0,,,2012-09-20 10:34,2012-09-30 13:37,admin,admin
28,158748,7478,26675,794,0,0,N,N,N,CP_Drtn,TT_FinMile,DT_FixedDrtn,RV_OK,TK_NotStart,A1420,Corrugated sheets,,40,16,0,0,0,0,0,0,0,0,,,,2013-01-26 17:00,2013-01-26 17:00,,2013-01-21 17:00,2013-01-21 17:00,2013-01-21 17:00,2013-01-21 17:00,2013-01-21 17:00,2013-01-21 17:00,,2013-01-26 17:00,2013-01-26 17:00,,PT_Normal,,,,,iwB4mHp3U0mSh9fH4bE7Pg,RawoT2CjT0ONvxZmmT8qDQ,,,N,0,0,,,2012-09-20 10:34,2012-09-30 13:06,admin,admin
29,158749,7478,26674,794,0,0,N,N,N,CP_Drtn,TT_FinMile,DT_FixedDrtn,RV_OK,TK_NotStart,A1430,Fans,,32,0,0,0,0,0,0,0,0,0,,,,2012-11-07 17:00,2012-11-07 17:00,,2012-11-03 17:00,2012-11-03 17:00,2012-11-03 17:00,2012-11-03 17:00,2012-11-03 17:00,2012-11-03 17:00,,2012-11-07 17:00,2012-11-07 17:00,,PT_Normal,,,,,qkKa4L5mVkGf0PA8Ff8sHg,,,,N,0,0,,,2012-09-20 10:34,2012-09-30 13:06,admin,admin
30,158750,7478,26675,794,0,0,N,N,N,CP_Drtn,TT_FinMile,DT_FixedDrtn,RV_OK,TK_NotStart,A1440,Fans,,32,8,0,0,0,0,0,0,0,0,,,,2013-02-14 17:00,2013-02-14 17:00,,2013-02-10 17:00,2013-02-10 17:00,2013-02-10 17:00,2013-02-10 17:00,2013-02-10 17:00,2013-02-10 17:00,,2013-02-14 17:00,2013-02-14 17:00,,PT_Normal,,,,,UHWs1URlCUuc+diXI2IOxw,qkKa4L5mVkGf0PA8Ff8sHg,,,N,0,0,,,2012-09-20 10:34,2012-09-30 13:37,admin,admin
31,158854,7478,26768,794,1,0,N,N,N,CP_Drtn,TT_Task,DT_FixedDUR2,RV_OK,TK_NotStart,A1450,Demolishing works,,0,0,40,0,0,0,40,0,0,0,,,,2012-10-08 08:00,2012-10-12 17:00,,2012-10-08 08:00,2012-10-12 17:00,2012-10-08 08:00,2012-10-12 17:00,2012-10-08 08:00,2012-10-12 17:00,,2012-10-08 08:00,2012-10-12 17:00,,PT_Normal,,,,,MW4+7j2n50aYYKSV1rtZGg,74cMf7Dr9kOgegwSNFg/qw,,,Y,0,0,,,2012-09-20 15:03,2012-09-30 13:05,admin,admin
32,158855,7478,26768,794,1,0,N,N,N,CP_Drtn,TT_Task,DT_FixedDUR2,RV_OK,TK_NotStart,A1460,Excavation,,0,0,112,0,0,0,112,0,0,0,,,,2012-10-13 08:00,2012-10-26 17:00,,2012-10-13 08:00,2012-10-26 17:00,2012-10-13 08:00,2012-10-26 17:00,2012-10-13 08:00,2012-10-26 17:00,,2012-10-13 08:00,2012-10-26 17:00,,PT_Normal,,,,,u3N3ORGff0OTKUgLDc5KXg,m+geVBi7vEqDUIRgAlsQZA,,,Y,0,0,,,2012-09-20 15:03,2012-09-30 13:05,admin,admin
33,158856,7478,26768,794,1,0,N,N,N,CP_Drtn,TT_Task,DT_FixedDUR2,RV_OK,TK_NotStart,A1470,P.C footings,,0,0,160,0,0,0,160,0,0,0,,,,2012-10-27 08:00,2012-11-15 17:00,,2012-10-27 08:00,2012-11-15 17:00,2012-10-27 08:00,2012-11-15 17:00,2012-10-27 08:00,2012-11-15 17:00,,2012-10-27 08:00,2012-11-15 17:00,,PT_Normal,,,,,kHi+wO/HBUyAlZ2ZG7pnaw,j+OoLbSUTEe6z7tvsOdyow,,,Y,0,0,,,2012-09-20 15:03,2012-09-30 13:05,admin,admin
34,158857,7478,26768,794,1,0,N,N,N,CP_Drtn,TT_Task,DT_FixedDUR2,RV_OK,TK_NotStart,A1480,R.C footings,,0,0,200,0,0,0,200,0,0,0,,,,2012-11-01 08:00,2012-11-25 17:00,,2012-11-01 08:00,2012-11-25 17:00,2012-11-01 08:00,2012-11-25 17:00,2012-11-01 08:00,2012-11-25 17:00,,2012-11-01 08:00,2012-11-25 17:00,,PT_Normal,,,,,rDeiYj6YLE2b3+qLg+Tjow,YH5ia3ZvNEKBFMCkj6NtLg,,,Y,0,0,,,2012-09-20 15:03,2012-09-30 13:05,admin,admin
35,158858,7478,26768,794,1,0,N,N,N,CP_Drtn,TT_Task,DT_FixedDUR2,RV_OK,TK_NotStart,A1490,R.C for pedestalls,,0,0,200,0,0,0,200,0,0,0,,,,2012-11-11 08:00,2012-12-05 17:00,,2012-11-11 08:00,2012-12-05 17:00,2012-11-11 08:00,2012-12-05 17:00,2012-11-11 08:00,2012-12-05 17:00,,2012-11-11 08:00,2012-12-05 17:00,,PT_Normal,,,,,/j0Ntyr/tU2wmhsJZnsnEw,8VltY8r+WkaHHuwNPRo0Ow,,,Y,0,0,,,2012-09-20 15:03,2012-09-30 13:05,admin,admin
36,158859,7478,26768,794,1,0,N,N,N,CP_Drtn,TT_Task,DT_FixedDUR2,RV_OK,TK_NotStart,A1500,Footings insulations,,0,0,112,0,0,0,112,0,0,0,,,,2012-11-21 08:00,2012-12-04 17:00,,2012-11-21 08:00,2012-12-04 17:00,2012-11-21 08:00,2012-12-04 17:00,2012-11-21 08:00,2012-12-04 17:00,,2012-11-21 08:00,2012-12-04 17:00,,PT_Normal,,,,,V/t5+Ro9PkKdx1vFYBS5Tw,RH6JslyIfk6qIKLLSLmR+w,,,Y,0,0,,,2012-09-20 15:03,2012-09-30 13:05,admin,admin
37,158860,7478,26768,794,1,0,N,N,N,CP_Drtn,TT_Task,DT_FixedDUR2,RV_OK,TK_NotStart,A1520,Backfilling between foundations,,0,0,160,0,0,0,160,0,0,0,,,,2012-12-15 08:00,2013-01-03 17:00,,2012-12-15 08:00,2013-01-03 17:00,2012-12-15 08:00,2013-01-03 17:00,2012-12-15 08:00,2013-01-03 17:00,,2012-12-15 08:00,2013-01-03 17:00,,PT_Normal,,,,,6Pdv0n4QQE2wHhvPCjuy2Q,g47c6RQEX02ip5mMhjodoA,,,Y,0,0,,,2012-09-20 15:03,2012-09-30 13:05,admin,admin
38,158861,7478,26768,794,1,0,N,N,N,CP_Drtn,TT_Task,DT_FixedDUR2,RV_OK,TK_NotStart,A1510,Masonry under S.O.G,,0,0,160,0,0,0,160,0,0,0,,,,2012-11-25 08:00,2012-12-14 17:00,,2012-11-25 08:00,2012-12-14 17:00,2012-11-25 08:00,2012-12-14 17:00,2012-11-25 08:00,2012-12-14 17:00,,2012-11-25 08:00,2012-12-14 17:00,,PT_Normal,,,,,rV1DCapz2k+S4WJOVfpIXQ,hgPXpKFy7Em0ikR/R+Mh7A,,,Y,0,0,,,2012-09-20 15:03,2012-09-30 13:05,admin,admin
39,158862,7478,26768,794,1,0,N,N,N,CP_Drtn,TT_Task,DT_FixedDUR2,RV_OK,TK_NotStart,A1530,Steel Structure erection,,0,0,200,0,0,0,200,0,0,0,,,,2013-01-04 08:00,2013-01-28 17:00,,2013-01-04 08:00,2013-01-28 17:00,2013-01-04 08:00,2013-01-28 17:00,2013-01-04 08:00,2013-01-28 17:00,,2013-01-04 08:00,2013-01-28 17:00,,PT_Normal,,,,,Xe2kIgb5FUmXyC3YJ/6+Dg,HgZFHY7o+kKwNsJoBfNrlQ,,,Y,0,0,,,2012-09-20 15:03,2012-09-30 13:05,admin,admin
40,158863,7478,26768,794,1,0,N,N,N,CP_Drtn,TT_Task,DT_FixedDUR2,RV_OK,TK_NotStart,A1540,R.C for S.O.G,,8,0,200,0,0,0,200,0,0,0,,,,2013-02-24 08:00,2013-03-20 17:00,,2013-02-23 08:00,2013-03-19 17:00,2013-02-23 08:00,2013-03-19 17:00,2013-02-23 08:00,2013-03-19 17:00,,2013-02-24 08:00,2013-03-20 17:00,,PT_Normal,,,,,VF2gRzbPP0mV2X+lOzn2tg,MgOHtJGZdkCpfHvO5QDIwA,,,N,0,0,,,2012-09-20 15:03,2012-09-30 13:06,admin,admin
41,158865,7478,26768,794,1,0,N,N,N,CP_Drtn,TT_Task,DT_FixedDUR2,RV_OK,TK_NotStart,A1580,Sandwich panel erection,,8,0,160,0,0,0,160,0,0,0,,,,2013-03-11 08:00,2013-03-30 17:00,,2013-03-10 08:00,2013-03-29 17:00,2013-03-10 08:00,2013-03-29 17:00,2013-03-10 08:00,2013-03-29 17:00,,2013-03-11 08:00,2013-03-30 17:00,,PT_Normal,,,,,U7uQ41dOP0G7KpaLZ/aw2A,dgVJ5aNwKkKkMzaBAJDnGg,,,N,0,0,,,2012-09-20 15:03,2012-09-30 13:06,admin,admin
42,158866,7478,26768,794,1,0,N,N,N,CP_Drtn,TT_Task,DT_FixedDUR2,RV_OK,TK_NotStart,A1590,Doors &windows erection,,8,0,80,0,0,0,80,0,0,0,,,,2013-03-22 08:00,2013-03-31 17:00,,2013-03-21 08:00,2013-03-30 17:00,2013-03-21 08:00,2013-03-30 17:00,2013-03-21 08:00,2013-03-30 17:00,,2013-03-22 08:00,2013-03-31 17:00,,PT_Normal,,,,,aKLAeJqYj02VtK0++G3xlA,FkFBS71iakiqaJo57aRslQ,,,N,0,0,,,2012-09-20 15:03,2012-09-30 13:18,admin,admin
43,158867,7478,26768,794,1,0,N,N,N,CP_Drtn,TT_Task,DT_FixedDUR2,RV_OK,TK_NotStart,A1560,Masonry works,,256,248,160,0,0,0,160,0,0,0,,,,2013-03-02 08:00,2013-03-21 17:00,,2013-01-29 08:00,2013-02-17 17:00,2013-01-29 08:00,2013-02-17 17:00,2013-01-29 08:00,2013-02-17 17:00,,2013-03-02 08:00,2013-03-21 17:00,,PT_Normal,,,,,NSS7AjXtzk2ZZ/FVMEWlNg,4Bopg/YI7UKZbqKcJmJBHA,,,N,0,0,,,2012-09-20 15:03,2012-09-30 13:06,admin,admin
44,158870,7478,26768,794,1,0,N,N,N,CP_Drtn,TT_Task,DT_FixedDUR2,RV_OK,TK_NotStart,A1610,P.C for S.O.G,,0,0,120,0,0,0,120,0,0,0,,,,2013-02-13 08:00,2013-02-27 17:00,,2013-02-13 08:00,2013-02-27 17:00,2013-02-13 08:00,2013-02-27 17:00,2013-02-13 08:00,2013-02-27 17:00,,2013-02-13 08:00,2013-02-27 17:00,,PT_Normal,,,,,yVLW0TyKL0qnk4gvzqF+WA,,,,Y,0,0,,,2012-09-20 15:08,2012-09-30 13:05,admin,admin
45,158871,7478,26670,794,1,0,N,N,N,CP_Drtn,TT_Task,DT_FixedDUR2,RV_OK,TK_NotStart,A1300,Checkered plate erection,,136,136,160,0,0,0,160,0,0,0,,,,2013-03-12 08:00,2013-03-31 17:00,,2013-02-23 08:00,2013-03-14 17:00,2013-02-23 08:00,2013-03-14 17:00,2013-02-23 08:00,2013-03-14 17:00,,2013-03-12 08:00,2013-03-31 17:00,,PT_Normal,,,,,qCFV29bWd0y0yXrSOrWTLQ,,,,N,0,0,,,2012-09-23 16:11,2012-09-30 13:37,admin,admin
46,158872,7478,26768,794,1,0,N,N,N,CP_Drtn,TT_Task,DT_FixedDUR2,RV_OK,TK_NotStart,A1600,Corrugated sheets erection,,8,0,160,0,0,0,160,0,0,0,,,,2013-03-11 08:00,2013-03-30 17:00,,2013-03-10 08:00,2013-03-29 17:00,2013-03-10 08:00,2013-03-29 17:00,2013-03-10 08:00,2013-03-29 17:00,,2013-03-11 08:00,2013-03-30 17:00,,PT_Normal,,,,,cujxnnRpdEKzNkc2LjCoJQ,,,,N,0,0,,,2012-09-23 16:15,2012-09-30 13:06,admin,admin
47,158873,7478,26665,794,0,0,N,N,N,CP_Drtn,TT_FinMile,DT_FixedDrtn,RV_OK,TK_NotStart,A1190,Project handing over,,8,0,0,0,0,0,0,0,0,0,,,,2013-03-31 17:00,2013-03-31 17:00,,2013-03-30 17:00,2013-03-30 17:00,2013-03-30 17:00,2013-03-30 17:00,2013-03-30 17:00,2013-03-30 17:00,,2013-03-31 17:00,2013-03-31 17:00,,PT_Normal,,,,,onX7gpfp/k6XSpnuC3694A,,,,N,0,0,,,2012-09-23 16:23,2012-09-30 13:18,admin,admin
48,158874,7478,26727,794,1,0,N,N,N,CP_Drtn,TT_Task,DT_FixedDUR2,RV_OK,TK_NotStart,A1620,Steel structure,,24,0,8,0,0,0,8,0,0,0,,,,2012-11-02 08:00,2012-11-02 17:00,,2012-10-30 08:00,2012-10-30 17:00,2012-10-30 08:00,2012-10-30 17:00,2012-10-30 08:00,2012-10-30 17:00,,2012-11-02 08:00,2012-11-02 17:00,,PT_Normal,,,,,8JBvuDGn5EeaeueDzwWgdA,,,,N,0,0,,,2012-09-23 16:25,2012-09-30 13:37,admin,admin
49,158875,7478,26727,794,1,0,N,N,N,CP_Drtn,TT_Task,DT_FixedDUR2,RV_OK,TK_NotStart,A1630,Fans,,32,0,8,0,0,0,8,0,0,0,,,,2012-11-08 08:00,2012-11-08 17:00,,2012-11-04 08:00,2012-11-04 17:00,2012-11-04 08:00,2012-11-04 17:00,2012-11-04 08:00,2012-11-04 17:00,,2012-11-08 08:00,2012-11-08 17:00,,PT_Normal,,,,,dC9F545p8UymzFTBKUOtww,,,,N,0,0,,,2012-09-23 16:25,2012-09-30 13:06,admin,admin
50,158876,7478,26727,794,1,0,N,N,N,CP_Drtn,TT_Task,DT_FixedDUR2,RV_OK,TK_NotStart,A1640,Corrugated sheets,,40,0,8,0,0,0,8,0,0,0,,,,2012-12-19 08:00,2012-12-19 17:00,,2012-12-14 08:00,2012-12-14 17:00,2012-12-14 08:00,2012-12-14 17:00,2012-12-14 08:00,2012-12-14 17:00,,2012-12-19 08:00,2012-12-19 17:00,,PT_Normal,,,,,lJgWMBpmxEyvsNSJ74v/HQ,,,,N,0,0,,,2012-09-23 16:26,2012-09-30 13:06,admin,admin
51,158877,7478,26728,794,1,0,N,N,N,CP_Drtn,TT_Task,DT_FixedDUR2,RV_OK,TK_NotStart,A1650,Steel structure,,24,0,8,0,0,0,8,0,0,0,,,,2012-11-10 08:00,2012-11-10 17:00,,2012-11-07 08:00,2012-11-07 17:00,2012-11-07 08:00,2012-11-07 17:00,2012-11-07 08:00,2012-11-07 17:00,,2012-11-10 08:00,2012-11-10 17:00,,PT_Normal,,,,,8LM6hNyAB0aWSvYx8NwAWw,8JBvuDGn5EeaeueDzwWgdA,,,N,0,0,,,2012-09-23 16:26,2012-09-30 13:37,admin,admin
52,158878,7478,26728,794,1,0,N,N,N,CP_Drtn,TT_Task,DT_FixedDUR2,RV_OK,TK_NotStart,A1660,Fans,,32,0,8,0,0,0,8,0,0,0,,,,2012-11-16 08:00,2012-11-16 17:00,,2012-11-12 08:00,2012-11-12 17:00,2012-11-12 08:00,2012-11-12 17:00,2012-11-12 08:00,2012-11-12 17:00,,2012-11-16 08:00,2012-11-16 17:00,,PT_Normal,,,,,BVoih3ONGkKcLear3t8c6A,dC9F545p8UymzFTBKUOtww,,,N,0,0,,,2012-09-23 16:26,2012-09-30 13:06,admin,admin
53,158879,7478,26728,794,1,0,N,N,N,CP_Drtn,TT_Task,DT_FixedDUR2,RV_OK,TK_NotStart,A1670,Corrugated sheets,,40,0,8,0,0,0,8,0,0,0,,,,2012-12-27 08:00,2012-12-27 17:00,,2012-12-22 08:00,2012-12-22 17:00,2012-12-22 08:00,2012-12-22 17:00,2012-12-22 08:00,2012-12-22 17:00,,2012-12-27 08:00,2012-12-27 17:00,,PT_Normal,,,,,rurUpyXrBUSW+f2utRcpjA,lJgWMBpmxEyvsNSJ74v/HQ,,,N,0,0,,,2012-09-23 16:26,2012-09-30 13:06,admin,admin
54,159127,7478,26767,794,1,0,N,N,N,CP_Drtn,TT_Task,DT_FixedDUR2,RV_OK,TK_NotStart,A1680,HVAC WORKS,,0,0,320,0,0,0,320,0,0,0,,,,2013-02-20 08:00,2013-03-31 17:00,,2013-02-20 08:00,2013-03-31 17:00,2013-02-20 08:00,2013-03-31 17:00,2013-02-20 08:00,2013-03-31 17:00,,2013-02-20 08:00,2013-03-31 17:00,,PT_Normal,,,,,txlsrnb+Ek2zsoUtEmfGkw,fF3QGnf4TEaEyyjC4Vc9Ig,,,Y,0,0,,,2012-09-30 11:10,2012-09-30 13:06,admin,admin
55,159129,7478,26767,794,1,0,N,N,N,CP_Drtn,TT_Task,DT_FixedDUR2,RV_OK,TK_NotStart,A1700,Plumbing works,,0,0,120,0,0,0,120,0,0,0,,,,2013-01-29 08:00,2013-02-12 17:00,,2013-01-29 08:00,2013-02-12 17:00,2013-01-29 08:00,2013-02-12 17:00,2013-01-29 08:00,2013-02-12 17:00,,2013-01-29 08:00,2013-02-12 17:00,,PT_Normal,,,,,AJt0ZxHiY0udCcqI5UQatA,tL/WETEpl0KdL8OlqlvRvw,,,Y,0,0,,,2012-09-30 11:10,2012-09-30 13:05,admin,admin
56,159130,7478,26670,794,1,0,N,N,N,CP_Drtn,TT_Task,DT_FixedDUR2,RV_OK,TK_NotStart,A1550,Corrugated sheets erection,,24,0,192,0,0,0,192,0,0,0,,,,2013-01-27 08:00,2013-02-19 17:00,,2013-01-24 08:00,2013-02-16 17:00,2013-01-24 08:00,2013-02-16 17:00,2013-01-24 08:00,2013-02-16 17:00,,2013-01-27 08:00,2013-02-19 17:00,,PT_Normal,,,,,Jynnoexy4EGT96Lrapw+Zg,,,,N,0,0,,,2012-09-30 12:31,2012-09-30 13:37,admin,admin
57,159131,7478,26670,794,1,0,N,N,N,CP_Drtn,TT_Task,DT_FixedDUR2,RV_OK,TK_NotStart,A1570,Steel ladder erection,,192,192,80,0,0,0,80,0,0,0,,,,2013-03-22 08:00,2013-03-31 17:00,,2013-02-26 08:00,2013-03-07 17:00,2013-02-26 08:00,2013-03-07 17:00,2013-02-26 08:00,2013-03-07 17:00,,2013-03-22 08:00,2013-03-31 17:00,,PT_Normal,,,,,Hk58R87q/0+06GPH+6kMPg,,,,N,0,0,,,2012-09-30 12:35,2012-09-30 13:37,admin,admin
58,159132,7478,26670,794,1,0,N,N,N,CP_Drtn,TT_Task,DT_FixedDUR2,RV_OK,TK_NotStart,A1690,False ceiling erection,,40,0,120,0,0,0,120,0,0,0,,,,2013-03-03 08:00,2013-03-17 17:00,,2013-02-26 08:00,2013-03-12 17:00,2013-02-26 08:00,2013-03-12 17:00,2013-02-26 08:00,2013-03-12 17:00,,2013-03-03 08:00,2013-03-17 17:00,,PT_Normal,,,,,PNyMI5gYzkOaOrQ4JjjmXQ,,,,N,0,0,,,2012-09-30 12:38,2012-09-30 13:37,admin,admin
