,task_id,proj_id,wbs_id,clndr_id,est_wt,phys_complete_pct,rev_fdbk_flag,lock_plan_flag,auto_compute_act_flag,complete_pct_type,task_type,duration_type,review_type,status_code,task_code,task_name,rsrc_id,total_float_hr_cnt,free_float_hr_cnt,remain_drtn_hr_cnt,act_work_qty,remain_work_qty,target_work_qty,target_drtn_hr_cnt,target_equip_qty,act_equip_qty,remain_equip_qty,cstr_date,act_start_date,act_end_date,late_start_date,late_end_date,expect_end_date,early_start_date,early_end_date,restart_date,reend_date,target_start_date,target_end_date,review_end_date,rem_late_start_date,rem_late_end_date,cstr_type,priority_type,suspend_date,resume_date,float_path,float_path_order,guid,tmpl_guid,cstr_date2,cstr_type2,driving_path_flag,act_this_per_work_qty,act_this_per_equip_qty,external_early_start_date,external_late_end_date,create_date,update_date,create_user,update_user
0,87720,1238,11871,1471,1,0,N,N,N,CP_Drtn,TT_Task,DT_FixedDrtn,RV_OK,TK_NotStart,A160,Shop Drawings submittal,,8,0,160,0,0,0,160,0,0,0,,,,2012-03-05 08:00,2012-03-27 17:00,,2012-03-04 08:00,2012-03-26 16:00,2012-03-04 08:00,2012-03-26 16:00,2012-03-04 08:00,2012-03-26 16:00,,2012-03-05 08:00,2012-03-27 17:00,,PT_Normal,,,,,Vs1D2wKaAkaHBm68MF0Dcw,DvG0usgU00+DCfkRiwcT3g,,,N,0,0,,,2011-12-05 11:16,2011-12-05 11:16,admin,admin
1,87721,1238,11871,1471,1,0,N,N,N,CP_Drtn,TT_Task,DT_FixedDUR2,RV_OK,TK_NotStart,A260,Shop Drawings Approval,,8,0,160,0,0,0,160,0,0,0,,,,2012-03-28 08:00,2012-04-19 17:00,,2012-03-27 08:00,2012-04-18 17:00,2012-03-27 08:00,2012-04-18 17:00,2012-03-27 08:00,2012-04-18 17:00,,2012-03-28 08:00,2012-04-19 17:00,,PT_Normal,,,,,unpDnY7wuEiV4VCzEWT/DQ,WAXEjkOpGEmSFUpBXj327Q,,,N,0,0,,,2011-12-05 11:16,2011-12-05 11:16,admin,admin
2,87722,1238,11879,1471,1,0,N,N,N,CP_Drtn,TT_Task,DT_FixedDrtn,RV_OK,TK_NotStart,A180,Shop Drawings submittal,,8,0,120,0,0,0,120,0,0,0,,,,2012-02-11 08:00,2012-02-27 16:00,,2012-02-09 08:00,2012-02-26 16:00,2012-02-09 08:00,2012-02-26 16:00,2012-02-09 08:00,2012-02-26 16:00,,2012-02-11 08:00,2012-02-27 16:00,,PT_Normal,,,,,lojVNbIkSk+odA3l7XB4Nw,CHFBbHqOf0ucDtq7AYrl9Q,,,N,0,0,,,2011-12-05 11:16,2011-12-05 11:16,admin,admin
3,87723,1238,11879,1471,1,0,N,N,N,CP_Drtn,TT_Task,DT_FixedDUR2,RV_OK,TK_NotStart,A270,Shop Drawings Approval,,8,0,120,0,0,0,120,0,0,0,,,,2012-02-16 08:00,2012-03-04 16:00,,2012-02-15 08:00,2012-03-03 17:00,2012-02-15 08:00,2012-03-03 17:00,2012-02-15 08:00,2012-03-03 17:00,,2012-02-16 08:00,2012-03-04 16:00,,PT_Normal,,,,,Kf974ybod0KxE6AhrA8qkA,0o/GUAzozE2FblZCjvf/+w,,,N,0,0,,,2011-12-05 11:16,2011-12-05 11:16,admin,admin
4,87724,1238,11870,1471,1,0,N,N,N,CP_Drtn,TT_Task,DT_FixedDrtn,RV_OK,TK_NotStart,A120,Shop Drawings submittal,,8,0,240,0,0,0,240,0,0,0,,,,2012-01-01 08:00,2012-02-04 17:00,,2011-12-31 08:00,2012-02-02 17:00,2011-12-31 08:00,2012-02-02 17:00,2011-12-31 08:00,2012-02-02 17:00,,2012-01-01 08:00,2012-02-04 17:00,,PT_Normal,,,,,5FbueXyxdUauUcyRYbtYxA,7bx90LFvZUiKh2OBpeZwWg,,,N,0,0,,,2011-12-05 11:16,2011-12-05 11:16,admin,admin
5,87725,1238,11870,1471,1,0,N,N,N,CP_Drtn,TT_Task,DT_FixedDUR2,RV_OK,TK_NotStart,A170,Shop Drawings Approval,,8,0,240,0,0,0,240,0,0,0,,,,2012-01-07 08:00,2012-02-09 17:00,,2012-01-05 08:00,2012-02-08 17:00,2012-01-05 08:00,2012-02-08 17:00,2012-01-05 08:00,2012-02-08 17:00,,2012-01-07 08:00,2012-02-09 17:00,,PT_Normal,,,,,khfwxA/Ru0WPpZ9K1cCRNw,9s2B0yRIpkCs7EBtqutzeQ,,,N,0,0,,,2011-12-05 11:16,2011-12-05 11:16,admin,admin
6,87726,1238,11875,1471,1,0,N,N,N,CP_Drtn,TT_Task,DT_FixedDUR2,RV_OK,TK_NotStart,A1020,Excavation Works & Pile Wall,,0,0,240,0,0,0,240,0,0,0,,,,2011-12-31 08:00,2012-02-02 17:00,,2011-12-31 08:00,2012-02-02 17:00,2011-12-31 08:00,2012-02-02 17:00,2011-12-31 08:00,2012-02-02 17:00,,2011-12-31 08:00,2012-02-02 17:00,,PT_Normal,,,,,haaqCA6AvkGVhoEgmXOysw,xslXGkFEJEeCVtccoqV9AA,,,Y,0,0,,,2011-12-05 11:16,2011-12-05 11:16,admin,admin
7,87727,1238,11875,1471,1,0,N,N,N,CP_Drtn,TT_Task,DT_FixedDUR2,RV_OK,TK_NotStart,A1040,Backfill Works,,0,0,200,0,0,0,200,0,0,0,,,,2012-03-27 08:00,2012-04-24 17:00,,2012-03-27 08:00,2012-04-24 17:00,2012-03-27 08:00,2012-04-24 17:00,2012-03-27 08:00,2012-04-24 17:00,,2012-03-27 08:00,2012-04-24 17:00,,PT_Normal,,,,,9VEatHRBM0ykyLwpbk1lTA,XpiPK3fto0GWoV6XfIMm1g,,,Y,0,0,,,2011-12-05 11:16,2011-12-05 11:16,admin,admin
8,87728,1238,11860,1471,1,0,N,N,N,CP_Drtn,TT_Task,DT_FixedDUR2,RV_OK,TK_NotStart,A1050,Site Preparation Works,,0,0,200,0,0,0,200,0,0,0,,,,2011-12-01 08:00,2011-12-29 17:00,,2011-12-01 08:00,2011-12-29 17:00,2011-12-01 08:00,2011-12-29 17:00,2011-12-01 08:00,2011-12-29 17:00,,2011-12-01 08:00,2011-12-29 17:00,,PT_Normal,,,,,g0St0mxPDkikYrKIgXqIXg,BlNY9g1iJUim1GFiq6Us1A,,,Y,0,0,,,2011-12-05 11:16,2011-12-05 11:16,admin,admin
9,87729,1238,11859,1471,0,0,N,N,N,CP_Drtn,TT_Mile,DT_FixedDrtn,RV_OK,TK_NotStart,A1060,Project Start,,0,0,0,0,0,0,0,0,0,0,,,,2011-12-01 08:00,2011-12-01 08:00,,2011-12-01 08:00,2011-12-01 08:00,2011-12-01 08:00,2011-12-01 08:00,2011-12-01 08:00,2011-12-01 08:00,,2011-12-01 08:00,2011-12-01 08:00,,PT_Normal,,,,,+uslImJ/9UuV2Xm1k7uglw,QYWcUIpoeUiDk3Uy9UrJPg,,,Y,0,0,,,2011-12-05 11:16,2011-12-05 11:16,admin,admin
10,87730,1238,11859,1471,0,0,N,N,N,CP_Drtn,TT_FinMile,DT_FixedDrtn,RV_OK,TK_NotStart,A1070,Project Finish,,0,0,0,0,0,0,0,0,0,0,,,,2012-09-30 16:00,2012-09-30 16:00,,2012-09-30 16:00,2012-09-30 16:00,2012-09-30 16:00,2012-09-30 16:00,2012-09-30 16:00,2012-09-30 16:00,,2012-09-30 16:00,2012-09-30 16:00,,PT_Normal,,,,,wIcu9aOl70iCNAwHTRcJcQ,UaUSMXfwHkudu0HhPiCrEQ,,,Y,0,0,,,2011-12-05 11:16,2011-12-05 11:16,admin,admin
11,87731,1238,11872,1471,1,0,N,N,N,CP_Drtn,TT_Task,DT_FixedDUR2,RV_OK,TK_NotStart,A1090,Plain Concrete For Footings,,0,0,160,0,0,0,160,0,0,0,,,,2012-02-04 08:00,2012-02-26 16:00,,2012-02-04 08:00,2012-02-26 16:00,2012-02-04 08:00,2012-02-26 16:00,2012-02-04 08:00,2012-02-26 16:00,,2012-02-04 08:00,2012-02-26 16:00,,PT_Normal,,,,,HoBhVD7CUUuko5h+aRPD3g,V5hybQ9GT0edlRUXhqpHPA,,,Y,0,0,,,2011-12-05 11:16,2011-12-05 11:16,admin,admin
12,87732,1238,11872,1471,1,0,N,N,N,CP_Drtn,TT_Task,DT_FixedDUR2,RV_OK,TK_NotStart,A1100,"Reinforced Concrete For Footings , Columns & Retaining Wall",,0,0,320,0,0,0,320,0,0,0,,,,2012-02-15 08:00,2012-04-01 16:00,,2012-02-15 08:00,2012-04-01 16:00,2012-02-15 08:00,2012-04-01 16:00,2012-02-15 08:00,2012-04-01 16:00,,2012-02-15 08:00,2012-04-01 16:00,,PT_Normal,,,,,NS/q0DlP30+b58CPCOTQFA,bkuMRQxED0OgYa+6+wFXHA,,,Y,0,0,,,2011-12-05 11:16,2011-12-05 11:16,admin,admin
13,87733,1238,11874,1471,1,0,N,N,N,CP_Drtn,TT_Task,DT_FixedDUR2,RV_OK,TK_NotStart,A1120,Cold Bitumen For UnderGround,,0,0,200,0,0,0,200,0,0,0,,,,2012-03-21 08:00,2012-04-18 17:00,,2012-03-21 08:00,2012-04-18 17:00,2012-03-21 08:00,2012-04-18 17:00,2012-03-21 08:00,2012-04-18 17:00,,2012-03-21 08:00,2012-04-18 17:00,,PT_Normal,,,,,HbD0M2ZrIE++qRNZYkDwvw,vXR6Kz7ZxkSQNpv2d2GaoA,,,Y,0,0,,,2011-12-05 11:16,2011-12-05 11:16,admin,admin
14,87734,1238,11874,1471,1,0,N,N,N,CP_Drtn,TT_Task,DT_FixedDUR2,RV_OK,TK_NotStart,A1130,Polythene Sheets Under Slab On Grade,,8,0,80,0,0,0,80,0,0,0,,,,2012-06-18 08:00,2012-06-28 17:00,,2012-06-17 08:00,2012-06-27 17:00,2012-06-17 08:00,2012-06-27 17:00,2012-06-17 08:00,2012-06-27 17:00,,2012-06-18 08:00,2012-06-28 17:00,,PT_Normal,,,,,MFilWdfwZUW33WsJYMQMRQ,GVlvs8lJ8U2wnwqQceo/+Q,,,N,0,0,,,2011-12-05 11:16,2011-12-05 11:16,admin,admin
15,87735,1238,11872,1471,1,0,N,N,N,CP_Drtn,TT_Task,DT_FixedDUR2,RV_OK,TK_NotStart,A1140,Slab On Grade,,8,0,160,0,0,0,160,0,0,0,,,,2012-06-24 08:00,2012-07-16 16:00,,2012-06-23 08:00,2012-07-15 16:00,2012-06-23 08:00,2012-07-15 16:00,2012-06-23 08:00,2012-07-15 16:00,,2012-06-24 08:00,2012-07-16 16:00,,PT_Normal,,,,,s1Gnrj2f8UKHUg3gzZOqEg,Cz5hQlbb9U+VFq1chcys0w,,,N,0,0,,,2011-12-05 11:16,2011-12-05 11:16,admin,admin
16,87736,1238,11872,1471,1,0,N,N,N,CP_Drtn,TT_Task,DT_FixedDUR2,RV_OK,TK_NotStart,A1150,Reinforced Concrete  Slab Above Steel Platform,,248,0,120,0,0,0,120,0,0,0,,,,2012-08-27 08:00,2012-09-12 17:00,,2012-07-22 08:00,2012-08-07 17:00,2012-07-22 08:00,2012-08-07 17:00,2012-07-22 08:00,2012-08-07 17:00,,2012-08-27 08:00,2012-09-12 17:00,,PT_Normal,,,,,Ecpzvupq/kSz26AQAxJtDg,iHGFEoT/UUSFkpsva+gWdw,,,N,0,0,,,2011-12-05 11:16,2011-12-05 11:16,admin,admin
17,87737,1238,11872,1471,1,0,N,N,N,CP_Drtn,TT_Task,DT_FixedDUR2,RV_OK,TK_NotStart,A1160,Basement Slab,,0,0,240,0,0,0,240,0,0,0,,,,2012-04-08 08:00,2012-05-12 17:00,,2012-04-08 08:00,2012-05-12 17:00,2012-04-08 08:00,2012-05-12 17:00,2012-04-08 08:00,2012-05-12 17:00,,2012-04-08 08:00,2012-05-12 17:00,,PT_Normal,,,,,IA2m9qNcAUqojVjJz3kZHg,ikGNoDyCSUGXR/Xq4a1FXg,,,Y,0,0,,,2011-12-05 11:16,2011-12-05 11:16,admin,admin
18,87738,1238,11882,1471,1,0,N,N,N,CP_Drtn,TT_Task,DT_FixedDUR2,RV_OK,TK_NotStart,A1170,Steel Structure Erection,,0,0,360,0,0,0,360,0,0,0,,,,2012-05-13 08:00,2012-07-03 17:00,,2012-05-13 08:00,2012-07-03 17:00,2012-05-13 08:00,2012-07-03 17:00,2012-05-13 08:00,2012-07-03 17:00,,2012-05-13 08:00,2012-07-03 17:00,,PT_Normal,,,,,t7Yw1VKiv02lOqUdw7VtEw,liZRVMT6e0+WzArsb5PyWQ,,,Y,0,0,,,2011-12-05 11:16,2011-12-05 11:16,admin,admin
19,87739,1238,11882,1471,1,0,N,N,N,CP_Drtn,TT_Task,DT_FixedDUR2,RV_OK,TK_NotStart,A1180,Roof Cladding,,8,0,360,0,0,0,360,0,0,0,,,,2012-07-05 08:00,2012-08-26 16:00,,2012-07-04 08:00,2012-08-25 17:00,2012-07-04 08:00,2012-08-25 17:00,2012-07-04 08:00,2012-08-25 17:00,,2012-07-05 08:00,2012-08-26 16:00,,PT_Normal,,,,,pPf+jtCZDEqeyjATcwRH2A,dlb6lN8+i0y/OUpVYyMxyw,,,N,0,0,,,2011-12-05 11:16,2011-12-05 11:16,admin,admin
20,87740,1238,11882,1471,1,0,N,N,N,CP_Drtn,TT_Task,DT_FixedDUR2,RV_OK,TK_NotStart,A1190,Steel Platform Erection For Mezzanine,,248,0,120,0,0,0,120,0,0,0,,,,2012-08-09 08:00,2012-08-26 16:00,,2012-07-04 08:00,2012-07-21 17:00,2012-07-04 08:00,2012-07-21 17:00,2012-07-04 08:00,2012-07-21 17:00,,2012-08-09 08:00,2012-08-26 16:00,,PT_Normal,,,,,RuGMFwZzKU+eEOXlmDfLpg,dpB8nb4YikG8/Z0YwMpP1Q,,,N,0,0,,,2011-12-05 11:16,2011-12-05 11:16,admin,admin
21,87741,1238,11882,1471,1,0,N,N,N,CP_Drtn,TT_Task,DT_FixedDUR2,RV_OK,TK_NotStart,A1200,Vertical Cladding,,288,0,240,0,0,0,240,0,0,0,,,,2012-08-15 08:00,2012-09-18 17:00,,2012-07-04 08:00,2012-08-07 17:00,2012-07-04 08:00,2012-08-07 17:00,2012-07-04 08:00,2012-08-07 17:00,,2012-08-15 08:00,2012-09-18 17:00,,PT_Normal,,,,,85FlgpBXpUynOq7G/lAEYA,zWePGowjdk+BevH9nfHT2Q,,,N,0,0,,,2011-12-05 11:16,2011-12-05 11:16,admin,admin
22,87742,1238,11882,1471,1,0,N,N,N,CP_Drtn,TT_Task,DT_FixedDUR2,RV_OK,TK_NotStart,A1210,Vertical Liner,,288,288,240,0,0,0,240,0,0,0,,,,2012-08-27 08:00,2012-09-30 16:00,,2012-07-16 08:00,2012-08-19 16:00,2012-07-16 08:00,2012-08-19 16:00,2012-07-16 08:00,2012-08-19 16:00,,2012-08-27 08:00,2012-09-30 16:00,,PT_Normal,,,,,o3oPumibpUmVqkqtoxcdsA,TF6DZ13Egkmp4NLip5poyw,,,N,0,0,,,2011-12-05 11:16,2011-12-05 11:16,admin,admin
23,87743,1238,11882,1471,1,0,N,N,N,CP_Drtn,TT_Task,DT_FixedDUR2,RV_OK,TK_NotStart,A1220,Thermal Insulation For Vertical Wall,,288,0,240,0,0,0,240,0,0,0,,,,2012-08-21 08:00,2012-09-24 16:00,,2012-07-10 08:00,2012-08-13 16:00,2012-07-10 08:00,2012-08-13 16:00,2012-07-10 08:00,2012-08-13 16:00,,2012-08-21 08:00,2012-09-24 16:00,,PT_Normal,,,,,DdBw03qZ/U+VKk+ZD8krGw,y4sVOWDYt0ugg/8ghqtysA,,,N,0,0,,,2011-12-05 11:16,2011-12-05 11:16,admin,admin
24,87744,1238,11873,1471,1,0,N,N,N,CP_Drtn,TT_Task,DT_FixedDUR2,RV_OK,TK_NotStart,A1230,Masonry For Substructure,,0,0,240,0,0,0,240,0,0,0,,,,2012-03-10 08:00,2012-04-12 17:00,,2012-03-10 08:00,2012-04-12 17:00,2012-03-10 08:00,2012-04-12 17:00,2012-03-10 08:00,2012-04-12 17:00,,2012-03-10 08:00,2012-04-12 17:00,,PT_Normal,,,,,JotXCym8okak9hsbi9jl+w,VjRsCYs7fESOKOiFSsgZdQ,,,Y,0,0,,,2011-12-05 11:16,2011-12-05 11:16,admin,admin
25,87745,1238,11876,1471,1,0,N,N,N,CP_Drtn,TT_Task,DT_FixedDUR2,RV_OK,TK_NotStart,A1280,Internal Plaster,,8,0,240,0,0,0,240,0,0,0,,,,2012-07-29 08:00,2012-09-01 17:00,,2012-07-28 08:00,2012-08-30 17:00,2012-07-28 08:00,2012-08-30 17:00,2012-07-28 08:00,2012-08-30 17:00,,2012-07-29 08:00,2012-09-01 17:00,,PT_Normal,,,,,Ri8J6qSO6EqpNr24G9WtcA,xisMNOia/k2nriP2x0xBrg,,,N,0,0,,,2011-12-05 11:16,2011-12-05 11:16,admin,admin
26,87746,1238,11876,1471,1,0,N,N,N,CP_Drtn,TT_Task,DT_FixedDUR2,RV_OK,TK_NotStart,A1300,Internal Painting,,8,0,240,0,0,0,240,0,0,0,,,,2012-08-09 08:00,2012-09-12 17:00,,2012-08-08 08:00,2012-09-11 17:00,2012-08-08 08:00,2012-09-11 17:00,2012-08-08 08:00,2012-09-11 17:00,,2012-08-09 08:00,2012-09-12 17:00,,PT_Normal,,,,,EJNmwwFoi0SfUYBH2EvqEA,+lZ9YQLuSEm8UBG+9Xseag,,,N,0,0,,,2011-12-05 11:16,2011-12-05 11:16,admin,admin
27,87747,1238,11876,1471,1,0,N,N,N,CP_Drtn,TT_Task,DT_FixedDUR2,RV_OK,TK_NotStart,A1320,Flooring Works,,168,168,240,0,0,0,240,0,0,0,,,,2012-08-27 08:00,2012-09-30 16:00,,2012-08-02 08:00,2012-09-05 17:00,2012-08-02 08:00,2012-09-05 17:00,2012-08-02 08:00,2012-09-05 17:00,,2012-08-27 08:00,2012-09-30 16:00,,PT_Normal,,,,,6D83qlxiFUme5NBpWTCPsg,/t2H6sOjdESVaQcYYKnPNw,,,N,0,0,,,2011-12-05 11:16,2011-12-05 11:16,admin,admin
28,87748,1238,11868,1471,1,0,N,N,N,CP_Drtn,TT_Task,DT_FixedDrtn,RV_OK,TK_NotStart,A300,Shop Drawings submittal,,8,0,160,0,0,0,160,0,0,0,,,,2012-04-21 08:00,2012-05-13 16:00,,2012-04-19 08:00,2012-05-12 17:00,2012-04-19 08:00,2012-05-12 17:00,2012-04-19 08:00,2012-05-12 17:00,,2012-04-21 08:00,2012-05-13 16:00,,PT_Normal,,,,,luNASjENfk6I8N9opb2x1g,T0NppC9oEEuB6Ji/H4wVlg,,,N,0,0,,,2011-12-05 11:16,2011-12-05 11:16,admin,admin
29,87749,1238,11868,1471,1,0,N,N,N,CP_Drtn,TT_Task,DT_FixedDUR2,RV_OK,TK_NotStart,A310,Shop Drawings Approval,,8,0,160,0,0,0,160,0,0,0,,,,2012-05-14 08:00,2012-06-05 17:00,,2012-05-13 08:00,2012-06-04 16:00,2012-05-13 08:00,2012-06-04 16:00,2012-05-13 08:00,2012-06-04 16:00,,2012-05-14 08:00,2012-06-05 17:00,,PT_Normal,,,,,GSXnq8oC8E+1+2bpUJQLwg,I4lkeP1bekSqOEsznossNA,,,N,0,0,,,2011-12-05 11:16,2011-12-05 11:16,admin,admin
30,87750,1238,11877,1471,1,0,N,N,N,CP_Drtn,TT_Task,DT_FixedDUR2,RV_OK,TK_NotStart,A1330,Windows Erection,,8,0,80,0,0,0,80,0,0,0,,,,2012-09-13 08:00,2012-09-24 16:00,,2012-09-12 08:00,2012-09-23 16:00,2012-09-12 08:00,2012-09-23 16:00,2012-09-12 08:00,2012-09-23 16:00,,2012-09-13 08:00,2012-09-24 16:00,,PT_Normal,,,,,4MN3UxdTDku6lb0lO+YM1g,65CPsXk+D0KoPh6X7Du57A,,,N,0,0,,,2011-12-05 11:16,2011-12-05 11:16,admin,admin
31,87751,1238,11878,1471,1,0,N,N,N,CP_Drtn,TT_Task,DT_FixedDUR2,RV_OK,TK_NotStart,A1340,Site Works,,8,8,200,0,0,0,200,0,0,0,,,,2012-09-02 08:00,2012-09-30 16:00,,2012-09-01 08:00,2012-09-29 17:00,2012-09-01 08:00,2012-09-29 17:00,2012-09-01 08:00,2012-09-29 17:00,,2012-09-02 08:00,2012-09-30 16:00,,PT_Normal,,,,,dG+yMCFnBUq3n8LjzRFIqQ,F8krrJvcKUmZLXGmiUrS5Q,,,N,0,0,,,2011-12-05 11:16,2011-12-05 11:16,admin,admin
32,87752,1238,11883,1471,1,0,N,N,N,CP_Drtn,TT_Task,DT_FixedDUR2,RV_OK,TK_NotStart,A1380,Fire Fighting Works,,8,8,160,0,0,0,160,0,0,0,,,,2012-09-08 08:00,2012-09-30 16:00,,2012-09-06 08:00,2012-09-29 17:00,2012-09-06 08:00,2012-09-29 17:00,2012-09-06 08:00,2012-09-29 17:00,,2012-09-08 08:00,2012-09-30 16:00,,PT_Normal,,,,,0Cs9/NCa6EqBYNeQZkTrcg,emSgR/hAv0CabXD7jDYlMA,,,N,0,0,,,2011-12-05 11:16,2011-12-05 11:16,admin,admin
33,87753,1238,11884,1471,1,0,N,N,N,CP_Drtn,TT_Task,DT_FixedDUR2,RV_OK,TK_NotStart,A1420,Supply works,,8,0,200,0,0,0,200,0,0,0,,,,2012-07-23 08:00,2012-08-20 16:00,,2012-07-22 08:00,2012-08-19 16:00,2012-07-22 08:00,2012-08-19 16:00,2012-07-22 08:00,2012-08-19 16:00,,2012-07-23 08:00,2012-08-20 16:00,,PT_Normal,,,,,S/AD4DTiXka6ctp304CJOg,YRqToJaonUOP1VuW1CK/nA,,,N,0,0,,,2011-12-05 11:16,2011-12-05 11:16,admin,admin
34,87754,1238,11884,1471,1,0,N,N,N,CP_Drtn,TT_Task,DT_FixedDUR2,RV_OK,TK_NotStart,A1430,Drainage works,,8,0,200,0,0,0,200,0,0,0,,,,2012-08-21 08:00,2012-09-18 17:00,,2012-08-20 08:00,2012-09-17 16:00,2012-08-20 08:00,2012-09-17 16:00,2012-08-20 08:00,2012-09-17 16:00,,2012-08-21 08:00,2012-09-18 17:00,,PT_Normal,,,,,0eJAtXSEuUeooOj2iOWsIQ,6c4gxDmnaE2EKGRjTsZD4Q,,,N,0,0,,,2011-12-05 11:16,2011-12-05 11:16,admin,admin
35,87755,1238,11884,1471,1,0,N,N,N,CP_Drtn,TT_Task,DT_FixedDUR2,RV_OK,TK_NotStart,A1440,Plumbing equipments,,8,8,80,0,0,0,80,0,0,0,,,,2012-09-19 08:00,2012-09-30 16:00,,2012-09-18 08:00,2012-09-29 17:00,2012-09-18 08:00,2012-09-29 17:00,2012-09-18 08:00,2012-09-29 17:00,,2012-09-19 08:00,2012-09-30 16:00,,PT_Normal,,,,,YCz9AKnS0E+12nFEUgKsDA,ROvU082Q2EyjgTgokZwvNg,,,N,0,0,,,2011-12-05 11:16,2011-12-05 11:16,admin,admin
36,87756,1238,11881,1471,1,0,N,N,N,CP_Drtn,TT_Task,DT_FixedDUR2,RV_OK,TK_NotStart,A1450,Fire alarm system,,8,0,160,0,0,0,160,0,0,0,,,,2012-08-15 08:00,2012-09-06 17:00,,2012-08-14 08:00,2012-09-05 17:00,2012-08-14 08:00,2012-09-05 17:00,2012-08-14 08:00,2012-09-05 17:00,,2012-08-15 08:00,2012-09-06 17:00,,PT_Normal,,,,,VxGrWh2bTE2EgdysiYrCkg,ddjKFSxgdEeHhNH588v4Dg,,,N,0,0,,,2011-12-05 11:16,2011-12-05 11:16,admin,admin
37,87757,1238,11881,1471,1,0,N,N,N,CP_Drtn,TT_Task,DT_FixedDUR2,RV_OK,TK_NotStart,A1460,Lighting works,,8,0,160,0,0,0,160,0,0,0,,,,2012-08-27 08:00,2012-09-18 17:00,,2012-08-26 08:00,2012-09-17 16:00,2012-08-26 08:00,2012-09-17 16:00,2012-08-26 08:00,2012-09-17 16:00,,2012-08-27 08:00,2012-09-18 17:00,,PT_Normal,,,,,xsmeMSsjqk6nk5DoITbf2g,SGFxlgPpwEWWbnPLBcZIyQ,,,N,0,0,,,2011-12-05 11:16,2011-12-05 11:16,admin,admin
38,87758,1238,11881,1471,1,0,N,N,N,CP_Drtn,TT_Task,DT_FixedDUR2,RV_OK,TK_NotStart,A1470,Switch board erection,,8,8,80,0,0,0,80,0,0,0,,,,2012-09-19 08:00,2012-09-30 16:00,,2012-09-18 08:00,2012-09-29 17:00,2012-09-18 08:00,2012-09-29 17:00,2012-09-18 08:00,2012-09-29 17:00,,2012-09-19 08:00,2012-09-30 16:00,,PT_Normal,,,,,qQMWrc/5XEGnd3t9XOgJgg,NakHCX+vMkaMszwiYVP/5g,,,N,0,0,,,2011-12-05 11:16,2011-12-05 11:16,admin,admin
39,87759,1238,11883,1471,1,0,N,N,N,CP_Drtn,TT_Task,DT_FixedDUR2,RV_OK,TK_NotStart,A1480,HVAC Works,,8,8,280,0,0,0,280,0,0,0,,,,2012-08-21 08:00,2012-09-30 16:00,,2012-08-20 08:00,2012-09-29 17:00,2012-08-20 08:00,2012-09-29 17:00,2012-08-20 08:00,2012-09-29 17:00,,2012-08-21 08:00,2012-09-30 16:00,,PT_Normal,,,,,esgBrufUiUeYeyVuncRG8g,wUZR4apI1kGi+7vRzj0x2g,,,N,0,0,,,2011-12-05 11:16,2011-12-05 11:16,admin,admin
40,87760,1238,11873,1471,1,0,N,N,N,CP_Drtn,TT_Task,DT_FixedDUR2,RV_OK,TK_NotStart,A1490,Masonry For Superstructure,,8,0,240,0,0,0,240,0,0,0,,,,2012-07-17 08:00,2012-08-20 16:00,,2012-07-16 08:00,2012-08-19 16:00,2012-07-16 08:00,2012-08-19 16:00,2012-07-16 08:00,2012-08-19 16:00,,2012-07-17 08:00,2012-08-20 16:00,,PT_Normal,,,,,h0H6wMXOwUOehKiuHOvy9w,edoegsz/EUmkhQLmBFK66A,,,N,0,0,,,2011-12-05 11:16,2011-12-05 11:16,admin,admin
41,87761,1238,11869,1471,1,0,N,N,N,CP_Drtn,TT_Task,DT_FixedDrtn,RV_OK,TK_NotStart,A340,Shop Drawings submittal,,8,0,160,0,0,0,160,0,0,0,,,,2012-06-06 08:00,2012-06-28 17:00,,2012-06-05 08:00,2012-06-27 17:00,2012-06-05 08:00,2012-06-27 17:00,2012-06-05 08:00,2012-06-27 17:00,,2012-06-06 08:00,2012-06-28 17:00,,PT_Normal,,,,,Pr03tCeeHUC/o3Cs7yw6Rg,BXMf8Xj5oUOF39CQG0754A,,,N,0,0,,,2011-12-05 11:16,2011-12-05 11:16,admin,admin
42,87762,1238,11869,1471,1,0,N,N,N,CP_Drtn,TT_Task,DT_FixedDUR2,RV_OK,TK_NotStart,A350,Shop Drawings Approval,,8,0,160,0,0,0,160,0,0,0,,,,2012-06-30 08:00,2012-07-22 16:00,,2012-06-28 08:00,2012-07-21 17:00,2012-06-28 08:00,2012-07-21 17:00,2012-06-28 08:00,2012-07-21 17:00,,2012-06-30 08:00,2012-07-22 16:00,,PT_Normal,,,,,G6G2tUlG6Ea/rAqg4a7fJw,H/Y6OOWpJ0u2klZA+ijj3w,,,N,0,0,,,2011-12-05 11:16,2011-12-05 11:16,admin,admin
43,87763,1238,11874,1471,1,0,N,N,N,CP_Drtn,TT_Task,DT_FixedDUR2,RV_OK,TK_NotStart,A1240,Insulation For Concrete Building Roof,,248,248,120,0,0,0,120,0,0,0,,,,2012-09-13 08:00,2012-09-30 16:00,,2012-08-08 08:00,2012-08-25 17:00,2012-08-08 08:00,2012-08-25 17:00,2012-08-08 08:00,2012-08-25 17:00,,2012-09-13 08:00,2012-09-30 16:00,,PT_Normal,,,,,rBW2rMhbG0+Rf0l1sJdYfg,,,,N,0,0,,,2011-12-05 11:16,2011-12-05 11:16,admin,admin
44,87764,1238,11876,1471,1,0,N,N,N,CP_Drtn,TT_Task,DT_FixedDUR2,RV_OK,TK_NotStart,A1500,False Ceiling,,168,168,200,0,0,0,200,0,0,0,,,,2012-09-02 08:00,2012-09-30 16:00,,2012-08-08 08:00,2012-09-05 17:00,2012-08-08 08:00,2012-09-05 17:00,2012-08-08 08:00,2012-09-05 17:00,,2012-09-02 08:00,2012-09-30 16:00,,PT_Normal,,,,,KD4zGi5D7UeGePGHrDrNTQ,,,,N,0,0,,,2011-12-05 11:16,2011-12-05 11:16,admin,admin
45,87765,1238,11877,1471,1,0,N,N,N,CP_Drtn,TT_Task,DT_FixedDUR2,RV_OK,TK_NotStart,A1350,Doors Erection,,8,8,80,0,0,0,80,0,0,0,,,,2012-09-19 08:00,2012-09-30 16:00,,2012-09-18 08:00,2012-09-29 17:00,2012-09-18 08:00,2012-09-29 17:00,2012-09-18 08:00,2012-09-29 17:00,,2012-09-19 08:00,2012-09-30 16:00,,PT_Normal,,,,,WYvkDK4rxkmofh44Pnr59A,,,,N,0,0,,,2011-12-05 11:16,2011-12-05 11:16,admin,admin
46,87766,1238,11867,1471,1,0,N,N,N,CP_Drtn,TT_Task,DT_FixedDUR2,RV_OK,TK_NotStart,A1510,Civil Works,,0,0,320,0,0,0,320,0,0,0,,,,2012-07-04 08:00,2012-08-19 16:00,,2012-07-04 08:00,2012-08-19 16:00,2012-07-04 08:00,2012-08-19 16:00,2012-07-04 08:00,2012-08-19 16:00,,2012-07-04 08:00,2012-08-19 16:00,,PT_Normal,,,,,hEYHWSou40CrTEJDsU9++g,,,,Y,0,0,,,2011-12-05 11:16,2011-12-05 11:16,admin,admin
47,87767,1238,11867,1471,1,0,N,N,N,CP_Drtn,TT_Task,DT_FixedDUR2,RV_OK,TK_NotStart,A1520,Architectural  Works,,8,8,280,0,0,0,280,0,0,0,,,,2012-08-21 08:00,2012-09-30 16:00,,2012-08-20 08:00,2012-09-29 17:00,2012-08-20 08:00,2012-09-29 17:00,2012-08-20 08:00,2012-09-29 17:00,,2012-08-21 08:00,2012-09-30 16:00,,PT_Normal,,,,,vjT1IudLlkWbNHQbgZhk9w,,,,N,0,0,,,2011-12-05 11:16,2011-12-05 11:16,admin,admin
48,87768,1238,11867,1471,1,0,N,N,N,CP_Drtn,TT_Task,DT_FixedDUR2,RV_OK,TK_NotStart,A1530,MEP Works,,0,0,280,0,0,0,280,0,0,0,,,,2012-08-21 08:00,2012-09-30 16:00,,2012-08-21 08:00,2012-09-30 16:00,2012-08-21 08:00,2012-09-30 16:00,2012-08-21 08:00,2012-09-30 16:00,,2012-08-21 08:00,2012-09-30 16:00,,PT_Normal,,,,,/ayii/9p6Eic5q7yDXxkuQ,,,,Y,0,0,,,2011-12-05 11:16,2011-12-05 11:16,admin,admin
