,task_id,proj_id,wbs_id,clndr_id,est_wt,phys_complete_pct,rev_fdbk_flag,lock_plan_flag,auto_compute_act_flag,complete_pct_type,task_type,duration_type,review_type,status_code,task_code,task_name,rsrc_id,total_float_hr_cnt,free_float_hr_cnt,remain_drtn_hr_cnt,act_work_qty,remain_work_qty,target_work_qty,target_drtn_hr_cnt,target_equip_qty,act_equip_qty,remain_equip_qty,cstr_date,act_start_date,act_end_date,late_start_date,late_end_date,expect_end_date,early_start_date,early_end_date,restart_date,reend_date,target_start_date,target_end_date,review_end_date,rem_late_start_date,rem_late_end_date,cstr_type,priority_type,suspend_date,resume_date,float_path,float_path_order,guid,tmpl_guid,cstr_date2,cstr_type2,driving_path_flag,act_this_per_work_qty,act_this_per_equip_qty,external_early_start_date,external_late_end_date,create_date,update_date,create_user,update_user
0,148827,5725,23811,6842,1,0,N,N,N,CP_Drtn,TT_Task,DT_FixedDUR2,RV_OK,TK_NotStart,4229PPC140,Fabrication upto R.F.S for pump,,296,0,1120,0,0,0,1120,0,0,0,,,,2012-08-12 08:00,2013-01-10 16:00,,2012-07-06 08:00,2012-12-04 16:00,2012-07-06 08:00,2012-12-04 16:00,2012-07-06 08:00,2012-12-04 16:00,,2012-08-12 08:00,2013-01-10 16:00,,PT_Normal,,,,,1vAV0ilCaUONO1p+znK7sg,a1p6ym4oS+6+JNBX4DLt6Q,,,N,0,0,,,2012-06-25 15:13,2012-07-16 15:38,nour,admin
1,148828,5725,23811,6843,1,0,N,N,N,CP_Drtn,TT_Task,DT_FixedDUR2,RV_OK,TK_NotStart,4229PPC150,Delivery upto site for pump,,312,312,360,0,0,0,360,0,0,0,,,,2013-01-11 08:00,2013-02-24 16:00,,2012-12-05 08:00,2013-01-16 16:00,2012-12-05 08:00,2013-01-16 16:00,2012-12-05 08:00,2013-01-16 16:00,,2013-01-11 08:00,2013-02-24 16:00,,PT_Normal,,,,,R+ecjkvrb06Q6tSo/enqyg,u9JIoe/yQfmyL1WOCEcyRg,,,N,0,0,,,2012-06-25 15:13,2012-07-16 15:38,nour,admin
2,148829,5725,23811,6841,1,100,N,N,N,CP_Drtn,TT_Task,DT_FixedDUR2,RV_OK,TK_Complete,4229PPC130,Receive revised commercial offers for pump,,,,0,0,0,0,40,0,0,0,,2012-06-13 00:00,2012-06-19 00:00,2012-08-05 08:00,2012-08-05 08:00,,2012-06-30 00:00,2012-06-30 00:00,,,2012-07-01 08:00,2012-07-05 16:00,,,,,PT_Normal,,,,,GU+mcFhGa0iDlHDYzR1aBQ,T9aUbtojSXilwnqU2Wi+6w,,,N,0,0,,,2012-06-25 15:13,2012-07-16 15:38,nour,admin
3,148830,5725,23811,6841,1,0,N,N,N,CP_Drtn,TT_Task,DT_FixedDUR2,RV_OK,TK_Active,4229PPC160,Client approval on bid committee reccomendation,,200,0,16,0,0,0,16,0,0,0,,2012-06-25 00:00,,2012-08-05 08:00,2012-08-06 16:00,,2012-07-01 08:00,2012-07-02 16:00,2012-07-01 08:00,2012-07-02 16:00,2012-07-01 08:00,2012-07-02 16:00,,2012-08-05 08:00,2012-08-06 16:00,,PT_Normal,,,,,2g7mxYUImUG0u7SHK0PXlA,dsqur9zFTQ2kGKH9ey3RIw,,,N,0,0,,,2012-06-25 15:13,2012-07-16 15:38,nour,admin
4,148831,5725,23811,6841,1,100,N,N,N,CP_Drtn,TT_Task,DT_FixedDUR2,RV_OK,TK_Complete,4229PPC100,Issue RFQ for pump,,,,0,0,0,0,16,0,0,0,,2012-03-14 00:00,2012-03-20 00:00,2012-08-05 08:00,2012-08-05 08:00,,2012-06-30 00:00,2012-06-30 00:00,,,2012-04-29 08:00,2012-04-30 16:00,,,,,PT_Normal,,,,,BsunG0r2UEe1vhGE9YogBg,+2aOWobYTG6hCGLLfOCD3Q,,,N,0,0,,,2012-06-25 15:13,2012-07-16 15:38,nour,admin
5,148832,5725,23811,6842,1,100,N,N,N,CP_Drtn,TT_Task,DT_FixedDUR2,RV_OK,TK_Complete,4229PPC110,Bidding for pump,,,,0,0,0,0,320,0,0,0,,2012-03-21 00:00,2012-04-28 00:00,2012-08-05 08:00,2012-08-05 08:00,,2012-06-30 00:00,2012-06-30 00:00,,,2012-04-28 08:00,2012-06-06 16:00,,,,,PT_Normal,,,,,D2razAb8SUePJnNCfVYjxw,tYAyHVveTym5PZWh1QwHuQ,,,N,0,0,,,2012-06-25 15:13,2012-07-16 15:38,nour,admin
6,148833,5725,23811,6841,1,100,N,N,N,CP_Drtn,TT_Task,DT_FixedDUR2,RV_OK,TK_Complete,4229PPC180,commercial evaluation & bid committee for pump,,,,0,0,0,0,0,0,0,0,,2012-06-20 00:00,2012-06-21 00:00,2012-08-05 08:00,2012-08-05 08:00,,2012-06-30 00:00,2012-06-30 00:00,,,2012-07-08 08:00,2012-07-08 08:00,,,,,PT_Normal,,,,,WcMuxY5GrkykaMFx+EEXFw,7F1NBuHCRsuN+gRucuQXhg,,,N,0,0,,,2012-06-25 15:13,2012-07-16 15:38,nour,admin
7,148834,5725,23811,6841,1,0,N,N,N,CP_Drtn,TT_Task,DT_FixedDUR2,RV_OK,TK_NotStart,4229PPC190,F.O.C for pump,,200,0,24,0,0,0,24,0,0,0,,,,2012-08-07 08:00,2012-08-09 16:00,,2012-07-03 08:00,2012-07-05 16:00,2012-07-03 08:00,2012-07-05 16:00,2012-07-03 08:00,2012-07-05 16:00,,2012-08-07 08:00,2012-08-09 16:00,,PT_Normal,,,,,5NMhYd+RzUGVyDShiuhnvg,s40e5+jDQyOWv96vSoQDuQ,,,N,0,0,,,2012-06-25 15:13,2012-07-16 15:38,nour,admin
8,148835,5725,23811,6841,1,0,N,N,N,CP_Drtn,TT_Task,DT_FixedDUR2,RV_OK,TK_NotStart,4229PPC200,P.O for pump,,1128,0,40,0,0,0,40,0,0,0,,,,2013-02-11 08:00,2013-02-17 16:00,,2012-07-15 08:00,2012-07-19 16:00,2012-07-15 08:00,2012-07-19 16:00,2012-07-15 08:00,2012-07-19 16:00,,2013-02-11 08:00,2013-02-17 16:00,,PT_Normal,,,,,RZSBu+dFkUiiN4p0LMDgVw,A5Q7aUOxRr+lBFCKOJdk6Q,,,N,0,0,,,2012-06-25 15:13,2012-07-16 15:38,nour,admin
9,148836,5725,23811,6841,1,100,N,N,N,CP_Drtn,TT_LOE,DT_FixedDUR2,RV_OK,TK_Complete,4229PPC120,T.E.R for  pump,,,,0,0,0,0,240,0,0,0,,2012-04-29 00:00,2012-06-12 00:00,,,,,,,,2012-04-29 08:00,2012-06-07 16:00,,,,,PT_Normal,,,,,3Y5azvmgyUCl0uA+JLpXiQ,qop3jGJXRzSmAG4KFxnkEQ,,,N,0,0,,,2012-06-25 15:13,2012-07-16 15:38,nour,admin
10,148837,5725,23811,6841,1,0,N,N,N,CP_Drtn,TT_LOE,DT_FixedDUR2,RV_OK,TK_NotStart,4229PPC210,MRP for pump,,1128,0,40,0,0,0,40,0,0,0,,,,2013-02-04 08:00,2013-02-10 16:00,,2012-07-08 08:00,2012-07-12 16:00,2012-07-08 08:00,2012-07-12 16:00,2012-07-08 08:00,2012-07-12 16:00,,2013-02-04 08:00,2013-02-10 16:00,,PT_Normal,,,,,97x+cKLfgUiG8hWH7Zznug,uQOO7klWSbqBLLrj/LWZpQ,,,N,0,0,,,2012-06-25 15:13,2012-07-16 15:38,nour,admin
11,148838,5725,23812,6842,1,0,N,N,N,CP_Drtn,TT_Task,DT_FixedDUR2,RV_OK,TK_NotStart,4229PFV200,Fabrication upto R.F.S,,0,0,1344,0,0,0,1344,0,0,0,,,,2012-07-20 08:00,2013-01-15 16:00,,2012-07-20 08:00,2013-01-15 16:00,2012-07-20 08:00,2013-01-15 16:00,2012-07-20 08:00,2013-01-15 16:00,,2012-07-20 08:00,2013-01-15 16:00,,PT_Normal,,,1,4,50iAz0nobEexIzyz/H0gYA,YpF1cbjLSNmmuSIlXsh/5g,,,Y,0,0,,,2012-06-25 15:13,2012-07-16 15:38,nour,admin
12,148839,5725,23812,6842,1,0,N,N,N,CP_Drtn,TT_Task,DT_FixedDUR2,RV_OK,TK_NotStart,4229PFV210,Delivery upto site,,0,0,320,0,0,0,320,0,0,0,,,,2013-01-16 08:00,2013-02-24 16:00,,2013-01-16 08:00,2013-02-24 16:00,2013-01-16 08:00,2013-02-24 16:00,2013-01-16 08:00,2013-02-24 16:00,,2013-01-16 08:00,2013-02-24 16:00,,PT_Normal,,,1,5,Ow3EQMoyAEawA4sA/DTTvA,NgGQizK+RduStbx0VPvmwQ,,,Y,0,0,,,2012-06-25 15:13,2012-07-16 15:38,nour,admin
13,148840,5725,23812,6841,1,100,N,N,N,CP_Drtn,TT_Task,DT_FixedDUR2,RV_OK,TK_Complete,4229PFV130,Receive revised commercial offers,,,,0,0,0,0,40,0,0,0,,2012-06-26 00:00,2012-06-28 00:00,2012-07-01 08:00,2012-07-01 08:00,,2012-06-30 00:00,2012-06-30 00:00,,,2012-07-01 08:00,2012-07-05 16:00,,,,,PT_Normal,,,,,KUb2rcyq20yni8jtc0JTEA,xZAyxBt6SKW9L4MiAA3DVA,,,Y,0,0,,,2012-06-25 15:13,2012-07-16 15:38,nour,admin
14,148841,5725,23812,6841,1,0,N,N,N,CP_Drtn,TT_Task,DT_FixedDUR2,RV_OK,TK_NotStart,4229PFV150,Client approval on bid committee reccommendation,,0,0,16,0,0,0,16,0,0,0,,,,2012-07-16 08:00,2012-07-17 16:00,,2012-07-16 08:00,2012-07-17 16:00,2012-07-16 08:00,2012-07-17 16:00,2012-07-16 08:00,2012-07-17 16:00,,2012-07-16 08:00,2012-07-17 16:00,,PT_Normal,,,1,2,ckA6MCW8nEKNV/3lPGJJmw,Geyi07DTSxOfOHFyI/Uohw,,,Y,0,0,,,2012-06-25 15:13,2012-07-16 15:38,nour,admin
15,148842,5725,23812,6842,1,100,N,N,N,CP_Drtn,TT_Task,DT_FixedDUR2,RV_OK,TK_Complete,4229PFV110,Bidding for SDV,,,,0,0,0,0,240,0,0,0,,2012-05-01 08:00,2012-05-27 00:00,2012-07-01 08:00,2012-07-01 08:00,,2012-06-30 00:00,2012-06-30 00:00,,,2012-05-01 08:00,2012-05-30 16:00,,,,,PT_Normal,,,,,n+brP7xg/Eue56EKN+4mAg,Y1VZYWCvS+ihGgfVbH0oMw,,,Y,0,0,,,2012-06-25 15:13,2012-07-16 15:38,nour,admin
16,148843,5725,23813,6842,1,100,N,N,N,CP_Drtn,TT_Task,DT_FixedDUR2,RV_OK,TK_Complete,4229PAP110,Bidding for Piping bulk,,,,0,0,0,0,200,0,0,0,,2012-05-17 00:00,2012-06-13 00:00,2012-11-13 08:00,2012-11-13 08:00,,2012-06-30 00:00,2012-06-30 00:00,,,2012-05-01 08:00,2012-05-25 16:00,,,,,PT_Normal,,,,,tYWBGPNRFkGMNKkbXHKeLA,RSkHUusFTRuhwCxDwsC8AA,,,N,0,0,,,2012-06-25 15:13,2012-07-16 15:38,nour,admin
17,148844,5725,23813,6841,1,100,N,N,N,CP_Drtn,TT_LOE,DT_FixedDUR2,RV_OK,TK_Active,4229PAP120,T.E.R for Piping bulk,,696,0,8,0,0,0,160,0,0,0,,2012-06-14 00:00,,2012-06-14 08:00,2012-11-13 16:00,,2012-07-01 08:00,2012-07-01 16:00,2012-07-01 08:00,2012-07-01 16:00,2012-07-01 08:00,2012-07-26 16:00,,2012-06-14 08:00,2012-11-13 16:00,,PT_Normal,,,,,17h3qjaBUkuJjnwv72Is9A,sMA8/NSLRxS0HOz3t1hrYg,,,N,0,0,,,2012-06-25 15:13,2012-07-16 15:38,nour,admin
18,148845,5725,23813,6841,1,0,N,N,N,CP_Drtn,TT_Task,DT_FixedDUR2,RV_OK,TK_NotStart,4229PAP130,Receive revised commercial offers,,696,0,40,0,0,0,40,0,0,0,,,,2012-11-14 08:00,2012-11-20 16:00,,2012-07-02 08:00,2012-07-08 16:00,2012-07-02 08:00,2012-07-08 16:00,2012-07-02 08:00,2012-07-08 16:00,,2012-11-14 08:00,2012-11-20 16:00,,PT_Normal,,,,,n7u3Dj0CM020iWBEBFxF9A,l5/2fB1JQ1i2IDfyCFhI2Q,,,N,0,0,,,2012-06-25 15:13,2012-07-16 15:38,nour,admin
19,148846,5725,23813,6841,1,0,N,N,N,CP_Drtn,TT_Task,DT_FixedDUR2,RV_OK,TK_NotStart,4229PAP150,Client approval on bid committee reccomendation,,696,0,16,0,0,0,16,0,0,0,,,,2012-12-09 08:00,2012-12-10 16:00,,2012-07-25 08:00,2012-07-26 16:00,2012-07-25 08:00,2012-07-26 16:00,2012-07-25 08:00,2012-07-26 16:00,,2012-12-09 08:00,2012-12-10 16:00,,PT_Normal,,,,,0icsS6d0qUyyItTJAZItAQ,kXkyA5JCSby3AKvv4I+fPw,,,N,0,0,,,2012-06-25 15:13,2012-07-16 15:38,nour,admin
20,148847,5725,23813,6843,1,0,N,N,N,CP_Drtn,TT_Task,DT_FixedDUR2,RV_OK,TK_NotStart,4229PAP210,Delivery upto site (Air Freight),,1000,1000,80,0,0,0,80,0,0,0,,,,2013-02-15 08:00,2013-02-24 16:00,,2012-10-15 08:00,2012-10-24 16:00,2012-10-15 08:00,2012-10-24 16:00,2012-10-15 08:00,2012-10-24 16:00,,2013-02-15 08:00,2013-02-24 16:00,,PT_Normal,,,,,9pICMkJ2oEGO2dscsMyrRA,aOArhSsxTIK7Sik+Ukt+iQ,,,N,0,0,,,2012-06-25 15:13,2012-07-16 15:38,nour,admin
21,148848,5725,23813,6842,1,0,N,N,N,CP_Drtn,TT_Task,DT_FixedDUR2,RV_OK,TK_NotStart,4229PAP200,Fabrication upto R.F.S,,984,0,504,0,0,0,504,0,0,0,,,,2012-12-14 08:00,2013-02-14 16:00,,2012-08-01 08:00,2012-10-14 16:00,2012-08-01 08:00,2012-10-14 16:00,2012-08-01 08:00,2012-10-14 16:00,,2012-12-14 08:00,2013-02-14 16:00,,PT_Normal,,,,,V7CZvSqkCU+/uiYf/exuLg,cHSTCih9Tk23IDxIZKUWJQ,,,N,0,0,,,2012-06-25 15:13,2012-07-16 15:38,nour,admin
22,148849,5725,23819,6841,1,0,N,N,N,CP_Drtn,TT_Task,DT_FixedDUR2,RV_OK,TK_NotStart,4229PBV150,L.C issued by Gupco,,736,0,40,0,0,0,40,0,0,0,,,,2012-11-20 08:00,2012-11-26 16:00,,2012-07-01 08:00,2012-07-05 16:00,2012-07-01 08:00,2012-07-05 16:00,2012-07-01 08:00,2012-07-05 16:00,,2012-11-20 08:00,2012-11-26 16:00,,PT_Normal,,,,,Ljs6rGlcuUqXsL1D6Rszbw,wwxo8iztR4uwjBbqOwAQ2A,,,N,0,0,,,2012-06-25 15:13,2012-07-16 15:38,nour,admin
23,148850,5725,23819,6842,1,100,N,N,N,CP_Drtn,TT_Task,DT_FixedDUR2,RV_OK,TK_Complete,4229PBV20,Bidding for Piping Ball Valves,,,,0,0,0,0,112,0,0,0,,2011-12-09 00:00,2012-01-11 00:00,2012-11-20 08:00,2012-11-20 08:00,,2012-06-30 00:00,2012-06-30 00:00,,,2012-01-08 08:00,2012-01-21 16:00,,,,,PT_Normal,,,,,5k+IV8BguUKWfY9CkFRLrQ,Yu8xLuDmTK2083Jgm9UK9w,,,N,0,0,,,2012-06-25 15:13,2012-07-16 15:38,nour,admin
24,148851,5725,23819,6841,1,100,N,N,N,CP_Drtn,TT_Task,DT_FixedDUR2,RV_OK,TK_Complete,4229PBV50,commercial evaluation & bid committee,,,,0,0,0,0,80,0,0,0,,2012-03-14 00:00,2012-03-26 00:00,2012-11-20 08:00,2012-11-20 08:00,,2012-06-30 00:00,2012-06-30 00:00,,,2012-04-02 08:00,2012-04-15 16:00,,,,,PT_Normal,,,,,MDmgOdRMR0e32HZC6iYfQg,8lajj5dDQ12k8uidEmvUJA,,,N,0,0,,,2012-06-25 15:13,2012-07-16 15:38,nour,admin
25,148852,5725,23819,6841,1,100,N,N,N,CP_Drtn,TT_Task,DT_FixedDUR2,RV_OK,TK_Complete,4229PBV70,F.O.C for Piping Ball Valves,,,,0,0,0,0,24,0,0,0,,2012-04-04 00:00,2012-04-05 00:00,2012-11-20 08:00,2012-11-20 08:00,,2012-06-30 00:00,2012-06-30 00:00,,,2012-04-09 08:00,2012-04-11 16:00,,,,,PT_Normal,,,,,xZZeTx+lQ0qUzyWlap1eaA,fPBWqCCmSjiusQBVBet/Yg,,,N,0,0,,,2012-06-25 15:13,2012-07-16 15:38,nour,admin
26,148853,5725,23819,6841,1,100,N,N,N,CP_Drtn,TT_Task,DT_FixedDUR2,RV_OK,TK_Complete,4229PBV90,P.O for Piping Ball Valves,,,,0,0,0,0,16,0,0,0,,2012-04-15 00:00,2012-04-17 00:00,2012-11-20 08:00,2012-11-20 08:00,,2012-06-30 00:00,2012-06-30 00:00,,,2012-04-12 08:00,2012-04-15 16:00,,,,,PT_Normal,,,,,NlcGJ6N9dEmWMMO6Lt/Evw,duYuABFbS6q7ugETwQdWAA,,,N,0,0,,,2012-06-25 15:13,2012-07-16 15:38,nour,admin
27,148854,5725,23819,6842,1,0,N,N,N,CP_Drtn,TT_Task,DT_FixedDUR2,RV_OK,TK_Active,4229PBV110,Fabrication upto R.F.S (1st Batch),,1056,0,360,0,0,0,1008,0,0,0,,2012-04-17 00:00,,2012-11-27 08:00,2013-01-10 16:00,2012-08-19 16:00,2012-07-06 08:00,2012-08-19 16:00,2012-07-06 08:00,2012-08-19 16:00,2012-04-23 08:00,2012-09-07 16:00,,2012-11-27 08:00,2013-01-10 16:00,,PT_Normal,,,,,scafHBd1mEyvdDtDZ4v4mA,MUE0xc3sREy7yrbUxfj6Kg,,,N,0,0,,,2012-06-25 15:13,2012-07-16 15:38,nour,admin
28,148855,5725,23819,6843,1,0,N,N,N,CP_Drtn,TT_Task,DT_FixedDUR2,RV_OK,TK_NotStart,4229PBV130,Delivery upto site (1st Batch),,1168,1168,360,0,0,0,360,0,0,0,,,,2013-01-11 08:00,2013-02-24 16:00,,2012-08-20 08:00,2012-10-03 16:00,2012-08-20 08:00,2012-10-03 16:00,2012-08-20 08:00,2012-10-03 16:00,,2013-01-11 08:00,2013-02-24 16:00,,PT_Normal,,,,,XglFr2glF0yVA6K0NgGVEA,WLKa0aw9R+qpA5hDH3w6uw,,,N,0,0,,,2012-06-25 15:13,2012-07-16 15:38,nour,admin
29,148856,5725,23819,6842,1,0,N,N,N,CP_Drtn,TT_Task,DT_FixedDUR2,RV_OK,TK_NotStart,4229PBV120,Fabrication upto R.F.S (2nd Batch) for minimal  balance,,232,0,960,0,0,0,960,0,0,0,,,,2012-10-13 08:00,2013-02-09 16:00,,2012-09-14 08:00,2013-01-11 16:00,2012-09-14 08:00,2013-01-11 16:00,2012-09-14 08:00,2013-01-11 16:00,,2012-10-13 08:00,2013-02-09 16:00,,PT_Normal,,,,,pz0VWvVPBUqoZA9lYsNDsw,m7SNJWfsQZKDCN3in5Q+QA,,,N,0,0,,,2012-06-25 15:13,2012-07-16 15:38,nour,admin
30,148857,5725,23819,6843,1,0,N,N,N,CP_Drtn,TT_Task,DT_FixedDUR2,RV_OK,TK_NotStart,4229PBV140,Delivery upto site (2nd Batch) for minimal  balance,,232,232,120,0,0,0,120,0,0,0,,,,2013-02-10 08:00,2013-02-24 16:00,,2013-01-12 08:00,2013-01-26 16:00,2013-01-12 08:00,2013-01-26 16:00,2013-01-12 08:00,2013-01-26 16:00,,2013-02-10 08:00,2013-02-24 16:00,,PT_Normal,,,,,vXG4oopvv06yU1ChUMB7ZA,Vaw+U/N1T9aumpmU0wKkYw,,,N,0,0,,,2012-06-25 15:13,2012-07-16 15:38,nour,admin
31,148858,5725,23819,6841,1,100,N,N,N,CP_Drtn,TT_Task,DT_FixedDUR2,RV_OK,TK_Complete,4229PBV40,Receive revised commercial offers,,,,0,0,0,0,40,0,0,0,,2012-02-14 00:00,2012-03-13 00:00,2012-11-20 08:00,2012-11-20 08:00,,2012-06-30 00:00,2012-06-30 00:00,,,2012-03-04 08:00,2012-03-08 16:00,,,,,PT_Normal,,,,,dlZXg/vii0Ctt16cokhVsw,gPd+4xZNQWyiUU6UpYt4NA,,,N,0,0,,,2012-06-25 15:13,2012-07-16 15:38,nour,admin
32,148859,5725,23819,6841,1,100,N,N,N,CP_Drtn,TT_Task,DT_FixedDUR2,RV_OK,TK_Complete,4229PBV10,Issue RFQ for Piping Ball Valves,,,,0,0,0,0,16,0,0,0,,2011-12-08 00:00,2011-12-08 00:00,2012-11-20 08:00,2012-11-20 08:00,,2012-06-30 00:00,2012-06-30 00:00,,,2012-01-01 08:00,2012-01-02 16:00,,,,,PT_Normal,,,,,ZEyBGMUN8USRWciSktpD6w,yL99yNJ4SBuFcg03a/QZPw,,,N,0,0,,,2012-06-25 15:13,2012-07-16 15:38,nour,admin
33,148860,5725,23799,6843,1,0,N,N,N,CP_Drtn,TT_Task,DT_FixedDUR2,RV_OK,TK_NotStart,4229PSG100,Delivery upto site (Air freight),,584,272,72,0,0,0,72,0,0,0,,,,2013-02-16 08:00,2013-02-24 16:00,,2012-12-07 08:00,2012-12-15 16:00,2012-12-07 08:00,2012-12-15 16:00,2012-12-07 08:00,2012-12-15 16:00,,2013-02-16 08:00,2013-02-24 16:00,,PT_Normal,,,,,W2h5LabvJ0WfhVbK7FMvHQ,Ed1rw6pVGkqfXjRfFT7JpQ,,,N,0,0,,,2012-06-25 15:13,2012-07-16 15:38,nour,admin
34,148861,5725,23799,6842,1,0,N,N,N,CP_Drtn,TT_Task,DT_FixedDUR2,RV_OK,TK_Active,4229PSG90,Fabrication upto R.F.S,,240,0,1136,0,0,0,1360,0,0,0,,2012-05-27 00:00,,2012-08-05 08:00,2013-01-05 16:00,2012-12-06 16:00,2012-07-06 08:00,2012-12-06 16:00,2012-07-06 08:00,2012-12-06 16:00,2012-05-11 08:00,2012-11-08 16:00,,2012-08-05 08:00,2013-01-05 16:00,,PT_Normal,,,,,jEMbyLwE60SLFphcieyg/Q,7UQ9XmTabEqxyA7/76n9MA,,,N,0,0,,,2012-06-25 15:13,2012-07-16 15:38,nour,admin
35,148862,5725,23799,6841,1,0,N,N,N,CP_Drtn,TT_Task,DT_FixedDUR2,RV_OK,TK_NotStart,4229PSG80,L.C issued by Gupco,,160,0,40,0,0,0,40,0,0,0,,,,2012-07-29 08:00,2012-08-02 16:00,,2012-07-01 08:00,2012-07-05 16:00,2012-07-01 08:00,2012-07-05 16:00,2012-07-01 08:00,2012-07-05 16:00,,2012-07-29 08:00,2012-08-02 16:00,,PT_Normal,,,,,PPil227Sj0+/oikOaZBZ5w,/xqtBKQ3QEuTmEP+B+vEag,,,N,0,0,,,2012-06-25 15:13,2012-07-16 15:38,nour,admin
36,148863,5725,23799,6841,1,100,N,N,N,CP_Drtn,TT_Task,DT_FixedDUR2,RV_OK,TK_Complete,4229PSG10,Issue RFQ for SGS,,,,0,0,0,0,16,0,0,0,,2011-08-25 00:00,2011-08-28 00:00,2012-07-29 08:00,2012-07-29 08:00,,2012-06-30 00:00,2012-06-30 00:00,,,2011-08-15 08:00,2011-08-16 16:00,,,,,PT_Normal,,,,,jz+vukrYZEWvibGf9pX+7A,PapX/E/5VEedYgMn9pW1WA,,,N,0,0,,,2012-06-25 15:13,2012-07-16 15:38,nour,admin
37,148864,5725,23799,6842,1,100,N,N,N,CP_Drtn,TT_Task,DT_FixedDUR2,RV_OK,TK_Complete,4229PSG20,Bidding for SGS,,,,0,0,0,0,264,0,0,0,,2011-08-29 00:00,2011-09-26 00:00,2012-07-29 08:00,2012-07-29 08:00,,2012-06-30 00:00,2012-06-30 00:00,,,2011-08-17 08:00,2011-09-18 16:00,,,,,PT_Normal,,,,,FQ/vKy0ZOEOqHzt9BxSfIA,WAPraHdgpEiuGrgnPTRw+A,,,N,0,0,,,2012-06-25 15:13,2012-07-16 15:38,nour,admin
38,148865,5725,23799,6841,1,100,N,N,N,CP_Drtn,TT_Task,DT_FixedDUR2,RV_OK,TK_Complete,4229PSG40,commercial evaluation & bid committee for SGS,,,,0,0,0,0,176,0,0,0,,2012-02-01 00:00,2012-02-29 00:00,2012-07-29 08:00,2012-07-29 08:00,,2012-06-30 00:00,2012-06-30 00:00,,,2012-03-06 08:00,2012-04-04 16:00,,,,,PT_Normal,,,,,AJx1xI542k2NW3WaciXeNA,e/V43NRVMUS133iTAw1J2Q,,,N,0,0,,,2012-06-25 15:13,2012-07-16 15:38,nour,admin
39,148866,5725,23799,6841,1,100,N,N,N,CP_Drtn,TT_Task,DT_FixedDUR2,RV_OK,TK_Complete,4229PSG60,F.O.C for SGS,,,,0,0,0,0,24,0,0,0,,2012-03-12 00:00,2012-05-06 00:00,2012-07-29 08:00,2012-07-29 08:00,,2012-06-30 00:00,2012-06-30 00:00,,,2012-04-29 08:00,2012-05-01 16:00,,,,,PT_Normal,,,,,6m1TYE1d5Ey74DETV+Iz7A,4AXOah8HAEeGpjijEBPUrg,,,N,0,0,,,2012-06-25 15:13,2012-07-16 15:38,nour,admin
40,148867,5725,23799,6841,1,100,N,N,N,CP_Drtn,TT_Task,DT_FixedDUR2,RV_OK,TK_Complete,4229PSG70,P.O for SGS,,,,0,0,0,0,16,0,0,0,,2012-05-08 00:00,2012-05-27 00:00,2012-07-29 08:00,2012-07-29 08:00,,2012-06-30 00:00,2012-06-30 00:00,,,2012-05-02 08:00,2012-05-03 16:00,,,,,PT_Normal,,,,,a1gUQjNGR0Wpcp5SOP+ahw,AvajsHLxjEGyyQn6kYuXCQ,,,N,0,0,,,2012-06-25 15:13,2012-07-16 15:38,nour,admin
41,148868,5725,23799,6841,1,100,N,N,N,CP_Drtn,TT_LOE,DT_FixedDUR2,RV_OK,TK_Complete,A1230,T.E.R for  SGS,,,,0,0,0,0,200,0,0,0,,2011-09-28 08:00,2012-01-16 00:00,,,,,,,,2011-09-28 08:00,2011-11-02 16:00,,,,,PT_Normal,,,,,NtI/2Bj/MkW7r4asNb7wMA,vXpc3RMask+39YuXt2zsqw,,,N,0,0,,,2012-07-16 15:09,2012-07-16 15:09,admin,admin
42,148869,5725,23800,6842,1,0,N,N,N,CP_Drtn,TT_Task,DT_FixedDUR2,RV_OK,TK_Active,4229PVE90,Fabrication upto R.F.S,,240,0,584,0,0,0,1456,0,0,0,,2012-04-01 00:00,,2012-08-05 08:00,2012-10-28 16:00,2012-09-28 16:00,2012-07-06 08:00,2012-09-28 16:00,2012-07-06 08:00,2012-09-28 16:00,2012-04-06 08:00,2012-10-16 16:00,,2012-08-05 08:00,2012-10-28 16:00,,PT_Normal,,,,,CR2tgG8j0k2sNftZnNps+A,7UQ9XmTabEqxyA7/76n9MA,,,N,0,0,,,2012-06-25 15:13,2012-07-16 15:38,nour,admin
43,148870,5725,23800,6843,1,0,N,N,N,CP_Drtn,TT_Task,DT_FixedDUR2,RV_OK,TK_NotStart,4229PVE100,Delivery upto site,,1096,784,112,0,0,0,112,0,0,0,,,,2013-02-11 08:00,2013-02-24 16:00,,2012-09-29 08:00,2012-10-12 16:00,2012-09-29 08:00,2012-10-12 16:00,2012-09-29 08:00,2012-10-12 16:00,,2013-02-11 08:00,2013-02-24 16:00,,PT_Normal,,,,,91uhnHDaX0i8/icC5LsiJw,Ed1rw6pVGkqfXjRfFT7JpQ,,,N,0,0,,,2012-06-25 15:13,2012-07-16 15:38,nour,admin
44,148871,5725,23800,6841,1,100,N,N,N,CP_Drtn,TT_Task,DT_FixedDUR2,RV_OK,TK_Complete,4229PVE10,Issue RFQ for pressure vessels,,,,0,0,0,0,16,0,0,0,,2011-11-17 00:00,2011-11-17 00:00,2012-07-29 08:00,2012-07-29 08:00,,2012-06-30 00:00,2012-06-30 00:00,,,2011-12-04 08:00,2011-12-05 16:00,,,,,PT_Normal,,,,,2q9z53/CE0KNZ/oZ9hx77A,PapX/E/5VEedYgMn9pW1WA,,,N,0,0,,,2012-06-25 15:13,2012-07-16 15:38,nour,admin
45,148872,5725,23800,6842,1,100,N,N,N,CP_Drtn,TT_Task,DT_FixedDUR2,RV_OK,TK_Complete,4229PVE20,Bidding for pressure vessels,,,,0,0,0,0,240,0,0,0,,2011-11-18 00:00,2011-12-08 00:00,2012-07-29 08:00,2012-07-29 08:00,,2012-06-30 00:00,2012-06-30 00:00,,,2011-12-06 08:00,2012-01-16 16:00,,,,,PT_Normal,,,,,Kslp/jt58EWPlZxYVrgSBg,WAPraHdgpEiuGrgnPTRw+A,,,N,0,0,,,2012-06-25 15:13,2012-07-16 15:38,nour,admin
46,148873,5725,23800,6841,1,100,N,N,N,CP_Drtn,TT_Task,DT_FixedDUR2,RV_OK,TK_Complete,4229PVE40,commercial evaluation & bid committee for pressure vessels,,,,0,0,0,0,80,0,0,0,,2012-02-28 00:00,2012-03-18 00:00,2012-07-29 08:00,2012-07-29 08:00,,2012-06-30 00:00,2012-06-30 00:00,,,2012-03-05 08:00,2012-03-18 16:00,,,,,PT_Normal,,,,,R1S5MUDZEEqJ//Upn4zBxg,e/V43NRVMUS133iTAw1J2Q,,,N,0,0,,,2012-06-25 15:13,2012-07-16 15:38,nour,admin
47,148874,5725,23800,6841,1,100,N,N,N,CP_Drtn,TT_Task,DT_FixedDUR2,RV_OK,TK_Complete,4229PVE60,F.O.C for pressure vessels,,,,0,0,0,0,24,0,0,0,,2012-03-19 00:00,2012-03-20 00:00,2012-07-29 08:00,2012-07-29 08:00,,2012-06-30 00:00,2012-06-30 00:00,,,2012-04-17 08:00,2012-04-19 16:00,,,,,PT_Normal,,,,,mjNPrI+kikK1/g9zyHh24A,4AXOah8HAEeGpjijEBPUrg,,,N,0,0,,,2012-06-25 15:13,2012-07-16 15:38,nour,admin
48,148875,5725,23800,6841,1,100,N,N,N,CP_Drtn,TT_Task,DT_FixedDUR2,RV_OK,TK_Complete,4229PVE70,P.O for pressure vessels,,,,0,0,0,0,40,0,0,0,,2012-03-26 00:00,2012-04-01 16:00,2012-07-29 08:00,2012-07-29 08:00,,2012-06-30 00:00,2012-06-30 00:00,,,2012-04-01 08:00,2012-04-05 16:00,,,,,PT_Normal,,,,,5iVZY6G1fEKCBrN16bIx7A,AvajsHLxjEGyyQn6kYuXCQ,,,N,0,0,,,2012-06-25 15:13,2012-07-16 15:38,nour,admin
49,148876,5725,23800,6841,1,100,N,N,N,CP_Drtn,TT_LOE,DT_FixedDUR2,RV_OK,TK_Complete,A1410,MRP for  K.O drum,,,,0,0,0,0,16,0,0,0,,2012-03-21 08:00,2012-03-25 00:00,,,,,,,,2012-03-21 08:00,2012-03-22 16:00,,,,,PT_Normal,,,,,b1d0kqIE2UWeslx5NFcJow,DIoV5T8jvEStrhTR29QXhQ,,,N,0,0,,,2012-07-16 15:09,2012-07-16 15:09,admin,admin
50,148877,5725,23803,6842,1,100,N,N,N,CP_Drtn,TT_Task,DT_FixedDUR2,RV_OK,TK_Complete,4229PTA90,Fabrication upto R.F.S,,,,0,0,0,0,960,0,0,0,,2012-03-03 00:00,2012-03-03 00:00,2012-08-05 08:00,2012-08-05 08:00,,2012-06-30 00:00,2012-06-30 00:00,,,2012-03-30 08:00,2012-07-27 16:00,,,,,PT_Normal,,,,,4lgfbVieT0axBe9JM9vvZg,7UQ9XmTabEqxyA7/76n9MA,,,N,0,0,,,2012-06-25 15:13,2012-07-16 15:38,nour,admin
51,148878,5725,23803,6843,1,100,N,N,N,CP_Drtn,TT_Task,DT_FixedDUR2,RV_OK,TK_Complete,4229PTA100,Delivery upto site,,,,0,0,0,0,360,0,0,0,,2012-03-03 00:00,2012-03-03 00:00,2013-02-24 16:00,2013-02-24 16:00,,2012-06-30 00:00,2012-06-30 00:00,,,2012-07-28 08:00,2012-09-10 16:00,,,,,PT_Normal,,,,,9CvEbaxtMU64GutyA4ch2w,Ed1rw6pVGkqfXjRfFT7JpQ,,,N,0,0,,,2012-06-25 15:13,2012-07-16 15:38,nour,admin
52,148879,5725,23803,6841,1,100,N,N,N,CP_Drtn,TT_Task,DT_FixedDUR2,RV_OK,TK_Complete,4229PTA80,L.C issued by Gupco,,,,0,0,0,0,40,0,0,0,,2012-03-03 00:00,2012-03-03 00:00,2012-08-05 08:00,2012-08-05 08:00,,2012-06-30 00:00,2012-06-30 00:00,,,2012-03-25 08:00,2012-03-29 16:00,,,,,PT_Normal,,,,,nEKCUByM9EWhBdn0XUvVzQ,/xqtBKQ3QEuTmEP+B+vEag,,,N,0,0,,,2012-06-25 15:13,2012-07-16 15:38,nour,admin
53,148880,5725,23803,6841,1,100,N,N,N,CP_Drtn,TT_Task,DT_FixedDUR2,RV_OK,TK_Complete,4229PTA10,Issue RFQ for tanks,,,,0,0,0,0,16,0,0,0,,2011-10-27 00:00,2011-10-27 00:00,2013-02-24 16:00,2013-02-24 16:00,,2012-06-30 00:00,2012-06-30 00:00,,,2011-11-20 08:00,2011-11-21 16:00,,,,,PT_Normal,,,,,VfC5S1cFhEq+WdGGy1DPBQ,PapX/E/5VEedYgMn9pW1WA,,,N,0,0,,,2012-06-25 15:13,2012-07-16 15:38,nour,admin
54,148881,5725,23803,6842,1,100,N,N,N,CP_Drtn,TT_Task,DT_FixedDUR2,RV_OK,TK_Complete,4229PTA20,Bidding for tanks,,,,0,0,0,0,240,0,0,0,,2011-10-27 00:00,2011-11-24 00:00,2012-08-05 08:00,2012-08-05 08:00,,2012-06-30 00:00,2012-06-30 00:00,,,2011-11-22 08:00,2011-12-21 16:00,,,,,PT_Normal,,,,,nemC145TKUKg6usrzARS5A,WAPraHdgpEiuGrgnPTRw+A,,,N,0,0,,,2012-06-25 15:13,2012-07-16 15:38,nour,admin
55,148882,5725,23803,6841,1,100,N,N,N,CP_Drtn,TT_Task,DT_FixedDUR2,RV_OK,TK_Complete,4229PTA40,commercial evaluation & bid committee for tanks,,,,0,0,0,0,80,0,0,0,2012-01-08 00:00,2012-01-08 08:00,2012-03-03 00:00,2012-08-05 08:00,2012-08-05 08:00,,2012-06-30 00:00,2012-06-30 00:00,,,2012-01-08 08:00,2012-01-19 16:00,,,,CS_MSOA,PT_Normal,,,,,CwZkCae1rk2cJoj6gt/MAg,e/V43NRVMUS133iTAw1J2Q,,,N,0,0,,,2012-06-25 15:13,2012-07-16 15:38,nour,admin
56,148883,5725,23803,6841,1,100,N,N,N,CP_Drtn,TT_Task,DT_FixedDUR2,RV_OK,TK_Complete,4229PTA60,F.O.C for tanks,,,,0,0,0,0,24,0,0,0,,2012-03-03 00:00,2012-03-03 00:00,2012-08-05 08:00,2012-08-05 08:00,,2012-06-30 00:00,2012-06-30 00:00,,,2012-03-13 08:00,2012-03-15 16:00,,,,,PT_Normal,,,,,TKZ151z1VUSRUyC52D5ZuQ,4AXOah8HAEeGpjijEBPUrg,,,N,0,0,,,2012-06-25 15:13,2012-07-16 15:38,nour,admin
57,148884,5725,23803,6841,1,100,N,N,N,CP_Drtn,TT_Task,DT_FixedDUR2,RV_OK,TK_Complete,4229PTA70,P.O for tanks,,,,0,0,0,0,40,0,0,0,,2012-03-03 00:00,2012-03-03 00:00,2012-08-05 08:00,2012-08-05 08:00,,2012-06-30 00:00,2012-06-30 00:00,,,2012-03-18 08:00,2012-03-22 16:00,,,,,PT_Normal,,,,,V4pUkrepV0GnQCPqkhMO9g,AvajsHLxjEGyyQn6kYuXCQ,,,N,0,0,,,2012-06-25 15:13,2012-07-16 15:38,nour,admin
58,148885,5725,23803,6841,1,100,N,N,N,CP_Drtn,TT_LOE,DT_FixedDUR2,RV_OK,TK_Complete,A1130,T.E.R for  tanks,,,,0,0,0,0,160,0,0,0,,2011-11-24 00:00,2011-12-29 00:00,,,,,,,,2011-12-04 08:00,2011-12-29 16:00,,,,,PT_Normal,,,,,+W06IEwYgUebXSsUzivn8A,J+3VSORnYEKgQCu4Mr4NFw,,,N,0,0,,,2012-07-16 15:09,2012-07-16 15:09,admin,admin
59,148886,5725,23803,6841,1,100,N,N,N,CP_Drtn,TT_LOE,DT_FixedDUR2,RV_OK,TK_Complete,A1400,MRP for tanks,,,,0,0,0,0,40,0,0,0,,2012-03-01 00:00,2012-03-03 00:00,,,,,,,,2012-03-18 08:00,2012-03-22 16:00,,,,,PT_Normal,,,,,ki1sxKp1OEqwdd4U4NI7nw,pGi7uaR4ukGkLPQ1Hd56lg,,,N,0,0,,,2012-07-16 15:09,2012-07-16 15:09,admin,admin
60,148887,5725,23804,6841,1,100,N,N,N,CP_Drtn,TT_Task,DT_FixedDUR2,RV_OK,TK_Complete,4229PPL50,"Issue RFQ for 8"""" pipeline",,,,0,0,0,0,16,0,0,0,,2011-10-31 00:00,2011-10-31 00:00,2013-01-17 08:00,2013-01-17 08:00,,2012-06-30 00:00,2012-06-30 00:00,,,2011-12-04 08:00,2011-12-05 16:00,,,,,PT_Normal,,,,,9ZuB5CHI2UOocn5vZxR7uw,,,,N,0,0,,,2012-06-25 15:13,2012-07-16 15:38,nour,admin
61,148888,5725,23804,6842,1,0,N,N,N,CP_Drtn,TT_Task,DT_FixedDUR2,RV_OK,TK_Active,4229PPL110,Fabrication upto R.F.S,,1520,0,16,0,0,0,1008,0,0,0,,2012-02-29 00:00,,2013-01-24 08:00,2013-01-25 16:00,2012-07-07 16:00,2012-07-06 08:00,2012-07-07 16:00,2012-07-06 08:00,2012-07-07 16:00,2012-03-09 08:00,2012-07-12 16:00,,2013-01-24 08:00,2013-01-25 16:00,,PT_Normal,,,,,c+0BtaH5yUS4q4XaKu0l/w,R/NAXGokTRCnEENVLJ/sUA,,,N,0,0,,,2012-06-25 15:13,2012-07-16 15:38,nour,admin
62,148889,5725,23804,6843,1,0,N,N,N,CP_Drtn,TT_Task,DT_FixedDUR2,RV_OK,TK_NotStart,4229PPL120,Delivery upto site,,1632,1632,240,0,0,0,240,0,0,0,,,,2013-01-26 08:00,2013-02-24 16:00,,2012-07-08 08:00,2012-08-06 16:00,2012-07-08 08:00,2012-08-06 16:00,2012-07-08 08:00,2012-08-06 16:00,,2013-01-26 08:00,2013-02-24 16:00,,PT_Normal,,,,,g3zujif0cEK8RUxciV8bqQ,eZ0Jc2KERKSeoPTuttR7qA,,,N,0,0,,,2012-06-25 15:13,2012-07-16 15:38,nour,admin
63,148890,5725,23804,6841,1,0,N,N,N,CP_Drtn,TT_Task,DT_FixedDUR2,RV_OK,TK_NotStart,4229PPL100,L.C issued by Gupco,,1072,0,40,0,0,0,40,0,0,0,,,,2013-01-17 08:00,2013-01-23 16:00,,2012-07-01 08:00,2012-07-05 16:00,2012-07-01 08:00,2012-07-05 16:00,2012-07-01 08:00,2012-07-05 16:00,,2013-01-17 08:00,2013-01-23 16:00,,PT_Normal,,,,,3wSkIKc9V0aRVy9TbaeO4Q,bmO2BodKSyWpRC6TayH5ug,,,N,0,0,,,2012-06-25 15:13,2012-07-16 15:38,nour,admin
64,148891,5725,23804,6841,1,100,N,N,N,CP_Drtn,TT_Task,DT_FixedDUR2,RV_OK,TK_Complete,4229PPL60,"commercial evaluation & bid committee for 8""""pipeline",,,,0,0,0,0,80,0,0,0,,2012-01-25 00:00,2012-01-30 00:00,2013-01-17 08:00,2013-01-17 08:00,,2012-06-30 00:00,2012-06-30 00:00,,,2012-03-06 08:00,2012-03-19 16:00,,,,,PT_Normal,,,,,60S9A7gCOkeRjA4Xuh0MlQ,sFxdNzwOTBex/R7q5VbB/Q,,,N,0,0,,,2012-06-25 15:13,2012-07-16 15:38,nour,admin
65,148892,5725,23804,6841,1,100,N,N,N,CP_Drtn,TT_Task,DT_FixedDUR2,RV_OK,TK_Complete,4229PPL80,"F.O.C for 8"""" pipeline",,,,0,0,0,0,24,0,0,0,,2012-02-21 00:00,2012-02-26 00:00,2013-01-17 08:00,2013-01-17 08:00,,2012-06-30 00:00,2012-06-30 00:00,,,2012-03-04 08:00,2012-03-06 16:00,,,,,PT_Normal,,,,,NDvs0iNZ80itLxqIwHd+/g,f3+HEw7bS++sH713ZnOX6Q,,,N,0,0,,,2012-06-25 15:13,2012-07-16 15:38,nour,admin
66,148893,5725,23804,6841,1,100,N,N,N,CP_Drtn,TT_Task,DT_FixedDUR2,RV_OK,TK_Complete,4229PPL90,"P.O for 8"""" pipeline",,,,0,0,0,0,40,0,0,0,,2012-02-27 00:00,2012-02-29 00:00,2013-01-17 08:00,2013-01-17 08:00,,2012-06-30 00:00,2012-06-30 00:00,,,2012-03-04 08:00,2012-03-08 16:00,,,,,PT_Normal,,,,,k09b426aXEuM8cTZ4tY1Tw,Ome5oXQSREmwSDyRtaFKtQ,,,N,0,0,,,2012-06-25 15:13,2012-07-16 15:38,nour,admin
67,148894,5725,23804,6842,1,100,N,N,N,CP_Drtn,TT_Task,DT_FixedDrtn,RV_OK,TK_Complete,4229PPL10,"Bidding for 8"""" pipeline",,,,0,0,0,0,280,0,0,0,,2011-11-01 00:00,2011-11-21 00:00,2013-01-17 08:00,2013-01-17 08:00,,2012-06-30 00:00,2012-06-30 00:00,,,2011-12-06 08:00,2012-01-21 16:00,,,,,PT_Normal,,,,,e7bdP/7i1Eep7sV40vzkhg,,,,N,0,0,,,2012-06-25 15:13,2012-07-16 15:38,nour,admin
68,148895,5725,23804,6841,1,100,N,N,N,CP_Drtn,TT_Task,DT_FixedDrtn,RV_OK,TK_Complete,4229PPL20,"Receive revised commercial offers for 8""""pipeline",,,,0,0,0,0,40,0,0,0,,2012-01-09 08:00,2012-01-24 00:00,2013-01-17 08:00,2013-01-17 08:00,,2012-06-30 00:00,2012-06-30 00:00,,,2012-01-09 08:00,2012-01-15 16:00,,,,,PT_Normal,,,,,b2a/0iUEQUqmbSF0hOuk+g,,,,N,0,0,,,2012-06-25 15:13,2012-07-16 15:38,nour,admin
69,148896,5725,23801,6841,1,100,N,N,N,CP_Drtn,TT_Task,DT_FixedDUR2,RV_OK,TK_Complete,4229PKR80,L.C issued by Gupco,,,,0,0,0,0,8,0,0,0,,2012-01-02 00:00,2012-01-02 00:00,2013-02-24 16:00,2013-02-24 16:00,,2012-06-30 00:00,2012-06-30 00:00,,,2012-01-01 08:00,2012-01-01 16:00,,,,,PT_Normal,,,,,g5XYjmItP0u0U97d4xiTbQ,3jITFGtr+kiLENdPR+Y//g,,,N,0,0,,,2012-06-25 15:13,2012-07-16 15:38,nour,admin
70,148897,5725,23801,6841,1,100,N,N,N,CP_Drtn,TT_Task,DT_FixedDUR2,RV_OK,TK_Complete,4229PKR40,commercial evaluation & bid committee for Kamos ring,,,,0,0,0,0,80,0,0,0,,2011-11-27 00:00,2011-12-07 00:00,2013-02-24 16:00,2013-02-24 16:00,,2012-06-30 00:00,2012-06-30 00:00,,,2011-12-11 08:00,2011-12-22 16:00,,,,,PT_Normal,,,,,MrRrqkfauUqkX1s3h7qsEA,3ro8V+iM2kWWUdMn3ENIug,,,N,0,0,,,2012-06-25 15:13,2012-07-16 15:38,nour,admin
71,148898,5725,23801,6841,1,100,N,N,N,CP_Drtn,TT_Task,DT_FixedDUR2,RV_OK,TK_Complete,4229PKR60,F.O.C for Kamos ring,,,,0,0,0,0,24,0,0,0,,2011-12-12 00:00,2011-12-20 00:00,2013-02-24 16:00,2013-02-24 16:00,,2012-06-30 00:00,2012-06-30 00:00,,,2012-01-03 08:00,2012-01-05 16:00,,,,,PT_Normal,,,,,2XxJFTBoXkeYu7busp8YBQ,aOz6IP5TRUi7G/HwE9JsZA,,,N,0,0,,,2012-06-25 15:13,2012-07-16 15:38,nour,admin
72,148899,5725,23801,6841,1,100,N,N,N,CP_Drtn,TT_Task,DT_FixedDUR2,RV_OK,TK_Complete,4229PKR70,P.O for Kamos ring,,,,0,0,0,0,32,0,0,0,,2011-12-27 08:00,2012-01-01 16:00,2013-02-24 16:00,2013-02-24 16:00,,2012-06-30 00:00,2012-06-30 00:00,,,2011-12-27 08:00,2012-01-01 16:00,,,,,PT_Normal,,,,,zFMMa35hOE+WktdGe+Y2jQ,4jZsUwnCVkyez1CGClmI4w,,,N,0,0,,,2012-06-25 15:13,2012-07-16 15:38,nour,admin
73,148900,5725,23801,6842,1,100,N,N,N,CP_Drtn,TT_Task,DT_FixedDrtn,RV_OK,TK_Complete,4229PKR20,Bidding for Kamos ring,,,,0,0,0,0,200,0,0,0,,2011-10-06 00:00,2011-11-12 00:00,2013-02-24 16:00,2013-02-24 16:00,,2012-06-30 00:00,2012-06-30 00:00,,,2011-11-01 08:00,2011-11-25 16:00,,,,,PT_Normal,,,,,ReFKc/VeqkORhAdCS2SaVg,aqDgHd8b8kmS1ml83ufGuA,,,N,0,0,,,2012-06-25 15:13,2012-07-16 15:38,nour,admin
74,148901,5725,23801,6841,1,100,N,N,N,CP_Drtn,TT_Task,DT_FixedDrtn,RV_OK,TK_Complete,4229PKR30,Receive revised commercial offers for Kamos ring,,,,0,0,0,0,40,0,0,0,,2011-11-21 00:00,2011-11-27 00:00,2013-02-24 16:00,2013-02-24 16:00,,2012-06-30 00:00,2012-06-30 00:00,,,2011-12-04 08:00,2011-12-08 16:00,,,,,PT_Normal,,,,,cH1Ozpr8B0aEWWJvQGrNuw,cI8XFbOGtEiLgTZ3toUOuA,,,N,0,0,,,2012-06-25 15:13,2012-07-16 15:38,nour,admin
75,148902,5725,23801,6841,1,100,N,N,N,CP_Drtn,TT_Task,DT_FixedDUR2,RV_OK,TK_Complete,4229PKR10,Issue RFQ for Kamos ring,,,,0,0,0,0,16,0,0,0,,2011-10-05 00:00,2011-10-05 00:00,2013-02-24 16:00,2013-02-24 16:00,,2012-06-30 00:00,2012-06-30 00:00,,,2011-10-30 08:00,2011-10-31 16:00,,,,,PT_Normal,,,,,coI4z5TMr0a5G6xxX7yZzg,MF8ACxsV2EGTaIRXL+YVVw,,,N,0,0,,,2012-06-25 15:13,2012-07-16 15:38,nour,admin
76,148903,5725,23801,6842,1,100,N,N,N,CP_Drtn,TT_Task,DT_FixedDUR2,RV_OK,TK_Complete,4229PKR90,Fabrication upto R.F.S,,,,0,0,0,0,728,0,0,0,,2012-01-02 00:00,2012-03-04 00:00,2013-02-24 16:00,2013-02-24 16:00,,2012-06-30 00:00,2012-06-30 00:00,,,2012-01-28 08:00,2012-04-27 16:00,,,,,PT_Normal,,,,,7dO7LAQ4A0CdG2kEpjLarw,WR5vIkiNPkm7l0vU5ocNsA,,,N,0,0,,,2012-06-25 15:13,2012-07-16 15:38,nour,admin
77,148904,5725,23801,6843,1,100,N,N,N,CP_Drtn,TT_Task,DT_FixedDUR2,RV_OK,TK_Complete,4229PKR100,Delivery upto site,,,,0,0,0,0,240,0,0,0,,2012-03-05 00:00,2012-03-24 00:00,2013-02-24 16:00,2013-02-24 16:00,,2012-06-30 00:00,2012-06-30 00:00,,,2012-04-02 08:00,2012-05-01 16:00,,,,,PT_Normal,,,,,WC5nFr5anEy0MO+HVYlFQw,o3ktBGgPHkOGVVqCO95mXA,,,N,0,0,,,2012-06-25 15:13,2012-07-16 15:38,nour,admin
78,148905,5725,23802,6842,1,100,N,N,N,CP_Drtn,TT_Task,DT_FixedDrtn,RV_OK,TK_Complete,4229PAF20,Bidding for  Anchor Flanges,,,,0,0,0,0,200,0,0,0,,2011-10-27 00:00,2011-12-01 00:00,2013-02-03 08:00,2013-02-03 08:00,,2012-06-30 00:00,2012-06-30 00:00,,,2011-11-01 08:00,2011-11-25 16:00,,,,,PT_Normal,,,,,K6jTBGPNXUin/ZgI7c+XGA,3gr+rFvxxEqInjchjLuZiw,,,N,0,0,,,2012-06-25 15:13,2012-07-16 15:38,nour,admin
79,148906,5725,23802,6841,1,100,N,N,N,CP_Drtn,TT_Task,DT_FixedDrtn,RV_OK,TK_Complete,4229PAF30,Receive revised commercial offers for  Anchor Flanges,,,,0,0,0,0,40,0,0,0,2012-01-08 00:00,2012-01-08 08:00,2012-01-12 00:00,2013-02-03 08:00,2013-02-03 08:00,,2012-06-30 00:00,2012-06-30 00:00,,,2012-01-08 08:00,2012-01-12 16:00,,,,CS_MSOA,PT_Normal,,,,,kGrM+N53j0C0Mt3UvBwzPA,YZqtY743iECtZCI8oAzGEw,,,N,0,0,,,2012-06-25 15:13,2012-07-16 15:38,nour,admin
80,148907,5725,23802,6841,1,100,N,N,N,CP_Drtn,TT_Task,DT_FixedDUR2,RV_OK,TK_Complete,4229PAF10,Issue RFQ for Anchor Flanges,,,,0,0,0,0,16,0,0,0,,2011-10-25 00:00,2011-10-26 00:00,2013-02-03 08:00,2013-02-03 08:00,,2012-06-30 00:00,2012-06-30 00:00,,,2011-10-30 08:00,2011-10-31 16:00,,,,,PT_Normal,,,,,cglnYCt0hkaIMA0KFt1gmw,MrFyXV/ZwEKiOJ2hcnyoRg,,,N,0,0,,,2012-06-25 15:13,2012-07-16 15:38,nour,admin
81,148908,5725,23802,6842,1,100,N,N,N,CP_Drtn,TT_Task,DT_FixedDUR2,RV_OK,TK_Complete,4229PAF90,Fabrication upto R.F.S,,,,0,0,0,0,448,0,0,0,,2012-02-28 00:00,2012-05-15 00:00,2013-02-08 08:00,2013-02-08 08:00,,2012-07-05 16:00,2012-07-05 16:00,,,2012-03-09 08:00,2012-05-03 16:00,,,,,PT_Normal,,,,,2URzWOICX0ie6zg0jH0q1w,qgd69YrpDkOI+oaKInsYUg,,,N,0,0,,,2012-06-25 15:13,2012-07-16 15:38,nour,admin
82,148909,5725,23802,6841,1,0,N,N,N,CP_Drtn,TT_Task,DT_FixedDUR2,RV_OK,TK_NotStart,4229PAF80,L.C issued by Gupco,,1160,0,40,0,0,0,40,0,0,0,,,,2013-02-03 08:00,2013-02-07 16:00,,2012-07-01 08:00,2012-07-05 16:00,2012-07-01 08:00,2012-07-05 16:00,2012-07-01 08:00,2012-07-05 16:00,,2013-02-03 08:00,2013-02-07 16:00,,PT_Normal,,,,,/CYFEucCK0e9ZrVqpxdagA,Kd1Io08brUu0r3ObTHOVHg,,,N,0,0,,,2012-06-25 15:13,2012-07-16 15:38,nour,admin
83,148910,5725,23802,6841,1,100,N,N,N,CP_Drtn,TT_Task,DT_FixedDUR2,RV_OK,TK_Complete,4229PAF40,commercial evaluation & bid committee for  Anchor Flanges,,,,0,0,0,0,80,0,0,0,,2012-01-15 08:00,2012-02-06 00:00,2013-02-03 08:00,2013-02-03 08:00,,2012-06-30 00:00,2012-06-30 00:00,,,2012-01-15 08:00,2012-01-29 16:00,,,,,PT_Normal,,,,,78sy/MhyMEOO/sbdRBeKsw,g31Sg/5OdEWgMblFud4aKg,,,N,0,0,,,2012-06-25 15:13,2012-07-16 15:38,nour,admin
84,148911,5725,23802,6841,1,100,N,N,N,CP_Drtn,TT_Task,DT_FixedDUR2,RV_OK,TK_Complete,4229PAF60,F.O.C for  Anchor Flanges,,,,0,0,0,0,24,0,0,0,,2012-02-12 00:00,2012-02-13 00:00,2013-02-03 08:00,2013-02-03 08:00,,2012-06-30 00:00,2012-06-30 00:00,,,2012-03-04 08:00,2012-03-06 16:00,,,,,PT_Normal,,,,,5Hh/C28o1kii7AFrpMm1sQ,r1kiUYJl5E6F8x873gkW3Q,,,N,0,0,,,2012-06-25 15:13,2012-07-16 15:38,nour,admin
85,148912,5725,23802,6841,1,100,N,N,N,CP_Drtn,TT_Task,DT_FixedDUR2,RV_OK,TK_Complete,4229PAF70,P.O for  Anchor Flanges,,,,0,0,0,0,40,0,0,0,,2012-02-28 00:00,2012-02-28 00:00,2013-02-03 08:00,2013-02-03 08:00,,2012-06-30 00:00,2012-06-30 00:00,,,2012-03-04 08:00,2012-03-08 16:00,,,,,PT_Normal,,,,,jHAGLt1oEkW8PZUiCykVCg,/iUKwzSdjUWnbLh4jcgmjw,,,N,0,0,,,2012-06-25 15:13,2012-07-16 15:38,nour,admin
86,148913,5725,23808,6842,1,100,N,N,N,CP_Drtn,TT_Task,DT_FixedDrtn,RV_OK,TK_Complete,4229PIJ20,Bidding for Isolating joints,,,,0,0,0,0,200,0,0,0,,2011-10-20 00:00,2011-11-10 00:00,2013-02-24 16:00,2013-02-24 16:00,,2012-06-30 00:00,2012-06-30 00:00,,,2011-11-01 08:00,2011-11-25 16:00,,,,,PT_Normal,,,,,peVxeLuYWEefAFr09KLl3w,bBQedupqd0KFz1dIppHZuQ,,,N,0,0,,,2012-06-25 15:13,2012-07-16 15:38,nour,admin
87,148914,5725,23808,6841,1,100,N,N,N,CP_Drtn,TT_Task,DT_FixedDrtn,RV_OK,TK_Complete,4229PIJ30,Receive revised commercial offers for Isolating joints,,,,0,0,0,0,40,0,0,0,,2011-12-13 08:00,2011-12-21 00:00,2013-02-24 16:00,2013-02-24 16:00,,2012-06-30 00:00,2012-06-30 00:00,,,2011-12-13 08:00,2011-12-19 16:00,,,,,PT_Normal,,,,,g1Eh0klEN0eBM0x010H2Bg,klxYrCfhKEa29w2695+dWw,,,N,0,0,,,2012-06-25 15:13,2012-07-16 15:38,nour,admin
88,148915,5725,23808,6841,1,100,N,N,N,CP_Drtn,TT_Task,DT_FixedDUR2,RV_OK,TK_Complete,4229PIJ10,Issue RFQ for Isolating joints,,,,0,0,0,0,16,0,0,0,,2011-10-19 00:00,2011-10-19 00:00,2013-02-24 16:00,2013-02-24 16:00,,2012-06-30 00:00,2012-06-30 00:00,,,2011-10-30 08:00,2011-10-31 16:00,,,,,PT_Normal,,,,,VjbZeu3cfUKg7ueOwOEpKA,as1huikPDUKtD+tVXnVG5w,,,N,0,0,,,2012-06-25 15:13,2012-07-16 15:38,nour,admin
89,148916,5725,23808,6842,1,100,N,N,N,CP_Drtn,TT_Task,DT_FixedDUR2,RV_OK,TK_Complete,4229PIJ90,Fabrication upto R.F.S,,,,0,0,0,0,784,0,0,0,,2012-02-03 00:00,2012-06-11 00:00,2013-02-24 16:00,2013-02-24 16:00,,2012-06-30 00:00,2012-06-30 00:00,,,2012-03-09 08:00,2012-06-14 16:00,,,,,PT_Normal,,,,,np0Mj/6jA06a/8UuHyvGUg,wggRnWZrx0WgSPrgNG50cA,,,N,0,0,,,2012-06-25 15:13,2012-07-16 15:38,nour,admin
90,148917,5725,23808,6843,1,100,N,N,N,CP_Drtn,TT_Task,DT_FixedDUR2,RV_OK,TK_Complete,4229PIJ100,Delivery upto site,,,,0,0,0,0,240,0,0,0,,2012-06-11 00:00,2012-07-21 00:00,2013-02-24 16:00,2013-02-24 16:00,,2012-06-30 00:00,2012-06-30 00:00,,,2012-07-06 08:00,2012-08-04 16:00,,,,,PT_Normal,,,,,ir7+wFIUy0WhtG0En8F76g,GuMhgm4xLky6jrSmhJlN2A,,,N,0,0,,,2012-06-25 15:13,2012-07-16 15:38,nour,admin
91,148918,5725,23808,6841,1,100,N,N,N,CP_Drtn,TT_Task,DT_FixedDUR2,RV_OK,TK_Complete,4229PIJ40,commercial evaluation & bid committee for Isolating joints,,,,0,0,0,0,80,0,0,0,,2011-12-13 00:00,2011-12-21 00:00,2013-02-24 16:00,2013-02-24 16:00,,2012-06-30 00:00,2012-06-30 00:00,,,2011-12-22 08:00,2012-01-04 16:00,,,,,PT_Normal,,,,,VI4FYX7Kg02uwF7OAtQtyA,+GIhOJsP5EuRDusTK86C3Q,,,N,0,0,,,2012-06-25 15:13,2012-07-16 15:38,nour,admin
92,148919,5725,23808,6841,1,100,N,N,N,CP_Drtn,TT_Task,DT_FixedDUR2,RV_OK,TK_Complete,4229PIJ60,F.O.C for Isolating joints,,,,0,0,0,0,24,0,0,0,,2012-01-04 00:00,2012-01-23 16:00,2013-02-24 16:00,2013-02-24 16:00,,2012-06-30 00:00,2012-06-30 00:00,,,2012-01-23 08:00,2012-01-26 16:00,,,,,PT_Normal,,,,,OTUwqDqqcUO6aswN3EF6hg,m/zaAJ0juUCO2Ynoa4AOIg,,,N,0,0,,,2012-06-25 15:13,2012-07-16 15:38,nour,admin
93,148920,5725,23808,6841,1,100,N,N,N,CP_Drtn,TT_Task,DT_FixedDUR2,RV_OK,TK_Complete,4229PIJ70,P.O for Isolating joints,,,,0,0,0,0,40,0,0,0,,2012-02-01 08:00,2012-02-02 00:00,2013-02-24 16:00,2013-02-24 16:00,,2012-06-30 00:00,2012-06-30 00:00,,,2012-02-01 08:00,2012-02-07 16:00,,,,,PT_Normal,,,,,iEmwh3xUV0eWtcAOLJRqkQ,51qm2usYr0+stGttA74aog,,,N,0,0,,,2012-06-25 15:13,2012-07-16 15:38,nour,admin
94,148921,5725,23809,6842,1,100,N,N,N,CP_Drtn,TT_Task,DT_FixedDrtn,RV_OK,TK_Complete,4229PHS20,Bidding for Heat shrink sleeves,,,,0,0,0,0,200,0,0,0,,2011-10-13 00:00,2011-11-02 00:00,2013-02-24 16:00,2013-02-24 16:00,,2012-06-30 00:00,2012-06-30 00:00,,,2011-11-01 08:00,2011-11-25 16:00,,,,,PT_Normal,,,,,LETqUxwxoU+RKjdVx7ZBvw,07sjOHjKsE6iDWYX7870iw,,,N,0,0,,,2012-06-25 15:13,2012-07-16 15:38,nour,admin
95,148922,5725,23809,6841,1,100,N,N,N,CP_Drtn,TT_Task,DT_FixedDrtn,RV_OK,TK_Complete,4229PHS30,Receive revised commercial offers for Heat shrink sleeves,,,,0,0,0,0,40,0,0,0,,2011-12-06 08:00,2011-12-08 00:00,2013-02-24 16:00,2013-02-24 16:00,,2012-06-30 00:00,2012-06-30 00:00,,,2011-12-06 08:00,2011-12-12 16:00,,,,,PT_Normal,,,,,tftzXB8o0kmV3563g1+P3g,iD0sa1SMaEiOKBRQ1O2o6g,,,N,0,0,,,2012-06-25 15:13,2012-07-16 15:38,nour,admin
96,148923,5725,23809,6841,1,100,N,N,N,CP_Drtn,TT_Task,DT_FixedDUR2,RV_OK,TK_Complete,4229PHS10,Issue RFQ for Heat shrink sleeves,,,,0,0,0,0,16,0,0,0,,2011-10-12 00:00,2011-10-12 00:00,2013-02-24 16:00,2013-02-24 16:00,,2012-06-30 00:00,2012-06-30 00:00,,,2011-10-30 08:00,2011-10-31 16:00,,,,,PT_Normal,,,,,fo0PeZKiQUGP0o/E6NG8FQ,jfLoOt8Z6kGAt+HgfFvK3w,,,N,0,0,,,2012-06-25 15:13,2012-07-16 15:38,nour,admin
97,148924,5725,23809,6842,1,100,N,N,N,CP_Drtn,TT_Task,DT_FixedDUR2,RV_OK,TK_Complete,4229PHS90,Fabrication upto R.F.S,,,,0,0,0,0,392,0,0,0,,2012-01-24 00:00,2012-03-22 00:00,2013-02-24 16:00,2013-02-24 16:00,,2012-06-30 00:00,2012-06-30 00:00,,,2012-01-30 08:00,2012-03-18 16:00,,,,,PT_Normal,,,,,cXObKFvwPEOukOpLhaSO6A,LLxu6IKLk0yOdCX45wxHIQ,,,N,0,0,,,2012-06-25 15:13,2012-07-16 15:38,nour,admin
98,148925,5725,23809,6843,1,100,N,N,N,CP_Drtn,TT_Task,DT_FixedDUR2,RV_OK,TK_Complete,4229PHS100,Delivery upto site,,,,0,0,0,0,120,0,0,0,,2012-03-23 00:00,2012-05-27 00:00,2013-02-24 16:00,2013-02-24 16:00,,2012-06-30 00:00,2012-06-30 00:00,,,2012-03-31 08:00,2012-04-14 16:00,,,,,PT_Normal,,,,,BX+I5E1n002zqeKM21Z2Hg,/LOUFXStZU20NZFdwfal8w,,,N,0,0,,,2012-06-25 15:13,2012-07-16 15:38,nour,admin
99,148926,5725,23809,6841,1,100,N,N,N,CP_Drtn,TT_Task,DT_FixedDUR2,RV_OK,TK_Complete,4229PHS80,L.C issued by Gupco (not Applicable),,,,0,0,0,0,40,0,0,0,,2012-01-23 00:00,2012-01-23 00:00,2013-02-24 16:00,2013-02-24 16:00,,2012-06-30 00:00,2012-06-30 00:00,,,2012-01-22 08:00,2012-01-29 16:00,,,,,PT_Normal,,,,,5fl5ys18i0KKgmoknq/2NQ,P+ALjRxymUWKulYnQG96Og,,,N,0,0,,,2012-06-25 15:13,2012-07-16 15:38,nour,admin
100,148927,5725,23809,6841,1,100,N,N,N,CP_Drtn,TT_Task,DT_FixedDUR2,RV_OK,TK_Complete,4229PHS40,commercial evaluation & bid committee for Heat shrink sleeves,,,,0,0,0,0,80,0,0,0,,2011-12-09 00:00,2011-12-12 00:00,2013-02-24 16:00,2013-02-24 16:00,,2012-06-30 00:00,2012-06-30 00:00,,,2011-12-14 08:00,2011-12-27 16:00,,,,,PT_Normal,,,,,bXUCvVlR90GvjRUTFpoP7Q,sKwTyDY27U2BB6/qHgw6OQ,,,N,0,0,,,2012-06-25 15:13,2012-07-16 15:38,nour,admin
101,148928,5725,23809,6841,1,100,N,N,N,CP_Drtn,TT_Task,DT_FixedDUR2,RV_OK,TK_Complete,4229PHS60,F.O.C for Heat shrink sleeves,,,,0,0,0,0,24,0,0,0,,2012-01-04 00:00,2012-01-23 00:00,2013-02-24 16:00,2013-02-24 16:00,,2012-06-30 00:00,2012-06-30 00:00,,,2012-01-03 08:00,2012-01-05 16:00,,,,,PT_Normal,,,,,jgPgb9oCvESPROu80AQUkw,iXQwi6oD8EyafkjSeVpArg,,,N,0,0,,,2012-06-25 15:13,2012-07-16 15:38,nour,admin
102,148929,5725,23809,6841,1,100,N,N,N,CP_Drtn,TT_Task,DT_FixedDUR2,RV_OK,TK_Complete,4229PHS70,P.O for Heat shrink sleeves,,,,0,0,0,0,40,0,0,0,,2012-01-30 08:00,2012-02-05 16:00,2013-02-24 16:00,2013-02-24 16:00,,2012-06-30 00:00,2012-06-30 00:00,,,2012-01-30 08:00,2012-02-05 16:00,,,,,PT_Normal,,,,,UUekLIuKDUq6J+0dB9UfPg,vcNgRPq2gE2+G9/qjHSUDA,,,N,0,0,,,2012-06-25 15:13,2012-07-16 15:38,nour,admin
103,148930,5725,23810,6842,1,100,N,N,N,CP_Drtn,TT_Task,DT_FixedDrtn,RV_OK,TK_Complete,4229P4220,Bidding for Flanges,,,,0,0,0,0,16,0,0,0,,2011-11-03 00:00,2011-11-28 00:00,2013-01-26 08:00,2013-01-26 08:00,,2012-06-30 00:00,2012-06-30 00:00,,,2011-12-03 08:00,2011-12-04 16:00,,,,,PT_Normal,,,,,4tKV4BVEXUykwTdQigF1Qg,4dk1kLWr8Uipwbh1A4uC1Q,,,N,0,0,,,2012-06-25 15:13,2012-07-16 15:38,nour,admin
104,148931,5725,23810,6841,1,100,N,N,N,CP_Drtn,TT_Task,DT_FixedDrtn,RV_OK,TK_Complete,4229PFL30,Receive revised commercial offers for Flanges,,,,0,0,0,0,40,0,0,0,,2012-01-19 00:00,2012-01-24 00:00,2013-01-26 08:00,2013-01-26 08:00,,2012-06-30 00:00,2012-06-30 00:00,,,2012-01-29 08:00,2012-02-02 16:00,,,,,PT_Normal,,,,,spd4dSC9+EqgJfpaNNbM4w,9VDpY57a3UudBJDUjqJGDQ,,,N,0,0,,,2012-06-25 15:13,2012-07-16 15:38,nour,admin
105,148932,5725,23810,6841,1,100,N,N,N,CP_Drtn,TT_Task,DT_FixedDUR2,RV_OK,TK_Complete,4229PFL10,Issue RFQ for Flanges,,,,0,0,0,0,16,0,0,0,,2011-10-31 00:00,2011-11-02 00:00,2013-01-26 08:00,2013-01-26 08:00,,2012-06-30 00:00,2012-06-30 00:00,,,2011-12-04 08:00,2011-12-05 16:00,,,,,PT_Normal,,,,,K9JwhlC/IUiryVXOH7WQlQ,Ogmu6kUj7USG0/qhOzLW0g,,,N,0,0,,,2012-06-25 15:13,2012-07-16 15:38,nour,admin
106,148933,5725,23810,6842,1,0,N,N,N,CP_Drtn,TT_Task,DT_FixedDUR2,RV_OK,TK_Active,4229PFL90,Fabrication upto R.F.S,,1584,0,128,0,0,0,896,0,0,0,,2012-02-28 00:00,,2013-01-26 08:00,2013-02-10 16:00,,2012-06-30 08:00,2012-07-15 16:00,2012-06-30 08:00,2012-07-15 16:00,2012-03-03 08:00,2012-06-22 16:00,,2013-01-26 08:00,2013-02-10 16:00,,PT_Normal,,,,,GYn1wKZG/UyWIbNZ8rfChQ,xpVpHHnMvEKud81vKiQs4w,,,N,0,0,,,2012-06-25 15:13,2012-07-16 15:38,nour,admin
107,148934,5725,23810,6843,1,0,N,N,N,CP_Drtn,TT_Task,DT_FixedDUR2,RV_OK,TK_NotStart,4229PFL100,Delivery upto site,,1696,1696,112,0,0,0,112,0,0,0,,,,2013-02-11 08:00,2013-02-24 16:00,,2012-07-16 08:00,2012-07-29 16:00,2012-07-16 08:00,2012-07-29 16:00,2012-07-16 08:00,2012-07-29 16:00,,2013-02-11 08:00,2013-02-24 16:00,,PT_Normal,,,,,ZHj5PIqU3UG3pmDeQ4M7Lg,Tf7vSjkuA0O8+UofbYSmOg,,,N,0,0,,,2012-06-25 15:13,2012-07-16 15:38,nour,admin
108,148935,5725,23810,6841,1,100,N,N,N,CP_Drtn,TT_Task,DT_FixedDUR2,RV_OK,TK_Complete,4229PFL40,commercial evaluation & bid committee for Flanges,,,,0,0,0,0,80,0,0,0,,2012-01-25 00:00,2012-02-20 00:00,2013-01-26 08:00,2013-01-26 08:00,,2012-06-30 00:00,2012-06-30 00:00,,,2012-02-05 08:00,2012-02-16 16:00,,,,,PT_Normal,,,,,5ZbDAl6Qc0y9AUu7Rk60zw,cwhykWHlMECb4uDsvooIkQ,,,N,0,0,,,2012-06-25 15:13,2012-07-16 15:38,nour,admin
109,148936,5725,23810,6841,1,100,N,N,N,CP_Drtn,TT_Task,DT_FixedDUR2,RV_OK,TK_Complete,4229PFL60,F.O.C for Flanges,,,,0,0,0,0,24,0,0,0,,2012-02-22 00:00,2012-02-26 00:00,2013-01-26 08:00,2013-01-26 08:00,,2012-06-30 00:00,2012-06-30 00:00,,,2012-03-04 08:00,2012-03-06 16:00,,,,,PT_Normal,,,,,UVGA7lTCm0Ot0ple846Enw,Q9JBxixOMkK0UZXQoQ9l3A,,,N,0,0,,,2012-06-25 15:13,2012-07-16 15:38,nour,admin
110,148937,5725,23810,6841,1,100,N,N,N,CP_Drtn,TT_Task,DT_FixedDUR2,RV_OK,TK_Complete,4229PFL70,P.O for Flanges,,,,0,0,0,0,40,0,0,0,,2012-02-28 00:00,2012-02-28 00:00,2013-01-26 08:00,2013-01-26 08:00,,2012-06-30 00:00,2012-06-30 00:00,,,2012-03-04 08:00,2012-03-08 16:00,,,,,PT_Normal,,,,,EdnInAFddUmNGZ8FHNpRMQ,0JXogbR1gUi8jGuDO8H6zw,,,N,0,0,,,2012-06-25 15:13,2012-07-16 15:38,nour,admin
111,148938,5725,23806,6842,1,100,N,N,N,CP_Drtn,TT_Task,DT_FixedDrtn,RV_OK,TK_Complete,4229PHB20,Bidding for hot bends,,,,0,0,0,0,200,0,0,0,2011-10-10 00:00,2011-10-10 08:00,2011-10-30 16:00,2012-12-02 08:00,2012-12-02 08:00,,2012-06-30 00:00,2012-06-30 00:00,,,2011-10-10 08:00,2011-11-03 16:00,,,,CS_MSOA,PT_Normal,,,,,zKFI50/iP06zKgeM8Eeeww,Q7yIZtnDRROY+WyhFyvCjg,,,N,0,0,,,2012-06-25 15:13,2012-07-16 15:38,nour,admin
112,148939,5725,23806,6841,1,100,N,N,N,CP_Drtn,TT_Task,DT_FixedDrtn,RV_OK,TK_Complete,4229PHB30,Receive revised commercial offers for hot bends,,,,0,0,0,0,40,0,0,0,,2011-12-09 00:00,2011-12-28 00:00,2012-12-02 08:00,2012-12-02 08:00,,2012-06-30 00:00,2012-06-30 00:00,,,2011-12-28 08:00,2012-01-03 16:00,,,,,PT_Normal,,,,,0JAYtgc3BUS5pKt1D5C+tA,lshWR38CR9WKmPPoeHu1kw,,,N,0,0,,,2012-06-25 15:13,2012-07-16 15:38,nour,admin
113,148940,5725,23806,6841,1,100,N,N,N,CP_Drtn,TT_Task,DT_FixedDUR2,RV_OK,TK_Complete,4229PHB10,Issue RFQ for hot bends,,,,0,0,0,0,16,0,0,0,,2011-10-09 00:00,2011-10-09 00:00,2012-12-02 08:00,2012-12-02 08:00,,2012-06-30 00:00,2012-06-30 00:00,,,2011-08-15 08:00,2011-08-16 16:00,,,,,PT_Normal,,,,,MYNlRZOcfkqzWAxCxQxrFw,RPisVVpZYky8Ac1mUQPczA,,,N,0,0,,,2012-06-25 15:13,2012-07-16 15:38,nour,admin
114,148941,5725,23806,6842,1,0,N,N,N,CP_Drtn,TT_Task,DT_FixedDUR2,RV_OK,TK_Active,4229PHB100,Fabrication upto R.F.S,,1136,0,400,0,0,0,896,0,0,0,2012-02-09 00:00,2012-04-06 00:00,,2012-12-07 08:00,2013-01-25 16:00,2012-09-05 16:00,2012-07-06 08:00,2012-09-05 16:00,2012-07-06 08:00,2012-09-05 16:00,2012-02-09 08:00,2012-05-30 16:00,,2012-12-07 08:00,2013-01-25 16:00,CS_MSOA,PT_Normal,,,,,FFSQGbFN6kuxLaZ/h6bCoQ,fKTRcaFxTEmgvZfa7vGZeA,,,N,0,0,,,2012-06-25 15:13,2012-07-16 15:38,nour,admin
115,148942,5725,23806,6843,1,0,N,N,N,CP_Drtn,TT_Task,DT_FixedDUR2,RV_OK,TK_NotStart,4229PHB110,Delivery upto site,,1152,1152,240,0,0,0,240,0,0,0,,,,2013-01-26 08:00,2013-02-24 16:00,,2012-09-06 08:00,2012-10-05 16:00,2012-09-06 08:00,2012-10-05 16:00,2012-09-06 08:00,2012-10-05 16:00,,2013-01-26 08:00,2013-02-24 16:00,,PT_Normal,,,,,PVQlzfQMlEiyS/dlhPIojA,JNK95J5kqk2yxXXMkxZF1A,,,N,0,0,,,2012-06-25 15:13,2012-07-16 15:38,nour,admin
116,148943,5725,23806,6841,1,100,N,N,N,CP_Drtn,TT_Task,DT_FixedDUR2,RV_OK,TK_Complete,4229PHB50,commercial evaluation & bid committee for hot bends,,,,0,0,0,0,80,0,0,0,,2011-12-29 00:00,2012-01-24 00:00,2012-12-02 08:00,2012-12-02 08:00,,2012-06-30 00:00,2012-06-30 00:00,,,2012-01-01 08:00,2012-01-12 16:00,,,,,PT_Normal,,,,,P3hSixEww0OrXChwZ1DxMA,hxCKOj5MQkO6l3IH5Tvwyg,,,N,0,0,,,2012-06-25 15:13,2012-07-16 15:38,nour,admin
117,148944,5725,23806,6841,1,100,N,N,N,CP_Drtn,TT_Task,DT_FixedDUR2,RV_OK,TK_Complete,4229PHB70,F.O.C for hot bends,,,,0,0,0,0,24,0,0,0,2012-02-01 00:00,2012-04-01 00:00,2012-04-05 00:00,2012-12-02 08:00,2012-12-02 08:00,,2012-06-30 00:00,2012-06-30 00:00,,,2012-02-01 08:00,2012-02-05 16:00,,,,CS_MSOA,PT_Normal,,,,,QjjvsjgT90WG80VVLrhl1w,Oh5RJQL9XEi3/FRFqbhptw,,,N,0,0,,,2012-06-25 15:13,2012-07-16 15:38,nour,admin
118,148945,5725,23806,6841,1,100,N,N,N,CP_Drtn,TT_Task,DT_FixedDUR2,RV_OK,TK_Complete,4229PHB80,P.O for hot bends,,,,0,0,0,0,40,0,0,0,,2012-04-10 00:00,2012-04-18 00:00,2012-12-02 08:00,2012-12-02 08:00,,2012-06-30 00:00,2012-06-30 00:00,,,2012-03-04 08:00,2012-03-08 16:00,,,,,PT_Normal,,,,,z0tNAvsjFkSmqZqvmSYu/A,eUz5eXVrNUuJpSqvEaoIPw,,,N,0,0,,,2012-06-25 15:13,2012-07-16 15:38,nour,admin
119,148946,5725,23806,6841,1,100,N,N,N,CP_Drtn,TT_LOE,DT_FixedDUR2,RV_OK,TK_Complete,A1200,T.E.R for hot bends,,,,0,0,0,0,207,0,0,0,,2011-10-30 00:00,2011-12-08 00:00,,,,,,,,2011-12-04 08:00,2012-01-08 15:00,,,,,PT_Normal,,,,,mM3Wgu8lxkCVnRgeVoNvDQ,3s1TUShvtEibPzUOH/ko9w,,,N,0,0,,,2012-07-16 15:09,2012-07-16 15:09,admin,admin
120,148947,5725,23807,6841,1,0,N,N,N,CP_Drtn,TT_Task,DT_FixedDUR2,RV_OK,TK_NotStart,4229PFG80,L.C issued by Gupco,,48,0,40,0,0,0,40,0,0,0,,,,2012-07-22 08:00,2012-07-26 16:00,,2012-07-12 08:00,2012-07-18 16:00,2012-07-12 08:00,2012-07-18 16:00,2012-07-12 08:00,2012-07-18 16:00,,2012-07-22 08:00,2012-07-26 16:00,,PT_Normal,,,,,zDkK+uDOnUWQ2F8KN7arYw,hw+Nv+hAEEyyL9o5y71GIw,,,N,0,0,,,2012-07-16 15:09,2012-07-16 15:09,admin,admin
121,148948,5725,23807,6841,1,100,N,N,N,CP_Drtn,TT_Task,DT_FixedDUR2,RV_OK,TK_Complete,4229PFG10,Issue RFQ for Fire & gas detectors,,,,0,0,0,0,16,0,0,0,2012-01-10 00:00,2012-01-10 08:00,2012-01-10 16:00,2012-12-20 08:00,2012-12-20 08:00,,2012-06-30 00:00,2012-06-30 00:00,,,2012-01-10 08:00,2012-01-11 16:00,,,,CS_MSOA,PT_Normal,,,,,nYd/Ja9H+EyDlj0lvkBl2Q,I/u8UMyPMEefpVrn15FpHQ,,,N,0,0,,,2012-06-25 15:13,2012-07-16 15:38,nour,admin
122,148949,5725,23807,6841,1,100,N,N,N,CP_Drtn,TT_LOE,DT_FixedDUR2,RV_OK,TK_Complete,4229PFG20,T.E.R for fire  & Gas detection,,,,0,0,0,0,120,0,0,0,,2012-02-27 00:00,2012-05-03 16:00,,,,,,,,2012-03-20 08:00,2012-04-09 16:00,,,,,PT_Normal,,,,,Z6R81UF9XUWI2IhNakd1sg,YQA1cLVr7kqboY01YoRhgw,,,N,0,0,,,2012-06-25 15:13,2012-07-16 15:38,nour,admin
123,148950,5725,23807,6841,1,100,N,N,N,CP_Drtn,TT_Task,DT_FixedDUR2,RV_OK,TK_Complete,4229PFG40,F.O.C for Fire & gas detectors,,,,0,0,0,0,24,0,0,0,,2012-05-17 00:00,2012-05-27 00:00,2012-12-20 08:00,2012-12-20 08:00,,2012-06-30 00:00,2012-06-30 00:00,,,2012-06-10 08:00,2012-06-12 16:00,,,,,PT_Normal,,,,,X/5NdkPJYEOi1dnL3ub3OA,huEuXtvgm0aYteDpKcBTIA,,,N,0,0,,,2012-06-25 15:13,2012-07-16 15:38,nour,admin
124,148951,5725,23807,6843,1,0,N,N,N,CP_Drtn,TT_Task,DT_FixedDUR2,RV_OK,TK_Active,4229PFG60,Fabrication upto R.F.S,,1392,0,416,0,0,0,672,0,0,0,,2012-06-07 00:00,,2012-12-27 08:00,2013-02-14 16:00,,2012-07-06 08:00,2012-08-26 16:00,2012-07-06 08:00,2012-08-26 16:00,2012-07-15 08:00,2012-10-06 16:00,,2012-12-27 08:00,2013-02-14 16:00,,PT_Normal,,,,,Y5DEXA5Y5Eah1rA0BnYOfA,lrfM1ie8x0u0Y/bHpNUO2Q,,,N,0,0,,,2012-06-25 15:13,2012-07-16 15:38,nour,admin
125,148952,5725,23807,6841,1,0,N,N,N,CP_Drtn,TT_Task,DT_FixedDUR2,RV_OK,TK_NotStart,4229PFG70,P.O for Fire & gas detectors,,48,0,40,0,0,0,40,0,0,0,,,,2012-07-15 08:00,2012-07-19 16:00,,2012-07-05 08:00,2012-07-11 16:00,2012-07-05 08:00,2012-07-11 16:00,2012-07-05 08:00,2012-07-11 16:00,,2012-07-15 08:00,2012-07-19 16:00,,PT_Normal,,,,,js1jv9dgkUWhnQcah8qwoA,xCFTiS4W2U+/+XFLdoJJQA,,,N,0,0,,,2012-07-16 15:09,2012-07-16 15:09,admin,admin
126,148953,5725,23807,6842,1,0,N,N,N,CP_Drtn,TT_Task,DT_FixedDUR2,RV_OK,TK_NotStart,4229PFG90,Fabrication upto R.F.S,,64,0,672,0,0,0,672,0,0,0,,,,2012-07-27 08:00,2012-10-30 16:00,,2012-07-19 08:00,2012-10-22 16:00,2012-07-19 08:00,2012-10-22 16:00,2012-07-19 08:00,2012-10-22 16:00,,2012-07-27 08:00,2012-10-30 16:00,,PT_Normal,,,,,LcaRA2vTVUuAX/V8E3l2kA,lrfM1ie8x0u0Y/bHpNUO2Q,,,N,0,0,,,2012-07-16 15:09,2012-07-16 15:09,admin,admin
127,148954,5725,23807,6843,1,0,N,N,N,CP_Drtn,TT_Task,DT_FixedDUR2,RV_OK,TK_NotStart,4229PFG100,Delivery upto site,,64,1080,360,0,0,0,360,0,0,0,,,,2012-10-31 08:00,2012-12-14 16:00,,2012-10-23 08:00,2012-12-06 16:00,2012-10-23 08:00,2012-12-06 16:00,2012-10-23 08:00,2012-12-06 16:00,,2012-10-31 08:00,2012-12-14 16:00,,PT_Normal,,,,,umSntehaPEG+1skNhXAH8g,AeL1dzhtuEiobz3qEBUY4w,,,N,0,0,,,2012-07-16 15:09,2012-07-16 15:09,admin,admin
128,148955,5725,23827,6841,1,100,N,N,N,CP_Drtn,TT_Task,DT_FixedDUR2,RV_OK,TK_Complete,4229PFG110,Issue RFQ for Life saving equipment,,,,0,0,0,0,16,0,0,0,2012-01-05 00:00,2012-01-05 08:00,2012-01-05 16:00,2014-11-02 16:00,2014-11-02 16:00,,2012-07-05 00:00,2012-07-05 00:00,,,2012-01-05 08:00,2012-01-08 16:00,,,,CS_MSOA,PT_Normal,,,,,ctJhpgWL1k65KLOaYErCYA,UKr6qX7UcEegIWyFsGk/9A,,,N,0,0,,,2012-07-16 15:09,2012-07-16 15:09,admin,admin
129,148956,5725,23827,6842,1,100,N,N,N,CP_Drtn,TT_Task,DT_FixedDUR2,RV_OK,TK_Complete,4229PFG120,Bidding Life saving equipment,,,,0,0,0,0,200,0,0,0,2012-01-09 00:00,2012-01-09 08:00,2012-02-28 00:00,2014-11-02 16:00,2014-11-02 16:00,,2012-07-05 00:00,2012-07-05 00:00,,,2012-01-09 08:00,2012-02-03 16:00,,,,CS_MSOA,PT_Normal,,,,,R8hsoCpX5k2taGQnjd2xlA,z7YUbJQnuUOHHzkwX1ehtw,,,N,0,0,,,2012-07-16 15:09,2012-07-16 15:09,admin,admin
130,148957,5725,23827,6841,1,100,N,N,N,CP_Drtn,TT_Task,DT_FixedDUR2,RV_OK,TK_Complete,4229PFG130,commercial evaluation & bid committee for Life saving equipment,,,,0,0,0,0,80,0,0,0,,2012-05-23 00:00,2012-05-23 00:00,2014-11-02 16:00,2014-11-02 16:00,,2012-07-05 00:00,2012-07-05 00:00,,,2012-06-10 08:00,2012-06-21 16:00,,,,,PT_Normal,,,,,wQHUkS3RY0uFlQeU4OvxEg,PJXdORg+x0OWNVOvlFITxQ,,,N,0,0,,,2012-07-16 15:09,2012-07-16 15:09,admin,admin
131,148958,5725,23827,6841,1,100,N,N,N,CP_Drtn,TT_Task,DT_FixedDUR2,RV_OK,TK_Complete,4229PFG140,F.O.C for Life saving equipment,,,,0,0,0,0,24,0,0,0,,2012-05-23 00:00,2012-05-23 00:00,2014-11-02 16:00,2014-11-02 16:00,,2012-07-05 00:00,2012-07-05 00:00,,,2012-06-26 08:00,2012-06-28 16:00,,,,,PT_Normal,,,,,dOgMTzqzW0m2T+3VRg+mkA,cuvxyESDG0ibNUht1bd3bA,,,N,0,0,,,2012-07-16 15:09,2012-07-16 15:09,admin,admin
132,148959,5725,23827,6841,1,100,N,N,N,CP_Drtn,TT_Task,DT_FixedDUR2,RV_OK,TK_Complete,4229PFG150,P.O for Life saving equipment,,,,0,0,0,0,40,0,0,0,,2012-05-23 00:00,2012-05-23 00:00,2014-11-02 16:00,2014-11-02 16:00,,2012-07-05 00:00,2012-07-05 00:00,,,2012-07-01 08:00,2012-07-05 16:00,,,,,PT_Normal,,,,,wuYRiYdMG0Kkzczjf7RzMA,vV4hpMERQ0OLYMdtF2Z0WA,,,N,0,0,,,2012-07-16 15:09,2012-07-16 15:09,admin,admin
133,148960,5725,23827,6842,1,100,N,N,N,CP_Drtn,TT_Task,DT_FixedDUR2,RV_OK,TK_Complete,4229PFG160,Fabrication upto R.F.S,,,,0,0,0,0,720,0,0,0,,2012-05-23 00:00,2012-05-23 00:00,2014-11-02 16:00,2014-11-02 16:00,,2012-07-05 00:00,2012-07-05 00:00,,,2012-07-13 08:00,2012-10-22 16:00,,,,,PT_Normal,,,,,upbihEnMmkSqj5EIMMs05w,OoxE0JkxKkCu2N33uSQ1Fw,,,N,0,0,,,2012-07-16 15:09,2012-07-16 15:09,admin,admin
134,148961,5725,23827,6843,1,100,N,N,N,CP_Drtn,TT_Task,DT_FixedDUR2,RV_OK,TK_Complete,4229PFG170,Delivery upto site,,,,0,0,0,0,360,0,0,0,,2012-05-23 00:00,2012-05-23 00:00,2014-11-02 16:00,2014-11-02 16:00,,2012-07-05 00:00,2012-07-05 00:00,,,2012-10-23 08:00,2012-12-06 16:00,,,,,PT_Normal,,,,,WfagEa5DakWyuDp8DHvCig,5zvjC/YRZUiSNCXmEx7ZuA,,,N,0,0,,,2012-07-16 15:09,2012-07-16 15:09,admin,admin
135,148962,5725,23827,6841,1,100,N,N,N,CP_Drtn,TT_Task,DT_FixedDUR2,RV_OK,TK_Complete,4229PFG200,L.C issued by Gupco,,,,0,0,0,0,40,0,0,0,,2012-05-23 00:00,2012-05-23 00:00,2014-11-02 16:00,2014-11-02 16:00,,2012-07-05 00:00,2012-07-05 00:00,,,2012-07-08 08:00,2012-07-12 16:00,,,,,PT_Normal,,,,,28knvXmNK0+OAzyvZy8hNQ,aN9tdSzSMESH0+5c2wlgeg,,,N,0,0,,,2012-07-16 15:09,2012-07-16 15:09,admin,admin
136,148963,5725,23828,6841,1,0,N,N,N,CP_Drtn,TT_Task,DT_FixedDUR2,RV_OK,TK_NotStart,4229PCP80,L.C issued by Gupco,,4488,0,40,0,0,0,40,0,0,0,,,,2014-09-14 08:00,2014-09-18 16:00,,2012-07-05 08:00,2012-07-11 16:00,2012-07-05 08:00,2012-07-11 16:00,2012-07-05 08:00,2012-07-11 16:00,,2014-09-14 08:00,2014-09-18 16:00,,PT_Normal,,,,,R2cPGA9Fr0WyC7UIMqiMnw,/xqtBKQ3QEuTmEP+B+vEag,,,N,0,0,,,2012-07-16 15:09,2012-07-16 15:09,admin,admin
137,148964,5725,23828,6841,1,100,N,N,N,CP_Drtn,TT_Task,DT_FixedDUR2,RV_OK,TK_Complete,4229PCP10,Issue RFQ for Cathodic protection,,,,0,0,0,0,16,0,0,0,,2011-10-26 00:00,2011-10-26 00:00,2013-02-11 08:00,2013-02-11 08:00,,2012-06-30 00:00,2012-06-30 00:00,,,2011-10-30 08:00,2011-10-31 16:00,,,,,PT_Normal,,,,,mhdy7IaHp0yNCZSaFBo0mQ,iEmal3hge0uAij6Wk9qVTQ,,,N,0,0,,,2012-06-25 15:13,2012-07-16 15:38,nour,admin
138,148965,5725,23828,6842,1,100,N,N,N,CP_Drtn,TT_Task,DT_FixedDUR2,RV_OK,TK_Complete,4229PCP20,Bidding for Cathodic protection,,,,0,0,0,0,200,0,0,0,,2011-10-27 00:00,2011-11-24 00:00,2013-02-11 08:00,2013-02-11 08:00,,2012-06-30 00:00,2012-06-30 00:00,,,2011-11-17 08:00,2011-12-11 16:00,,,,,PT_Normal,,,,,JxR3XJBvz0mV1Zg1qpvcKw,x88PzjMZV0GiGu49qJdzgw,,,N,0,0,,,2012-06-25 15:13,2012-07-16 15:38,nour,admin
139,148966,5725,23828,6841,1,100,N,N,N,CP_Drtn,TT_Task,DT_FixedDUR2,RV_OK,TK_Complete,4229PCP40,Commercial evaluation & bid committee for Cathodic protection,,,,0,0,0,0,80,0,0,0,,2012-01-16 00:00,2012-01-23 00:00,2013-02-11 08:00,2013-02-11 08:00,,2012-06-30 00:00,2012-06-30 00:00,,,2012-01-09 08:00,2012-01-22 16:00,,,,,PT_Normal,,,,,i4c2hLP1QUaphoAfUADqMQ,ZFrWAGC2TE+1R7WsidTdYQ,,,N,0,0,,,2012-06-25 15:13,2012-07-16 15:38,nour,admin
140,148967,5725,23828,6841,1,100,N,N,N,CP_Drtn,TT_Task,DT_FixedDUR2,RV_OK,TK_Complete,4229PCP60,F.O.C for Cathodic protection,,,,0,0,0,0,24,0,0,0,,2012-02-21 00:00,2012-02-26 00:00,2013-02-11 08:00,2013-02-11 08:00,,2012-06-30 00:00,2012-06-30 00:00,,,2012-03-20 08:00,2012-03-22 16:00,,,,,PT_Normal,,,,,zAhKW1x5lEqRFhgJfVZX7g,plWp9w3MSEaEBD3XTKD6uw,,,N,0,0,,,2012-06-25 15:13,2012-07-16 15:38,nour,admin
141,148968,5725,23828,6841,1,100,N,N,N,CP_Drtn,TT_Task,DT_FixedDUR2,RV_OK,TK_Complete,4229PCP70,P.O for Cathodic protection,,,,0,0,0,0,40,0,0,0,,2012-02-29 00:00,2012-03-01 00:00,2013-02-11 08:00,2013-02-11 08:00,,2012-06-30 00:00,2012-06-30 00:00,,,2012-03-04 08:00,2012-03-08 16:00,,,,,PT_Normal,,,,,RVKabfXwFkOXwgdafWdTOQ,XKuDtF9Y5kyIjE3UFTFzuw,,,N,0,0,,,2012-06-25 15:13,2012-07-16 15:38,nour,admin
142,148969,5725,23828,6842,1,100,N,N,N,CP_Drtn,TT_Task,DT_FixedDUR2,RV_OK,TK_Complete,4229PCP90,Fabrication upto R.F.S,,,,0,0,0,0,560,0,0,0,,2012-02-26 00:00,2012-05-28 00:00,2013-02-11 08:00,2013-02-11 08:00,,2012-06-30 00:00,2012-06-30 00:00,,,2012-03-14 08:00,2012-05-22 16:00,,,,,PT_Normal,,,,,Ozad69aVqkSKihZ0tPNrbQ,erBLKNm/ZUeEO9HJpLgTjg,,,N,0,0,,,2012-06-25 15:13,2012-07-16 15:38,nour,admin
143,148970,5725,23828,6843,1,100,N,N,N,CP_Drtn,TT_Task,DT_FixedDUR2,RV_OK,TK_Complete,4229PCP100,Delivery upto site,,,,0,0,0,0,360,0,0,0,,2012-05-29 00:00,2012-06-19 00:00,2013-02-24 16:00,2013-02-24 16:00,,2012-06-30 00:00,2012-06-30 00:00,,,2012-06-08 08:00,2012-07-22 16:00,,,,,PT_Normal,,,,,VvL70rQyqUWkOs0OkMAutg,PvZx3hz21kCQaaYCBE4F/Q,,,N,0,0,,,2012-06-25 15:13,2012-07-16 15:38,nour,admin
144,148971,5725,23829,6841,1,100,N,N,N,CP_Drtn,TT_Task,DT_FixedDUR2,RV_OK,TK_Complete,4229PFF110,Re-issue RFQ for Fire Fighting,,,,0,0,0,0,8,0,0,0,,2012-03-01 00:00,2012-03-03 00:00,2014-04-17 08:00,2014-04-17 08:00,,2012-07-05 00:00,2012-07-05 00:00,,,2012-04-29 08:00,2012-04-29 16:00,,,,,PT_Normal,,,,,ckIOAic4xES7GEcuIG9TOA,,,,N,0,0,,,2012-07-16 15:09,2012-07-16 15:09,admin,admin
145,148972,5725,23829,6841,1,100,N,N,N,CP_Drtn,TT_Task,DT_FixedDUR2,RV_OK,TK_Complete,4229PFF30,Receive revised commercial offers,,,,0,0,0,0,40,0,0,0,,2012-05-30 00:00,2012-06-07 00:00,2012-09-30 08:00,2012-09-30 08:00,,2012-06-30 00:00,2012-06-30 00:00,,,2012-06-03 08:00,2012-06-07 16:00,,,,,PT_Normal,,,,,TEnIG2WPW0ihigyxS1+bfQ,AYPNiDXaKE6RLh7mqlxUcQ,,,N,0,0,,,2012-06-25 15:13,2012-07-16 15:38,nour,admin
146,148973,5725,23829,6841,1,0,N,N,N,CP_Drtn,TT_Task,DT_FixedDUR2,RV_OK,TK_NotStart,4229PFF80,L.C issued by Gupco,,3640,0,40,0,0,0,40,0,0,0,,,,2014-05-25 08:00,2014-05-29 16:00,,2012-08-12 08:00,2012-08-16 16:00,2012-08-12 08:00,2012-08-16 16:00,2012-08-12 08:00,2012-08-16 16:00,,2014-05-25 08:00,2014-05-29 16:00,,PT_Normal,,,,,IXE0zCmzDEWAGqAjMiHjbQ,8XeEO//CcEKYVr5WUWm1nw,,,N,0,0,,,2012-07-16 15:09,2012-07-16 15:09,admin,admin
147,148974,5725,23829,6841,1,100,N,N,N,CP_Drtn,TT_Task,DT_FixedDUR2,RV_OK,TK_Complete,4229PFF10,Issue RFQ for Fire fighting,,,,0,0,0,0,16,0,0,0,2012-01-09 00:00,2012-01-09 08:00,2012-01-10 16:00,2012-09-30 08:00,2012-09-30 08:00,,2012-06-30 00:00,2012-06-30 00:00,,,2012-01-09 08:00,2012-01-10 16:00,,,,CS_MSOA,PT_Normal,,,,,/tZnk1IwSEWqY9ms1MEHlg,JI5SVA605USWDWBKpsEVTw,,,N,0,0,,,2012-06-25 15:13,2012-07-16 15:38,nour,admin
148,148975,5725,23829,6843,1,0,N,N,N,CP_Drtn,TT_Task,DT_FixedDUR2,RV_OK,TK_NotStart,4229PFF100,Delivery upto site,,5128,648,360,0,0,0,360,0,0,0,,,,2014-09-19 08:00,2014-11-02 16:00,,2012-12-19 08:00,2013-01-30 16:00,2012-12-19 08:00,2013-01-30 16:00,2012-12-19 08:00,2013-01-30 16:00,,2014-09-19 08:00,2014-11-02 16:00,,PT_Normal,,,,,mqYu2M8t+k61P5H8bVkqqg,WLZv2gJavUGvjngHCiSujQ,,,N,0,0,,,2012-07-16 15:09,2012-07-16 15:09,admin,admin
149,148976,5725,23829,6842,1,100,N,N,N,CP_Drtn,TT_Task,DT_FixedDUR2,RV_OK,TK_Complete,4229PFF20,Bidding for Fire fighting,,,,0,0,0,0,160,0,0,0,2012-01-11 00:00,2012-03-04 00:00,2012-04-03 00:00,2012-09-30 08:00,2012-09-30 08:00,,2012-06-30 00:00,2012-06-30 00:00,,,2012-01-11 08:00,2012-01-31 16:00,,,,CS_MSOA,PT_Normal,,,,,Uw3TYjzuKkuE/C+s5ouRVQ,9MnOz/vVdkC9ctNWH2r8qg,,,N,0,0,,,2012-06-25 15:13,2012-07-16 15:38,nour,admin
150,148977,5725,23829,6841,1,0,N,N,N,CP_Drtn,TT_Task,DT_FixedDUR2,RV_OK,TK_Active,4229PFF40,Client approval on bid committee reccomendation,,480,0,16,0,0,0,16,0,0,0,,2012-06-12 00:00,,2012-09-30 08:00,2012-10-01 16:00,,2012-07-01 08:00,2012-07-02 16:00,2012-07-01 08:00,2012-07-02 16:00,2012-07-15 08:00,2012-07-16 16:00,,2012-09-30 08:00,2012-10-01 16:00,,PT_Normal,,,,,/t18jIXucEyzoTl4P/5wSA,okMlSxQPlUu8ymqN/KtiYQ,,,N,0,0,,,2012-06-25 15:13,2012-07-16 15:38,nour,admin
151,148978,5725,23829,6841,1,0,N,N,N,CP_Drtn,TT_Task,DT_FixedDUR2,RV_OK,TK_NotStart,4229PFF60,L.C issued by Gupco,,480,0,40,0,0,0,40,0,0,0,,,,2012-10-14 08:00,2012-10-18 16:00,,2012-07-15 08:00,2012-07-19 16:00,2012-07-15 08:00,2012-07-19 16:00,2012-07-15 08:00,2012-07-19 16:00,,2012-10-14 08:00,2012-10-18 16:00,,PT_Normal,,,,,A+RzX7AhIkGTA8WI6V/kaw,8XeEO//CcEKYVr5WUWm1nw,,,N,0,0,,,2012-06-25 15:13,2012-07-16 15:38,nour,admin
152,148979,5725,23829,6843,1,0,N,N,N,CP_Drtn,TT_Task,DT_FixedDUR2,RV_OK,TK_NotStart,4229PFF70,Delivery upto site,,648,648,360,0,0,0,360,0,0,0,,,,2013-01-11 08:00,2013-02-24 16:00,,2012-10-24 08:00,2012-12-07 16:00,2012-10-24 08:00,2012-12-07 16:00,2012-10-24 08:00,2012-12-07 16:00,,2013-01-11 08:00,2013-02-24 16:00,,PT_Normal,,,,,56yjZH61xkO5jT0SsupFiA,WLZv2gJavUGvjngHCiSujQ,,,N,0,0,,,2012-06-25 15:13,2012-07-16 15:38,nour,admin
153,148980,5725,23829,6842,1,0,N,N,N,CP_Drtn,TT_Task,DT_FixedDUR2,RV_OK,TK_NotStart,4229PFF90,Fabrication upto R.F.S,,5112,0,896,0,0,0,896,0,0,0,,,,2014-05-30 08:00,2014-09-18 16:00,,2012-08-17 08:00,2012-12-18 16:00,2012-08-17 08:00,2012-12-18 16:00,2012-08-17 08:00,2012-12-18 16:00,,2014-05-30 08:00,2014-09-18 16:00,,PT_Normal,,,,,6eqQ9WoUUE+7HMNcX1qeTA,CqIGa1jDK0i2r+exE2hpBg,,,N,0,0,,,2012-07-16 15:09,2012-07-16 15:09,admin,admin
154,148981,5725,23830,6841,1,100,N,N,N,CP_Drtn,TT_Task,DT_FixedDUR2,RV_OK,TK_Complete,4229PTR30,Receive revised commercial offers,,,,0,0,0,0,40,0,0,0,,2011-12-05 00:00,2011-12-11 00:00,2012-08-02 08:00,2012-08-02 08:00,,2012-06-30 00:00,2012-06-30 00:00,,,2012-01-01 08:00,2012-01-05 16:00,,,,,PT_Normal,,,,,oEm5WsFw9EOfmabjjKKoZw,AYPNiDXaKE6RLh7mqlxUcQ,,,N,0,0,,,2012-06-25 15:13,2012-07-16 15:38,nour,admin
155,148982,5725,23830,6841,1,0,N,N,N,CP_Drtn,TT_Task,DT_FixedDUR2,RV_OK,TK_Active,4229PTR80,L.C issued by Gupco,,192,0,8,0,0,0,40,0,0,0,,2012-02-22 00:00,,2012-08-02 08:00,2012-08-02 16:00,,2012-07-01 08:00,2012-07-01 16:00,2012-07-01 08:00,2012-07-01 16:00,2012-03-04 08:00,2012-03-08 16:00,,2012-08-02 08:00,2012-08-02 16:00,,PT_Normal,,,,,gJIRGI/d8UO1AdFGLQYGmA,8XeEO//CcEKYVr5WUWm1nw,,,N,0,0,,,2012-06-25 15:13,2012-07-16 15:38,nour,admin
156,148983,5725,23830,6841,1,100,N,N,N,CP_Drtn,TT_Task,DT_FixedDUR2,RV_OK,TK_Complete,4229PTR10,Issue RFQ for L&R traps,,,,0,0,0,0,16,0,0,0,,2011-08-23 08:00,2011-08-25 00:00,2012-08-02 08:00,2012-08-02 08:00,,2012-06-30 00:00,2012-06-30 00:00,,,2011-08-23 08:00,2011-08-24 16:00,,,,,PT_Normal,,,,,GtQCfxuyB0mfZ+CGnAZmzQ,32IZnXTP7UyV6zFdZX+PkQ,,,N,0,0,,,2012-06-25 15:13,2012-07-16 15:38,nour,admin
157,148984,5725,23830,6842,1,100,N,N,N,CP_Drtn,TT_Task,DT_FixedDUR2,RV_OK,TK_Complete,4229PTR20,Bidding for L&R traps,,,,0,0,0,0,224,0,0,0,,2011-08-26 00:00,2011-09-19 00:00,2012-08-02 08:00,2012-08-02 08:00,,2012-06-30 00:00,2012-06-30 00:00,,,2011-08-25 08:00,2011-09-21 16:00,,,,,PT_Normal,,,,,DVNEEE9yUU+Un/SJnrK2ug,kJ0A+WVz+Eey0qSlfjfY1w,,,N,0,0,,,2012-06-25 15:13,2012-07-16 15:38,nour,admin
158,148985,5725,23830,6841,1,100,N,N,N,CP_Drtn,TT_Task,DT_FixedDUR2,RV_OK,TK_Complete,4229PTR40,commercial evaluation & bid committee for L&R traps,,,,0,0,0,0,80,0,0,0,,2011-12-12 00:00,2011-12-22 00:00,2012-08-02 08:00,2012-08-02 08:00,,2012-06-30 00:00,2012-06-30 00:00,,,2012-01-08 08:00,2012-01-19 16:00,,,,,PT_Normal,,,,,ZgFodo4o/0WVWf5tIhh14Q,4tj9gre8xECDJFXRMB/KMQ,,,N,0,0,,,2012-06-25 15:13,2012-07-16 15:38,nour,admin
159,148986,5725,23830,6841,1,100,N,N,N,CP_Drtn,TT_Task,DT_FixedDUR2,RV_OK,TK_Complete,4229PTR60,F.O.C for L&R traps,,,,0,0,0,0,24,0,0,0,,2012-02-01 00:00,2012-02-08 00:00,2012-08-02 08:00,2012-08-02 08:00,,2012-06-30 00:00,2012-06-30 00:00,,,2012-03-06 08:00,2012-03-08 16:00,,,,,PT_Normal,,,,,FMeIEfA7dkyE5u6danOngA,mY9xW1A1UUOQ/dWkE7HdGw,,,N,0,0,,,2012-06-25 15:13,2012-07-16 15:38,nour,admin
160,148987,5725,23830,6841,1,100,N,N,N,CP_Drtn,TT_Task,DT_FixedDUR2,RV_OK,TK_Complete,4229PTR70,P.O for L&R traps,,,,0,0,0,0,16,0,0,0,,2012-02-20 00:00,2012-02-21 00:00,2012-08-02 08:00,2012-08-02 08:00,,2012-06-30 00:00,2012-06-30 00:00,,,2012-03-04 08:00,2012-03-05 16:00,,,,,PT_Normal,,,,,VR55/dVc8kiNlyzyEN3Mzw,AGbFlgdHtUaygmOdjbChJA,,,N,0,0,,,2012-06-25 15:13,2012-07-16 15:38,nour,admin
161,148988,5725,23830,6842,1,0,N,N,N,CP_Drtn,TT_Task,DT_FixedDUR2,RV_OK,TK_Active,4229PTR90,Fabrication upto R.F.S,,272,0,360,0,0,0,1288,0,0,0,,2012-02-22 00:00,,2012-08-05 08:00,2012-09-30 16:00,2012-08-15 16:00,2012-07-02 08:00,2012-08-15 16:00,2012-07-02 08:00,2012-08-15 16:00,2012-03-05 08:00,2012-08-12 16:00,,2012-08-05 08:00,2012-09-30 16:00,,PT_Normal,,,,,J0jJrwOqAU6l1tN61jNSUg,GVaPG4kl40KJCTAmiH7BtQ,,,N,0,0,,,2012-06-25 15:13,2012-07-16 15:38,nour,admin
162,148989,5725,23830,6843,1,0,N,N,N,CP_Drtn,TT_Task,DT_FixedDUR2,RV_OK,TK_NotStart,4229PTR100,Delivery upto site,,1504,1504,56,0,0,0,56,0,0,0,,,,2013-02-18 08:00,2013-02-24 16:00,,2012-08-16 08:00,2012-08-22 16:00,2012-08-16 08:00,2012-08-22 16:00,2012-08-16 08:00,2012-08-22 16:00,,2013-02-18 08:00,2013-02-24 16:00,,PT_Normal,,,,,cPiuIgJs6kuESaJAkfRkAQ,5ZdU8uO76kyqCb4bfEYLKw,,,N,0,0,,,2012-06-25 15:13,2012-07-16 15:38,nour,admin
163,148990,5725,23831,6841,1,0,N,N,N,CP_Drtn,TT_Task,DT_FixedDUR2,RV_OK,TK_NotStart,4229PRS40,commercial evaluation & bid committee for Radar system,,160,0,80,0,0,0,80,0,0,0,,,,2012-09-12 08:00,2012-09-25 16:00,,2012-08-08 08:00,2012-08-28 16:00,2012-08-08 08:00,2012-08-28 16:00,2012-08-08 08:00,2012-08-28 16:00,,2012-09-12 08:00,2012-09-25 16:00,,PT_Normal,,,,,pz4/CbVgqEOPQRcEYiV0fA,MPqcdsw9S6W2dXlu07dRzw,,,N,0,0,,,2012-06-25 15:13,2012-07-16 15:38,nour,admin
164,148991,5725,23831,6841,1,0,N,N,N,CP_Drtn,TT_Task,DT_FixedDUR2,RV_OK,TK_NotStart,4229PRS60,F.O.C for  Radar system,,160,0,24,0,0,0,24,0,0,0,,,,2012-09-30 08:00,2012-10-02 16:00,,2012-09-02 08:00,2012-09-04 16:00,2012-09-02 08:00,2012-09-04 16:00,2012-09-02 08:00,2012-09-04 16:00,,2012-09-30 08:00,2012-10-02 16:00,,PT_Normal,,,,,xNFqElitpE+mzIdnxc4N7g,8bhvNgcsRzunguxdp4ysfg,,,N,0,0,,,2012-06-25 15:13,2012-07-16 15:38,nour,admin
165,148992,5725,23831,6841,1,0,N,N,N,CP_Drtn,TT_Task,DT_FixedDUR2,RV_OK,TK_NotStart,4229PRS70,P.O for Radar system,,160,0,16,0,0,0,16,0,0,0,,,,2012-10-10 08:00,2012-10-11 16:00,,2012-09-12 08:00,2012-09-13 16:00,2012-09-12 08:00,2012-09-13 16:00,2012-09-12 08:00,2012-09-13 16:00,,2012-10-10 08:00,2012-10-11 16:00,,PT_Normal,,,,,t55uEoHcpkysc6ydUvuh4w,iGsAl0jiSTe9wP87ple5+A,,,N,0,0,,,2012-06-25 15:13,2012-07-16 15:38,nour,admin
166,148993,5725,23831,6842,1,0,N,N,N,CP_Drtn,TT_Task,DT_FixedDUR2,RV_OK,TK_NotStart,4229PRS90,Fabrication upto R.F.S,,296,0,720,0,0,0,720,0,0,0,,,,2012-10-28 08:00,2013-01-25 16:00,,2012-09-21 08:00,2012-12-19 16:00,2012-09-21 08:00,2012-12-19 16:00,2012-09-21 08:00,2012-12-19 16:00,,2012-10-28 08:00,2013-01-25 16:00,,PT_Normal,,,,,zrp7wx/0OEypTTG/8HADsQ,puuO8vGhRUyOmMA5nP1O+g,,,N,0,0,,,2012-06-25 15:13,2012-07-16 15:38,nour,admin
167,148994,5725,23831,6841,1,0,N,N,N,CP_Drtn,TT_LOE,DT_FixedDUR2,RV_OK,TK_NotStart,A1180,T.E.R  for Radar System,,4568,0,184,0,0,0,184,0,0,0,,,,2012-05-23 08:00,2014-10-28 16:00,,2012-07-05 08:00,2012-08-06 16:00,2012-07-05 08:00,2012-08-06 16:00,2012-07-05 08:00,2012-08-06 16:00,,2012-05-23 08:00,2014-10-28 16:00,,PT_Normal,,,,,e/qybZxvT0entiEEGY+EoQ,wSpvN7TbW0C3y0sKPLokBw,,,N,0,0,,,2012-07-16 15:09,2012-07-16 15:09,admin,admin
168,148995,5725,23831,6843,1,0,N,N,N,CP_Drtn,TT_Task,DT_FixedDUR2,RV_OK,TK_NotStart,4229PRS100,Delivery upto site,,312,0,240,0,0,0,240,0,0,0,,,,2013-01-26 08:00,2013-02-24 16:00,,2012-12-20 08:00,2013-01-16 16:00,2012-12-20 08:00,2013-01-16 16:00,2012-12-20 08:00,2013-01-16 16:00,,2013-01-26 08:00,2013-02-24 16:00,,PT_Normal,,,,,rEzhxCxjQ06dg7OULC0zhQ,g8Q0jtgbT/+uddB0tjRcbQ,,,N,0,0,,,2012-06-25 15:13,2012-07-16 15:38,nour,admin
169,148996,5725,23831,6841,1,0,N,N,N,CP_Drtn,TT_Task,DT_FixedDUR2,RV_OK,TK_NotStart,4229PRS30,Receive revised commercial offers,,160,0,24,0,0,0,24,0,0,0,,,,2012-09-09 08:00,2012-09-11 16:00,,2012-08-05 08:00,2012-08-07 16:00,2012-08-05 08:00,2012-08-07 16:00,2012-08-05 08:00,2012-08-07 16:00,,2012-09-09 08:00,2012-09-11 16:00,,PT_Normal,,,,,Xat90g1QcUKGXHMP6we2Vg,B+Zuduv2SsyLxT8xwR8UPQ,,,N,0,0,,,2012-06-25 15:13,2012-07-16 15:38,nour,admin
170,148997,5725,23831,6841,1,0,N,N,N,CP_Drtn,TT_Task,DT_FixedDUR2,RV_OK,TK_NotStart,4229PRS50,Client approval on bid committee reccomendation,,160,0,16,0,0,0,16,0,0,0,,,,2012-09-26 08:00,2012-09-27 16:00,,2012-08-29 08:00,2012-08-30 16:00,2012-08-29 08:00,2012-08-30 16:00,2012-08-29 08:00,2012-08-30 16:00,,2012-09-26 08:00,2012-09-27 16:00,,PT_Normal,,,,,EmvkHcapSkydzywjmCj0rQ,zT/22/TBQsCQFBhN3YnEyg,,,N,0,0,,,2012-06-25 15:13,2012-07-16 15:38,nour,admin
171,148998,5725,23831,6841,1,0,N,N,N,CP_Drtn,TT_Task,DT_FixedDUR2,RV_OK,TK_NotStart,4229PRS80,L.C issued by Gupco,,160,0,40,0,0,0,40,0,0,0,,,,2012-10-14 08:00,2012-10-18 16:00,,2012-09-16 08:00,2012-09-20 16:00,2012-09-16 08:00,2012-09-20 16:00,2012-09-16 08:00,2012-09-20 16:00,,2012-10-14 08:00,2012-10-18 16:00,,PT_Normal,,,,,rbO/WTh7PE61iE9627GgUw,cOseZnNCQ9uilVGDGxsV7A,,,N,0,0,,,2012-06-25 15:13,2012-07-16 15:38,nour,admin
172,148999,5725,23831,6841,1,100,N,N,N,CP_Drtn,TT_Task,DT_FixedDUR2,RV_OK,TK_Complete,4229PRS10,Issue RFQ for Radar system,,,,0,0,0,0,16,0,0,0,,2011-11-30 00:00,2011-11-30 00:00,2012-07-02 08:00,2012-07-02 08:00,,2012-06-30 00:00,2012-06-30 00:00,,,2011-12-04 08:00,2011-12-05 16:00,,,,,PT_Normal,,,,,qAZcHic1wkOvjZF8FeksCQ,yASt0/SqSpucA1CBFijq/Q,,,N,0,0,,,2012-06-25 15:13,2012-07-16 15:38,nour,admin
173,149000,5725,23831,6842,1,0,N,N,N,CP_Drtn,TT_Task,DT_FixedDUR2,RV_OK,TK_Active,4229PRS20,Bidding for Radar system,,16,0,8,0,0,0,120,0,0,0,,2011-12-01 00:00,,2012-07-02 08:00,2012-07-02 16:00,2012-06-30 16:00,2012-06-30 08:00,2012-06-30 16:00,2012-06-30 08:00,2012-06-30 16:00,2011-12-06 08:00,2011-12-20 16:00,,2012-07-02 08:00,2012-07-02 16:00,,PT_Normal,,,,,tsI8XvZ1FUeY1l6+Y2k62Q,rv6U+xZER1a1xRmaRFaz6Q,,,N,0,0,,,2012-06-25 15:13,2012-07-16 15:38,nour,admin
174,149001,5725,23832,6842,1,0,N,N,N,CP_Drtn,TT_Task,DT_FixedDUR2,RV_OK,TK_Active,4229PMP90,Fabrication upto R.F.S,,288,0,832,0,0,0,1888,0,0,0,,2012-02-22 00:00,,2012-08-05 08:00,2012-11-28 16:00,2012-10-23 16:00,2012-06-30 08:00,2012-10-23 16:00,2012-06-30 08:00,2012-10-23 16:00,2012-03-09 08:00,2012-11-11 16:00,,2012-08-05 08:00,2012-11-28 16:00,,PT_Normal,,,,,N8jgRmD5sU+SsMguG6gBvA,7UQ9XmTabEqxyA7/76n9MA,,,N,0,0,,,2012-06-25 15:13,2012-07-16 15:38,nour,admin
175,149002,5725,23832,6842,1,0,N,N,N,CP_Drtn,TT_Task,DT_FixedDUR2,RV_OK,TK_NotStart,4229PMP100,Delivery upto site,,752,440,240,0,0,0,240,0,0,0,,,,2013-01-26 08:00,2013-02-24 16:00,,2012-10-24 08:00,2012-11-22 16:00,2012-10-24 08:00,2012-11-22 16:00,2012-10-24 08:00,2012-11-22 16:00,,2013-01-26 08:00,2013-02-24 16:00,,PT_Normal,,,,,LeDyEw2tf0au8ulaStX8/A,Ed1rw6pVGkqfXjRfFT7JpQ,,,N,0,0,,,2012-06-25 15:13,2012-07-16 15:38,nour,admin
176,149003,5725,23832,6841,1,100,N,N,N,CP_Drtn,TT_Task,DT_FixedDUR2,RV_OK,TK_Complete,4229PMP30,Receive revised commercial offers,,,,0,0,0,0,32,0,0,0,,2011-12-22 08:00,2011-12-25 00:00,2012-08-05 08:00,2012-08-05 08:00,,2012-06-30 00:00,2012-06-30 00:00,,,2011-12-22 08:00,2011-12-27 16:00,,,,,PT_Normal,,,,,5JAJ1JgSpUy5IUaxwR9tRA,rsbY6IPE9Ey3ZU3ZNeLLVg,,,N,0,0,,,2012-06-25 15:13,2012-07-16 15:38,nour,admin
177,149004,5725,23832,6841,1,100,N,N,N,CP_Drtn,TT_Task,DT_FixedDUR2,RV_OK,TK_Complete,4229PMP50,Client approval on bid committee reccomendation,,,,0,0,0,0,16,0,0,0,,2011-12-29 00:00,2012-01-31 16:00,2012-08-05 08:00,2012-08-05 08:00,,2012-06-30 00:00,2012-06-30 00:00,,,2012-01-29 08:00,2012-01-30 16:00,,,,,PT_Normal,,,,,DyUzuMFPAkOin/Df5v/ypw,iKP7vyvUVkGYjFWGXsYtWw,,,N,0,0,,,2012-06-25 15:13,2012-07-16 15:38,nour,admin
178,149005,5725,23832,6841,1,0,N,N,N,CP_Drtn,TT_Task,DT_FixedDUR2,RV_OK,TK_NotStart,4229PMP80,L.C issued by Gupco,,1248,1248,40,0,0,0,40,0,0,0,,,,2013-02-18 08:00,2013-02-24 16:00,,2012-07-01 08:00,2012-07-05 16:00,2012-07-01 08:00,2012-07-05 16:00,2012-07-01 08:00,2012-07-05 16:00,,2013-02-18 08:00,2013-02-24 16:00,,PT_Normal,,,,,L7Y64s5MF0Cuv1iWJ3/szQ,/xqtBKQ3QEuTmEP+B+vEag,,,N,0,0,,,2012-06-25 15:13,2012-07-16 15:38,nour,admin
179,149006,5725,23832,6841,1,100,N,N,N,CP_Drtn,TT_Task,DT_FixedDUR2,RV_OK,TK_Complete,4229PMP10,Issue RFQ for MPFM,,,,0,0,0,0,16,0,0,0,,2011-10-09 00:00,2011-10-09 00:00,2012-08-05 08:00,2012-08-05 08:00,,2012-06-30 00:00,2012-06-30 00:00,,,2011-08-15 08:00,2011-08-16 16:00,,,,,PT_Normal,,,,,c3UFabhz/U6TZynTLGqW4Q,PapX/E/5VEedYgMn9pW1WA,,,N,0,0,,,2012-06-25 15:13,2012-07-16 15:38,nour,admin
180,149007,5725,23832,6842,1,100,N,N,N,CP_Drtn,TT_Task,DT_FixedDUR2,RV_OK,TK_Complete,4229PMP20,Bidding for MPFM,,,,0,0,0,0,240,0,0,0,,2011-10-10 00:00,2011-11-13 00:00,2012-08-05 08:00,2012-08-05 08:00,,2012-06-30 00:00,2012-06-30 00:00,,,2011-08-17 08:00,2011-09-15 16:00,,,,,PT_Normal,,,,,t1GR/nCxFkuO0AKCcNOdRw,WAPraHdgpEiuGrgnPTRw+A,,,N,0,0,,,2012-06-25 15:13,2012-07-16 15:38,nour,admin
181,149008,5725,23832,6841,1,100,N,N,N,CP_Drtn,TT_Task,DT_FixedDUR2,RV_OK,TK_Complete,4229PMP60,F.O.C for MPFM,,,,0,0,0,0,24,0,0,0,,2012-02-01 00:00,2012-02-08 16:00,2012-08-05 08:00,2012-08-05 08:00,,2012-06-30 00:00,2012-06-30 00:00,,,2012-01-31 08:00,2012-02-02 16:00,,,,,PT_Normal,,,,,MJSo3XdauUu/araZSQzTIQ,4AXOah8HAEeGpjijEBPUrg,,,N,0,0,,,2012-06-25 15:13,2012-07-16 15:38,nour,admin
182,149009,5725,23832,6841,1,100,N,N,N,CP_Drtn,TT_Task,DT_FixedDUR2,RV_OK,TK_Complete,4229PMP70,P.O for MPFM,,,,0,0,0,0,16,0,0,0,,2012-02-20 00:00,2012-02-21 00:00,2012-08-05 08:00,2012-08-05 08:00,,2012-06-30 00:00,2012-06-30 00:00,,,2012-03-04 08:00,2012-03-05 16:00,,,,,PT_Normal,,,,,sV2mTihHJkKY+T2UwLzI/w,AvajsHLxjEGyyQn6kYuXCQ,,,N,0,0,,,2012-06-25 15:13,2012-07-16 15:38,nour,admin
183,149010,5725,23832,6841,1,100,N,N,N,CP_Drtn,TT_Task,DT_FixedDUR2,RV_OK,TK_Complete,4229PMP40,commercial evaluation & bid committee for MPFM,,,,0,0,0,0,80,0,0,0,,2011-12-27 00:00,2011-12-28 00:00,2012-08-05 08:00,2012-08-05 08:00,,2012-06-30 00:00,2012-06-30 00:00,,,2012-01-01 08:00,2012-01-12 16:00,,,,,PT_Normal,,,,,6lBImULJ10ahjbtLsE7BsQ,e/V43NRVMUS133iTAw1J2Q,,,N,0,0,,,2012-06-25 15:13,2012-07-16 15:38,nour,admin
184,149011,5725,23814,6841,1,100,N,N,N,CP_Drtn,TT_Task,DT_FixedDUR2,RV_OK,TK_Complete,4229PSV30,Receive revised commercial offers,,,,0,0,0,0,40,0,0,0,,2012-02-01 08:00,2012-02-27 00:00,2012-07-29 08:00,2012-07-29 08:00,,2012-06-30 00:00,2012-06-30 00:00,,,2012-02-01 08:00,2012-02-07 16:00,,,,,PT_Normal,,,,,lN0bQt+yBEGYxB1AMKUzAw,AYPNiDXaKE6RLh7mqlxUcQ,,,N,0,0,,,2012-06-25 15:13,2012-07-16 15:38,nour,admin
185,149012,5725,23814,6841,1,0,N,N,N,CP_Drtn,TT_Task,DT_FixedDUR2,RV_OK,TK_NotStart,4229PSV80,L.C issued by Gupco,,160,0,40,0,0,0,40,0,0,0,,,,2012-07-29 08:00,2012-08-02 16:00,,2012-07-01 08:00,2012-07-05 16:00,2012-07-01 08:00,2012-07-05 16:00,2012-07-01 08:00,2012-07-05 16:00,,2012-07-29 08:00,2012-08-02 16:00,,PT_Normal,,,,,AVfI59L8UkimYF1U2BGH9Q,8XeEO//CcEKYVr5WUWm1nw,,,N,0,0,,,2012-06-25 15:13,2012-07-16 15:38,nour,admin
186,149013,5725,23814,6842,1,0,N,N,N,CP_Drtn,TT_Task,DT_FixedDUR2,RV_OK,TK_Active,4229PSV90,Fabrication upto R.F.S,,240,0,448,0,0,0,1176,0,0,0,,2012-04-11 00:00,,2012-08-05 08:00,2012-10-11 16:00,2012-09-11 16:00,2012-07-06 08:00,2012-09-11 16:00,2012-07-06 08:00,2012-09-11 16:00,2012-04-06 08:00,2012-09-11 16:00,,2012-08-05 08:00,2012-10-11 16:00,,PT_Normal,,,,,jbUxCJZMtU6AQTgwIzA0wg,erBLKNm/ZUeEO9HJpLgTjg,,,N,0,0,,,2012-06-25 15:13,2012-07-16 15:38,nour,admin
187,149014,5725,23814,6843,1,0,N,N,N,CP_Drtn,TT_Task,DT_FixedDUR2,RV_OK,TK_NotStart,4229PSV100,Delivery upto site,,1232,920,112,0,0,0,112,0,0,0,,,,2013-02-11 08:00,2013-02-24 16:00,,2012-09-12 08:00,2012-09-25 16:00,2012-09-12 08:00,2012-09-25 16:00,2012-09-12 08:00,2012-09-25 16:00,,2013-02-11 08:00,2013-02-24 16:00,,PT_Normal,,,,,jqm6EgSzt0S8CJXSEwLWig,PvZx3hz21kCQaaYCBE4F/Q,,,N,0,0,,,2012-06-25 15:13,2012-07-16 15:38,nour,admin
188,149015,5725,23814,6841,1,100,N,N,N,CP_Drtn,TT_Task,DT_FixedDUR2,RV_OK,TK_Complete,4229PSV10,Issue RFQ for PSV,,,,0,0,0,0,16,0,0,0,,2011-10-19 00:00,2011-10-20 00:00,2012-07-29 08:00,2012-07-29 08:00,,2012-06-30 00:00,2012-06-30 00:00,,,2011-10-16 08:00,2011-10-17 16:00,,,,,PT_Normal,,,,,lfj0nru0LkuX8nEdgslu5A,iEmal3hge0uAij6Wk9qVTQ,,,N,0,0,,,2012-06-25 15:13,2012-07-16 15:38,nour,admin
189,149016,5725,23814,6842,1,100,N,N,N,CP_Drtn,TT_Task,DT_FixedDUR2,RV_OK,TK_Complete,4229PSV20,Bidding for PSV,,,,0,0,0,0,240,0,0,0,,2011-10-21 00:00,2011-11-16 00:00,2012-07-29 08:00,2012-07-29 08:00,,2012-06-30 00:00,2012-06-30 00:00,,,2011-10-18 08:00,2011-11-16 16:00,,,,,PT_Normal,,,,,9K16fB++OEeRO64zphiwhQ,x88PzjMZV0GiGu49qJdzgw,,,N,0,0,,,2012-06-25 15:13,2012-07-16 15:38,nour,admin
190,149017,5725,23814,6841,1,100,N,N,N,CP_Drtn,TT_Task,DT_FixedDUR2,RV_OK,TK_Complete,4229PSV40,commercial evaluation & bid committee for PSV,,,,0,0,0,0,80,0,0,0,,2012-02-28 00:00,2012-03-06 00:00,2012-07-29 08:00,2012-07-29 08:00,,2012-06-30 00:00,2012-06-30 00:00,,,2012-03-04 08:00,2012-03-15 16:00,,,,,PT_Normal,,,,,qkAah347eUqO+j6/1WoR+A,ZFrWAGC2TE+1R7WsidTdYQ,,,N,0,0,,,2012-06-25 15:13,2012-07-16 15:38,nour,admin
191,149018,5725,23814,6841,1,100,N,N,N,CP_Drtn,TT_Task,DT_FixedDUR2,RV_OK,TK_Complete,4229PSV60,F.O.C for PSV,,,,0,0,0,0,24,0,0,0,,2012-04-02 00:00,2012-04-03 00:00,2012-07-29 08:00,2012-07-29 08:00,,2012-06-30 00:00,2012-06-30 00:00,,,2012-04-03 08:00,2012-04-05 16:00,,,,,PT_Normal,,,,,Zih/HJts9U2oXWrENitCQA,plWp9w3MSEaEBD3XTKD6uw,,,N,0,0,,,2012-06-25 15:13,2012-07-16 15:38,nour,admin
192,149019,5725,23814,6841,1,100,N,N,N,CP_Drtn,TT_Task,DT_FixedDUR2,RV_OK,TK_Complete,4229PSV70,P.O for PSV,,,,0,0,0,0,40,0,0,0,,2012-04-10 08:00,2012-04-11 00:00,2012-07-29 08:00,2012-07-29 08:00,,2012-06-30 00:00,2012-06-30 00:00,,,2012-04-10 08:00,2012-04-16 16:00,,,,,PT_Normal,,,,,VfmNkw/X4UeA9D0hl93KHg,XKuDtF9Y5kyIjE3UFTFzuw,,,N,0,0,,,2012-06-25 15:13,2012-07-16 15:38,nour,admin
193,149020,5725,23815,6842,1,0,N,N,N,CP_Drtn,TT_Task,DT_FixedDUR2,RV_OK,TK_Active,4229POV90,Fabrication upto R.F.S,,240,0,976,0,0,0,1448,0,0,0,,2012-04-30 00:00,,2012-08-05 08:00,2012-12-16 16:00,2012-11-16 16:00,2012-07-06 08:00,2012-11-16 16:00,2012-07-06 08:00,2012-11-16 16:00,2012-05-08 08:00,2012-11-16 16:00,,2012-08-05 08:00,2012-12-16 16:00,,PT_Normal,,,,,AWkQEbF+m0et2BwJtHmpvw,7UQ9XmTabEqxyA7/76n9MA,,,N,0,0,,,2012-06-25 15:13,2012-07-16 15:38,nour,admin
194,149021,5725,23815,6842,1,0,N,N,N,CP_Drtn,TT_Task,DT_FixedDUR2,RV_OK,TK_NotStart,4229POV100,Delivery upto site,,560,248,240,0,0,0,240,0,0,0,,,,2013-01-26 08:00,2013-02-24 16:00,,2012-11-17 08:00,2012-12-16 16:00,2012-11-17 08:00,2012-12-16 16:00,2012-11-17 08:00,2012-12-16 16:00,,2013-01-26 08:00,2013-02-24 16:00,,PT_Normal,,,,,XGl+RiRsxEi7emqlmeZIMA,Ed1rw6pVGkqfXjRfFT7JpQ,,,N,0,0,,,2012-06-25 15:13,2012-07-16 15:38,nour,admin
195,149022,5725,23815,6841,1,100,N,N,N,CP_Drtn,TT_Task,DT_FixedDUR2,RV_OK,TK_Complete,4229POV30,Receive revised commercial offers,,,,0,0,0,0,40,0,0,0,,2012-02-02 00:00,2012-02-16 00:00,2013-02-24 16:00,2013-02-24 16:00,,2012-06-30 00:00,2012-06-30 00:00,,,2012-03-08 08:00,2012-03-14 16:00,,,,,PT_Normal,,,,,+8unK1TwU0K90qRMb9BS7g,AYPNiDXaKE6RLh7mqlxUcQ,,,N,0,0,,,2012-06-25 15:13,2012-07-16 15:38,nour,admin
196,149023,5725,23815,6841,1,0,N,N,N,CP_Drtn,TT_Task,DT_FixedDUR2,RV_OK,TK_NotStart,4229POV80,L.C issued by Gupco,,160,0,40,0,0,0,40,0,0,0,,,,2012-07-29 08:00,2012-08-02 16:00,,2012-07-01 08:00,2012-07-05 16:00,2012-07-01 08:00,2012-07-05 16:00,2012-07-01 08:00,2012-07-05 16:00,,2012-07-29 08:00,2012-08-02 16:00,,PT_Normal,,,,,14Rf2oDm70OH0LZUNpMDVg,8XeEO//CcEKYVr5WUWm1nw,,,N,0,0,,,2012-06-25 15:13,2012-07-16 15:38,nour,admin
197,149024,5725,23815,6841,1,100,N,N,N,CP_Drtn,TT_Task,DT_FixedDUR2,RV_OK,TK_Complete,4229POV10,Issue RFQ for SDV,,,,0,0,0,0,16,0,0,0,,2011-10-27 00:00,2011-10-27 00:00,2013-02-24 16:00,2013-02-24 16:00,,2012-06-30 00:00,2012-06-30 00:00,,,2011-10-20 08:00,2011-10-23 16:00,,,,,PT_Normal,,,,,auuP9BzJQk6/+E7mOdW4Gw,iEmal3hge0uAij6Wk9qVTQ,,,N,0,0,,,2012-06-25 15:13,2012-07-16 15:38,nour,admin
198,149025,5725,23815,6842,1,100,N,N,N,CP_Drtn,TT_Task,DT_FixedDUR2,RV_OK,TK_Complete,4229POV20,Bidding for SDV,,,,0,0,0,0,240,0,0,0,,2011-10-28 00:00,2011-11-27 00:00,2013-02-24 16:00,2013-02-24 16:00,,2012-06-30 00:00,2012-06-30 00:00,,,2011-11-01 08:00,2011-11-30 16:00,,,,,PT_Normal,,,,,/cSDHsz4gEK3euechRXL9Q,x88PzjMZV0GiGu49qJdzgw,,,N,0,0,,,2012-06-25 15:13,2012-07-16 15:38,nour,admin
199,149026,5725,23815,6841,1,100,N,N,N,CP_Drtn,TT_Task,DT_FixedDUR2,RV_OK,TK_Complete,4229POV40,Commercial evaluation & bid committee for SDV,,,,0,0,0,0,80,0,0,0,,2012-02-16 00:00,2012-02-19 00:00,2012-07-29 08:00,2012-07-29 08:00,,2012-06-30 00:00,2012-06-30 00:00,,,2012-03-15 08:00,2012-03-28 16:00,,,,,PT_Normal,,,,,3UWSfs/22kiV6R5Bjq+Xrw,ZFrWAGC2TE+1R7WsidTdYQ,,,N,0,0,,,2012-06-25 15:13,2012-07-16 15:38,nour,admin
200,149027,5725,23815,6841,1,100,N,N,N,CP_Drtn,TT_Task,DT_FixedDUR2,RV_OK,TK_Complete,4229POV60,F.O.C for SDV,,,,0,0,0,0,16,0,0,0,,2012-03-29 00:00,2012-04-22 00:00,2012-07-29 08:00,2012-07-29 08:00,,2012-06-30 00:00,2012-06-30 00:00,,,2012-04-01 08:00,2012-04-02 16:00,,,,,PT_Normal,,,,,sXqBnkB3OUSMjQIVsJjCoQ,plWp9w3MSEaEBD3XTKD6uw,,,N,0,0,,,2012-06-25 15:13,2012-07-16 15:38,nour,admin
201,149028,5725,23815,6841,1,100,N,N,N,CP_Drtn,TT_Task,DT_FixedDUR2,RV_OK,TK_Complete,4229POV70,P.O for SDV,,,,0,0,0,0,16,0,0,0,,2012-04-29 00:00,2012-04-29 00:00,2012-07-29 08:00,2012-07-29 08:00,,2012-06-30 00:00,2012-06-30 00:00,,,2012-04-29 08:00,2012-04-30 16:00,,,,,PT_Normal,,,,,tMk+tKqTB0K9dZwXnB8WtQ,XKuDtF9Y5kyIjE3UFTFzuw,,,N,0,0,,,2012-06-25 15:13,2012-07-16 15:38,nour,admin
202,149029,5725,23816,6842,1,100,N,N,N,CP_Drtn,TT_Task,DT_FixedDUR2,RV_OK,TK_Complete,4229PPB20,Bidding for Piping bulk,,,,0,0,0,0,112,0,0,0,,2011-11-25 00:00,2011-12-20 00:00,2012-12-09 08:00,2012-12-09 08:00,,2012-06-30 00:00,2012-06-30 00:00,,,2011-12-06 08:00,2011-12-19 16:00,,,,,PT_Normal,,,,,VVJrNwP5vk25MrWH/3yU1g,x88PzjMZV0GiGu49qJdzgw,,,N,0,0,,,2012-06-25 15:13,2012-07-16 15:38,nour,admin
203,149030,5725,23816,6841,1,100,N,N,N,CP_Drtn,TT_Task,DT_FixedDUR2,RV_OK,TK_Complete,4229PPB40,commercial evaluation & bid committee for Piping bulk,,,,0,0,0,0,96,0,0,0,,2012-02-08 00:00,2012-02-23 00:00,2012-12-09 08:00,2012-12-09 08:00,,2012-06-30 00:00,2012-06-30 00:00,,,2012-03-11 08:00,2012-03-26 16:00,,,,,PT_Normal,,,,,Z7vTIlyyok6wV5q2gxX0Sg,ZFrWAGC2TE+1R7WsidTdYQ,,,N,0,0,,,2012-06-25 15:13,2012-07-16 15:38,nour,admin
204,149031,5725,23816,6841,1,100,N,N,N,CP_Drtn,TT_Task,DT_FixedDUR2,RV_OK,TK_Complete,4229PPB60,F.O.C for Piping bulk,,,,0,0,0,0,24,0,0,0,,2012-03-01 00:00,2012-03-18 00:00,2012-12-09 08:00,2012-12-09 08:00,,2012-06-30 00:00,2012-06-30 00:00,,,2012-04-03 08:00,2012-04-05 16:00,,,,,PT_Normal,,,,,f5PkyaxE/kePnsOie6/hEg,plWp9w3MSEaEBD3XTKD6uw,,,N,0,0,,,2012-06-25 15:13,2012-07-16 15:38,nour,admin
205,149032,5725,23816,6841,1,100,N,N,N,CP_Drtn,TT_Task,DT_FixedDUR2,RV_OK,TK_Complete,4229PPB70,P.O for Piping bulk,,,,0,0,0,0,16,0,0,0,,2012-03-28 00:00,2012-03-29 00:00,2012-12-09 08:00,2012-12-09 08:00,,2012-06-30 00:00,2012-06-30 00:00,,,2012-04-01 08:00,2012-04-02 16:00,,,,,PT_Normal,,,,,HSNZQe9SZEuUeRCvfzoVJw,XKuDtF9Y5kyIjE3UFTFzuw,,,N,0,0,,,2012-06-25 15:13,2012-07-16 15:38,nour,admin
206,149033,5725,23816,6841,1,100,N,N,N,CP_Drtn,TT_Task,DT_FixedDUR2,RV_OK,TK_Complete,4229PPB30,Receive revised commercial offers,,,,0,0,0,0,40,0,0,0,,2012-01-25 00:00,2012-02-07 00:00,2012-12-09 08:00,2012-12-09 08:00,,2012-06-30 00:00,2012-06-30 00:00,,,2012-01-26 08:00,2012-02-01 16:00,,,,,PT_Normal,,,,,iWDMCn1/3Uu0kMOTiiStfQ,AYPNiDXaKE6RLh7mqlxUcQ,,,N,0,0,,,2012-06-25 15:13,2012-07-16 15:38,nour,admin
207,149034,5725,23816,6842,1,0,N,N,N,CP_Drtn,TT_Task,DT_FixedDUR2,RV_OK,TK_NotStart,4229PPB110,Fabrication upto R.F.S for minimal piping balance,,240,0,960,0,0,0,960,0,0,0,,,,2012-10-14 08:00,2013-02-10 16:00,,2012-09-14 08:00,2013-01-11 16:00,2012-09-14 08:00,2013-01-11 16:00,2012-09-14 08:00,2013-01-11 16:00,,2012-10-14 08:00,2013-02-10 16:00,,PT_Normal,,,,,Xvqe0SEcyUSjMjVh8n5ESQ,,,,N,0,0,,,2012-06-25 15:13,2012-07-16 15:38,nour,admin
208,149035,5725,23816,6843,1,0,N,N,N,CP_Drtn,TT_Task,DT_FixedDUR2,RV_OK,TK_NotStart,4229PPB120,Delivery upto site (2nd Batch) for minimal piping balance,,240,240,112,0,0,0,112,0,0,0,,,,2013-02-11 08:00,2013-02-24 16:00,,2013-01-12 08:00,2013-01-25 16:00,2013-01-12 08:00,2013-01-25 16:00,2013-01-12 08:00,2013-01-25 16:00,,2013-02-11 08:00,2013-02-24 16:00,,PT_Normal,,,,,YCn6kM7xbkegf2qv1if8cA,,,,N,0,0,,,2012-06-25 15:13,2012-07-16 15:38,nour,admin
209,149036,5725,23816,6841,1,0,N,N,N,CP_Drtn,TT_Task,DT_FixedDUR2,RV_OK,TK_NotStart,4229PPB80,L.C issued by Gupco,,840,0,40,0,0,0,40,0,0,0,,,,2012-12-09 08:00,2012-12-13 16:00,,2012-07-01 08:00,2012-07-05 16:00,2012-07-01 08:00,2012-07-05 16:00,2012-07-01 08:00,2012-07-05 16:00,,2012-12-09 08:00,2012-12-13 16:00,,PT_Normal,,,,,sAEYGjjVbUOM6LnaOW4YmQ,8XeEO//CcEKYVr5WUWm1nw,,,N,0,0,,,2012-06-25 15:13,2012-07-16 15:38,nour,admin
210,149037,5725,23816,6842,1,0,N,N,N,CP_Drtn,TT_Task,DT_FixedDUR2,RV_OK,TK_Active,4229PPB90,Fabrication upto R.F.S (1st Batch),,1208,0,208,0,0,0,784,0,0,0,,2012-04-01 00:00,,2012-12-16 08:00,2013-01-10 16:00,2012-07-31 16:00,2012-07-06 08:00,2012-07-31 16:00,2012-07-06 08:00,2012-07-31 16:00,2012-04-06 08:00,2012-07-12 16:00,,2012-12-16 08:00,2013-01-10 16:00,,PT_Normal,,,,,K0W8DT+QGUaEAUaCz1Q1IA,,,,N,0,0,,,2012-06-25 15:13,2012-07-16 15:38,nour,admin
211,149038,5725,23816,6841,1,100,N,N,N,CP_Drtn,TT_Task,DT_FixedDUR2,RV_OK,TK_Complete,4229PPB10,Issue RFQ for Piping bulk,,,,0,0,0,0,16,0,0,0,,2011-11-24 00:00,2011-11-24 00:00,2012-12-09 08:00,2012-12-09 08:00,,2012-06-30 00:00,2012-06-30 00:00,,,2011-12-04 08:00,2011-12-05 16:00,,,,,PT_Normal,,,,,d3Nh3FizJUa7CGJablIdRQ,iEmal3hge0uAij6Wk9qVTQ,,,N,0,0,,,2012-06-25 15:13,2012-07-16 15:38,nour,admin
212,149039,5725,23817,6842,1,100,N,N,N,CP_Drtn,TT_Task,DT_FixedDUR2,RV_OK,TK_Complete,4229PPV20,Bidding for Piping valves,,,,0,0,0,0,112,0,0,0,,2011-12-09 00:00,2012-01-03 00:00,2012-07-29 08:00,2012-07-29 08:00,,2012-06-30 00:00,2012-06-30 00:00,,,2012-01-08 08:00,2012-01-21 16:00,,,,,PT_Normal,,,,,hh9B/C0QBkCnouxU7Brjcg,WAPraHdgpEiuGrgnPTRw+A,,,N,0,0,,,2012-06-25 15:13,2012-07-16 15:38,nour,admin
213,149040,5725,23817,6841,1,100,N,N,N,CP_Drtn,TT_Task,DT_FixedDUR2,RV_OK,TK_Complete,4229PPV40,commercial evaluation & bid committee for Piping valves,,,,0,0,0,0,80,0,0,0,,2012-02-23 00:00,2012-03-14 00:00,2012-07-29 08:00,2012-07-29 08:00,,2012-06-30 00:00,2012-06-30 00:00,,,2012-03-11 08:00,2012-03-22 16:00,,,,,PT_Normal,,,,,E8OzBYTPgEek2CV9wFnvaA,e/V43NRVMUS133iTAw1J2Q,,,N,0,0,,,2012-06-25 15:13,2012-07-16 15:38,nour,admin
214,149041,5725,23817,6841,1,100,N,N,N,CP_Drtn,TT_Task,DT_FixedDUR2,RV_OK,TK_Complete,4229PPV60,F.O.C for Piping valves,,,,0,0,0,0,24,0,0,0,,2012-04-05 00:00,2012-04-05 00:00,2012-07-29 08:00,2012-07-29 08:00,,2012-06-30 00:00,2012-06-30 00:00,,,2012-04-09 08:00,2012-04-11 16:00,,,,,PT_Normal,,,,,JA6Atq8ntkSG1oQYAEEulw,4AXOah8HAEeGpjijEBPUrg,,,N,0,0,,,2012-06-25 15:13,2012-07-16 15:38,nour,admin
215,149042,5725,23817,6841,1,100,N,N,N,CP_Drtn,TT_Task,DT_FixedDUR2,RV_OK,TK_Complete,4229PPV70,P.O for Piping valves,,,,0,0,0,0,16,0,0,0,,2012-04-12 08:00,2012-04-17 00:00,2012-07-29 08:00,2012-07-29 08:00,,2012-06-30 00:00,2012-06-30 00:00,,,2012-04-12 08:00,2012-04-15 16:00,,,,,PT_Normal,,,,,mxWvNFBg90+rV/jk/8XScw,AvajsHLxjEGyyQn6kYuXCQ,,,N,0,0,,,2012-06-25 15:13,2012-07-16 15:38,nour,admin
216,149043,5725,23817,6842,1,0,N,N,N,CP_Drtn,TT_Task,DT_FixedDUR2,RV_OK,TK_Active,4229PPV90,Fabrication upto R.F.S (1st Batch),,240,0,360,0,0,0,1088,0,0,0,,2012-04-17 00:00,,2012-08-05 08:00,2012-09-30 16:00,2012-08-19 16:00,2012-07-06 08:00,2012-08-19 16:00,2012-07-06 08:00,2012-08-19 16:00,2012-04-06 08:00,2012-08-19 16:00,,2012-08-05 08:00,2012-09-30 16:00,,PT_Normal,,,,,tcN41y4HB0u1rm1B2FVt6Q,7UQ9XmTabEqxyA7/76n9MA,,,N,0,0,,,2012-06-25 15:13,2012-07-16 15:38,nour,admin
217,149044,5725,23817,6841,1,100,N,N,N,CP_Drtn,TT_Task,DT_FixedDUR2,RV_OK,TK_Complete,4229PPV30,Receive revised commercial offers,,,,0,0,0,0,40,0,0,0,,2012-02-09 00:00,2012-02-22 00:00,2012-07-29 08:00,2012-07-29 08:00,,2012-06-30 00:00,2012-06-30 00:00,,,2012-03-04 08:00,2012-03-08 16:00,,,,,PT_Normal,,,,,378pbIHcoUWbEIGgL+nI6w,AYPNiDXaKE6RLh7mqlxUcQ,,,N,0,0,,,2012-06-25 15:13,2012-07-16 15:38,nour,admin
218,149045,5725,23817,6841,1,0,N,N,N,CP_Drtn,TT_Task,DT_FixedDUR2,RV_OK,TK_NotStart,4229PPV80,L.C issued by Gupco,,160,0,40,0,0,0,40,0,0,0,,,,2012-07-29 08:00,2012-08-02 16:00,,2012-07-01 08:00,2012-07-05 16:00,2012-07-01 08:00,2012-07-05 16:00,2012-07-01 08:00,2012-07-05 16:00,,2012-07-29 08:00,2012-08-02 16:00,,PT_Normal,,,,,O75kqVqjL0S61JBBEVjfhA,8XeEO//CcEKYVr5WUWm1nw,,,N,0,0,,,2012-06-25 15:13,2012-07-16 15:38,nour,admin
219,149046,5725,23817,6841,1,100,N,N,N,CP_Drtn,TT_Task,DT_FixedDUR2,RV_OK,TK_Complete,4229PPV10,Issue RFQ for Piping valves,,,,0,0,0,0,16,0,0,0,,2011-12-08 00:00,2011-12-08 00:00,2012-07-29 08:00,2012-07-29 08:00,,2012-06-30 00:00,2012-06-30 00:00,,,2012-01-01 08:00,2012-01-02 16:00,,,,,PT_Normal,,,,,UB8izB+KwECddD7BvKO3PA,PapX/E/5VEedYgMn9pW1WA,,,N,0,0,,,2012-06-25 15:13,2012-07-16 15:38,nour,admin
220,149047,5725,23817,6841,1,100,N,N,N,CP_Drtn,TT_LOE,DT_FixedDUR2,RV_OK,TK_Complete,A1110,T.E.R for Piping valves,,,,0,0,0,0,168,0,0,0,,2012-01-12 08:00,2012-02-08 00:00,,,,,,,,2012-01-12 08:00,2012-02-12 16:00,,,,,PT_Normal,,,,,7orewTXDJEm4HrJ/nOkn7g,JiEJ7J2QxUaoab2mldizXA,,,N,0,0,,,2012-07-16 15:09,2012-07-16 15:09,admin,admin
221,149048,5725,23817,6841,1,100,N,N,N,CP_Drtn,TT_LOE,DT_FixedDUR2,RV_OK,TK_Complete,A1380,MRP for Piping valves,,,,0,0,0,0,32,0,0,0,,2012-04-08 08:00,2012-04-12 00:00,,,,,,,,2012-04-08 08:00,2012-04-11 16:00,,,,,PT_Normal,,,,,0Q08DJALfEq6VziDZd1lRw,HVhuFiMzEUqRKoYy+1e1PQ,,,N,0,0,,,2012-07-16 15:09,2012-07-16 15:09,admin,admin
222,149049,5725,23818,6841,1,100,N,N,N,CP_Drtn,TT_Task,DT_FixedDUR2,RV_OK,TK_Complete,4229PSU70,P.O for solar power unit,,,,0,0,0,0,40,0,0,0,,2012-04-01 08:00,2012-04-04 00:00,2012-07-29 08:00,2012-07-29 08:00,,2012-06-30 00:00,2012-06-30 00:00,,,2012-04-01 08:00,2012-04-05 16:00,,,,,PT_Normal,,,,,XoE5nSe3AES/MDXLEThi6w,AvajsHLxjEGyyQn6kYuXCQ,,,N,0,0,,,2012-06-25 15:13,2012-07-16 15:38,nour,admin
223,149050,5725,23818,6842,1,0,N,N,N,CP_Drtn,TT_Task,DT_FixedDUR2,RV_OK,TK_Active,4229PSU90,Fabrication upto R.F.S,,240,0,560,0,0,0,1400,0,0,0,,2012-04-05 00:00,,2012-08-05 08:00,2012-10-25 16:00,2012-09-25 16:00,2012-07-06 08:00,2012-09-25 16:00,2012-07-06 08:00,2012-09-25 16:00,2012-04-13 08:00,2012-10-16 16:00,,2012-08-05 08:00,2012-10-25 16:00,,PT_Normal,,,,,9dAOXO5AvkmB3rWmusGeCw,7UQ9XmTabEqxyA7/76n9MA,,,N,0,0,,,2012-06-25 15:13,2012-07-16 15:38,nour,admin
224,149051,5725,23818,6843,1,0,N,N,N,CP_Drtn,TT_Task,DT_FixedDUR2,RV_OK,TK_NotStart,4229PSU100,Delivery upto site,,872,560,360,0,0,0,360,0,0,0,,,,2013-01-11 08:00,2013-02-24 16:00,,2012-09-26 08:00,2012-11-09 16:00,2012-09-26 08:00,2012-11-09 16:00,2012-09-26 08:00,2012-11-09 16:00,,2013-01-11 08:00,2013-02-24 16:00,,PT_Normal,,,,,bhOFNimR+Emw8xFuwjQEYw,Ed1rw6pVGkqfXjRfFT7JpQ,,,N,0,0,,,2012-06-25 15:13,2012-07-16 15:38,nour,admin
225,149052,5725,23818,6841,1,100,N,N,N,CP_Drtn,TT_Task,DT_FixedDUR2,RV_OK,TK_Complete,4229PSU30,Receive revised commercial offers,,,,0,0,0,0,40,0,0,0,,2012-02-01 00:00,2012-02-12 00:00,2012-07-29 08:00,2012-07-29 08:00,,2012-06-30 00:00,2012-06-30 00:00,,,2012-03-04 08:00,2012-03-08 16:00,,,,,PT_Normal,,,,,iyZru/9RjEShPpdTokEsvQ,rsbY6IPE9Ey3ZU3ZNeLLVg,,,N,0,0,,,2012-06-25 15:13,2012-07-16 15:38,nour,admin
226,149053,5725,23818,6841,1,0,N,N,N,CP_Drtn,TT_Task,DT_FixedDUR2,RV_OK,TK_NotStart,4229PSU80,L.C issued by Gupco,,160,0,40,0,0,0,40,0,0,0,,,,2012-07-29 08:00,2012-08-02 16:00,,2012-07-01 08:00,2012-07-05 16:00,2012-07-01 08:00,2012-07-05 16:00,2012-07-01 08:00,2012-07-05 16:00,,2012-07-29 08:00,2012-08-02 16:00,,PT_Normal,,,,,oLh1cje//EKs20jdSQYDCA,/xqtBKQ3QEuTmEP+B+vEag,,,N,0,0,,,2012-06-25 15:13,2012-07-16 15:38,nour,admin
227,149054,5725,23818,6841,1,100,N,N,N,CP_Drtn,TT_Task,DT_FixedDUR2,RV_OK,TK_Complete,4229PSU10,Issue RFQ for solar power unit,,,,0,0,0,0,16,0,0,0,,2011-08-23 00:00,2011-08-24 00:00,2012-07-29 08:00,2012-07-29 08:00,,2012-06-30 00:00,2012-06-30 00:00,,,2011-08-15 08:00,2011-08-16 16:00,,,,,PT_Normal,,,,,i/7yLNX5n0idLglOI6AHVw,PapX/E/5VEedYgMn9pW1WA,,,N,0,0,,,2012-06-25 15:13,2012-07-16 15:38,nour,admin
228,149055,5725,23818,6842,1,100,N,N,N,CP_Drtn,TT_Task,DT_FixedDUR2,RV_OK,TK_Complete,4229PSU20,Bidding for solar power unit,,,,0,0,0,0,392,0,0,0,,2011-08-25 00:00,2011-10-13 00:00,2012-07-29 08:00,2012-07-29 08:00,,2012-06-30 00:00,2012-06-30 00:00,,,2011-08-17 08:00,2011-10-04 16:00,,,,,PT_Normal,,,,,blqEy3uL4ku5kMFjwUtq7Q,WAPraHdgpEiuGrgnPTRw+A,,,N,0,0,,,2012-06-25 15:13,2012-07-16 15:38,nour,admin
229,149056,5725,23818,6841,1,100,N,N,N,CP_Drtn,TT_Task,DT_FixedDUR2,RV_OK,TK_Complete,4229PSU40,commercial evaluation & bid committee for solar power unit,,,,0,0,0,0,120,0,0,0,,2012-02-13 00:00,2012-02-29 00:00,2012-07-29 08:00,2012-07-29 08:00,,2012-06-30 00:00,2012-06-30 00:00,,,2012-03-11 08:00,2012-03-29 16:00,,,,,PT_Normal,,,,,MVfoh0/Tu0eqq452tdWTiA,e/V43NRVMUS133iTAw1J2Q,,,N,0,0,,,2012-06-25 15:13,2012-07-16 15:38,nour,admin
230,149057,5725,23818,6841,1,100,N,N,N,CP_Drtn,TT_Task,DT_FixedDUR2,RV_OK,TK_Complete,4229PSU60,F.O.C for solar power unit,,,,0,0,0,0,24,0,0,0,,2012-03-28 00:00,2012-03-28 00:00,2012-07-29 08:00,2012-07-29 08:00,,2012-06-30 00:00,2012-06-30 00:00,,,2012-04-01 08:00,2012-04-03 16:00,,,,,PT_Normal,,,,,/Dt1dMqMtkGowSYf28f6fQ,4AXOah8HAEeGpjijEBPUrg,,,N,0,0,,,2012-06-25 15:13,2012-07-16 15:38,nour,admin
231,149058,5725,23838,6842,1,0,N,N,N,CP_Drtn,TT_Task,DT_FixedDUR2,RV_OK,TK_Active,4229PNA90,Fabrication upto R.F.S,,240,0,0,0,0,0,1040,0,0,0,,2012-02-01 00:00,,2012-08-04 16:00,2012-08-04 16:00,2012-07-01 16:00,2012-07-06 08:00,2012-07-06 08:00,2012-07-06 08:00,2012-07-06 08:00,2012-04-06 08:00,2012-08-13 16:00,,2012-08-04 16:00,2012-08-04 16:00,,PT_Normal,,,,,v8EYsAABm06z3Byh2Kiiiw,ToVb42xRg0G2L0I31B6C+Q,,,N,0,0,,,2012-06-25 15:13,2012-07-16 15:38,nour,admin
232,149059,5725,23838,6843,1,0,N,N,N,CP_Drtn,TT_Task,DT_FixedDUR2,RV_OK,TK_NotStart,4229PNA100,Delivery upto site,,1528,1216,360,0,0,0,360,0,0,0,,,,2013-01-11 08:00,2013-02-24 16:00,,2012-07-06 08:00,2012-08-19 16:00,2012-07-06 08:00,2012-08-19 16:00,2012-07-06 08:00,2012-08-19 16:00,,2013-01-11 08:00,2013-02-24 16:00,,PT_Normal,,,,,UQJckxh3e06DtbWUUhLaog,lldIlyG8m0eNSv8NbxWToA,,,N,0,0,,,2012-06-25 15:13,2012-07-16 15:38,nour,admin
233,149060,5725,23838,6841,1,100,N,N,N,CP_Drtn,TT_Task,DT_FixedDUR2,RV_OK,TK_Complete,4229PNA30,Receive revised commercial offers,,,,0,0,0,0,40,0,0,0,,2011-12-08 08:00,2011-12-13 00:00,2012-07-29 08:00,2012-07-29 08:00,,2012-06-30 00:00,2012-06-30 00:00,,,2011-12-08 08:00,2011-12-14 16:00,,,,,PT_Normal,,,,,mLKdQZ90akmos7lz9FUDCA,rsbY6IPE9Ey3ZU3ZNeLLVg,,,N,0,0,,,2012-06-25 15:13,2012-07-16 15:38,nour,admin
234,149061,5725,23838,6841,1,0,N,N,N,CP_Drtn,TT_Task,DT_FixedDUR2,RV_OK,TK_NotStart,4229PNA80,L.C issued by Gupco,,160,0,40,0,0,0,40,0,0,0,,,,2012-07-29 08:00,2012-08-02 16:00,,2012-07-01 08:00,2012-07-05 16:00,2012-07-01 08:00,2012-07-05 16:00,2012-07-01 08:00,2012-07-05 16:00,,2012-07-29 08:00,2012-08-02 16:00,,PT_Normal,,,,,8majxBqKfUuZ/Ybi+eidew,/xqtBKQ3QEuTmEP+B+vEag,,,N,0,0,,,2012-06-25 15:13,2012-07-16 15:38,nour,admin
235,149062,5725,23838,6841,1,100,N,N,N,CP_Drtn,TT_Task,DT_FixedDUR2,RV_OK,TK_Complete,4229PNA10,Issue RFQ for Navigation aids,,,,0,0,0,0,16,0,0,0,,2011-09-18 00:00,2011-09-18 00:00,2012-07-29 08:00,2012-07-29 08:00,,2012-06-30 00:00,2012-06-30 00:00,,,2011-08-15 08:00,2011-08-16 16:00,,,,,PT_Normal,,,,,1ZTCg7d0t0aOAoOfgoRWQQ,PapX/E/5VEedYgMn9pW1WA,,,N,0,0,,,2012-06-25 15:13,2012-07-16 15:38,nour,admin
236,149063,5725,23838,6842,1,100,N,N,N,CP_Drtn,TT_Task,DT_FixedDUR2,RV_OK,TK_Complete,4229PNA20,Bidding for Navigation aids,,,,0,0,0,0,488,0,0,0,,2011-09-19 00:00,2011-10-16 16:00,2012-07-29 08:00,2012-07-29 08:00,,2012-06-30 00:00,2012-06-30 00:00,,,2011-08-17 08:00,2011-10-16 16:00,,,,,PT_Normal,,,,,9cNqxS7erEOHVNQj++h5Rw,WAPraHdgpEiuGrgnPTRw+A,,,N,0,0,,,2012-06-25 15:13,2012-07-16 15:38,nour,admin
237,149064,5725,23838,6841,1,100,N,N,N,CP_Drtn,TT_Task,DT_FixedDUR2,RV_OK,TK_Complete,4229PNA40,commercial evaluation & bid committee for Navigation aids,,,,0,0,0,0,80,0,0,0,,2011-12-14 00:00,2011-12-21 00:00,2012-07-29 08:00,2012-07-29 08:00,,2012-06-30 00:00,2012-06-30 00:00,,,2011-12-15 08:00,2011-12-28 16:00,,,,,PT_Normal,,,,,rEEuCu/Jw0qxYvT14ebtoQ,e/V43NRVMUS133iTAw1J2Q,,,N,0,0,,,2012-06-25 15:13,2012-07-16 15:38,nour,admin
238,149065,5725,23838,6841,1,100,N,N,N,CP_Drtn,TT_Task,DT_FixedDUR2,RV_OK,TK_Complete,4229PNA60,F.O.C for Navigation aids,,,,0,0,0,0,24,0,0,0,,2012-01-11 08:00,2012-01-12 00:00,2012-07-29 08:00,2012-07-29 08:00,,2012-06-30 00:00,2012-06-30 00:00,,,2012-01-11 08:00,2012-01-15 16:00,,,,,PT_Normal,,,,,SlpD6eEYMUKxVbx6vmDGjQ,4AXOah8HAEeGpjijEBPUrg,,,N,0,0,,,2012-06-25 15:13,2012-07-16 15:38,nour,admin
239,149066,5725,23838,6841,1,100,N,N,N,CP_Drtn,TT_Task,DT_FixedDUR2,RV_OK,TK_Complete,4229PNA70,P.O for Navigation aids,,,,0,0,0,0,40,0,0,0,,2012-01-19 08:00,2012-02-01 16:00,2012-07-29 08:00,2012-07-29 08:00,,2012-06-30 00:00,2012-06-30 00:00,,,2012-01-19 08:00,2012-01-26 16:00,,,,,PT_Normal,,,,,KketALU3aEmFwbIA/J3J2g,AvajsHLxjEGyyQn6kYuXCQ,,,N,0,0,,,2012-06-25 15:13,2012-07-16 15:38,nour,admin
240,149067,5725,23820,6842,1,0,N,N,N,CP_Drtn,TT_Task,DT_FixedDUR2,RV_OK,TK_NotStart,4229PEB90,Fabrication upto R.F.S,,584,0,672,0,0,0,672,0,0,0,,,,2012-10-19 08:00,2013-01-10 16:00,,2012-07-26 08:00,2012-10-29 16:00,2012-07-26 08:00,2012-10-29 16:00,2012-07-26 08:00,2012-10-29 16:00,,2012-10-19 08:00,2013-01-10 16:00,,PT_Normal,,,,,PpYhmZFvRk6UCu7gtCIPqw,7UQ9XmTabEqxyA7/76n9MA,,,N,0,0,,,2012-06-25 15:13,2012-07-16 15:38,nour,admin
241,149068,5725,23820,6843,1,0,N,N,N,CP_Drtn,TT_Task,DT_FixedDUR2,RV_OK,TK_NotStart,4229PEB100,Delivery upto site,,600,288,360,0,0,0,360,0,0,0,,,,2013-01-11 08:00,2013-02-24 16:00,,2012-10-30 08:00,2012-12-13 16:00,2012-10-30 08:00,2012-12-13 16:00,2012-10-30 08:00,2012-12-13 16:00,,2013-01-11 08:00,2013-02-24 16:00,,PT_Normal,,,,,Gixj9XJ1lkGovwyBrwmOnQ,Ed1rw6pVGkqfXjRfFT7JpQ,,,N,0,0,,,2012-06-25 15:13,2012-07-16 15:38,nour,admin
242,149069,5725,23820,6841,1,100,N,N,N,CP_Drtn,TT_Task,DT_FixedDUR2,RV_OK,TK_Complete,4229PEB30,Receive revised commercial offers,,,,0,0,0,0,40,0,0,0,,2012-06-11 00:00,2012-06-24 00:00,2012-09-24 08:00,2012-09-24 08:00,,2012-06-30 00:00,2012-06-30 00:00,,,2012-07-01 08:00,2012-07-05 16:00,,,,,PT_Normal,,,,,H3Y2o7n5a0C2LpR7N34yqw,rsbY6IPE9Ey3ZU3ZNeLLVg,,,N,0,0,,,2012-06-25 15:13,2012-07-16 15:38,nour,admin
243,149070,5725,23820,6841,1,0,N,N,N,CP_Drtn,TT_Task,DT_FixedDUR2,RV_OK,TK_Active,4229PEB50,Client approval on bid committee reccomendation,,448,0,32,0,0,0,16,0,0,0,,2012-06-28 00:00,,2012-09-24 08:00,2012-09-27 16:00,,2012-07-01 08:00,2012-07-04 16:00,2012-07-01 08:00,2012-07-04 16:00,2012-07-01 08:00,2012-07-02 16:00,,2012-09-24 08:00,2012-09-27 16:00,,PT_Normal,,,,,EFM/b0LNjEKEi4m4+luq1w,iKP7vyvUVkGYjFWGXsYtWw,,,N,0,0,,,2012-06-25 15:13,2012-07-16 15:38,nour,admin
244,149071,5725,23820,6841,1,0,N,N,N,CP_Drtn,TT_Task,DT_FixedDUR2,RV_OK,TK_NotStart,4229PEB80,L.C issued by Gupco,,448,0,40,0,0,0,40,0,0,0,,,,2012-10-14 08:00,2012-10-18 16:00,,2012-07-19 08:00,2012-07-25 16:00,2012-07-19 08:00,2012-07-25 16:00,2012-07-19 08:00,2012-07-25 16:00,,2012-10-14 08:00,2012-10-18 16:00,,PT_Normal,,,,,79ONsLLOv0msS551Kp0E7Q,/xqtBKQ3QEuTmEP+B+vEag,,,N,0,0,,,2012-06-25 15:13,2012-07-16 15:38,nour,admin
245,149072,5725,23820,6841,1,100,N,N,N,CP_Drtn,TT_Task,DT_FixedDUR2,RV_OK,TK_Complete,4229PEB10,Issue RFQ for Electrical bulk,,,,0,0,0,0,16,0,0,0,,2011-12-28 00:00,2011-12-29 00:00,2012-09-24 08:00,2012-09-24 08:00,,2012-06-30 00:00,2012-06-30 00:00,,,2012-01-11 08:00,2012-01-12 16:00,,,,,PT_Normal,,,,,ubBSK0FvukaLk1r8ycJMpw,PapX/E/5VEedYgMn9pW1WA,,,N,0,0,,,2012-06-25 15:13,2012-07-16 15:38,nour,admin
246,149073,5725,23820,6842,1,100,N,N,N,CP_Drtn,TT_Task,DT_FixedDUR2,RV_OK,TK_Complete,4229PEB20,Bidding for Electrical bulk,,,,0,0,0,0,200,0,0,0,,2011-12-30 00:00,2012-02-01 00:00,2012-09-24 08:00,2012-09-24 08:00,,2012-06-30 00:00,2012-06-30 00:00,,,2012-01-13 08:00,2012-02-07 16:00,,,,,PT_Normal,,,,,RPBrpeWWUk25G3u88i36mQ,WAPraHdgpEiuGrgnPTRw+A,,,N,0,0,,,2012-06-25 15:13,2012-07-16 15:38,nour,admin
247,149074,5725,23820,6841,1,100,N,N,N,CP_Drtn,TT_Task,DT_FixedDUR2,RV_OK,TK_Complete,4229PEB40,commercial evaluation & bid committee for Electrical bulk,,,,0,0,0,0,80,0,0,0,,2012-06-25 00:00,2012-06-27 00:00,2012-09-24 08:00,2012-09-24 08:00,,2012-06-30 00:00,2012-06-30 00:00,,,2012-07-08 08:00,2012-07-19 16:00,,,,,PT_Normal,,,,,AQXAiZ0WNk6Ge/gPcCvsKw,e/V43NRVMUS133iTAw1J2Q,,,N,0,0,,,2012-06-25 15:13,2012-07-16 15:38,nour,admin
248,149075,5725,23820,6841,1,0,N,N,N,CP_Drtn,TT_Task,DT_FixedDUR2,RV_OK,TK_NotStart,4229PEB60,F.O.C for Electrical bulk,,448,0,24,0,0,0,24,0,0,0,,,,2012-09-30 08:00,2012-10-02 16:00,,2012-07-05 08:00,2012-07-09 16:00,2012-07-05 08:00,2012-07-09 16:00,2012-07-05 08:00,2012-07-09 16:00,,2012-09-30 08:00,2012-10-02 16:00,,PT_Normal,,,,,bVhbsNDoU0qkMxu85eRKIw,4AXOah8HAEeGpjijEBPUrg,,,N,0,0,,,2012-06-25 15:13,2012-07-16 15:38,nour,admin
249,149076,5725,23820,6841,1,0,N,N,N,CP_Drtn,TT_Task,DT_FixedDUR2,RV_OK,TK_NotStart,4229PEB70,P.O for Electrical bulk,,448,0,16,0,0,0,16,0,0,0,,,,2012-10-10 08:00,2012-10-11 16:00,,2012-07-17 08:00,2012-07-18 16:00,2012-07-17 08:00,2012-07-18 16:00,2012-07-17 08:00,2012-07-18 16:00,,2012-10-10 08:00,2012-10-11 16:00,,PT_Normal,,,,,ypbFoHywBUGLfCr/MzjwSg,AvajsHLxjEGyyQn6kYuXCQ,,,N,0,0,,,2012-06-25 15:13,2012-07-16 15:38,nour,admin
250,149077,5725,23820,6841,1,0,N,N,N,CP_Drtn,TT_LOE,DT_FixedDUR2,RV_OK,TK_NotStart,A1440,MRP for Electrical bulk,,4776,0,0,0,0,0,0,0,0,0,,,,2014-11-02 16:00,2014-11-02 16:00,,2012-07-05 08:00,2012-07-05 08:00,2012-07-05 08:00,2012-07-05 08:00,2012-07-05 08:00,2012-07-05 08:00,,2014-11-02 16:00,2014-11-02 16:00,,PT_Normal,,,,,mKX+Nmz1Fke322DXLrK3+w,cKQxE56q/ESdNlpuAltyIQ,,,N,0,0,,,2012-07-16 15:09,2012-07-16 15:09,admin,admin
251,149078,5725,23821,6841,1,100,N,N,N,CP_Drtn,TT_Task,DT_FixedDUR2,RV_OK,TK_Complete,4229PIB1020,Receive revised commercial offers,,,,0,0,0,0,40,0,0,0,,2012-06-04 00:00,2012-06-10 00:00,2012-10-04 08:00,2012-10-04 08:00,,2012-06-30 00:00,2012-06-30 00:00,,,2012-07-01 08:00,2012-07-05 16:00,,,,,PT_Normal,,,,,t8G+GYzFBECzpZ1gV4IPyA,AYPNiDXaKE6RLh7mqlxUcQ,,,N,0,0,,,2012-06-25 15:13,2012-07-16 15:38,nour,admin
252,149079,5725,23821,6841,1,0,N,N,N,CP_Drtn,TT_Task,DT_FixedDUR2,RV_OK,TK_Active,4229PIB1040,Client approval on bid committee reccomendation,,512,0,8,0,0,0,16,0,0,0,,2012-06-19 00:00,,2012-10-04 08:00,2012-10-04 16:00,,2012-07-01 08:00,2012-07-01 16:00,2012-07-01 08:00,2012-07-01 16:00,2012-07-01 08:00,2012-07-02 16:00,,2012-10-04 08:00,2012-10-04 16:00,,PT_Normal,,,,,AgK+zm8tOke0+dd9t4bplQ,okMlSxQPlUu8ymqN/KtiYQ,,,N,0,0,,,2012-06-25 15:13,2012-07-16 15:38,nour,admin
253,149080,5725,23821,6841,1,0,N,N,N,CP_Drtn,TT_Task,DT_FixedDUR2,RV_OK,TK_NotStart,4229PIB1070,L.C issued by Gupco,,512,0,40,0,0,0,40,0,0,0,,,,2012-10-28 08:00,2012-11-01 16:00,,2012-07-16 08:00,2012-07-22 16:00,2012-07-16 08:00,2012-07-22 16:00,2012-07-16 08:00,2012-07-22 16:00,,2012-10-28 08:00,2012-11-01 16:00,,PT_Normal,,,,,s/8GZK5mZkqY0wB17ux1sA,8XeEO//CcEKYVr5WUWm1nw,,,N,0,0,,,2012-06-25 15:13,2012-07-16 15:38,nour,admin
254,149081,5725,23821,6842,1,0,N,N,N,CP_Drtn,TT_Task,DT_FixedDUR2,RV_OK,TK_NotStart,4229PIB1080,Fabrication upto R.F.S,,728,0,672,0,0,0,672,0,0,0,,,,2012-11-03 08:00,2013-01-25 16:00,,2012-07-23 08:00,2012-10-26 16:00,2012-07-23 08:00,2012-10-26 16:00,2012-07-23 08:00,2012-10-26 16:00,,2012-11-03 08:00,2013-01-25 16:00,,PT_Normal,,,,,RYKW2+sJ/U6R/nGaAK/XiA,,,,N,0,0,,,2012-06-25 15:13,2012-07-16 15:38,nour,admin
255,149082,5725,23821,6843,1,0,N,N,N,CP_Drtn,TT_Task,DT_FixedDUR2,RV_OK,TK_NotStart,4229PIB1090,Delivery upto site,,744,432,240,0,0,0,240,0,0,0,,,,2013-01-26 08:00,2013-02-24 16:00,,2012-10-27 08:00,2012-11-25 16:00,2012-10-27 08:00,2012-11-25 16:00,2012-10-27 08:00,2012-11-25 16:00,,2013-01-26 08:00,2013-02-24 16:00,,PT_Normal,,,,,xnfiMskeO0uki/yxsuvS3g,,,,N,0,0,,,2012-06-25 15:13,2012-07-16 15:38,nour,admin
256,149083,5725,23821,6841,1,100,N,N,N,CP_Drtn,TT_Task,DT_FixedDUR2,RV_OK,TK_Complete,4229PIB1000,Issue RFQ for Instrument electrical bulk,,,,0,0,0,0,8,0,0,0,,2012-02-29 00:00,2012-03-04 00:00,2012-10-04 08:00,2012-10-04 08:00,,2012-06-30 00:00,2012-06-30 00:00,,,2012-02-13 08:00,2012-02-13 16:00,,,,,PT_Normal,,,,,V7Wi8FaSN0iNOmjyKlKjNA,JI5SVA605USWDWBKpsEVTw,,,N,0,0,,,2012-06-25 15:13,2012-07-16 15:38,nour,admin
257,149084,5725,23821,6842,1,100,N,N,N,CP_Drtn,TT_Task,DT_FixedDUR2,RV_OK,TK_Complete,4229PIB1010,Bidding for Instrument electrical bulk,,,,0,0,0,0,200,0,0,0,,2012-03-05 00:00,2012-03-26 00:00,2012-10-04 08:00,2012-10-04 08:00,,2012-06-30 00:00,2012-06-30 00:00,,,2012-03-31 08:00,2012-04-24 16:00,,,,,PT_Normal,,,,,+zRgSOSC/0Gw/fv8PyEJgQ,9MnOz/vVdkC9ctNWH2r8qg,,,N,0,0,,,2012-06-25 15:13,2012-07-16 15:38,nour,admin
258,149085,5725,23821,6841,1,100,N,N,N,CP_Drtn,TT_Task,DT_FixedDUR2,RV_OK,TK_Complete,4229PIB1030,commercial evaluation & bid committee for Instrument electrical bulk,,,,0,0,0,0,80,0,0,0,,2012-06-10 00:00,2012-06-13 00:00,2012-10-04 08:00,2012-10-04 08:00,,2012-06-30 00:00,2012-06-30 00:00,,,2012-07-08 08:00,2012-07-19 16:00,,,,,PT_Normal,,,,,N6bVbEFgxU2/lb2vFC725w,HB71H4gGzEi8k5nywomlQQ,,,N,0,0,,,2012-06-25 15:13,2012-07-16 15:38,nour,admin
259,149086,5725,23821,6841,1,0,N,N,N,CP_Drtn,TT_Task,DT_FixedDUR2,RV_OK,TK_NotStart,4229PIB1050,F.O.C for Instrument electrical bulk,,512,0,24,0,0,0,24,0,0,0,,,,2012-10-07 08:00,2012-10-09 16:00,,2012-07-02 08:00,2012-07-04 16:00,2012-07-02 08:00,2012-07-04 16:00,2012-07-02 08:00,2012-07-04 16:00,,2012-10-07 08:00,2012-10-09 16:00,,PT_Normal,,,,,tC3WuTfat0GoVCPzXKG4Nw,FKG5q0XubUmv7n25cBnM+A,,,N,0,0,,,2012-06-25 15:13,2012-07-16 15:38,nour,admin
260,149087,5725,23821,6841,1,0,N,N,N,CP_Drtn,TT_Task,DT_FixedDUR2,RV_OK,TK_NotStart,4229PIB1060,P.O for Instrument electrical bulk,,512,0,16,0,0,0,16,0,0,0,,,,2012-10-17 08:00,2012-10-18 16:00,,2012-07-12 08:00,2012-07-15 16:00,2012-07-12 08:00,2012-07-15 16:00,2012-07-12 08:00,2012-07-15 16:00,,2012-10-17 08:00,2012-10-18 16:00,,PT_Normal,,,,,vv/qBOCH40aa9whXIaHMNw,3CKBmFUDZUiNIm/ll8DEwg,,,N,0,0,,,2012-06-25 15:13,2012-07-16 15:38,nour,admin
261,149088,5725,23821,6841,1,0,N,N,N,CP_Drtn,TT_LOE,DT_FixedDUR2,RV_OK,TK_Active,A1300,T.E.R for Instrument electrical bulk,,4776,0,0,0,0,0,120,0,0,0,,2012-03-26 00:00,,2014-11-02 16:00,2014-11-02 16:00,,2012-07-05 08:00,2012-07-05 08:00,2012-07-05 08:00,2012-07-05 08:00,2012-04-25 08:00,2012-05-15 16:00,,2014-11-02 16:00,2014-11-02 16:00,,PT_Normal,,,,,QHB9oJY4a0uhTSbpLEzKlg,vrPHaFUofUCwSCVvqK7yeg,,,N,0,0,,,2012-07-16 15:09,2012-07-16 15:09,admin,admin
262,149089,5725,23822,6841,1,100,N,N,N,CP_Drtn,TT_Task,DT_FixedDUR2,RV_OK,TK_Complete,4229PIB60,F.O.C for Instrument mechanical bulk,,,,0,0,0,0,24,0,0,0,,2012-05-31 00:00,2012-05-31 00:00,2013-02-10 08:00,2013-02-10 08:00,,2012-06-30 00:00,2012-06-30 00:00,,,2012-06-26 08:00,2012-06-28 16:00,,,,,PT_Normal,,,,,R63EHSB/MUGBBodJ8pcvAw,wvJHlYKuYEiMge3zEAW6dQ,,,N,0,0,,,2012-06-25 15:13,2012-07-16 15:38,nour,admin
263,149090,5725,23822,6841,1,100,N,N,N,CP_Drtn,TT_Task,DT_FixedDUR2,RV_OK,TK_Complete,4229PIB70,P.O for Instrument mechanical bulk,,,,0,0,0,0,16,0,0,0,,2012-05-31 00:00,2012-05-31 00:00,2013-02-10 08:00,2013-02-10 08:00,,2012-06-30 00:00,2012-06-30 00:00,,,2012-07-01 08:00,2012-07-02 16:00,,,,,PT_Normal,,,,,3CgEWqdrk0WmZQC/gkTc4g,hWfotYgdCUObagj6utqawQ,,,N,0,0,,,2012-06-25 15:13,2012-07-16 15:38,nour,admin
264,149091,5725,23822,6842,1,100,N,N,N,CP_Drtn,TT_Task,DT_FixedDUR2,RV_OK,TK_Complete,4229PIB90,Fabrication upto R.F.S,,,,0,0,0,0,720,0,0,0,,2012-05-31 00:00,2012-05-31 00:00,2013-02-10 08:00,2013-02-10 08:00,,2012-06-30 00:00,2012-06-30 00:00,,,2012-07-10 08:00,2012-10-19 16:00,,,,,PT_Normal,,,,,/PRMAcp+40eV3jTs2sCc+g,7UQ9XmTabEqxyA7/76n9MA,,,N,0,0,,,2012-06-25 15:13,2012-07-16 15:38,nour,admin
265,149092,5725,23822,6843,1,100,N,N,N,CP_Drtn,TT_Task,DT_FixedDUR2,RV_OK,TK_Complete,4229PIB100,Delivery upto site,,,,0,0,0,0,280,0,0,0,,2012-05-31 00:00,2012-05-31 00:00,2013-02-24 16:00,2013-02-24 16:00,,2012-06-30 00:00,2012-06-30 00:00,,,2012-10-20 08:00,2012-11-23 16:00,,,,,PT_Normal,,,,,ST0LfemTPk65wPOjqfj1rQ,Ed1rw6pVGkqfXjRfFT7JpQ,,,N,0,0,,,2012-06-25 15:13,2012-07-16 15:38,nour,admin
266,149093,5725,23822,6841,1,100,N,N,N,CP_Drtn,TT_Task,DT_FixedDUR2,RV_OK,TK_Complete,4229PIB30,Receive revised commercial offers,,,,0,0,0,0,40,0,0,0,,2012-05-30 00:00,2012-05-30 00:00,2013-02-10 08:00,2013-02-10 08:00,,2012-06-30 00:00,2012-06-30 00:00,,,2012-06-03 08:00,2012-06-07 16:00,,,,,PT_Normal,,,,,BZ5fe1hwxka0CLVGEwL1tg,AYPNiDXaKE6RLh7mqlxUcQ,,,N,0,0,,,2012-06-25 15:13,2012-07-16 15:38,nour,admin
267,149094,5725,23822,6841,1,100,N,N,N,CP_Drtn,TT_Task,DT_FixedDUR2,RV_OK,TK_Complete,4229PIB80,L.C issued by Gupco,,,,0,0,0,0,40,0,0,0,,2012-05-31 00:00,2012-05-31 00:00,2013-02-10 08:00,2013-02-10 08:00,,2012-06-30 00:00,2012-06-30 00:00,,,2012-07-03 08:00,2012-07-09 16:00,,,,,PT_Normal,,,,,fIAbkG+UP0yWfyv2CAZzFQ,8XeEO//CcEKYVr5WUWm1nw,,,N,0,0,,,2012-06-25 15:13,2012-07-16 15:38,nour,admin
268,149095,5725,23822,6841,1,100,N,N,N,CP_Drtn,TT_Task,DT_FixedDUR2,RV_OK,TK_Complete,4229PIB10,Issue RFQ for Instrument mechanical bulk,,,,0,0,0,0,16,0,0,0,,2012-01-25 00:00,2012-02-21 00:00,2013-02-10 08:00,2013-02-10 08:00,,2012-06-30 00:00,2012-06-30 00:00,,,2012-02-13 08:00,2012-02-14 16:00,,,,,PT_Normal,,,,,SNySYKpAF0+gKLaUIY4+FA,OCnd8pP/p0aatV0O4h2pyA,,,N,0,0,,,2012-06-25 15:13,2012-07-16 15:38,nour,admin
269,149096,5725,23822,6842,1,100,N,N,N,CP_Drtn,TT_Task,DT_FixedDUR2,RV_OK,TK_Complete,4229PIB20,Bidding for Instrument mechanical bulk,,,,0,0,0,0,144,0,0,0,,2012-02-22 00:00,2012-03-29 00:00,2013-02-10 08:00,2013-02-10 08:00,,2012-06-30 00:00,2012-06-30 00:00,,,2012-03-03 08:00,2012-03-20 16:00,,,,,PT_Normal,,,,,xTvrGK4nK0GPV3I7cfxHFA,Qw2K70fh0Uyvygb6Wxm90Q,,,N,0,0,,,2012-06-25 15:13,2012-07-16 15:38,nour,admin
270,149097,5725,23822,6841,1,100,N,N,N,CP_Drtn,TT_Task,DT_FixedDUR2,RV_OK,TK_Complete,4229PIB40,commercial evaluation & bid committee for Instrument mechanical bulk,,,,0,0,0,0,80,0,0,0,,2012-05-31 00:00,2012-05-31 00:00,2013-02-10 08:00,2013-02-10 08:00,,2012-06-30 00:00,2012-06-30 00:00,,,2012-06-10 08:00,2012-06-21 16:00,,,,,PT_Normal,,,,,ZZaLjAbmbUaP66hppOE9NA,YJ2YdK0gtkq3MSsnZFqeCg,,,N,0,0,,,2012-06-25 15:13,2012-07-16 15:38,nour,admin
271,149098,5725,23823,6841,1,0,N,N,N,CP_Drtn,TT_Task,DT_FixedDUR2,RV_OK,TK_NotStart,4229PFI60,F.O.C for field Instrument,,280,0,24,0,0,0,24,0,0,0,,,,2012-08-27 08:00,2012-08-29 16:00,,2012-07-02 08:00,2012-07-04 16:00,2012-07-02 08:00,2012-07-04 16:00,2012-07-02 08:00,2012-07-04 16:00,,2012-08-27 08:00,2012-08-29 16:00,,PT_Normal,,,,,bWuQ/6lsjkuB64TvYZcCNA,4AXOah8HAEeGpjijEBPUrg,,,N,0,0,,,2012-06-25 15:13,2012-07-16 15:38,nour,admin
272,149099,5725,23823,6841,1,0,N,N,N,CP_Drtn,TT_Task,DT_FixedDUR2,RV_OK,TK_NotStart,4229PFI70,P.O for field Instrument,,280,0,16,0,0,0,16,0,0,0,,,,2012-09-06 08:00,2012-09-09 16:00,,2012-07-12 08:00,2012-07-15 16:00,2012-07-12 08:00,2012-07-15 16:00,2012-07-12 08:00,2012-07-15 16:00,,2012-09-06 08:00,2012-09-09 16:00,,PT_Normal,,,,,HQ/hN4c7Z0WKg0kzbmrutw,AvajsHLxjEGyyQn6kYuXCQ,,,N,0,0,,,2012-06-25 15:13,2012-07-16 15:38,nour,admin
273,149100,5725,23823,6841,1,0,N,N,N,CP_Drtn,TT_LOE,DT_FixedDUR2,RV_OK,TK_NotStart,A1500,MRP for field Instrument,,4776,0,0,0,0,0,0,0,0,0,,,,2014-11-02 16:00,2014-11-02 16:00,,2012-07-05 08:00,2012-07-05 08:00,2012-07-05 08:00,2012-07-05 08:00,2012-07-05 08:00,2012-07-05 08:00,,2014-11-02 16:00,2014-11-02 16:00,,PT_Normal,,,,,96IwqifviUGe5FfccU/uJg,dTXvLV4G8EqSCMWO1CBnLA,,,N,0,0,,,2012-07-16 15:09,2012-07-16 15:09,admin,admin
274,149101,5725,23823,6842,1,0,N,N,N,CP_Drtn,TT_Task,DT_FixedDUR2,RV_OK,TK_NotStart,4229PFI90,Fabrication upto R.F.S,,352,0,1008,0,0,0,1008,0,0,0,,,,2012-09-17 08:00,2013-01-20 16:00,,2012-07-23 08:00,2012-12-07 16:00,2012-07-23 08:00,2012-12-07 16:00,2012-07-23 08:00,2012-12-07 16:00,,2012-09-17 08:00,2013-01-20 16:00,,PT_Normal,,,,,zM7aIG53gka3SgvKgxkS8g,7UQ9XmTabEqxyA7/76n9MA,,,N,0,0,,,2012-06-25 15:13,2012-07-16 15:38,nour,admin
275,149102,5725,23823,6843,1,0,N,N,N,CP_Drtn,TT_Task,DT_FixedDUR2,RV_OK,TK_NotStart,4229PFI100,Delivery upto site,,368,56,280,0,0,0,280,0,0,0,,,,2013-01-21 08:00,2013-02-24 16:00,,2012-12-08 08:00,2013-01-09 16:00,2012-12-08 08:00,2013-01-09 16:00,2012-12-08 08:00,2013-01-09 16:00,,2013-01-21 08:00,2013-02-24 16:00,,PT_Normal,,,,,6ShuddvvVkmAy62/KWYVDg,Ed1rw6pVGkqfXjRfFT7JpQ,,,N,0,0,,,2012-06-25 15:13,2012-07-16 15:38,nour,admin
276,149103,5725,23823,6841,1,100,N,N,N,CP_Drtn,TT_Task,DT_FixedDUR2,RV_OK,TK_Complete,4229PFI30,Receive revised commercial offers,,,,0,0,0,0,40,0,0,0,,2012-05-03 00:00,2012-05-09 00:00,2012-08-26 08:00,2012-08-26 08:00,,2012-06-30 00:00,2012-06-30 00:00,,,2012-04-29 08:00,2012-05-03 16:00,,,,,PT_Normal,,,,,JjeSsyZs9E2QAnfvu7MA2g,AYPNiDXaKE6RLh7mqlxUcQ,,,N,0,0,,,2012-06-25 15:13,2012-07-16 15:38,nour,admin
277,149104,5725,23823,6841,1,0,N,N,N,CP_Drtn,TT_Task,DT_FixedDUR2,RV_OK,TK_Active,4229PFI50,Client approval on bid committee reccomendation,,280,0,8,0,0,0,16,0,0,0,,2012-06-19 00:00,,2012-08-26 08:00,2012-08-26 16:00,,2012-07-01 08:00,2012-07-01 16:00,2012-07-01 08:00,2012-07-01 16:00,2012-07-15 08:00,2012-07-16 16:00,,2012-08-26 08:00,2012-08-26 16:00,,PT_Normal,,,,,KOo1gwqC+kmae8GWhc8IBA,okMlSxQPlUu8ymqN/KtiYQ,,,N,0,0,,,2012-06-25 15:13,2012-07-16 15:38,nour,admin
278,149105,5725,23823,6841,1,0,N,N,N,CP_Drtn,TT_Task,DT_FixedDUR2,RV_OK,TK_NotStart,4229PFI80,L.C issued by Gupco,,280,0,40,0,0,0,40,0,0,0,,,,2012-09-10 08:00,2012-09-16 16:00,,2012-07-16 08:00,2012-07-22 16:00,2012-07-16 08:00,2012-07-22 16:00,2012-07-16 08:00,2012-07-22 16:00,,2012-09-10 08:00,2012-09-16 16:00,,PT_Normal,,,,,mRrPRAoV50KhrgniWt6b8g,8XeEO//CcEKYVr5WUWm1nw,,,N,0,0,,,2012-06-25 15:13,2012-07-16 15:38,nour,admin
279,149106,5725,23823,6841,1,100,N,N,N,CP_Drtn,TT_Task,DT_FixedDUR2,RV_OK,TK_Complete,4229PFI10,Issue RFQ for Field Instrument,,,,0,0,0,0,8,0,0,0,,2011-12-13 00:00,2011-12-14 00:00,2012-08-26 08:00,2012-08-26 08:00,,2012-06-30 00:00,2012-06-30 00:00,,,2012-01-01 08:00,2012-01-01 16:00,,,,,PT_Normal,,,,,pYKWhwG+L0ittDkAlqzayA,PapX/E/5VEedYgMn9pW1WA,,,N,0,0,,,2012-06-25 15:13,2012-07-16 15:38,nour,admin
280,149107,5725,23823,6842,1,100,N,N,N,CP_Drtn,TT_Task,DT_FixedDUR2,RV_OK,TK_Complete,4229PFI20,Bidding for field Instrument,,,,0,0,0,0,168,0,0,0,,2011-12-15 00:00,2012-01-12 16:00,2012-08-26 08:00,2012-08-26 08:00,,2012-06-30 00:00,2012-06-30 00:00,,,2011-12-31 08:00,2012-01-28 16:00,,,,,PT_Normal,,,,,zy9ZNpDGq0SBXb3xId+AvQ,WAPraHdgpEiuGrgnPTRw+A,,,N,0,0,,,2012-06-25 15:13,2012-07-16 15:38,nour,admin
281,149108,5725,23823,6841,1,100,N,N,N,CP_Drtn,TT_Task,DT_FixedDUR2,RV_OK,TK_Complete,4229PFI40,commercial evaluation & bid committee for field Instrument,,,,0,0,0,0,80,0,0,0,,2012-05-10 00:00,2012-06-03 00:00,2012-08-26 08:00,2012-08-26 08:00,,2012-06-30 00:00,2012-06-30 00:00,,,2012-07-01 08:00,2012-07-12 16:00,,,,,PT_Normal,,,,,xJzbtj8/eUCWIWf8siNcZw,e/V43NRVMUS133iTAw1J2Q,,,N,0,0,,,2012-06-25 15:13,2012-07-16 15:38,nour,admin
282,149109,5725,23824,6842,1,0,N,N,N,CP_Drtn,TT_Task,DT_FixedDUR2,RV_OK,TK_Active,4229PCV90,Fabrication upto R.F.S,,936,0,560,0,0,0,504,0,0,0,,2012-06-07 00:00,,2012-11-12 08:00,2013-01-20 16:00,2012-09-25 16:00,2012-07-06 08:00,2012-09-25 16:00,2012-07-06 08:00,2012-09-25 16:00,2012-07-13 08:00,2012-09-25 16:00,,2012-11-12 08:00,2013-01-20 16:00,,PT_Normal,,,,,fQKvSCt7vECAZJCnfoSCDw,7UQ9XmTabEqxyA7/76n9MA,,,N,0,0,,,2012-06-25 15:13,2012-07-16 15:38,nour,admin
283,149110,5725,23824,6843,1,0,N,N,N,CP_Drtn,TT_Task,DT_FixedDUR2,RV_OK,TK_NotStart,4229PCV100,Delivery upto site,,952,952,280,0,0,0,280,0,0,0,,,,2013-01-21 08:00,2013-02-24 16:00,,2012-09-26 08:00,2012-10-30 16:00,2012-09-26 08:00,2012-10-30 16:00,2012-09-26 08:00,2012-10-30 16:00,,2013-01-21 08:00,2013-02-24 16:00,,PT_Normal,,,,,Ga55P5CMD0OYZDwbk4rifA,Ed1rw6pVGkqfXjRfFT7JpQ,,,N,0,0,,,2012-06-25 15:13,2012-07-16 15:38,nour,admin
284,149111,5725,23824,6841,1,100,N,N,N,CP_Drtn,TT_Task,DT_FixedDUR2,RV_OK,TK_Complete,4229PCV30,Receive revised commercial offers,,,,0,0,0,0,40,0,0,0,,2012-04-10 00:00,2012-04-26 00:00,2012-08-05 08:00,2012-08-05 08:00,,2012-06-30 00:00,2012-06-30 00:00,,,2012-04-01 08:00,2012-04-05 16:00,,,,,PT_Normal,,,,,FLosL3SPUkCVwTNnBA4vGg,AYPNiDXaKE6RLh7mqlxUcQ,,,N,0,0,,,2012-06-25 15:13,2012-07-16 15:38,nour,admin
285,149112,5725,23824,6841,1,100,N,N,N,CP_Drtn,TT_Task,DT_FixedDUR2,RV_OK,TK_Complete,4229PCV50,Client approval on bid committee reccomendation,,,,0,0,0,0,16,0,0,0,,2012-05-13 08:00,2012-05-17 00:00,2012-08-05 08:00,2012-08-05 08:00,,2012-06-30 00:00,2012-06-30 00:00,,,2012-05-13 08:00,2012-05-14 16:00,,,,,PT_Normal,,,,,iZJYOqAwOEinHKzpeHcLIQ,okMlSxQPlUu8ymqN/KtiYQ,,,N,0,0,,,2012-06-25 15:13,2012-07-16 15:38,nour,admin
286,149113,5725,23824,6841,1,0,N,N,N,CP_Drtn,TT_Task,DT_FixedDUR2,RV_OK,TK_NotStart,4229PCV80,L.C issued by Gupco,,648,0,40,0,0,0,40,0,0,0,,,,2012-11-05 08:00,2012-11-11 16:00,,2012-07-01 08:00,2012-07-05 16:00,2012-07-01 08:00,2012-07-05 16:00,2012-07-01 08:00,2012-07-05 16:00,,2012-11-05 08:00,2012-11-11 16:00,,PT_Normal,,,,,Tned/OqNsECg9iLiun3ehw,8XeEO//CcEKYVr5WUWm1nw,,,N,0,0,,,2012-06-25 15:13,2012-07-16 15:38,nour,admin
287,149114,5725,23824,6841,1,100,N,N,N,CP_Drtn,TT_Task,DT_FixedDUR2,RV_OK,TK_Complete,4229PCV10,Issue RFQ for Choke valves,,,,0,0,0,0,16,0,0,0,,2011-11-24 00:00,2011-11-24 00:00,2012-08-05 08:00,2012-08-05 08:00,,2012-06-30 00:00,2012-06-30 00:00,,,2011-12-04 08:00,2011-12-05 16:00,,,,,PT_Normal,,,,,ZruDfxUoF0KXIPUPTdtNtQ,PapX/E/5VEedYgMn9pW1WA,,,N,0,0,,,2012-06-25 15:13,2012-07-16 15:38,nour,admin
288,149115,5725,23824,6842,1,100,N,N,N,CP_Drtn,TT_Task,DT_FixedDUR2,RV_OK,TK_Complete,4229PCV20,Bidding for Choke valves,,,,0,0,0,0,240,0,0,0,,2011-11-25 00:00,2011-12-26 00:00,2012-08-05 08:00,2012-08-05 08:00,,2012-06-30 00:00,2012-06-30 00:00,,,2011-12-06 08:00,2012-01-16 16:00,,,,,PT_Normal,,,,,66TIy+Y8UkKUW6qzwkjvZg,WAPraHdgpEiuGrgnPTRw+A,,,N,0,0,,,2012-06-25 15:13,2012-07-16 15:38,nour,admin
289,149116,5725,23824,6841,1,100,N,N,N,CP_Drtn,TT_Task,DT_FixedDUR2,RV_OK,TK_Complete,4229PCV40,commercial evaluation & bid committee for Choke valves,,,,0,0,0,0,80,0,0,0,,2012-04-29 08:00,2012-05-13 16:00,2012-08-05 08:00,2012-08-05 08:00,,2012-06-30 00:00,2012-06-30 00:00,,,2012-04-29 08:00,2012-05-10 16:00,,,,,PT_Normal,,,,,8fqYbvt/B0GwB0QAuh0LDA,e/V43NRVMUS133iTAw1J2Q,,,N,0,0,,,2012-06-25 15:13,2012-07-16 15:38,nour,admin
290,149117,5725,23824,6841,1,100,N,N,N,CP_Drtn,TT_Task,DT_FixedDUR2,RV_OK,TK_Complete,4229PCV60,F.O.C for Choke valves,,,,0,0,0,0,24,0,0,0,,2012-05-17 00:00,2012-06-04 00:00,2012-08-05 08:00,2012-08-05 08:00,,2012-06-30 00:00,2012-06-30 00:00,,,2012-04-29 08:00,2012-05-01 16:00,,,,,PT_Normal,,,,,Khg1DDKAu0e9JbTe5R3seQ,4AXOah8HAEeGpjijEBPUrg,,,N,0,0,,,2012-06-25 15:13,2012-07-16 15:38,nour,admin
291,149118,5725,23824,6841,1,100,N,N,N,CP_Drtn,TT_Task,DT_FixedDUR2,RV_OK,TK_Complete,4229PCV70,P.O for Choke valves,,,,0,0,0,0,40,0,0,0,,2012-06-05 00:00,2012-06-06 00:00,2012-11-05 08:00,2012-11-05 08:00,,2012-06-30 00:00,2012-06-30 00:00,,,2012-07-01 08:00,2012-07-05 16:00,,,,,PT_Normal,,,,,TPIiZRv9v0mVM8pc+qFaFQ,AvajsHLxjEGyyQn6kYuXCQ,,,N,0,0,,,2012-06-25 15:13,2012-07-16 15:38,nour,admin
292,149119,5725,23825,6842,1,0,N,N,N,CP_Drtn,TT_Task,DT_FixedDUR2,RV_OK,TK_Active,4229PRV90,Fabrication upto R.F.S,,288,0,1048,0,0,0,1024,0,0,0,,2012-06-06 00:00,,2012-08-05 08:00,2012-12-25 16:00,2012-11-19 16:00,2012-06-30 08:00,2012-11-19 16:00,2012-06-30 08:00,2012-11-19 16:00,2012-07-03 08:00,2012-11-19 16:00,,2012-08-05 08:00,2012-12-25 16:00,,PT_Normal,,,,,jLOKEQwbBkmL1uOyFqW4KQ,7UQ9XmTabEqxyA7/76n9MA,,,N,0,0,,,2012-06-25 15:13,2012-07-16 15:38,nour,admin
293,149120,5725,23825,6843,1,0,N,N,N,CP_Drtn,TT_Task,DT_FixedDUR2,RV_OK,TK_NotStart,4229PRV100,Delivery upto site,,552,240,240,0,0,0,240,0,0,0,,,,2013-01-26 08:00,2013-02-24 16:00,,2012-11-20 08:00,2012-12-19 16:00,2012-11-20 08:00,2012-12-19 16:00,2012-11-20 08:00,2012-12-19 16:00,,2013-01-26 08:00,2013-02-24 16:00,,PT_Normal,,,,,BL+rsOw7X0m2q3c1SUMi1g,Ed1rw6pVGkqfXjRfFT7JpQ,,,N,0,0,,,2012-06-25 15:13,2012-07-16 15:38,nour,admin
294,149121,5725,23825,6841,1,100,N,N,N,CP_Drtn,TT_Task,DT_FixedDUR2,RV_OK,TK_Complete,4229PRV30,Receive revised commercial offers,,,,0,0,0,0,40,0,0,0,,2012-04-04 00:00,2012-04-15 00:00,2012-08-05 08:00,2012-08-05 08:00,,2012-06-30 00:00,2012-06-30 00:00,,,2012-04-01 08:00,2012-04-05 16:00,,,,,PT_Normal,,,,,vHUVt6FWcku9J7YIe7B4+g,AYPNiDXaKE6RLh7mqlxUcQ,,,N,0,0,,,2012-06-25 15:13,2012-07-16 15:38,nour,admin
295,149122,5725,23825,6841,1,0,N,N,N,CP_Drtn,TT_Task,DT_FixedDUR2,RV_OK,TK_NotStart,4229PRV80,L.C issued by Gupco,,1264,1264,24,0,0,0,24,0,0,0,,,,2013-02-20 08:00,2013-02-24 16:00,,2012-07-01 08:00,2012-07-03 16:00,2012-07-01 08:00,2012-07-03 16:00,2012-07-01 08:00,2012-07-03 16:00,,2013-02-20 08:00,2013-02-24 16:00,,PT_Normal,,,,,j46uP2OmVEO3mjNtzg2bag,8XeEO//CcEKYVr5WUWm1nw,,,N,0,0,,,2012-06-25 15:13,2012-07-16 15:38,nour,admin
296,149123,5725,23825,6841,1,100,N,N,N,CP_Drtn,TT_Task,DT_FixedDUR2,RV_OK,TK_Complete,4229PRV10,Issue RFQ for pressure regulator valves,,,,0,0,0,0,16,0,0,0,,2011-10-06 00:00,2011-10-09 00:00,2012-08-05 08:00,2012-08-05 08:00,,2012-06-30 00:00,2012-06-30 00:00,,,2011-10-09 08:48,2011-10-11 08:48,,,,,PT_Normal,,,,,nPt//DcXA0qbSexSZha52g,PapX/E/5VEedYgMn9pW1WA,,,N,0,0,,,2012-06-25 15:13,2012-07-16 15:38,nour,admin
297,149124,5725,23825,6842,1,100,N,N,N,CP_Drtn,TT_Task,DT_FixedDUR2,RV_OK,TK_Complete,4229PRV20,Bidding for pressure regulator valves,,,,0,0,0,0,248,0,0,0,,2011-10-10 00:00,2012-02-01 00:00,2012-08-05 08:00,2012-08-05 08:00,,2012-06-30 00:00,2012-06-30 00:00,,,2011-10-11 08:48,2011-11-11 08:48,,,,,PT_Normal,,,,,zcj/53csrUmSQjpttpq1Ig,WAPraHdgpEiuGrgnPTRw+A,,,N,0,0,,,2012-06-25 15:13,2012-07-16 15:38,nour,admin
298,149125,5725,23825,6841,1,100,N,N,N,CP_Drtn,TT_Task,DT_FixedDUR2,RV_OK,TK_Complete,4229PRV40,Commercial evaluation & bid committee for pressure regulator valves,,,,0,0,0,0,80,0,0,0,,2012-04-17 00:00,2012-05-10 16:00,2012-08-05 08:00,2012-08-05 08:00,,2012-06-30 00:00,2012-06-30 00:00,,,2012-04-29 08:00,2012-05-10 16:00,,,,,PT_Normal,,,,,v/atnR/fkEm441hagZDr0Q,e/V43NRVMUS133iTAw1J2Q,,,N,0,0,,,2012-06-25 15:13,2012-07-16 15:38,nour,admin
299,149126,5725,23825,6841,1,100,N,N,N,CP_Drtn,TT_Task,DT_FixedDUR2,RV_OK,TK_Complete,4229PRV60,F.O.C for pressure regulator valves,,,,0,0,0,0,16,0,0,0,,2012-05-15 08:00,2012-06-04 00:00,2012-08-05 08:00,2012-08-05 08:00,,2012-06-30 00:00,2012-06-30 00:00,,,2012-05-15 08:00,2012-05-16 16:00,,,,,PT_Normal,,,,,3tFc7FQTqECAXmDEpvdBXg,4AXOah8HAEeGpjijEBPUrg,,,N,0,0,,,2012-06-25 15:13,2012-07-16 15:38,nour,admin
300,149127,5725,23825,6841,1,100,N,N,N,CP_Drtn,TT_Task,DT_FixedDUR2,RV_OK,TK_Complete,4229PRV70,P.O for pressure regulator valves,,,,0,0,0,0,16,0,0,0,,2012-06-05 00:00,2012-06-05 00:00,2012-08-05 08:00,2012-08-05 08:00,,2012-06-30 00:00,2012-06-30 00:00,,,2012-07-01 08:00,2012-07-02 16:00,,,,,PT_Normal,,,,,7UnJoe2/mEm8H4lkzVck6A,AvajsHLxjEGyyQn6kYuXCQ,,,N,0,0,,,2012-06-25 15:13,2012-07-16 15:38,nour,admin
301,149128,5725,23825,6841,1,0,N,N,N,CP_Drtn,TT_LOE,DT_FixedDUR2,RV_OK,TK_Active,A1470,MRP for  pressure regulator valves,,4776,0,0,0,0,0,40,0,0,0,,2012-05-27 00:00,,2014-11-02 16:00,2014-11-02 16:00,,2012-07-05 08:00,2012-07-05 08:00,2012-07-05 08:00,2012-07-05 08:00,2012-06-03 08:00,2012-06-07 16:00,,2014-11-02 16:00,2014-11-02 16:00,,PT_Normal,,,,,rXU1dHtBSUu01hCF06qiSQ,AwbIFp5LAk2PiImMFdUHFg,,,N,0,0,,,2012-07-16 15:09,2012-07-16 15:09,admin,admin
302,149129,5725,23826,6841,1,100,N,N,N,CP_Drtn,TT_Task,DT_FixedDUR2,RV_OK,TK_Complete,4229PCI30,Receive revised commercial offers,,,,0,0,0,0,40,0,0,0,,2012-02-05 00:00,2012-02-27 00:00,2012-07-29 08:00,2012-07-29 08:00,,2012-06-30 00:00,2012-06-30 00:00,,,2012-03-25 08:00,2012-03-29 16:00,,,,,PT_Normal,,,,,gSs5QR30mECCZXj3vXolbw,,,,N,0,0,,,2012-06-25 15:13,2012-07-16 15:38,nour,admin
303,149130,5725,23826,6841,1,0,N,N,N,CP_Drtn,TT_Task,DT_FixedDUR2,RV_OK,TK_NotStart,4229PCI80,L.C issued by Gupco,,160,0,40,0,0,0,40,0,0,0,,,,2012-07-29 08:00,2012-08-02 16:00,,2012-07-01 08:00,2012-07-05 16:00,2012-07-01 08:00,2012-07-05 16:00,2012-07-01 08:00,2012-07-05 16:00,,2012-07-29 08:00,2012-08-02 16:00,,PT_Normal,,,,,etoLyqUL2UCHyIj+RVJ9Bw,,,,N,0,0,,,2012-06-25 15:13,2012-07-16 15:38,nour,admin
304,149131,5725,23826,6842,1,0,N,N,N,CP_Drtn,TT_Task,DT_FixedDUR2,RV_OK,TK_Active,4229PCI90,Fabrication upto R.F.S,,240,0,256,0,0,0,1120,0,0,0,,2012-03-21 00:00,,2012-08-05 08:00,2012-09-17 16:00,2012-08-06 16:00,2012-07-06 08:00,2012-08-06 16:00,2012-07-06 08:00,2012-08-06 16:00,2012-04-06 08:00,2012-09-04 16:00,,2012-08-05 08:00,2012-09-17 16:00,,PT_Normal,,,,,ezRL92AH8EyYVO/4ya6Bag,,,,N,0,0,,,2012-06-25 15:13,2012-07-16 15:38,nour,admin
305,149132,5725,23826,6843,1,0,N,N,N,CP_Drtn,TT_Task,DT_FixedDUR2,RV_OK,TK_NotStart,4229PCI100,Delivery upto site,,1272,1272,360,0,0,0,360,0,0,0,,,,2013-01-11 08:00,2013-02-24 16:00,,2012-08-07 08:00,2012-09-20 16:00,2012-08-07 08:00,2012-09-20 16:00,2012-08-07 08:00,2012-09-20 16:00,,2013-01-11 08:00,2013-02-24 16:00,,PT_Normal,,,,,MWnV0X2hHEOBwAkhlhepMw,,,,N,0,0,,,2012-06-25 15:13,2012-07-16 15:38,nour,admin
306,149133,5725,23826,6841,1,100,N,N,N,CP_Drtn,TT_Task,DT_FixedDUR2,RV_OK,TK_Complete,4229PCI10,Issue RFQ for Chemical injection Pkg.,,,,0,0,0,0,16,0,0,0,,2011-08-24 08:00,2011-08-25 16:00,2012-07-29 08:00,2012-07-29 08:00,,2012-06-30 00:00,2012-06-30 00:00,,,2011-08-24 08:00,2011-08-25 16:00,,,,,PT_Normal,,,,,x7dbt+BBkEO8m1OLNDZwIA,,,,N,0,0,,,2012-06-25 15:13,2012-07-16 15:38,nour,admin
307,149134,5725,23826,6842,1,100,N,N,N,CP_Drtn,TT_Task,DT_FixedDUR2,RV_OK,TK_Complete,4229PCI20,Bidding for Chemical injection Pkg.,,,,0,0,0,0,192,0,0,0,,2011-08-26 08:00,2011-09-19 00:00,2012-07-29 08:00,2012-07-29 08:00,,2012-06-30 00:00,2012-06-30 00:00,,,2011-08-26 08:00,2011-09-18 16:00,,,,,PT_Normal,,,,,5a1dk6buBUGDWxpMAXZO7A,,,,N,0,0,,,2012-06-25 15:13,2012-07-16 15:38,nour,admin
308,149135,5725,23826,6841,1,100,N,N,N,CP_Drtn,TT_Task,DT_FixedDUR2,RV_OK,TK_Complete,4229PCI40,Commercial evaluation & bid committee for Chemical injection Pkg.,,,,0,0,0,0,80,0,0,0,,2012-02-28 00:00,2012-03-06 16:00,2012-07-29 08:00,2012-07-29 08:00,,2012-06-30 00:00,2012-06-30 00:00,,,2012-03-04 08:00,2012-03-15 16:00,,,,,PT_Normal,,,,,0Zco2RuG70uxfsXr0jbynw,,,,N,0,0,,,2012-06-25 15:13,2012-07-16 15:38,nour,admin
309,149136,5725,23826,6841,1,100,N,N,N,CP_Drtn,TT_Task,DT_FixedDUR2,RV_OK,TK_Complete,4229PCI60,F.O.C for Chemical injection Pkg.,,,,0,0,0,0,24,0,0,0,,2012-03-07 00:00,2012-03-20 00:00,2012-07-29 08:00,2012-07-29 08:00,,2012-06-30 00:00,2012-06-30 00:00,,,2012-04-01 08:00,2012-04-03 16:00,,,,,PT_Normal,,,,,NzaTJ2ipHEGKz1VdVzGz0Q,,,,N,0,0,,,2012-06-25 15:13,2012-07-16 15:38,nour,admin
310,149137,5725,23826,6841,1,100,N,N,N,CP_Drtn,TT_Task,DT_FixedDUR2,RV_OK,TK_Complete,4229PCI70,P.O for Chemical injection Pkg.,,,,0,0,0,0,40,0,0,0,,2012-04-08 00:00,2012-04-08 00:00,2012-07-29 08:00,2012-07-29 08:00,,2012-06-30 00:00,2012-06-30 00:00,,,2012-04-01 08:00,2012-04-05 16:00,,,,,PT_Normal,,,,,YoReOAVFYEGU6kUs/CJQlA,,,,N,0,0,,,2012-06-25 15:13,2012-07-16 15:38,nour,admin
311,149138,5725,23792,6841,1,100,N,N,N,CP_Drtn,TT_Task,DT_FixedDUR2,RV_OK,TK_Complete,4229GM70,P/L Installation package- Approval,,,,0,0,0,0,200,0,0,0,,2011-09-28 08:00,2011-11-02 16:00,2013-02-24 16:00,2013-02-24 16:00,,2012-06-30 00:00,2012-06-30 00:00,,,2011-09-28 08:00,2011-11-02 16:00,,,,,PT_Normal,,,,,6ELvaC9FfUGKb8xIGqcxDw,,,,N,0,0,,,2012-06-25 15:13,2012-07-16 15:38,nour,admin
312,149139,5725,23792,6841,1,100,N,N,N,CP_Drtn,TT_Task,DT_FixedDUR2,RV_OK,TK_Complete,4229GM90,P/L  Installation package- Final,,,,0,0,0,0,160,0,0,0,,2011-11-24 08:00,2011-11-29 00:00,2013-02-24 16:00,2013-02-24 16:00,,2012-06-30 00:00,2012-06-30 00:00,,,2011-11-24 08:00,2011-12-21 16:00,,,,,PT_Normal,,,,,aatUmgVlA02ARN5elDk0Bw,,,,N,0,0,,,2012-06-25 15:13,2012-07-16 15:38,nour,admin
313,149140,5725,23792,6841,1,100,N,N,N,CP_Drtn,TT_Task,DT_FixedDUR2,RV_OK,TK_Complete,4229GM50,Platform Installation package- Approval,,,,0,0,0,0,160,0,0,0,,2011-08-15 00:00,2011-10-23 00:00,2013-02-24 16:00,2013-02-24 16:00,,2012-06-30 00:00,2012-06-30 00:00,,,2011-10-17 08:00,2011-11-20 16:00,,,,,PT_Normal,,,,,o+5Hi/+BX0uI/2lj5ewfkA,,,,N,0,0,,,2012-06-25 15:13,2012-07-16 15:38,nour,admin
314,149141,5725,23792,6841,1,100,N,N,N,CP_Drtn,TT_Task,DT_FixedDUR2,RV_OK,TK_Complete,4229GM80,Platform Installation package- Final,,,,0,0,0,0,160,0,0,0,,2011-10-23 00:00,2011-10-24 00:00,2013-02-24 16:00,2013-02-24 16:00,,2012-06-30 00:00,2012-06-30 00:00,,,2011-11-13 08:00,2011-12-08 16:00,,,,,PT_Normal,,,,,TgE/mf5lBEmUG85/XV7m+A,,,,N,0,0,,,2012-06-25 15:13,2012-07-16 15:38,nour,admin
315,149142,5725,23792,6841,1,0,N,N,N,CP_Drtn,TT_Task,DT_FixedDUR2,RV_OK,TK_NotStart,4229GM130,Internal Design Review meeting,,1272,984,16,0,0,0,16,0,0,0,,,,2013-02-21 08:00,2013-02-24 16:00,,2012-07-01 08:00,2012-07-02 16:00,2012-07-01 08:00,2012-07-02 16:00,2012-07-01 08:00,2012-07-02 16:00,,2013-02-21 08:00,2013-02-24 16:00,,PT_Normal,,,,,k0T06Rc2kE2WfQMIwYX34Q,,,,N,0,0,,,2012-06-25 15:13,2012-07-16 15:38,nour,admin
316,149143,5725,23792,6841,1,100,N,N,N,CP_Drtn,TT_Task,DT_FixedDUR2,RV_OK,TK_Complete,4229GM20,Project Design basis IFA,,,,0,0,0,0,80,0,0,0,,2011-09-29 08:00,2011-10-23 16:00,2013-02-24 16:00,2013-02-24 16:00,,2012-06-30 00:00,2012-06-30 00:00,,,2011-09-29 08:00,2011-10-13 16:00,,,,,PT_Normal,,,,,E3ZX2CmgHUafWG/9ob4lig,q7j6wPJqRLqWzOiikNoPRg,,,N,0,0,,,2012-06-25 15:13,2012-07-16 15:38,nour,admin
317,149144,5725,23792,6841,1,100,N,N,N,CP_Drtn,TT_Task,DT_FixedDUR2,RV_OK,TK_Complete,4229GM30,Platform fabrication package- Approval,,,,0,0,0,0,336,0,0,0,,2011-08-15 08:00,2011-10-23 00:00,2013-02-24 16:00,2013-02-24 16:00,,2012-06-30 00:00,2012-06-30 00:00,,,2011-08-15 08:00,2011-10-16 16:00,,,,,PT_Normal,,,,,uKhIWUV6HE6UUVwrafUx6A,,,,N,0,0,,,2012-06-25 15:13,2012-07-16 15:38,nour,admin
318,149145,5725,23792,6841,1,100,N,N,N,CP_Drtn,TT_Task,DT_FixedDUR2,RV_OK,TK_Complete,4229GM60,Platform fabrication  package- Final,,,,0,0,0,0,120,0,0,0,,2011-10-23 08:00,2011-10-24 00:00,2013-02-24 16:00,2013-02-24 16:00,,2012-06-30 00:00,2012-06-30 00:00,,,2011-10-23 08:00,2011-11-17 16:00,,,,,PT_Normal,,,,,hDTlSRy9g0WIeY7VINvonw,,,,N,0,0,,,2012-06-25 15:13,2012-07-16 15:38,nour,admin
319,149146,5725,23792,6841,1,100,N,N,N,CP_Drtn,TT_Task,DT_FixedDUR2,RV_OK,TK_Complete,4229GM150,Project quality assurance plan,,,,0,0,0,0,160,0,0,0,,2011-10-17 00:00,2011-11-13 00:00,2013-02-24 16:00,2013-02-24 16:00,,2012-06-30 00:00,2012-06-30 00:00,,,2011-10-30 08:00,2011-12-01 16:00,,,,,PT_Normal,,,,,fIMirzsws0eKFswkLD4uCg,,,,N,0,0,,,2012-06-25 15:13,2012-07-16 15:38,nour,admin
320,149147,5725,23793,6843,0,0,N,N,N,CP_Drtn,TT_FinMile,DT_FixedDrtn,RV_OK,TK_NotStart,4229GM120,Enppi scope completion,,0,0,0,0,0,0,0,0,0,0,,,,2013-02-24 16:00,2013-02-24 16:00,,2013-02-24 16:00,2013-02-24 16:00,2013-02-24 16:00,2013-02-24 16:00,2013-02-24 16:00,2013-02-24 16:00,,2013-02-24 16:00,2013-02-24 16:00,,PT_Normal,,,1,6,z/J9pN0D30KEFjJv9sdUTA,BiEujtK1VU2+qG7Mqg1nkw,,,Y,0,0,,,2012-06-25 15:13,2012-07-16 15:38,nour,admin
321,149148,5725,23793,6841,0,100,N,N,N,CP_Drtn,TT_Mile,DT_FixedDrtn,RV_OK,TK_Complete,4229GM10,Project Coming into force / Kick-off meeting,,,,0,0,0,0,0,0,0,0,,2011-08-15 08:00,2011-08-15 08:00,,,,,,,,2011-08-15 08:00,2011-08-15 08:00,,,,,PT_Normal,,,,,YJsKga51WkCwP/oVyg8QPg,cEclb7XgSZ2M9TMglt0yjw,,,N,0,0,,,2012-06-25 15:13,2012-07-16 15:38,nour,admin
322,149149,5725,23793,6841,0,0,N,N,N,CP_Drtn,TT_FinMile,DT_FixedDrtn,RV_OK,TK_NotStart,4229GM100,Engineering completion,,288,288,0,0,0,0,0,0,0,0,,,,2013-02-24 16:00,2013-02-24 16:00,,2013-01-03 16:00,2013-01-03 16:00,2013-01-03 16:00,2013-01-03 16:00,2013-01-03 16:00,2013-01-03 16:00,,2013-02-24 16:00,2013-02-24 16:00,,PT_Normal,,,,,EW1jwCyBXkO5UM9JKzzkWg,,,,N,0,0,,,2012-06-25 15:13,2012-07-16 15:38,nour,admin
323,149150,5725,23793,6841,0,100,N,N,N,CP_Drtn,TT_FinMile,DT_FixedDrtn,RV_OK,TK_Complete,4229GM140,Change order 1 approval,,,,0,0,0,0,0,0,0,0,,2011-10-16 16:00,2011-10-16 16:00,,,,,,,,2011-10-16 16:00,2011-10-16 16:00,,,,,PT_Normal,,,,,0/b/1+y3P0mL0vlqorHK0g,,,,N,0,0,,,2012-06-25 15:13,2012-07-16 15:38,nour,admin
324,149151,5725,23793,6843,0,0,N,N,N,CP_Drtn,TT_FinMile,DT_FixedDrtn,RV_OK,TK_NotStart,4229GM110,Material delivered at site- except additional shutdown valve (offshore installation),,312,312,0,0,0,0,0,0,0,0,,,,2013-02-24 16:00,2013-02-24 16:00,,2013-01-16 16:00,2013-01-16 16:00,2013-01-16 16:00,2013-01-16 16:00,2013-01-16 16:00,2013-01-16 16:00,,2013-02-24 16:00,2013-02-24 16:00,,PT_Normal,,,,,NhS+me6MvkGTuklz+dcZVA,p1tAFd/EwEWZbX7CxHkw5g,,,N,0,0,,,2012-06-25 15:13,2012-07-16 15:38,nour,admin
325,149152,5725,23885,6841,1,100,N,N,N,CP_Drtn,TT_Task,DT_FixedDUR2,RV_OK,TK_Complete,A1620,Riser impact risk assessment study -IFA,,,,0,0,0,0,8,0,0,0,,2012-02-15 00:00,2012-02-27 00:00,2014-11-02 16:00,2014-11-02 16:00,,2012-07-05 00:00,2012-07-05 00:00,,,2012-04-29 08:00,2012-04-29 16:00,,,,,PT_Normal,,,,,hOjfvIxp8USi5ayHkH62xA,,,,N,0,0,,,2012-07-16 15:09,2012-07-16 15:09,admin,admin
326,149153,5725,23885,6841,1,100,N,N,N,CP_Drtn,TT_Task,DT_FixedDUR2,RV_OK,TK_Complete,A1630,Final Riser impact  risk assessment study,,,,0,0,0,0,40,0,0,0,,2012-02-28 00:00,2012-05-10 00:00,2014-11-02 16:00,2014-11-02 16:00,,2012-07-05 00:00,2012-07-05 00:00,,,2012-04-29 08:00,2012-05-03 16:00,,,,,PT_Normal,,,,,khDceyf7fEOHNAd/BpDwgg,,,,N,0,0,,,2012-07-16 15:09,2012-07-16 15:09,admin,admin
327,149154,5725,23865,6841,1,0,N,N,N,CP_Drtn,TT_Task,DT_FixedDUR2,RV_OK,TK_NotStart,4229ELP500,Interconnection wiring diagram-Construction,,976,0,80,0,0,0,80,0,0,0,,,,2013-02-04 08:00,2013-02-17 16:00,,2012-08-02 08:00,2012-08-15 16:00,2012-08-02 08:00,2012-08-15 16:00,2012-08-02 08:00,2012-08-15 16:00,,2013-02-04 08:00,2013-02-17 16:00,,PT_Normal,,,,,fyzbJgiK2E+7oXkr7Xf6+A,,,,N,0,0,,,2012-06-25 15:13,2012-07-16 15:38,nour,admin
328,149155,5725,23865,6841,1,100,N,N,N,CP_Drtn,TT_Task,DT_FixedDUR2,RV_OK,TK_Complete,4229ELP510,F&G installation details -Approval,,,,0,0,0,0,80,0,0,0,,2011-11-13 00:00,2012-02-15 00:00,2013-02-18 08:00,2013-02-18 08:00,,2012-06-30 00:00,2012-06-30 00:00,,,2011-12-04 08:00,2011-12-15 16:00,,,,,PT_Normal,,,,,5Yy2QjIpA0ODfMvIe2SOrA,,,,N,0,0,,,2012-06-25 15:13,2012-07-16 15:38,nour,admin
329,149156,5725,23865,6841,1,100,N,N,N,CP_Drtn,TT_Task,DT_FixedDUR2,RV_OK,TK_Complete,4229ELP520,F&G installation details -Design,,,,0,0,0,0,80,0,0,0,,2012-02-26 00:00,2012-06-03 00:00,2013-02-18 08:00,2013-02-18 08:00,,2012-06-30 00:00,2012-06-30 00:00,,,2012-03-04 08:00,2012-03-15 16:00,,,,,PT_Normal,,,,,UiMfO4qGIUqjE0ZQLTFVGw,,,,N,0,0,,,2012-06-25 15:13,2012-07-16 15:38,nour,admin
330,149157,5725,23865,6841,1,0,N,N,N,CP_Drtn,TT_Task,DT_FixedDUR2,RV_OK,TK_NotStart,4229ELP530,F&G installation details -Construction,,976,688,40,0,0,0,40,0,0,0,,,,2013-02-18 08:00,2013-02-24 16:00,,2012-08-16 08:00,2012-08-29 16:00,2012-08-16 08:00,2012-08-29 16:00,2012-08-16 08:00,2012-08-29 16:00,,2013-02-18 08:00,2013-02-24 16:00,,PT_Normal,,,,,fYB6JPnhlEalw1fWszvwlw,,,,N,0,0,,,2012-06-25 15:13,2012-07-16 15:38,nour,admin
331,149158,5725,23865,6841,1,100,N,N,N,CP_Drtn,TT_Task,DT_FixedDUR2,RV_OK,TK_Complete,4229ELP70,F& G detection layout -Approval,,,,0,0,0,0,80,0,0,0,,2011-11-22 00:00,2011-12-28 00:00,2013-02-18 08:00,2013-02-18 08:00,,2012-06-30 00:00,2012-06-30 00:00,,,2011-12-04 08:00,2011-12-15 16:00,,,,,PT_Normal,,,,,Bsl1fuceUEGMtrkcHkSiDw,,,,N,0,0,,,2012-06-25 15:13,2012-07-16 15:38,nour,admin
332,149159,5725,23865,6841,1,100,N,N,N,CP_Drtn,TT_Task,DT_FixedDUR2,RV_OK,TK_Complete,4229ELP220,F& G detection layout -Design,,,,0,0,0,0,120,0,0,0,,2012-01-19 00:00,2012-02-27 00:00,2013-02-18 08:00,2013-02-18 08:00,,2012-06-30 00:00,2012-06-30 00:00,,,2012-03-04 08:00,2012-03-22 16:00,,,,,PT_Normal,,,,,sEx6spdPkkCHnMQQO3dYGw,,,,N,0,0,,,2012-06-25 15:13,2012-07-16 15:38,nour,admin
333,149160,5725,23865,6841,1,0,N,N,N,CP_Drtn,TT_Task,DT_FixedDUR2,RV_OK,TK_NotStart,4229ELP360,F& G detection layout -Construction,,1016,40,120,0,0,0,120,0,0,0,,,,2013-01-28 08:00,2013-02-17 16:00,,2012-07-19 08:00,2012-08-08 16:00,2012-07-19 08:00,2012-08-08 16:00,2012-07-19 08:00,2012-08-08 16:00,,2013-01-28 08:00,2013-02-17 16:00,,PT_Normal,,,,,sb3Knovr2kKkmxZ/cpqp+w,,,,N,0,0,,,2012-06-25 15:13,2012-07-16 15:38,nour,admin
334,149161,5725,23865,6841,1,100,N,N,N,CP_Drtn,TT_Task,DT_FixedDUR2,RV_OK,TK_Complete,4229ELP80,"Firefighting, Safety equipment & escape route layout-Approval",,,,0,0,0,0,80,0,0,0,,2011-11-22 00:00,2011-12-29 08:00,2013-02-18 08:00,2013-02-18 08:00,,2012-06-30 00:00,2012-06-30 00:00,,,2011-12-04 08:00,2011-12-15 16:00,,,,,PT_Normal,,,,,l8bYxgss7U6tuVRk2vRypw,,,,N,0,0,,,2012-06-25 15:13,2012-07-16 15:38,nour,admin
335,149162,5725,23865,6841,1,100,N,N,N,CP_Drtn,TT_Task,DT_FixedDUR2,RV_OK,TK_Complete,4229ELP230,"Fire fighting, Safety equipment & escape route layout-Design",,,,0,0,0,0,120,0,0,0,2012-01-01 00:00,2012-01-29 00:00,2012-01-29 00:00,2013-02-18 08:00,2013-02-18 08:00,,2012-06-30 00:00,2012-06-30 00:00,,,2012-03-04 08:00,2012-03-22 16:00,,,,CS_MSOA,PT_Normal,,,,,SVq+X/pcjE21nSrQfSaKRw,,,,N,0,0,,,2012-06-25 15:13,2012-07-16 15:38,nour,admin
336,149163,5725,23865,6841,1,0,N,N,N,CP_Drtn,TT_Task,DT_FixedDUR2,RV_OK,TK_NotStart,4229ELP380,"Fire fighting, Safety equipment & escape route layout-Construction",,976,0,80,0,0,0,80,0,0,0,,,,2013-01-21 08:00,2013-02-03 16:00,,2012-07-19 08:00,2012-08-01 16:00,2012-07-19 08:00,2012-08-01 16:00,2012-07-19 08:00,2012-08-01 16:00,,2013-01-21 08:00,2013-02-03 16:00,,PT_Normal,,,,,Z5STiGiQeUix8ajl82OAXA,,,,N,0,0,,,2012-06-25 15:13,2012-07-16 15:38,nour,admin
337,149164,5725,23865,6841,1,100,N,N,N,CP_Drtn,TT_Task,DT_FixedDUR2,RV_OK,TK_Complete,4229ELP110,F& G cable routing -Approval,,,,0,0,0,0,40,0,0,0,,2012-01-01 08:00,2012-01-26 00:00,2013-01-20 08:00,2013-01-20 08:00,,2012-06-30 00:00,2012-06-30 00:00,,,2012-01-01 08:00,2012-01-05 16:00,,,,,PT_Normal,,,,,qgXtKqwCzEeblgDNxqJIoQ,,,,N,0,0,,,2012-06-25 15:13,2012-07-16 15:38,nour,admin
338,149165,5725,23865,6841,1,100,N,N,N,CP_Drtn,TT_Task,DT_FixedDUR2,RV_OK,TK_Complete,4229ELP260,F& G cable routing -Design,,,,0,0,0,0,80,0,0,0,,2012-01-29 00:00,2012-02-06 00:00,2013-02-18 08:00,2013-02-18 08:00,,2012-06-30 00:00,2012-06-30 00:00,,,2012-03-06 08:00,2012-03-19 16:00,,,,,PT_Normal,,,,,UQh5I0mkmku/niIKw5n71A,,,,N,0,0,,,2012-06-25 15:13,2012-07-16 15:38,nour,admin
339,149166,5725,23865,6841,1,0,N,N,N,CP_Drtn,TT_Task,DT_FixedDUR2,RV_OK,TK_NotStart,4229ELP390,F& G cable routing -Construction,,976,0,80,0,0,0,80,0,0,0,,,,2013-01-28 08:00,2013-02-10 16:00,,2012-07-26 08:00,2012-08-08 16:00,2012-07-26 08:00,2012-08-08 16:00,2012-07-26 08:00,2012-08-08 16:00,,2013-01-28 08:00,2013-02-10 16:00,,PT_Normal,,,,,0Vot5e7QRkKuyfL1D+taDA,,,,N,0,0,,,2012-06-25 15:13,2012-07-16 15:38,nour,admin
340,149167,5725,23865,6841,1,100,N,N,N,CP_Drtn,TT_Task,DT_FixedDUR2,RV_OK,TK_Complete,4229ELP40,Hazardous area classification schedule-IFA,,,,0,0,0,0,24,0,0,0,,2011-11-10 00:00,2011-11-13 00:00,2013-02-11 08:00,2013-02-11 08:00,,2012-06-30 00:00,2012-06-30 00:00,,,2011-12-18 08:00,2011-12-20 16:00,,,,,PT_Normal,,,,,2RlgrYjFOEy2FhByR8jvhg,,,,N,0,0,,,2012-06-25 15:13,2012-07-16 15:38,nour,admin
341,149168,5725,23865,6841,1,100,N,N,N,CP_Drtn,TT_Task,DT_FixedDUR2,RV_OK,TK_Complete,4229ELP150,Hazardous area classification schedule-IFD,,,,0,0,0,0,24,0,0,0,,2011-11-20 00:00,2011-11-23 00:00,2013-02-18 08:00,2013-02-18 08:00,,2012-06-30 00:00,2012-06-30 00:00,,,2012-01-09 08:00,2012-01-11 16:00,,,,,PT_Normal,,,,,HuoGDz8mhkm4m/hbNarXdw,,,,N,0,0,,,2012-06-25 15:13,2012-07-16 15:38,nour,admin
342,149169,5725,23865,6841,1,0,N,N,N,CP_Drtn,TT_Task,DT_FixedDUR2,RV_OK,TK_NotStart,4229ELP370,Hazardous area classification schedule-IFC,,992,0,24,0,0,0,24,0,0,0,,,,2013-01-23 08:00,2013-01-27 16:00,,2012-07-19 08:00,2012-07-23 16:00,2012-07-19 08:00,2012-07-23 16:00,2012-07-19 08:00,2012-07-23 16:00,,2013-01-23 08:00,2013-01-27 16:00,,PT_Normal,,,,,c56GskVXEU2h4+a/+0gylQ,,,,N,0,0,,,2012-06-25 15:13,2012-07-16 15:38,nour,admin
343,149170,5725,23865,6841,1,100,N,N,N,CP_Drtn,TT_Task,DT_FixedDUR2,RV_OK,TK_Complete,4229ELP450,F& G cable list -Approval,,,,0,0,0,0,40,0,0,0,2012-01-09 00:00,2012-01-09 08:00,2012-01-19 00:00,2013-02-18 08:00,2013-02-18 08:00,,2012-06-30 00:00,2012-06-30 00:00,,,2012-01-09 08:00,2012-01-15 16:00,,,,CS_MSOA,PT_Normal,,,,,jny1DxiKpUm0auBjlILZXw,,,,N,0,0,,,2012-06-25 15:13,2012-07-16 15:38,nour,admin
344,149171,5725,23865,6841,1,100,N,N,N,CP_Drtn,TT_Task,DT_FixedDUR2,RV_OK,TK_Complete,4229ELP460,F& G cable list -Design,,,,0,0,0,0,40,0,0,0,,2012-01-15 00:00,2012-01-24 00:00,2013-02-18 08:00,2013-02-18 08:00,,2012-06-30 00:00,2012-06-30 00:00,,,2012-03-04 08:00,2012-03-08 16:00,,,,,PT_Normal,,,,,UE2uyFQPu0a+ZFgWkwOj3w,,,,N,0,0,,,2012-06-25 15:13,2012-07-16 15:38,nour,admin
345,149172,5725,23865,6841,1,0,N,N,N,CP_Drtn,TT_Task,DT_FixedDUR2,RV_OK,TK_NotStart,4229ELP470,F& G cable list -Construction,,1016,40,40,0,0,0,40,0,0,0,,,,2013-02-11 08:00,2013-02-17 16:00,,2012-08-02 08:00,2012-08-08 16:00,2012-08-02 08:00,2012-08-08 16:00,2012-08-02 08:00,2012-08-08 16:00,,2013-02-11 08:00,2013-02-17 16:00,,PT_Normal,,,,,Ubq4p9t9yEqYHEKwJiRgAA,,,,N,0,0,,,2012-06-25 15:13,2012-07-16 15:38,nour,admin
346,149173,5725,23865,6841,1,100,N,N,N,CP_Drtn,TT_Task,DT_FixedDUR2,RV_OK,TK_Complete,4229ELP480,Interconnection wiring diagram-Approval,,,,0,0,0,0,40,0,0,0,,2012-01-04 08:00,2012-02-01 00:00,2013-02-18 08:00,2013-02-18 08:00,,2012-06-30 00:00,2012-06-30 00:00,,,2012-01-04 08:00,2012-01-10 16:00,,,,,PT_Normal,,,,,4SchsNrb7EqV9a4EOtbA1Q,,,,N,0,0,,,2012-06-25 15:13,2012-07-16 15:38,nour,admin
347,149174,5725,23865,6841,1,100,N,N,N,CP_Drtn,TT_Task,DT_FixedDUR2,RV_OK,TK_Complete,4229ELP490,Interconnection wiring diagram-Design,,,,0,0,0,0,80,0,0,0,,2012-03-15 00:00,2012-03-20 00:00,2013-02-18 08:00,2013-02-18 08:00,,2012-06-30 00:00,2012-06-30 00:00,,,2012-04-01 08:00,2012-04-12 16:00,,,,,PT_Normal,,,,,yvh8Fbvbx0adX32pRL/Wyg,,,,N,0,0,,,2012-06-25 15:13,2012-07-16 15:38,nour,admin
348,149175,5725,23860,6841,1,100,N,N,N,CP_Drtn,TT_Task,DT_FixedDUR2,RV_OK,TK_Complete,4229ELP130,HAZOP meeting /Report,,,,0,0,0,0,80,0,0,0,2012-02-06 08:00,2012-02-02 00:00,2012-02-21 00:00,2013-01-08 08:00,2013-01-08 08:00,,2012-06-30 00:00,2012-06-30 00:00,,,2012-03-04 08:00,2012-03-15 16:00,,,,CS_MSO,PT_Normal,,,,,DsAqtm3F7ECVF5549HJ9bg,,,,N,0,0,,,2012-06-25 15:13,2012-07-16 15:38,nour,admin
349,149176,5725,23860,6841,1,100,N,N,N,CP_Drtn,TT_Task,DT_FixedDUR2,RV_OK,TK_Complete,4229ELP10,HSE Plan -Approval,,,,0,0,0,0,80,0,0,0,,2011-09-29 08:00,2011-10-13 16:00,2013-01-09 08:00,2013-01-09 08:00,,2012-06-30 00:00,2012-06-30 00:00,,,2011-09-29 08:00,2011-10-13 16:00,,,,,PT_Normal,,,,,S0LImF0B/0CG5ghrxAbDZA,,,,N,0,0,,,2012-06-25 15:13,2012-07-16 15:38,nour,admin
350,149177,5725,23860,6841,1,100,N,N,N,CP_Drtn,TT_Task,DT_FixedDUR2,RV_OK,TK_Complete,4229ELP20,HSE Plan -Final,,,,0,0,0,0,40,0,0,0,,2011-11-13 00:00,2011-11-15 00:00,2013-02-13 08:00,2013-02-13 08:00,,2012-06-30 00:00,2012-06-30 00:00,,,2011-12-04 08:00,2011-12-08 16:00,,,,,PT_Normal,,,,,w/I7FM9ZhUaGhubU5H3tag,,,,N,0,0,,,2012-06-25 15:13,2012-07-16 15:38,nour,admin
351,149178,5725,23860,6841,1,100,N,N,N,CP_Drtn,TT_Task,DT_FixedDUR2,RV_OK,TK_Complete,4229ELP30,HSE philosophy - Approval,,,,0,0,0,0,80,0,0,0,,2011-10-16 00:00,2011-11-03 00:00,2013-01-09 08:00,2013-01-09 08:00,,2012-06-30 00:00,2012-06-30 00:00,,,2011-12-04 08:00,2011-12-15 16:00,,,,,PT_Normal,,,,,xaI5rW8PdUGwCmBO0k4NuA,,,,N,0,0,,,2012-06-25 15:13,2012-07-16 15:38,nour,admin
352,149179,5725,23860,6841,1,100,N,N,N,CP_Drtn,TT_Task,DT_FixedDUR2,RV_OK,TK_Complete,4229ELP90,HSE philosophy - Final,,,,0,0,0,0,40,0,0,0,,2011-11-20 00:00,2011-11-23 00:00,2013-02-13 08:00,2013-02-13 08:00,,2012-06-30 00:00,2012-06-30 00:00,,,2011-12-25 08:00,2011-12-29 16:00,,,,,PT_Normal,,,,,9AJ3/x28lEW6W16XbIIXwg,,,,N,0,0,,,2012-06-25 15:13,2012-07-16 15:38,nour,admin
353,149180,5725,23860,6841,1,100,N,N,N,CP_Drtn,TT_Task,DT_FixedDUR2,RV_OK,TK_Complete,4229ELP410,SIL Review report-Final,,,,0,0,0,0,88,0,0,0,,2012-04-23 00:00,2012-05-30 00:00,2013-02-24 16:00,2013-02-24 16:00,,2012-06-30 00:00,2012-06-30 00:00,,,2012-06-03 08:00,2012-06-17 16:00,,,,,PT_Normal,,,,,X4WOZaWtSEiiUG0nzLL4CQ,,,,N,0,0,,,2012-06-25 15:13,2012-07-16 15:38,nour,admin
354,149181,5725,23860,6841,1,100,N,N,N,CP_Drtn,TT_Task,DT_FixedDUR2,RV_OK,TK_Complete,4229ELP100,Fire & explosion HAZARD analysis- Approval,,,,0,0,0,0,120,0,0,0,,2011-11-22 00:00,2011-11-23 00:00,2013-01-09 08:00,2013-01-09 08:00,,2012-06-30 00:00,2012-06-30 00:00,,,2011-12-04 08:00,2011-12-22 16:00,,,,,PT_Normal,,,,,F37cqneL70GGRT7EK0QJvQ,,,,N,0,0,,,2012-06-25 15:13,2012-07-16 15:38,nour,admin
355,149182,5725,23860,6841,1,100,N,N,N,CP_Drtn,TT_Task,DT_FixedDUR2,RV_OK,TK_Complete,4229ELP140,Fire & Explosion HAZARD analysis- Final,,,,0,0,0,0,80,0,0,0,,2012-02-16 00:00,2012-03-05 00:00,2013-01-09 08:00,2013-01-09 08:00,,2012-06-30 00:00,2012-06-30 00:00,,,2012-01-01 08:00,2012-01-12 16:00,,,,,PT_Normal,,,,,f5repX1D40+thgwLeVWboA,,,,N,0,0,,,2012-06-25 15:13,2012-07-16 15:38,nour,admin
356,149183,5725,23860,6841,1,0,N,N,N,CP_Drtn,TT_Task,DT_FixedDUR2,RV_OK,TK_NotStart,4229ELP120,SAMS report-Approval,,1016,0,80,0,0,0,80,0,0,0,,,,2013-01-09 08:00,2013-01-22 16:00,,2012-07-02 08:00,2012-07-15 16:00,2012-07-02 08:00,2012-07-15 16:00,2012-07-02 08:00,2012-07-15 16:00,,2013-01-09 08:00,2013-01-22 16:00,,PT_Normal,,,,,CGCZs4S0MkqrjcoHZR8O6g,,,,N,0,0,,,2012-06-25 15:13,2012-07-16 15:38,nour,admin
357,149184,5725,23860,6841,1,0,N,N,N,CP_Drtn,TT_Task,DT_FixedDUR2,RV_OK,TK_NotStart,4229ELP180,SAMS report-Final,,1016,0,80,0,0,0,80,0,0,0,,,,2013-01-30 08:00,2013-02-12 16:00,,2012-07-23 08:00,2012-08-05 16:00,2012-07-23 08:00,2012-08-05 16:00,2012-07-23 08:00,2012-08-05 16:00,,2013-01-30 08:00,2013-02-12 16:00,,PT_Normal,,,,,TW2LRVJEPkaQtM+i0qb2eQ,,,,N,0,0,,,2012-06-25 15:13,2012-07-16 15:38,nour,admin
358,149185,5725,23860,6841,1,0,N,N,N,CP_Drtn,TT_Task,DT_FixedDUR2,RV_OK,TK_NotStart,4229ELP340,HAZARD register,,1016,728,64,0,0,0,64,0,0,0,,,,2013-02-13 08:00,2013-02-24 16:00,,2012-08-06 08:00,2012-08-15 16:00,2012-08-06 08:00,2012-08-15 16:00,2012-08-06 08:00,2012-08-15 16:00,,2013-02-13 08:00,2013-02-24 16:00,,PT_Normal,,,,,54XNuBYeQUy7XgJJvaAd9w,,,,N,0,0,,,2012-06-25 15:13,2012-07-16 15:38,nour,admin
359,149186,5725,23860,6841,1,100,N,N,N,CP_Drtn,TT_Task,DT_FixedDUR2,RV_OK,TK_Complete,4229ELP190,SCE performance standards-Approval,,,,0,0,0,0,80,0,0,0,,2012-02-09 00:00,2012-02-22 00:00,2013-01-09 08:00,2013-01-09 08:00,,2012-06-30 00:00,2012-06-30 00:00,,,2012-03-20 08:00,2012-04-02 16:00,,,,,PT_Normal,,,,,PhBxcq7aA0eWQ16StWAn4Q,,,,N,0,0,,,2012-06-25 15:13,2012-07-16 15:38,nour,admin
360,149187,5725,23860,6841,1,100,N,N,N,CP_Drtn,TT_Task,DT_FixedDUR2,RV_OK,TK_Complete,4229ELP200,QRA -Approval,,,,0,0,0,0,120,0,0,0,,2012-02-26 00:00,2012-03-20 00:00,2013-01-09 08:00,2013-01-09 08:00,,2012-06-30 00:00,2012-06-30 00:00,,,2012-03-04 08:00,2012-03-22 16:00,,,,,PT_Normal,,,,,dgOEY/2v4UiRmVuxs2uk6A,,,,N,0,0,,,2012-06-25 15:13,2012-07-16 15:38,nour,admin
361,149188,5725,23860,6841,1,100,N,N,N,CP_Drtn,TT_Task,DT_FixedDUR2,RV_OK,TK_Complete,4229ELP300,QRA -Final,,,,0,0,0,0,120,0,0,0,,2012-04-15 08:00,2012-04-18 00:00,2013-02-13 08:00,2013-02-13 08:00,,2012-06-30 00:00,2012-06-30 00:00,,,2012-04-15 08:00,2012-05-03 16:00,,,,,PT_Normal,,,,,Q3/szQJM4E2kbqxfC7q/ag,,,,N,0,0,,,2012-06-25 15:13,2012-07-16 15:38,nour,admin
362,149189,5725,23860,6841,1,100,N,N,N,CP_Drtn,TT_Task,DT_FixedDUR2,RV_OK,TK_Complete,4229ELP240,HAZID report,,,,0,0,0,0,80,0,0,0,,2012-03-28 00:00,2012-05-03 00:00,2013-01-09 08:00,2013-01-09 08:00,,2012-06-30 00:00,2012-06-30 00:00,,,2012-04-01 08:00,2012-04-12 16:00,,,,,PT_Normal,,,,,nklVJM/eTE+WlwM/yEwAzg,,,,N,0,0,,,2012-06-25 15:13,2012-07-16 15:38,nour,admin
363,149190,5725,23860,6841,1,100,N,N,N,CP_Drtn,TT_Task,DT_FixedDUR2,RV_OK,TK_Complete,4229ELP250,ENVID report,,,,0,0,0,0,80,0,0,0,,2012-03-28 00:00,2012-05-03 00:00,2013-01-09 08:00,2013-01-09 08:00,,2012-06-30 00:00,2012-06-30 00:00,,,2012-04-01 08:00,2012-04-12 16:00,,,,,PT_Normal,,,,,AL6LZMElNEOi6T/HDQULzQ,,,,N,0,0,,,2012-06-25 15:13,2012-07-16 15:38,nour,admin
364,149191,5725,23860,6841,1,0,N,N,N,CP_Drtn,TT_Task,DT_FixedDUR2,RV_OK,TK_Active,4229ELP210,HAZOP close out report,,1016,0,8,0,0,0,120,0,0,0,,2012-03-28 00:00,,2013-01-08 08:00,2013-01-08 16:00,2012-07-01 16:00,2012-07-01 08:00,2012-07-01 16:00,2012-07-01 08:00,2012-07-01 16:00,2012-04-03 08:00,2012-04-23 16:00,,2013-01-08 08:00,2013-01-08 16:00,,PT_Normal,,,,,tgY6UUrnZEOjDh4DcJ5IXw,,,,N,0,0,,,2012-06-25 15:13,2012-07-16 15:38,nour,admin
365,149192,5725,23860,6841,1,100,N,N,N,CP_Drtn,TT_Task,DT_FixedDUR2,RV_OK,TK_Complete,4229ELP280,PSSR report-Approval,,,,0,0,0,0,120,0,0,0,,2012-03-31 00:00,2012-03-31 00:00,2013-01-09 08:00,2013-01-09 08:00,,2012-06-30 00:00,2012-06-30 00:00,,,2012-04-01 08:00,2012-04-19 16:00,,,,,PT_Normal,,,,,qMnDSf2QR0KqO02PpX6FzQ,,,,N,0,0,,,2012-06-25 15:13,2012-07-16 15:38,nour,admin
366,149193,5725,23860,6841,1,0,N,N,N,CP_Drtn,TT_Task,DT_FixedDUR2,RV_OK,TK_NotStart,4229ELP290,CHAZOP review report,,1008,720,96,0,0,0,96,0,0,0,,,,2013-02-07 08:00,2013-02-24 16:00,,2012-08-01 08:00,2012-08-16 16:00,2012-08-01 08:00,2012-08-16 16:00,2012-08-01 08:00,2012-08-16 16:00,,2013-02-07 08:00,2013-02-24 16:00,,PT_Normal,,,,,BorP8EohU06kShXcIexOzg,,,,N,0,0,,,2012-06-25 15:13,2012-07-16 15:38,nour,admin
367,149194,5725,23860,6841,1,100,N,N,N,CP_Drtn,TT_Task,DT_FixedDUR2,RV_OK,TK_Complete,4229ELP160,SIL Review report-Approval,,,,0,0,0,0,80,0,0,0,2012-04-19 00:00,2012-04-19 00:00,2012-05-09 00:00,2013-01-09 08:00,2013-01-09 08:00,,2012-06-30 00:00,2012-06-30 00:00,,,2012-04-19 08:00,2012-05-02 16:00,,,,CS_MSOA,PT_Normal,,,,,uQT9lnq2cESxWMVAygSSng,,,,N,0,0,,,2012-06-25 15:13,2012-07-16 15:38,nour,admin
368,149195,5725,23860,6841,1,100,N,N,N,CP_Drtn,TT_Task,DT_FixedDUR2,RV_OK,TK_Complete,4229ELP50,Update & issue safety life cycle-Approval,,,,0,0,0,0,0,0,0,0,,2012-02-19 00:00,2012-02-23 00:00,2013-02-13 08:00,2013-02-13 08:00,,2012-06-30 00:00,2012-06-30 00:00,,,2012-03-04 08:00,2012-03-04 08:00,,,,,PT_Normal,,,,,oikz2fUdkEqTrItLn063Iw,,,,N,0,0,,,2012-06-25 15:13,2012-07-16 15:38,nour,admin
369,149196,5725,23860,6841,1,100,N,N,N,CP_Drtn,TT_Task,DT_FixedDUR2,RV_OK,TK_Complete,4229ELP270,SCE performance standards-Final,,,,0,0,0,0,40,0,0,0,,2012-03-15 00:00,2012-03-20 00:00,2013-02-24 16:00,2013-02-24 16:00,,2012-06-30 00:00,2012-06-30 00:00,,,2012-04-01 08:00,2012-04-05 16:00,,,,,PT_Normal,,,,,y7dreIinAUCQe0j1lkdELQ,,,,N,0,0,,,2012-06-25 15:13,2012-07-16 15:38,nour,admin
370,149197,5725,23860,6841,1,100,N,N,N,CP_Drtn,TT_Task,DT_FixedDUR2,RV_OK,TK_Complete,4229ELP350,PSSR report-Final,,,,0,0,0,0,80,0,0,0,,2012-03-31 00:00,2012-03-31 00:00,2013-02-24 16:00,2013-02-24 16:00,,2012-06-30 00:00,2012-06-30 00:00,,,2012-04-15 08:00,2012-04-26 16:00,,,,,PT_Normal,,,,,nokFVHemK02UbKMHldSPaA,,,,N,0,0,,,2012-06-25 15:13,2012-07-16 15:38,nour,admin
371,149198,5725,23860,6841,1,100,N,N,N,CP_Drtn,TT_Task,DT_FixedDUR2,RV_OK,TK_Complete,4229ELP540,Update & issue safety life cycle-Design,,,,0,0,0,0,176,0,0,0,,2012-04-05 00:00,2012-04-10 00:00,2013-02-24 16:00,2013-02-24 16:00,,2012-06-30 00:00,2012-06-30 00:00,,,2012-04-01 08:00,2012-04-30 16:00,,,,,PT_Normal,,,,,hqZbZcnUgUehJQMed9I0ng,,,,N,0,0,,,2012-06-25 15:13,2012-07-16 15:38,nour,admin
372,149199,5725,23852,6841,1,0,N,N,N,CP_Drtn,TT_Task,DT_FixedDUR2,RV_OK,TK_Active,4229ELP580,V.P.R for fire  & Gas detection,,1096,1096,112,0,0,0,280,0,0,0,,2012-06-10 00:00,,2013-02-05 08:00,2013-02-24 16:00,,2012-07-15 08:00,2012-08-01 16:00,2012-07-15 08:00,2012-08-01 16:00,2012-08-12 08:00,2012-10-04 16:00,,2013-02-05 08:00,2013-02-24 16:00,,PT_Normal,,,,,CBJv4gTRyk2QO9z0easjTA,FUD2dy+nUkWc4VQGU8Fo/w,,,N,0,0,,,2012-06-25 15:13,2012-07-16 15:38,nour,admin
373,149200,5725,23852,6841,1,100,N,N,N,CP_Drtn,TT_Task,DT_FixedDUR2,RV_OK,TK_Complete,4229ELP590,MRQ for life saving equioment,,,,0,0,0,0,40,0,0,0,,2011-12-29 00:00,2012-01-02 16:00,2013-02-24 16:00,2013-02-24 16:00,,2012-06-30 00:00,2012-06-30 00:00,,,2012-01-01 08:00,2012-01-05 16:00,,,,,PT_Normal,,,,,wS87V/AoEkeR06T+RQXAMw,ZarfSMY5fUiYAgPPzTZXNw,,,N,0,0,,,2012-06-25 15:13,2012-07-16 15:38,nour,admin
374,149201,5725,23852,6841,1,100,N,N,N,CP_Drtn,TT_Task,DT_FixedDUR2,RV_OK,TK_Complete,4229ELP600,T.E.R for life saving equipment,,,,0,0,0,0,120,0,0,0,,2012-02-15 00:00,2012-05-15 00:00,2013-02-24 16:00,2013-02-24 16:00,,2012-06-30 00:00,2012-06-30 00:00,,,2012-03-04 08:00,2012-03-22 16:00,,,,,PT_Normal,,,,,I7EVWWMNFUmIQjvq/d/PzA,OB2BdTMxnk6owJhgDyBB4w,,,N,0,0,,,2012-06-25 15:13,2012-07-16 15:38,nour,admin
375,149202,5725,23852,6841,1,100,N,N,N,CP_Drtn,TT_Task,DT_FixedDUR2,RV_OK,TK_Complete,4229ELP610,MRP for life saving equipment,,,,0,0,0,0,40,0,0,0,,2012-05-15 00:00,2012-05-15 00:00,2013-02-24 16:00,2013-02-24 16:00,,2012-06-30 00:00,2012-06-30 00:00,,,2012-06-18 08:00,2012-06-24 16:00,,,,,PT_Normal,,,,,7Gf81ea4sU6j5wAcjY0rrg,KKpGjp0KxUWDHbPmNRucRw,,,N,0,0,,,2012-06-25 15:13,2012-07-16 15:38,nour,admin
376,149203,5725,23852,6841,1,100,N,N,N,CP_Drtn,TT_Task,DT_FixedDUR2,RV_OK,TK_Complete,4229ELP620,V.P.R for life saving equipment,,,,0,0,0,0,240,0,0,0,,2012-05-15 00:00,2012-05-15 00:00,2013-02-24 16:00,2013-02-24 16:00,,2012-06-30 00:00,2012-06-30 00:00,,,2012-07-08 08:00,2012-08-16 16:00,,,,,PT_Normal,,,,,bl6ETfhsoUSnRmfAtLkZig,FUD2dy+nUkWc4VQGU8Fo/w,,,N,0,0,,,2012-06-25 15:13,2012-07-16 15:38,nour,admin
377,149204,5725,23852,6841,1,100,N,N,N,CP_Drtn,TT_Task,DT_FixedDUR2,RV_OK,TK_Complete,4229ELP60,MRQ for fire fighting system,,,,0,0,0,0,64,0,0,0,,2011-11-21 00:00,2011-11-22 00:00,2012-09-30 08:00,2012-09-30 08:00,,2012-06-30 00:00,2012-06-30 00:00,,,2011-12-04 08:00,2011-12-13 16:00,,,,,PT_Normal,,,,,tzEQNMO3w0SVmuw0G8F/0A,,,,N,0,0,,,2012-06-25 15:13,2012-07-16 15:38,nour,admin
378,149205,5725,23852,6841,1,100,N,N,N,CP_Drtn,TT_Task,DT_FixedDUR2,RV_OK,TK_Complete,4229ELP170,T.E.R for fire fighting system,,,,0,0,0,0,160,0,0,0,2012-04-03 00:00,2012-04-03 08:00,2012-05-29 00:00,2012-09-30 08:00,2012-09-30 08:00,,2012-06-30 00:00,2012-06-30 00:00,,,2012-04-03 08:00,2012-04-30 16:00,,,,CS_MSOA,PT_Normal,,,,,STfrNOxlS0+RmXnjnqhcvw,,,,N,0,0,,,2012-06-25 15:13,2012-07-16 15:38,nour,admin
379,149206,5725,23852,6841,1,0,N,N,N,CP_Drtn,TT_Task,DT_FixedDUR2,RV_OK,TK_Active,4229ELP330,MRP for fire fighting system,,480,0,0,0,0,0,40,0,0,0,,2012-06-25 00:00,,2012-10-04 16:00,2012-10-04 16:00,2012-07-03 16:00,2012-07-08 08:00,2012-07-08 08:00,2012-07-08 08:00,2012-07-08 08:00,2012-07-25 08:00,2012-07-31 16:00,,2012-10-04 16:00,2012-10-04 16:00,,PT_Normal,,,,,7ZcPm7Pte0CoY7fmtoYVVA,,,,N,0,0,,,2012-06-25 15:13,2012-07-16 15:38,nour,admin
380,149207,5725,23852,6841,1,0,N,N,N,CP_Drtn,TT_Task,DT_FixedDUR2,RV_OK,TK_NotStart,4229ELP400,V.P.R for fire fighting system,,768,480,240,0,0,0,240,0,0,0,,,,2013-01-14 08:00,2013-02-24 16:00,,2012-08-26 08:00,2012-10-04 16:00,2012-08-26 08:00,2012-10-04 16:00,2012-08-26 08:00,2012-10-04 16:00,,2013-01-14 08:00,2013-02-24 16:00,,PT_Normal,,,,,6rs5huyux0+QlkI1xQl1jA,,,,N,0,0,,,2012-06-25 15:13,2012-07-16 15:38,nour,admin
381,149208,5725,23852,6841,1,100,N,N,N,CP_Drtn,TT_Task,DT_FixedDUR2,RV_OK,TK_Complete,4229ELP550,MRQ for fire  & Gas detection,,,,0,0,0,0,16,0,0,0,,2011-11-28 00:00,2012-01-01 16:00,2013-02-24 16:00,2013-02-24 16:00,,2012-06-30 00:00,2012-06-30 00:00,,,2011-12-08 08:00,2011-12-11 16:00,,,,,PT_Normal,,,,,o7akSZ0BfE6fAd14XtoozA,ZarfSMY5fUiYAgPPzTZXNw,,,N,0,0,,,2012-06-25 15:13,2012-07-16 15:38,nour,admin
382,149209,5725,23852,6841,1,100,N,N,N,CP_Drtn,TT_Task,DT_FixedDUR2,RV_OK,TK_Complete,4229ELP560,T.E.R for fire  & Gas detection,,,,0,0,0,0,120,0,0,0,,2012-02-27 00:00,2012-05-03 16:00,2012-12-20 08:00,2012-12-20 08:00,,2012-06-30 00:00,2012-06-30 00:00,,,2012-03-20 08:00,2012-04-09 16:00,,,,,PT_Normal,,,,,BTYsjC8q7EinmqiF8VKU6A,OB2BdTMxnk6owJhgDyBB4w,,,N,0,0,,,2012-06-25 15:13,2012-07-16 15:38,nour,admin
383,149210,5725,23852,6841,1,100,N,N,N,CP_Drtn,TT_Task,DT_FixedDUR2,RV_OK,TK_Complete,4229ELP570,MRP for fire  & Gas detection,,,,0,0,0,0,40,0,0,0,,2012-05-28 00:00,2012-05-29 00:00,2012-12-20 08:00,2012-12-20 08:00,,2012-06-30 00:00,2012-06-30 00:00,,,2012-06-03 08:00,2012-06-07 16:00,,,,,PT_Normal,,,,,aOguPVlackq11T+wkgGnhQ,KKpGjp0KxUWDHbPmNRucRw,,,N,0,0,,,2012-06-25 15:13,2012-07-16 15:38,nour,admin
384,149211,5725,23886,6841,1,100,N,N,N,CP_Drtn,TT_Task,DT_FixedDUR2,RV_OK,TK_Complete,4229EPR220,Process simulation final report,,,,0,0,0,0,80,0,0,0,,2011-11-21 00:00,2011-11-21 00:00,2013-02-24 16:00,2013-02-24 16:00,,2012-06-30 00:00,2012-06-30 00:00,,,2011-11-24 08:00,2011-12-07 16:00,,,,,PT_Normal,,,,,hvREXdhLBkijUjzrVb6x7A,,,,N,0,0,,,2012-06-25 15:13,2012-07-16 15:38,nour,admin
385,149212,5725,23886,6841,1,100,N,N,N,CP_Drtn,TT_Task,DT_FixedDUR2,RV_OK,TK_Complete,4229EPR260,Process simulation report-Approval,,,,0,0,0,0,64,0,0,0,,2011-10-31 08:00,2011-11-21 00:00,2013-02-24 16:00,2013-02-24 16:00,,2012-06-30 00:00,2012-06-30 00:00,,,2011-10-31 08:00,2011-11-16 16:00,,,,,PT_Normal,,,,,Fk/KtjCl1EuPeVxlZIbbnA,,,,N,0,0,,,2012-06-25 15:13,2012-07-16 15:38,nour,admin
386,149213,5725,23886,6841,1,100,N,N,N,CP_Drtn,TT_Task,DT_FixedDUR2,RV_OK,TK_Complete,4229EPR100,Shutdown & control philosophy -Approval,,,,0,0,0,0,64,0,0,0,,2011-10-26 00:00,2011-11-23 00:00,2013-02-24 16:00,2013-02-24 16:00,,2012-06-30 00:00,2012-06-30 00:00,,,2011-10-30 08:00,2011-11-15 16:00,,,,,PT_Normal,,,,,Zw7CJAdfvkOFOZuIcO/K5Q,,,,N,0,0,,,2012-06-25 15:13,2012-07-16 15:38,nour,admin
387,149214,5725,23886,6841,1,100,N,N,N,CP_Drtn,TT_Task,DT_FixedDUR2,RV_OK,TK_Complete,4229EPR140,Shutdown & control philosophy -Final,,,,0,0,0,0,80,0,0,0,,2011-12-26 00:00,2012-05-13 00:00,2013-02-24 16:00,2013-02-24 16:00,,2012-06-30 00:00,2012-06-30 00:00,,,2011-12-08 08:00,2011-12-21 16:00,,,,,PT_Normal,,,,,8IErYTVEFUCfB1IjPBfo5g,,,,N,0,0,,,2012-06-25 15:13,2012-07-16 15:38,nour,admin
388,149215,5725,23886,6841,1,0,N,N,N,CP_Drtn,TT_Task,DT_FixedDUR2,RV_OK,TK_NotStart,4229EPR210,"Commissioning ,Pre-commissioning & operating philosophy-IFA",,1064,0,80,0,0,0,80,0,0,0,,,,2013-01-23 08:00,2013-02-05 16:00,,2012-07-08 08:00,2012-07-19 16:00,2012-07-08 08:00,2012-07-19 16:00,2012-07-08 08:00,2012-07-19 16:00,,2013-01-23 08:00,2013-02-05 16:00,,PT_Normal,,,,,zFAMa0KhEki0gEgMnGwBvg,,,,N,0,0,,,2012-06-25 15:13,2012-07-16 15:38,nour,admin
389,149216,5725,23886,6841,1,0,N,N,N,CP_Drtn,TT_Task,DT_FixedDUR2,RV_OK,TK_NotStart,4229EPR230,"Commissioning ,Pre-commissioning & operating philosophy-Final",,1064,776,64,0,0,0,64,0,0,0,,,,2013-02-13 08:00,2013-02-24 16:00,,2012-07-29 08:00,2012-08-07 16:00,2012-07-29 08:00,2012-08-07 16:00,2012-07-29 08:00,2012-08-07 16:00,,2013-02-13 08:00,2013-02-24 16:00,,PT_Normal,,,,,AEjSkFopqk6EuSGhi1tf4Q,,,,N,0,0,,,2012-06-25 15:13,2012-07-16 15:38,nour,admin
390,149217,5725,23886,6841,1,100,N,N,N,CP_Drtn,TT_Task,DT_FixedDUR2,RV_OK,TK_Complete,4229EPR110,Flow assurance report-Final,,,,0,0,0,0,40,0,0,0,,2011-11-24 08:00,2011-11-30 16:00,2013-02-24 16:00,2013-02-24 16:00,,2012-06-30 00:00,2012-06-30 00:00,,,2011-11-24 08:00,2011-11-30 16:00,,,,,PT_Normal,,,,,ayIO+gCW+E2CXZ4JC1vlHQ,,,,N,0,0,,,2012-06-25 15:13,2012-07-16 15:38,nour,admin
391,149218,5725,23886,6841,1,100,N,N,N,CP_Drtn,TT_Task,DT_FixedDUR2,RV_OK,TK_Complete,4229EPR30,Flow assurance report-Approval,,,,0,0,0,0,160,0,0,0,,2011-09-26 08:00,2011-11-03 00:00,2013-02-24 16:00,2013-02-24 16:00,,2012-06-30 00:00,2012-06-30 00:00,,,2011-09-26 08:00,2011-10-24 16:00,,,,,PT_Normal,,,,,s+OZpxgeekevgKqXwbisMw,,,,N,0,0,,,2012-06-25 15:13,2012-07-16 15:38,nour,admin
392,149219,5725,23886,6841,1,100,N,N,N,CP_Drtn,TT_Task,DT_FixedDUR2,RV_OK,TK_Complete,4229EPR50,Process simulation,,,,0,0,0,0,80,0,0,0,,2011-08-25 08:00,2011-09-11 16:00,2012-07-29 08:00,2012-07-29 08:00,,2012-06-30 00:00,2012-06-30 00:00,,,2011-08-25 08:00,2011-09-11 16:00,,,,,PT_Normal,,,,,gWGocZ+uX0C6najfWI1eFw,9K5lbSWWSU+ZW7VGbG9JcQ,,,N,0,0,,,2012-06-25 15:13,2012-07-16 15:38,nour,admin
393,149220,5725,23864,6841,1,100,N,N,N,CP_Drtn,TT_Task,DT_FixedDUR2,RV_OK,TK_Complete,4229EPR310,RE-ISSUE T.E.R for Chemical injection,,,,0,0,0,0,120,0,0,0,,2012-01-01 08:00,2012-02-21 00:00,2012-07-29 08:00,2012-07-29 08:00,,2012-06-30 00:00,2012-06-30 00:00,,,2012-01-01 08:00,2012-01-19 16:00,,,,,PT_Normal,,,,,elQDlEjQL0WDnV+fFcZrZA,,,,N,0,0,,,2012-06-25 15:13,2012-07-16 15:38,nour,admin
394,149221,5725,23864,6841,1,0,N,N,N,CP_Drtn,TT_Task,DT_FixedDUR2,RV_OK,TK_Active,4229EPR250,V.P.R for chemical injection,,1168,104,48,0,0,0,400,0,0,0,,2012-04-01 00:00,,2013-02-11 08:00,2013-02-18 16:00,,2012-07-08 08:00,2012-07-15 16:00,2012-07-08 08:00,2012-07-15 16:00,2012-05-20 08:00,2012-07-26 16:00,,2013-02-11 08:00,2013-02-18 16:00,,PT_Normal,,,,,+YigLn6EqkudelMp1o2eJQ,,,,N,0,0,,,2012-06-25 15:13,2012-07-16 15:38,nour,admin
395,149222,5725,23864,6841,1,0,N,N,N,CP_Drtn,TT_Task,DT_FixedDUR2,RV_OK,TK_Active,4229EPR240,V.P.R for P.S.V,,968,104,280,0,0,0,320,0,0,0,,2012-04-17 00:00,,2013-01-07 08:00,2013-02-24 16:00,,2012-07-08 08:00,2012-08-30 16:00,2012-07-08 08:00,2012-08-30 16:00,2012-05-17 08:00,2012-07-11 16:00,,2013-01-07 08:00,2013-02-24 16:00,,PT_Normal,,,,,meKpy6axSk+ngeQDJwsVGg,,,,N,0,0,,,2012-06-25 15:13,2012-07-16 15:38,nour,admin
396,149223,5725,23864,6841,1,100,N,N,N,CP_Drtn,TT_Task,DT_FixedDUR2,RV_OK,TK_Complete,4229EPR70,T.E.R for Chemical injection,,,,0,0,0,0,160,0,0,0,,2011-09-19 08:00,2011-11-24 00:00,2012-07-29 08:00,2012-07-29 08:00,,2012-06-30 00:00,2012-06-30 00:00,,,2011-09-19 08:00,2011-10-17 16:00,,,,,PT_Normal,,,,,6xphK+9k8E+bR7YOHYiZ5Q,,,,N,0,0,,,2012-06-25 15:13,2012-07-16 15:38,nour,admin
397,149224,5725,23864,6841,1,100,N,N,N,CP_Drtn,TT_Task,DT_FixedDUR2,RV_OK,TK_Complete,4229EPR150,MRP for Chemical injection,,,,0,0,0,0,24,0,0,0,,2012-03-25 00:00,2012-04-05 00:00,2012-07-29 08:00,2012-07-29 08:00,,2012-06-30 00:00,2012-06-30 00:00,,,2012-03-21 08:00,2012-03-25 16:00,,,,,PT_Normal,,,,,OjdfRNvkckmB9K2Ogpfsvg,,,,N,0,0,,,2012-06-25 15:13,2012-07-16 15:38,nour,admin
398,149225,5725,23864,6841,1,100,N,N,N,CP_Drtn,TT_Task,DT_FixedDUR2,RV_OK,TK_Complete,4229EPR160,T.E.R for PSV,,,,0,0,0,0,160,0,0,0,,2011-11-17 00:00,2012-01-31 00:00,2012-07-29 08:00,2012-07-29 08:00,,2012-06-30 00:00,2012-06-30 00:00,,,2011-11-16 08:00,2011-12-13 16:00,,,,,PT_Normal,,,,,RUqgnps2dU229Mj2mlYcbA,QZSem8n3HEqSrXo4nZ4rrA,,,N,0,0,,,2012-06-25 15:13,2012-07-16 15:38,nour,admin
399,149226,5725,23864,6841,1,100,N,N,N,CP_Drtn,TT_Task,DT_FixedDUR2,RV_OK,TK_Complete,4229EPR170,MRP for PSV,,,,0,0,0,0,40,0,0,0,,2012-04-05 00:00,2012-04-09 00:00,2012-07-29 08:00,2012-07-29 08:00,,2012-06-30 00:00,2012-06-30 00:00,,,2012-04-09 08:00,2012-04-15 16:00,,,,,PT_Normal,,,,,YTlqPbX4U0SbaX6lg45Z4w,ulMsewoMhEiApbF+oxOLEA,,,N,0,0,,,2012-06-25 15:13,2012-07-16 15:38,nour,admin
400,149227,5725,23864,6841,1,100,N,N,N,CP_Drtn,TT_Task,DT_FixedDUR2,RV_OK,TK_Complete,4229EPR60,Issue MRQ for PSV,,,,0,0,0,0,40,0,0,0,,2011-10-09 08:00,2011-10-19 00:00,2012-07-29 08:00,2012-07-29 08:00,,2012-06-30 00:00,2012-06-30 00:00,,,2011-10-09 08:00,2011-10-13 16:00,,,,,PT_Normal,,,,,3Z4zYp4hS0SMpKhqmgMarg,oARo+yhXM0mbfyeEpyVYrw,,,N,0,0,,,2012-06-25 15:13,2012-07-16 15:38,nour,admin
401,149228,5725,23864,6841,1,100,N,N,N,CP_Drtn,TT_Task,DT_FixedDUR2,RV_OK,TK_Complete,4229EPR10,Issue MRQ for Chemical injection,,,,0,0,0,0,56,0,0,0,,2011-08-16 08:00,2011-08-24 16:00,2012-07-29 08:00,2012-07-29 08:00,,2012-06-30 00:00,2012-06-30 00:00,,,2011-08-16 08:00,2011-08-24 16:00,,,,,PT_Normal,,,,,GsEjILsyNE+xjxb58haA6w,,,,N,0,0,,,2012-06-25 15:13,2012-07-16 15:38,nour,admin
402,149229,5725,23856,6841,1,100,N,N,N,CP_Drtn,TT_Task,DT_FixedDUR2,RV_OK,TK_Complete,4229EPR90,C&E -Approval,,,,0,0,0,0,64,0,0,0,,2011-10-26 00:00,2011-11-23 16:00,2013-01-09 08:00,2013-01-09 08:00,,2012-06-30 00:00,2012-06-30 00:00,,,2011-10-30 08:00,2011-11-15 16:00,,,,,PT_Normal,,,,,aM+0ra0+1kqqk3OgqFighQ,,,,N,0,0,,,2012-06-25 15:13,2012-07-16 15:38,nour,admin
403,149230,5725,23856,6841,1,100,N,N,N,CP_Drtn,TT_Task,DT_FixedDUR2,RV_OK,TK_Complete,4229EPR130,C&E -Design,,,,0,0,0,0,64,0,0,0,,2011-12-01 00:00,2011-12-11 08:00,2013-01-09 08:00,2013-01-09 08:00,,2012-06-30 00:00,2012-06-30 00:00,,,2011-12-18 08:00,2011-12-27 16:00,,,,,PT_Normal,,,,,4cXrGsZgF0K4yidkb3OmLA,,,,N,0,0,,,2012-06-25 15:13,2012-07-16 15:38,nour,admin
404,149231,5725,23856,6841,1,0,N,N,N,CP_Drtn,TT_Task,DT_FixedDUR2,RV_OK,TK_NotStart,4229EPR200,C&E -Construction,,1080,0,40,0,0,0,40,0,0,0,,,,2013-01-27 08:00,2013-01-31 16:00,,2012-07-08 08:00,2012-07-12 16:00,2012-07-08 08:00,2012-07-12 16:00,2012-07-08 08:00,2012-07-12 16:00,,2013-01-27 08:00,2013-01-31 16:00,,PT_Normal,,,,,R/iEB7xE6E6TkFblij62sg,,,,N,0,0,,,2012-06-25 15:13,2012-07-16 15:38,nour,admin
405,149232,5725,23856,6841,1,100,N,N,N,CP_Drtn,TT_Task,DT_FixedDUR2,RV_OK,TK_Complete,4229EPR270,GUPCO approval on PFD's & material balance,,,,0,0,0,0,80,0,0,0,,2011-09-29 08:00,2011-10-24 00:00,2012-07-31 08:00,2012-07-31 08:00,,2012-06-30 00:00,2012-06-30 00:00,,,2011-09-29 08:00,2011-10-13 16:00,,,,,PT_Normal,,,,,T6RmwuKdhkyUvz+Z2YwbCQ,,,,N,0,0,,,2012-06-25 15:13,2012-07-16 15:38,nour,admin
406,149233,5725,23856,6841,1,100,N,N,N,CP_Drtn,TT_Task,DT_FixedDUR2,RV_OK,TK_Complete,4229EPR280,GUPCO approval on P&ID'S / Equipment list,,,,0,0,0,0,80,0,0,0,,2011-10-24 00:00,2011-11-22 00:00,2012-10-04 08:00,2012-10-04 08:00,,2012-06-30 00:00,2012-06-30 00:00,,,2011-10-30 08:00,2011-11-17 16:00,,,,,PT_Normal,,,,,CwlUrRzN7km1Ghg8sND8zg,1xx29x7gQw6UEWuqC1JfgA,,,N,0,0,,,2012-06-25 15:13,2012-07-16 15:38,nour,admin
407,149234,5725,23856,6841,1,100,N,N,N,CP_Drtn,TT_Task,DT_FixedDUR2,RV_OK,TK_Complete,4229EPR290,GUPCO approval on cause & effect,,,,0,0,0,0,80,0,0,0,,2011-11-24 00:00,2011-12-01 00:00,2013-01-09 08:00,2013-01-09 08:00,,2012-06-30 00:00,2012-06-30 00:00,,,2011-11-03 08:00,2011-11-23 16:00,,,,,PT_Normal,,,,,norTZX/k40STJsjVQu4i9Q,,,,N,0,0,,,2012-06-25 15:13,2012-07-16 15:38,nour,admin
408,149235,5725,23856,6841,1,100,N,N,N,CP_Drtn,TT_Task,DT_FixedDUR2,RV_OK,TK_Complete,4229EPR20,Isuue PFD's / UFD's & material balance -Approval,,,,0,0,0,0,104,0,0,0,,2011-09-12 08:00,2011-09-27 00:00,2012-07-29 08:00,2012-07-29 08:00,,2012-06-30 00:00,2012-06-30 00:00,,,2011-09-12 08:00,2011-09-28 16:00,,,,,PT_Normal,,,,,euea6tUyNEu9nnGjub2Ydg,4+V64hr8QGaVcGgwUXQVsA,,,N,0,0,,,2012-06-25 15:13,2012-07-16 15:38,nour,admin
409,149236,5725,23856,6841,1,100,N,N,N,CP_Drtn,TT_Task,DT_FixedDUR2,RV_OK,TK_Complete,4229EPR40,Issue P&ID'S / Equipment list-Approval,,,,0,0,0,0,80,0,0,0,,2011-09-28 00:00,2011-10-25 00:00,2012-07-31 08:00,2012-07-31 08:00,,2012-06-30 00:00,2012-06-30 00:00,,,2011-09-28 08:00,2011-10-12 16:00,,,,,PT_Normal,,,,,PucNbF8wr0qLvV+2uV+c3A,bW1BefXsQ8qWdnGis0iRXg,,,N,0,0,,,2012-06-25 15:13,2012-07-16 15:38,nour,admin
410,149237,5725,23856,6841,1,100,N,N,N,CP_Drtn,TT_Task,DT_FixedDUR2,RV_OK,TK_Complete,4229EPR180,Issue P&ID'S / Equipment list-Construction,,,,0,0,0,0,120,0,0,0,,2012-06-03 00:00,2012-06-26 00:00,2012-08-05 08:00,2012-08-05 08:00,,2012-07-06 08:00,2012-07-06 08:00,,,2012-06-10 08:00,2012-06-28 16:00,,,,,PT_Normal,,,,,u884yzkrwUC9dndzW0ng8Q,0PYR8E0oSzmyuW10YXrt8A,,,N,0,0,,,2012-06-25 15:13,2012-07-16 15:38,nour,admin
411,149238,5725,23856,6841,1,100,N,N,N,CP_Drtn,TT_Task,DT_FixedDUR2,RV_OK,TK_Complete,4229EPR80,Isuue PFD's / UFD's  & material balance -Design,,,,0,0,0,0,56,0,0,0,,2011-10-25 00:00,2011-10-30 16:00,2012-07-31 08:00,2012-07-31 08:00,,2012-06-30 00:00,2012-06-30 00:00,,,2011-10-16 08:00,2011-10-24 16:00,,,,,PT_Normal,,,,,TK7/G4odX02iAXlzVuc0Sw,ikkxFXoDQymD74BDpjE9Cw,,,N,0,0,,,2012-06-25 15:13,2012-07-16 15:38,nour,admin
412,149239,5725,23856,6841,1,100,N,N,N,CP_Drtn,TT_Task,DT_FixedDUR2,RV_OK,TK_Complete,4229EPR120,Issue P&ID'S / Equipment list-Design,,,,0,0,0,0,80,0,0,0,,2011-11-23 00:00,2011-12-06 00:00,2012-10-04 08:00,2012-10-04 08:00,,2012-06-30 00:00,2012-06-30 00:00,,,2011-11-14 08:00,2011-11-27 16:00,,,,,PT_Normal,,,,,ygYgKE/lzU+QS/Jk/6jkoA,y4kSxUB0QgmwrKOKSq45nQ,,,N,0,0,,,2012-06-25 15:13,2012-07-16 15:38,nour,admin
413,149240,5725,23856,6841,1,0,N,N,N,CP_Drtn,TT_Task,DT_FixedDUR2,RV_OK,TK_Active,4229EPR190,Isuue PFD's / UFD's & material balance -Construction,,1208,0,40,0,0,0,40,0,0,0,,2012-06-27 00:00,,2013-02-11 08:00,2013-02-17 16:00,,2012-07-01 08:00,2012-07-05 16:00,2012-07-01 08:00,2012-07-05 16:00,2012-07-03 08:00,2012-07-09 16:00,,2013-02-11 08:00,2013-02-17 16:00,,PT_Normal,,,,,/NbrTpuwPkO0OZHunqdzxA,,,,N,0,0,,,2012-06-25 15:13,2012-07-16 15:38,nour,admin
414,149241,5725,23856,6841,1,100,N,N,N,CP_Drtn,TT_Task,DT_FixedDUR2,RV_OK,TK_Complete,4229EPR320,Issue P&ID'S implementing HAZOP,,,,0,0,0,0,80,0,0,0,,2012-02-12 00:00,2012-03-12 00:00,2013-02-24 16:00,2013-02-24 16:00,,2012-06-30 00:00,2012-06-30 00:00,,,2012-03-18 08:00,2012-03-29 16:00,,,,,PT_Normal,,,,,iD9L0w2HxUW7gR6J+qMSew,,,,N,0,0,,,2012-06-25 15:13,2012-07-16 15:38,nour,admin
415,149242,5725,23853,6841,1,100,N,N,N,CP_Drtn,TT_Task,DT_FixedDUR2,RV_OK,TK_Complete,4229EPI280,Issue GA's -Design,,,,0,0,0,0,160,0,0,0,,2012-02-02 00:00,2012-02-16 00:00,2012-10-04 08:00,2012-10-04 08:00,,2012-06-30 00:00,2012-06-30 00:00,,,2012-01-29 08:00,2012-02-23 16:00,,,,,PT_Normal,,,,,QPoVVWIr10uKylTBSmAdkw,,,,N,0,0,,,2012-06-25 15:13,2012-07-16 15:38,nour,admin
416,149243,5725,23853,6841,1,100,N,N,N,CP_Drtn,TT_Task,DT_FixedDUR2,RV_OK,TK_Complete,4229EPI40,Issue plot plans-Approval,,,,0,0,0,0,80,0,0,0,,2011-10-26 00:00,2011-11-21 00:00,2014-04-17 08:00,2014-04-17 08:00,,2012-07-05 00:00,2012-07-05 00:00,,,2011-12-04 08:00,2011-12-15 16:00,,,,,PT_Normal,,,,,nfqjEPpuy0KwVfbkZKVajg,ZsEQ0tICRLeOA9EICN0T6Q,,,N,0,0,,,2012-07-16 15:09,2012-07-16 15:09,admin,admin
417,149244,5725,23853,6841,1,100,N,N,N,CP_Drtn,TT_Task,DT_FixedDUR2,RV_OK,TK_Complete,4229EPI80,Issue plot plans-Design,,,,0,0,0,0,120,0,0,0,,2011-12-20 08:00,2012-01-05 16:00,2014-09-17 08:00,2014-09-17 08:00,,2012-07-05 08:00,2012-07-05 08:00,,,2011-12-20 08:00,2012-01-09 16:00,,,,,PT_Normal,,,,,UdElmTHnk0OxuZq5iU+SPA,cr+Ze/sDR+mGSVpxpwrL0A,,,N,0,0,,,2012-07-16 15:09,2012-07-16 15:09,admin,admin
418,149245,5725,23882,6841,1,100,N,N,N,CP_Drtn,TT_Task,DT_FixedDUR2,RV_OK,TK_Complete,4229EPI160,T.E.R for L&R,,,,0,0,0,0,120,0,0,0,,2011-09-22 08:00,2011-12-04 00:00,2012-08-02 08:00,2012-08-02 08:00,,2012-06-30 00:00,2012-06-30 00:00,,,2011-09-22 08:00,2011-10-13 16:00,,,,,PT_Normal,,,,,IM9gFqAsCE27QkitTlBsxA,ErUDIEAHkEWZWIjcmb+Ptg,,,N,0,0,,,2012-06-25 15:13,2012-07-16 15:38,nour,admin
419,149246,5725,23882,6841,1,100,N,N,N,CP_Drtn,TT_Task,DT_FixedDUR2,RV_OK,TK_Complete,4229EPI190,"Issue MRQ for Gate, Globe & butterfly valves",,,,0,0,0,0,8,0,0,0,,2011-11-24 00:00,2011-12-08 00:00,2013-02-24 16:00,2013-02-24 16:00,,2012-06-30 00:00,2012-06-30 00:00,,,2012-04-29 08:00,2012-04-29 16:00,,,,,PT_Normal,,,,,2zQL8FRwYUm9njYpl5zCWA,,,,N,0,0,,,2012-06-25 15:13,2012-07-16 15:38,nour,admin
420,149247,5725,23882,6841,1,100,N,N,N,CP_Drtn,TT_Task,DT_FixedDUR2,RV_OK,TK_Complete,4229EPI100,Issue MRQ for L&R traps,,,,0,0,0,0,56,0,0,0,,2011-08-15 08:00,2011-08-23 16:00,2012-08-02 08:00,2012-08-02 08:00,,2012-06-30 00:00,2012-06-30 00:00,,,2011-08-15 08:00,2011-08-23 16:00,,,,,PT_Normal,,,,,NOZj1EAaykOwXFq6Tit/iA,,,,N,0,0,,,2012-06-25 15:13,2012-07-16 15:38,nour,admin
421,149248,5725,23882,6841,1,100,N,N,N,CP_Drtn,TT_Task,DT_FixedDUR2,RV_OK,TK_Complete,4229EPI130,Thermal insulation specification,,,,0,0,0,0,40,0,0,0,,2011-11-21 00:00,2011-11-24 00:00,2013-02-24 16:00,2013-02-24 16:00,,2012-06-30 00:00,2012-06-30 00:00,,,2011-12-04 08:00,2011-12-08 16:00,,,,,PT_Normal,,,,,Y7mSP17dpESr0GjPJIJsPQ,,,,N,0,0,,,2012-06-25 15:13,2012-07-16 15:38,nour,admin
422,149249,5725,23853,6841,1,100,N,N,N,CP_Drtn,TT_Task,DT_FixedDUR2,RV_OK,TK_Complete,4229EPI220,Issue plot plans-Design,,,,0,0,0,0,120,0,0,0,,2011-12-20 08:00,2012-01-05 16:00,2012-10-04 08:00,2012-10-04 08:00,,2012-06-30 00:00,2012-06-30 00:00,,,2011-12-20 08:00,2012-01-09 16:00,,,,,PT_Normal,,,,,3W9yINVM5kWcdbNrSmRIiw,cr+Ze/sDR+mGSVpxpwrL0A,,,N,0,0,,,2012-06-25 15:13,2012-07-16 15:38,nour,admin
423,149250,5725,23853,6841,1,100,N,N,N,CP_Drtn,TT_Task,DT_FixedDUR2,RV_OK,TK_Complete,4229EPI20,Line designation table -Approval,,,,0,0,0,0,48,0,0,0,,2011-10-24 00:00,2012-01-02 16:00,2014-11-02 16:00,2014-11-02 16:00,,2012-07-05 00:00,2012-07-05 00:00,,,2011-10-30 08:00,2011-11-13 16:00,,,,,PT_Normal,,,,,lz+zZplwLk+Lmbv/n7aerA,,,,N,0,0,,,2012-07-16 15:09,2012-07-16 15:09,admin,admin
424,149251,5725,23882,6841,1,100,N,N,N,CP_Drtn,TT_Task,DT_FixedDUR2,RV_OK,TK_Complete,4229EPI120,Issue MRQ for Piping bulk,,,,0,0,0,0,64,0,0,0,,2011-11-15 00:00,2011-11-24 00:00,2012-12-09 08:00,2012-12-09 08:00,,2012-06-30 00:00,2012-06-30 00:00,,,2011-12-04 08:00,2011-12-13 16:00,,,,,PT_Normal,,,,,Q39md6WoG0qAHo6HWzgA2g,oARo+yhXM0mbfyeEpyVYrw,,,N,0,0,,,2012-06-25 15:13,2012-07-16 15:38,nour,admin
425,149252,5725,23853,6841,1,100,N,N,N,CP_Drtn,TT_Task,DT_FixedDUR2,RV_OK,TK_Complete,4229EPI180,Piping & Valves classes - Design,,,,0,0,0,0,40,0,0,0,,2011-10-24 00:00,2011-12-06 00:00,2013-02-24 16:00,2013-02-24 16:00,,2012-06-30 00:00,2012-06-30 00:00,,,2011-12-08 08:00,2011-12-14 16:00,,,,,PT_Normal,,,,,hrG8VD1V0EueYW8FQoFDTg,,,,N,0,0,,,2012-06-25 15:13,2012-07-16 15:38,nour,admin
426,149253,5725,23853,6841,1,100,N,N,N,CP_Drtn,TT_Task,DT_FixedDUR2,RV_OK,TK_Complete,4229EPI170,Piping & Valves classes - Approval (Deleted),,,,0,0,0,0,40,0,0,0,,2011-10-24 00:00,2011-12-06 00:00,2013-02-24 16:00,2013-02-24 16:00,,2012-06-30 00:00,2012-06-30 00:00,,,2011-10-30 08:00,2011-11-03 16:00,,,,,PT_Normal,,,,,q1NCCV8+aE2vrKyb554wrw,,,,N,0,0,,,2012-06-25 15:13,2012-07-16 15:38,nour,admin
427,149254,5725,23853,6841,1,100,N,N,N,CP_Drtn,TT_Task,DT_FixedDUR2,RV_OK,TK_Complete,4229EPI230,Issue GA's -Approval,,,,0,0,0,0,224,0,0,0,,2011-12-22 00:00,2012-01-17 16:00,2013-02-24 08:00,2013-02-24 08:00,,2012-06-30 00:00,2012-06-30 00:00,,,2012-01-01 08:00,2012-02-08 16:00,,,,,PT_Normal,,,,,zbwZ3FAShEKF63O8yvHOng,,,,N,0,0,,,2012-06-25 15:13,2012-07-16 15:38,nour,admin
428,149255,5725,23853,6841,1,100,N,N,N,CP_Drtn,TT_Task,DT_FixedDUR2,RV_OK,TK_Complete,4229EPI240,Line designation table -Design,,,,0,0,0,0,64,0,0,0,,2012-01-10 08:00,2012-01-24 00:00,2013-02-24 16:00,2013-02-24 16:00,,2012-06-30 00:00,2012-06-30 00:00,,,2012-01-10 08:00,2012-01-19 16:00,,,,,PT_Normal,,,,,6tKAJkDuc06SETHDcerNvQ,,,,N,0,0,,,2012-06-25 15:13,2012-07-16 15:38,nour,admin
429,149256,5725,23882,6841,1,100,N,N,N,CP_Drtn,TT_Task,DT_FixedDUR2,RV_OK,TK_Complete,4229EPI250,T.E.R for Piping bulk,,,,0,0,0,0,120,0,0,0,,2011-12-22 00:00,2012-01-26 00:00,2012-12-09 08:00,2012-12-09 08:00,,2012-06-30 00:00,2012-06-30 00:00,,,2011-12-13 08:00,2012-01-02 16:00,,,,,PT_Normal,,,,,lhMgiqMn3kKoBibXnh69xg,QZSem8n3HEqSrXo4nZ4rrA,,,N,0,0,,,2012-06-25 15:13,2012-07-16 15:38,nour,admin
430,149257,5725,23882,6841,1,100,N,N,N,CP_Drtn,TT_Task,DT_FixedDUR2,RV_OK,TK_Complete,4229EPI260,"T.E.R for Piping Gate, Globe & Butterfly valves",,,,0,0,0,0,160,0,0,0,2012-01-12 00:00,2012-01-12 08:00,2012-02-08 00:00,2012-07-29 08:00,2012-07-29 08:00,,2012-06-30 00:00,2012-06-30 00:00,,,2012-01-12 08:00,2012-02-09 16:00,,,,CS_MSOA,PT_Normal,,,,,6cYzCAZiM0e13J1xmbajYg,+adQvSlUzkOZha6HG7fiRA,,,N,0,0,,,2012-06-25 15:13,2012-07-16 15:38,nour,admin
431,149258,5725,23882,6841,1,100,N,N,N,CP_Drtn,TT_Task,DT_FixedDUR2,RV_OK,TK_Complete,4229EPI270,T.E.R for Piping Ball Valves,,,,0,0,0,0,168,0,0,0,,2012-01-12 00:00,2012-02-13 00:00,2012-11-20 08:00,2012-11-20 08:00,,2012-06-30 00:00,2012-06-30 00:00,,,2012-03-04 08:00,2012-04-01 16:00,,,,,PT_Normal,,,,,V+QIhm+eHUWRJN6el1mACA,,,,N,0,0,,,2012-06-25 15:13,2012-07-16 15:38,nour,admin
432,149259,5725,23882,6841,1,100,N,N,N,CP_Drtn,TT_Task,DT_FixedDUR2,RV_OK,TK_Complete,4229EPI310,"MRP for Piping Gate, Globe & Butterfly valves",,,,0,0,0,0,40,0,0,0,,2012-04-08 00:00,2012-04-12 00:00,2012-07-29 08:00,2012-07-29 08:00,,2012-06-30 00:00,2012-06-30 00:00,,,2012-04-12 08:00,2012-04-18 16:00,,,,,PT_Normal,,,,,1hrH7VTtsUy9rV89qxsb6w,uCQ7t7XtkE2pu5tmschigw,,,N,0,0,,,2012-06-25 15:13,2012-07-16 15:38,nour,admin
433,149260,5725,23882,6841,1,100,N,N,N,CP_Drtn,TT_Task,DT_FixedDUR2,RV_OK,TK_Complete,4229EPI320,MRP for Piping Ball Valves,,,,0,0,0,0,88,0,0,0,,2012-04-08 00:00,2012-04-12 00:00,2012-11-20 08:00,2012-11-20 08:00,,2012-06-30 00:00,2012-06-30 00:00,,,2012-04-12 08:00,2012-04-26 16:00,,,,,PT_Normal,,,,,YF8AzidLKUGPft+dAnqj5A,,,,N,0,0,,,2012-06-25 15:13,2012-07-16 15:38,nour,admin
434,149261,5725,23882,6841,1,100,N,N,N,CP_Drtn,TT_Task,DT_FixedDUR2,RV_OK,TK_Complete,4229EPI330,Additional piping bulk MRQ,,,,0,0,0,0,120,0,0,0,,2012-04-15 00:00,2012-05-16 00:00,2012-11-13 08:00,2012-11-13 08:00,,2012-06-30 00:00,2012-06-30 00:00,,,2012-04-29 08:00,2012-05-17 16:00,,,,,PT_Normal,,,,,TQdRbaHi706RmZktJW/q6Q,,,,N,0,0,,,2012-06-25 15:13,2012-07-16 15:38,nour,admin
435,149262,5725,23882,6841,1,100,N,N,N,CP_Drtn,TT_Task,DT_FixedDUR2,RV_OK,TK_Complete,4229EPI340,MRQ for Additional Piping Ball valves,,,,0,0,0,0,32,0,0,0,,2012-05-20 00:00,2012-05-24 00:00,2012-07-31 08:00,2012-07-31 08:00,,2012-06-30 00:00,2012-06-30 00:00,,,2012-07-01 08:00,2012-07-04 16:00,,,,,PT_Normal,,,,,getBCwmzjkWM77EW//VHoQ,,,,N,0,0,,,2012-06-27 14:43,2012-07-16 15:38,nour,admin
436,149263,5725,23882,6841,1,100,N,N,N,CP_Drtn,TT_Task,DT_FixedDUR2,RV_OK,TK_Complete,4229EPI60,Issue MRQ for Piping bulk,,,,0,0,0,0,64,0,0,0,,2011-11-15 00:00,2011-11-24 00:00,2014-11-02 16:00,2014-11-02 16:00,,2012-07-05 00:00,2012-07-05 00:00,,,2011-12-04 08:00,2011-12-13 16:00,,,,,PT_Normal,,,,,C2hlRczSmUab6Ggp85CTBg,oARo+yhXM0mbfyeEpyVYrw,,,N,0,0,,,2012-07-16 15:09,2012-07-16 15:09,admin,admin
437,149264,5725,23853,6841,1,100,N,N,N,CP_Drtn,TT_Task,DT_FixedDUR2,RV_OK,TK_Complete,4229EPI110,Issue plot plans-Approval,,,,0,0,0,0,80,0,0,0,,2011-10-26 00:00,2011-11-21 00:00,2012-09-24 08:00,2012-09-24 08:00,,2012-06-30 00:00,2012-06-30 00:00,,,2011-12-04 08:00,2011-12-15 16:00,,,,,PT_Normal,,,,,n2aUt/vmPESwnejzFciu3Q,ZsEQ0tICRLeOA9EICN0T6Q,,,N,0,0,,,2012-06-25 15:13,2012-07-16 15:38,nour,admin
438,149265,5725,23882,6841,1,100,N,N,N,CP_Drtn,TT_Task,DT_FixedDUR2,RV_OK,TK_Complete,4229EPI150,Piping fabrication and erection specification,,,,0,0,0,0,40,0,0,0,,2011-11-21 00:00,2011-11-27 00:00,2013-02-24 16:00,2013-02-24 16:00,,2012-06-30 00:00,2012-06-30 00:00,,,2011-12-04 08:00,2011-12-08 16:00,,,,,PT_Normal,,,,,6BwOMDvvV0K6sjcLhAg0Eg,,,,N,0,0,,,2012-06-25 15:13,2012-07-16 15:38,nour,admin
439,149266,5725,23882,6841,1,100,N,N,N,CP_Drtn,TT_Task,DT_FixedDUR2,RV_OK,TK_Complete,4229EPI50,Issue MRQ for Ball valves,,,,0,0,0,0,40,0,0,0,,2011-11-24 00:00,2011-12-08 00:00,2012-09-06 08:00,2012-09-06 08:00,,2012-07-05 00:00,2012-07-05 00:00,,,2011-12-04 08:00,2011-12-08 16:00,,,,,PT_Normal,,,,,8kZoa/FSL0Wvudz0mRT3zA,fa+QQs2lrkWif6ZY5ZmI+Q,,,N,0,0,,,2012-07-16 15:09,2012-07-16 15:09,admin,admin
440,149267,5725,23882,6841,1,100,N,N,N,CP_Drtn,TT_Task,DT_FixedDUR2,RV_OK,TK_Complete,4229EPI10,Issue MRQ for L&R traps,,,,0,0,0,0,56,0,0,0,,2011-08-15 08:00,2011-08-23 16:00,2012-03-13 08:00,2012-03-13 08:00,,2012-07-05 00:00,2012-07-05 00:00,,,2011-08-15 08:00,2011-08-23 16:00,,,,,PT_Normal,,,,,1G4Ts5EoRU+cns2H8vF1AQ,,,,N,0,0,,,2012-07-16 15:09,2012-07-16 15:09,admin,admin
441,149268,5725,23882,6841,1,100,N,N,N,CP_Drtn,TT_Task,DT_FixedDUR2,RV_OK,TK_Complete,4229EPI30,T.E.R for L&R,,,,0,0,0,0,120,0,0,0,,2011-09-22 08:00,2011-12-04 00:00,2012-03-13 08:00,2012-03-13 08:00,,2012-07-05 00:00,2012-07-05 00:00,,,2011-09-22 08:00,2011-10-13 16:00,,,,,PT_Normal,,,,,IWiInmvQe0W//WondGeqfg,ErUDIEAHkEWZWIjcmb+Ptg,,,N,0,0,,,2012-07-16 15:09,2012-07-16 15:09,admin,admin
442,149269,5725,23882,6841,1,100,N,N,N,CP_Drtn,TT_Task,DT_FixedDUR2,RV_OK,TK_Complete,4229EPI70,MRP for L&R,,,,0,0,0,0,40,0,0,0,,2012-02-09 00:00,2012-02-20 00:00,2012-03-13 08:00,2012-03-13 08:00,,2012-07-05 00:00,2012-07-05 00:00,,,2012-03-04 08:00,2012-03-08 16:00,,,,,PT_Normal,,,,,BfDeX9ip/0WTj6zEbvrhEA,,,,N,0,0,,,2012-07-16 15:09,2012-07-16 15:09,admin,admin
443,149270,5725,23853,6841,1,100,N,N,N,CP_Drtn,TT_Task,DT_FixedDUR2,RV_OK,TK_Complete,4229EPI210,Line designation table -Approval,,,,0,0,0,0,48,0,0,0,,2011-10-24 00:00,2012-01-02 16:00,2013-02-24 16:00,2013-02-24 16:00,,2012-06-30 00:00,2012-06-30 00:00,,,2011-10-30 08:00,2011-11-13 16:00,,,,,PT_Normal,,,,,6mX0vMwjPkm81mf6JYB14g,,,,N,0,0,,,2012-06-25 15:13,2012-07-16 15:38,nour,admin
444,149271,5725,23882,6841,1,100,N,N,N,CP_Drtn,TT_Task,DT_FixedDUR2,RV_OK,TK_Complete,A1000,Thermal insulation specification,,,,0,0,0,0,40,0,0,0,,2011-11-21 00:00,2011-11-24 00:00,2014-11-02 16:00,2014-11-02 16:00,,2012-07-05 00:00,2012-07-05 00:00,,,2011-12-04 08:00,2011-12-08 16:00,,,,,PT_Normal,,,,,D6BcFqeCgEKbi4Er7VG8Pw,,,,N,0,0,,,2012-07-16 15:09,2012-07-16 15:09,admin,admin
445,149272,5725,23882,6841,1,100,N,N,N,CP_Drtn,TT_Task,DT_FixedDUR2,RV_OK,TK_Complete,A1010,Piping fabrication and erection specification,,,,0,0,0,0,40,0,0,0,,2011-11-21 00:00,2011-11-27 00:00,2014-11-02 16:00,2014-11-02 16:00,,2012-07-05 00:00,2012-07-05 00:00,,,2011-12-04 08:00,2011-12-08 16:00,,,,,PT_Normal,,,,,pndpYDKkKUmr8axXCQMWtg,,,,N,0,0,,,2012-07-16 15:09,2012-07-16 15:09,admin,admin
446,149273,5725,23882,6841,1,100,N,N,N,CP_Drtn,TT_Task,DT_FixedDUR2,RV_OK,TK_Complete,A1020,Field test of piping specification.,,,,0,0,0,0,40,0,0,0,,2011-11-21 00:00,2011-11-24 00:00,2014-11-02 16:00,2014-11-02 16:00,,2012-07-05 00:00,2012-07-05 00:00,,,2011-12-11 08:00,2011-12-15 16:00,,,,,PT_Normal,,,,,Xrttbxq1LUyd+HZQ5ycn2Q,,,,N,0,0,,,2012-07-16 15:09,2012-07-16 15:09,admin,admin
447,149274,5725,23882,6841,1,100,N,N,N,CP_Drtn,TT_Task,DT_FixedDUR2,RV_OK,TK_Complete,4229EPI140,Field test of piping specification.,,,,0,0,0,0,40,0,0,0,,2011-11-21 00:00,2011-11-24 00:00,2013-02-24 16:00,2013-02-24 16:00,,2012-06-30 00:00,2012-06-30 00:00,,,2011-12-11 08:00,2011-12-15 16:00,,,,,PT_Normal,,,,,xMGXXThUxkCigaOQ1Mv5Yg,,,,N,0,0,,,2012-06-25 15:13,2012-07-16 15:38,nour,admin
448,149275,5725,23882,6841,1,100,N,N,N,CP_Drtn,TT_Task,DT_FixedDUR2,RV_OK,TK_Complete,4229EPI290,MRP for L&R,,,,0,0,0,0,40,0,0,0,,2012-02-09 00:00,2012-02-20 00:00,2012-08-02 08:00,2012-08-02 08:00,,2012-06-30 00:00,2012-06-30 00:00,,,2012-03-04 08:00,2012-03-08 16:00,,,,,PT_Normal,,,,,WBreEvKtd0ml1oTdeYu9MA,,,,N,0,0,,,2012-06-25 15:13,2012-07-16 15:38,nour,admin
449,149276,5725,23882,6841,1,100,N,N,N,CP_Drtn,TT_Task,DT_FixedDUR2,RV_OK,TK_Complete,4229EPI300,MRP for Piping bulk,,,,0,0,0,0,40,0,0,0,,2012-03-19 00:00,2012-03-27 16:00,2012-12-09 08:00,2012-12-09 08:00,,2012-06-30 00:00,2012-06-30 00:00,,,2012-03-20 08:00,2012-03-26 16:00,,,,,PT_Normal,,,,,l5vQpyjYdEO3bJ4mAXnBAA,ulMsewoMhEiApbF+oxOLEA,,,N,0,0,,,2012-06-25 15:13,2012-07-16 15:38,nour,admin
450,149277,5725,23882,6841,1,100,N,N,N,CP_Drtn,TT_Task,DT_FixedDUR2,RV_OK,TK_Complete,4229EPI200,Issue MRQ for Ball valves,,,,0,0,0,0,40,0,0,0,,2011-11-24 00:00,2011-12-08 00:00,2012-11-20 08:00,2012-11-20 08:00,,2012-06-30 00:00,2012-06-30 00:00,,,2011-12-04 08:00,2011-12-08 16:00,,,,,PT_Normal,,,,,ykl1C5+NZE2F8hDZylg8jA,fa+QQs2lrkWif6ZY5ZmI+Q,,,N,0,0,,,2012-06-25 15:13,2012-07-16 15:38,nour,admin
451,149278,5725,23857,6841,1,100,N,N,N,CP_Drtn,TT_Task,DT_FixedDUR2,RV_OK,TK_Complete,4229EME30,Motor load list IFA,,,,0,0,0,0,40,0,0,0,,2011-10-24 00:00,2011-11-16 00:00,2013-02-11 08:00,2013-02-11 08:00,,2012-06-30 00:00,2012-06-30 00:00,,,2011-10-13 08:00,2011-10-19 16:00,,,,,PT_Normal,,,,,i1foK5O6+EuY8OMMSERNaQ,,,,N,0,0,,,2012-06-25 15:13,2012-07-16 15:38,nour,admin
452,149279,5725,23857,6841,1,0,N,N,N,CP_Drtn,TT_Task,DT_FixedDUR2,RV_OK,TK_NotStart,4229EME70,Final Motor load list,,1112,0,16,0,0,0,16,0,0,0,,,,2013-01-31 08:00,2013-02-03 16:00,,2012-07-08 08:00,2012-07-09 16:00,2012-07-08 08:00,2012-07-09 16:00,2012-07-08 08:00,2012-07-09 16:00,,2013-01-31 08:00,2013-02-03 16:00,,PT_Normal,,,,,zBw9umVE8kq5MTAbZ+udBg,,,,N,0,0,,,2012-06-25 15:13,2012-07-16 15:38,nour,admin
453,149280,5725,23857,6841,1,100,N,N,N,CP_Drtn,TT_Task,DT_FixedDUR2,RV_OK,TK_Complete,4229EME20,Material selection Guide IFA,,,,0,0,0,0,112,0,0,0,,2011-09-25 08:00,2011-10-27 00:00,2013-02-24 16:00,2013-02-24 16:00,,2012-06-30 00:00,2012-06-30 00:00,,,2011-09-25 08:00,2011-10-13 16:00,,,,,PT_Normal,,,,,a2mcoysSsU+DmuSRdPGQDw,fS2yCILzQ1+s4v+Esy3IrA,,,N,0,0,,,2012-06-25 15:13,2012-07-16 15:38,nour,admin
454,149281,5725,23857,6841,1,100,N,N,N,CP_Drtn,TT_Task,DT_FixedDUR2,RV_OK,TK_Complete,4229EME40,Material selection Guide IFD,,,,0,0,0,0,40,0,0,0,2012-01-17 08:00,2012-01-17 08:00,2012-01-22 16:00,2013-02-24 16:00,2013-02-24 16:00,,2012-06-30 00:00,2012-06-30 00:00,,,2012-01-17 08:00,2012-01-23 16:00,,,,CS_MSO,PT_Normal,,,,,T4RSGjtH+UipSIpqzMlouw,,,,N,0,0,,,2012-06-25 15:13,2012-07-16 15:38,nour,admin
455,149282,5725,23867,6841,1,100,N,N,N,CP_Drtn,TT_Task,DT_FixedDUR2,RV_OK,TK_Complete,4229EME50,Material handling study IFA,,,,0,0,0,0,80,0,0,0,,2011-11-30 00:00,2012-01-08 00:00,2013-02-24 16:00,2013-02-24 16:00,,2012-06-30 00:00,2012-06-30 00:00,,,2011-12-04 08:00,2011-12-15 16:00,,,,,PT_Normal,,,,,MR9nqk7/g0a/sQb/ndVlIw,,,,N,0,0,,,2012-06-25 15:13,2012-07-16 15:38,nour,admin
456,149283,5725,23867,6841,1,100,N,N,N,CP_Drtn,TT_Task,DT_FixedDUR2,RV_OK,TK_Complete,4229EME90,Final Material handling study,,,,0,0,0,0,48,0,0,0,,2012-01-29 08:00,2012-04-04 00:00,2013-02-24 16:00,2013-02-24 16:00,,2012-06-30 00:00,2012-06-30 00:00,,,2012-01-29 08:00,2012-02-05 16:00,,,,,PT_Normal,,,,,sVwNx9Wia0SlVvr2odU4mA,,,,N,0,0,,,2012-06-25 15:13,2012-07-16 15:38,nour,admin
457,149284,5725,23867,6841,1,100,N,N,N,CP_Drtn,TT_Task,DT_FixedDUR2,RV_OK,TK_Complete,4229EME80,Material Selection philosophy report-Approval,,,,0,0,0,0,80,0,0,0,,2011-11-30 00:00,2012-01-29 00:00,2013-02-24 16:00,2013-02-24 16:00,,2012-06-30 00:00,2012-06-30 00:00,,,2011-12-18 08:00,2011-12-29 16:00,,,,,PT_Normal,,,,,xCMLCYTHtkKacj/2AE837Q,,,,N,0,0,,,2012-06-25 15:13,2012-07-16 15:38,nour,admin
458,149285,5725,23867,6841,1,100,N,N,N,CP_Drtn,TT_Task,DT_FixedDUR2,RV_OK,TK_Complete,4229EME110,Material Selection philosophy report-Final,,,,0,0,0,0,80,0,0,0,,2012-03-04 08:00,2012-03-15 16:00,2013-02-24 16:00,2013-02-24 16:00,,2012-06-30 00:00,2012-06-30 00:00,,,2012-03-04 08:00,2012-03-15 16:00,,,,,PT_Normal,,,,,tMEsSOPqNUaQjMRCOymcGg,,,,N,0,0,,,2012-06-25 15:13,2012-07-16 15:38,nour,admin
459,149286,5725,23854,6841,1,100,N,N,N,CP_Drtn,TT_Task,DT_FixedDUR2,RV_OK,TK_Complete,4229EME170,MRQ for Progressive Cavity Pump,,,,0,0,0,0,40,0,0,0,,2012-03-07 00:00,2012-03-13 00:00,2012-08-05 08:00,2012-08-05 08:00,,2012-06-30 00:00,2012-06-30 00:00,,,2012-04-29 08:00,2012-05-03 16:00,,,,,PT_Normal,,,,,N6C3dS0Z10a2iPZFT6CvJA,,,,N,0,0,,,2012-06-25 15:13,2012-07-16 15:38,nour,admin
460,149287,5725,23854,6841,1,0,N,N,N,CP_Drtn,TT_Task,DT_FixedDUR2,RV_OK,TK_NotStart,4229EME190,V.P.R for Progressive Cavity pump,,448,448,800,0,0,0,800,0,0,0,,,,2012-10-01 08:00,2013-02-24 16:00,,2012-07-08 08:00,2012-12-06 16:00,2012-07-08 08:00,2012-12-06 16:00,2012-07-08 08:00,2012-12-06 16:00,,2012-10-01 08:00,2013-02-24 16:00,,PT_Normal,,,,,8aAMWb3XPEKSDVdCZTsNZw,,,,N,0,0,,,2012-06-25 15:13,2012-07-16 15:38,nour,admin
461,149288,5725,23854,6841,1,0,N,N,N,CP_Drtn,TT_Task,DT_FixedDUR2,RV_OK,TK_NotStart,4229EME200,MRP for Progressive Cavity pump,,1128,0,40,0,0,0,40,0,0,0,,,,2013-02-04 08:00,2013-02-10 16:00,,2012-07-08 08:00,2012-07-12 16:00,2012-07-08 08:00,2012-07-12 16:00,2012-07-08 08:00,2012-07-12 16:00,,2013-02-04 08:00,2013-02-10 16:00,,PT_Normal,,,,,N/f3IfFKTUOscm1ofCmxvw,,,,N,0,0,,,2012-06-25 15:13,2012-07-16 15:38,nour,admin
462,149289,5725,23854,6841,1,100,N,N,N,CP_Drtn,TT_Task,DT_FixedDUR2,RV_OK,TK_Complete,4229EME180,T.E.R. for Progressive cavity pump,,,,0,0,0,0,240,0,0,0,,2012-04-29 00:00,2012-06-12 00:00,2012-08-05 08:00,2012-08-05 08:00,,2012-06-30 00:00,2012-06-30 00:00,,,2012-05-02 08:00,2012-06-12 16:00,,,,,PT_Normal,,,,,b9zk1kl5Ck+ktGwRsFDgMQ,,,,N,0,0,,,2012-06-25 15:13,2012-07-16 15:38,nour,admin
463,149290,5725,23854,6841,1,100,N,N,N,CP_Drtn,TT_Task,DT_FixedDUR2,RV_OK,TK_Complete,4229EME120,V.P.R for cathodic protection,,,,0,0,0,0,360,0,0,0,,2012-03-27 00:00,2012-05-22 00:00,2013-02-11 08:00,2013-02-11 08:00,,2012-06-30 00:00,2012-06-30 00:00,,,2012-04-08 08:00,2012-06-07 16:00,,,,,PT_Normal,,,,,Wdmrt6Qr60KoY2aIQ3YcgA,,,,N,0,0,,,2012-06-25 15:13,2012-07-16 15:38,nour,admin
464,149291,5725,23854,6841,1,100,N,N,N,CP_Drtn,TT_Task,DT_FixedDUR2,RV_OK,TK_Complete,4229EME130,Data sheets for corrosion inhibitor pump-Purchase,,,,0,0,0,0,24,0,0,0,,2012-03-25 00:00,2012-04-04 00:00,2013-02-24 16:00,2013-02-24 16:00,,2012-06-30 00:00,2012-06-30 00:00,,,2012-04-01 08:00,2012-04-03 16:00,,,,,PT_Normal,,,,,D6JWvx1B50GgIyN1Bd4/4Q,,,,N,0,0,,,2012-06-25 15:13,2012-07-16 15:38,nour,admin
465,149292,5725,23854,6841,1,100,N,N,N,CP_Drtn,TT_Task,DT_FixedDUR2,RV_OK,TK_Complete,4229EME140,Data sheets for demulsifier injection pump-Purchase,,,,0,0,0,0,40,0,0,0,,2012-03-25 00:00,2012-03-27 00:00,2013-02-24 16:00,2013-02-24 16:00,,2012-06-30 00:00,2012-06-30 00:00,,,2012-04-05 08:00,2012-04-11 16:00,,,,,PT_Normal,,,,,VMv4KMpP/U+ugt9g6Sgqnw,,,,N,0,0,,,2012-06-25 15:13,2012-07-16 15:38,nour,admin
466,149293,5725,23854,6841,1,100,N,N,N,CP_Drtn,TT_Task,DT_FixedDUR2,RV_OK,TK_Complete,4229EME150,Data sheets for scale inhibitor -Purchase,,,,0,0,0,0,40,0,0,0,,2012-03-25 00:00,2012-03-27 00:00,2013-02-24 16:00,2013-02-24 16:00,,2012-06-30 00:00,2012-06-30 00:00,,,2012-04-05 08:00,2012-04-11 16:00,,,,,PT_Normal,,,,,GzJ1KgvNfUmKocFMl1kVzA,,,,N,0,0,,,2012-06-25 15:13,2012-07-16 15:38,nour,admin
467,149294,5725,23854,6841,1,100,N,N,N,CP_Drtn,TT_Task,DT_FixedDUR2,RV_OK,TK_Complete,4229EME160,Specifications for positive displacement pumps,,,,0,0,0,0,40,0,0,0,,2012-03-25 00:00,2012-03-27 00:00,2013-02-24 16:00,2013-02-24 16:00,,2012-06-30 00:00,2012-06-30 00:00,,,2012-04-05 08:00,2012-04-11 16:00,,,,,PT_Normal,,,,,U7q6QWJrUUOgkXSQpjEBZQ,,,,N,0,0,,,2012-06-25 15:13,2012-07-16 15:38,nour,admin
468,149295,5725,23854,6841,1,100,N,N,N,CP_Drtn,TT_Task,DT_FixedDUR2,RV_OK,TK_Complete,4229EME10,MRQ for cathodic protection,,,,0,0,0,0,120,0,0,0,,2011-09-28 08:00,2011-10-20 00:00,2013-02-11 08:00,2013-02-11 08:00,,2012-06-30 00:00,2012-06-30 00:00,,,2011-09-28 08:00,2011-10-19 16:00,,,,,PT_Normal,,,,,a6gRpNWIqkKnCFUJJCWo5Q,,,,N,0,0,,,2012-06-25 15:13,2012-07-16 15:38,nour,admin
469,149296,5725,23854,6841,1,100,N,N,N,CP_Drtn,TT_Task,DT_FixedDUR2,RV_OK,TK_Complete,4229EME60,T.E.R for cathodic protection,,,,0,0,0,0,120,0,0,0,,2011-11-24 00:00,2011-12-27 00:00,2013-02-11 08:00,2013-02-11 08:00,,2012-06-30 00:00,2012-06-30 00:00,,,2011-12-04 08:00,2011-12-22 16:00,,,,,PT_Normal,,,,,+N//8io5JESUh21Dyp7kaQ,,,,N,0,0,,,2012-06-25 15:13,2012-07-16 15:38,nour,admin
470,149297,5725,23854,6841,1,100,N,N,N,CP_Drtn,TT_Task,DT_FixedDUR2,RV_OK,TK_Complete,4229EME100,MRP for cathodic protection,,,,0,0,0,0,40,0,0,0,,2012-02-26 00:00,2012-02-28 00:00,2013-02-11 08:00,2013-02-11 08:00,,2012-06-30 00:00,2012-06-30 00:00,,,2012-03-04 08:00,2012-03-08 16:00,,,,,PT_Normal,,,,,kVASSZMANkuZ3EqikI8cpA,,,,N,0,0,,,2012-06-25 15:13,2012-07-16 15:38,nour,admin
471,149298,5725,23871,6841,1,0,N,N,N,CP_Drtn,TT_Task,DT_FixedDUR2,RV_OK,TK_NotStart,4229EOF590,Cable trays supports -Construction,,928,640,80,0,0,0,80,0,0,0,,,,2013-02-11 08:00,2013-02-24 16:00,,2012-08-26 08:00,2012-09-06 16:00,2012-08-26 08:00,2012-09-06 16:00,2012-08-26 08:00,2012-09-06 16:00,,2013-02-11 08:00,2013-02-24 16:00,,PT_Normal,,,,,YiM8YO7Egk+w9lOaqWQaGA,,,,N,0,0,,,2012-06-25 15:13,2012-07-16 15:38,nour,admin
472,149299,5725,23871,6841,1,100,N,N,N,CP_Drtn,TT_Task,DT_FixedDUR2,RV_OK,TK_Complete,4229EOF200,Jacket appartenues Drawings-Approval,,,,0,0,0,0,160,0,0,0,,2011-12-14 08:00,2011-12-25 00:00,2013-02-24 16:00,2013-02-24 16:00,,2012-06-30 00:00,2012-06-30 00:00,,,2011-12-14 08:00,2012-01-10 16:00,,,,,PT_Normal,,,,,Wdd599WjYUOYKpOTZa3q/w,,,,N,0,0,,,2012-06-25 15:13,2012-07-16 15:38,nour,admin
473,149300,5725,23871,6841,1,100,N,N,N,CP_Drtn,TT_Task,DT_FixedDUR2,RV_OK,TK_Complete,4229EOF520,Jacket Appurtenances Drawings-Construction,,,,0,0,0,0,0,0,0,0,,2012-06-17 00:00,2012-06-26 00:00,2013-02-24 16:00,2013-02-24 16:00,,2012-06-30 00:00,2012-06-30 00:00,,,2012-07-01 08:00,2012-07-01 08:00,,,,,PT_Normal,,,,,3mpt5C0VW02vEG/c8o8JMg,,,,N,0,0,,,2012-06-25 15:13,2012-07-16 15:38,nour,admin
474,149301,5725,23871,6841,1,100,N,N,N,CP_Drtn,TT_Task,DT_FixedDUR2,RV_OK,TK_Complete,4229EOF310,Grating & handrails drawings-Approval,,,,0,0,0,0,120,0,0,0,,2012-01-04 00:00,2012-01-08 00:00,2013-02-24 16:00,2013-02-24 16:00,,2012-06-30 00:00,2012-06-30 00:00,,,2012-01-30 08:00,2012-02-19 16:00,,,,,PT_Normal,,,,,rw7MpJtqoEGaLftp1EBfzw,,,,N,0,0,,,2012-06-25 15:13,2012-07-16 15:38,nour,admin
475,149302,5725,23871,6841,1,100,N,N,N,CP_Drtn,TT_Task,DT_FixedDUR2,RV_OK,TK_Complete,4229EOF410,Grating & handrails drawings-Construction,,,,0,0,0,0,120,0,0,0,,2012-01-10 00:00,2012-01-19 00:00,2013-02-24 16:00,2013-02-24 16:00,,2012-06-30 00:00,2012-06-30 00:00,,,2012-02-27 08:00,2012-03-18 16:00,,,,,PT_Normal,,,,,C0ZyynM1PUqn9gu1clPaXw,,,,N,0,0,,,2012-06-25 15:13,2012-07-16 15:38,nour,admin
476,149303,5725,23871,6841,1,0,N,N,N,CP_Drtn,TT_Task,DT_FixedDUR2,RV_OK,TK_NotStart,4229EOF580,Piping supports -Construction,,1048,760,40,0,0,0,40,0,0,0,,,,2013-02-18 08:00,2013-02-24 16:00,,2012-08-05 08:00,2012-08-09 16:00,2012-08-05 08:00,2012-08-09 16:00,2012-08-05 08:00,2012-08-09 16:00,,2013-02-18 08:00,2013-02-24 16:00,,PT_Normal,,,,,yxcGpiECB0uaRbM1UVOOjg,,,,N,0,0,,,2012-06-25 15:13,2012-07-16 15:38,nour,admin
477,149304,5725,23871,6841,1,0,N,N,N,CP_Drtn,TT_Task,DT_FixedDUR2,RV_OK,TK_NotStart,4229EOF360,Piping supports -Approval,,1184,0,64,0,0,0,64,0,0,0,,,,2013-02-06 08:00,2013-02-17 16:00,,2012-07-01 08:00,2012-07-10 16:00,2012-07-01 08:00,2012-07-10 16:00,2012-07-01 08:00,2012-07-10 16:00,,2013-02-06 08:00,2013-02-17 16:00,,PT_Normal,,,,,w0i2Xt9Re0yLpxhr2eG8jQ,,,,N,0,0,,,2012-06-25 15:13,2012-07-16 15:38,nour,admin
478,149305,5725,23871,6841,1,100,N,N,N,CP_Drtn,TT_Task,DT_FixedDUR2,RV_OK,TK_Complete,4229EOF120,General drawings-Approval,,,,0,0,0,0,200,0,0,0,,2011-10-19 08:00,2011-11-22 00:00,2013-02-24 16:00,2013-02-24 16:00,,2012-06-30 00:00,2012-06-30 00:00,,,2011-10-19 08:00,2011-11-29 16:00,,,,,PT_Normal,,,,,JU04wBSitkGlTcWht+k1YA,pHZmOGuMSlyGsG/c/oK2Fg,,,N,0,0,,,2012-06-25 15:13,2012-07-16 15:38,nour,admin
479,149306,5725,23871,6841,1,100,N,N,N,CP_Drtn,TT_Task,DT_FixedDUR2,RV_OK,TK_Complete,4229EOF270,General Drawings- Construction,,,,0,0,0,0,160,0,0,0,,2011-12-07 00:00,2011-12-29 00:00,2013-02-24 16:00,2013-02-24 16:00,,2012-06-30 00:00,2012-06-30 00:00,,,2012-01-01 08:00,2012-01-29 16:00,,,,,PT_Normal,,,,,IEqcWFsRaEa2FAJOAL6qIA,,,,N,0,0,,,2012-06-25 15:13,2012-07-16 15:38,nour,admin
480,149307,5725,23871,6841,1,100,N,N,N,CP_Drtn,TT_Task,DT_FixedDUR2,RV_OK,TK_Complete,4229EOF130,Deck primary steel Drawings- Approval,,,,0,0,0,0,160,0,0,0,,2011-11-22 00:00,2011-12-29 00:00,2013-01-13 08:00,2013-01-13 08:00,,2012-06-30 00:00,2012-06-30 00:00,,,2011-12-04 08:00,2011-12-29 16:00,,,,,PT_Normal,,,,,EvZdbQXaWk22BE/+SAXgiw,r1vh6DQ+T+Sw8D8Gqb1mPA,,,N,0,0,,,2012-06-25 15:13,2012-07-16 15:38,nour,admin
481,149308,5725,23871,6841,1,100,N,N,N,CP_Drtn,TT_Task,DT_FixedDUR2,RV_OK,TK_Complete,4229EOF10,Jacket primary steel  Drawings-Approval,,,,0,0,0,0,200,0,0,0,,2011-10-19 08:00,2011-11-22 00:00,2013-01-13 08:00,2013-01-13 08:00,,2012-06-30 00:00,2012-06-30 00:00,,,2011-10-19 08:00,2011-11-29 16:00,,,,,PT_Normal,,,,,H8l9Nv0UB02fRLL3DS9qow,5t6WlUnKSuqJQ8zryJtE8g,,,N,0,0,,,2012-06-25 15:13,2012-07-16 15:38,nour,admin
482,149309,5725,23871,6841,1,100,N,N,N,CP_Drtn,TT_Task,DT_FixedDUR2,RV_OK,TK_Complete,4229EOF260,Jacket primary steel  Drawings- Construction,,,,0,0,0,0,160,0,0,0,,2011-12-15 00:00,2011-12-29 00:00,2013-02-24 16:00,2013-02-24 16:00,,2012-06-30 00:00,2012-06-30 00:00,,,2012-01-01 08:00,2012-01-29 16:00,,,,,PT_Normal,,,,,oWdgsnyPrkasBD7sUumbsA,72Fq/cOZRx2mimvebPGxUw,,,N,0,0,,,2012-06-25 15:13,2012-07-16 15:38,nour,admin
483,149310,5725,23871,6841,1,0,N,N,N,CP_Drtn,TT_Task,DT_FixedDUR2,RV_OK,TK_Active,4229EOF550,Deck primary steel Drawings- Construction,,928,0,48,0,0,0,120,0,0,0,,2012-05-20 00:00,,2013-01-13 08:00,2013-01-20 16:00,2012-07-26 16:00,2012-07-19 08:00,2012-07-26 16:00,2012-07-19 08:00,2012-07-26 16:00,2012-06-18 08:00,2012-07-08 16:00,,2013-01-13 08:00,2013-01-20 16:00,,PT_Normal,,,,,ig7LfR/5TUuK83HHPFrszg,cKAHJrH+Ry+KoWBkOlxCOw,,,N,0,0,,,2012-06-25 15:13,2012-07-16 15:38,nour,admin
484,149311,5725,23871,6841,1,100,N,N,N,CP_Drtn,TT_Task,DT_FixedDUR2,RV_OK,TK_Complete,4229EOF290,Stairs drawings-Approval,,,,0,0,0,0,80,0,0,0,,2012-01-01 08:00,2012-02-20 00:00,2013-02-24 16:00,2013-02-24 16:00,,2012-06-30 00:00,2012-06-30 00:00,,,2012-01-01 08:00,2012-01-12 16:00,,,,,PT_Normal,,,,,wOAnJcQwS0ml8zYJoQ1xWg,,,,N,0,0,,,2012-06-25 15:13,2012-07-16 15:38,nour,admin
485,149312,5725,23871,6841,1,100,N,N,N,CP_Drtn,TT_Task,DT_FixedDUR2,RV_OK,TK_Complete,4229EOF390,Stairs drawings-Construction,,,,0,0,0,0,80,0,0,0,,2012-06-18 00:00,2012-06-24 00:00,2013-02-24 16:00,2013-02-24 16:00,,2012-07-18 16:00,2012-07-18 16:00,,,2012-07-29 08:00,2012-08-09 16:00,,,,,PT_Normal,,,,,nnC4aQIw/0ySmf9OfnPKfg,,,,N,0,0,,,2012-06-25 15:13,2012-07-16 15:38,nour,admin
486,149313,5725,23871,6841,1,0,N,N,N,CP_Drtn,TT_Task,DT_FixedDUR2,RV_OK,TK_NotStart,4229EOF600,Equipment fixation deatils-Construction,,1064,776,80,0,0,0,80,0,0,0,,,,2013-02-11 08:00,2013-02-24 16:00,,2012-07-25 08:00,2012-08-07 16:00,2012-07-25 08:00,2012-08-07 16:00,2012-07-25 08:00,2012-08-07 16:00,,2013-02-11 08:00,2013-02-24 16:00,,PT_Normal,,,,,A/FY6yrLPEirocDfqXnFLA,,,,N,0,0,,,2012-06-25 15:13,2012-07-16 15:38,nour,admin
487,149314,5725,23871,6841,1,0,N,N,N,CP_Drtn,TT_Task,DT_FixedDUR2,RV_OK,TK_Active,4229EOF280,Cable trays supports -Approval,,1080,0,88,0,0,0,96,0,0,0,2012-05-15 08:00,2012-01-29 00:00,,2013-01-20 08:00,2013-02-03 16:00,2012-07-15 16:00,2012-07-01 08:00,2012-07-15 16:00,2012-07-01 08:00,2012-07-15 16:00,2012-05-15 08:00,2012-05-30 16:00,,2013-01-20 08:00,2013-02-03 16:00,CS_MSO,PT_Normal,,,,,nA0wOP7iJ0CsIgp8vSuLKQ,,,,N,0,0,,,2012-06-25 15:13,2012-07-16 15:38,nour,admin
488,149315,5725,23871,6841,1,100,N,N,N,CP_Drtn,TT_Task,DT_FixedDUR2,RV_OK,TK_Complete,4229EOF170,Jacket secondary steel  & piles Drawings-Approval,,,,0,0,0,0,120,0,0,0,,2011-11-23 00:00,2011-12-15 00:00,2013-02-24 16:00,2013-02-24 16:00,,2012-06-30 00:00,2012-06-30 00:00,,,2011-12-04 08:00,2011-12-22 16:00,,,,,PT_Normal,,,,,L/9jmAIl/E2901/X733XIQ,,,,N,0,0,,,2012-06-25 15:13,2012-07-16 15:38,nour,admin
489,149316,5725,23871,6841,1,100,N,N,N,CP_Drtn,TT_Task,DT_FixedDUR2,RV_OK,TK_Complete,4229EOF230,Deck secondary steel Drawings- Approval,,,,0,0,0,0,160,0,0,0,,2011-12-14 08:00,2012-01-08 00:00,2013-02-24 16:00,2013-02-24 16:00,,2012-06-30 00:00,2012-06-30 00:00,,,2011-12-14 08:00,2012-01-10 16:00,,,,,PT_Normal,,,,,GYYOqfqJwE2Ehsd3PynoEw,,,,N,0,0,,,2012-06-25 15:13,2012-07-16 15:38,nour,admin
490,149317,5725,23871,6841,1,100,N,N,N,CP_Drtn,TT_Task,DT_FixedDUR2,RV_OK,TK_Complete,4229EOF350,Jacket secondary steel  & piles Drawings- Construction,,,,0,0,0,0,120,0,0,0,,2012-01-15 00:00,2012-02-28 00:00,2013-02-24 16:00,2013-02-24 16:00,,2012-06-30 00:00,2012-06-30 00:00,,,2012-01-29 08:00,2012-02-16 16:00,,,,,PT_Normal,,,,,+DA3hKbrPU2ic0tqXnqqQQ,,,,N,0,0,,,2012-06-25 15:13,2012-07-16 15:38,nour,admin
491,149318,5725,23871,6841,1,0,N,N,N,CP_Drtn,TT_Task,DT_FixedDUR2,RV_OK,TK_Active,4229EOF560,Deck secondary  steel Drawings- Construction,,928,0,120,0,0,0,120,0,0,0,,2012-05-20 00:00,,2013-01-21 08:00,2013-02-10 16:00,,2012-07-29 08:00,2012-08-16 16:00,2012-07-29 08:00,2012-08-16 16:00,2012-07-09 08:00,2012-07-29 16:00,,2013-01-21 08:00,2013-02-10 16:00,,PT_Normal,,,,,Ou1fEUZVsUSyBsALr9PsTA,,,,N,0,0,,,2012-06-25 15:13,2012-07-16 15:38,nour,admin
492,149319,5725,23858,6841,1,0,N,N,N,CP_Drtn,TT_Task,DT_FixedDUR2,RV_OK,TK_Active,4229EOF610,Topside weight control report- Final,,1048,40,0,0,0,0,64,0,0,0,,2012-06-28 00:00,,2013-02-10 16:00,2013-02-10 16:00,,2012-07-29 08:00,2012-07-29 08:00,2012-07-29 08:00,2012-07-29 08:00,2012-08-26 08:00,2012-09-04 16:00,,2013-02-10 16:00,2013-02-10 16:00,,PT_Normal,,,,,6nlN5oSamkCtmoOlJM0xzw,,,,N,0,0,,,2012-06-25 15:13,2012-07-16 15:38,nour,admin
493,149320,5725,23858,6841,1,0,N,N,N,CP_Drtn,TT_Task,DT_FixedDUR2,RV_OK,TK_NotStart,4229EOF570,Constructability study report,,1008,720,80,0,0,0,80,0,0,0,,,,2013-02-11 08:00,2013-02-24 16:00,,2012-08-05 08:00,2012-08-16 16:00,2012-08-05 08:00,2012-08-16 16:00,2012-08-05 08:00,2012-08-16 16:00,,2013-02-11 08:00,2013-02-24 16:00,,PT_Normal,,,,,LIf7Boz7+UyKmxpLiVuPZA,,,,N,0,0,,,2012-06-25 15:13,2012-07-16 15:38,nour,admin
494,149321,5725,23858,6841,1,100,N,N,N,CP_Drtn,TT_Task,DT_FixedDUR2,RV_OK,TK_Complete,4229EOF20,In-place analysis design report-Approval,,,,0,0,0,0,576,0,0,0,,2011-10-19 08:00,2012-02-16 00:00,2013-02-11 08:00,2013-02-11 08:00,,2012-06-30 00:00,2012-06-30 00:00,,,2011-10-19 08:00,2012-02-05 16:00,,,,,PT_Normal,,,,,2iRuNMdEcEqC8Ac+jutr3A,,,,N,0,0,,,2012-06-25 15:13,2012-07-16 15:38,nour,admin
495,149322,5725,23858,6841,1,0,N,N,N,CP_Drtn,TT_Task,DT_FixedDUR2,RV_OK,TK_NotStart,4229EOF420,In-place analysis design report-Final,,1008,0,80,0,0,0,80,0,0,0,,,,2013-01-28 08:00,2013-02-10 16:00,2012-03-21 16:00,2012-07-22 08:00,2012-08-02 16:00,2012-07-22 08:00,2012-08-02 16:00,2012-07-22 08:00,2012-08-02 16:00,,2013-01-28 08:00,2013-02-10 16:00,,PT_Normal,,,,,Jlomg5Jk+0CiQ9RXDwpUAw,,,,N,0,0,,,2012-06-25 15:13,2012-07-16 15:38,nour,admin
496,149323,5725,23858,6841,1,100,N,N,N,CP_Drtn,TT_Task,DT_FixedDUR2,RV_OK,TK_Complete,4229EOF30,Earthquake analysis design report-Approval,,,,0,0,0,0,576,0,0,0,,2011-10-19 08:00,2012-02-28 00:00,2013-02-24 16:00,2013-02-24 16:00,,2012-06-30 00:00,2012-06-30 00:00,,,2011-10-19 08:00,2012-02-05 16:00,,,,,PT_Normal,,,,,CMe6Wi6qs0akCn6brxgtRQ,,,,N,0,0,,,2012-06-25 15:13,2012-07-16 15:38,nour,admin
497,149324,5725,23858,6841,1,0,N,N,N,CP_Drtn,TT_Task,DT_FixedDUR2,RV_OK,TK_NotStart,4229EOF440,Earthquake analysis design report-Final,,1048,0,80,0,0,0,80,0,0,0,,,,2013-02-11 08:00,2013-02-24 16:00,2012-03-21 16:00,2012-07-29 08:00,2012-08-09 16:00,2012-07-29 08:00,2012-08-09 16:00,2012-07-29 08:00,2012-08-09 16:00,,2013-02-11 08:00,2013-02-24 16:00,,PT_Normal,,,,,apLLIErz00i6g11Cowjofw,,,,N,0,0,,,2012-06-25 15:13,2012-07-16 15:38,nour,admin
498,149325,5725,23858,6841,1,100,N,N,N,CP_Drtn,TT_Task,DT_FixedDUR2,RV_OK,TK_Complete,4229EOF140,Deck loadout analysis report-Approval,,,,0,0,0,0,560,0,0,0,,2012-02-26 00:00,2012-02-26 00:00,2013-02-11 08:00,2013-02-11 08:00,,2012-06-30 00:00,2012-06-30 00:00,,,2011-10-27 08:00,2012-02-09 16:00,,,,,PT_Normal,,,,,fPBuKzvyCU6qF+6Ds1dAiw,,,,N,0,0,,,2012-06-25 15:13,2012-07-16 15:38,nour,admin
499,149326,5725,23858,6841,1,0,N,N,N,CP_Drtn,TT_Task,DT_FixedDUR2,RV_OK,TK_NotStart,4229EOF490,Deck loadout analysis report-Final,,1048,0,80,0,0,0,80,0,0,0,,,,2013-02-11 08:00,2013-02-24 16:00,2012-03-21 16:00,2012-07-29 08:00,2012-08-09 16:00,2012-07-29 08:00,2012-08-09 16:00,2012-07-29 08:00,2012-08-09 16:00,,2013-02-11 08:00,2013-02-24 16:00,,PT_Normal,,,,,dMVuCy9JdkuSaosMXWMslg,,,,N,0,0,,,2012-06-25 15:13,2012-07-16 15:38,nour,admin
500,149327,5725,23858,6841,1,100,N,N,N,CP_Drtn,TT_Task,DT_FixedDUR2,RV_OK,TK_Complete,4229EOF150,Deck transportation analysis report-Approval,,,,0,0,0,0,560,0,0,0,,2011-10-27 08:00,2012-02-16 00:00,2013-02-11 08:00,2013-02-11 08:00,,2012-06-30 00:00,2012-06-30 00:00,,,2011-10-27 08:00,2012-02-09 16:00,,,,,PT_Normal,,,,,DuD4P7qw1E+TWBIQkdgpLA,,,,N,0,0,,,2012-06-25 15:13,2012-07-16 15:38,nour,admin
501,149328,5725,23858,6841,1,0,N,N,N,CP_Drtn,TT_Task,DT_FixedDUR2,RV_OK,TK_NotStart,4229EOF500,Deck transportation analysis report-Final,,1088,0,80,0,0,0,80,0,0,0,,,,2013-02-11 08:00,2013-02-24 16:00,2012-03-21 16:00,2012-07-22 08:00,2012-08-02 16:00,2012-07-22 08:00,2012-08-02 16:00,2012-07-22 08:00,2012-08-02 16:00,,2013-02-11 08:00,2013-02-24 16:00,,PT_Normal,,,,,R9Om7cNp8kuTXxX8typV7Q,,,,N,0,0,,,2012-06-25 15:13,2012-07-16 15:38,nour,admin
502,149329,5725,23858,6841,1,100,N,N,N,CP_Drtn,TT_Task,DT_FixedDUR2,RV_OK,TK_Complete,4229EOF160,Deck lifting analysis design report-Approval,,,,0,0,0,0,560,0,0,0,,2011-10-27 08:00,2012-03-08 16:00,2013-02-24 16:00,2013-02-24 16:00,,2012-06-30 00:00,2012-06-30 00:00,,,2011-10-27 08:00,2012-02-09 16:00,,,,,PT_Normal,,,,,iUM5QUB0a0G0wZHYX4CNjA,,,,N,0,0,,,2012-06-25 15:13,2012-07-16 15:38,nour,admin
503,149330,5725,23858,6841,1,0,N,N,N,CP_Drtn,TT_Task,DT_FixedDUR2,RV_OK,TK_NotStart,4229EOF510,Deck lifting analysis design report-Final,,1088,800,80,0,0,0,80,0,0,0,,,,2013-02-11 08:00,2013-02-24 16:00,,2012-07-22 08:00,2012-08-02 16:00,2012-07-22 08:00,2012-08-02 16:00,2012-07-22 08:00,2012-08-02 16:00,,2013-02-11 08:00,2013-02-24 16:00,,PT_Normal,,,,,3HGq0IR3mUa8mCsu2MquLQ,,,,N,0,0,,,2012-06-25 15:13,2012-07-16 15:38,nour,admin
504,149331,5725,23858,6841,1,0,N,N,N,CP_Drtn,TT_Task,DT_FixedDUR2,RV_OK,TK_Active,4229EOF240,Deck miscellaneous design report-Approval,,1184,0,0,0,0,0,440,0,0,0,,2011-12-14 00:00,,2013-02-24 16:00,2013-02-24 16:00,2012-03-29 16:00,2012-07-18 08:00,2012-07-18 08:00,2012-07-18 08:00,2012-07-18 08:00,2012-01-01 08:00,2012-03-18 16:00,,2013-02-24 16:00,2013-02-24 16:00,,PT_Normal,,,,,nS4beLru502TFWL1hCjkAQ,,,,N,0,0,,,2012-06-25 15:13,2012-07-16 15:38,nour,admin
505,149332,5725,23858,6841,1,0,N,N,N,CP_Drtn,TT_Task,DT_FixedDUR2,RV_OK,TK_NotStart,4229EOF530,Deck miscellaneous design report-Final,,1048,760,80,0,0,0,80,0,0,0,,,,2013-02-11 08:00,2013-02-24 16:00,,2012-07-29 08:00,2012-08-09 16:00,2012-07-29 08:00,2012-08-09 16:00,2012-07-29 08:00,2012-08-09 16:00,,2013-02-11 08:00,2013-02-24 16:00,,PT_Normal,,,,,+351/s7PR02UUz8/weQ+YA,,,,N,0,0,,,2012-06-25 15:13,2012-07-16 15:38,nour,admin
506,149333,5725,23858,6841,1,100,N,N,N,CP_Drtn,TT_Task,DT_FixedDUR2,RV_OK,TK_Complete,4229EOF40,Fatigue analysis design report-Approval,,,,0,0,0,0,616,0,0,0,,2011-10-19 08:00,2012-02-09 00:00,2013-02-11 08:00,2013-02-11 08:00,,2012-06-30 00:00,2012-06-30 00:00,,,2011-10-19 08:00,2012-02-12 16:00,,,,,PT_Normal,,,,,jcOjvlHO60axosakomR3nQ,,,,N,0,0,,,2012-06-25 15:13,2012-07-16 15:38,nour,admin
507,149334,5725,23858,6841,1,100,N,N,N,CP_Drtn,TT_Task,DT_FixedDUR2,RV_OK,TK_Complete,4229EOF450,Fatigue analysis design report-Final,,,,0,0,0,0,80,0,0,0,,2012-02-21 00:00,2012-03-08 16:00,2013-02-24 16:00,2013-02-24 16:00,,2012-06-30 00:00,2012-06-30 00:00,,,2012-04-02 08:00,2012-04-15 16:00,,,,,PT_Normal,,,,,TzQOq7WTlEC+8qTJYtiHOw,,,,N,0,0,,,2012-06-25 15:13,2012-07-16 15:38,nour,admin
508,149335,5725,23858,6841,1,100,N,N,N,CP_Drtn,TT_Task,DT_FixedDUR2,RV_OK,TK_Complete,4229EOF50,Boat impact design analysis report-Approval,,,,0,0,0,0,616,0,0,0,,2011-10-19 08:00,2012-02-26 00:00,2013-02-24 16:00,2013-02-24 16:00,,2012-06-30 00:00,2012-06-30 00:00,,,2011-10-19 08:00,2012-02-12 16:00,,,,,PT_Normal,,,,,u70o1BlXKEa4p4wPNMvz5w,,,,N,0,0,,,2012-06-25 15:13,2012-07-16 15:38,nour,admin
509,149336,5725,23858,6841,1,100,N,N,N,CP_Drtn,TT_Task,DT_FixedDUR2,RV_OK,TK_Complete,4229EOF460,Boat impact design analysis report-Final,,,,0,0,0,0,80,0,0,0,,2012-03-11 08:00,2012-03-26 00:00,2013-02-24 16:00,2013-02-24 16:00,,2012-06-30 00:00,2012-06-30 00:00,,,2012-03-11 08:00,2012-03-22 16:00,,,,,PT_Normal,,,,,5Qxc7Pgd+UmWaxtsEg6jeg,,,,N,0,0,,,2012-06-25 15:13,2012-07-16 15:38,nour,admin
510,149337,5725,23858,6841,1,100,N,N,N,CP_Drtn,TT_Task,DT_FixedDUR2,RV_OK,TK_Complete,4229EOF60,Jacket loadout analysis design report-Approval,,,,0,0,0,0,416,0,0,0,,2011-10-19 08:00,2012-01-22 00:00,2013-02-24 16:00,2013-02-24 16:00,,2012-06-30 00:00,2012-06-30 00:00,,,2011-10-19 08:00,2012-01-05 16:00,,,,,PT_Normal,,,,,buTvUEmFc0OmTViUVLnRAw,,,,N,0,0,,,2012-06-25 15:13,2012-07-16 15:38,nour,admin
511,149338,5725,23858,6841,1,100,N,N,N,CP_Drtn,TT_Task,DT_FixedDUR2,RV_OK,TK_Complete,4229EOF320,Jacket loadout analysis design report-Final,,,,0,0,0,0,80,0,0,0,2012-01-30 00:00,2012-02-07 00:00,2012-02-09 00:00,2013-02-24 16:00,2013-02-24 16:00,,2012-06-30 00:00,2012-06-30 00:00,,,2012-03-04 08:00,2012-03-15 16:00,,,,CS_MSOA,PT_Normal,,,,,NuMzZGSmJkyeGgT0620TEw,,,,N,0,0,,,2012-06-25 15:13,2012-07-16 15:38,nour,admin
512,149339,5725,23858,6841,1,100,N,N,N,CP_Drtn,TT_Task,DT_FixedDUR2,RV_OK,TK_Complete,4229EOF70,Jacket transportation analysis design report-Approval,,,,0,0,0,0,416,0,0,0,,2011-10-19 08:00,2012-01-22 00:00,2013-02-24 16:00,2013-02-24 16:00,,2012-06-30 00:00,2012-06-30 00:00,,,2011-10-19 08:00,2012-01-05 16:00,,,,,PT_Normal,,,,,sVyGqbyg/0e8puIcdVt5/A,,,,N,0,0,,,2012-06-25 15:13,2012-07-16 15:38,nour,admin
513,149340,5725,23858,6841,1,100,N,N,N,CP_Drtn,TT_Task,DT_FixedDUR2,RV_OK,TK_Complete,4229EOF330,Jacket transportation analysis design report- Final,,,,0,0,0,0,80,0,0,0,,2012-02-07 00:00,2012-02-09 00:00,2013-02-24 16:00,2013-02-24 16:00,,2012-06-30 00:00,2012-06-30 00:00,,,2012-03-04 08:00,2012-03-15 16:00,,,,,PT_Normal,,,,,nN+qn4SORUiZHLbtIAuCAg,,,,N,0,0,,,2012-06-25 15:13,2012-07-16 15:38,nour,admin
514,149341,5725,23858,6841,1,100,N,N,N,CP_Drtn,TT_Task,DT_FixedDUR2,RV_OK,TK_Complete,4229EOF80,Jacket lifting analysis design report-Approval,,,,0,0,0,0,416,0,0,0,,2011-10-19 08:00,2012-01-05 00:00,2013-02-24 16:00,2013-02-24 16:00,,2012-06-30 00:00,2012-06-30 00:00,,,2011-10-19 08:00,2012-01-05 16:00,,,,,PT_Normal,,,,,9oHL3IwmNkq2RGni8ZsZeQ,,,,N,0,0,,,2012-06-25 15:13,2012-07-16 15:38,nour,admin
515,149342,5725,23858,6841,1,100,N,N,N,CP_Drtn,TT_Task,DT_FixedDUR2,RV_OK,TK_Complete,4229EOF340,Jacket lifting analysis design report-Final,,,,0,0,0,0,80,0,0,0,,2012-01-29 08:00,2012-02-09 00:00,2013-02-24 16:00,2013-02-24 16:00,,2012-06-30 00:00,2012-06-30 00:00,,,2012-01-29 08:00,2012-02-09 16:00,,,,,PT_Normal,,,,,zU7+yaQaD0WOnfOnnzsvEQ,,,,N,0,0,,,2012-06-25 15:13,2012-07-16 15:38,nour,admin
516,149343,5725,23858,6841,1,100,N,N,N,CP_Drtn,TT_Task,DT_FixedDUR2,RV_OK,TK_Complete,4229EOF90,Jacket floatation & upending analysis report-Approval,,,,0,0,0,0,496,0,0,0,,2011-10-19 08:00,2012-01-31 00:00,2013-02-24 16:00,2013-02-24 16:00,,2012-06-30 00:00,2012-06-30 00:00,,,2011-10-19 08:00,2012-01-19 16:00,,,,,PT_Normal,,,,,tYGtglBg80mP2B66Uv0sfQ,,,,N,0,0,,,2012-06-25 15:13,2012-07-16 15:38,nour,admin
517,149344,5725,23858,6841,1,100,N,N,N,CP_Drtn,TT_Task,DT_FixedDUR2,RV_OK,TK_Complete,4229EOF370,Jacket floatation & upending analysis report-Final,,,,0,0,0,0,80,0,0,0,,2012-02-13 00:00,2012-03-07 00:00,2013-02-24 16:00,2013-02-24 16:00,,2012-06-30 00:00,2012-06-30 00:00,,,2012-03-27 08:00,2012-04-09 16:00,,,,,PT_Normal,,,,,hNPFQ+nIiE24Yg5fJ68ZRA,,,,N,0,0,,,2012-06-25 15:13,2012-07-16 15:38,nour,admin
518,149345,5725,23858,6841,1,100,N,N,N,CP_Drtn,TT_Task,DT_FixedDUR2,RV_OK,TK_Complete,4229EOF100,Jacket on-bottom stability report-Approval,,,,0,0,0,0,496,0,0,0,,2011-10-19 08:00,2012-01-31 00:00,2013-02-24 16:00,2013-02-24 16:00,,2012-06-30 00:00,2012-06-30 00:00,,,2011-10-19 08:00,2012-01-19 16:00,,,,,PT_Normal,,,,,a2S4D4BI2USy3Ou7ugT66A,,,,N,0,0,,,2012-06-25 15:13,2012-07-16 15:38,nour,admin
519,149346,5725,23858,6841,1,100,N,N,N,CP_Drtn,TT_Task,DT_FixedDUR2,RV_OK,TK_Complete,4229EOF380,Jacket on-bottom stability report-Final,,,,0,0,0,0,80,0,0,0,,2012-02-13 00:00,2012-02-26 00:00,2013-02-24 16:00,2013-02-24 16:00,,2012-06-30 00:00,2012-06-30 00:00,,,2012-03-29 08:00,2012-04-11 16:00,,,,,PT_Normal,,,,,FAgRCTT9pESo1YppC/4b9Q,,,,N,0,0,,,2012-06-25 15:13,2012-07-16 15:38,nour,admin
520,149347,5725,23858,6841,1,100,N,N,N,CP_Drtn,TT_Task,DT_FixedDUR2,RV_OK,TK_Complete,4229EOF110,Pile foundation design report-Approval,,,,0,0,0,0,648,0,0,0,,2011-10-19 08:00,2012-03-14 00:00,2013-02-24 16:00,2013-02-24 16:00,,2012-06-30 00:00,2012-06-30 00:00,,,2011-10-19 08:00,2012-02-16 16:00,,,,,PT_Normal,,,,,vNQtEP3f3UOOkAxuQ+vRFA,,,,N,0,0,,,2012-06-25 15:13,2012-07-16 15:38,nour,admin
521,149348,5725,23858,6841,1,100,N,N,N,CP_Drtn,TT_Task,DT_FixedDUR2,RV_OK,TK_Complete,4229EOF250,Pushover analysis design SOW,,,,0,0,0,0,144,0,0,0,2012-03-01 08:00,2011-12-15 00:00,2011-12-29 00:00,2013-02-24 16:00,2013-02-24 16:00,,2012-06-30 00:00,2012-06-30 00:00,,,2012-03-04 08:00,2012-03-27 16:00,,,,CS_MSO,PT_Normal,,,,,g/KonaJ/pk6NOS0WV2sIpQ,,,,N,0,0,,,2012-06-25 15:13,2012-07-16 15:38,nour,admin
522,149349,5725,23858,6841,1,0,N,N,N,CP_Drtn,TT_Task,DT_FixedDUR2,RV_OK,TK_NotStart,4229EOF470,Pile foundation design report-Final,,1048,760,80,0,0,0,80,0,0,0,,,,2013-02-11 08:00,2013-02-24 16:00,,2012-07-29 08:00,2012-08-09 16:00,2012-07-29 08:00,2012-08-09 16:00,2012-07-29 08:00,2012-08-09 16:00,,2013-02-11 08:00,2013-02-24 16:00,,PT_Normal,,,,,D8hvTdkgOUOQQ28XmqTOWA,,,,N,0,0,,,2012-06-25 15:13,2012-07-16 15:38,nour,admin
523,149350,5725,23858,6841,1,100,N,N,N,CP_Drtn,TT_Task,DT_FixedDUR2,RV_OK,TK_Complete,4229EOF480,Pushover analysis design T.E.R,,,,0,0,0,0,80,0,0,0,,2012-02-01 00:00,2012-03-04 16:00,2013-02-24 16:00,2013-02-24 16:00,,2012-06-30 00:00,2012-06-30 00:00,,,2012-05-03 08:00,2012-05-16 16:00,,,,,PT_Normal,,,,,QovwEuMu3UqHRwfbryChZA,,,,N,0,0,,,2012-06-25 15:13,2012-07-16 15:38,nour,admin
524,149351,5725,23858,6841,1,100,N,N,N,CP_Drtn,TT_Task,DT_FixedDUR2,RV_OK,TK_Complete,4229EOF180,Jacket miscellaneous design report-Approval,,,,0,0,0,0,392,0,0,0,,2011-11-23 00:00,2012-02-09 00:00,2013-02-24 16:00,2013-02-24 16:00,,2012-06-30 00:00,2012-06-30 00:00,,,2011-12-04 08:00,2012-02-09 16:00,,,,,PT_Normal,,,,,cP7A5qK4rkGOqcY4UenJ2A,,,,N,0,0,,,2012-06-25 15:13,2012-07-16 15:38,nour,admin
525,149352,5725,23858,6841,1,0,N,N,N,CP_Drtn,TT_Task,DT_FixedDUR2,RV_OK,TK_NotStart,4229EOF630,Jacket miscellaneous design report-Final,,928,640,80,0,0,0,80,0,0,0,,,,2013-02-11 08:00,2013-02-24 16:00,,2012-08-26 08:00,2012-09-06 16:00,2012-08-26 08:00,2012-09-06 16:00,2012-08-26 08:00,2012-09-06 16:00,,2013-02-11 08:00,2013-02-24 16:00,,PT_Normal,,,,,tVbnWaBtPU6ofvDTdiKKVg,,,,N,0,0,,,2012-06-25 15:13,2012-07-16 15:38,nour,admin
526,149353,5725,23858,6841,1,100,N,N,N,CP_Drtn,TT_Task,DT_FixedDUR2,RV_OK,TK_Complete,4229EOF190,Jacket weight control report -Approval,,,,0,0,0,0,64,0,0,0,,2011-12-14 00:00,2012-01-26 00:00,2013-02-24 16:00,2013-02-24 16:00,,2012-06-30 00:00,2012-06-30 00:00,,,2012-01-01 08:00,2012-01-10 16:00,,,,,PT_Normal,,,,,Y/gVYEmHCEKNeEn8zo3RIw,,,,N,0,0,,,2012-06-25 15:13,2012-07-16 15:38,nour,admin
527,149354,5725,23858,6841,1,100,N,N,N,CP_Drtn,TT_Task,DT_FixedDUR2,RV_OK,TK_Complete,4229EOF300,Topside weight control report- Approval,,,,0,0,0,0,64,0,0,0,,2011-11-22 00:00,2012-01-31 00:00,2013-02-24 16:00,2013-02-24 16:00,,2012-06-30 00:00,2012-06-30 00:00,,,2012-01-18 08:00,2012-01-30 16:00,,,,,PT_Normal,,,,,32esdXBIIU2k/IPddPONXQ,,,,N,0,0,,,2012-06-25 15:13,2012-07-16 15:38,nour,admin
528,149355,5725,23858,6841,1,100,N,N,N,CP_Drtn,TT_Task,DT_FixedDUR2,RV_OK,TK_Complete,4229EOF430,Jacket weight control report -Final,,,,0,0,0,0,64,0,0,0,,2012-01-11 00:00,2012-02-09 00:00,2013-02-24 16:00,2013-02-24 16:00,,2012-06-30 00:00,2012-06-30 00:00,,,2012-03-25 08:00,2012-04-03 16:00,,,,,PT_Normal,,,,,dcqI+3iEVEiQngYJUfn7kA,,,,N,0,0,,,2012-06-25 15:13,2012-07-16 15:38,nour,admin
529,149356,5725,23859,6037,1,100,N,N,N,CP_Drtn,TT_Task,DT_FixedDUR2,RV_OK,TK_Complete,4229EOF210,Steel structure specification,,,,0,0,0,0,48,0,0,0,,2011-12-13 00:00,2011-12-20 16:00,2013-02-24 16:00,2013-02-24 16:00,,2012-06-30 00:00,2012-06-30 00:00,,,2011-12-14 16:00,2011-12-20 16:00,,,,,PT_Normal,,,,,N76H17IJ40662PKiGRHesg,nh2OsvLATSC5rtxCW++dPA,,,N,0,0,,,2012-06-25 15:13,2012-07-16 15:38,nour,admin
530,149357,5725,23859,6037,1,100,N,N,N,CP_Drtn,TT_Task,DT_FixedDUR2,RV_OK,TK_Complete,4229EOF220,Weight control procedures,,,,0,0,0,0,48,0,0,0,,2011-12-13 00:00,2011-12-20 16:00,2013-02-24 16:00,2013-02-24 16:00,,2012-06-30 00:00,2012-06-30 00:00,,,2011-12-14 16:00,2011-12-20 16:00,,,,,PT_Normal,,,,,M5FPq2pzxUC699lFOw7vZA,P/q4bOA8Q5mdAZKi/N3pnw,,,N,0,0,,,2012-06-25 15:13,2012-07-16 15:38,nour,admin
531,149358,5725,23859,6037,1,100,N,N,N,CP_Drtn,TT_Task,DT_FixedDUR2,RV_OK,TK_Complete,4229EOF620,Deck Secondary  Steel structure MTO,,,,0,0,0,0,40,0,0,0,,2011-12-18 00:00,2011-12-28 00:00,2013-02-24 16:00,2013-02-24 16:00,,2012-08-16 16:00,2012-08-16 16:00,,,2012-08-30 16:00,2012-09-04 16:00,,,,,PT_Normal,,,,,1AGl8SJN5kmIZdZ5620NPw,sANoBJq9SXeJwue+C5ok0Q,,,N,0,0,,,2012-06-25 15:13,2012-07-16 15:38,nour,admin
532,149359,5725,23859,6037,1,100,N,N,N,CP_Drtn,TT_Task,DT_FixedDUR2,RV_OK,TK_Complete,4229EOF540,Jacket secondary steel & Piles  MTO,,,,0,0,0,0,40,0,0,0,,2011-12-18 08:00,2011-12-28 00:00,2013-02-24 16:00,2013-02-24 16:00,,2012-06-30 00:00,2012-06-30 00:00,,,2011-12-18 08:00,2011-12-22 17:00,,,,,PT_Normal,,,,,/v/nvsIgUkWZamXYTNsAeg,f8msic+ESYmMQVyjAZKluA,,,N,0,0,,,2012-06-25 15:13,2012-07-16 15:38,nour,admin
533,149360,5725,23859,6037,1,100,N,N,N,CP_Drtn,TT_Task,DT_FixedDUR2,RV_OK,TK_Complete,4229EOF640,Jacket  Primary  Steel structure MTO,,,,0,0,0,0,40,0,0,0,,2011-12-18 08:00,2011-12-25 00:00,2013-02-24 16:00,2013-02-24 16:00,,2012-06-30 00:00,2012-06-30 00:00,,,2011-12-18 08:00,2011-12-22 17:00,,,,,PT_Normal,,,,,jPnvBGe8vkiHhwnHsQInQw,WfW5Cj3gRpKnkh5ags/fyQ,,,N,0,0,,,2012-06-25 15:13,2012-07-16 15:38,nour,admin
534,149361,5725,23859,6037,1,100,N,N,N,CP_Drtn,TT_Task,DT_FixedDUR2,RV_OK,TK_Complete,4229EOF650,Deck Primary Steel structure MTO,,,,0,0,0,0,40,0,0,0,,2011-12-18 08:00,2011-12-28 00:00,2013-02-24 16:00,2013-02-24 16:00,,2012-06-30 00:00,2012-06-30 00:00,,,2011-12-18 08:00,2011-12-22 17:00,,,,,PT_Normal,,,,,PKe9+dA2nUqQDVWeD0xaxw,BbgcnaE3QVSI7hB6gcXwgQ,,,N,0,0,,,2012-06-25 15:13,2012-07-16 15:38,nour,admin
535,149362,5725,23859,6037,1,100,N,N,N,CP_Drtn,TT_Task,DT_FixedDUR2,RV_OK,TK_Complete,4229EOF660,Jacket app. MTO,,,,0,0,0,0,40,0,0,0,,2011-12-18 00:00,2011-12-28 00:00,2013-02-24 16:00,2013-02-24 16:00,,2012-06-30 00:00,2012-06-30 00:00,,,2012-05-21 16:00,2012-05-26 16:00,,,,,PT_Normal,,,,,+kM0meTdCUKfAlWu6C1LDA,RtOWAB3Bl0iNbQrSBz3AiA,,,N,0,0,,,2012-06-25 15:13,2012-07-16 15:38,nour,admin
536,149363,5725,23875,6841,1,100,N,N,N,CP_Drtn,TT_Task,DT_FixedDUR2,RV_OK,TK_Complete,4229EEL90,Cable schedule IFA,,,,0,0,0,0,40,0,0,0,,2011-12-04 00:00,2011-12-06 00:00,2012-09-24 08:00,2012-09-24 08:00,,2012-06-30 00:00,2012-06-30 00:00,,,2011-12-11 08:00,2011-12-15 16:00,,,,,PT_Normal,,,,,IPVlxQLMiE2iZnZHkKHg6A,,,,N,0,0,,,2012-06-25 15:13,2012-07-16 15:38,nour,admin
537,149364,5725,23875,6841,1,100,N,N,N,CP_Drtn,TT_Task,DT_FixedDUR2,RV_OK,TK_Complete,4229EEL180,Cable schedule IFD,,,,0,0,0,0,40,0,0,0,,2012-01-19 00:00,2012-02-01 00:00,2013-02-04 08:00,2013-02-04 08:00,,2012-06-30 00:00,2012-06-30 00:00,,,2012-03-25 08:00,2012-03-29 16:00,,,,,PT_Normal,,,,,/sWhjuBg+UmS/Rk2WamKOg,g6eh+Mkywk6aOzOj8iXrVw,,,N,0,0,,,2012-06-25 15:13,2012-07-16 15:38,nour,admin
538,149365,5725,23875,6841,1,0,N,N,N,CP_Drtn,TT_Task,DT_FixedDUR2,RV_OK,TK_NotStart,4229EEL250,Cable schedule IFC,,928,0,40,0,0,0,40,0,0,0,,,,2013-02-04 08:00,2013-02-10 16:00,,2012-08-12 08:00,2012-08-16 16:00,2012-08-12 08:00,2012-08-16 16:00,2012-08-12 08:00,2012-08-16 16:00,,2013-02-04 08:00,2013-02-10 16:00,,PT_Normal,,,,,lKIGNnep4kKjv54o21Jz0A,,,,N,0,0,,,2012-06-25 15:13,2012-07-16 15:38,nour,admin
539,149366,5725,23875,6841,1,100,N,N,N,CP_Drtn,TT_Task,DT_FixedDUR2,RV_OK,TK_Complete,4229EEL100,Electrical cable routing layouts -Approval,,,,0,0,0,0,80,0,0,0,2012-01-11 08:00,2011-11-30 00:00,2011-12-20 00:00,2012-09-24 08:00,2012-09-24 08:00,,2012-06-30 00:00,2012-06-30 00:00,,,2012-01-11 08:00,2012-01-24 16:00,,,,CS_MSO,PT_Normal,,,,,KwZqecnS+0qnzAdQlGt7Qg,,,,N,0,0,,,2012-06-25 15:13,2012-07-16 15:38,nour,admin
540,149367,5725,23875,6841,1,100,N,N,N,CP_Drtn,TT_Task,DT_FixedDUR2,RV_OK,TK_Complete,4229EEL190,Electrical cable routing layouts -Design,,,,0,0,0,0,80,0,0,0,,2012-01-01 00:00,2012-01-30 00:00,2013-01-20 08:00,2013-01-20 08:00,,2012-06-30 00:00,2012-06-30 00:00,,,2012-03-18 08:00,2012-03-29 16:00,,,,,PT_Normal,,,,,vXjah+FpfE66d3J9IfawuQ,,,,N,0,0,,,2012-06-25 15:13,2012-07-16 15:38,nour,admin
541,149368,5725,23875,6841,1,0,N,N,N,CP_Drtn,TT_Task,DT_FixedDUR2,RV_OK,TK_NotStart,4229EEL260,Electrical cable routing layouts -Construction,,928,0,80,0,0,0,80,0,0,0,,,,2013-01-28 08:00,2013-02-10 16:00,,2012-08-05 08:00,2012-08-16 16:00,2012-08-05 08:00,2012-08-16 16:00,2012-08-05 08:00,2012-08-16 16:00,,2013-01-28 08:00,2013-02-10 16:00,,PT_Normal,,,,,uaJ9MVWcSEyw0G+Lo20lhA,,,,N,0,0,,,2012-06-25 15:13,2012-07-16 15:38,nour,admin
542,149369,5725,23875,6841,1,0,N,N,N,CP_Drtn,TT_Task,DT_FixedDUR2,RV_OK,TK_NotStart,4229EEL220,Interconnection & wiring diagram- Construction,,1016,88,120,0,0,0,120,0,0,0,,,,2013-01-21 08:00,2013-02-10 16:00,,2012-07-12 08:00,2012-08-01 16:00,2012-07-12 08:00,2012-08-01 16:00,2012-07-12 08:00,2012-08-01 16:00,,2013-01-21 08:00,2013-02-10 16:00,,PT_Normal,,,,,CEy8O8eeWke0GJ6PCJm5qg,,,,N,0,0,,,2012-06-25 15:13,2012-07-16 15:38,nour,admin
543,149370,5725,23875,6841,1,0,N,N,N,CP_Drtn,TT_Task,DT_FixedDUR2,RV_OK,TK_NotStart,4229EEL270,Electrical installation details -Construction,,928,640,80,0,0,0,80,0,0,0,,,,2013-02-11 08:00,2013-02-24 16:00,,2012-08-26 08:00,2012-09-06 16:00,2012-08-26 08:00,2012-09-06 16:00,2012-08-26 08:00,2012-09-06 16:00,,2013-02-11 08:00,2013-02-24 16:00,,PT_Normal,,,,,/0rP/2/A7EC5Lxhg6GKytg,,,,N,0,0,,,2012-06-25 15:13,2012-07-16 15:38,nour,admin
544,149371,5725,23875,6841,1,0,N,N,N,CP_Drtn,TT_Task,DT_FixedDUR2,RV_OK,TK_NotStart,4229EEL290,Single line diagram -Construction,,1112,824,80,0,0,0,80,0,0,0,,,,2013-02-11 08:00,2013-02-24 16:00,,2012-07-17 08:00,2012-07-30 16:00,2012-07-17 08:00,2012-07-30 16:00,2012-07-17 08:00,2012-07-30 16:00,,2013-02-11 08:00,2013-02-24 16:00,,PT_Normal,,,,,AiCeolXEHkKOf0UWA8T21w,Qx0q73DiTyaQe37JuO5tMQ,,,N,0,0,,,2012-06-25 15:13,2012-07-16 15:38,nour,admin
545,149372,5725,23875,6841,1,100,N,N,N,CP_Drtn,TT_Task,DT_FixedDUR2,RV_OK,TK_Complete,4229EEL50,Electrical Load analysis -Design,,,,0,0,0,0,40,0,0,0,,2011-11-02 00:00,2011-12-15 00:00,2013-02-11 08:00,2013-02-11 08:00,,2012-06-30 00:00,2012-06-30 00:00,,,2011-12-07 08:00,2011-12-13 16:00,,,,,PT_Normal,,,,,FTbod8bNqkSLe0nEs3Gu3Q,MiQZLA+kQ+6Rx/LgkcR9vw,,,N,0,0,,,2012-06-25 15:13,2012-07-16 15:38,nour,admin
546,149373,5725,23875,6841,1,0,N,N,N,CP_Drtn,TT_Task,DT_FixedDUR2,RV_OK,TK_NotStart,4229EEL110,Electrical Load analysis -Final,,1112,0,40,0,0,0,40,0,0,0,,,,2013-02-04 08:00,2013-02-10 16:00,,2012-07-10 08:00,2012-07-16 16:00,2012-07-10 08:00,2012-07-16 16:00,2012-07-10 08:00,2012-07-16 16:00,,2013-02-04 08:00,2013-02-10 16:00,,PT_Normal,,,,,phm5l8EjJk674msGtSYTug,P+VGqfXaRf+wtG1WDLthHA,,,N,0,0,,,2012-06-25 15:13,2012-07-16 15:38,nour,admin
547,149374,5725,23875,6841,1,100,N,N,N,CP_Drtn,TT_Task,DT_FixedDUR2,RV_OK,TK_Complete,4229EEL120,Single line diagram -Design,,,,0,0,0,0,64,0,0,0,,2011-11-20 00:00,2011-11-27 00:00,2013-02-11 08:00,2013-02-11 08:00,,2012-07-16 16:00,2012-07-16 16:00,,,2011-12-27 08:00,2012-01-05 16:00,,,,,PT_Normal,,,,,hxzRTXUvTUu3X6EhdSorMw,1bglG1aCRFG8YhRS8hMk7Q,,,N,0,0,,,2012-06-25 15:13,2012-07-16 15:38,nour,admin
548,149375,5725,23875,6841,1,100,N,N,N,CP_Drtn,TT_Task,DT_FixedDUR2,RV_OK,TK_Complete,4229EEL70,Hazardous area classification layout -IFA,,,,0,0,0,0,80,0,0,0,,2011-11-21 00:00,2011-11-29 00:00,2013-02-11 08:00,2013-02-11 08:00,,2012-06-30 00:00,2012-06-30 00:00,,,2011-12-04 08:00,2011-12-15 16:00,,,,,PT_Normal,,,,,PtP98pOXLEGOz05RyG3hqw,,,,N,0,0,,,2012-06-25 15:13,2012-07-16 15:38,nour,admin
549,149376,5725,23875,6841,1,100,N,N,N,CP_Drtn,TT_Task,DT_FixedDUR2,RV_OK,TK_Complete,4229EEL160,Hazardous area classification layout -IFD,,,,0,0,0,0,80,0,0,0,,2011-11-27 00:00,2012-01-24 16:00,2013-02-11 08:00,2013-02-11 08:00,,2012-06-30 00:00,2012-06-30 00:00,,,2012-01-12 08:00,2012-01-26 16:00,,,,,PT_Normal,,,,,JzbmpMVKWU6QZ5g5bGPaKw,,,,N,0,0,,,2012-06-25 15:13,2012-07-16 15:38,nour,admin
550,149377,5725,23875,6841,1,0,N,N,N,CP_Drtn,TT_Task,DT_FixedDUR2,RV_OK,TK_NotStart,4229EEL240,Hazardous area classification layout -IFC,,992,64,80,0,0,0,80,0,0,0,,,,2013-01-28 08:00,2013-02-10 16:00,,2012-07-24 08:00,2012-08-06 16:00,2012-07-24 08:00,2012-08-06 16:00,2012-07-24 08:00,2012-08-06 16:00,,2013-01-28 08:00,2013-02-10 16:00,,PT_Normal,,,,,/UkUraArhUqqafE5X8onDA,,,,N,0,0,,,2012-06-25 15:13,2012-07-16 15:38,nour,admin
551,149378,5725,23875,6841,1,100,N,N,N,CP_Drtn,TT_Task,DT_FixedDUR2,RV_OK,TK_Complete,4229EEL80,Electrical layouts IFA,,,,0,0,0,0,120,0,0,0,,2011-11-22 00:00,2011-12-08 00:00,2012-09-24 08:00,2012-09-24 08:00,,2012-06-30 00:00,2012-06-30 00:00,,,2011-12-04 08:00,2011-12-22 16:00,,,,,PT_Normal,,,,,yD7aNOD/lk+0E64eSYDc7g,,,,N,0,0,,,2012-06-25 15:13,2012-07-16 15:38,nour,admin
552,149379,5725,23875,6841,1,100,N,N,N,CP_Drtn,TT_Task,DT_FixedDUR2,RV_OK,TK_Complete,4229EEL20,Single line diagram -Approval,,,,0,0,0,0,40,0,0,0,,2011-08-21 00:00,2011-08-25 00:00,2013-02-11 08:00,2013-02-11 08:00,,2012-06-30 00:00,2012-06-30 00:00,,,2011-12-11 08:00,2011-12-15 16:00,,,,,PT_Normal,,,,,0zSpGdv8pkKNnChUkgtafw,kHcphadgQQqJiQj5rZMbkQ,,,N,0,0,,,2012-06-25 15:13,2012-07-16 15:38,nour,admin
553,149380,5725,23875,6841,1,0,N,N,N,CP_Drtn,TT_Task,DT_FixedDUR2,RV_OK,TK_NotStart,4229EEL230,Electrical layouts-Construction,,976,48,80,0,0,0,80,0,0,0,,,,2013-01-21 08:00,2013-02-03 16:00,,2012-07-19 08:00,2012-08-01 16:00,2012-07-19 08:00,2012-08-01 16:00,2012-07-19 08:00,2012-08-01 16:00,,2013-01-21 08:00,2013-02-03 16:00,,PT_Normal,,,,,aaWEd7XXu0WEqHtjtsTApA,,,,N,0,0,,,2012-06-25 15:13,2012-07-16 15:38,nour,admin
554,149381,5725,23863,6841,1,100,N,N,N,CP_Drtn,TT_Task,DT_FixedDUR2,RV_OK,TK_Complete,4229EEL60,T.E.R for Navigation aids,,,,0,0,0,0,120,0,0,0,,2011-10-17 08:00,2011-12-07 16:00,2012-07-29 08:00,2012-07-29 08:00,,2012-06-30 00:00,2012-06-30 00:00,,,2011-10-17 08:00,2011-11-13 16:00,,,,,PT_Normal,,,,,gw+iVdrVeUWI5JKVAJL/KQ,+adQvSlUzkOZha6HG7fiRA,,,N,0,0,,,2012-06-25 15:13,2012-07-16 15:38,nour,admin
555,149382,5725,23863,6841,1,100,N,N,N,CP_Drtn,TT_Task,DT_FixedDUR2,RV_OK,TK_Complete,4229EEL150,MRP for Navigation aids,,,,0,0,0,0,40,0,0,0,,2012-01-12 00:00,2012-01-18 00:00,2012-07-29 08:00,2012-07-29 08:00,,2012-06-30 00:00,2012-06-30 00:00,,,2012-01-16 08:00,2012-01-22 16:00,,,,,PT_Normal,,,,,r/uKXdsndUSE1MRK7WMiNQ,uCQ7t7XtkE2pu5tmschigw,,,N,0,0,,,2012-06-25 15:13,2012-07-16 15:38,nour,admin
556,149383,5725,23863,6841,1,100,N,N,N,CP_Drtn,TT_Task,DT_FixedDUR2,RV_OK,TK_Complete,4229EEL30,Issue MRQ for Navigation aids,,,,0,0,0,0,24,0,0,0,,2011-09-15 08:00,2011-09-19 16:00,2012-07-29 08:00,2012-07-29 08:00,,2012-06-30 00:00,2012-06-30 00:00,,,2011-09-15 08:00,2011-09-19 16:00,,,,,PT_Normal,,,,,8x1CfQjXNkagfFMV+JMxoQ,fa+QQs2lrkWif6ZY5ZmI+Q,,,N,0,0,,,2012-06-25 15:13,2012-07-16 15:38,nour,admin
557,149384,5725,23863,6841,1,100,N,N,N,CP_Drtn,TT_Task,DT_FixedDUR2,RV_OK,TK_Complete,4229EEL200,T.E.R for Electrical bulk,,,,0,0,0,0,120,0,0,0,,2012-02-02 00:00,2012-06-10 00:00,2012-09-24 08:00,2012-09-24 08:00,,2012-06-30 00:00,2012-06-30 00:00,,,2012-03-05 08:00,2012-03-25 16:00,,,,,PT_Normal,,,,,PB74AhRpfEiOMtoSxpcVGw,+adQvSlUzkOZha6HG7fiRA,,,N,0,0,,,2012-06-25 15:13,2012-07-16 15:38,nour,admin
558,149385,5725,23863,6841,1,100,N,N,N,CP_Drtn,TT_Task,DT_FixedDUR2,RV_OK,TK_Complete,4229EEL140,Issue MRQ for Electrical bulk,,,,0,0,0,0,64,0,0,0,,2011-12-18 08:00,2011-12-27 16:00,2012-09-24 08:00,2012-09-24 08:00,,2012-06-30 00:00,2012-06-30 00:00,,,2011-12-18 08:00,2011-12-27 16:00,,,,,PT_Normal,,,,,uSR0daw7p0K1N5nummj85g,fa+QQs2lrkWif6ZY5ZmI+Q,,,N,0,0,,,2012-06-25 15:13,2012-07-16 15:38,nour,admin
559,149386,5725,23863,6841,1,0,N,N,N,CP_Drtn,TT_Task,DT_FixedDUR2,RV_OK,TK_Active,4229EEL300,V.P.R for Navigation aids,,1280,992,8,0,0,0,104,0,0,0,,2012-04-26 00:00,,2013-02-24 08:00,2013-02-24 16:00,,2012-07-01 08:00,2012-07-01 16:00,2012-07-01 08:00,2012-07-01 16:00,2012-05-06 08:00,2012-05-22 16:00,,2013-02-24 08:00,2013-02-24 16:00,,PT_Normal,,,,,ibGWpAgCGkWLMH/I9k6YXg,,,,N,0,0,,,2012-06-25 15:13,2012-07-16 15:38,nour,admin
560,149387,5725,23863,6841,1,0,N,N,N,CP_Drtn,TT_Task,DT_FixedDUR2,RV_OK,TK_Active,4229EEL280,V.P.R for solar power unit,,968,968,280,0,0,0,560,0,0,0,,2012-04-05 00:00,,2013-01-07 08:00,2013-02-24 16:00,,2012-07-08 08:00,2012-08-30 16:00,2012-07-08 08:00,2012-08-30 16:00,2012-05-06 08:00,2012-08-09 16:00,,2013-01-07 08:00,2013-02-24 16:00,,PT_Normal,,,,,o+aTuo8DyUSIlQUOJF/CEg,,,,N,0,0,,,2012-06-25 15:13,2012-07-16 15:38,nour,admin
561,149388,5725,23863,6841,1,100,N,N,N,CP_Drtn,TT_Task,DT_FixedDUR2,RV_OK,TK_Complete,4229EEL40,T.E.R for solar power unit,,,,0,0,0,0,120,0,0,0,,2011-10-13 00:00,2012-01-31 00:00,2012-07-29 08:00,2012-07-29 08:00,,2012-06-30 00:00,2012-06-30 00:00,,,2011-10-16 08:00,2011-11-03 16:00,,,,,PT_Normal,,,,,6hV/GVbX8UW1Qf3JtxwO8g,+adQvSlUzkOZha6HG7fiRA,,,N,0,0,,,2012-06-25 15:13,2012-07-16 15:38,nour,admin
562,149389,5725,23863,6841,1,100,N,N,N,CP_Drtn,TT_Task,DT_FixedDUR2,RV_OK,TK_Complete,4229EEL130,MRP for solar power unit,,,,0,0,0,0,40,0,0,0,,2012-03-08 08:00,2012-03-28 00:00,2012-07-29 08:00,2012-07-29 08:00,,2012-06-30 00:00,2012-06-30 00:00,,,2012-03-08 08:00,2012-03-14 16:00,,,,,PT_Normal,,,,,rvcX45E2IES5TdH8LHt8DA,uCQ7t7XtkE2pu5tmschigw,,,N,0,0,,,2012-06-25 15:13,2012-07-16 15:38,nour,admin
563,149390,5725,23863,6841,1,100,N,N,N,CP_Drtn,TT_Task,DT_FixedDUR2,RV_OK,TK_Complete,4229EEL10,Issue MRQ for solar power unit,,,,0,0,0,0,56,0,0,0,,2011-08-15 08:00,2011-08-23 16:00,2012-07-29 08:00,2012-07-29 08:00,,2012-06-30 00:00,2012-06-30 00:00,,,2011-08-15 08:00,2011-08-23 16:00,,,,,PT_Normal,,,,,QNb81E17zkiNtbAHM0EI4A,fa+QQs2lrkWif6ZY5ZmI+Q,,,N,0,0,,,2012-06-25 15:13,2012-07-16 15:38,nour,admin
564,149391,5725,23879,6841,1,100,N,N,N,CP_Drtn,TT_Task,DT_FixedDUR2,RV_OK,TK_Complete,4229EIN70,Instrument I/O list issued for approval,,,,0,0,0,0,16,0,0,0,,2011-09-29 00:00,2011-10-09 00:00,2013-02-24 16:00,2013-02-24 16:00,,2012-06-30 00:00,2012-06-30 00:00,,,2011-10-13 08:00,2011-10-16 16:00,,,,,PT_Normal,,,,,CHrlScrTDESx9d1AA7qcpQ,GemY4T2B0EmUheDKIF6NWQ,,,N,0,0,,,2012-06-25 15:13,2012-07-16 15:38,nour,admin
565,149392,5725,23879,6841,1,100,N,N,N,CP_Drtn,TT_Task,DT_FixedDUR2,RV_OK,TK_Complete,4229EIN140,Instrument  cable / tubing routing layouts IFA,,,,0,0,0,0,80,0,0,0,,2011-12-05 00:00,2012-01-26 00:00,2013-01-20 08:00,2013-01-20 08:00,,2012-06-30 00:00,2012-06-30 00:00,,,2011-12-11 08:00,2011-12-22 16:00,,,,,PT_Normal,,,,,30rlLrxE6EWSqBv/hEzWHQ,,,,N,0,0,,,2012-06-25 15:13,2012-07-16 15:38,nour,admin
566,149393,5725,23879,6841,1,0,N,N,N,CP_Drtn,TT_Task,DT_FixedDUR2,RV_OK,TK_NotStart,4229EIN440,Instrument hook-ups issued for construction,,1096,808,80,0,0,0,80,0,0,0,,,,2013-02-11 08:00,2013-02-24 16:00,,2012-07-19 08:00,2012-08-01 16:00,2012-07-19 08:00,2012-08-01 16:00,2012-07-19 08:00,2012-08-01 16:00,,2013-02-11 08:00,2013-02-24 16:00,,PT_Normal,,,,,ukX6KugYWEmPgzZWMktsWg,Q6A1MJ+tAkeyDTn8ferz6A,,,N,0,0,,,2012-06-25 15:13,2012-07-16 15:38,nour,admin
567,149394,5725,23879,6841,1,0,N,N,N,CP_Drtn,TT_Task,DT_FixedDUR2,RV_OK,TK_NotStart,4229EIN460,Instrument  cable / tubing routing layouts IFC,,976,0,80,0,0,0,80,0,0,0,,,,2013-01-28 08:00,2013-02-10 16:00,,2012-07-26 08:00,2012-08-08 16:00,2012-07-26 08:00,2012-08-08 16:00,2012-07-26 08:00,2012-08-08 16:00,,2013-01-28 08:00,2013-02-10 16:00,,PT_Normal,,,,,/VsY3GTpyU6P/Tw/pCs/Fw,avZG58y2z0Gkt+UeaJ1/ug,,,N,0,0,,,2012-06-25 15:13,2012-07-16 15:38,nour,admin
568,149395,5725,23879,6841,1,0,N,N,N,CP_Drtn,TT_Task,DT_FixedDUR2,RV_OK,TK_NotStart,4229EIN410,Instrument I/O list issued for construction,,1200,912,40,0,0,0,40,0,0,0,,,,2013-02-18 08:00,2013-02-24 16:00,,2012-07-09 08:00,2012-07-15 16:00,2012-07-09 08:00,2012-07-15 16:00,2012-07-09 08:00,2012-07-15 16:00,,2013-02-18 08:00,2013-02-24 16:00,,PT_Normal,,,,,2nmKcTVhUkGN6fdap6O9Xg,GemY4T2B0EmUheDKIF6NWQ,,,N,0,0,,,2012-06-25 15:13,2012-07-16 15:38,nour,admin
569,149396,5725,23879,6841,1,0,N,N,N,CP_Drtn,TT_Task,DT_FixedDUR2,RV_OK,TK_Active,4229EIN400,Instrument index issued for construction,,1200,0,8,0,0,0,40,0,0,0,,2012-06-27 00:00,,2013-02-17 08:00,2013-02-17 16:00,,2012-07-08 08:00,2012-07-08 16:00,2012-07-08 08:00,2012-07-08 16:00,2012-07-08 08:00,2012-07-12 16:00,,2013-02-17 08:00,2013-02-17 16:00,,PT_Normal,,,,,PtVKGymJak6Nr0dWt30dew,tEpanMSzcU6QCV0SomSrAg,,,N,0,0,,,2012-06-25 15:13,2012-07-16 15:38,nour,admin
570,149397,5725,23879,6841,1,100,N,N,N,CP_Drtn,TT_Task,DT_FixedDUR2,RV_OK,TK_Complete,4229EIN130,Instrument index issued for design,,,,0,0,0,0,40,0,0,0,,2011-11-28 00:00,2011-12-13 00:00,2013-02-24 16:00,2013-02-24 16:00,,2012-06-30 00:00,2012-06-30 00:00,,,2011-12-08 08:00,2011-12-14 16:00,,,,,PT_Normal,,,,,tMRVQfoAJU68p4JKfTTrmg,,,,N,0,0,,,2012-06-25 15:13,2012-07-16 15:38,nour,admin
571,149398,5725,23879,6841,1,100,N,N,N,CP_Drtn,TT_Task,DT_FixedDUR2,RV_OK,TK_Complete,4229EIN150,Instrument I/O list issued for design,,,,0,0,0,0,16,0,0,0,,2011-10-23 00:00,2011-12-16 00:00,2013-02-24 16:00,2013-02-24 16:00,,2012-06-30 00:00,2012-06-30 00:00,,,2011-12-15 08:00,2011-12-18 16:00,,,,,PT_Normal,,,,,qL5CmCmc0EGIyDckFS+qXg,,,,N,0,0,,,2012-06-25 15:13,2012-07-16 15:38,nour,admin
572,149399,5725,23879,6841,1,100,N,N,N,CP_Drtn,TT_Task,DT_FixedDUR2,RV_OK,TK_Complete,4229EIN300,Instrument cable / tubing schedule for design,,,,0,0,0,0,40,0,0,0,,2012-01-24 00:00,2012-01-24 00:00,2013-02-24 16:00,2013-02-24 16:00,,2012-06-30 00:00,2012-06-30 00:00,,,2012-03-04 08:00,2012-03-08 16:00,,,,,PT_Normal,,,,,0UpkhzUmrEy67GBc/Cm+Og,,,,N,0,0,,,2012-06-25 15:13,2012-07-16 15:38,nour,admin
573,149400,5725,23879,6841,1,100,N,N,N,CP_Drtn,TT_Task,DT_FixedDUR2,RV_OK,TK_Complete,4229EIN310,Instrument hook-ups issued for design,,,,0,0,0,0,80,0,0,0,,2012-01-10 00:00,2012-02-02 00:00,2013-02-24 16:00,2013-02-24 16:00,,2012-06-30 00:00,2012-06-30 00:00,,,2012-03-04 08:00,2012-03-15 16:00,,,,,PT_Normal,,,,,eFsaswzBJkyKTpopX3oU9w,,,,N,0,0,,,2012-06-25 15:13,2012-07-16 15:38,nour,admin
574,149401,5725,23879,6841,1,0,N,N,N,CP_Drtn,TT_Task,DT_FixedDUR2,RV_OK,TK_NotStart,4229EIN390,Safeguard system schematic diagram- Construction,,968,680,80,0,0,0,80,0,0,0,,,,2013-02-11 08:00,2013-02-24 16:00,,2012-08-12 08:00,2012-08-30 16:00,2012-08-12 08:00,2012-08-30 16:00,2012-08-12 08:00,2012-08-30 16:00,,2013-02-11 08:00,2013-02-24 16:00,,PT_Normal,,,,,J9ivLJ68fUiIJ0tX00vwAQ,,,,N,0,0,,,2012-06-25 15:13,2012-07-16 15:38,nour,admin
575,149402,5725,23879,6841,1,0,N,N,N,CP_Drtn,TT_Task,DT_FixedDUR2,RV_OK,TK_NotStart,4229EIN430,Instrument wiring diagram-Construction,,968,680,80,0,0,0,80,0,0,0,,,,2013-02-11 08:00,2013-02-24 16:00,,2012-08-12 08:00,2012-08-30 16:00,2012-08-12 08:00,2012-08-30 16:00,2012-08-12 08:00,2012-08-30 16:00,,2013-02-11 08:00,2013-02-24 16:00,,PT_Normal,,,,,B9XUXeo47kemZgtCdgVNkg,,,,N,0,0,,,2012-06-25 15:13,2012-07-16 15:38,nour,admin
576,149403,5725,23879,6841,1,100,N,N,N,CP_Drtn,TT_Task,DT_FixedDUR2,RV_OK,TK_Complete,4229EIN120,Instrument layouts -Approval,,,,0,0,0,0,120,0,0,0,,2011-11-22 00:00,2011-12-15 00:00,2013-02-24 16:00,2013-02-24 16:00,,2012-06-30 00:00,2012-06-30 00:00,,,2011-12-04 08:00,2011-12-22 16:00,,,,,PT_Normal,,,,,bSwgs0w7NEescAUoYsNA8A,,,,N,0,0,,,2012-06-25 15:13,2012-07-16 15:38,nour,admin
577,149404,5725,23879,6841,1,100,N,N,N,CP_Drtn,TT_Task,DT_FixedDUR2,RV_OK,TK_Complete,4229EIN270,Instrument layouts -Design,,,,0,0,0,0,0,0,0,0,,2012-01-29 08:00,2012-02-16 00:00,2013-02-24 16:00,2013-02-24 16:00,,2012-06-30 00:00,2012-06-30 00:00,,,2012-01-29 08:00,2012-01-29 08:00,,,,,PT_Normal,,,,,1HoWCsl3bkKChK7tz8FpaQ,,,,N,0,0,,,2012-06-25 15:13,2012-07-16 15:38,nour,admin
578,149405,5725,23879,6841,1,100,N,N,N,CP_Drtn,TT_Task,DT_FixedDUR2,RV_OK,TK_Complete,4229EIN580,Instrument loop diagram-Design,,,,0,0,0,0,80,0,0,0,,2012-03-28 00:00,2012-05-02 00:00,2013-02-24 08:00,2013-02-24 08:00,,2012-06-30 00:00,2012-06-30 00:00,,,2012-04-01 08:00,2012-04-12 16:00,,,,,PT_Normal,,,,,1aQ8F9PwzUKRDRB2mregbA,,,,N,0,0,,,2012-06-25 15:13,2012-07-16 15:38,nour,admin
579,149406,5725,23879,6841,1,100,N,N,N,CP_Drtn,TT_Task,DT_FixedDUR2,RV_OK,TK_Complete,4229EIN570,Instrument loop Diagram-Approval,,,,0,0,0,0,8,0,0,0,,2012-02-22 00:00,2012-02-26 00:00,2013-02-24 08:00,2013-02-24 08:00,,2012-06-30 00:00,2012-06-30 00:00,,,2012-03-04 08:00,2012-03-04 16:00,,,,,PT_Normal,,,,,eHu5jCHXpE2nP+yOY+kxsw,,,,N,0,0,,,2012-06-25 15:13,2012-07-16 15:38,nour,admin
580,149407,5725,23879,6841,1,0,N,N,N,CP_Drtn,TT_Task,DT_FixedDUR2,RV_OK,TK_NotStart,4229EIN590,Instrument loop diagram-Construction,,1080,792,8,0,0,0,8,0,0,0,,,,2013-02-24 08:00,2013-02-24 16:00,,2012-08-05 08:00,2012-08-05 16:00,2012-08-05 08:00,2012-08-05 16:00,2012-08-05 08:00,2012-08-05 16:00,,2013-02-24 08:00,2013-02-24 16:00,,PT_Normal,,,,,CBp0OeoioEy2fzdOE43ywA,,,,N,0,0,,,2012-06-25 15:13,2012-07-16 15:38,nour,admin
581,149408,5725,23879,6841,1,100,N,N,N,CP_Drtn,TT_Task,DT_FixedDUR2,RV_OK,TK_Complete,4229EIN60,Instrument index -Approval,,,,0,0,0,0,40,0,0,0,,2011-10-26 00:00,2011-11-20 00:00,2013-02-24 16:00,2013-02-24 16:00,,2012-06-30 00:00,2012-06-30 00:00,,,2011-10-30 08:00,2011-11-03 16:00,,,,,PT_Normal,,,,,uXxIPPY7C0aHXmHHPU4R4A,,,,N,0,0,,,2012-06-25 15:13,2012-07-16 15:38,nour,admin
582,149409,5725,23879,6841,1,100,N,N,N,CP_Drtn,TT_Task,DT_FixedDUR2,RV_OK,TK_Complete,4229EIN200,Instrument cable / tubing schedule for approval,,,,0,0,0,0,40,0,0,0,2012-01-09 08:00,2012-01-05 00:00,2012-01-11 00:00,2013-02-24 08:00,2013-02-24 08:00,,2012-06-30 00:00,2012-06-30 00:00,,,2012-01-09 08:00,2012-01-15 16:00,,,,CS_MSOA,PT_Normal,,,,,4i0vfO4uPUqFCDZ8ZqhAxA,+fuN/Ikg/kK9fNQ0HqYtyQ,,,N,0,0,,,2012-06-25 15:13,2012-07-16 15:38,nour,admin
583,149410,5725,23879,6841,1,0,N,N,N,CP_Drtn,TT_Task,DT_FixedDUR2,RV_OK,TK_NotStart,4229EIN470,Instrument cable / tubing schedule for construction,,1016,728,40,0,0,0,40,0,0,0,,,,2013-02-18 08:00,2013-02-24 16:00,,2012-08-09 08:00,2012-08-15 16:00,2012-08-09 08:00,2012-08-15 16:00,2012-08-09 08:00,2012-08-15 16:00,,2013-02-18 08:00,2013-02-24 16:00,,PT_Normal,,,,,U2zgtHv2FEiOe56HGDec0w,MFJOUGZvAkSTBODSA6uthQ,,,N,0,0,,,2012-06-25 15:13,2012-07-16 15:38,nour,admin
584,149411,5725,23879,6841,1,0,N,N,N,CP_Drtn,TT_Task,DT_FixedDUR2,RV_OK,TK_NotStart,4229EIN450,Instrument layouts -Construction,,976,0,80,0,0,0,80,0,0,0,,,,2013-01-21 08:00,2013-02-03 16:00,,2012-07-19 08:00,2012-08-01 16:00,2012-07-19 08:00,2012-08-01 16:00,2012-07-19 08:00,2012-08-01 16:00,,2013-01-21 08:00,2013-02-03 16:00,,PT_Normal,,,,,vQHE54VKUkav4utRoBxztQ,,,,N,0,0,,,2012-06-25 15:13,2012-07-16 15:38,nour,admin
585,149412,5725,23879,6841,1,100,N,N,N,CP_Drtn,TT_Task,DT_FixedDUR2,RV_OK,TK_Complete,4229EIN100,Functional loop diagram-Approval,,,,0,0,0,0,120,0,0,0,,2012-01-05 00:00,2012-01-11 00:00,2013-02-24 08:00,2013-02-24 08:00,,2012-06-30 00:00,2012-06-30 00:00,,,2012-01-17 08:00,2012-02-07 16:00,,,,,PT_Normal,,,,,jscJ7IJdpEugjPPfXtO3QQ,,,,N,0,0,,,2012-06-25 15:13,2012-07-16 15:38,nour,admin
586,149413,5725,23879,6841,1,100,N,N,N,CP_Drtn,TT_Task,DT_FixedDUR2,RV_OK,TK_Complete,4229EIN240,Functional loop diagram-Design,,,,0,0,0,0,48,0,0,0,,2012-01-15 00:00,2012-02-27 00:00,2013-02-24 16:00,2013-02-24 16:00,,2012-06-30 00:00,2012-06-30 00:00,,,2012-03-04 08:00,2012-03-11 16:00,,,,,PT_Normal,,,,,NnapuLiX7ES0/ACFFINLzg,,,,N,0,0,,,2012-06-25 15:13,2012-07-16 15:38,nour,admin
587,149414,5725,23879,6841,1,0,N,N,N,CP_Drtn,TT_Task,DT_FixedDUR2,RV_OK,TK_NotStart,4229EIN420,Functional loop diagram-Construction,,1080,0,120,0,0,0,120,0,0,0,,,,2013-02-03 08:00,2013-02-21 16:00,,2012-07-15 08:00,2012-08-02 16:00,2012-07-15 08:00,2012-08-02 16:00,2012-07-15 08:00,2012-08-02 16:00,,2013-02-03 08:00,2013-02-21 16:00,,PT_Normal,,,,,lyJO9ZhJC0mikEQqxlMwVw,,,,N,0,0,,,2012-06-25 15:13,2012-07-16 15:38,nour,admin
588,149415,5725,23879,6841,1,100,N,N,N,CP_Drtn,TT_Task,DT_FixedDUR2,RV_OK,TK_Complete,4229EIN520,Instrument wiring diagram-Approval,,,,0,0,0,0,80,0,0,0,,2011-12-09 00:00,2011-12-14 00:00,2013-02-24 08:00,2013-02-24 08:00,,2012-06-30 00:00,2012-06-30 00:00,,,2012-01-11 08:00,2012-01-24 16:00,,,,,PT_Normal,,,,,Ply06f7ukkayqsGOmCj5NA,,,,N,0,0,,,2012-06-25 15:13,2012-07-16 15:38,nour,admin
589,149416,5725,23879,6841,1,100,N,N,N,CP_Drtn,TT_Task,DT_FixedDUR2,RV_OK,TK_Complete,4229EIN530,Instrument wiring diagram-Design,,,,0,0,0,0,80,0,0,0,,2012-01-15 00:00,2012-01-24 00:00,2013-02-24 16:00,2013-02-24 16:00,,2012-06-30 00:00,2012-06-30 00:00,,,2012-02-13 08:00,2012-02-26 16:00,,,,,PT_Normal,,,,,ZWPvDxgCV0qOTPauVd6xjA,,,,N,0,0,,,2012-06-25 15:13,2012-07-16 15:38,nour,admin
590,149417,5725,23879,6841,1,100,N,N,N,CP_Drtn,TT_Task,DT_FixedDUR2,RV_OK,TK_Complete,4229EIN280,Instrument cable / tubing routing layouts IFD,,,,0,0,0,0,64,0,0,0,,2012-02-29 00:00,2012-02-29 00:00,2012-10-04 08:00,2012-10-04 08:00,,2012-06-30 00:00,2012-06-30 00:00,,,2012-03-04 08:00,2012-03-13 16:00,,,,,PT_Normal,,,,,eMYgkYVrBk6IA6RWeerfAw,,,,N,0,0,,,2012-06-25 15:13,2012-07-16 15:38,nour,admin
591,149418,5725,23879,6841,1,100,N,N,N,CP_Drtn,TT_Task,DT_FixedDUR2,RV_OK,TK_Complete,4229EIN190,Instrument hook-ups issued for approval,,,,0,0,0,0,80,0,0,0,,2011-12-12 08:00,2012-01-02 00:00,2013-02-24 16:00,2013-02-24 16:00,,2012-06-30 00:00,2012-06-30 00:00,,,2011-12-12 08:00,2011-12-25 16:00,,,,,PT_Normal,,,,,vYorwEXTxE6C/ytXMiS8uw,,,,N,0,0,,,2012-06-25 15:13,2012-07-16 15:38,nour,admin
592,149419,5725,23881,6841,1,100,N,N,N,CP_Drtn,TT_Task,DT_FixedDUR2,RV_OK,TK_Complete,4229EIN610,Additional shutdown valves T.E.R,,,,0,0,0,0,112,0,0,0,,2012-05-27 00:00,2012-06-25 00:00,2012-07-01 08:00,2012-07-01 08:00,,2012-06-30 00:00,2012-06-30 00:00,,,2012-05-31 08:00,2012-06-19 16:00,,,,,PT_Normal,,,,,JFLn93ru7UC9eq7G8oHBdQ,,,,Y,0,0,,,2012-06-25 15:13,2012-07-16 15:38,nour,admin
593,149420,5725,23881,6841,1,0,N,N,N,CP_Drtn,TT_Task,DT_FixedDUR2,RV_OK,TK_NotStart,4229EIN620,Additional shutdown valves MRP,,1072,0,40,0,0,0,40,0,0,0,,,,2013-02-07 08:00,2013-02-13 16:00,,2012-07-22 08:00,2012-07-26 16:00,2012-07-22 08:00,2012-07-26 16:00,2012-07-22 08:00,2012-07-26 16:00,,2013-02-07 08:00,2013-02-13 16:00,,PT_Normal,,,,,qesGT0gHPE6YlkrFm1JvDw,,,,N,0,0,,,2012-06-25 15:13,2012-07-16 15:38,nour,admin
594,149421,5725,23881,6841,1,100,N,N,N,CP_Drtn,TT_Task,DT_FixedDUR2,RV_OK,TK_Complete,4229EIN600,Additional shutdown valves MRQ,,,,0,0,0,0,80,0,0,0,,2012-04-29 08:00,2012-05-06 00:00,2012-07-01 08:00,2012-07-01 08:00,,2012-06-30 00:00,2012-06-30 00:00,,,2012-04-29 08:00,2012-05-10 16:00,,,,,PT_Normal,,,,,2Rx+/uYj4EGJmsVoETfXAw,,,,Y,0,0,,,2012-06-25 15:13,2012-07-16 15:38,nour,admin
595,149422,5725,23881,6841,1,0,N,N,N,CP_Drtn,TT_Task,DT_FixedDUR2,RV_OK,TK_Active,4229EPR300,V.P.R for Shutdown valves,,568,280,680,0,0,0,680,0,0,0,,2012-04-29 00:00,,2012-10-29 08:00,2013-02-24 16:00,,2012-07-08 08:00,2012-11-15 16:00,2012-07-08 08:00,2012-11-15 16:00,2012-06-20 08:00,2012-10-30 16:00,,2012-10-29 08:00,2013-02-24 16:00,,PT_Normal,,,,,JUHTL1cD9kiArCNy/AJxYQ,,,,N,0,0,,,2012-06-25 15:13,2012-07-16 15:38,nour,admin
596,149423,5725,23881,6841,1,100,N,N,N,CP_Drtn,TT_Task,DT_FixedDUR2,RV_OK,TK_Complete,4229EIN550,V.P.R for Instrument Mechanical bulk,,,,0,0,0,0,240,0,0,0,,2012-05-31 00:00,2012-05-31 00:00,2013-02-24 16:00,2013-02-24 16:00,,2012-06-30 00:00,2012-06-30 00:00,,,2012-07-22 08:00,2012-09-06 16:00,,,,,PT_Normal,,,,,0FnqURdaKUuEbkpNNkJDgw,,,,N,0,0,,,2012-06-25 15:13,2012-07-16 15:38,nour,admin
597,149424,5725,23881,6841,1,0,N,N,N,CP_Drtn,TT_Task,DT_FixedDUR2,RV_OK,TK_NotStart,4229EIN560,V.P.R for Instrument Electrical bulk,,712,424,160,0,0,0,160,0,0,0,,,,2013-01-28 08:00,2013-02-24 16:00,,2012-09-18 08:00,2012-10-15 16:00,2012-09-18 08:00,2012-10-15 16:00,2012-09-18 08:00,2012-10-15 16:00,,2013-01-28 08:00,2013-02-24 16:00,,PT_Normal,,,,,ctIfzj38V0CppcN5HWvItA,,,,N,0,0,,,2012-06-25 15:13,2012-07-16 15:38,nour,admin
598,149425,5725,23881,6841,1,0,N,N,N,CP_Drtn,TT_Task,DT_FixedDUR2,RV_OK,TK_NotStart,4229EIN540,V.P.R for field instruments,,592,304,280,0,0,0,280,0,0,0,,,,2013-01-07 08:00,2013-02-24 16:00,,2012-09-18 08:00,2012-11-12 16:00,2012-09-18 08:00,2012-11-12 16:00,2012-09-18 08:00,2012-11-12 16:00,,2013-01-07 08:00,2013-02-24 16:00,,PT_Normal,,,,,cJc08uBEYEW4j5pD85WxKQ,,,,N,0,0,,,2012-06-25 15:13,2012-07-16 15:38,nour,admin
599,149426,5725,23881,6841,1,100,N,N,N,CP_Drtn,TT_Task,DT_FixedDUR2,RV_OK,TK_Complete,4229EIN210,MRP for SGS,,,,0,0,0,0,40,0,0,0,,2012-03-08 08:00,2012-05-08 00:00,2012-07-29 08:00,2012-07-29 08:00,,2012-06-30 00:00,2012-06-30 00:00,,,2012-03-08 08:00,2012-03-14 16:00,,,,,PT_Normal,,,,,S2EoV5DWxUqptjthNcBRRA,uCQ7t7XtkE2pu5tmschigw,,,N,0,0,,,2012-06-25 15:13,2012-07-16 15:38,nour,admin
600,149427,5725,23881,6841,1,100,N,N,N,CP_Drtn,TT_Task,DT_FixedDUR2,RV_OK,TK_Complete,4229EIN10,Issue MRQ for SGS,,,,0,0,0,0,64,0,0,0,,2011-08-15 08:00,2011-08-24 16:00,2012-07-29 08:00,2012-07-29 08:00,,2012-06-30 00:00,2012-06-30 00:00,,,2011-08-15 08:00,2011-08-24 16:00,,,,,PT_Normal,,,,,FHYADgd1/0ujSElZtkQ9lA,fa+QQs2lrkWif6ZY5ZmI+Q,,,N,0,0,,,2012-06-25 15:13,2012-07-16 15:38,nour,admin
601,149428,5725,23881,6841,1,100,N,N,N,CP_Drtn,TT_Task,DT_FixedDUR2,RV_OK,TK_Complete,4229EIN220,T.E.R for SDV,,,,0,0,0,0,160,0,0,0,,2011-11-28 00:00,2012-02-01 00:00,2013-02-24 16:00,2013-02-24 16:00,,2012-06-30 00:00,2012-06-30 00:00,,,2011-12-04 08:00,2011-12-29 16:00,,,,,PT_Normal,,,,,qe6JCBpYs0afnlMuBegl+A,QZSem8n3HEqSrXo4nZ4rrA,,,N,0,0,,,2012-06-25 15:13,2012-07-16 15:38,nour,admin
602,149429,5725,23881,6841,1,100,N,N,N,CP_Drtn,TT_Task,DT_FixedDUR2,RV_OK,TK_Complete,4229EIN330,MRP for SDV,,,,0,0,0,0,40,0,0,0,,2012-04-22 00:00,2012-04-26 00:00,2012-07-29 08:00,2012-07-29 08:00,,2012-06-30 00:00,2012-06-30 00:00,,,2012-04-29 08:00,2012-05-03 16:00,,,,,PT_Normal,,,,,eYmE9vHSKkW86CuqplaAlA,ulMsewoMhEiApbF+oxOLEA,,,N,0,0,,,2012-06-25 15:13,2012-07-16 15:38,nour,admin
603,149430,5725,23881,6841,1,0,N,N,N,CP_Drtn,TT_Task,DT_FixedDUR2,RV_OK,TK_NotStart,4229EIN500,V.P.R for choke valves,,888,888,320,0,0,0,320,0,0,0,,,,2012-12-31 08:00,2013-02-24 16:00,,2012-07-15 08:00,2012-09-13 16:00,2012-07-15 08:00,2012-09-13 16:00,2012-07-15 08:00,2012-09-13 16:00,,2012-12-31 08:00,2013-02-24 16:00,,PT_Normal,,,,,YIma7Ry6oEuim0xamK8UWg,,,,N,0,0,,,2012-06-25 15:13,2012-07-16 15:38,nour,admin
604,149431,5725,23881,6841,1,0,N,N,N,CP_Drtn,TT_Task,DT_FixedDUR2,RV_OK,TK_Active,4229EIN510,V.P.R for Pressure regulator valves,,552,552,696,0,0,0,720,0,0,0,,2012-06-06 00:00,,2012-10-18 08:00,2013-02-24 16:00,,2012-07-08 08:00,2012-11-19 16:00,2012-07-08 08:00,2012-11-19 16:00,2012-07-08 08:00,2012-11-22 16:00,,2012-10-18 08:00,2013-02-24 16:00,,PT_Normal,,,,,FK1v2C0Rsk+c72iCYKCunw,,,,N,0,0,,,2012-06-25 15:13,2012-07-16 15:38,nour,admin
605,149432,5725,23881,6841,1,0,N,N,N,CP_Drtn,TT_Task,DT_FixedDUR2,RV_OK,TK_Active,4229EIN490,V.P.R for MPFM,,712,712,576,0,0,0,720,0,0,0,,2012-03-08 00:00,,2012-11-15 08:00,2013-02-24 16:00,,2012-07-01 08:00,2012-10-15 16:00,2012-07-01 08:00,2012-10-15 16:00,2012-05-06 08:00,2012-09-13 16:00,,2012-11-15 08:00,2013-02-24 16:00,,PT_Normal,,,,,ZVb5bwYUYUesvtwp0yEC8A,,,,N,0,0,,,2012-06-25 15:13,2012-07-16 15:38,nour,admin
606,149433,5725,23881,6841,1,0,N,N,N,CP_Drtn,TT_Task,DT_FixedDUR2,RV_OK,TK_Active,4229EIN480,V.P.R for safeguard system,,712,0,480,0,0,0,640,0,0,0,,2012-05-10 00:00,,2012-12-03 08:00,2013-02-24 16:00,,2012-07-17 08:00,2012-10-15 16:00,2012-07-17 08:00,2012-10-15 16:00,2012-06-25 08:00,2012-10-28 16:00,,2012-12-03 08:00,2013-02-24 16:00,,PT_Normal,,,,,zfy2cb4KQEOUg7lTS6Dlxg,,,,N,0,0,,,2012-06-25 15:13,2012-07-16 15:38,nour,admin
607,149434,5725,23881,6841,1,0,N,N,N,CP_Drtn,TT_Task,DT_FixedDUR2,RV_OK,TK_NotStart,4229EIN380,MRP for Instrument electrical bulk,,512,0,40,0,0,0,40,0,0,0,,,,2012-10-10 08:00,2012-10-16 16:00,,2012-07-05 08:00,2012-07-11 16:00,2012-07-05 08:00,2012-07-11 16:00,2012-07-05 08:00,2012-07-11 16:00,,2012-10-10 08:00,2012-10-16 16:00,,PT_Normal,,,,,xOmOVnuWdEm5o/LuiOX07A,qah8G7VN60mBQqGfXfCzXw,,,N,0,0,,,2012-06-25 15:13,2012-07-16 15:38,nour,admin
608,149435,5725,23881,6841,1,100,N,N,N,CP_Drtn,TT_Task,DT_FixedDUR2,RV_OK,TK_Complete,4229EIN230,Issue MRQ for Instrument electrical bulk,,,,0,0,0,0,80,0,0,0,2012-01-16 00:00,2012-01-16 08:00,2012-02-27 00:00,2012-10-04 08:00,2012-10-04 08:00,,2012-06-30 00:00,2012-06-30 00:00,,,2012-01-16 08:00,2012-01-30 16:00,,,,CS_MSOA,PT_Normal,,,,,lKrlCR+cx0Omu+2j1KFlPQ,azlRJTqqs0W0Ln7rWFbhVg,,,N,0,0,,,2012-06-25 15:13,2012-07-16 15:38,nour,admin
609,149436,5725,23881,6841,1,100,N,N,N,CP_Drtn,TT_Task,DT_FixedDUR2,RV_OK,TK_Complete,4229EIN340,T.E.R for Instrument  Mechanical bulk,,,,0,0,0,0,120,0,0,0,,2012-03-27 00:00,2012-03-27 00:00,2013-02-10 08:00,2013-02-10 08:00,,2012-06-30 00:00,2012-06-30 00:00,,,2012-04-01 08:00,2012-04-19 16:00,,,,,PT_Normal,,,,,+j46q0pdRUK+xRBFveBkAg,4hM7c1CEokC8T6AEFK3z1g,,,N,0,0,,,2012-06-25 15:13,2012-07-16 15:38,nour,admin
610,149437,5725,23881,6841,1,100,N,N,N,CP_Drtn,TT_Task,DT_FixedDUR2,RV_OK,TK_Complete,4229EIN370,MRP for Instrument Mechanical bulk,,,,0,0,0,0,40,0,0,0,,2012-05-31 00:00,2012-05-31 16:00,2013-02-10 08:00,2013-02-10 08:00,,2012-06-30 00:00,2012-06-30 00:00,,,2012-05-27 08:00,2012-05-31 16:00,,,,,PT_Normal,,,,,3f6P1T71UkCcufxNBaQ7cQ,qQiaMneyqke6pEtTAv4l9g,,,N,0,0,,,2012-06-25 15:13,2012-07-16 15:38,nour,admin
611,149438,5725,23881,6841,1,100,N,N,N,CP_Drtn,TT_Task,DT_FixedDUR2,RV_OK,TK_Complete,4229EIN180,Issue MRQ for Instrument mechanical bulk,,,,0,0,0,0,80,0,0,0,,2012-01-08 08:00,2012-02-19 00:00,2013-02-10 08:00,2013-02-10 08:00,,2012-06-30 00:00,2012-06-30 00:00,,,2012-01-08 08:00,2012-01-19 16:00,,,,,PT_Normal,,,,,N2XAuaX3VUOPTzCd35jfAg,xkY73sBs+E6w0i1R8ODp4g,,,N,0,0,,,2012-06-25 15:13,2012-07-16 15:38,nour,admin
612,149439,5725,23881,6841,1,100,N,N,N,CP_Drtn,TT_Task,DT_FixedDUR2,RV_OK,TK_Complete,4229EIN250,T.E.R for field Instrument,,,,0,0,0,0,120,0,0,0,2012-01-17 00:00,2012-01-17 08:00,2012-05-02 16:00,2012-08-26 08:00,2012-08-26 08:00,,2012-06-30 00:00,2012-06-30 00:00,,,2012-01-17 08:00,2012-02-07 16:00,,,,CS_MSOA,PT_Normal,,,,,vfzK1qynYE24+USgtnb1qw,+adQvSlUzkOZha6HG7fiRA,,,N,0,0,,,2012-06-25 15:13,2012-07-16 15:38,nour,admin
613,149440,5725,23881,6841,1,100,N,N,N,CP_Drtn,TT_Task,DT_FixedDUR2,RV_OK,TK_Complete,4229EIN90,Issue MRQ for field Instrument,,,,0,0,0,0,40,0,0,0,,2011-11-16 00:00,2011-12-13 00:00,2012-08-26 08:00,2012-08-26 08:00,,2012-06-30 00:00,2012-06-30 00:00,,,2011-12-04 08:00,2011-12-08 16:00,,,,,PT_Normal,,,,,ZPfVV33EUE+yFSrUhULp6Q,fa+QQs2lrkWif6ZY5ZmI+Q,,,N,0,0,,,2012-06-25 15:13,2012-07-16 15:38,nour,admin
614,149441,5725,23881,6841,1,100,N,N,N,CP_Drtn,TT_Task,DT_FixedDUR2,RV_OK,TK_Complete,4229EIN170,T.E.R for choke valves,,,,0,0,0,0,160,0,0,0,,2011-12-27 00:00,2012-04-03 00:00,2012-08-05 08:00,2012-08-05 08:00,,2012-06-30 00:00,2012-06-30 00:00,,,2012-01-01 08:00,2012-01-29 16:00,,,,,PT_Normal,,,,,6eZughVMREetC1S0LB4B9g,+adQvSlUzkOZha6HG7fiRA,,,N,0,0,,,2012-06-25 15:13,2012-07-16 15:38,nour,admin
615,149442,5725,23881,6841,1,100,N,N,N,CP_Drtn,TT_Task,DT_FixedDUR2,RV_OK,TK_Complete,4229EIN290,MRP for Choke valves,,,,0,0,0,0,40,0,0,0,,2012-05-27 00:00,2012-06-05 00:00,2012-11-05 08:00,2012-11-05 08:00,,2012-06-30 00:00,2012-06-30 00:00,,,2012-06-03 08:00,2012-06-07 16:00,,,,,PT_Normal,,,,,UmNtl9lwlke9MlV14OZMmQ,uCQ7t7XtkE2pu5tmschigw,,,N,0,0,,,2012-06-25 15:13,2012-07-16 15:38,nour,admin
616,149443,5725,23881,6841,1,100,N,N,N,CP_Drtn,TT_Task,DT_FixedDUR2,RV_OK,TK_Complete,4229EIN40,Issue MRQ for Choke valves,,,,0,0,0,0,40,0,0,0,,2011-10-10 08:48,2011-11-24 00:00,2012-08-05 08:00,2012-08-05 08:00,,2012-06-30 00:00,2012-06-30 00:00,,,2011-10-10 08:48,2011-10-17 08:48,,,,,PT_Normal,,,,,sGZZwt6KckOVSyWL0FQg6A,fa+QQs2lrkWif6ZY5ZmI+Q,,,N,0,0,,,2012-06-25 15:13,2012-07-16 15:38,nour,admin
617,149444,5725,23881,6841,1,100,N,N,N,CP_Drtn,TT_Task,DT_FixedDUR2,RV_OK,TK_Complete,4229EIN160,T.E.R for  Pressure regulator valves,,,,0,0,0,0,120,0,0,0,,2012-02-02 00:00,2012-04-03 00:00,2012-08-05 08:00,2012-08-05 08:00,,2012-06-30 00:00,2012-06-30 00:00,,,2012-03-08 08:00,2012-03-28 16:00,,,,,PT_Normal,,,,,VmEUaKQjKUq3Dtie3IMsMQ,+adQvSlUzkOZha6HG7fiRA,,,N,0,0,,,2012-06-25 15:13,2012-07-16 15:38,nour,admin
618,149445,5725,23881,6841,1,100,N,N,N,CP_Drtn,TT_Task,DT_FixedDUR2,RV_OK,TK_Complete,4229EIN30,Issue MRQ for Pressure regulator valves,,,,0,0,0,0,24,0,0,0,,2011-10-03 08:48,2011-10-09 08:48,2012-08-05 08:00,2012-08-05 08:00,,2012-06-30 00:00,2012-06-30 00:00,,,2011-10-03 08:48,2011-10-09 08:48,,,,,PT_Normal,,,,,Bhvu62F7+EedhGYbwQkTgw,fa+QQs2lrkWif6ZY5ZmI+Q,,,N,0,0,,,2012-06-25 15:13,2012-07-16 15:38,nour,admin
619,149446,5725,23881,6841,1,100,N,N,N,CP_Drtn,TT_Task,DT_FixedDUR2,RV_OK,TK_Complete,4229EIN110,T.E.R for MPFM,,,,0,0,0,0,160,0,0,0,,2011-11-14 00:00,2011-12-21 00:00,2012-08-05 08:00,2012-08-05 08:00,,2012-06-30 00:00,2012-06-30 00:00,,,2011-12-04 08:00,2011-12-29 16:00,,,,,PT_Normal,,,,,3HqQWcZqs0KmCEcDJH27PA,+adQvSlUzkOZha6HG7fiRA,,,N,0,0,,,2012-06-25 15:13,2012-07-16 15:38,nour,admin
620,149447,5725,23881,6841,1,100,N,N,N,CP_Drtn,TT_Task,DT_FixedDUR2,RV_OK,TK_Complete,4229EIN260,MRP for MPFM,,,,0,0,0,0,40,0,0,0,,2012-02-09 00:00,2012-02-20 00:00,2012-08-05 08:00,2012-08-05 08:00,,2012-06-30 00:00,2012-06-30 00:00,,,2012-03-04 08:00,2012-03-08 16:00,,,,,PT_Normal,,,,,ip61DbySU0SIyjLLUs6ksA,uCQ7t7XtkE2pu5tmschigw,,,N,0,0,,,2012-06-25 15:13,2012-07-16 15:38,nour,admin
621,149448,5725,23881,6841,1,100,N,N,N,CP_Drtn,TT_Task,DT_FixedDUR2,RV_OK,TK_Complete,4229EIN20,Issue MRQ for MPFM,,,,0,0,0,0,40,0,0,0,,2011-09-29 08:00,2011-10-04 00:00,2012-08-05 08:00,2012-08-05 08:00,,2012-06-30 00:00,2012-06-30 00:00,,,2011-09-29 08:00,2011-10-05 16:00,,,,,PT_Normal,,,,,lTz4NZZrDUaEtj13VprIdQ,fa+QQs2lrkWif6ZY5ZmI+Q,,,N,0,0,,,2012-06-25 15:13,2012-07-16 15:38,nour,admin
622,149449,5725,23883,6841,1,100,N,N,N,CP_Drtn,TT_Task,DT_FixedDUR2,RV_OK,TK_Complete,4229EPL290,"18"""" spool arangement drawing -Design",,,,0,0,0,0,120,0,0,0,,2011-12-29 00:00,2012-02-13 00:00,2013-02-18 08:00,2013-02-18 08:00,,2012-06-30 00:00,2012-06-30 00:00,,,2012-01-01 08:00,2012-01-19 16:00,,,,,PT_Normal,,,,,gcawoviEUEeLOBABFXuLxw,,,,N,0,0,,,2012-06-25 15:13,2012-07-16 15:38,nour,admin
623,149450,5725,23883,6841,1,100,N,N,N,CP_Drtn,TT_Task,DT_FixedDUR2,RV_OK,TK_Complete,4229EPL390,"18"""" spool arangement drawing -Construction",,,,0,0,0,0,120,0,0,0,,2012-03-18 00:00,2012-03-27 00:00,2013-02-24 16:00,2013-02-24 16:00,,2012-06-30 00:00,2012-06-30 00:00,,,2012-03-04 08:00,2012-03-22 16:00,,,,,PT_Normal,,,,,LeB6takJXkCFd78Hxt/tXQ,,,,N,0,0,,,2012-06-25 15:13,2012-07-16 15:38,nour,admin
624,149451,5725,23883,6841,1,100,N,N,N,CP_Drtn,TT_Task,DT_FixedDUR2,RV_OK,TK_Complete,4229EPL170,"8"""" spool arrangement drawing -Approval",,,,0,0,0,0,120,0,0,0,,2011-11-23 00:00,2011-12-15 00:00,2013-02-18 08:00,2013-02-18 08:00,,2012-06-30 00:00,2012-06-30 00:00,,,2011-12-04 08:00,2011-12-22 16:00,,,,,PT_Normal,,,,,nqbgwJt31UOAs6e2pl+pcw,jOOEz2anUU+9clXvBjEQhQ,,,N,0,0,,,2012-06-25 15:13,2012-07-16 15:38,nour,admin
625,149452,5725,23883,6841,1,100,N,N,N,CP_Drtn,TT_Task,DT_FixedDUR2,RV_OK,TK_Complete,4229EPL310,"8"""" spool arrangement drawing -Design",,,,0,0,0,0,120,0,0,0,,2011-12-29 00:00,2012-02-13 00:00,2013-02-18 08:00,2013-02-18 08:00,,2012-06-30 00:00,2012-06-30 00:00,,,2012-01-01 08:00,2012-01-19 16:00,,,,,PT_Normal,,,,,SHC8Ay/kH06rI3QViyVb3w,0TGBIs4CqUS2FVJ2PYQVfA,,,N,0,0,,,2012-06-25 15:13,2012-07-16 15:38,nour,admin
626,149453,5725,23883,6841,1,100,N,N,N,CP_Drtn,TT_Task,DT_FixedDUR2,RV_OK,TK_Complete,4229EPL410,"8"""" spool arangement drawing -Construction",,,,0,0,0,0,120,0,0,0,,2012-03-18 00:00,2012-03-27 00:00,2013-02-24 16:00,2013-02-24 16:00,,2012-06-30 00:00,2012-06-30 00:00,,,2012-03-04 08:00,2012-03-22 16:00,,,,,PT_Normal,,,,,pQZ/w/sUU02aTwRD+OyUAA,8R1bdDNv6USkyU4V9lAC9w,,,N,0,0,,,2012-06-25 15:13,2012-07-16 15:38,nour,admin
627,149454,5725,23883,6841,1,100,N,N,N,CP_Drtn,TT_Task,DT_FixedDUR2,RV_OK,TK_Complete,4229EPL230,"8"""" riser arrangement drawing -Approval",,,,0,0,0,0,80,0,0,0,,2011-12-14 08:00,2011-12-28 00:00,2013-02-18 08:00,2013-02-18 08:00,,2012-06-30 00:00,2012-06-30 00:00,,,2011-12-14 08:00,2011-12-27 16:00,,,,,PT_Normal,,,,,OUb2wv9h0E6U6Yih0y8vuA,8jUDyxPYdU2TST0Gh6JkUg,,,N,0,0,,,2012-06-25 15:13,2012-07-16 15:38,nour,admin
628,149455,5725,23883,6841,1,100,N,N,N,CP_Drtn,TT_Task,DT_FixedDUR2,RV_OK,TK_Complete,4229EPL330,"8"""" riser arrangement drawing -Design",,,,0,0,0,0,80,0,0,0,,2012-02-26 00:00,2012-02-29 00:00,2013-02-18 08:00,2013-02-18 08:00,,2012-06-30 00:00,2012-06-30 00:00,,,2012-03-13 08:00,2012-03-26 16:00,,,,,PT_Normal,,,,,7DKxi9r+ikW55hxsKA0Hwg,DqhkdzQg0USL5rbPHbkl1Q,,,N,0,0,,,2012-06-25 15:13,2012-07-16 15:38,nour,admin
629,149456,5725,23883,6841,1,100,N,N,N,CP_Drtn,TT_Task,DT_FixedDUR2,RV_OK,TK_Complete,4229EPL420,"8"""" riser arrangement drawing -Construction",,,,0,0,0,0,120,0,0,0,,2012-03-25 00:00,2012-04-19 00:00,2013-02-24 16:00,2013-02-24 16:00,,2012-06-30 00:00,2012-06-30 00:00,,,2012-04-01 08:00,2012-04-19 16:00,,,,,PT_Normal,,,,,5A8wC6xGmkqUpqvedujp7w,w2TMQgyxDEm1NRXaCHdGig,,,N,0,0,,,2012-06-25 15:13,2012-07-16 15:38,nour,admin
630,149457,5725,23883,6841,1,100,N,N,N,CP_Drtn,TT_Task,DT_FixedDUR2,RV_OK,TK_Complete,4229EPL240,"18"""" riser arrangement drawing -Approval",,,,0,0,0,0,80,0,0,0,,2011-12-14 08:00,2011-12-28 00:00,2013-02-18 08:00,2013-02-18 08:00,,2012-06-30 00:00,2012-06-30 00:00,,,2011-12-14 08:00,2011-12-27 16:00,,,,,PT_Normal,,,,,2ViHKKM0Oku71jqgVwr4XA,c9vMafYWtkK1NGoiHIJ1wA,,,N,0,0,,,2012-06-25 15:13,2012-07-16 15:38,nour,admin
631,149458,5725,23883,6841,1,100,N,N,N,CP_Drtn,TT_Task,DT_FixedDUR2,RV_OK,TK_Complete,4229EPL350,"18"""" riser arrangement drawing -Design",,,,0,0,0,0,80,0,0,0,,2012-02-26 00:00,2012-02-29 00:00,2013-02-18 08:00,2013-02-18 08:00,,2012-06-30 00:00,2012-06-30 00:00,,,2012-03-13 08:00,2012-03-26 16:00,,,,,PT_Normal,,,,,8WYWfNL2CU2cESeWjIY98Q,ducMrzoJrUqdTOcWLFVgnw,,,N,0,0,,,2012-06-25 15:13,2012-07-16 15:38,nour,admin
632,149459,5725,23883,6841,1,100,N,N,N,CP_Drtn,TT_Task,DT_FixedDUR2,RV_OK,TK_Complete,4229EPL430,"18"""" riser arrangement drawing -Construction",,,,0,0,0,0,120,0,0,0,,2012-03-25 00:00,2012-04-19 00:00,2013-02-24 16:00,2013-02-24 16:00,,2012-06-30 00:00,2012-06-30 00:00,,,2012-04-01 08:00,2012-04-19 16:00,,,,,PT_Normal,,,,,3V51vILFq0KybUXXDWb3DA,VwsEWnSmS0O0TiUHBQD99w,,,N,0,0,,,2012-06-25 15:13,2012-07-16 15:38,nour,admin
633,149460,5725,23883,6841,1,100,N,N,N,CP_Drtn,TT_Task,DT_FixedDUR2,RV_OK,TK_Complete,4229EPL440,"18""""Spool ISO-IFC",,,,0,0,0,0,0,0,0,0,,2012-05-02 00:00,2012-05-29 00:00,2013-02-24 16:00,2013-02-24 16:00,,2012-06-30 00:00,2012-06-30 00:00,,,2012-06-03 08:00,2012-06-03 08:00,,,,,PT_Normal,,,,,k4DSVfctnkmvXVhtTCk7HQ,,,,N,0,0,,,2012-06-25 15:13,2012-07-16 15:38,nour,admin
634,149461,5725,23883,6841,1,100,N,N,N,CP_Drtn,TT_Task,DT_FixedDUR2,RV_OK,TK_Complete,4229EPL450,"8""""Spool ISO-IFC",,,,0,0,0,0,0,0,0,0,,2012-05-02 00:00,2012-05-29 00:00,2013-02-24 16:00,2013-02-24 16:00,,2012-06-30 00:00,2012-06-30 00:00,,,2012-06-03 08:00,2012-06-03 08:00,,,,,PT_Normal,,,,,3+ORftuZtkGh/1Vkn2OSSQ,QWvo4lzWEkeSB/GI9TalYQ,,,N,0,0,,,2012-06-25 15:13,2012-07-16 15:38,nour,admin
635,149462,5725,23883,6841,1,100,N,N,N,CP_Drtn,TT_Task,DT_FixedDUR2,RV_OK,TK_Complete,4229EPL460,"8""""Riser ISO-IFC",,,,0,0,0,0,0,0,0,0,,2012-05-02 00:00,2012-05-29 00:00,2013-02-24 16:00,2013-02-24 16:00,,2012-06-30 00:00,2012-06-30 00:00,,,2012-06-03 08:00,2012-06-03 08:00,,,,,PT_Normal,,,,,vmfcJiwh8UaONtkNOFl58Q,,,,N,0,0,,,2012-06-25 15:13,2012-07-16 15:38,nour,admin
636,149463,5725,23883,6841,1,100,N,N,N,CP_Drtn,TT_Task,DT_FixedDUR2,RV_OK,TK_Complete,4229EPL470,"18""""Riser ISO-IFC",,,,0,0,0,0,0,0,0,0,,2012-05-02 00:00,2012-05-29 00:00,2013-02-24 16:00,2013-02-24 16:00,,2012-06-30 00:00,2012-06-30 00:00,,,2012-06-03 08:00,2012-06-03 08:00,,,,,PT_Normal,,,,,mvEMA+mO8UC9p77qxvQ01w,,,,N,0,0,,,2012-06-25 15:13,2012-07-16 15:38,nour,admin
637,149464,5725,23883,6841,1,100,N,N,N,CP_Drtn,TT_Task,DT_FixedDUR2,RV_OK,TK_Complete,4229EPL480,MTO for risers / spools,,,,0,0,0,0,48,0,0,0,,2012-05-28 00:00,2012-06-11 00:00,2013-02-24 16:00,2013-02-24 16:00,,2012-06-30 00:00,2012-06-30 00:00,,,2012-07-01 08:00,2012-07-08 16:00,,,,,PT_Normal,,,,,tDH5duaL5k+H/9LDJ1NtZQ,,,,N,0,0,,,2012-06-25 15:13,2012-07-16 15:38,nour,admin
638,149465,5725,23883,6841,1,100,N,N,N,CP_Drtn,TT_Task,DT_FixedDUR2,RV_OK,TK_Complete,4229EPL320,"18""""Spool ISO-IFD",,,,0,0,0,0,120,0,0,0,,2012-02-01 00:00,2012-02-21 00:00,2013-02-24 16:00,2013-02-24 16:00,,2012-06-30 00:00,2012-06-30 00:00,,,2012-03-04 08:00,2012-03-22 16:00,,,,,PT_Normal,,,,,dnp91RXmL0iMOGbD8CaDBQ,QWvo4lzWEkeSB/GI9TalYQ,,,N,0,0,,,2012-06-25 15:13,2012-07-16 15:38,nour,admin
639,149466,5725,23883,6841,1,100,N,N,N,CP_Drtn,TT_Task,DT_FixedDUR2,RV_OK,TK_Complete,4229EPL340,"8""""Spool ISO-IFD",,,,0,0,0,0,120,0,0,0,,2012-02-01 00:00,2012-02-21 00:00,2013-02-24 16:00,2013-02-24 16:00,,2012-06-30 00:00,2012-06-30 00:00,,,2012-03-04 08:00,2012-03-22 16:00,,,,,PT_Normal,,,,,e4Tvli4Du0qxx/rWcmYWgQ,+FL8Jip98kWoIme5/i161w,,,N,0,0,,,2012-06-25 15:13,2012-07-16 15:38,nour,admin
640,149467,5725,23883,6841,1,100,N,N,N,CP_Drtn,TT_Task,DT_FixedDUR2,RV_OK,TK_Complete,4229EPL380,"8""""Riser ISO-IFD",,,,0,0,0,0,120,0,0,0,,2012-02-26 00:00,2012-03-15 00:00,2013-02-24 16:00,2013-02-24 16:00,,2012-06-30 00:00,2012-06-30 00:00,,,2012-03-05 08:00,2012-03-25 16:00,,,,,PT_Normal,,,,,k1KgDxdep0++Z2lqFndskw,An0k6jaeek+tGUVppnFC2g,,,N,0,0,,,2012-06-25 15:13,2012-07-16 15:38,nour,admin
641,149468,5725,23883,6841,1,100,N,N,N,CP_Drtn,TT_Task,DT_FixedDUR2,RV_OK,TK_Complete,4229EPL400,"18""""Riser ISO-IFD",,,,0,0,0,0,120,0,0,0,,2012-02-26 08:00,2012-03-15 00:00,2013-02-24 16:00,2013-02-24 16:00,,2012-06-30 00:00,2012-06-30 00:00,,,2012-02-26 08:00,2012-03-15 16:00,,,,,PT_Normal,,,,,4MrqhmiWTEGTa+92xL2K/g,pGWAx7T7vESmiNqcx8nO8w,,,N,0,0,,,2012-06-25 15:13,2012-07-16 15:38,nour,admin
642,149469,5725,23883,6841,1,100,N,N,N,CP_Drtn,TT_Task,DT_FixedDUR2,RV_OK,TK_Complete,4229EPL160,"18"""" spool arrangement drawing -Approval",,,,0,0,0,0,120,0,0,0,,2011-11-15 00:00,2011-12-15 00:00,2013-02-18 08:00,2013-02-18 08:00,,2012-06-30 00:00,2012-06-30 00:00,,,2011-12-04 08:00,2011-12-22 16:00,,,,,PT_Normal,,,,,dKNGxbwufk2I/kNbyO/mJw,,,,N,0,0,,,2012-06-25 15:13,2012-07-16 15:38,nour,admin
643,149470,5725,23884,6841,1,100,N,N,N,CP_Drtn,TT_Task,DT_FixedDUR2,RV_OK,TK_Complete,4229EPL120,Wall thickness report for risers & spools-Approval,,,,0,0,0,0,40,0,0,0,,2011-11-30 00:00,2011-12-05 16:00,2013-02-24 16:00,2013-02-24 16:00,,2012-06-30 00:00,2012-06-30 00:00,,,2011-12-11 08:00,2011-12-15 16:00,,,,,PT_Normal,,,,,w/ddwL560EGCfFigvkiSFw,,,,N,0,0,,,2012-06-25 15:13,2012-07-16 15:38,nour,admin
644,149471,5725,23884,6841,1,100,N,N,N,CP_Drtn,TT_Task,DT_FixedDUR2,RV_OK,TK_Complete,4229EPL200,Wall thickness report for risers & spools-Final,,,,0,0,0,0,40,0,0,0,,2011-12-06 00:00,2011-12-19 16:00,2013-02-24 16:00,2013-02-24 16:00,,2012-06-30 00:00,2012-06-30 00:00,,,2011-12-13 08:00,2011-12-19 16:00,,,,,PT_Normal,,,,,nkXwh22dUkuTR3FSrUXl7w,,,,N,0,0,,,2012-06-25 15:13,2012-07-16 15:38,nour,admin
645,149472,5725,23884,6841,1,100,N,N,N,CP_Drtn,TT_Task,DT_FixedDUR2,RV_OK,TK_Complete,4229EPL490,Risers / spoolpieces stress analysis report-Construction,,,,0,0,0,0,80,0,0,0,,2012-04-26 00:00,2012-06-05 00:00,2013-02-24 16:00,2013-02-24 16:00,,2012-06-30 00:00,2012-06-30 00:00,,,2012-05-24 08:00,2012-06-06 16:00,,,,,PT_Normal,,,,,XUWXKUYGl0a9yTDRgtMCEg,,,,N,0,0,,,2012-06-25 15:13,2012-07-16 15:38,nour,admin
646,149473,5725,23866,6841,1,100,N,N,N,CP_Drtn,TT_Task,DT_FixedDUR2,RV_OK,TK_Complete,4229EPL550,VPR for isolating joints,,,,0,0,0,0,320,0,0,0,,2012-01-09 00:00,2012-04-16 00:00,2013-02-24 16:00,2013-02-24 16:00,,2012-06-30 00:00,2012-06-30 00:00,,,2012-03-11 08:00,2012-05-03 16:00,,,,,PT_Normal,,,,,B4o0/x5uGUyrP67PN0XnNw,,,,N,0,0,,,2012-06-25 15:13,2012-07-16 15:38,nour,admin
647,149474,5725,23866,6841,1,100,N,N,N,CP_Drtn,TT_Task,DT_FixedDUR2,RV_OK,TK_Complete,4229EPL520,VPR for  anchor flanges,,,,0,0,0,0,320,0,0,0,,2012-02-21 00:00,2012-03-20 00:00,2013-02-24 16:00,2013-02-24 16:00,,2012-07-05 16:00,2012-07-05 16:00,,,2012-04-22 08:00,2012-06-14 16:00,,,,,PT_Normal,,,,,UIxZZ4bbl0Oi0UIzQRJEkw,,,,N,0,0,,,2012-06-25 15:13,2012-07-16 15:38,nour,admin
648,149475,5725,23866,6841,1,0,N,N,N,CP_Drtn,TT_Task,DT_FixedDUR2,RV_OK,TK_Active,4229EPL510,VPR for flanges,,1200,1200,88,0,0,0,320,0,0,0,,2012-03-11 00:00,,2013-02-10 08:00,2013-02-24 16:00,,2012-07-01 08:00,2012-07-15 16:00,2012-07-01 08:00,2012-07-15 16:00,2012-03-29 08:00,2012-05-23 16:00,,2013-02-10 08:00,2013-02-24 16:00,,PT_Normal,,,,,1Q7Ab5rwxkerI2OhvPRj9g,,,,N,0,0,,,2012-06-25 15:13,2012-07-16 15:38,nour,admin
649,149476,5725,23866,6841,1,100,N,N,N,CP_Drtn,TT_Task,DT_FixedDUR2,RV_OK,TK_Complete,4229EPL530,VPR for heat shrink sleeves,,,,0,0,0,0,320,0,0,0,,2012-02-19 00:00,2012-02-29 00:00,2013-02-24 16:00,2013-02-24 16:00,,2012-06-30 00:00,2012-06-30 00:00,,,2012-03-04 08:00,2012-04-26 16:00,,,,,PT_Normal,,,,,4qshPJBnSEiXLSx7gXiVGA,,,,N,0,0,,,2012-06-25 15:13,2012-07-16 15:38,nour,admin
650,149477,5725,23866,6841,1,100,N,N,N,CP_Drtn,TT_Task,DT_FixedDUR2,RV_OK,TK_Complete,4229EPL540,VPR for  kamos ring,,,,0,0,0,0,320,0,0,0,,2012-02-01 00:00,2012-03-01 00:00,2013-02-24 16:00,2013-02-24 16:00,,2012-06-30 00:00,2012-06-30 00:00,,,2012-03-04 08:00,2012-04-26 16:00,,,,,PT_Normal,,,,,YAYeW+9WrEehyPi60FIlnw,,,,N,0,0,,,2012-06-25 15:13,2012-07-16 15:38,nour,admin
651,149478,5725,23866,6841,1,100,N,N,N,CP_Drtn,TT_Task,DT_FixedDUR2,RV_OK,TK_Complete,4229EPL70,"T.E.R for 8""""line pipe",,,,0,0,0,0,160,0,0,0,,2011-11-22 00:00,2012-01-08 16:00,2013-01-17 08:00,2013-01-17 08:00,,2012-06-30 00:00,2012-06-30 00:00,,,2012-01-22 08:00,2012-02-19 16:00,,,,,PT_Normal,,,,,GUXY2VyWy0mjNPHtDXVRtw,,,,N,0,0,,,2012-06-25 15:13,2012-07-16 15:38,nour,admin
652,149479,5725,23866,6841,1,100,N,N,N,CP_Drtn,TT_Task,DT_FixedDUR2,RV_OK,TK_Complete,4229EPL90,T.E.R for hot bends,,,,0,0,0,0,160,0,0,0,,2011-10-30 00:00,2011-12-08 00:00,2012-12-02 08:00,2012-12-02 08:00,,2012-06-30 00:00,2012-06-30 00:00,,,2011-12-04 08:00,2011-12-29 16:00,,,,,PT_Normal,,,,,tDybkIuXZEWIgAuarWDpyQ,,,,N,0,0,,,2012-06-25 15:13,2012-07-16 15:38,nour,admin
653,149480,5725,23866,6841,1,100,N,N,N,CP_Drtn,TT_Task,DT_FixedDUR2,RV_OK,TK_Complete,4229EPL100,T.E.R for flanges,,,,0,0,0,0,160,0,0,0,,2011-12-01 00:00,2012-01-18 16:00,2013-01-26 08:00,2013-01-26 08:00,,2012-06-30 00:00,2012-06-30 00:00,,,2011-12-05 08:00,2012-01-01 16:00,,,,,PT_Normal,,,,,mkymukkjfUqtWJGj/4EMlg,,,,N,0,0,,,2012-06-25 15:13,2012-07-16 15:38,nour,admin
654,149481,5725,23866,6841,1,100,N,N,N,CP_Drtn,TT_Task,DT_FixedDUR2,RV_OK,TK_Complete,4229EPL130,T.E.R for heat shrink sleeves,,,,0,0,0,0,120,0,0,0,,2011-11-03 00:00,2011-12-05 00:00,2013-02-24 16:00,2013-02-24 16:00,,2012-06-30 00:00,2012-06-30 00:00,,,2011-12-04 08:00,2011-12-22 16:00,,,,,PT_Normal,,,,,EeHXA614sEWdDBkTXjKONQ,,,,N,0,0,,,2012-06-25 15:13,2012-07-16 15:38,nour,admin
655,149482,5725,23866,6841,1,100,N,N,N,CP_Drtn,TT_Task,DT_FixedDUR2,RV_OK,TK_Complete,4229EPL140,T.E.R for kamos ring,,,,0,0,0,0,120,0,0,0,,2011-11-13 00:00,2011-11-20 00:00,2013-02-24 16:00,2013-02-24 16:00,,2012-06-30 00:00,2012-06-30 00:00,,,2011-12-04 08:00,2011-12-22 16:00,,,,,PT_Normal,,,,,k1rSUxyeTUqv+o7fLHY45Q,,,,N,0,0,,,2012-06-25 15:13,2012-07-16 15:38,nour,admin
656,149483,5725,23866,6841,1,100,N,N,N,CP_Drtn,TT_Task,DT_FixedDUR2,RV_OK,TK_Complete,4229EPL210,T.E.R for isolating joints,,,,0,0,0,0,120,0,0,0,,2011-11-13 00:00,2011-12-08 00:00,2013-02-24 16:00,2013-02-24 16:00,,2012-06-30 00:00,2012-06-30 00:00,,,2011-12-04 08:00,2011-12-22 16:00,,,,,PT_Normal,,,,,UuBzoDEyZEO57sthwrumvg,,,,N,0,0,,,2012-06-25 15:13,2012-07-16 15:38,nour,admin
657,149484,5725,23866,6841,1,100,N,N,N,CP_Drtn,TT_Task,DT_FixedDUR2,RV_OK,TK_Complete,4229EPL150,T.E.R for anchor flanges,,,,0,0,0,0,120,0,0,0,,2011-12-06 08:00,2012-01-05 00:00,2013-02-03 08:00,2013-02-03 08:00,,2012-06-30 00:00,2012-06-30 00:00,,,2011-12-06 08:00,2011-12-26 16:00,,,,,PT_Normal,,,,,HVWo9Btz8kKn4h9NRNKLuA,,,,N,0,0,,,2012-06-25 15:13,2012-07-16 15:38,nour,admin
658,149485,5725,23866,6841,1,100,N,N,N,CP_Drtn,TT_Task,DT_FixedDUR2,RV_OK,TK_Complete,4229EPL10,Pipeline specifications & data sheets,,,,0,0,0,0,168,0,0,0,,2011-08-15 08:00,2011-09-14 16:00,2012-12-02 08:00,2012-12-02 08:00,,2012-06-30 00:00,2012-06-30 00:00,,,2011-08-15 08:00,2011-09-14 16:00,,,,,PT_Normal,,,,,PiTc2uExe0SFi0F+96sPGg,vfWL9w00SHKHeaxQNrnnog,,,N,0,0,,,2012-06-25 15:13,2012-07-16 15:38,nour,admin
659,149486,5725,23866,6841,1,100,N,N,N,CP_Drtn,TT_Task,DT_FixedDUR2,RV_OK,TK_Complete,4229EPL40,MRQ for heat shrink sleeves,,,,0,0,0,0,80,0,0,0,,2011-09-27 08:00,2011-10-11 16:00,2013-02-18 08:00,2013-02-18 08:00,,2012-06-30 00:00,2012-06-30 00:00,,,2011-09-27 08:00,2011-10-11 16:00,,,,,PT_Normal,,,,,VlFCNbRRqEigeSkHqEdqlw,,,,N,0,0,,,2012-06-25 15:13,2012-07-16 15:38,nour,admin
660,149487,5725,23866,6841,1,100,N,N,N,CP_Drtn,TT_Task,DT_FixedDUR2,RV_OK,TK_Complete,4229EPL560,"MRQ for 8"""" line pipe",,,,0,0,0,0,80,0,0,0,,2011-10-09 08:00,2011-10-23 00:00,2013-01-17 08:00,2013-01-17 08:00,,2012-06-30 00:00,2012-06-30 00:00,,,2011-10-09 08:00,2011-10-20 16:00,,,,,PT_Normal,,,,,kEQjcsDp2km9ET9whgxP+Q,,,,N,0,0,,,2012-06-25 15:13,2012-07-16 15:38,nour,admin
661,149488,5725,23866,6841,1,0,N,N,N,CP_Drtn,TT_Task,DT_FixedDUR2,RV_OK,TK_Active,4229EPL570,"VPR for  8""""line pipe",,1280,1280,8,0,0,0,320,0,0,0,,2012-04-05 00:00,,2013-02-24 08:00,2013-02-24 16:00,,2012-07-01 08:00,2012-07-01 16:00,2012-07-01 08:00,2012-07-01 16:00,2012-05-06 08:00,2012-06-28 16:00,,2013-02-24 08:00,2013-02-24 16:00,,PT_Normal,,,,,1HEcdcsEakW4wyUqXOU0qw,,,,N,0,0,,,2012-06-25 15:13,2012-07-16 15:38,nour,admin
662,149489,5725,23866,6841,1,100,N,N,N,CP_Drtn,TT_Task,DT_FixedDUR2,RV_OK,TK_Complete,4229EPL20,MRQ for hot bends,,,,0,0,0,0,120,0,0,0,,2011-09-15 08:00,2011-10-02 00:00,2012-12-02 08:00,2012-12-02 08:00,,2012-06-30 00:00,2012-06-30 00:00,,,2011-09-15 08:00,2011-10-05 16:00,,,,,PT_Normal,,,,,LCcV2g6X00erW8omT8BeJA,,,,N,0,0,,,2012-06-25 15:13,2012-07-16 15:38,nour,admin
663,149490,5725,23866,6841,1,100,N,N,N,CP_Drtn,TT_Task,DT_FixedDUR2,RV_OK,TK_Complete,4229EPL260,MRP for heat shrink sleeves,,,,0,0,0,0,40,0,0,0,,2012-01-24 08:00,2012-02-02 00:00,2013-02-24 16:00,2013-02-24 16:00,,2012-06-30 00:00,2012-06-30 00:00,,,2012-01-24 08:00,2012-01-31 16:00,,,,,PT_Normal,,,,,B9ZpWGdVM0GJjCtlFT2x7Q,,,,N,0,0,,,2012-06-25 15:13,2012-07-16 15:38,nour,admin
664,149491,5725,23866,6841,1,100,N,N,N,CP_Drtn,TT_Task,DT_FixedDUR2,RV_OK,TK_Complete,4229EPL270,MRP for kamos ring,,,,0,0,0,0,40,0,0,0,,2011-12-21 00:00,2011-12-26 00:00,2013-02-24 16:00,2013-02-24 16:00,,2012-06-30 00:00,2012-06-30 00:00,,,2012-01-08 08:00,2012-01-12 16:00,,,,,PT_Normal,,,,,a+N9TLrAyU+ajHelnLMKlw,,,,N,0,0,,,2012-06-25 15:13,2012-07-16 15:38,nour,admin
665,149492,5725,23866,6841,1,100,N,N,N,CP_Drtn,TT_Task,DT_FixedDUR2,RV_OK,TK_Complete,4229EPL300,MRP for isolating joints,,,,0,0,0,0,8,0,0,0,,2012-01-24 00:00,2012-01-31 00:00,2013-02-24 16:00,2013-02-24 16:00,,2012-06-30 00:00,2012-06-30 00:00,,,2012-01-29 08:00,2012-01-29 16:00,,,,,PT_Normal,,,,,8BfSP3kOdUS4V8gcbO8RQg,,,,N,0,0,,,2012-06-25 15:13,2012-07-16 15:38,nour,admin
666,149493,5725,23866,6841,1,100,N,N,N,CP_Drtn,TT_Task,DT_FixedDUR2,RV_OK,TK_Complete,4229EPL190,MRP for hot bends,,,,0,0,0,0,40,0,0,0,,2012-02-09 00:00,2012-02-19 00:00,2012-12-02 08:00,2012-12-02 08:00,,2012-06-30 00:00,2012-06-30 00:00,,,2012-01-29 08:00,2012-02-02 16:00,,,,,PT_Normal,,,,,66XWXWFpsUCn5HTnSl3yfw,,,,N,0,0,,,2012-06-25 15:13,2012-07-16 15:38,nour,admin
667,149494,5725,23866,6841,1,100,N,N,N,CP_Drtn,TT_Task,DT_FixedDUR2,RV_OK,TK_Complete,4229EPL220,MRP for flanges,,,,0,0,0,0,40,0,0,0,,2012-02-26 00:00,2012-02-28 00:00,2013-01-26 08:00,2013-01-26 08:00,,2012-06-30 00:00,2012-06-30 00:00,,,2012-03-07 08:00,2012-03-13 16:00,,,,,PT_Normal,,,,,qFjxBP9PbE2jBfU+Q7UwYA,,,,N,0,0,,,2012-06-25 15:13,2012-07-16 15:38,nour,admin
668,149495,5725,23866,6841,1,100,N,N,N,CP_Drtn,TT_Task,DT_FixedDUR2,RV_OK,TK_Complete,4229EPL280,MRP for anchor flanges,,,,0,0,0,0,40,0,0,0,,2012-02-14 00:00,2012-02-28 00:00,2013-02-03 08:00,2013-02-03 08:00,,2012-06-30 00:00,2012-06-30 00:00,,,2012-03-04 08:00,2012-03-08 16:00,,,,,PT_Normal,,,,,v9vZQaHwxEe280d5JWq4Eg,,,,N,0,0,,,2012-06-25 15:13,2012-07-16 15:38,nour,admin
669,149496,5725,23866,6841,1,100,N,N,N,CP_Drtn,TT_Task,DT_FixedDUR2,RV_OK,TK_Complete,4229EPL60,MRQ for Kamos ring,,,,0,0,0,0,80,0,0,0,,2011-09-22 08:00,2011-10-02 00:00,2013-02-18 08:00,2013-02-18 08:00,,2012-06-30 00:00,2012-06-30 00:00,,,2011-09-22 08:00,2011-10-05 16:00,,,,,PT_Normal,,,,,hGYJemuIBEan7tOw1gm19Q,,,,N,0,0,,,2012-06-25 15:13,2012-07-16 15:38,nour,admin
670,149497,5725,23866,6841,1,100,N,N,N,CP_Drtn,TT_Task,DT_FixedDUR2,RV_OK,TK_Complete,4229EPL80,MRQ for isolating joints,,,,0,0,0,0,80,0,0,0,,2011-10-04 08:00,2011-10-19 00:00,2013-02-18 08:00,2013-02-18 08:00,,2012-06-30 00:00,2012-06-30 00:00,,,2011-10-04 08:00,2011-10-18 16:00,,,,,PT_Normal,,,,,t/NN8VoPwUCsJVxoy7YMXg,Iy03cOKrXESwGRujrHG5XQ,,,N,0,0,,,2012-06-25 15:13,2012-07-16 15:38,nour,admin
671,149498,5725,23866,6841,1,100,N,N,N,CP_Drtn,TT_Task,DT_FixedDUR2,RV_OK,TK_Complete,4229EPL50,MRQ for anchor flanges,,,,0,0,0,0,64,0,0,0,,2011-10-16 08:00,2011-10-25 16:00,2013-01-17 08:00,2013-01-17 08:00,,2012-06-30 00:00,2012-06-30 00:00,,,2011-10-16 08:00,2011-10-25 16:00,,,,,PT_Normal,,,,,FuLmTSgkWUGfynCi79lbqw,,,,N,0,0,,,2012-06-25 15:13,2012-07-16 15:38,nour,admin
672,149499,5725,23866,6841,1,100,N,N,N,CP_Drtn,TT_Task,DT_FixedDUR2,RV_OK,TK_Complete,4229EPL30,MRQ for flanges,,,,0,0,0,0,40,0,0,0,,2011-10-09 08:00,2011-10-13 16:00,2013-01-17 08:00,2013-01-17 08:00,,2012-06-30 00:00,2012-06-30 00:00,,,2011-10-09 08:00,2011-10-13 16:00,,,,,PT_Normal,,,,,9lFMydfck02VrRG8+BmpMA,,,,N,0,0,,,2012-06-25 15:13,2012-07-16 15:38,nour,admin
673,149500,5725,23866,6841,1,100,N,N,N,CP_Drtn,TT_Task,DT_FixedDUR2,RV_OK,TK_Complete,4229EPL110,"MRP for 8"""" pipeline",,,,0,0,0,0,40,0,0,0,,2012-02-21 00:00,2012-02-26 00:00,2013-01-17 08:00,2013-01-17 08:00,,2012-06-30 00:00,2012-06-30 00:00,,,2012-03-04 08:00,2012-03-08 16:00,,,,,PT_Normal,,,,,tWWQEYfnLESA36LEg+ywjQ,,,,N,0,0,,,2012-06-25 15:13,2012-07-16 15:38,nour,admin
674,149501,5725,23866,6841,1,100,N,N,N,CP_Drtn,TT_Task,DT_FixedDUR2,RV_OK,TK_Complete,4229EPL250,Testing & pre-commissioning specification-Approval,,,,0,0,0,0,80,0,0,0,,2011-12-14 08:00,2012-01-02 16:00,2013-02-18 08:00,2013-02-18 08:00,,2012-06-30 00:00,2012-06-30 00:00,,,2011-12-14 08:00,2011-12-27 16:00,,,,,PT_Normal,,,,,58q3o5THhkqVpago8HPaTA,,,,N,0,0,,,2012-06-25 15:13,2012-07-16 15:38,nour,admin
675,149502,5725,23866,6841,1,0,N,N,N,CP_Drtn,TT_Task,DT_FixedDUR2,RV_OK,TK_NotStart,4229EPL360,Testing & pre-commissioning specification-Final,,928,640,40,0,0,0,40,0,0,0,,,,2013-02-18 08:00,2013-02-24 16:00,,2012-09-02 08:00,2012-09-06 16:00,2012-09-02 08:00,2012-09-06 16:00,2012-09-02 08:00,2012-09-06 16:00,,2013-02-18 08:00,2013-02-24 16:00,,PT_Normal,,,,,wcxFS6TikEmFINf5T8tVcA,,,,N,0,0,,,2012-06-25 15:13,2012-07-16 15:38,nour,admin
676,149503,5725,23866,6841,1,100,N,N,N,CP_Drtn,TT_Task,DT_FixedDUR2,RV_OK,TK_Complete,4229EPL180,Welding  & NDT specification-Design,,,,0,0,0,0,80,0,0,0,,2011-12-01 00:00,2011-12-21 00:00,2013-02-24 16:00,2013-02-24 16:00,,2012-06-30 00:00,2012-06-30 00:00,,,2011-12-04 08:00,2011-12-15 16:00,,,,,PT_Normal,,,,,/+IvT4meuk6TJOb2qJS6YA,SduIFwWkCkaQdv/5HupADw,,,N,0,0,,,2012-06-25 15:13,2012-07-16 15:38,nour,admin
677,149504,5725,23866,6841,1,100,N,N,N,CP_Drtn,TT_Task,DT_FixedDUR2,RV_OK,TK_Complete,4229EPL370,Welding  & NDT specification-Final,,,,0,0,0,0,40,0,0,0,,2012-01-01 00:00,2012-03-08 00:00,2013-02-24 16:00,2013-02-24 16:00,,2012-06-30 00:00,2012-06-30 00:00,,,2012-07-19 08:00,2012-07-25 16:00,,,,,PT_Normal,,,,,iUUNjfo5SECuEbMfqYNJKA,FggATIGo6UWUldhCHJdfyQ,,,N,0,0,,,2012-06-25 15:13,2012-07-16 15:38,nour,admin
678,149505,5725,23866,6841,1,0,N,N,N,CP_Drtn,TT_Task,DT_FixedDUR2,RV_OK,TK_Active,4229EPL500,VPR for hot bends,,968,968,280,0,0,0,320,0,0,0,,2012-04-18 00:00,,2013-01-07 08:00,2013-02-24 16:00,,2012-07-08 08:00,2012-08-30 16:00,2012-07-08 08:00,2012-08-30 16:00,2012-04-08 08:00,2012-05-31 16:00,,2013-01-07 08:00,2013-02-24 16:00,,PT_Normal,,,,,Uq0DL27yyUylzaE/LM771Q,,,,N,0,0,,,2012-06-25 15:13,2012-07-16 15:38,nour,admin
679,149506,5725,23870,6841,1,100,N,N,N,CP_Drtn,TT_Task,DT_FixedDUR2,RV_OK,TK_Complete,4229EPV70,V.P.R for Small Tanks (cancelled),,,,0,0,0,0,400,0,0,0,,2012-03-03 00:00,2012-03-03 00:00,2013-02-24 16:00,2013-02-24 16:00,,2012-06-30 00:00,2012-06-30 00:00,,,2012-04-29 08:00,2012-07-05 16:00,,,,,PT_Normal,,,,,B9Gc1Kj+CkCBv1qmeDmUig,,,,N,0,0,,,2012-06-25 15:13,2012-07-16 15:38,nour,admin
680,149507,5725,23870,6841,1,0,N,N,N,CP_Drtn,TT_Task,DT_FixedDUR2,RV_OK,TK_Active,4229EPV80,V.P.R for Pressure Vesseles,,928,928,320,0,0,0,320,0,0,0,,2012-04-09 00:00,,2012-12-31 08:00,2013-02-24 16:00,,2012-07-08 08:00,2012-09-06 16:00,2012-07-08 08:00,2012-09-06 16:00,2012-05-06 08:00,2012-06-28 16:00,,2012-12-31 08:00,2013-02-24 16:00,,PT_Normal,,,,,um/DLcGYu0ezf58bT/YGZQ,,,,N,0,0,,,2012-06-25 15:13,2012-07-16 15:38,nour,admin
681,149508,5725,23870,6841,1,100,N,N,N,CP_Drtn,TT_Task,DT_FixedDUR2,RV_OK,TK_Complete,4229EPV30,T.E.R for  Small Tanks,,,,0,0,0,0,160,0,0,0,,2011-11-24 00:00,2011-12-29 00:00,2012-08-05 08:00,2012-08-05 08:00,,2012-06-30 00:00,2012-06-30 00:00,,,2011-12-04 08:00,2011-12-29 16:00,,,,,PT_Normal,,,,,3Dpqd//acUGL1nf2x5JUFg,+adQvSlUzkOZha6HG7fiRA,,,N,0,0,,,2012-06-25 15:13,2012-07-16 15:38,nour,admin
682,149509,5725,23870,6841,1,100,N,N,N,CP_Drtn,TT_Task,DT_FixedDUR2,RV_OK,TK_Complete,4229EPV50,MRP for Small Tanks (cancelled),,,,0,0,0,0,40,0,0,0,,2012-03-03 00:00,2012-03-03 00:00,2012-08-05 08:00,2012-08-05 08:00,,2012-06-30 00:00,2012-06-30 00:00,,,2012-03-18 08:00,2012-03-22 16:00,,,,,PT_Normal,,,,,M5ZlEbDo6UW6ccMDOyYgbw,uCQ7t7XtkE2pu5tmschigw,,,N,0,0,,,2012-06-25 15:13,2012-07-16 15:38,nour,admin
683,149510,5725,23870,6841,1,100,N,N,N,CP_Drtn,TT_Task,DT_FixedDUR2,RV_OK,TK_Complete,4229EPV10,Issue MRQ for Small Tanks,,,,0,0,0,0,40,0,0,0,,2011-09-25 00:00,2011-10-24 00:00,2013-02-24 16:00,2013-02-24 16:00,,2012-06-30 00:00,2012-06-30 00:00,,,2011-10-27 08:00,2011-11-02 16:00,,,,,PT_Normal,,,,,Sn1+A07DHkKfcfpleovDPw,fa+QQs2lrkWif6ZY5ZmI+Q,,,N,0,0,,,2012-06-25 15:13,2012-07-16 15:38,nour,admin
684,149511,5725,23870,6841,1,100,N,N,N,CP_Drtn,TT_Task,DT_FixedDUR2,RV_OK,TK_Complete,4229EPV40,T.E.R for Pressure Vessels,,,,0,0,0,0,160,0,0,0,,2011-12-15 00:00,2012-02-20 00:00,2012-07-29 08:00,2012-07-29 08:00,,2012-06-30 00:00,2012-06-30 00:00,,,2011-12-11 08:00,2012-01-05 16:00,,,,,PT_Normal,,,,,yrRMIfasCkOzVVbquchckg,+adQvSlUzkOZha6HG7fiRA,,,N,0,0,,,2012-06-25 15:13,2012-07-16 15:38,nour,admin
685,149512,5725,23870,6841,1,100,N,N,N,CP_Drtn,TT_Task,DT_FixedDUR2,RV_OK,TK_Complete,4229EPV60,MRP for  Pressure Vessels,,,,0,0,0,0,40,0,0,0,,2012-03-25 08:00,2012-03-25 16:00,2012-07-29 08:00,2012-07-29 08:00,,2012-06-30 00:00,2012-06-30 00:00,,,2012-03-25 08:00,2012-03-29 16:00,,,,,PT_Normal,,,,,rRMN5tAJCkeFLxaOZWANiQ,uCQ7t7XtkE2pu5tmschigw,,,N,0,0,,,2012-06-25 15:13,2012-07-16 15:38,nour,admin
686,149513,5725,23870,6841,1,100,N,N,N,CP_Drtn,TT_Task,DT_FixedDUR2,RV_OK,TK_Complete,4229EPV20,Issue MRQ for Pressure vesseles,,,,0,0,0,0,40,0,0,0,,2011-09-25 00:00,2011-11-17 00:00,2012-07-29 08:00,2012-07-29 08:00,,2012-06-30 00:00,2012-06-30 00:00,,,2011-11-01 08:00,2011-11-14 16:00,,,,,PT_Normal,,,,,aFu7DlL5CEyrdb/hOPwhGg,fa+QQs2lrkWif6ZY5ZmI+Q,,,N,0,0,,,2012-06-25 15:13,2012-07-16 15:38,nour,admin
687,149514,5725,23872,6841,1,100,N,N,N,CP_Drtn,TT_Task,DT_FixedDUR2,RV_OK,TK_Complete,4229ETE20,Final Telecommunication Philosophy,,,,0,0,0,0,64,0,0,0,,2011-11-28 00:00,2011-12-04 00:00,2013-02-24 16:00,2013-02-24 16:00,,2012-06-30 00:00,2012-06-30 00:00,,,2011-12-04 08:00,2011-12-13 16:00,,,,,PT_Normal,,,,,CvOxkWl7cki81IgokxXuoQ,,,,N,0,0,,,2012-06-25 15:13,2012-07-16 15:38,nour,admin
688,149515,5725,23872,6841,1,100,N,N,N,CP_Drtn,TT_Task,DT_FixedDUR2,RV_OK,TK_Complete,4229ETE10,Telecommunication Philosophy IFA,,,,0,0,0,0,80,0,0,0,,2011-10-13 08:00,2011-10-26 16:00,2013-02-24 16:00,2013-02-24 16:00,,2012-06-30 00:00,2012-06-30 00:00,,,2011-10-13 08:00,2011-10-26 16:00,,,,,PT_Normal,,,,,xJNaeGFnXUGeH3fBLVtz4w,,,,N,0,0,,,2012-06-25 15:13,2012-07-16 15:38,nour,admin
689,149516,5725,23873,6841,1,100,N,N,N,CP_Drtn,TT_Task,DT_FixedDUR2,RV_OK,TK_Complete,4229ETE30,Point To Point VHF Radio System specification,,,,0,0,0,0,72,0,0,0,,2011-10-17 00:00,2011-11-17 00:00,2013-02-24 16:00,2013-02-24 16:00,,2012-06-30 00:00,2012-06-30 00:00,,,2011-12-21 08:00,2012-01-02 16:00,,,,,PT_Normal,,,,,VMn3E4hG+0C/0ilNki8mvg,,,,N,0,0,,,2012-06-25 15:13,2012-07-16 15:38,nour,admin
690,149517,5725,23873,6841,1,100,N,N,N,CP_Drtn,TT_Task,DT_FixedDUR2,RV_OK,TK_Complete,4229ETE40,Radar system specification IFA,,,,0,0,0,0,160,0,0,0,,2011-10-17 08:00,2011-11-17 00:00,2012-07-02 08:00,2012-07-02 08:00,,2012-06-30 00:00,2012-06-30 00:00,,,2011-10-17 08:00,2011-11-20 16:00,,,,,PT_Normal,,,,,9xm7KoglMEaMC5CC8NNN9g,,,,N,0,0,,,2012-06-25 15:13,2012-07-16 15:38,nour,admin
691,149518,5725,23873,6841,1,100,N,N,N,CP_Drtn,TT_Task,DT_FixedDUR2,RV_OK,TK_Complete,4229ETE50,Radar system specification IFD,,,,0,0,0,0,80,0,0,0,,2011-11-21 00:00,2011-11-30 00:00,2013-02-24 16:00,2013-02-24 16:00,,2012-06-30 00:00,2012-06-30 00:00,,,2011-12-04 08:00,2011-12-15 16:00,,,,,PT_Normal,,,,,1tTGtfJs8Uq6rPf6H9nN+A,,,,N,0,0,,,2012-06-25 15:13,2012-07-16 15:38,nour,admin
692,149519,5725,23873,6841,1,0,N,N,N,CP_Drtn,TT_Task,DT_FixedDUR2,RV_OK,TK_NotStart,4229ETE60,Radar system specification IFP,,904,904,40,0,0,0,40,0,0,0,,,,2013-02-18 08:00,2013-02-24 16:00,,2012-09-05 08:00,2012-09-11 16:00,2012-09-05 08:00,2012-09-11 16:00,2012-09-05 08:00,2012-09-11 16:00,,2013-02-18 08:00,2013-02-24 16:00,,PT_Normal,,,,,fCLPutlB8kiLXzEtY/0ZQA,,,,N,0,0,,,2012-06-25 15:13,2012-07-16 15:38,nour,admin
693,149520,5725,23873,6841,1,100,N,N,N,CP_Drtn,TT_Task,DT_FixedDUR2,RV_OK,TK_Complete,4229ETE70,MRQ for Radar System IFA,,,,0,0,0,0,64,0,0,0,,2011-11-21 00:00,2011-11-30 00:00,2012-07-02 08:00,2012-07-02 08:00,,2012-06-30 00:00,2012-06-30 00:00,,,2011-12-11 08:00,2011-12-20 16:00,,,,,PT_Normal,,,,,Qxj4exV8nEW8bLxDyq35tQ,,,,N,0,0,,,2012-06-25 15:13,2012-07-16 15:38,nour,admin
694,149521,5725,23873,6841,1,100,N,N,N,CP_Drtn,TT_Task,DT_FixedDUR2,RV_OK,TK_Complete,4229ETE80,MRQ for Radar System IFI,,,,0,0,0,0,32,0,0,0,,2011-11-21 00:00,2011-11-30 00:00,2012-07-02 08:00,2012-07-02 08:00,,2012-06-30 00:00,2012-06-30 00:00,,,2011-12-27 08:00,2012-01-01 16:00,,,,,PT_Normal,,,,,wdd1rHxpWEiomh+z5c04wA,,,,N,0,0,,,2012-06-25 15:13,2012-07-16 15:38,nour,admin
695,149522,5725,23873,6841,1,0,N,N,N,CP_Drtn,TT_Task,DT_FixedDUR2,RV_OK,TK_NotStart,4229ETE90,MRP for Radar System,,160,0,40,0,0,0,40,0,0,0,,,,2012-10-03 08:00,2012-10-09 16:00,,2012-09-05 08:00,2012-09-11 16:00,2012-09-05 08:00,2012-09-11 16:00,2012-09-05 08:00,2012-09-11 16:00,,2012-10-03 08:00,2012-10-09 16:00,,PT_Normal,,,,,NhJcNl36K0+BCeJsXUQwKw,,,,N,0,0,,,2012-06-25 15:13,2012-07-16 15:38,nour,admin
696,149523,5725,23873,6841,1,0,N,N,N,CP_Drtn,TT_Task,DT_FixedDUR2,RV_OK,TK_NotStart,4229ETE160,V.P.R  for Radar System,,288,0,400,0,0,0,400,0,0,0,,,,2012-12-17 08:00,2013-02-24 16:00,,2012-10-28 08:00,2013-01-03 16:00,2012-10-28 08:00,2013-01-03 16:00,2012-10-28 08:00,2013-01-03 16:00,,2012-12-17 08:00,2013-02-24 16:00,,PT_Normal,,,,,vbftx7JA1UC64sBYZIaOAQ,,,,N,0,0,,,2012-06-25 15:13,2012-07-16 15:38,nour,admin
697,149524,5725,23873,6841,1,0,N,N,N,CP_Drtn,TT_Task,DT_FixedDUR2,RV_OK,TK_NotStart,4229ETE170,T.E.R for Radar System,,0,0,184,0,0,0,184,0,0,0,2012-07-03 08:00,,,2012-07-03 08:00,2012-08-02 16:00,,2012-07-03 08:00,2012-08-02 16:00,2012-07-03 08:00,2012-08-02 16:00,2012-07-03 08:00,2012-08-02 16:00,,2012-07-03 08:00,2012-08-02 16:00,CS_MSO,PT_Normal,,,2,1,W65rJxULdUCWL6mVR/MMzg,,,,N,0,0,,,2012-06-25 15:13,2012-07-16 15:38,nour,admin
698,149525,5725,23874,6841,1,100,N,N,N,CP_Drtn,TT_Task,DT_FixedDUR2,RV_OK,TK_Complete,4229ETE100,Telecommunication equipment layout IFA,,,,0,0,0,0,96,0,0,0,,2011-12-05 00:00,2011-12-08 00:00,2013-02-24 16:00,2013-02-24 16:00,,2012-06-30 00:00,2012-06-30 00:00,,,2011-12-04 08:00,2011-12-19 16:00,,,,,PT_Normal,,,,,b1gY+SL9LUiQIgLbkJhbSg,,,,N,0,0,,,2012-06-25 15:13,2012-07-16 15:38,nour,admin
699,149526,5725,23874,6841,1,0,N,N,N,CP_Drtn,TT_Task,DT_FixedDUR2,RV_OK,TK_NotStart,4229ETE110,Telecommunication equipment layout IFD (Expected to be cancelled),,1144,48,24,0,0,0,24,0,0,0,,,,2013-01-30 08:00,2013-02-03 16:00,,2012-07-01 08:00,2012-07-03 16:00,2012-07-01 08:00,2012-07-03 16:00,2012-07-01 08:00,2012-07-03 16:00,,2013-01-30 08:00,2013-02-03 16:00,,PT_Normal,,,,,d5ZGx8nuuUqqxQx5HZUMJQ,,,,N,0,0,,,2012-06-25 15:13,2012-07-16 15:38,nour,admin
700,149527,5725,23874,6841,1,100,N,N,N,CP_Drtn,TT_Task,DT_FixedDUR2,RV_OK,TK_Complete,4229ETE130,Telecommunication cable routing IFA,,,,0,0,0,0,80,0,0,0,,2011-12-05 00:00,2012-01-19 16:00,2013-02-24 16:00,2013-02-24 16:00,,2012-06-30 00:00,2012-06-30 00:00,,,2012-01-01 08:00,2012-01-12 16:00,,,,,PT_Normal,,,,,VE871sm9IEKp4DLeM/WWSw,,,,N,0,0,,,2012-06-25 15:13,2012-07-16 15:38,nour,admin
701,149528,5725,23874,6841,1,100,N,N,N,CP_Drtn,TT_Task,DT_FixedDUR2,RV_OK,TK_Complete,4229ETE140,Telecommunication cable routing IFD,,,,0,0,0,0,80,0,0,0,,2012-02-01 00:00,2012-02-19 00:00,2013-02-24 16:00,2013-02-24 16:00,,2012-06-30 00:00,2012-06-30 00:00,,,2012-03-04 08:00,2012-03-15 16:00,,,,,PT_Normal,,,,,hbQtyLkF8kehHUfjfUQg6g,,,,N,0,0,,,2012-06-25 15:13,2012-07-16 15:38,nour,admin
702,149529,5725,23874,6841,1,0,N,N,N,CP_Drtn,TT_Task,DT_FixedDUR2,RV_OK,TK_NotStart,4229ETE150,Telecommunication cable routing IFC,,1056,768,80,0,0,0,80,0,0,0,,,,2013-02-11 08:00,2013-02-24 16:00,,2012-07-26 08:00,2012-08-08 16:00,2012-07-26 08:00,2012-08-08 16:00,2012-07-26 08:00,2012-08-08 16:00,,2013-02-11 08:00,2013-02-24 16:00,,PT_Normal,,,,,1MAg4ubtA0i9m09dDjm0gw,,,,N,0,0,,,2012-06-25 15:13,2012-07-16 15:38,nour,admin
703,149530,5725,23857,6841,1,0,N,N,N,CP_Drtn,TT_Task,DT_FixedDUR2,RV_OK,TK_NotStart,4229EME210,Material Selection Guide IFF,,1208,920,40,0,0,0,40,0,0,0,,,,2013-02-18 08:00,2013-02-24 16:00,,2012-07-08 08:00,2012-07-12 16:00,2012-07-08 08:00,2012-07-12 16:00,2012-07-08 08:00,2012-07-12 16:00,,2013-02-18 08:00,2013-02-24 16:00,,PT_Normal,,,,,cJh4PlvXCkeQFg37uDnh+A,,,,N,0,0,,,2012-06-25 15:13,2012-07-16 15:38,nour,admin
704,149531,5725,23790,6841,1,0,N,N,N,CP_Drtn,TT_Task,DT_FixedDUR2,RV_OK,TK_NotStart,PMS01,Transport deck/topsides to site,,-704,0,112,0,0,0,112,0,0,0,,,,2013-03-05 08:00,2013-03-24 16:00,,2013-07-07 08:00,2013-07-24 16:00,2013-07-07 08:00,2013-07-24 16:00,2013-07-07 08:00,2013-07-24 16:00,,2013-03-05 08:00,2013-03-24 16:00,,PT_Normal,,,,,MsuNQpPYeEaShG5gN5p8JA,,,,N,0,0,,,2012-07-16 15:09,2012-07-16 15:09,admin,admin
705,149532,5725,23790,6841,1,0,N,N,N,CP_Drtn,TT_Task,DT_FixedDUR2,RV_OK,TK_NotStart,PMS04,Install jacket,,-88,0,16,0,0,0,16,0,0,0,,,,2013-03-11 08:00,2013-03-12 16:00,,2013-03-26 08:00,2013-03-27 16:00,2013-03-26 08:00,2013-03-27 16:00,2013-03-26 08:00,2013-03-27 16:00,,2013-03-11 08:00,2013-03-12 16:00,,PT_Normal,,,,,AaRb0NQSj0ifoMTA50Ikbg,,,,N,0,0,,,2012-07-16 15:09,2012-07-16 15:09,admin,admin
706,149533,5725,23790,6841,1,0,N,N,N,CP_Drtn,TT_Task,DT_FixedDUR2,RV_OK,TK_NotStart,PMS06,Install deck/topside module,,-704,0,16,0,0,0,16,0,0,0,,,,2013-03-25 08:00,2013-03-26 16:00,,2013-07-25 08:00,2013-07-28 16:00,2013-07-25 08:00,2013-07-28 16:00,2013-07-25 08:00,2013-07-28 16:00,,2013-03-25 08:00,2013-03-26 16:00,,PT_Normal,,,,,xN8lQIHFQkKsM9tXy1mduQ,,,,N,0,0,,,2012-07-16 15:09,2012-07-16 15:09,admin,admin
707,149534,5725,23790,6841,1,0,N,N,N,CP_Drtn,TT_Task,DT_FixedDUR2,RV_OK,TK_NotStart,PMS02,Transport Jacket and piles,,392,480,112,0,0,0,112,0,0,0,,,,2013-02-19 08:00,2013-03-10 16:00,,2012-12-12 08:00,2012-12-31 16:00,2012-12-12 08:00,2012-12-31 16:00,2012-12-12 08:00,2012-12-31 16:00,,2013-02-19 08:00,2013-03-10 16:00,,PT_Normal,,,,,jjMnTKcBzUa1E6Z1d6IwEQ,,,,N,0,0,,,2012-07-16 15:09,2012-07-16 15:09,admin,admin
708,149535,5725,23790,6841,1,0,N,N,N,CP_Drtn,TT_Task,DT_FixedDUR2,RV_OK,TK_NotStart,PMS10,Tie-in risers and sealines,,-704,0,32,0,0,0,32,0,0,0,,,,2013-03-27 08:00,2013-04-01 16:00,,2013-07-29 08:00,2013-08-01 16:00,2013-07-29 08:00,2013-08-01 16:00,2013-07-29 08:00,2013-08-01 16:00,,2013-03-27 08:00,2013-04-01 16:00,,PT_Normal,,,,,MP1aJ1/h2kSO/PKGw3iQ/Q,,,,N,0,0,,,2012-07-16 15:09,2012-07-16 15:09,admin,admin
709,149536,5725,23790,6841,1,0,N,N,N,CP_Drtn,TT_Task,DT_FixedDUR2,RV_OK,TK_NotStart,PMS03,Transport sealine spools to site,,152,224,112,0,0,0,112,0,0,0,,,,2013-02-21 08:00,2013-03-12 16:00,,2013-01-27 08:00,2013-02-13 16:00,2013-01-27 08:00,2013-02-13 16:00,2013-01-27 08:00,2013-02-13 16:00,,2013-02-21 08:00,2013-03-12 16:00,,PT_Normal,,,,,e1uJ6Qq8DEGoJfHwiHOjUw,,,,N,0,0,,,2012-07-16 15:09,2012-07-16 15:09,admin,admin
710,149537,5725,23790,6841,1,0,N,N,N,CP_Drtn,TT_Task,DT_FixedDUR2,RV_OK,TK_NotStart,PMS09,Install sealines,,-72,632,80,0,0,0,80,0,0,0,,,,2013-03-13 08:00,2013-03-26 16:00,,2013-03-26 08:00,2013-04-08 16:00,2013-03-26 08:00,2013-04-08 16:00,2013-03-26 08:00,2013-04-08 16:00,,2013-03-13 08:00,2013-03-26 16:00,,PT_Normal,,,,,3napDKME7UePdZQKOcfCBg,,,,N,0,0,,,2012-07-16 15:09,2012-07-16 15:09,admin,admin
711,149538,5725,23790,6841,1,0,N,N,N,CP_Drtn,TT_Task,DT_FixedDUR2,RV_OK,TK_NotStart,PMS20,Post-installation survey,,-704,0,56,0,0,0,56,0,0,0,,,,2013-04-02 08:00,2013-04-10 16:00,,2013-08-04 08:00,2013-08-12 16:00,2013-08-04 08:00,2013-08-12 16:00,2013-08-04 08:00,2013-08-12 16:00,,2013-04-02 08:00,2013-04-10 16:00,,PT_Normal,,,,,5dYsACf2/UilPhOl2+3jjA,,,,N,0,0,,,2012-07-16 15:09,2012-07-16 15:09,admin,admin
712,149539,5725,23790,6841,1,0,N,N,N,CP_Drtn,TT_Task,DT_FixedDUR2,RV_OK,TK_NotStart,PMS90,Release platform and transfer custody to Drilling,,-704,0,8,0,0,0,8,0,0,0,,,,2013-04-11 08:00,2013-04-11 16:00,,2013-08-13 08:00,2013-08-13 16:00,2013-08-13 08:00,2013-08-13 16:00,2013-08-13 08:00,2013-08-13 16:00,,2013-04-11 08:00,2013-04-11 16:00,,PT_Normal,,,,,S9baZQjVwkGe+3nlpIAg5Q,,,,N,0,0,,,2012-07-16 15:09,2012-07-16 15:09,admin,admin
713,149540,5725,23790,6841,1,0,N,N,N,CP_Drtn,TT_Task,DT_FixedDUR2,RV_OK,TK_NotStart,DRIL01,Drill well no. 1,,-704,0,440,0,0,0,440,0,0,0,,,,2013-04-21 08:00,2013-07-04 16:00,,2013-08-21 08:00,2013-11-05 16:00,2013-08-21 08:00,2013-11-05 16:00,2013-08-21 08:00,2013-11-05 16:00,,2013-04-21 08:00,2013-07-04 16:00,,PT_Normal,,,,,QN4tpnLzzkSM+y+y3VphOw,,,,N,0,0,,,2012-07-16 15:09,2012-07-16 15:09,admin,admin
714,149541,5725,23790,6841,1,0,N,N,N,CP_Drtn,TT_Task,DT_FixedDUR2,RV_OK,TK_NotStart,DRIL10,Complete Well no. 1,,-704,0,360,0,0,0,360,0,0,0,,,,2013-07-07 08:00,2013-09-05 16:00,,2013-11-06 08:00,2014-01-07 16:00,2013-11-06 08:00,2014-01-07 16:00,2013-11-06 08:00,2014-01-07 16:00,,2013-07-07 08:00,2013-09-05 16:00,,PT_Normal,,,,,NjTSgsIGPkaBanAb3XnXGw,,,,N,0,0,,,2012-07-16 15:09,2012-07-16 15:09,admin,admin
715,149542,5725,23790,6841,1,0,N,N,N,CP_Drtn,TT_Task,DT_FixedDUR2,RV_OK,TK_NotStart,PMS91,Mechanical complete and hookup well no. 1,,-704,0,80,0,0,0,80,0,0,0,,,,2013-09-08 08:00,2013-09-19 16:00,,2014-01-08 08:00,2014-01-21 16:00,2014-01-08 08:00,2014-01-21 16:00,2014-01-08 08:00,2014-01-21 16:00,,2013-09-08 08:00,2013-09-19 16:00,,PT_Normal,,,,,lSV5y+lwxUCHRFwbLR6gFA,,,,N,0,0,,,2012-07-16 15:09,2012-07-16 15:09,admin,admin
716,149543,5725,23790,6841,1,0,N,N,N,CP_Drtn,TT_Task,DT_FixedDUR2,RV_OK,TK_NotStart,PMS96,Final precommissioning and commissioning,,-704,0,56,0,0,0,56,0,0,0,2013-09-30 16:00,,,2013-09-22 08:00,2013-09-30 16:00,,2014-01-22 08:00,2014-01-30 16:00,2014-01-22 08:00,2014-01-30 16:00,2014-01-22 08:00,2014-01-30 16:00,,2013-09-22 08:00,2013-09-30 16:00,CS_MEOB,PT_Normal,,,,,lrwZ8VX5a02UuHiSdJI06Q,,,,N,0,0,,,2012-07-16 15:09,2012-07-16 15:09,admin,admin
717,149544,5725,23790,6841,0,0,N,N,N,CP_Drtn,TT_FinMile,DT_FixedDrtn,RV_OK,TK_NotStart,GUP01,Startup and first oil,,1568,1568,0,0,0,0,0,0,0,0,,,,2014-11-02 16:00,2014-11-02 16:00,,2014-01-30 16:00,2014-01-30 16:00,2014-01-30 16:00,2014-01-30 16:00,2014-01-30 16:00,2014-01-30 16:00,,2014-11-02 16:00,2014-11-02 16:00,,PT_Normal,,,,,0TvxhMfGu0KHvImymzggiA,,,,N,0,0,,,2012-07-16 15:09,2012-07-16 15:09,admin,admin
718,149545,5725,23790,6841,1,0,N,N,N,CP_Drtn,TT_Task,DT_FixedDUR2,RV_OK,TK_NotStart,PMS05,Drive piles,,-88,616,64,0,0,0,64,0,0,0,,,,2013-03-13 08:00,2013-03-24 16:00,,2013-03-28 08:00,2013-04-08 16:00,2013-03-28 08:00,2013-04-08 16:00,2013-03-28 08:00,2013-04-08 16:00,,2013-03-13 08:00,2013-03-24 16:00,,PT_Normal,,,,,e/aQgWAijUuhUBJoDSSTpg,,,,N,0,0,,,2012-07-16 15:09,2012-07-16 15:09,admin,admin
719,149546,5725,23790,6841,1,0,N,N,N,CP_Drtn,TT_Task,DT_FixedDUR2,RV_OK,TK_NotStart,PMS00,Preinstallation survey,,-88,0,40,0,0,0,40,0,0,0,,,,2013-03-04 08:00,2013-03-10 16:00,,2013-03-19 08:00,2013-03-25 16:00,2013-03-19 08:00,2013-03-25 16:00,2013-03-19 08:00,2013-03-25 16:00,,2013-03-04 08:00,2013-03-10 16:00,,PT_Normal,,,,,rD2rYApOXkecPJy9irvwSQ,,,,N,0,0,2013-01-23 08:00,,2012-07-16 15:09,2012-07-16 15:09,admin,admin
720,149547,5725,23790,6841,1,0,N,N,N,CP_Drtn,TT_Task,DT_FixedDUR2,RV_OK,TK_NotStart,PMS100,Compile Sealines and transportation bid package,,3944,0,112,0,0,0,112,0,0,0,,,,2014-06-10 08:00,2014-06-29 16:00,,2012-07-05 08:00,2012-07-24 16:00,2012-07-05 08:00,2012-07-24 16:00,2012-07-05 08:00,2012-07-24 16:00,,2014-06-10 08:00,2014-06-29 16:00,,PT_Normal,,,,,ZBH/Dq+oX0K1stmM2zS79A,,,,N,0,0,,,2012-07-16 15:09,2012-07-16 15:09,admin,admin
721,149548,5725,23790,6841,1,0,N,N,N,CP_Drtn,TT_Task,DT_FixedDUR2,RV_OK,TK_NotStart,PMS105,Negotiation/award sealines and transporation package,,3944,3944,720,0,0,0,720,0,0,0,,,,2014-06-30 08:00,2014-11-02 16:00,,2012-07-25 08:00,2012-12-11 16:00,2012-07-25 08:00,2012-12-11 16:00,2012-07-25 08:00,2012-12-11 16:00,,2014-06-30 08:00,2014-11-02 16:00,,PT_Normal,,,,,IWo6w4pns06YZ7nOZNWVhw,,,,N,0,0,,,2012-07-16 15:09,2012-07-16 15:09,admin,admin
722,149549,5725,23790,6841,1,0,N,N,N,CP_Drtn,TT_Task,DT_FixedDUR2,RV_OK,TK_NotStart,OFF02,Compile Platfrom installation ITB,,-128,0,40,0,0,0,40,0,0,0,2012-06-13 08:00,,,2012-06-13 08:00,2012-06-19 16:00,,2012-07-05 08:00,2012-07-11 16:00,2012-07-05 08:00,2012-07-11 16:00,2012-07-05 08:00,2012-07-11 16:00,,2012-06-13 08:00,2012-06-19 16:00,CS_MSO,PT_Normal,,,,,W/QwRgdMyUCCUXr18dzZGA,,,,N,0,0,,,2012-07-16 15:09,2012-07-16 15:09,admin,admin
723,149550,5725,23790,6841,1,0,N,N,N,CP_Drtn,TT_Task,DT_FixedDUR2,RV_OK,TK_NotStart,OFF04,Bid platfrom installation package,,-88,0,480,0,0,0,480,0,0,0,,,,2012-06-27 08:00,2012-09-25 16:00,,2012-07-12 08:00,2012-10-10 16:00,2012-07-12 08:00,2012-10-10 16:00,2012-07-12 08:00,2012-10-10 16:00,,2012-06-27 08:00,2012-09-25 16:00,,PT_Normal,,,,,Tt53AmxFT0ay0NfGS+0NsQ,,,,N,0,0,,,2012-07-16 15:09,2012-07-16 15:09,admin,admin
724,149551,5725,23790,6841,1,0,N,N,N,CP_Drtn,TT_Task,DT_FixedDUR2,RV_OK,TK_NotStart,OFF06,TE platfrom installation package,,-88,0,168,0,0,0,168,0,0,0,,,,2012-09-26 08:00,2012-10-31 16:00,,2012-10-11 08:00,2012-11-15 16:00,2012-10-11 08:00,2012-11-15 16:00,2012-10-11 08:00,2012-11-15 16:00,,2012-09-26 08:00,2012-10-31 16:00,,PT_Normal,,,,,M30GSnt/F0eKlRA8PSmJbg,,,,N,0,0,,,2012-07-16 15:09,2012-07-16 15:09,admin,admin
725,149552,5725,23790,6841,1,0,N,N,N,CP_Drtn,TT_Task,DT_FixedDUR2,RV_OK,TK_NotStart,OFF10,CE and negotiation platfrom installation package,,-88,0,400,0,0,0,400,0,0,0,,,,2012-11-01 08:00,2013-01-09 16:00,,2012-11-18 08:00,2013-01-24 16:00,2012-11-18 08:00,2013-01-24 16:00,2012-11-18 08:00,2013-01-24 16:00,,2012-11-01 08:00,2013-01-09 16:00,,PT_Normal,,,,,jSFxQyiOt0Kec4hK2fVP1Q,,,,N,0,0,,,2012-07-16 15:09,2012-07-16 15:09,admin,admin
726,149553,5725,23790,6841,1,0,N,N,N,CP_Drtn,TT_Task,DT_FixedDUR2,RV_OK,TK_NotStart,OFF20,Award offshore installation package,,-88,0,56,0,0,0,56,0,0,0,,,,2013-01-10 08:00,2013-01-20 16:00,,2013-01-27 08:00,2013-02-04 16:00,2013-01-27 08:00,2013-02-04 16:00,2013-01-27 08:00,2013-02-04 16:00,,2013-01-10 08:00,2013-01-20 16:00,,PT_Normal,,,,,mgb84qt2zkCgwvGArMVL4Q,,,,N,0,0,,,2012-07-16 15:09,2012-07-16 15:09,admin,admin
727,149554,5725,23790,6841,1,0,N,N,N,CP_Drtn,TT_Task,DT_FixedDUR2,RV_OK,TK_NotStart,OFF30,Mobilize platform installation contractor,,-88,0,240,0,0,0,240,0,0,0,,,,2013-01-21 08:00,2013-03-03 16:00,,2013-02-05 08:00,2013-03-18 16:00,2013-02-05 08:00,2013-03-18 16:00,2013-02-05 08:00,2013-03-18 16:00,,2013-01-21 08:00,2013-03-03 16:00,,PT_Normal,,,,,Uj/BxDnjBUem0JIWQXjA2A,,,,N,0,0,,,2012-07-16 15:09,2012-07-16 15:09,admin,admin
728,149555,5725,23790,6841,1,0,N,N,N,CP_Drtn,TT_Task,DT_FixedDUR2,RV_OK,TK_NotStart,PM01,Compile transportation and sealines package,,-88,0,120,0,0,0,120,0,0,0,2012-06-20 08:00,,,2012-06-20 08:00,2012-07-10 16:00,,2012-07-05 08:00,2012-07-25 16:00,2012-07-05 08:00,2012-07-25 16:00,2012-07-05 08:00,2012-07-25 16:00,,2012-06-20 08:00,2012-07-10 16:00,CS_MSO,PT_Normal,,,,,8iiWH+NPokaQnM0CjsqEVg,,,,N,0,0,,,2012-07-16 15:09,2012-07-16 15:09,admin,admin
729,149556,5725,23790,6841,1,0,N,N,N,CP_Drtn,TT_Task,DT_FixedDUR2,RV_OK,TK_NotStart,PM04,Negotiate Sealines and transportation package,,392,0,520,0,0,0,520,0,0,0,,,,2012-10-10 08:00,2013-01-15 16:00,,2012-07-26 08:00,2012-11-07 16:00,2012-07-26 08:00,2012-11-07 16:00,2012-07-26 08:00,2012-11-07 16:00,,2012-10-10 08:00,2013-01-15 16:00,,PT_Normal,,,,,THt30AyA5U+Hxl4vBtIC1w,,,,N,0,0,,,2012-07-16 15:09,2012-07-16 15:09,admin,admin
730,149557,5725,23790,6841,1,0,N,N,N,CP_Drtn,TT_Task,DT_FixedDUR2,RV_OK,TK_NotStart,PM06,Award transportation and sealines package,,392,0,80,0,0,0,80,0,0,0,,,,2013-01-16 08:00,2013-01-29 16:00,,2012-11-08 08:00,2012-11-21 16:00,2012-11-08 08:00,2012-11-21 16:00,2012-11-08 08:00,2012-11-21 16:00,,2013-01-16 08:00,2013-01-29 16:00,,PT_Normal,,,,,SkZe/7cutkSdM1hlu+kgzw,,,,N,0,0,,,2012-07-16 15:09,2012-07-16 15:09,admin,admin
731,149558,5725,23790,6841,1,0,N,N,N,CP_Drtn,TT_Task,DT_FixedDUR2,RV_OK,TK_NotStart,PM16,Mobilizae transportation and sealines contractor,,392,0,112,0,0,0,112,0,0,0,,,,2013-01-30 08:00,2013-02-18 16:00,,2012-11-22 08:00,2012-12-11 16:00,2012-11-22 08:00,2012-12-11 16:00,2012-11-22 08:00,2012-12-11 16:00,,2013-01-30 08:00,2013-02-18 16:00,,PT_Normal,,,,,Fmg2lKgSfkmhLLKwkrA50A,,,,N,0,0,,,2012-07-16 15:09,2012-07-16 15:09,admin,admin
732,149559,5725,23790,6841,1,0,N,N,N,CP_Drtn,TT_Task,DT_FixedDUR2,RV_OK,TK_NotStart,DRIL00,Mobilize Drilling Rig,,-704,0,40,0,0,0,40,0,0,0,,,,2013-04-14 08:00,2013-04-18 16:00,,2013-08-14 08:00,2013-08-20 16:00,2013-08-14 08:00,2013-08-20 16:00,2013-08-14 08:00,2013-08-20 16:00,,2013-04-14 08:00,2013-04-18 16:00,,PT_Normal,,,,,iSuofbF/F0uuryCwPbminw,,,,N,0,0,,,2012-07-16 15:09,2012-07-16 15:09,admin,admin
733,149560,5725,23876,5686,1,0,N,N,N,CP_Drtn,TT_Task,DT_FixedDUR2,RV_OK,TK_NotStart,LOPS02,1st Shipment Material Barge Preparation,,5424,0,96,0,0,0,96,0,0,0,,,,2014-10-14 08:00,2014-10-28 16:00,,2012-07-05 08:00,2012-07-18 16:00,2012-07-05 08:00,2012-07-18 16:00,2012-07-05 08:00,2012-07-18 16:00,,2014-10-14 08:00,2014-10-28 16:00,,PT_Normal,,,,,szXL64J+/E2MIiTsq60UJQ,ffJmeitJThGKpY3WVSZDNQ,,,N,0,0,,,2012-07-16 15:09,2012-07-16 15:09,admin,admin
734,149561,5725,23876,5686,1,0,N,N,N,CP_Drtn,TT_Task,DT_FixedDUR2,RV_OK,TK_NotStart,LOPS03,"L/O & Sea Fastening (P/L Spools 18"""" & 8"""")",,5424,5424,32,0,0,0,32,0,0,0,,,,2014-10-29 08:00,2014-11-02 16:00,,2012-07-19 08:00,2012-07-24 16:00,2012-07-19 08:00,2012-07-24 16:00,2012-07-19 08:00,2012-07-24 16:00,,2014-10-29 08:00,2014-11-02 16:00,,PT_Normal,,,,,G9L0bXQ3tU6kR/o5dyK0bg,0IwOiWOuTGWgp9eZJV76QQ,,,N,0,0,,,2012-07-16 15:09,2012-07-16 15:09,admin,admin
735,149562,5725,23877,5686,1,0,N,N,N,CP_Drtn,TT_Task,DT_FixedDUR2,RV_OK,TK_NotStart,LOJK02,02nd Shipment Material Barge Preparation,,5400,0,96,0,0,0,96,0,0,0,,,,2014-10-11 08:00,2014-10-25 16:00,,2012-07-05 08:00,2012-07-18 16:00,2012-07-05 08:00,2012-07-18 16:00,2012-07-05 08:00,2012-07-18 16:00,,2014-10-11 08:00,2014-10-25 16:00,,PT_Normal,,,,,y++oSYnDjUqkEfoGBbI6MA,XbtAi6jCTDyBXVHSpw5OSQ,,,N,0,0,,,2012-07-16 15:09,2012-07-16 15:09,admin,admin
736,149563,5725,23877,5686,1,0,N,N,N,CP_Drtn,TT_Task,DT_FixedDUR2,RV_OK,TK_NotStart,LOJK03,L/O & Sea fastening ( Jacket & Piles ),,5400,5400,56,0,0,0,56,0,0,0,,,,2014-10-26 08:00,2014-11-02 16:00,,2012-07-19 08:00,2012-07-28 16:00,2012-07-19 08:00,2012-07-28 16:00,2012-07-19 08:00,2012-07-28 16:00,,2014-10-26 08:00,2014-11-02 16:00,,PT_Normal,,,,,vOOM2ccwJkCOk7EiixG2Zg,0h5qrf7kSZW3DGU5wFjrDw,,,N,0,0,,,2012-07-16 15:09,2012-07-16 15:09,admin,admin
737,149564,5725,23878,5686,0,0,N,N,N,CP_Drtn,TT_Mile,DT_FixedDrtn,RV_OK,TK_NotStart,LODK01,Arrival of 03rd Shipment Material Barge ( Deck C/W TSF ),,-128,0,0,0,0,0,0,0,0,0,2013-03-01 08:01,,,2013-02-11 08:00,2013-02-11 08:00,,2013-03-02 08:00,2013-03-02 08:00,2013-03-02 08:00,2013-03-02 08:00,2013-03-02 08:00,2013-03-02 08:00,,2013-02-11 08:00,2013-02-11 08:00,CS_MSO,PT_Normal,,,,,4EHoQb6SMUWaR4VlRREdow,ExIEDAbgRLSmFck0X+OxYg,,,N,0,0,,,2012-07-16 15:09,2012-07-16 15:09,admin,admin
738,149565,5725,23878,5686,1,0,N,N,N,CP_Drtn,TT_Task,DT_FixedDUR2,RV_OK,TK_NotStart,LODK02,3rd Shipment Material Barge Preparation,,-128,696,96,0,0,0,96,0,0,0,,,,2013-02-11 08:00,2013-02-24 16:00,,2013-03-02 08:00,2013-03-14 16:00,2013-03-02 08:00,2013-03-14 16:00,2013-03-02 08:00,2013-03-14 16:00,,2013-02-11 08:00,2013-02-24 16:00,,PT_Normal,,,,,+JAxvED+F0ifFIk3RhuvaQ,lPDdUYuUTIydlmlcan93BQ,,,N,0,0,,,2012-07-16 15:09,2012-07-16 15:09,admin,admin
739,149566,5725,23878,5686,1,0,N,N,N,CP_Drtn,TT_Task,DT_FixedDUR2,RV_OK,TK_NotStart,LODK03,L/O & Sea fastening ( Deck),,-824,0,56,0,0,0,56,0,0,0,,,,2013-02-25 08:00,2013-03-04 16:00,,2013-06-29 08:00,2013-07-06 16:00,2013-06-29 08:00,2013-07-06 16:00,2013-06-29 08:00,2013-07-06 16:00,,2013-02-25 08:00,2013-03-04 16:00,,PT_Normal,,,,,ByUxqfjKD0mVQdLERm1fVw,a29m8wZtSbmmAh/FPoIQAw,,,N,0,0,,,2012-07-16 15:09,2012-07-16 15:09,admin,admin
740,149567,5725,23851,5686,0,0,N,N,N,CP_Drtn,TT_FinMile,DT_FixedDrtn,RV_OK,TK_NotStart,GM01,Reciving Fax of Award,,-1112,0,0,0,0,0,0,0,0,0,2012-01-20 16:00,,,2012-01-19 16:00,2012-01-19 16:00,,2012-07-05 08:00,2012-07-05 08:00,2012-07-05 08:00,2012-07-05 08:00,2012-07-05 08:00,2012-07-05 08:00,,2012-01-19 16:00,2012-01-19 16:00,CS_MEO,PT_Normal,,,,,O6PkaVmMiUignTsby7FHaQ,,,,N,0,0,,,2012-07-16 15:09,2012-07-16 15:19,admin,admin
741,149568,5725,23851,5686,0,0,N,N,N,CP_Drtn,TT_Mile,DT_FixedDrtn,RV_OK,TK_NotStart,GM02,Project Fab. Start,,4744,4744,0,0,0,0,0,0,0,0,,,,2014-11-02 16:00,2014-11-02 16:00,,2012-11-10 08:00,2012-11-10 08:00,2012-11-10 08:00,2012-11-10 08:00,2012-11-10 08:00,2012-11-10 08:00,,2014-11-02 16:00,2014-11-02 16:00,,PT_Normal,,,,,XWCf+aEnjEO0OQQuNQ6wtw,,,,N,0,0,,,2012-07-16 15:09,2012-07-16 15:19,admin,admin
742,149569,5725,23851,5686,0,0,N,N,N,CP_Drtn,TT_Mile,DT_FixedDrtn,RV_OK,TK_NotStart,GM04,Ready for Load out ( 02nd Shipment/ Jacket & Piles ),,1560,1664,0,0,0,0,0,0,0,0,,,,2013-03-04 08:00,2013-03-04 08:00,,2012-07-05 08:00,2012-07-05 08:00,2012-07-05 08:00,2012-07-05 08:00,2012-07-05 08:00,2012-07-05 08:00,,2013-03-04 08:00,2013-03-04 08:00,,PT_Normal,,,,,WATG9gH5p0SIZEI+wO0Rlw,,,,N,0,0,,,2012-07-16 15:09,2012-07-16 15:09,admin,admin
743,149570,5725,23851,5686,0,0,N,N,N,CP_Drtn,TT_Mile,DT_FixedDrtn,RV_OK,TK_NotStart,GM03,"Ready for Load out (01st Shipment / Pipeline Spools 18"""" & 8"""")",,5552,5552,0,0,0,0,0,0,0,0,,,,2014-11-02 16:00,2014-11-02 16:00,,2012-07-05 08:00,2012-07-05 08:00,2012-07-05 08:00,2012-07-05 08:00,2012-07-05 08:00,2012-07-05 08:00,,2014-11-02 16:00,2014-11-02 16:00,,PT_Normal,,,,,nt3AaBnBu0W9fRSZ55ZTGw,,,,N,0,0,,,2012-07-16 15:09,2012-07-16 15:19,admin,admin
744,149571,5725,23889,794,0,0,N,N,N,CP_Drtn,TT_FinMile,DT_FixedDrtn,RV_OK,TK_NotStart,ENS04,Receiving Piles IFC DWG`s,,-1359.983333,328,0,0,0,0,0,0,0,0,2012-01-17 08:01,,,2012-01-17 08:01,2012-01-17 08:01,,2012-07-05 08:00,2012-07-05 08:00,2012-07-05 08:00,2012-07-05 08:00,2012-07-05 08:00,2012-07-05 08:00,,2012-01-17 08:01,2012-01-17 08:01,CS_MEO,PT_Normal,,,,,zAxS2WOrBUK92EX4AAXn3w,,,,N,0,0,,,2012-07-16 15:09,2012-07-16 15:37,admin,admin
745,149572,5725,23889,794,1,0,N,N,N,CP_Drtn,TT_Task,DT_FixedDUR2,RV_OK,TK_NotStart,ENS05,Receiving Deck Str. Primary & Secondary IFC DWG`s,,-1191.983333,0,328,0,0,0,328,0,0,0,2012-02-07 08:01,,,2012-02-07 08:01,2012-03-19 08:01,,2012-07-05 08:00,2012-08-14 17:00,2012-07-05 08:00,2012-08-14 17:00,2012-07-05 08:00,2012-08-14 17:00,,2012-02-07 08:01,2012-03-19 08:01,CS_MSO,PT_Normal,,,,,JvY+1nzaLE2InjJmiF/EIA,,,,N,0,0,,,2012-07-16 15:09,2012-07-16 15:37,admin,admin
746,149573,5725,23889,794,0,0,N,N,N,CP_Drtn,TT_FinMile,DT_FixedDrtn,RV_OK,TK_NotStart,ENS01,"Receiving Final Jacket , Boat Land & Piles MTO",,-975,0,0,0,0,0,0,0,0,0,,,,2012-03-12 17:00,2012-03-12 17:00,,2012-07-12 16:00,2012-07-12 16:00,2012-07-12 16:00,2012-07-12 16:00,2012-07-12 16:00,2012-07-12 16:00,,2012-03-12 17:00,2012-03-12 17:00,,PT_Normal,,,,,eYm+MX8xXEaU0Zrje5LctQ,,,,N,0,0,,,2012-07-16 15:09,2012-07-16 15:19,admin,admin
747,149574,5725,23889,794,0,0,N,N,N,CP_Drtn,TT_FinMile,DT_FixedDrtn,RV_OK,TK_NotStart,ENS02,Receiving Final Deck Str. MTO,,-912,63,0,0,0,0,0,0,0,0,,,,2012-03-12 17:00,2012-03-12 17:00,,2012-07-05 08:00,2012-07-05 08:00,2012-07-05 08:00,2012-07-05 08:00,2012-07-05 08:00,2012-07-05 08:00,,2012-03-12 17:00,2012-03-12 17:00,,PT_Normal,,,,,nfGy6JBz9ESLKpBhh7IgCA,,,,N,0,0,,,2012-07-16 15:09,2012-07-16 15:19,admin,admin
748,149575,5725,23889,794,1,0,N,N,N,CP_Drtn,TT_Task,DT_FixedDrtn,RV_OK,TK_NotStart,ENS08,Receiving IFC Equipment fixation DWG`s,,-735.983333,6703,104,0,0,0,104,0,0,0,2012-04-04 08:01,,,2012-04-04 08:01,2012-04-17 08:01,,2012-07-05 08:00,2012-07-17 17:00,2012-07-05 08:00,2012-07-17 17:00,2012-07-05 08:00,2012-07-17 17:00,,2012-04-04 08:01,2012-04-17 08:01,CS_MSO,PT_Normal,,,,,gCNVsox590iwQjNypHl8/Q,,,,N,0,0,,,2012-07-16 15:09,2012-07-16 15:37,admin,admin
749,149576,5725,23889,794,1,0,N,N,N,CP_Drtn,TT_Task,DT_FixedDUR2,RV_OK,TK_NotStart,ENS06,Receiving Piping Supports IFC DWG's,,-1023.983333,6647,160,0,0,0,160,0,0,0,2012-02-28 08:01,,,2012-02-28 08:01,2012-03-19 08:01,,2012-07-05 08:00,2012-07-24 17:00,2012-07-05 08:00,2012-07-24 17:00,2012-07-05 08:00,2012-07-24 17:00,,2012-02-28 08:01,2012-03-19 08:01,CS_MSO,PT_Normal,,,,,cEW/ovy5ykWyxmbDzI2yLg,,,,N,0,0,,,2012-07-16 15:09,2012-07-16 15:37,admin,admin
750,149577,5725,23889,794,1,0,N,N,N,CP_Drtn,TT_Task,DT_FixedDUR2,RV_OK,TK_NotStart,ENS07,Receiving Cable tarys Support IFC DWG's,,-911.983333,6703,104,0,0,0,104,0,0,0,2012-03-13 08:01,,,2012-03-13 08:01,2012-03-26 08:01,,2012-07-05 08:00,2012-07-17 17:00,2012-07-05 08:00,2012-07-17 17:00,2012-07-05 08:00,2012-07-17 17:00,,2012-03-13 08:01,2012-03-26 08:01,CS_MSO,PT_Normal,,,,,6NgWxd2nTUaVx8aV9Z13Tw,,,,N,0,0,,,2012-07-16 15:09,2012-07-16 15:37,admin,admin
751,149578,5725,23889,794,1,0,N,N,N,CP_Drtn,TT_Task,DT_FixedDrtn,RV_OK,TK_NotStart,ENS09,"Receiving P/L 8"""" & 18"""" IFC DWG's",,-681,6647,160,0,0,0,160,0,0,0,2012-04-10 16:00,,,2012-04-10 16:00,2012-04-30 16:00,,2012-07-05 08:00,2012-07-24 17:00,2012-07-05 08:00,2012-07-24 17:00,2012-07-05 08:00,2012-07-24 17:00,,2012-04-10 16:00,2012-04-30 16:00,CS_MSO,PT_Normal,,,,,ieRGK7Tpkkutqq0A+kJafg,,,,N,0,0,,,2012-07-16 15:09,2012-07-16 15:09,admin,admin
752,149579,5725,23887,794,1,0,N,N,N,CP_Drtn,TT_Task,DT_FixedDrtn,RV_OK,TK_NotStart,ENT03,Receiving Piping ISO`s IFC DWG's,,-1031.983333,320,112,0,0,0,112,0,0,0,2012-02-27 08:01,,,2012-02-27 08:01,2012-03-12 08:01,,2012-07-05 08:00,2012-07-18 17:00,2012-07-05 08:00,2012-07-18 17:00,2012-07-05 08:00,2012-07-18 17:00,,2012-02-27 08:01,2012-03-12 08:01,CS_MSO,PT_Normal,,,,,iNigMwLZx0GtK5c/uXYURQ,,,,N,0,0,,,2012-07-16 15:09,2012-07-16 15:37,admin,admin
753,149580,5725,23887,794,0,0,N,N,N,CP_Drtn,TT_FinMile,DT_FixedDrtn,RV_OK,TK_NotStart,ENT01,Issue Approved P&ID's / Equipment List IFC DWG's,,-1369,6807,0,0,0,0,0,0,0,0,2012-01-15 16:00,,,2012-01-15 16:00,2012-01-15 16:00,,2012-07-05 08:00,2012-07-05 08:00,2012-07-05 08:00,2012-07-05 08:00,2012-07-05 08:00,2012-07-05 08:00,,2012-01-15 16:00,2012-01-15 16:00,CS_MEO,PT_Normal,,,,,maG9zbricUqeoD/oUy9WPg,,,,N,0,0,,,2012-07-16 15:09,2012-07-16 15:19,admin,admin
754,149581,5725,23887,794,0,0,N,N,N,CP_Drtn,TT_FinMile,DT_FixedDrtn,RV_OK,TK_NotStart,ENT02,Issue plat plans IFC DWG's,,-1193,6807,0,0,0,0,0,0,0,0,2012-02-06 16:00,,,2012-02-06 16:00,2012-02-06 16:00,,2012-07-05 08:00,2012-07-05 08:00,2012-07-05 08:00,2012-07-05 08:00,2012-07-05 08:00,2012-07-05 08:00,,2012-02-06 16:00,2012-02-06 16:00,CS_MEO,PT_Normal,,,,,8x7l7sHWXUaErVKoQRtkTQ,,,,N,0,0,,,2012-07-16 15:09,2012-07-16 15:19,admin,admin
755,149582,5725,23887,5686,0,0,N,N,N,CP_Drtn,TT_FinMile,DT_FixedDrtn,RV_OK,TK_NotStart,ENT04,Issue Hydrotest maps & loops IFC DWG's,,-848,5552,0,0,0,0,0,0,0,0,2012-02-28 16:00,,,2012-02-28 16:00,2012-02-28 16:00,,2012-07-05 08:00,2012-07-05 08:00,2012-07-05 08:00,2012-07-05 08:00,2012-07-05 08:00,2012-07-05 08:00,,2012-02-28 16:00,2012-02-28 16:00,CS_MEO,PT_Normal,,,,,w18cHbw9nUWXheSZCPtacw,,,,N,0,0,,,2012-07-16 15:09,2012-07-16 15:19,admin,admin
756,149583,5725,23888,794,1,0,N,N,N,CP_Drtn,TT_Task,DT_FixedDUR2,RV_OK,TK_NotStart,ENE01,Receiving E&I IFC DWG`s,,-1311.983333,6031,776,0,0,0,776,0,0,0,2012-01-23 08:01,,,2012-01-23 08:01,2012-04-29 08:01,,2012-07-05 08:00,2012-10-09 17:00,2012-07-05 08:00,2012-10-09 17:00,2012-07-05 08:00,2012-10-09 17:00,,2012-01-23 08:01,2012-04-29 08:01,CS_MSO,PT_Normal,,,,,GET7g8iOPEmUvox8x1+tcw,,,,N,0,0,,,2012-07-16 15:09,2012-07-16 15:37,admin,admin
757,149584,5725,23849,5686,1,0,N,N,N,CP_Drtn,TT_Task,DT_FixedDUR2,RV_OK,TK_NotStart,PF01,Pre-Fabrication of Steel Structure ( Jacket & Piles),,4096,0,960,0,0,0,960,0,0,0,,,,2014-03-24 08:00,2014-08-17 16:00,,2012-07-05 08:00,2012-12-02 16:00,2012-07-05 08:00,2012-12-02 16:00,2012-07-05 08:00,2012-12-02 16:00,,2014-03-24 08:00,2014-08-17 16:00,,PT_Normal,,,,,7ERw700yjEG5EX2i/Q7/Lg,,,,N,0,0,,,2012-07-16 15:09,2012-07-16 15:09,admin,admin
758,149585,5725,23901,794,1,0,N,N,N,CP_Drtn,TT_Task,DT_FixedDUR2,RV_OK,TK_NotStart,PRT01,Piping Bulk material 1st batch,,-464,376,240,0,0,0,240,0,0,0,2012-05-07 17:00,,,2012-05-08 08:00,2012-06-06 17:00,,2012-07-05 08:00,2012-08-03 17:00,2012-07-05 08:00,2012-08-03 17:00,2012-07-05 08:00,2012-08-03 17:00,,2012-05-08 08:00,2012-06-06 17:00,CS_MSO,PT_Normal,,,,,Jp/KNmj+Rk2HUnJgNqXQEg,yl9WvSBhsUKXjamnJ9tBwA,,,N,0,0,,,2012-07-16 15:09,2012-07-16 15:19,admin,admin
759,149586,5725,23901,794,1,0,N,N,N,CP_Drtn,TT_Task,DT_FixedDUR2,RV_OK,TK_NotStart,PRT02,Piping Bulk material 2nd batch,,-192,927,240,0,0,0,240,0,0,0,2012-06-10 17:00,,,2012-06-11 08:00,2012-07-10 17:00,,2012-07-05 08:00,2012-08-03 17:00,2012-07-05 08:00,2012-08-03 17:00,2012-07-05 08:00,2012-08-03 17:00,,2012-06-11 08:00,2012-07-10 17:00,CS_MSO,PT_Normal,,,,,XPJ4vkE8vkqUWcuuq9jKig,hlpmj5RDM0ug86CkeyGt7w,,,N,0,0,,,2012-07-16 15:09,2012-07-16 15:19,admin,admin
760,149587,5725,23901,794,1,0,N,N,N,CP_Drtn,TT_Task,DT_FixedDUR2,RV_OK,TK_NotStart,PRT03,Piping Valves Bulk material 1st batch,,-88,1175,112,0,0,0,112,0,0,0,2012-06-23 17:00,,,2012-06-24 08:00,2012-07-07 17:00,,2012-07-05 08:00,2012-07-18 17:00,2012-07-05 08:00,2012-07-18 17:00,2012-07-05 08:00,2012-07-18 17:00,,2012-06-24 08:00,2012-07-07 17:00,CS_MSO,PT_Normal,,,,,j8wZ6OQbHUWv1ExebwbKDw,GizpIK9AB0igoR6gZc1u/Q,,,N,0,0,,,2012-07-16 15:09,2012-07-16 15:19,admin,admin
761,149588,5725,23901,794,1,0,N,N,N,CP_Drtn,TT_Task,DT_FixedDUR2,RV_OK,TK_NotStart,PRT04,Piping valves Bulk material 2nd batch,,0,1031,112,0,0,0,112,0,0,0,2012-07-22 17:00,,,2012-07-23 08:00,2012-08-05 17:00,,2012-07-23 08:00,2012-08-05 17:00,2012-07-23 08:00,2012-08-05 17:00,2012-07-23 08:00,2012-08-05 17:00,,2012-07-23 08:00,2012-08-05 17:00,CS_MSO,PT_Normal,,,,,fkUzPwT3LE2vU9Q6fPNy5g,UK1YuP2nDUesL7urCII2Dw,,,N,0,0,,,2012-07-16 15:09,2012-07-16 15:19,admin,admin
762,149589,5725,23901,794,1,0,N,N,N,CP_Drtn,TT_Task,DT_FixedDUR2,RV_OK,TK_NotStart,PRT05,Flanges,,0,0,360,0,0,0,360,0,0,0,2012-07-13 17:00,,,2012-07-14 08:00,2012-08-27 17:00,,2012-07-14 08:00,2012-08-27 17:00,2012-07-14 08:00,2012-08-27 17:00,2012-07-14 08:00,2012-08-27 17:00,,2012-07-14 08:00,2012-08-27 17:00,CS_MSO,PT_Normal,,,,,Xo4qN1UF40akaoONEzDc2w,Ex31o9Pan0OuXqbrZEGEag,,,N,0,0,,,2012-07-16 15:09,2012-07-16 15:19,admin,admin
763,149590,5725,23901,794,1,0,N,N,N,CP_Drtn,TT_Task,DT_FixedDUR2,RV_OK,TK_NotStart,PRT06,Pressure Safety Valve,,-240,6455,352,0,0,0,352,0,0,0,2012-06-04 17:00,,,2012-06-05 08:00,2012-07-18 17:00,,2012-07-05 08:00,2012-08-17 17:00,2012-07-05 08:00,2012-08-17 17:00,2012-07-05 08:00,2012-08-17 17:00,,2012-06-05 08:00,2012-07-18 17:00,CS_MSO,PT_Normal,,,,,E0U2nvZEnEaZ1YimqpbP3w,F7qZYQ2pcEuIGt99a45cYg,,,N,0,0,,,2012-07-16 15:09,2012-07-16 15:19,admin,admin
764,149591,5725,23901,794,1,0,N,N,N,CP_Drtn,TT_Task,DT_FixedDUR2,RV_OK,TK_NotStart,PRT07,Pressure regulator Valve,,0,6407,240,0,0,0,240,0,0,0,2012-07-24 17:00,,,2012-07-25 08:00,2012-08-23 17:00,,2012-07-25 08:00,2012-08-23 17:00,2012-07-25 08:00,2012-08-23 17:00,2012-07-25 08:00,2012-08-23 17:00,,2012-07-25 08:00,2012-08-23 17:00,CS_MSO,PT_Normal,,,,,+y/Lj543nUmI1x24JUbdjg,j+Gn0C3OAUWl0C1SspHgPw,,,N,0,0,,,2012-07-16 15:09,2012-07-16 15:19,admin,admin
765,149592,5725,23901,794,1,0,N,N,N,CP_Drtn,TT_Task,DT_FixedDUR2,RV_OK,TK_NotStart,PRT08,Shutdown Valve,,0,6311,248,0,0,0,248,0,0,0,2012-08-04 17:00,,,2012-08-05 08:00,2012-09-04 17:00,,2012-08-05 08:00,2012-09-04 17:00,2012-08-05 08:00,2012-09-04 17:00,2012-08-05 08:00,2012-09-04 17:00,,2012-08-05 08:00,2012-09-04 17:00,CS_MSO,PT_Normal,,,,,/nBG0UHBEUuEo//f9eZi2g,teAPEnX+OEanjGoc9mUlTg,,,N,0,0,,,2012-07-16 15:09,2012-07-16 15:19,admin,admin
766,149593,5725,23890,794,1,0,N,N,N,CP_Drtn,TT_Task,DT_FixedDUR2,RV_OK,TK_NotStart,PRT09,Chemical Injection PKG.,,-456,6447,360,0,0,0,360,0,0,0,2012-05-08 17:00,,,2012-05-09 08:00,2012-06-22 17:00,,2012-07-05 08:00,2012-08-18 17:00,2012-07-05 08:00,2012-08-18 17:00,2012-07-05 08:00,2012-08-18 17:00,,2012-05-09 08:00,2012-06-22 17:00,CS_MSO,PT_Normal,,,,,qvepEj4JwEe8vaeyop+0og,yl9WvSBhsUKXjamnJ9tBwA,,,N,0,0,,,2012-07-16 15:09,2012-07-16 15:19,admin,admin
767,149594,5725,23890,794,1,0,N,N,N,CP_Drtn,TT_Task,DT_FixedDUR2,RV_OK,TK_NotStart,PRT10,Launcher recivier,,-152,6447,360,0,0,0,360,0,0,0,2012-06-15 17:00,,,2012-06-16 08:00,2012-07-30 17:00,,2012-07-05 08:00,2012-08-18 17:00,2012-07-05 08:00,2012-08-18 17:00,2012-07-05 08:00,2012-08-18 17:00,,2012-06-16 08:00,2012-07-30 17:00,CS_MSO,PT_Normal,,,,,je+DcjYxwU6T9xCiHYihAw,hlpmj5RDM0ug86CkeyGt7w,,,N,0,0,,,2012-07-16 15:09,2012-07-16 15:19,admin,admin
768,149595,5725,23890,794,1,0,N,N,N,CP_Drtn,TT_Task,DT_FixedDUR2,RV_OK,TK_NotStart,PRT11,Vent KOD,,-56,6447,360,0,0,0,360,0,0,0,2012-06-27 17:00,,,2012-06-28 08:00,2012-08-11 17:00,,2012-07-05 08:00,2012-08-18 17:00,2012-07-05 08:00,2012-08-18 17:00,2012-07-05 08:00,2012-08-18 17:00,,2012-06-28 08:00,2012-08-11 17:00,CS_MSO,PT_Normal,,,,,PTwHG4i3okuWWN5lNNC0gA,GizpIK9AB0igoR6gZc1u/Q,,,N,0,0,,,2012-07-16 15:09,2012-07-16 15:19,admin,admin
769,149596,5725,23890,794,1,0,N,N,N,CP_Drtn,TT_Task,DT_FixedDUR2,RV_OK,TK_NotStart,PRT12,Open Drain Tank,,-56,6447,360,0,0,0,360,0,0,0,2012-06-27 17:00,,,2012-06-28 08:00,2012-08-11 17:00,,2012-07-05 08:00,2012-08-18 17:00,2012-07-05 08:00,2012-08-18 17:00,2012-07-05 08:00,2012-08-18 17:00,,2012-06-28 08:00,2012-08-11 17:00,CS_MSO,PT_Normal,,,,,pUaeATJ810Gxau2Ls2II1w,UK1YuP2nDUesL7urCII2Dw,,,N,0,0,,,2012-07-16 15:09,2012-07-16 15:19,admin,admin
770,149597,5725,23891,794,1,0,N,N,N,CP_Drtn,TT_Task,DT_FixedDUR2,RV_OK,TK_NotStart,PRS03,Delivery of Structure Material (F.O.B - 13 Wks.) - (Gupco Responsability),,-975,0,728,0,0,0,728,0,0,0,,,,2012-03-13 08:00,2012-06-11 17:00,,2012-07-12 16:00,2012-10-11 16:00,2012-07-12 16:00,2012-10-11 16:00,2012-07-12 16:00,2012-10-11 16:00,,2012-03-13 08:00,2012-06-11 17:00,,PT_Normal,,,,,inop2nIMAUqUS6D+ej09aQ,698/E0SRuUS4pAlggO6l9g,,,N,0,0,,,2012-07-16 15:09,2012-07-16 15:19,admin,admin
771,149598,5725,23891,794,1,0,N,N,N,CP_Drtn,TT_Task,DT_FixedDUR2,RV_OK,TK_NotStart,PRS05,Material check with IFC DWG's to Prepare balance material,,5191,0,56,0,0,0,56,0,0,0,,,,2014-05-25 16:00,2014-06-01 16:00,,2012-08-15 08:00,2012-08-21 17:00,2012-08-15 08:00,2012-08-21 17:00,2012-08-15 08:00,2012-08-21 17:00,,2014-05-25 16:00,2014-06-01 16:00,,PT_Normal,,,,,OGwmt+eJL0qzOmuIe+kASQ,,,,N,0,0,,,2012-07-16 15:09,2012-07-16 15:09,admin,admin
772,149599,5725,23891,794,1,0,N,N,N,CP_Drtn,TT_Task,DT_FixedDUR2,RV_OK,TK_NotStart,PRS06,Delivery of balance material,,5191,5191,1232,0,0,0,1232,0,0,0,,,,2014-06-01 16:00,2014-11-02 16:00,,2012-08-22 08:00,2013-01-22 17:00,2012-08-22 08:00,2013-01-22 17:00,2012-08-22 08:00,2013-01-22 17:00,,2014-06-01 16:00,2014-11-02 16:00,,PT_Normal,,,,,1F5dOHDgfU6gsvHS4nRVsw,,,,N,0,0,,,2012-07-16 15:09,2012-07-16 15:09,admin,admin
773,149600,5725,23891,794,0,100,N,N,N,CP_Drtn,TT_Mile,DT_FixedDrtn,RV_OK,TK_Complete,PRS01,Issue Deck Structural Material P.O's ( Gupco),,,,0,0,0,0,0,0,0,0,2012-02-07 08:00,2012-02-20 00:00,2012-02-20 00:00,,,,,,,,2012-07-05 08:00,2012-07-05 08:00,,,,CS_MSO,PT_Normal,,,,,XZiQbSm+nkqyqWmzMoW5GQ,,,,N,0,0,,,2012-07-16 15:09,2012-07-16 15:38,admin,admin
774,149601,5725,23891,794,0,100,N,N,N,CP_Drtn,TT_Mile,DT_FixedDrtn,RV_OK,TK_Complete,PRS02,Issue LC ( Gupco Responsability),,,,0,0,0,0,0,0,0,0,2012-02-15 08:00,2012-03-14 00:00,2012-03-14 00:00,,,,,,,,2012-07-05 08:00,2012-07-05 08:00,,,,CS_MSO,PT_Normal,,,,,Ly5wTU7Mi02/X7zDab9aAQ,,,,N,0,0,,,2012-07-16 15:09,2012-07-16 15:38,admin,admin
775,149602,5725,23891,794,1,0,N,N,N,CP_Drtn,TT_Task,DT_FixedDUR2,RV_OK,TK_NotStart,PRS04,Delivery of Deck Structure Material at Site (4 Wks.),,-975,9,224,0,0,0,224,0,0,0,,,,2012-06-12 08:00,2012-07-09 17:00,,2012-10-11 16:00,2012-11-08 16:00,2012-10-11 16:00,2012-11-08 16:00,2012-10-11 16:00,2012-11-08 16:00,,2012-06-12 08:00,2012-07-09 17:00,,PT_Normal,,,,,aPU/CAkA5kekfKqlIUmf3A,,,,N,0,0,,,2012-07-16 15:09,2012-07-16 15:19,admin,admin
776,149603,5725,23892,794,1,0,N,N,N,CP_Drtn,TT_Task,DT_FixedDrtn,RV_OK,TK_NotStart,PRP01,"Pipeline 18"""" & Fittings",,-544,512,408,0,0,0,408,0,0,0,2012-05-31 08:00,,,2012-04-28 08:00,2012-06-17 17:00,,2012-07-05 08:00,2012-08-24 17:00,2012-07-05 08:00,2012-08-24 17:00,2012-07-05 08:00,2012-08-24 17:00,,2012-04-28 08:00,2012-06-17 17:00,CS_MSO,PT_Normal,,,,,Vc77wHEB+U65pIkSsf+IzQ,,,,N,0,0,,,2012-07-16 15:09,2012-07-16 15:09,admin,admin
777,149604,5725,23892,794,1,0,N,N,N,CP_Drtn,TT_Task,DT_FixedDrtn,RV_OK,TK_NotStart,PRP02,"Pipeline 8"""" & Fittings",,-280,879,408,0,0,0,408,0,0,0,2012-05-30 17:00,,,2012-05-31 08:00,2012-07-20 17:00,,2012-07-05 08:00,2012-08-24 17:00,2012-07-05 08:00,2012-08-24 17:00,2012-07-05 08:00,2012-08-24 17:00,,2012-05-31 08:00,2012-07-20 17:00,CS_MSO,PT_Normal,,,,,dSWUITeHC0aYRBqDA1rdFg,yl9WvSBhsUKXjamnJ9tBwA,,,N,0,0,,,2012-07-16 15:09,2012-07-16 15:19,admin,admin
778,149605,5725,23916,794,1,0,N,N,N,CP_Drtn,TT_Task,DT_FixedDUR2,RV_OK,TK_NotStart,PRE07,Radar system,,-120,6567,240,0,0,0,240,0,0,0,2012-06-19 17:00,,,2012-06-20 08:00,2012-07-19 17:00,,2012-07-05 08:00,2012-08-03 17:00,2012-07-05 08:00,2012-08-03 17:00,2012-07-05 08:00,2012-08-03 17:00,,2012-06-20 08:00,2012-07-19 17:00,CS_MSO,PT_Normal,,,,,xgmb5I/KlkuqzHNHcQ70sA,hR+VpIi9/EScdnqRSGSfwg,,,N,0,0,,,2012-07-16 15:09,2012-07-16 15:19,admin,admin
779,149606,5725,23916,794,1,0,N,N,N,CP_Drtn,TT_Task,DT_FixedDUR2,RV_OK,TK_NotStart,PRE08,Navegation Aids,,-720,6447,360,0,0,0,360,0,0,0,2012-04-05 17:00,,,2012-04-06 08:00,2012-05-20 17:00,,2012-07-05 08:00,2012-08-18 17:00,2012-07-05 08:00,2012-08-18 17:00,2012-07-05 08:00,2012-08-18 17:00,,2012-04-06 08:00,2012-05-20 17:00,CS_MSO,PT_Normal,,,,,WZbTNp8l5EidCyHHZn5tdA,BsriHSUEkEGgiUy2IxXEwg,,,N,0,0,,,2012-07-16 15:09,2012-07-16 15:19,admin,admin
780,149607,5725,23912,794,1,0,N,N,N,CP_Drtn,TT_Task,DT_FixedDUR2,RV_OK,TK_NotStart,PRE01,Electrical Bulks,,0,6295,360,0,0,0,360,0,0,0,2012-07-23 17:00,,,2012-07-24 08:00,2012-09-06 17:00,,2012-07-24 08:00,2012-09-06 17:00,2012-07-24 08:00,2012-09-06 17:00,2012-07-24 08:00,2012-09-06 17:00,,2012-07-24 08:00,2012-09-06 17:00,CS_MSO,PT_Normal,,,,,3uicaymUZ0iirLGzgnyMQA,,,,N,0,0,,,2012-07-16 15:09,2012-07-16 15:19,admin,admin
781,149608,5725,23912,794,1,0,N,N,N,CP_Drtn,TT_Task,DT_FixedDUR2,RV_OK,TK_NotStart,PRE02,Cathodic Protection,,-336,6447,360,0,0,0,360,0,0,0,2012-05-23 17:00,,,2012-05-24 08:00,2012-07-07 17:00,,2012-07-05 08:00,2012-08-18 17:00,2012-07-05 08:00,2012-08-18 17:00,2012-07-05 08:00,2012-08-18 17:00,,2012-05-24 08:00,2012-07-07 17:00,CS_MSO,PT_Normal,,,,,7ShqrWVjLkS2S64pwQMrBw,,,,N,0,0,,,2012-07-16 15:09,2012-07-16 15:19,admin,admin
782,149609,5725,23912,794,1,0,N,N,N,CP_Drtn,TT_Task,DT_FixedDUR2,RV_OK,TK_NotStart,PRE03,Solar Power,,-248,6447,360,0,0,0,360,0,0,0,2012-06-03 17:00,,,2012-06-04 08:00,2012-07-18 17:00,,2012-07-05 08:00,2012-08-18 17:00,2012-07-05 08:00,2012-08-18 17:00,2012-07-05 08:00,2012-08-18 17:00,,2012-06-04 08:00,2012-07-18 17:00,CS_MSO,PT_Normal,,,,,BhLXsZU93kWCD8BQCWDazg,,,,N,0,0,,,2012-07-16 15:09,2012-07-16 15:19,admin,admin
783,149610,5725,23913,794,1,0,N,N,N,CP_Drtn,TT_Task,DT_FixedDUR2,RV_OK,TK_NotStart,PRE04,F&G Detector,,0,6431,360,0,0,0,360,0,0,0,2012-07-06 17:00,,,2012-07-07 08:00,2012-08-20 17:00,,2012-07-07 08:00,2012-08-20 17:00,2012-07-07 08:00,2012-08-20 17:00,2012-07-07 08:00,2012-08-20 17:00,,2012-07-07 08:00,2012-08-20 17:00,CS_MSO,PT_Normal,,,,,pZ+QwraFMESzzpooFUloiA,hR+VpIi9/EScdnqRSGSfwg,,,N,0,0,,,2012-07-16 15:09,2012-07-16 15:19,admin,admin
784,149611,5725,23913,794,1,0,N,N,N,CP_Drtn,TT_Task,DT_FixedDUR2,RV_OK,TK_NotStart,PRE05,Fire fighting system,,-56,6447,360,0,0,0,360,0,0,0,2012-06-27 17:00,,,2012-06-28 08:00,2012-08-11 17:00,,2012-07-05 08:00,2012-08-18 17:00,2012-07-05 08:00,2012-08-18 17:00,2012-07-05 08:00,2012-08-18 17:00,,2012-06-28 08:00,2012-08-11 17:00,CS_MSO,PT_Normal,,,,,BCIQQYFaYEqUcHzmX+uGcg,BsriHSUEkEGgiUy2IxXEwg,,,N,0,0,,,2012-07-16 15:09,2012-07-16 15:19,admin,admin
785,149612,5725,23913,794,1,0,N,N,N,CP_Drtn,TT_Task,DT_FixedDUR2,RV_OK,TK_NotStart,PRE06,Life Saving Equipment,,0,6447,360,0,0,0,360,0,0,0,2012-07-04 17:00,,,2012-07-05 08:00,2012-08-18 17:00,,2012-07-05 08:00,2012-08-18 17:00,2012-07-05 08:00,2012-08-18 17:00,2012-07-05 08:00,2012-08-18 17:00,,2012-07-05 08:00,2012-08-18 17:00,CS_MSO,PT_Normal,,,,,SaFIhNzT3kaKOS4g/tbbLg,BMPt6NUgQkm3eBH1L9b0qA,,,N,0,0,,,2012-07-16 15:09,2012-07-16 15:19,admin,admin
786,149613,5725,23914,794,1,0,N,N,N,CP_Drtn,TT_Task,DT_FixedDUR2,RV_OK,TK_NotStart,PRE09,Instrument Electical Bulk,,0,6407,240,0,0,0,240,0,0,0,2012-07-24 17:00,,,2012-07-25 08:00,2012-08-23 17:00,,2012-07-25 08:00,2012-08-23 17:00,2012-07-25 08:00,2012-08-23 17:00,2012-07-25 08:00,2012-08-23 17:00,,2012-07-25 08:00,2012-08-23 17:00,CS_MSO,PT_Normal,,,,,FyJzaCzgN06jisPDSUzAZQ,hR+VpIi9/EScdnqRSGSfwg,,,N,0,0,,,2012-07-16 15:09,2012-07-16 15:19,admin,admin
787,149614,5725,23914,794,1,0,N,N,N,CP_Drtn,TT_Task,DT_FixedDUR2,RV_OK,TK_NotStart,PRE10,Instrument Mechanical Bulk,,0,6423,280,0,0,0,280,0,0,0,2012-07-17 17:00,,,2012-07-18 08:00,2012-08-21 17:00,,2012-07-18 08:00,2012-08-21 17:00,2012-07-18 08:00,2012-08-21 17:00,2012-07-18 08:00,2012-08-21 17:00,,2012-07-18 08:00,2012-08-21 17:00,CS_MSO,PT_Normal,,,,,W+Jh+oamKUKGcjiuLN1jUw,BsriHSUEkEGgiUy2IxXEwg,,,N,0,0,,,2012-07-16 15:09,2012-07-16 15:19,admin,admin
788,149615,5725,23914,794,1,0,N,N,N,CP_Drtn,TT_Task,DT_FixedDUR2,RV_OK,TK_NotStart,PRE11,Field Instrument,,-96,6447,360,0,0,0,360,0,0,0,2012-06-22 17:00,,,2012-06-23 08:00,2012-08-06 17:00,,2012-07-05 08:00,2012-08-18 17:00,2012-07-05 08:00,2012-08-18 17:00,2012-07-05 08:00,2012-08-18 17:00,,2012-06-23 08:00,2012-08-06 17:00,CS_MSO,PT_Normal,,,,,XRKCwur1WU+SVfdPJ5e39w,BMPt6NUgQkm3eBH1L9b0qA,,,N,0,0,,,2012-07-16 15:09,2012-07-16 15:19,admin,admin
789,149616,5725,23914,794,1,0,N,N,N,CP_Drtn,TT_Task,DT_FixedDUR2,RV_OK,TK_NotStart,PRE13,Safe Guard system,,0,6215,240,0,0,0,240,0,0,0,2012-08-17 17:00,,,2012-08-18 08:00,2012-09-16 17:00,,2012-08-18 08:00,2012-09-16 17:00,2012-08-18 08:00,2012-09-16 17:00,2012-08-18 08:00,2012-09-16 17:00,,2012-08-18 08:00,2012-09-16 17:00,CS_MSO,PT_Normal,,,,,BiQr6PtDSkCcAkW8bacjtQ,,,,N,0,0,,,2012-07-16 15:09,2012-07-16 15:19,admin,admin
790,149617,5725,23897,5686,1,0,N,N,N,CP_Drtn,TT_Task,DT_FixedDUR2,RV_OK,TK_NotStart,JK01,"Jacket , Boat Landing Fabrication & Painting",,4096,4096,1400,0,0,0,1400,0,0,0,,,,2014-04-01 08:00,2014-11-02 16:00,,2012-07-14 08:00,2013-02-16 16:00,2012-07-14 08:00,2013-02-16 16:00,2012-07-14 08:00,2013-02-16 16:00,,2014-04-01 08:00,2014-11-02 16:00,,PT_Normal,,,,,THj9zZXYgkaABNGnmIRLcQ,,,,N,0,0,,,2012-07-16 15:09,2012-07-16 15:09,admin,admin
791,149618,5725,23897,5686,1,0,N,N,N,CP_Drtn,TT_Task,DT_FixedDUR2,RV_OK,TK_NotStart,JK02,Piles Fabrication & Marking,,4192,4192,1000,0,0,0,1000,0,0,0,,,,2014-06-01 08:00,2014-11-02 16:00,,2012-09-01 08:00,2013-01-31 16:00,2012-09-01 08:00,2013-01-31 16:00,2012-09-01 08:00,2013-01-31 16:00,,2014-06-01 08:00,2014-11-02 16:00,,PT_Normal,,,,,ksI1fHLaQE6GAZHPkT66Ww,,,,N,0,0,,,2012-07-16 15:09,2012-07-16 15:09,admin,admin
792,149619,5725,23907,5686,1,0,N,N,N,CP_Drtn,TT_Task,DT_FixedDUR2,RV_OK,TK_NotStart,DS001,Fabrication and Painting of cellar Deck/Legs,,-464,0,840,0,0,0,840,0,0,0,,,,2012-08-29 08:00,2013-01-03 16:00,,2012-11-10 08:00,2013-03-16 16:00,2012-11-10 08:00,2013-03-16 16:00,2012-11-10 08:00,2013-03-16 16:00,,2012-08-29 08:00,2013-01-03 16:00,,PT_Normal,,,,,d5Pj2ZNHIE2xfuPa77T/FQ,,,,N,0,0,,,2012-07-16 15:09,2012-07-16 15:19,admin,admin
793,149620,5725,23907,5686,1,0,N,N,N,CP_Drtn,TT_Task,DT_FixedDUR2,RV_OK,TK_NotStart,DS002,Fabrication and Painting of Production Deck,,-824,0,960,0,0,0,960,0,0,0,,,,2012-08-07 08:00,2013-01-02 16:00,,2012-12-15 08:00,2013-05-09 16:00,2012-12-15 08:00,2013-05-09 16:00,2012-12-15 08:00,2013-05-09 16:00,,2012-08-07 08:00,2013-01-02 16:00,,PT_Normal,,,,,rKfjMcQTPUyf7wx3ANbRjA,b7vZh9Ccpk+EXT4kXe5yzg,,,N,0,0,,,2012-07-16 15:09,2012-07-16 15:09,admin,admin
794,149621,5725,23907,5686,1,0,N,N,N,CP_Drtn,TT_Task,DT_FixedDUR2,RV_OK,TK_NotStart,DS003,Fabrication and Paint of Heli-Deck ( & Lifting if Required),,-824,0,960,0,0,0,960,0,0,0,,,,2012-09-04 08:00,2013-01-29 16:00,,2013-01-09 08:00,2013-06-03 16:00,2013-01-09 08:00,2013-06-03 16:00,2013-01-09 08:00,2013-06-03 16:00,,2012-09-04 08:00,2013-01-29 16:00,,PT_Normal,,,,,BrAh2raHvE+gohxP5rOnRA,JC1t+n1vH0eDZIP7mK52AA,,,N,0,0,,,2012-07-16 15:09,2012-07-16 15:09,admin,admin
795,149622,5725,23907,5686,1,0,N,N,N,CP_Drtn,TT_Task,DT_FixedDUR2,RV_OK,TK_NotStart,DS004,Lifting cellar Deck on High Cups,,-464,312,40,0,0,0,40,0,0,0,,,,2013-01-05 08:00,2013-01-10 16:00,,2013-03-17 08:00,2013-03-21 16:00,2013-03-17 08:00,2013-03-21 16:00,2013-03-17 08:00,2013-03-21 16:00,,2013-01-05 08:00,2013-01-10 16:00,,PT_Normal,,,,,jibaA9cTDUuHSkyIZLCGgA,,,,N,0,0,,,2012-07-16 15:09,2012-07-16 15:19,admin,admin
796,149623,5725,23907,5686,1,0,N,N,N,CP_Drtn,TT_Task,DT_FixedDUR2,RV_OK,TK_NotStart,DS005,Lifting Production Deck on Below Production Level,,-776,48,120,0,0,0,120,0,0,0,,,,2013-01-12 08:00,2013-01-29 16:00,,2013-05-11 08:00,2013-05-27 16:00,2013-05-11 08:00,2013-05-27 16:00,2013-05-11 08:00,2013-05-27 16:00,,2013-01-12 08:00,2013-01-29 16:00,,PT_Normal,,,,,XfFyVtBctEG2RBzVJSu9EA,,,,N,0,0,,,2012-07-16 15:09,2012-07-16 15:09,admin,admin
797,149624,5725,23907,5686,1,0,N,N,N,CP_Drtn,TT_Task,DT_FixedDUR2,RV_OK,TK_NotStart,DS006,Fabrication & Installation of Deck Str. Miscellence / Padeyes,,-744,80,960,0,0,0,960,0,0,0,,,,2012-09-23 08:00,2013-02-18 16:00,,2013-01-16 08:00,2013-06-10 16:00,2013-01-16 08:00,2013-06-10 16:00,2013-01-16 08:00,2013-06-10 16:00,,2012-09-23 08:00,2013-02-18 16:00,,PT_Normal,,,,,iXKvA9rRNkus8dvebBjJcg,,,,N,0,0,,,2012-07-16 15:09,2012-07-16 15:09,admin,admin
798,149625,5725,23907,5686,0,0,N,N,N,CP_Drtn,TT_FinMile,DT_FixedDrtn,RV_OK,TK_NotStart,DS007,Physical Weighting,,-824,0,0,0,0,0,0,0,0,0,,,,2013-01-29 16:00,2013-01-29 16:00,,2013-06-03 16:00,2013-06-03 16:00,2013-06-03 16:00,2013-06-03 16:00,2013-06-03 16:00,2013-06-03 16:00,,2013-01-29 16:00,2013-01-29 16:00,,PT_Normal,,,,,siAgONjUqEiuPEofipQfXg,,,,N,0,0,,,2012-07-16 15:09,2012-07-16 15:09,admin,admin
799,149626,5725,23907,5686,1,0,N,N,N,CP_Drtn,TT_Task,DT_FixedDUR2,RV_OK,TK_NotStart,DS008,Clearance of structure (Fab. & Painting ) Punch List,,-824,0,168,0,0,0,168,0,0,0,,,,2013-01-30 08:00,2013-02-24 16:00,,2013-06-04 08:00,2013-06-27 16:00,2013-06-04 08:00,2013-06-27 16:00,2013-06-04 08:00,2013-06-27 16:00,,2013-01-30 08:00,2013-02-24 16:00,,PT_Normal,,,,,O//hQZbC4kmbn7lPrEX2RA,,,,N,0,0,,,2012-07-16 15:09,2012-07-16 15:09,admin,admin
800,149627,5725,23930,5686,1,0,N,N,N,CP_Drtn,TT_Task,DT_FixedDUR2,RV_OK,TK_NotStart,TFS001,Piping and Piping Supports Fabrication and Painting,,4416,4416,800,0,0,0,800,0,0,0,,,,2014-06-30 08:00,2014-11-02 16:00,,2012-08-28 08:00,2012-12-27 16:00,2012-08-28 08:00,2012-12-27 16:00,2012-08-28 08:00,2012-12-27 16:00,,2014-06-30 08:00,2014-11-02 16:00,,PT_Normal,,,,,7jT08pnk4E+nfYUBr4vrig,,,,N,0,0,,,2012-07-16 15:09,2012-07-16 15:09,admin,admin
801,149628,5725,23900,5686,1,0,N,N,N,CP_Drtn,TT_Task,DT_FixedDUR2,RV_OK,TK_NotStart,PL01,P/L Spools Fabrication,,-864,0,720,0,0,0,720,0,0,0,,,,2012-05-28 08:00,2012-09-13 16:00,,2012-10-07 08:00,2013-01-26 16:00,2012-10-07 08:00,2013-01-26 16:00,2012-10-07 08:00,2013-01-26 16:00,,2012-05-28 08:00,2012-09-13 16:00,,PT_Normal,,,,,sRNvfKU9MkGfTfWHVdKZRA,,,,N,0,0,,,2012-07-16 15:09,2012-07-16 15:09,admin,admin
802,149629,5725,23902,5686,0,0,N,N,N,CP_Drtn,TT_Mile,DT_FixedDrtn,RV_OK,TK_NotStart,LOPS41,Arrival of 01st Shipment Material Barge ( P/L Spools),,-864,0,0,0,0,0,0,0,0,0,2012-09-15 08:00,,,2012-09-15 08:00,2012-09-15 08:00,,2013-01-27 08:00,2013-01-27 08:00,2013-01-27 08:00,2013-01-27 08:00,2013-01-27 08:00,2013-01-27 08:00,,2012-09-15 08:00,2012-09-15 08:00,CS_MSO,PT_Normal,,,,,EKoyLnc7pUq5RC26V9gNFg,,,,N,0,0,,,2012-07-16 15:09,2012-07-16 15:09,admin,admin
803,149630,5725,23903,5686,0,0,N,N,N,CP_Drtn,TT_Mile,DT_FixedDrtn,RV_OK,TK_NotStart,LOJK41,Arrival of 02nd Shipment Material Barge ( Jacket and Piles ),,0,4607.983333,0,0,0,0,0,0,0,0,2012-12-01 08:01,,,2012-12-01 08:01,2012-12-01 08:01,,2012-12-01 08:01,2012-12-01 08:01,2012-12-01 08:01,2012-12-01 08:01,2012-12-01 08:01,2012-12-01 08:01,,2012-12-01 08:01,2012-12-01 08:01,CS_MSO,PT_Normal,,,,,JIwL0iTcX0exNTuX0yq6HA,,,,N,0,0,,,2012-07-16 15:09,2012-07-16 15:37,admin,admin
804,149631,5725,23899,5686,0,0,N,N,N,CP_Drtn,TT_Mile,DT_FixedDrtn,RV_OK,TK_NotStart,LODK41,Arrival of 03rd Shipment Material Barge ( Deck C/W TSF ),,-792,3216,0,0,0,0,0,0,0,0,2013-03-01 08:01,,,2013-02-28 16:00,2013-02-28 16:00,,2013-06-29 08:00,2013-06-29 08:00,2013-06-29 08:00,2013-06-29 08:00,2013-06-29 08:00,2013-06-29 08:00,,2013-02-28 16:00,2013-02-28 16:00,CS_MSO,PT_Normal,,,,,mIewDW8+V0qt/LolO0irFg,,,,N,0,0,,,2012-07-16 15:09,2012-07-16 15:19,admin,admin
805,149632,5725,23892,794,1,0,N,N,N,CP_Drtn,TT_Task,DT_FixedDrtn,RV_OK,TK_NotStart,PRP12,"Pipeline 8"""" & Fittings",,-280,6399,408,0,0,0,408,0,0,0,2012-05-30 17:00,,,2012-05-31 08:00,2012-07-20 17:00,,2012-07-05 08:00,2012-08-24 17:00,2012-07-05 08:00,2012-08-24 17:00,2012-07-05 08:00,2012-08-24 17:00,,2012-05-31 08:00,2012-07-20 17:00,CS_MSO,PT_Normal,,,,,7FUGGZLzRkq1Hmqj9+KB7g,Z/LKROCTRSGDBSNh6tw23g,,,N,0,0,,,2012-07-16 15:09,2012-07-16 15:19,admin,admin
806,149633,5725,23851,5686,0,0,N,N,N,CP_Drtn,TT_Mile,DT_FixedDrtn,RV_OK,TK_NotStart,GM15,Ready for Load out ( 03rd Shipment/ Deck C/W TSF ),,5552,5552,0,0,0,0,0,0,0,0,,,,2014-11-02 16:00,2014-11-02 16:00,,2012-07-05 08:00,2012-07-05 08:00,2012-07-05 08:00,2012-07-05 08:00,2012-07-05 08:00,2012-07-05 08:00,,2014-11-02 16:00,2014-11-02 16:00,,PT_Normal,,,,,FIhr9ad2JUiD/A6qmHQ3Ng,h7hpizZeQXG79P6YGic48A,,,N,0,0,,,2012-07-16 15:09,2012-07-16 15:19,admin,admin
807,149634,5725,23889,794,1,0,N,N,N,CP_Drtn,TT_Task,DT_FixedDrtn,RV_OK,TK_NotStart,ENS13,Receiving Jacket Primary & Secondary Steel IFC DWG`s,,-1743.983333,5703,1104,0,0,0,1104,0,0,0,2011-11-30 08:01,,,2011-11-30 08:01,2012-04-16 08:01,,2012-07-05 08:00,2012-11-19 17:00,2012-07-05 08:00,2012-11-19 17:00,2012-07-05 08:00,2012-11-19 17:00,,2011-11-30 08:01,2012-04-16 08:01,CS_MSO,PT_Normal,,,,,SeVRU7HYskaNXUohl/ULZg,/taVGz7GStKxIdbmdm3JkA,,,N,0,0,,,2012-07-16 15:09,2012-07-16 15:37,admin,admin
808,149635,5725,23891,794,0,0,N,N,N,CP_Drtn,TT_Mile,DT_FixedDrtn,RV_OK,TK_NotStart,PRS11,Issue Jacket/pile Structural Material P.O's ( Gupco),,-1192,6807,0,0,0,0,0,0,0,0,2012-02-07 08:00,,,2012-02-07 08:00,2012-02-07 08:00,,2012-07-05 08:00,2012-07-05 08:00,2012-07-05 08:00,2012-07-05 08:00,2012-07-05 08:00,2012-07-05 08:00,,2012-02-07 08:00,2012-02-07 08:00,CS_MSO,PT_Normal,,,,,rwKdJwVsZkaRK2YQjQbskA,xF9X1iufT72bd1+OFKWOyQ,,,N,0,0,,,2012-07-16 15:09,2012-07-16 15:09,admin,admin
809,149636,5725,23927,5686,1,0,N,N,N,CP_Drtn,TT_Task,DT_FixedDUR2,RV_OK,TK_NotStart,TSF015,Equipment Erection on Helideck,,5256,624,56,0,0,0,56,0,0,0,,,,2014-09-16 08:00,2014-09-23 16:00,,2012-07-05 08:00,2012-07-12 16:00,2012-07-05 08:00,2012-07-12 16:00,2012-07-05 08:00,2012-07-12 16:00,,2014-09-16 08:00,2014-09-23 16:00,,PT_Normal,,,,,HNInNxiwyUO32EPVVfntog,aPJaRDLhRCS2fQT2L4W4XQ,,,N,0,0,,,2012-07-16 15:09,2012-07-16 15:09,admin,admin
810,149637,5725,23928,5686,1,0,N,N,N,CP_Drtn,TT_Task,DT_FixedDUR2,RV_OK,TK_NotStart,TS17,E&I Activity,,4632,0,720,0,0,0,720,0,0,0,,,,2014-06-12 08:00,2014-09-29 16:00,,2012-07-05 08:00,2012-10-23 16:00,2012-07-05 08:00,2012-10-23 16:00,2012-07-05 08:00,2012-10-23 16:00,,2014-06-12 08:00,2014-09-29 16:00,,PT_Normal,,,,,I/6Jk7e7zEygrSoXXZn48Q,wsdfJJRZTh6vVDGXiSaIkQ,,,N,0,0,,,2012-07-16 15:09,2012-07-16 15:09,admin,admin
811,149638,5725,23929,5686,1,0,N,N,N,CP_Drtn,TT_Task,DT_FixedDUR2,RV_OK,TK_NotStart,TS18,"Pre-commissioning """" Piping Hydrotest , Reinstatment , Megering , Continuity Test and Touch Up """"",,4632,4632,280,0,0,0,280,0,0,0,,,,2014-09-18 08:00,2014-11-02 16:00,,2012-10-13 08:00,2012-11-26 16:00,2012-10-13 08:00,2012-11-26 16:00,2012-10-13 08:00,2012-11-26 16:00,,2014-09-18 08:00,2014-11-02 16:00,,PT_Normal,,,,,Ex3aQyDNGEi9X0jK3PSauA,lPjrgJbBSWyVdJYtkd0lWQ,,,N,0,0,,,2012-07-16 15:09,2012-07-16 15:09,admin,admin
812,149639,5725,23927,5686,1,0,N,N,N,CP_Drtn,TT_Task,DT_FixedDUR2,RV_OK,TK_NotStart,TSF043,Equipment Erection on Below Production Level,,5496,5496,56,0,0,0,56,0,0,0,,,,2014-10-26 08:00,2014-11-02 16:00,,2012-07-05 08:00,2012-07-12 16:00,2012-07-05 08:00,2012-07-12 16:00,2012-07-05 08:00,2012-07-12 16:00,,2014-10-26 08:00,2014-11-02 16:00,,PT_Normal,,,,,bcyZyXfy80ay01Jw+3nUbQ,LQiCxK3/v0WUQtxj4/eZtw,,,N,0,0,,,2012-07-16 15:09,2012-07-16 15:09,admin,admin
813,149640,5725,23932,794,1,0,N,N,N,CP_Drtn,TT_Task,DT_FixedDUR2,RV_OK,TK_NotStart,PRE152,multi phase flow meter,,0,6247,456,0,0,0,456,0,0,0,2012-07-17 17:00,,,2012-07-18 08:00,2012-09-12 17:00,,2012-07-18 08:00,2012-09-12 17:00,2012-07-18 08:00,2012-09-12 17:00,2012-07-18 08:00,2012-09-12 17:00,,2012-07-18 08:00,2012-09-12 17:00,CS_MSO,PT_Normal,,,,,+Wla6CqWCUmPzrC53Ko4Mw,uuNDwlD4PUKH8xd4UATKSA,,,N,0,0,,,2012-07-16 15:09,2012-07-16 15:19,admin,admin
814,149641,5725,23937,5686,1,0,N,N,N,CP_Drtn,TT_Task,DT_FixedDUR2,RV_OK,TK_NotStart,TSF072,Piping and Piping Supports Erection,,4952,4952,600,0,0,0,600,0,0,0,,,,2014-08-03 08:00,2014-11-02 16:00,,2012-07-05 08:00,2012-10-04 16:00,2012-07-05 08:00,2012-10-04 16:00,2012-07-05 08:00,2012-10-04 16:00,,2014-08-03 08:00,2014-11-02 16:00,,PT_Normal,,,,,8a+4rYkmZ0yJrug4oXtaAw,quyCDFL4eUW8pPpR3D60VQ,,,N,0,0,,,2012-07-16 15:09,2012-07-16 15:09,admin,admin
815,149642,5725,23938,5686,1,0,N,N,N,CP_Drtn,TT_Task,DT_FixedDUR2,RV_OK,TK_NotStart,TSF094,Equipment Erection on Production Level,,5432,5432,120,0,0,0,120,0,0,0,,,,2014-10-15 08:00,2014-11-02 16:00,,2012-07-05 08:00,2012-07-22 16:00,2012-07-05 08:00,2012-07-22 16:00,2012-07-05 08:00,2012-07-22 16:00,,2014-10-15 08:00,2014-11-02 16:00,,PT_Normal,,,,,SnlQZehcbEKtyEZNKnkwng,f3d6itKKc0eAsKFsmlMw9g,,,N,0,0,,,2012-07-16 15:09,2012-07-16 15:09,admin,admin
816,149643,5725,23790,6841,1,100,N,N,N,CP_Drtn,TT_Task,DT_FixedDUR2,RV_OK,TK_Complete,I001,FEED,,,,0,0,0,0,2040,0,0,0,,2010-10-20 00:00,2011-07-04 00:00,2014-11-02 16:00,2014-11-02 16:00,,2012-07-05 00:00,2012-07-05 00:00,,,2012-06-03 08:00,2013-06-06 16:00,,,,,PT_Normal,,,,,TpRcRVeHwEGc6sS+DmTApQ,,,,N,0,0,,,2012-07-16 15:09,2012-07-16 15:09,admin,admin
817,149644,5725,23790,6841,1,100,N,N,N,CP_Drtn,TT_Task,DT_FixedDUR2,RV_OK,TK_Complete,I002,Pipelines inspection program,,,,0,0,0,0,864,0,0,0,,2011-07-05 00:00,2012-01-24 00:00,2014-11-02 16:00,2014-11-02 16:00,,2012-07-05 00:00,2012-07-05 00:00,,,2012-06-03 08:00,2012-11-13 16:00,,,,,PT_Normal,,,,,fO2eJdLn+kyPPjlROb/Wuw,,,,N,0,0,,,2012-07-16 15:09,2012-07-16 15:09,admin,admin
818,149645,5725,23790,6841,1,100,N,N,N,CP_Drtn,TT_Task,DT_FixedDUR2,RV_OK,TK_Complete,I006,Negotiate/award Engineering and procurement services contract,,,,0,0,0,0,144,0,0,0,,2011-07-15 00:00,2011-07-29 00:00,2014-11-02 16:00,2014-11-02 16:00,,2012-07-05 00:00,2012-07-05 00:00,,,2012-06-03 08:00,2012-06-26 16:00,,,,,PT_Normal,,,,,SvkglSxTSEmXRf/3XUo9+g,,,,N,0,0,,,2012-07-16 15:09,2012-07-16 15:09,admin,admin
819,149646,5725,23790,6841,0,100,N,N,N,CP_Drtn,TT_Mile,DT_FixedDrtn,RV_OK,TK_Complete,I008,Issue letter of award to Enppi,,,,0,0,0,0,0,0,0,0,,2011-07-28 00:00,2011-07-28 00:00,,,,,,,,2012-06-03 08:00,2012-06-03 08:00,,,,,PT_Normal,,,,,zB/f7kPW6kGUUfG46SNuag,,,,N,0,0,,,2012-07-16 15:09,2012-07-16 15:38,admin,admin
820,149647,5725,23790,6841,1,100,N,N,N,CP_Drtn,TT_Task,DT_FixedDUR2,RV_OK,TK_Complete,I010,Issue RFQ structural steel to PJ,,,,0,0,0,0,480,0,0,0,,2011-07-31 00:00,2011-10-20 00:00,2014-11-02 16:00,2014-11-02 16:00,,2012-07-05 00:00,2012-07-05 00:00,,,2012-06-03 08:00,2012-08-30 16:00,,,,,PT_Normal,,,,,ibJUAxb/Wk+RBen3dUFRSg,,,,N,0,0,,,2012-07-16 15:09,2012-07-16 15:09,admin,admin
821,149648,5725,23790,6841,1,100,N,N,N,CP_Drtn,TT_Task,DT_FixedDUR2,RV_OK,TK_Complete,I011,Structural steel engineering,,,,0,0,0,0,288,0,0,0,,2011-10-23 00:00,2011-12-11 00:00,2014-11-02 16:00,2014-11-02 16:00,,2012-07-05 00:00,2012-07-05 00:00,,,2012-06-03 08:00,2012-07-22 16:00,,,,,PT_Normal,,,,,IQ8EtRbn6E6Smzy51eVrJw,,,,N,0,0,,,2012-07-16 15:09,2012-07-16 15:09,admin,admin
822,149649,5725,23790,6841,1,100,N,N,N,CP_Drtn,TT_Task,DT_FixedDUR2,RV_OK,TK_Complete,I012,Clarify/evaluate/approve PJ offer,,,,0,0,0,0,192,0,0,0,,2011-10-23 08:00,2011-11-23 00:00,2014-11-02 16:00,2014-11-02 16:00,,2012-07-05 00:00,2012-07-05 00:00,,,2011-10-23 08:00,2011-11-30 16:00,,,,,PT_Normal,,,,,bJWrWWKVY0qetEaVrUREJw,,,,N,0,0,,,2012-07-16 15:09,2012-07-16 15:09,admin,admin
823,149650,5725,23790,6841,1,100,N,N,N,CP_Drtn,TT_Task,DT_FixedDUR2,RV_OK,TK_Complete,I014,FEED HAZOP,,,,0,0,0,0,40,0,0,0,,2010-12-01 00:00,2010-12-07 00:00,2014-11-02 16:00,2014-11-02 16:00,,2012-07-05 00:00,2012-07-05 00:00,,,2012-06-03 08:00,2012-06-07 16:00,,,,,PT_Normal,,,,,RVeQ/bbeeEG7wY0w8hn6Dw,,,,N,0,0,,,2012-07-16 15:09,2012-07-16 15:09,admin,admin
824,149651,5725,23790,6841,1,100,N,N,N,CP_Drtn,TT_Task,DT_FixedDUR2,RV_OK,TK_Complete,I013,Define Project Risk Management Process,,,,0,0,0,0,40,0,0,0,,2011-03-01 00:00,2011-03-07 00:00,2014-11-02 16:00,2014-11-02 16:00,,2012-07-05 00:00,2012-07-05 00:00,,,2012-06-03 08:00,2012-06-07 16:00,,,,,PT_Normal,,,,,e6NDRiZwXk6rwhuGzMmheQ,,,,N,0,0,,,2012-07-16 15:09,2012-07-16 15:09,admin,admin
825,149652,5725,23790,6841,1,100,N,N,N,CP_Drtn,TT_Task,DT_FixedDUR2,RV_OK,TK_Complete,I015,Define constructabilty review workshop,,,,0,0,0,0,40,0,0,0,,2011-03-15 00:00,2011-03-21 00:00,2014-11-02 16:00,2014-11-02 16:00,,2012-07-05 00:00,2012-07-05 00:00,,,2012-06-03 08:00,2012-06-07 16:00,,,,,PT_Normal,,,,,MNKNeSe/XkGi4i+s1GSj0g,,,,N,0,0,,,2012-07-16 15:09,2012-07-16 15:09,admin,admin
826,149653,5725,23790,6841,1,100,N,N,N,CP_Drtn,TT_Task,DT_FixedDUR2,RV_OK,TK_Complete,I016,Define Combined engineering discipline review(EDR/PSH(,,,,0,0,0,0,40,0,0,0,,2011-04-04 00:00,2011-04-11 00:00,2014-11-02 16:00,2014-11-02 16:00,,2012-07-05 00:00,2012-07-05 00:00,,,2012-06-03 08:00,2012-06-07 16:00,,,,,PT_Normal,,,,,wLe8FO2BmUGxKCoJamlzIA,,,,N,0,0,,,2012-07-16 15:09,2012-07-16 15:09,admin,admin
827,149654,5725,23790,6841,1,100,N,N,N,CP_Drtn,TT_Task,DT_FixedDUR2,RV_OK,TK_Complete,I018,Define Project Services Cost estimate and schedule review,,,,0,0,0,0,160,0,0,0,,2011-06-23 00:00,2011-07-20 00:00,2014-11-02 16:00,2014-11-02 16:00,,2012-07-05 00:00,2012-07-05 00:00,,,2012-06-03 08:00,2012-06-28 16:00,,,,,PT_Normal,,,,,HCsyJ4/HJE+tQYcEpMbuNw,,,,N,0,0,,,2012-07-16 15:09,2012-07-16 15:09,admin,admin
828,149655,5725,23790,6841,1,100,N,N,N,CP_Drtn,TT_Task,DT_FixedDUR2,RV_OK,TK_Complete,I020,Define Independent external benchmarking review,,,,0,0,0,0,40,0,0,0,,2011-07-20 00:00,2011-07-27 00:00,2014-11-02 16:00,2014-11-02 16:00,,2012-07-05 00:00,2012-07-05 00:00,,,2012-06-03 08:00,2012-06-07 16:00,,,,,PT_Normal,,,,,tZEZ0SDJvk6GODXuukNNAA,,,,N,0,0,,,2012-07-16 15:09,2012-07-16 15:09,admin,admin
829,149656,5725,23790,6841,1,100,N,N,N,CP_Drtn,TT_Task,DT_FixedDUR2,RV_OK,TK_Complete,I022,Define Project Services discipline review PSDR,,,,0,0,0,0,80,0,0,0,,2011-07-21 08:00,2011-08-03 16:00,2014-11-02 16:00,2014-11-02 16:00,,2012-07-05 00:00,2012-07-05 00:00,,,2011-07-21 08:00,2011-08-03 16:00,,,,,PT_Normal,,,,,ZpbwHHYp6kq3RbhvmYeM2A,,,,N,0,0,,,2012-07-16 15:09,2012-07-16 15:09,admin,admin
830,149657,5725,23790,6841,1,100,N,N,N,CP_Drtn,TT_Task,DT_FixedDUR2,RV_OK,TK_Complete,I023,Wells discipline review,,,,0,0,0,0,72,0,0,0,,2011-08-17 08:00,2011-08-29 16:00,2014-11-02 16:00,2014-11-02 16:00,,2012-07-05 00:00,2012-07-05 00:00,,,2011-08-17 08:00,2011-08-29 16:00,,,,,PT_Normal,,,,,uoDWqNJBOU+jXWZzOxnoYQ,,,,N,0,0,,,2012-07-16 15:09,2012-07-16 15:09,admin,admin
831,149658,5725,23790,6841,1,100,N,N,N,CP_Drtn,TT_Task,DT_FixedDUR2,RV_OK,TK_Complete,I024,Execute detailed engineering PHSSER,,,,0,0,0,0,40,0,0,0,,2011-10-10 00:00,2011-10-16 00:00,2014-11-02 16:00,2014-11-02 16:00,,2012-07-05 00:00,2012-07-05 00:00,,,2012-06-03 08:00,2012-06-07 16:00,,,,,PT_Normal,,,,,Qlu2iFftHU24c+e7rgzu9Q,,,,N,0,0,,,2012-07-16 15:09,2012-07-16 15:09,admin,admin
832,149659,5725,23790,6841,1,0,N,N,N,CP_Drtn,TT_Task,DT_FixedDUR2,RV_OK,TK_NotStart,I025,Execute Construction project PHSSER,,0,4392,40,0,0,0,40,0,0,0,2012-09-11 08:00,,,2012-09-11 08:00,2012-09-17 16:00,,2012-09-11 08:00,2012-09-17 16:00,2012-09-11 08:00,2012-09-17 16:00,2012-09-11 08:00,2012-09-17 16:00,,2012-09-11 08:00,2012-09-17 16:00,CS_MSO,PT_Normal,,,,,uH5zmsCFnEKEA05tAX9qqg,,,,N,0,0,,,2012-07-16 15:09,2012-07-16 15:09,admin,admin
833,149660,5725,23790,6841,1,0,N,N,N,CP_Drtn,TT_Task,DT_FixedDUR2,RV_OK,TK_NotStart,I026,Fabrication risk management workshop,,0,4352,40,0,0,0,40,0,0,0,2012-09-18 08:00,,,2012-09-18 08:00,2012-09-24 16:00,,2012-09-18 08:00,2012-09-24 16:00,2012-09-18 08:00,2012-09-24 16:00,2012-09-18 08:00,2012-09-24 16:00,,2012-09-18 08:00,2012-09-24 16:00,CS_MSO,PT_Normal,,,,,eGpcNAHQvkuqTDK+3EYtqQ,,,,N,0,0,,,2012-07-16 15:09,2012-07-16 15:09,admin,admin
834,149661,5725,23790,6841,1,0,N,N,N,CP_Drtn,TT_Task,DT_FixedDUR2,RV_OK,TK_NotStart,I028,Execute constructabilty review workshop,,0,4192,40,0,0,0,40,0,0,0,2012-10-16 08:00,,,2012-10-16 08:00,2012-10-29 16:00,,2012-10-16 08:00,2012-10-29 16:00,2012-10-16 08:00,2012-10-29 16:00,2012-10-16 08:00,2012-10-29 16:00,,2012-10-16 08:00,2012-10-29 16:00,CS_MSO,PT_Normal,,,,,A/vuTCxeWk2Zs+O8au1dvQ,,,,N,0,0,,,2012-07-16 15:09,2012-07-16 15:09,admin,admin
835,149662,5725,23790,6841,1,0,N,N,N,CP_Drtn,TT_Task,DT_FixedDUR2,RV_OK,TK_NotStart,I029,Execute project risk management workshop,,0,4112,40,0,0,0,40,0,0,0,2012-11-06 08:00,,,2012-11-06 08:00,2012-11-12 16:00,,2012-11-06 08:00,2012-11-12 16:00,2012-11-06 08:00,2012-11-12 16:00,2012-11-06 08:00,2012-11-12 16:00,,2012-11-06 08:00,2012-11-12 16:00,CS_MSO,PT_Normal,,,,,bnwuG5WWH0+cPZTUiyMz1Q,,,,N,0,0,,,2012-07-16 15:09,2012-07-16 15:09,admin,admin
836,149663,5725,23790,6841,1,0,N,N,N,CP_Drtn,TT_Task,DT_FixedDUR2,RV_OK,TK_NotStart,I030,Execute start up efficency review SUER,,0,4352,40,0,0,0,40,0,0,0,2012-09-18 08:00,,,2012-09-18 08:00,2012-09-24 16:00,,2012-09-18 08:00,2012-09-24 16:00,2012-09-18 08:00,2012-09-24 16:00,2012-09-18 08:00,2012-09-24 16:00,,2012-09-18 08:00,2012-09-24 16:00,CS_MSO,PT_Normal,,,,,3IE/1S9DEUWYGq7l75VJ3A,,,,N,0,0,,,2012-07-16 15:09,2012-07-16 15:09,admin,admin
837,149664,5725,23790,6841,1,0,N,N,N,CP_Drtn,TT_Task,DT_FixedDUR2,RV_OK,TK_NotStart,I032,Wells discipline review,,0,3952,40,0,0,0,40,0,0,0,2012-12-04 08:00,,,2012-12-04 08:00,2012-12-10 16:00,,2012-12-04 08:00,2012-12-10 16:00,2012-12-04 08:00,2012-12-10 16:00,2012-12-04 08:00,2012-12-10 16:00,,2012-12-04 08:00,2012-12-10 16:00,CS_MSO,PT_Normal,,,,,qc5dbN9z0kGIOmyEpGvZAA,,,,N,0,0,,,2012-07-16 15:09,2012-07-16 15:09,admin,admin
838,149665,5725,23790,6841,1,0,N,N,N,CP_Drtn,TT_Task,DT_FixedDUR2,RV_OK,TK_NotStart,I033,Execute pre-startup project PHSSER,,0,3112,40,0,0,0,40,0,0,0,2013-04-30 08:00,,,2013-04-30 08:00,2013-05-06 16:00,,2013-04-30 08:00,2013-05-06 16:00,2013-04-30 08:00,2013-05-06 16:00,2013-04-30 08:00,2013-05-06 16:00,,2013-04-30 08:00,2013-05-06 16:00,CS_MSO,PT_Normal,,,,,rJvg4DcfiEqD2fdYWB6CDg,,,,N,0,0,,,2012-07-16 15:09,2012-07-16 15:09,admin,admin
839,149666,5725,23790,6841,1,0,N,N,N,CP_Drtn,TT_Task,DT_FixedDUR2,RV_OK,TK_NotStart,I034,Execute pre-startup safety review,,0,3168,40,0,0,0,40,0,0,0,2013-04-19 08:00,,,2013-04-21 08:00,2013-04-25 16:00,,2013-04-21 08:00,2013-04-25 16:00,2013-04-21 08:00,2013-04-25 16:00,2013-04-21 08:00,2013-04-25 16:00,,2013-04-21 08:00,2013-04-25 16:00,CS_MSO,PT_Normal,,,,,z10EIT2BmESxEed54O6qrA,,,,N,0,0,,,2012-07-16 15:09,2012-07-16 15:19,admin,admin
840,149667,5725,23790,6841,1,0,N,N,N,CP_Drtn,TT_Task,DT_FixedDUR2,RV_OK,TK_NotStart,I035,Execute Independent external Go/No go Audit,,0,2792,40,0,0,0,40,0,0,0,2013-06-25 08:00,,,2013-06-25 08:00,2013-07-01 16:00,,2013-06-25 08:00,2013-07-01 16:00,2013-06-25 08:00,2013-07-01 16:00,2013-06-25 08:00,2013-07-01 16:00,,2013-06-25 08:00,2013-07-01 16:00,CS_MSO,PT_Normal,,,,,mO1Q9L25TUuEHhVJP3k5JA,,,,N,0,0,,,2012-07-16 15:09,2012-07-16 15:09,admin,admin
841,149668,5725,23790,6841,1,0,N,N,N,CP_Drtn,TT_Task,DT_FixedDUR2,RV_OK,TK_NotStart,I036,Subsurface MoC,,0,2752,40,0,0,0,40,0,0,0,2013-07-02 08:00,,,2013-07-02 08:00,2013-07-08 16:00,,2013-07-02 08:00,2013-07-08 16:00,2013-07-02 08:00,2013-07-08 16:00,2013-07-02 08:00,2013-07-08 16:00,,2013-07-02 08:00,2013-07-08 16:00,CS_MSO,PT_Normal,,,,,Kl2883hj+UmQG8YbsIZBMw,,,,N,0,0,,,2012-07-16 15:09,2012-07-16 15:09,admin,admin
842,149669,5725,23790,6841,1,0,N,N,N,CP_Drtn,TT_Task,DT_FixedDUR2,RV_OK,TK_NotStart,I037,Operate Independent external project close-out review,,0,2000,40,0,0,0,40,0,0,0,2013-11-11 08:00,,,2013-11-11 08:00,2013-11-17 16:00,,2013-11-11 08:00,2013-11-17 16:00,2013-11-11 08:00,2013-11-17 16:00,2013-11-11 08:00,2013-11-17 16:00,,2013-11-11 08:00,2013-11-17 16:00,CS_MSO,PT_Normal,,,,,snRYb/qoBEGrqlzK+kgdvg,,,,N,0,0,,,2012-07-16 15:09,2012-07-16 15:09,admin,admin
843,149670,5725,23790,6841,1,0,N,N,N,CP_Drtn,TT_Task,DT_FixedDUR2,RV_OK,TK_NotStart,I038,Operate early operability review EOR,,0,0,40,0,0,0,40,0,0,0,2014-10-27 08:00,,,2014-10-27 08:00,2014-11-02 16:00,,2014-10-27 08:00,2014-11-02 16:00,2014-10-27 08:00,2014-11-02 16:00,2014-10-27 08:00,2014-11-02 16:00,,2014-10-27 08:00,2014-11-02 16:00,CS_MSO,PT_Normal,,,,,i1/0UwYmXkuyJMc9kgLcmA,,,,Y,0,0,,,2012-07-16 15:09,2012-07-16 15:09,admin,admin
844,149671,5725,23790,6841,1,100,N,N,N,CP_Drtn,TT_Task,DT_FixedDUR2,RV_OK,TK_Complete,I101,Facilities basis of design BOD,,,,0,0,0,0,80,0,0,0,,2010-11-15 00:00,2010-11-28 00:00,2014-11-02 16:00,2014-11-02 16:00,,2012-07-05 00:00,2012-07-05 00:00,,,2012-06-03 08:00,2012-06-14 16:00,,,,,PT_Normal,,,,,7uYETjCSe06OQAg4rNvm7g,,,,N,0,0,,,2012-07-16 15:09,2012-07-16 15:09,admin,admin
845,149672,5725,23790,6841,1,100,N,N,N,CP_Drtn,TT_Task,DT_FixedDUR2,RV_OK,TK_Complete,I102,Project Execution Plan PEP,,,,0,0,0,0,80,0,0,0,,2011-02-07 00:00,2011-02-20 00:00,2014-11-02 16:00,2014-11-02 16:00,,2012-07-05 00:00,2012-07-05 00:00,,,2012-06-03 08:00,2012-06-14 16:00,,,,,PT_Normal,,,,,kXQFMRTFpk+okiR6BHyr+w,,,,N,0,0,,,2012-07-16 15:09,2012-07-16 15:09,admin,admin
846,149673,5725,23790,6841,1,100,N,N,N,CP_Drtn,TT_Task,DT_FixedDUR2,RV_OK,TK_Complete,I103,Project Management Team PMT Organization Structure,,,,0,0,0,0,40,0,0,0,,2011-02-21 00:00,2011-02-27 00:00,2014-11-02 16:00,2014-11-02 16:00,,2012-07-05 00:00,2012-07-05 00:00,,,2012-06-03 08:00,2012-06-07 16:00,,,,,PT_Normal,,,,,s2hGlP1e2U64KG98Cxc5cg,,,,N,0,0,,,2012-07-16 15:09,2012-07-16 15:09,admin,admin
847,149674,5725,23790,6841,1,100,N,N,N,CP_Drtn,TT_Task,DT_FixedDUR2,RV_OK,TK_Complete,I104,Integrated master control schedule,,,,0,0,0,0,160,0,0,0,,2011-02-21 00:00,2011-03-20 00:00,2014-11-02 16:00,2014-11-02 16:00,,2012-07-05 00:00,2012-07-05 00:00,,,2012-06-03 08:00,2012-06-28 16:00,,,,,PT_Normal,,,,,pujMNMFepkKjWGikoIMgww,,,,N,0,0,,,2012-07-16 15:09,2012-07-16 15:09,admin,admin
848,149675,5725,23790,6841,1,100,N,N,N,CP_Drtn,TT_Task,DT_FixedDUR2,RV_OK,TK_Complete,I106,Project detailed cost estimate and risk anslysis,,,,0,0,0,0,160,0,0,0,,2011-03-21 00:00,2011-04-17 00:00,2014-11-02 16:00,2014-11-02 16:00,,2012-07-05 00:00,2012-07-05 00:00,,,2012-06-03 08:00,2012-06-28 16:00,,,,,PT_Normal,,,,,S164AreSlkCxW8QeUtznPQ,,,,N,0,0,,,2012-07-16 15:09,2012-07-16 15:09,admin,admin
849,149676,5725,23790,6841,1,100,N,N,N,CP_Drtn,TT_Task,DT_FixedDUR2,RV_OK,TK_Complete,I107,Internal benchmarking,,,,0,0,0,0,80,0,0,0,,2011-04-18 00:00,2011-05-01 00:00,2014-11-02 16:00,2014-11-02 16:00,,2012-07-05 00:00,2012-07-05 00:00,,,2012-06-03 08:00,2012-06-14 16:00,,,,,PT_Normal,,,,,27hKbA0Bu0eq/d/LZwOTWA,,,,N,0,0,,,2012-07-16 15:09,2012-07-16 15:09,admin,admin
850,149677,5725,23790,6841,1,100,N,N,N,CP_Drtn,TT_Task,DT_FixedDUR2,RV_OK,TK_Complete,I109,Management of Change MoC process,,,,0,0,0,0,80,0,0,0,,2011-05-02 00:00,2011-05-15 00:00,2014-11-02 16:00,2014-11-02 16:00,,2012-07-05 00:00,2012-07-05 00:00,,,2012-06-03 08:00,2012-06-14 16:00,,,,,PT_Normal,,,,,Oh6hgMyQwkaAg573n4rD9Q,,,,N,0,0,,,2012-07-16 15:09,2012-07-16 15:09,admin,admin
851,149678,5725,23790,6841,1,100,N,N,N,CP_Drtn,TT_Task,DT_FixedDUR2,RV_OK,TK_Complete,I110,ETP Deviation register,,,,0,0,0,0,80,0,0,0,,2011-05-16 00:00,2011-05-28 00:00,2014-11-02 16:00,2014-11-02 16:00,,2012-07-05 00:00,2012-07-05 00:00,,,2012-06-03 08:00,2012-06-14 16:00,,,,,PT_Normal,,,,,pPEArmTL0UuN8t3HfbWm2g,,,,N,0,0,,,2012-07-16 15:09,2012-07-16 15:09,admin,admin
852,149679,5725,23790,6841,1,100,N,N,N,CP_Drtn,TT_Task,DT_FixedDUR2,RV_OK,TK_Complete,I112,Project Review Report,,,,0,0,0,0,80,0,0,0,,2011-06-01 00:00,2011-06-14 00:00,2014-11-02 16:00,2014-11-02 16:00,,2012-07-05 00:00,2012-07-05 00:00,,,2012-06-03 08:00,2012-06-14 16:00,,,,,PT_Normal,,,,,ASF0ewu0Pki62Vw+Xby1Lg,,,,N,0,0,,,2012-07-16 15:09,2012-07-16 15:09,admin,admin
853,149680,5725,23790,6841,1,100,N,N,N,CP_Drtn,TT_Task,DT_FixedDUR2,RV_OK,TK_Complete,I114,Project HSSE Management Plan,,,,0,0,0,0,40,0,0,0,,2011-06-15 00:00,2011-06-21 00:00,2014-11-02 16:00,2014-11-02 16:00,,2012-07-05 00:00,2012-07-05 00:00,,,2012-06-03 08:00,2012-06-07 16:00,,,,,PT_Normal,,,,,ixAQ0dCbSUezorkeESPIyg,,,,N,0,0,,,2012-07-16 15:09,2012-07-16 15:09,admin,admin
854,149681,5725,23790,6841,1,100,N,N,N,CP_Drtn,TT_Task,DT_FixedDUR2,RV_OK,TK_Complete,I116,Develop HSSE KPI's,,,,0,0,0,0,40,0,0,0,,2011-06-22 00:00,2011-06-28 00:00,2014-11-02 16:00,2014-11-02 16:00,,2012-07-05 00:00,2012-07-05 00:00,,,2012-06-03 08:00,2012-06-07 16:00,,,,,PT_Normal,,,,,F1WZr8KmUUmHKuRBUYXh+w,,,,N,0,0,,,2012-07-16 15:09,2012-07-16 15:09,admin,admin
855,149682,5725,23790,6841,1,100,N,N,N,CP_Drtn,TT_Task,DT_FixedDUR2,RV_OK,TK_Complete,I118,Risk Management Plan RMP,,,,0,0,0,0,160,0,0,0,,2011-06-29 00:00,2011-07-26 00:00,2014-11-02 16:00,2014-11-02 16:00,,2012-07-05 00:00,2012-07-05 00:00,,,2012-06-03 08:00,2012-06-28 16:00,,,,,PT_Normal,,,,,wHp7KxLq+0emTaWei5Z0rQ,,,,N,0,0,,,2012-07-16 15:09,2012-07-16 15:09,admin,admin
856,149683,5725,23790,6841,1,100,N,N,N,CP_Drtn,TT_Task,DT_FixedDUR2,RV_OK,TK_Complete,I120,Planning and scheduling procedures,,,,0,0,0,0,160,0,0,0,,2011-07-27 00:00,2011-08-23 00:00,2014-11-02 16:00,2014-11-02 16:00,,2012-07-05 00:00,2012-07-05 00:00,,,2012-06-03 08:00,2012-06-28 16:00,,,,,PT_Normal,,,,,IalPg2KBz0qTIz3q9GEfyg,,,,N,0,0,,,2012-07-16 15:09,2012-07-16 15:09,admin,admin
857,149684,5725,23790,6841,1,100,N,N,N,CP_Drtn,TT_Task,DT_FixedDUR2,RV_OK,TK_Complete,I122,Project Controls system PCS,,,,0,0,0,0,80,0,0,0,,2011-08-24 00:00,2011-09-06 00:00,2014-11-02 16:00,2014-11-02 16:00,,2012-07-05 00:00,2012-07-05 00:00,,,2012-06-03 08:00,2012-06-14 16:00,,,,,PT_Normal,,,,,3EGxwHExbUuDUz7ONESqzw,,,,N,0,0,,,2012-07-16 15:09,2012-07-16 15:09,admin,admin
858,149685,5725,23790,6841,1,100,N,N,N,CP_Drtn,TT_Task,DT_FixedDUR2,RV_OK,TK_Complete,I128,Shutdown and control phylosophy,,,,0,0,0,0,160,0,0,0,,2012-04-04 00:00,2012-05-01 00:00,2014-11-02 16:00,2014-11-02 16:00,,2012-07-05 00:00,2012-07-05 00:00,,,2012-06-03 08:00,2012-06-28 16:00,,,,,PT_Normal,,,,,urLDKV0nxk2VoYWWDy7dUA,,,,N,0,0,,,2012-07-16 15:09,2012-07-16 15:09,admin,admin
859,149686,5725,23790,6841,1,100,N,N,N,CP_Drtn,TT_Task,DT_FixedDUR2,RV_OK,TK_Complete,I130,Commissioning and Operation phylosophy,,,,0,0,0,0,80,0,0,0,,2012-05-02 00:00,2012-05-15 00:00,2014-11-02 16:00,2014-11-02 16:00,,2012-07-05 00:00,2012-07-05 00:00,,,2012-06-03 08:00,2012-06-14 16:00,,,,,PT_Normal,,,,,Tio54NHP7kaf5fEjqU75bA,,,,N,0,0,,,2012-07-16 15:09,2012-07-16 15:09,admin,admin
860,149687,5725,23790,6841,1,100,N,N,N,CP_Drtn,TT_Task,DT_FixedDUR2,RV_OK,TK_Complete,I132,Design hazard management plan,,,,0,0,0,0,80,0,0,0,,2012-05-16 00:00,2012-05-29 00:00,2014-11-02 16:00,2014-11-02 16:00,,2012-07-05 00:00,2012-07-05 00:00,,,2012-06-03 08:00,2012-06-14 16:00,,,,,PT_Normal,,,,,fdManjL10ECKeRad+RHlew,,,,N,0,0,,,2012-07-16 15:09,2012-07-16 15:09,admin,admin
861,149688,5725,23790,6841,1,100,N,N,N,CP_Drtn,TT_Task,DT_FixedDUR2,RV_OK,TK_Complete,I133,Offshore installation phylosophy,,,,0,0,0,0,40,0,0,0,,2012-05-30 00:00,2012-06-05 00:00,2014-11-02 16:00,2014-11-02 16:00,,2012-07-05 00:00,2012-07-05 00:00,,,2012-06-03 08:00,2012-06-07 16:00,,,,,PT_Normal,,,,,UlgfXh4Lw0S9cRuCsK8Jsg,,,,N,0,0,,,2012-07-16 15:09,2012-07-16 15:09,admin,admin
862,149689,5725,23790,6841,1,100,N,N,N,CP_Drtn,TT_Task,DT_FixedDUR2,RV_OK,TK_Complete,I134,Hazards register,,,,0,0,0,0,40,0,0,0,,2012-06-06 00:00,2012-06-12 00:00,2014-11-02 16:00,2014-11-02 16:00,,2012-07-05 00:00,2012-07-05 00:00,,,2012-06-03 08:00,2012-06-07 16:00,,,,,PT_Normal,,,,,wokvEBUPOEOq5QpaCMhbyw,,,,N,0,0,,,2012-07-16 15:09,2012-07-16 15:09,admin,admin
863,149690,5725,23790,6841,1,100,N,N,N,CP_Drtn,TT_Task,DT_FixedDUR2,RV_OK,TK_Complete,I135,Design Safety Case,,,,0,0,0,0,40,0,0,0,,2012-06-13 00:00,2012-06-19 00:00,2014-11-02 16:00,2014-11-02 16:00,,2012-07-05 00:00,2012-07-05 00:00,,,2012-06-03 08:00,2012-06-07 16:00,,,,,PT_Normal,,,,,4xCphgBCPEioBEYrPqrNjQ,,,,N,0,0,,,2012-07-16 15:09,2012-07-16 15:09,admin,admin
864,149691,5725,23790,6841,1,100,N,N,N,CP_Drtn,TT_Task,DT_FixedDUR2,RV_OK,TK_Active,I136,HAZOP review,,4512,0,0,0,0,0,40,0,0,0,,2012-06-20 00:00,,2014-09-16 16:00,2014-09-16 16:00,,2012-07-05 08:00,2012-07-05 08:00,2012-07-05 08:00,2012-07-05 08:00,2012-06-03 08:00,2012-06-07 16:00,,2014-09-16 16:00,2014-09-16 16:00,,PT_Normal,,,,,RDivZs2D+EyJK1t8bDgNoQ,,,,N,0,0,,,2012-07-16 15:09,2012-07-16 15:09,admin,admin
865,149692,5725,23790,6841,1,0,N,N,N,CP_Drtn,TT_Task,DT_FixedDUR2,RV_OK,TK_NotStart,I137,SIL and CIL review,,-48,4760,16,0,0,0,16,0,0,0,2012-06-27 08:00,,,2012-06-27 08:00,2012-06-28 16:00,,2012-07-05 08:00,2012-07-08 16:00,2012-07-05 08:00,2012-07-08 16:00,2012-07-05 08:00,2012-07-08 16:00,,2012-06-27 08:00,2012-06-28 16:00,CS_MSO,PT_Normal,,,,,bUGVWw5lQEiMwTRTGB1lDg,,,,N,0,0,,,2012-07-16 15:09,2012-07-16 15:09,admin,admin
866,149693,5725,23790,6841,1,0,N,N,N,CP_Drtn,TT_Task,DT_FixedDUR2,RV_OK,TK_NotStart,I138,HAZID report approval,,-32,4696,80,0,0,0,80,0,0,0,2012-07-01 08:00,,,2012-07-01 08:00,2012-07-12 16:00,,2012-07-05 08:00,2012-07-18 16:00,2012-07-05 08:00,2012-07-18 16:00,2012-07-05 08:00,2012-07-18 16:00,,2012-07-01 08:00,2012-07-12 16:00,CS_MSO,PT_Normal,,,,,s9LGeTqLfECDQFL29Zlr/Q,,,,N,0,0,,,2012-07-16 15:09,2012-07-16 15:09,admin,admin
867,149694,5725,23790,6841,1,0,N,N,N,CP_Drtn,TT_Task,DT_FixedDUR2,RV_OK,TK_NotStart,I139,Maintenance Philosophy approval,,0,4648,80,0,0,0,80,0,0,0,2012-07-15 08:00,,,2012-07-15 08:00,2012-07-26 16:00,,2012-07-15 08:00,2012-07-26 16:00,2012-07-15 08:00,2012-07-26 16:00,2012-07-15 08:00,2012-07-26 16:00,,2012-07-15 08:00,2012-07-26 16:00,CS_MSO,PT_Normal,,,,,AT2K3Q+V+kqZAdUe3iCRkw,,,,N,0,0,,,2012-07-16 15:09,2012-07-16 15:09,admin,admin
868,149695,5725,23790,6841,1,0,N,N,N,CP_Drtn,TT_Task,DT_FixedDUR2,RV_OK,TK_NotStart,I140,Guidance on Certification (GOC) approval,,0,4608,40,0,0,0,40,0,0,0,2012-07-29 08:00,,,2012-07-29 08:00,2012-08-02 16:00,,2012-07-29 08:00,2012-08-02 16:00,2012-07-29 08:00,2012-08-02 16:00,2012-07-29 08:00,2012-08-02 16:00,,2012-07-29 08:00,2012-08-02 16:00,CS_MSO,PT_Normal,,,,,cQcnzrgAp0aOTzNh0trBOw,,,,N,0,0,,,2012-07-16 15:09,2012-07-16 15:09,admin,admin
869,149696,5725,23790,6841,1,0,N,N,N,CP_Drtn,TT_Task,DT_FixedDUR2,RV_OK,TK_NotStart,I141,Project close-out framework,,0,4568,40,0,0,0,40,0,0,0,2012-08-05 08:00,,,2012-08-05 08:00,2012-08-09 16:00,,2012-08-05 08:00,2012-08-09 16:00,2012-08-05 08:00,2012-08-09 16:00,2012-08-05 08:00,2012-08-09 16:00,,2012-08-05 08:00,2012-08-09 16:00,CS_MSO,PT_Normal,,,,,0djFvXljfEut7X+zxMG0lQ,,,,N,0,0,,,2012-07-16 15:09,2012-07-16 15:09,admin,admin
870,151451,5725,23811,6841,1,0,N,N,N,CP_Drtn,TT_Task,DT_FixedDUR2,RV_OK,TK_NotStart,4229PPC170,L.C issued by Gupco,,1128,1128,40,0,0,0,40,0,0,0,,,,2013-02-18 08:00,2013-02-24 16:00,,2012-07-22 08:00,2012-07-26 16:00,2012-07-22 08:00,2012-07-26 16:00,2012-07-22 08:00,2012-07-26 16:00,,2013-02-18 08:00,2013-02-24 16:00,,PT_Normal,,,,,7HQ6UZ0He0WoUp/nqY2J7Q,OMAcK7vgQqWlnsKzB4SywA,,,N,0,0,,,2012-07-16 15:38,2012-07-16 15:38,admin,admin
871,151459,5725,23812,6841,1,0,N,N,N,CP_Drtn,TT_LOE,DT_FixedDUR2,RV_OK,TK_NotStart,4229PFV170,MRP for SDV,,1072,0,40,0,0,0,40,0,0,0,,,,2013-02-07 08:00,2013-02-13 16:00,,2012-07-22 08:00,2012-07-26 16:00,2012-07-22 08:00,2012-07-26 16:00,2012-07-22 08:00,2012-07-26 16:00,,2013-02-07 08:00,2013-02-13 16:00,,PT_Normal,,,,,hMZUbdU6l0K+RYQM2GJzdQ,yW+b6vdoTdiABNTPTmZG3Q,,,N,0,0,,,2012-07-16 15:38,2012-07-16 15:38,admin,admin
872,151464,5725,23812,6841,1,0,N,N,N,CP_Drtn,TT_Task,DT_FixedDUR2,RV_OK,TK_NotStart,4229PFV190,L.C issued by Gupco,,1072,1072,40,0,0,0,40,0,0,0,,,,2013-02-18 08:00,2013-02-24 16:00,,2012-07-31 08:00,2012-08-06 16:00,2012-07-31 08:00,2012-08-06 16:00,2012-07-31 08:00,2012-08-06 16:00,,2013-02-18 08:00,2013-02-24 16:00,,PT_Normal,,,,,71ozD/ee5Eqf0Fbzfkx6Fg,y5LsRR69QQOuwAg4V5LzDQ,,,N,0,0,,,2012-07-16 15:38,2012-07-16 15:38,admin,admin
873,151465,5725,23812,6841,1,100,N,N,N,CP_Drtn,TT_Task,DT_FixedDUR2,RV_OK,TK_Complete,4229PFV100,Issue RFQ for SDV,,,,0,0,0,0,16,0,0,0,,2012-05-06 00:00,2012-05-07 16:00,2012-07-01 08:00,2012-07-01 08:00,,2012-06-30 00:00,2012-06-30 00:00,,,2012-04-29 08:00,2012-04-30 16:00,,,,,PT_Normal,,,,,sWuxqCvF20iZ6WtQ+ggIfQ,DZgy5C57TmGeuXtV8stk7g,,,Y,0,0,,,2012-07-16 15:38,2012-07-16 15:38,admin,admin
874,151467,5725,23812,6841,1,0,N,N,N,CP_Drtn,TT_Task,DT_FixedDUR2,RV_OK,TK_Active,4229PFV140,Commercial evaluation & bid committee for SDV,,0,0,88,0,0,0,80,0,0,0,,2012-06-28 00:00,,2012-07-01 08:00,2012-07-15 16:00,,2012-07-01 08:00,2012-07-15 16:00,2012-07-01 08:00,2012-07-15 16:00,2012-07-08 08:00,2012-07-19 16:00,,2012-07-01 08:00,2012-07-15 16:00,,PT_Normal,,,1,1,0Mh08bduNEupIQ/djlFG9A,LYMQdgR7RxyEuAULuvCsww,,,Y,0,0,,,2012-07-16 15:38,2012-07-16 15:38,admin,admin
875,151468,5725,23812,6841,1,0,N,N,N,CP_Drtn,TT_Task,DT_FixedDUR2,RV_OK,TK_NotStart,4229PFV160,F.O.C for SDV,,0,0,16,0,0,0,16,0,0,0,,,,2012-07-18 08:00,2012-07-19 16:00,,2012-07-18 08:00,2012-07-19 16:00,2012-07-18 08:00,2012-07-19 16:00,2012-07-18 08:00,2012-07-19 16:00,,2012-07-18 08:00,2012-07-19 16:00,,PT_Normal,,,1,3,RSyO2OO2lE2JAhby89wgrg,JlpKpXEVTleuOfYGVnTtSQ,,,Y,0,0,,,2012-07-16 15:38,2012-07-16 15:38,admin,admin
876,151469,5725,23812,6841,1,0,N,N,N,CP_Drtn,TT_Task,DT_FixedDUR2,RV_OK,TK_NotStart,4229PFV180,P.O for SDV,,1072,0,16,0,0,0,16,0,0,0,,,,2013-02-14 08:00,2013-02-17 16:00,,2012-07-29 08:00,2012-07-30 16:00,2012-07-29 08:00,2012-07-30 16:00,2012-07-29 08:00,2012-07-30 16:00,,2013-02-14 08:00,2013-02-17 16:00,,PT_Normal,,,,,c4k+JRKDqEiBdiT6VBwtTQ,Q6pu6xH4QJWG7K0B3PCRfg,,,N,0,0,,,2012-07-16 15:38,2012-07-16 15:38,admin,admin
877,151470,5725,23812,6841,1,100,N,N,N,CP_Drtn,TT_LOE,DT_FixedDUR2,RV_OK,TK_Complete,4229PFV120,T.E.R for SDV,,,,0,0,0,0,80,0,0,0,,2012-05-27 00:00,2012-06-25 00:00,,,,,,,,2012-05-27 08:00,2012-06-07 16:00,,,,,PT_Normal,,,,,0OkHIzJcbEWVcyn8nCjvfA,95OuTWdmTci9yjKVo77sOQ,,,N,0,0,,,2012-07-16 15:38,2012-07-16 15:38,admin,admin
878,151473,5725,23813,6841,1,0,N,N,N,CP_Drtn,TT_Task,DT_FixedDUR2,RV_OK,TK_NotStart,4229PAP190,L.C issued by Gupco,,1008,1008,40,0,0,0,40,0,0,0,,,,2013-02-18 08:00,2013-02-24 16:00,,2012-08-12 08:00,2012-08-16 16:00,2012-08-12 08:00,2012-08-16 16:00,2012-08-12 08:00,2012-08-16 16:00,,2013-02-18 08:00,2013-02-24 16:00,,PT_Normal,,,,,1s0DRMf+20O5Jr4JD5M2eg,EMf+ksWjTcGuMuIbswsUsQ,,,N,0,0,,,2012-07-16 15:38,2012-07-16 15:38,admin,admin
879,151476,5725,23813,6841,1,100,N,N,N,CP_Drtn,TT_Task,DT_FixedDUR2,RV_OK,TK_Complete,4229PAP100,Issue RFQ for Piping bulk,,,,0,0,0,0,16,0,0,0,,2012-05-15 00:00,2012-05-16 16:00,2012-11-13 08:00,2012-11-13 08:00,,2012-06-30 00:00,2012-06-30 00:00,,,2012-04-29 08:00,2012-04-30 16:00,,,,,PT_Normal,,,,,3KNM5xn3JUG6g5CGke8XTg,6KlRPzYwSm21oBDABhlikw,,,N,0,0,,,2012-07-16 15:38,2012-07-16 15:38,admin,admin
880,151477,5725,23813,6841,1,0,N,N,N,CP_Drtn,TT_LOE,DT_FixedDUR2,RV_OK,TK_NotStart,4229PAP170,MRP for Piping bulk,,1008,0,40,0,0,0,40,0,0,0,,,,2013-02-07 08:00,2013-02-13 16:00,,2012-08-01 08:00,2012-08-07 16:00,2012-08-01 08:00,2012-08-07 16:00,2012-08-01 08:00,2012-08-07 16:00,,2013-02-07 08:00,2013-02-13 16:00,,PT_Normal,,,,,GLTedz9d+kuSxuxqDRU3LA,JsEiLB/fSHyyIe88IaN4EA,,,N,0,0,,,2012-07-16 15:38,2012-07-16 15:38,admin,admin
881,151479,5725,23813,6841,1,0,N,N,N,CP_Drtn,TT_Task,DT_FixedDUR2,RV_OK,TK_NotStart,4229PAP140,commercial evaluation & bid committee for Piping bulk,,696,0,96,0,0,0,96,0,0,0,,,,2012-11-21 08:00,2012-12-06 16:00,,2012-07-09 08:00,2012-07-24 16:00,2012-07-09 08:00,2012-07-24 16:00,2012-07-09 08:00,2012-07-24 16:00,,2012-11-21 08:00,2012-12-06 16:00,,PT_Normal,,,,,XtfCzCfVDUqn07o5F5AoHA,dwbiupqaT4OV78e3gkBdLA,,,N,0,0,,,2012-07-16 15:38,2012-07-16 15:38,admin,admin
882,151480,5725,23813,6841,1,0,N,N,N,CP_Drtn,TT_Task,DT_FixedDUR2,RV_OK,TK_NotStart,4229PAP160,F.O.C for Piping bulk,,696,0,24,0,0,0,24,0,0,0,,,,2012-12-11 08:00,2012-12-13 16:00,,2012-07-29 08:00,2012-07-31 16:00,2012-07-29 08:00,2012-07-31 16:00,2012-07-29 08:00,2012-07-31 16:00,,2012-12-11 08:00,2012-12-13 16:00,,PT_Normal,,,,,3vi8GFhv2kKTqBni81g4Iw,ZznbW4I5TQyz/MkfaaZZPQ,,,N,0,0,,,2012-07-16 15:38,2012-07-16 15:38,admin,admin
883,151481,5725,23813,6841,1,0,N,N,N,CP_Drtn,TT_Task,DT_FixedDUR2,RV_OK,TK_NotStart,4229PAP180,P.O for Piping bulk,,1008,0,16,0,0,0,16,0,0,0,,,,2013-02-14 08:00,2013-02-17 16:00,,2012-08-08 08:00,2012-08-09 16:00,2012-08-08 08:00,2012-08-09 16:00,2012-08-08 08:00,2012-08-09 16:00,,2013-02-14 08:00,2013-02-17 16:00,,PT_Normal,,,,,YHSDbFsC6kKWZVdUoFK8Dw,SKWwrxukTLi+Xg4zfSINFg,,,N,0,0,,,2012-07-16 15:38,2012-07-16 15:38,admin,admin
884,151493,5725,23819,6841,1,100,N,N,N,CP_Drtn,TT_Task,DT_FixedDUR2,RV_OK,TK_Complete,4229PBV60,Client approval on bid committee reccomendation,,,,0,0,0,0,16,0,0,0,,2012-03-27 00:00,2012-04-03 16:00,2012-11-20 08:00,2012-11-20 08:00,,2012-06-30 00:00,2012-06-30 00:00,,,2012-04-01 08:00,2012-04-02 16:00,,,,,PT_Normal,,,,,O07wdnw7LEWDz+SVo0mbzw,eO33vFhRRgGwJlaL3fIMBQ,,,N,0,0,,,2012-07-16 15:38,2012-07-16 15:38,admin,admin
885,151495,5725,23819,6841,1,100,N,N,N,CP_Drtn,TT_LOE,DT_FixedDrtn,RV_OK,TK_Complete,4229PBV30,T.E.R for Piping Ball Valves,,,,0,0,0,0,96,0,0,0,,2012-01-12 00:00,2012-02-13 00:00,,,,,,,,2012-01-15 08:00,2012-01-31 16:00,,,,,PT_Normal,,,,,UXrtmDInrEmBmwBKQbvsZA,HUjbjFE3S0+4svMQFDJBpw,,,N,0,0,,,2012-07-16 15:38,2012-07-16 15:38,admin,admin
886,151496,5725,23819,6841,1,100,N,N,N,CP_Drtn,TT_LOE,DT_FixedDUR2,RV_OK,TK_Complete,4229PBV80,MRP for Piping Ball Valves,,,,0,0,0,0,32,0,0,0,,2012-04-08 08:00,2012-04-12 00:00,,,,,,,,2012-04-08 08:00,2012-04-11 16:00,,,,,PT_Normal,,,,,6uzJ/aDW80qLq/bdzEYpLQ,DBlm3vcAQ5OplCZIzFE2Eg,,,N,0,0,,,2012-07-16 15:38,2012-07-16 15:38,admin,admin
887,151498,5725,23799,6841,1,100,N,N,N,CP_Drtn,TT_Task,DT_FixedDUR2,RV_OK,TK_Complete,4229PSG30,Receive revised commercial offers,,,,0,0,0,0,40,0,0,0,,2012-01-16 00:00,2012-01-30 00:00,2012-07-29 08:00,2012-07-29 08:00,,2012-06-30 00:00,2012-06-30 00:00,,,2012-01-10 08:00,2012-01-16 16:00,,,,,PT_Normal,,,,,s/JquuRpnk+03ay21BpnSQ,rsbY6IPE9Ey3ZU3ZNeLLVg,,,N,0,0,,,2012-07-16 15:38,2012-07-16 15:38,admin,admin
888,151499,5725,23799,6841,1,100,N,N,N,CP_Drtn,TT_Task,DT_FixedDUR2,RV_OK,TK_Complete,4229PSG50,Client approval on bid committee reccomendation,,,,0,0,0,0,16,0,0,0,,2012-02-29 00:00,2012-03-11 00:00,2012-07-29 08:00,2012-07-29 08:00,,2012-06-30 00:00,2012-06-30 00:00,,,2012-03-06 08:00,2012-03-07 16:00,,,,,PT_Normal,,,,,LVNrw9BjOky2VqDi+fm/uw,iKP7vyvUVkGYjFWGXsYtWw,,,N,0,0,,,2012-07-16 15:38,2012-07-16 15:38,admin,admin
889,151507,5725,23799,6841,1,100,N,N,N,CP_Drtn,TT_LOE,DT_FixedDUR2,RV_OK,TK_Complete,4229PSG25,T.E.R for  SGS,,,,0,0,0,0,200,0,0,0,,2011-09-28 08:00,2012-01-16 00:00,,,,,,,,2011-09-28 08:00,2011-11-02 16:00,,,,,PT_Normal,,,,,0A67P/UuSkS6ihnSc2ecGg,vXpc3RMask+39YuXt2zsqw,,,N,0,0,,,2012-07-16 15:38,2012-07-16 15:38,admin,admin
890,151508,5725,23799,6841,1,100,N,N,N,CP_Drtn,TT_LOE,DT_FixedDUR2,RV_OK,TK_Complete,4229PSG65,MRP for SGS,,,,0,0,0,0,40,0,0,0,,2012-03-08 08:00,2012-05-08 16:00,,,,,,,,2012-03-08 08:00,2012-03-14 16:00,,,,,PT_Normal,,,,,QgPECXNiQkepteDnKzIGrA,rUARi0MZeUWCfJu72L1JvQ,,,N,0,0,,,2012-07-16 15:38,2012-07-16 15:38,admin,admin
891,151512,5725,23800,6841,1,100,N,N,N,CP_Drtn,TT_LOE,DT_FixedDUR2,RV_OK,TK_Complete,4229PVE25,T.E.R for pressure vessels,,,,0,0,0,0,160,0,0,0,,2011-12-15 00:00,2012-02-20 00:00,,,,,,,,2011-12-11 08:00,2012-01-05 16:00,,,,,PT_Normal,,,,,98R6RjeuV0+BbxsqqiKktQ,TS5Hs2NeCUKGVdf9bmhFig,,,N,0,0,,,2012-07-16 15:38,2012-07-16 15:38,admin,admin
892,151515,5725,23800,6841,1,100,N,N,N,CP_Drtn,TT_Task,DT_FixedDUR2,RV_OK,TK_Complete,4229PVE30,Receive revised commercial offers,,,,0,0,0,0,40,0,0,0,,2012-02-21 00:00,2012-02-27 00:00,2012-07-29 08:00,2012-07-29 08:00,,2012-06-30 00:00,2012-06-30 00:00,,,2012-03-04 08:00,2012-03-08 16:00,,,,,PT_Normal,,,,,/dmS6A9GGkKWqR0ByVTs+g,rsbY6IPE9Ey3ZU3ZNeLLVg,,,N,0,0,,,2012-07-16 15:38,2012-07-16 15:38,admin,admin
893,151516,5725,23800,6841,1,100,N,N,N,CP_Drtn,TT_Task,DT_FixedDUR2,RV_OK,TK_Complete,4229PVE50,Client approval on bid committee reccommendation,,,,0,0,0,0,16,0,0,0,,2012-03-19 00:00,2012-03-19 00:00,2012-07-29 08:00,2012-07-29 08:00,,2012-06-30 00:00,2012-06-30 00:00,,,2012-04-15 08:00,2012-04-16 16:00,,,,,PT_Normal,,,,,Bi0Xs+lSVki9dGfw39r7Ww,iKP7vyvUVkGYjFWGXsYtWw,,,N,0,0,,,2012-07-16 15:38,2012-07-16 15:38,admin,admin
894,151517,5725,23800,6841,1,0,N,N,N,CP_Drtn,TT_Task,DT_FixedDUR2,RV_OK,TK_NotStart,4229PVE80,L.C issued by Gupco,,160,0,40,0,0,0,40,0,0,0,,,,2012-07-29 08:00,2012-08-02 16:00,,2012-07-01 08:00,2012-07-05 16:00,2012-07-01 08:00,2012-07-05 16:00,2012-07-01 08:00,2012-07-05 16:00,,2012-07-29 08:00,2012-08-02 16:00,,PT_Normal,,,,,3GjnJJHaCU6PjBlu/kOwpg,/xqtBKQ3QEuTmEP+B+vEag,,,N,0,0,,,2012-07-16 15:38,2012-07-16 15:38,admin,admin
895,151520,5725,23800,6841,1,100,N,N,N,CP_Drtn,TT_LOE,DT_FixedDUR2,RV_OK,TK_Complete,4229PVE65,MRP for  K.O drum,,,,0,0,0,0,16,0,0,0,,2012-03-21 08:00,2012-03-25 00:00,,,,,,,,2012-03-21 08:00,2012-03-22 16:00,,,,,PT_Normal,,,,,5A8yPUYYoEay2vC6svdRxA,DIoV5T8jvEStrhTR29QXhQ,,,N,0,0,,,2012-07-16 15:38,2012-07-16 15:38,admin,admin
896,151522,5725,23803,6841,1,100,N,N,N,CP_Drtn,TT_Task,DT_FixedDUR2,RV_OK,TK_Complete,4229PTA30,Receive revised commercial offers,,,,0,0,0,0,40,0,0,0,,2011-12-29 00:00,2012-01-05 00:00,2012-08-05 08:00,2012-08-05 08:00,,2012-06-30 00:00,2012-06-30 00:00,,,2012-01-01 08:00,2012-01-05 16:00,,,,,PT_Normal,,,,,qzHIjWuDrUGTlPlxhNI13A,rsbY6IPE9Ey3ZU3ZNeLLVg,,,N,0,0,,,2012-07-16 15:38,2012-07-16 15:38,admin,admin
897,151523,5725,23803,6841,1,100,N,N,N,CP_Drtn,TT_Task,DT_FixedDUR2,RV_OK,TK_Complete,4229PTA50,Client approval on bid committee reccomendation,,,,0,0,0,0,16,0,0,0,,2012-03-03 00:00,2012-03-03 00:00,2012-08-05 08:00,2012-08-05 08:00,,2012-06-30 00:00,2012-06-30 00:00,,,2012-03-11 08:00,2012-03-12 16:00,,,,,PT_Normal,,,,,JuaDnn5WgU62SIaZ8Df8dg,iKP7vyvUVkGYjFWGXsYtWw,,,N,0,0,,,2012-07-16 15:38,2012-07-16 15:38,admin,admin
898,151530,5725,23803,6841,1,100,N,N,N,CP_Drtn,TT_LOE,DT_FixedDUR2,RV_OK,TK_Complete,4229PTA25,T.E.R for  tanks,,,,0,0,0,0,160,0,0,0,,2011-11-24 00:00,2011-12-29 00:00,,,,,,,,2011-12-04 08:00,2011-12-29 16:00,,,,,PT_Normal,,,,,WdFFbQ2ZFEuId2inWkGUNg,J+3VSORnYEKgQCu4Mr4NFw,,,N,0,0,,,2012-07-16 15:38,2012-07-16 15:38,admin,admin
899,151532,5725,23803,6841,1,100,N,N,N,CP_Drtn,TT_LOE,DT_FixedDUR2,RV_OK,TK_Complete,4229PTA65,MRP for tanks,,,,0,0,0,0,40,0,0,0,,2012-03-01 00:00,2012-03-03 00:00,,,,,,,,2012-03-18 08:00,2012-03-22 16:00,,,,,PT_Normal,,,,,wGBbiAPim0OrdNjGmQSx0g,pGi7uaR4ukGkLPQ1Hd56lg,,,N,0,0,,,2012-07-16 15:38,2012-07-16 15:38,admin,admin
900,151536,5725,23804,6841,1,100,N,N,N,CP_Drtn,TT_Task,DT_FixedDUR2,RV_OK,TK_Complete,4229PPL70,Client approval on bid committee reccomendation,,,,0,0,0,0,16,0,0,0,,2012-02-13 00:00,2012-02-19 00:00,2013-01-17 08:00,2013-01-17 08:00,,2012-06-30 00:00,2012-06-30 00:00,,,2012-03-20 08:00,2012-03-21 16:00,,,,,PT_Normal,,,,,U5fJ8ETF10ShpmHMuzHGFQ,p64Nr72NTx+uaiuhKYMg/w,,,N,0,0,,,2012-07-16 15:38,2012-07-16 15:38,admin,admin
901,151543,5725,23804,6841,1,100,N,N,N,CP_Drtn,TT_LOE,DT_FixedDUR2,RV_OK,TK_Complete,4229PPL15,"T.E.R for 8""""line pipe",,,,0,0,0,0,231,0,0,0,,2011-11-22 00:00,2012-01-08 16:00,,,,,,,,2012-01-22 08:00,2012-03-01 15:00,,,,,PT_Normal,,,,,uF/NgzphqEKm+4ZMsvUjVQ,7uF5bGdtl0SfRYxvT5GJ0w,,,N,0,0,,,2012-07-16 15:38,2012-07-16 15:38,admin,admin
902,151544,5725,23804,6841,1,100,N,N,N,CP_Drtn,TT_LOE,DT_FixedDUR2,RV_OK,TK_Complete,4229PPL65,"MRP for 8"""" pipeline",,,,0,0,0,0,40,0,0,0,,2012-02-21 00:00,2012-02-26 00:00,,,,,,,,2012-03-04 08:00,2012-03-08 16:00,,,,,PT_Normal,,,,,lkj+e/p0KEmbv3SkHJe3ZQ,J/NOEfck6UScfk4m4xI+Hw,,,N,0,0,,,2012-07-16 15:38,2012-07-16 15:38,admin,admin
903,151545,5725,23801,6841,1,100,N,N,N,CP_Drtn,TT_LOE,DT_FixedDUR2,RV_OK,TK_Complete,4229PKR25,T.E.R for kamos ring,,,,0,0,0,0,151,0,0,0,,2011-11-13 00:00,2011-11-20 00:00,,,,,,,,2011-12-04 08:00,2011-12-28 15:00,,,,,PT_Normal,,,,,no2h6oXgtUWqoreYB05aYQ,VIXmqmrRAE6RPd+GoKSRMQ,,,N,0,0,,,2012-07-16 15:38,2012-07-16 15:38,admin,admin
904,151546,5725,23801,6841,1,100,N,N,N,CP_Drtn,TT_LOE,DT_FixedDUR2,RV_OK,TK_Complete,4229PKR65,MRP for kamos ring,,,,0,0,0,0,40,0,0,0,,2011-12-21 00:00,2011-12-26 00:00,,,,,,,,2012-01-08 08:00,2012-01-12 16:00,,,,,PT_Normal,,,,,Tx0za+e5lky5SvFEHGhc0g,AmLZVJIw7EqS3cFL1qtY5Q,,,N,0,0,,,2012-07-16 15:38,2012-07-16 15:38,admin,admin
905,151556,5725,23801,6841,1,100,N,N,N,CP_Drtn,TT_Task,DT_FixedDUR2,RV_OK,TK_Complete,4229PKR50,Client approval on bid committee reccomendation,,,,0,0,0,0,16,0,0,0,,2011-12-07 00:00,2011-12-11 00:00,2013-02-24 16:00,2013-02-24 16:00,,2012-06-30 00:00,2012-06-30 00:00,,,2012-01-01 08:00,2012-01-02 16:00,,,,,PT_Normal,,,,,m/Zsz+rfy0WaULRGWb47ZA,mQau4KbKWE2qc5jKaiAg/A,,,N,0,0,,,2012-07-16 15:38,2012-07-16 15:38,admin,admin
906,151557,5725,23802,6841,1,100,N,N,N,CP_Drtn,TT_LOE,DT_FixedDUR2,RV_OK,TK_Complete,4229PAF65,MRP for anchor flanges,,,,0,0,0,0,40,0,0,0,,2012-02-14 00:00,2012-02-28 00:00,,,,,,,,2012-03-04 08:00,2012-03-08 16:00,,,,,PT_Normal,,,,,Us6lFIswV0qZyYIprF/bJw,Pdlj45l+qUqauuzEbIoH+w,,,N,0,0,,,2012-07-16 15:38,2012-07-16 15:38,admin,admin
907,151558,5725,23802,6841,1,100,N,N,N,CP_Drtn,TT_LOE,DT_FixedDUR2,RV_OK,TK_Complete,4229PAF25,T.E.R for anchor flanges,,,,0,0,0,0,120,0,0,0,,2011-12-06 08:00,2012-01-05 16:00,,,,,,,,2011-12-06 08:00,2011-12-26 16:00,,,,,PT_Normal,,,,,csRFFpbrDUmApXa2QFAM7Q,KcMGieJ0zEOkCUsRzSRnVg,,,N,0,0,,,2012-07-16 15:38,2012-07-16 15:38,admin,admin
908,151559,5725,23802,6841,1,100,N,N,N,CP_Drtn,TT_Task,DT_FixedDUR2,RV_OK,TK_Complete,4229PAF50,Client approval on bid committee reccomendation,,,,0,0,0,0,16,0,0,0,,2012-02-07 00:00,2012-02-09 00:00,2013-02-03 08:00,2013-02-03 08:00,,2012-06-30 00:00,2012-06-30 00:00,,,2012-03-18 08:00,2012-03-19 16:00,,,,,PT_Normal,,,,,Ti7SnlvkaEa4pKb0nKVckA,HhBbqT7mmkq6ky9/qu9Xrw,,,N,0,0,,,2012-07-16 15:38,2012-07-16 15:38,admin,admin
909,151567,5725,23802,6843,1,0,N,N,N,CP_Drtn,TT_Task,DT_FixedDUR2,RV_OK,TK_Active,4229PAF100,Delivery upto site,,1752,0,136,0,0,0,240,0,0,0,,2012-05-18 00:00,,2013-02-08 08:00,2013-02-24 16:00,2012-07-22 16:00,2012-07-06 08:00,2012-07-22 16:00,2012-07-06 08:00,2012-07-22 16:00,2012-06-08 08:00,2012-07-07 16:00,,2013-02-08 08:00,2013-02-24 16:00,,PT_Normal,,,,,i9AM/34Jek2vHGfxB5y8eA,oyg01drvjUGu7ia9nCu4jQ,,,N,0,0,,,2012-07-16 15:38,2012-07-16 15:38,admin,admin
910,151574,5725,23808,6841,1,100,N,N,N,CP_Drtn,TT_Task,DT_FixedDUR2,RV_OK,TK_Complete,4229PIJ50,Client approval on bid committee reccomendation,,,,0,0,0,0,16,0,0,0,,2011-12-22 00:00,2012-01-03 00:00,2013-02-24 16:00,2013-02-24 16:00,,2012-06-30 00:00,2012-06-30 00:00,,,2012-01-03 08:00,2012-01-04 16:00,,,,,PT_Normal,,,,,TA0pqSD8Zku/4QrVoEuCaA,q/oN1VQYJ0i3Kec9Fshb9w,,,N,0,0,,,2012-07-16 15:38,2012-07-16 15:38,admin,admin
911,151578,5725,23808,6841,1,100,N,N,N,CP_Drtn,TT_LOE,DT_FixedDUR2,RV_OK,TK_Complete,4229PIJ25,T.E.R for isolating joints,,,,0,0,0,0,151,0,0,0,,2011-11-13 00:00,2011-12-08 00:00,,,,,,,,2011-12-04 08:00,2011-12-28 15:00,,,,,PT_Normal,,,,,JTvaof4oWUuOpsuZDbyCHA,/RPpbpU2kkufsg8WhrxLvg,,,N,0,0,,,2012-07-16 15:38,2012-07-16 15:38,admin,admin
912,151579,5725,23808,6841,1,100,N,N,N,CP_Drtn,TT_LOE,DT_FixedDUR2,RV_OK,TK_Complete,4229PIJ65,MRP for isolating joints,,,,0,0,0,0,32,0,0,0,,2012-01-24 00:00,2012-01-31 00:00,,,,,,,,2012-01-29 08:00,2012-02-01 16:00,,,,,PT_Normal,,,,,7omPOOY63USPqPYogz7TfA,Vx9as0BmD0SZpsBNAJdc+g,,,N,0,0,,,2012-07-16 15:38,2012-07-16 15:38,admin,admin
913,151585,5725,23809,6841,1,100,N,N,N,CP_Drtn,TT_Task,DT_FixedDUR2,RV_OK,TK_Complete,4229PHS50,Client approval on bid committee reccomendation,,,,0,0,0,0,16,0,0,0,,2011-12-22 00:00,2012-01-03 00:00,2013-02-24 16:00,2013-02-24 16:00,,2012-06-30 00:00,2012-06-30 00:00,,,2012-01-01 08:00,2012-01-02 16:00,,,,,PT_Normal,,,,,62gT7NQnY0u/y57j93V8ng,iiL5R/hBgECY7+6p+U01Gg,,,N,0,0,,,2012-07-16 15:38,2012-07-16 15:38,admin,admin
914,151590,5725,23809,6841,1,100,N,N,N,CP_Drtn,TT_LOE,DT_FixedDUR2,RV_OK,TK_Complete,4229PHS25,T.E.R for heat shrink sleeves,,,,0,0,0,0,151,0,0,0,,2011-11-03 00:00,2011-12-05 00:00,,,,,,,,2011-12-04 08:00,2011-12-28 15:00,,,,,PT_Normal,,,,,Cefr3c+oPEu0SlslFT0/wA,TRfzN9uTK0OCBl07/0dyfg,,,N,0,0,,,2012-07-16 15:38,2012-07-16 15:38,admin,admin
915,151591,5725,23809,6841,1,100,N,N,N,CP_Drtn,TT_LOE,DT_FixedDUR2,RV_OK,TK_Complete,4229PHS65,MRP for heat shrink sleeves,,,,0,0,0,0,40,0,0,0,,2012-01-24 08:00,2012-01-30 16:00,,,,,,,,2012-01-29 08:00,2012-02-02 16:00,,,,,PT_Normal,,,,,1U7g8i23aUSfDezRqTpJ+w,5Z/xpS+fjESkAsXx92SJWw,,,N,0,0,,,2012-07-16 15:38,2012-07-16 15:38,admin,admin
916,151597,5725,23810,6841,1,100,N,N,N,CP_Drtn,TT_Task,DT_FixedDUR2,RV_OK,TK_Complete,4229PFL50,Client approval on bid committee reccomendation,,,,0,0,0,0,16,0,0,0,,2012-02-20 08:00,2012-02-21 16:00,2013-01-26 08:00,2013-01-26 08:00,,2012-06-30 00:00,2012-06-30 00:00,,,2012-02-20 08:00,2012-02-21 16:00,,,,,PT_Normal,,,,,hrSkYrk26UeMw9JGnaNxRw,9aPvfqhTw0CEwcjlUgOBWQ,,,N,0,0,,,2012-07-16 15:38,2012-07-16 15:38,admin,admin
917,151598,5725,23810,6841,1,0,N,N,N,CP_Drtn,TT_Task,DT_FixedDUR2,RV_OK,TK_NotStart,4229PFL80,L.C issued by Gupco,,1248,1248,40,0,0,0,40,0,0,0,,,,2013-02-18 08:00,2013-02-24 16:00,,2012-07-01 08:00,2012-07-05 16:00,2012-07-01 08:00,2012-07-05 16:00,2012-07-01 08:00,2012-07-05 16:00,,2013-02-18 08:00,2013-02-24 16:00,,PT_Normal,,,,,neckbQ90R0+JoHX82jAG+g,hju/Z6YvvEKo5Cmbi1YfHw,,,N,0,0,,,2012-07-16 15:38,2012-07-16 15:38,admin,admin
918,151602,5725,23810,6841,1,100,N,N,N,CP_Drtn,TT_LOE,DT_FixedDUR2,RV_OK,TK_Complete,4229PFL25,T.E.R for flanges,,,,0,0,0,0,160,0,0,0,,2011-12-01 00:00,2012-01-18 16:00,,,,,,,,2011-12-05 08:00,2012-01-01 16:00,,,,,PT_Normal,,,,,fvgaz7zNWUaOnHofHSJa4Q,BTZdt/eNwkmTxOsXDtwf+A,,,N,0,0,,,2012-07-16 15:38,2012-07-16 15:38,admin,admin
919,151603,5725,23810,6841,1,100,N,N,N,CP_Drtn,TT_LOE,DT_FixedDUR2,RV_OK,TK_Complete,4229PFL65,MRP for flanges,,,,0,0,0,0,16,0,0,0,,2012-02-26 00:00,2012-02-27 00:00,,,,,,,,2012-03-07 08:00,2012-03-08 16:00,,,,,PT_Normal,,,,,Z5y62lc9tE+s9dJ+Qqbq3w,rb1Bo9MPykqNAoF60pqpMA,,,N,0,0,,,2012-07-16 15:38,2012-07-16 15:38,admin,admin
920,151608,5725,23806,6841,1,100,N,N,N,CP_Drtn,TT_Task,DT_FixedDUR2,RV_OK,TK_Complete,4229PHB60,Client approval on bid committee reccomendation,,,,0,0,0,0,16,0,0,0,,2012-01-26 08:00,2012-01-31 00:00,2012-12-02 08:00,2012-12-02 08:00,,2012-06-30 00:00,2012-06-30 00:00,,,2012-01-26 08:00,2012-01-29 16:00,,,,,PT_Normal,,,,,2mrYKowvUECwtF2QtF9gqg,Yu1MLBBnZka81lvnYU4ANQ,,,N,0,0,,,2012-07-16 15:38,2012-07-16 15:38,admin,admin
921,151610,5725,23806,6841,1,0,N,N,N,CP_Drtn,TT_Task,DT_FixedDUR2,RV_OK,TK_NotStart,4229PHB90,L.C issued by Gupco,,800,0,40,0,0,0,40,0,0,0,,,,2012-12-02 08:00,2012-12-06 16:00,,2012-07-01 08:00,2012-07-05 16:00,2012-07-01 08:00,2012-07-05 16:00,2012-07-01 08:00,2012-07-05 16:00,,2012-12-02 08:00,2012-12-06 16:00,,PT_Normal,,,,,AvzQVIBlyECaHKO6mb52BA,3KZie4yXhUOEEKBN+gqN0g,,,N,0,0,,,2012-07-16 15:38,2012-07-16 15:38,admin,admin
922,151614,5725,23806,6841,1,100,N,N,N,CP_Drtn,TT_LOE,DT_FixedDUR2,RV_OK,TK_Complete,4229PHB25,T.E.R for hot bends,,,,0,0,0,0,207,0,0,0,,2011-10-30 00:00,2011-12-08 00:00,,,,,,,,2011-12-04 08:00,2012-01-08 15:00,,,,,PT_Normal,,,,,Q96dyESOO0CC/rUU0Nc7vQ,3s1TUShvtEibPzUOH/ko9w,,,N,0,0,,,2012-07-16 15:38,2012-07-16 15:38,admin,admin
923,151615,5725,23806,6841,1,100,N,N,N,CP_Drtn,TT_LOE,DT_FixedDUR2,RV_OK,TK_Complete,4229PHB65,MRP for hot bends,,,,0,0,0,0,48,0,0,0,,2012-02-09 00:00,2012-02-19 00:00,,,,,,,,2012-02-09 08:00,2012-02-16 16:00,,,,,PT_Normal,,,,,hQ7nJXorR0qlhxVU3bbd9Q,ihnfO4Deq028lkj8sUs7ag,,,N,0,0,,,2012-07-16 15:38,2012-07-16 15:38,admin,admin
924,151616,5725,23807,6841,1,0,N,N,N,CP_Drtn,TT_Task,DT_FixedDUR2,RV_OK,TK_NotStart,4229PFG55,L.C issued by Gupco,,912,0,40,0,0,0,40,0,0,0,,,,2012-12-20 08:00,2012-12-26 16:00,,2012-07-01 08:00,2012-07-05 16:00,2012-07-01 08:00,2012-07-05 16:00,2012-07-01 08:00,2012-07-05 16:00,,2012-12-20 08:00,2012-12-26 16:00,,PT_Normal,,,,,9CV9UdUzrE6mwI35sPww8Q,hw+Nv+hAEEyyL9o5y71GIw,,,N,0,0,,,2012-07-16 15:38,2012-07-16 15:38,admin,admin
925,151618,5725,23807,6842,1,100,N,N,N,CP_Drtn,TT_Task,DT_FixedDUR2,RV_OK,TK_Complete,4229PFG15,Bidding Fire & gas detectors,,,,0,0,0,0,136,0,0,0,,2012-01-11 00:00,2012-02-26 00:00,2012-12-20 08:00,2012-12-20 08:00,,2012-06-30 00:00,2012-06-30 00:00,,,2012-03-03 08:00,2012-03-19 16:00,,,,,PT_Normal,,,,,v4Qczx3FoU2TUuQubNNsGg,ZLRqpsT2cUyA6ivDGm5BOw,,,N,0,0,,,2012-07-16 15:38,2012-07-16 15:38,admin,admin
926,151619,5725,23807,6841,1,100,N,N,N,CP_Drtn,TT_Task,DT_FixedDUR2,RV_OK,TK_Complete,4229PFG30,commercial evaluation & bid committee for Fire & gas detectors,,,,0,0,0,0,80,0,0,0,,2012-05-10 00:00,2012-05-13 00:00,2012-12-20 08:00,2012-12-20 08:00,,2012-06-30 00:00,2012-06-30 00:00,,,2012-05-06 08:00,2012-05-17 16:00,,,,,PT_Normal,,,,,1nOo4uhxKkWDg4qmczoe2w,SAfIDt5wDEGyLL3ednrvHw,,,N,0,0,,,2012-07-16 15:38,2012-07-16 15:38,admin,admin
927,151621,5725,23807,6841,1,100,N,N,N,CP_Drtn,TT_Task,DT_FixedDUR2,RV_OK,TK_Complete,4229PFG50,P.O for Fire & gas detectors,,,,0,0,0,0,40,0,0,0,,2012-06-03 00:00,2012-06-05 00:00,2012-12-20 08:00,2012-12-20 08:00,,2012-06-30 00:00,2012-06-30 00:00,,,2012-07-01 08:00,2012-07-05 16:00,,,,,PT_Normal,,,,,HHyD1osDhkyQj7JCQO5A1g,xCFTiS4W2U+/+XFLdoJJQA,,,N,0,0,,,2012-07-16 15:38,2012-07-16 15:38,admin,admin
928,151623,5725,23807,6843,1,0,N,N,N,CP_Drtn,TT_Task,DT_FixedDUR2,RV_OK,TK_NotStart,4229PFG65,Delivery upto site,,1392,1392,80,0,0,0,80,0,0,0,,,,2013-02-15 08:00,2013-02-24 16:00,,2012-08-27 08:00,2012-09-05 16:00,2012-08-27 08:00,2012-09-05 16:00,2012-08-27 08:00,2012-09-05 16:00,,2013-02-15 08:00,2013-02-24 16:00,,PT_Normal,,,,,eY2Yy/vb3kib6CZVf7zNrA,AeL1dzhtuEiobz3qEBUY4w,,,N,0,0,,,2012-07-16 15:38,2012-07-16 15:38,admin,admin
929,151624,5725,23807,6841,1,100,N,N,N,CP_Drtn,TT_Task,DT_FixedDUR2,RV_OK,TK_Complete,4229PFG25,Receive revised commercial offers,,,,0,0,0,0,40,0,0,0,,2012-05-06 00:00,2012-05-10 00:00,2012-12-20 08:00,2012-12-20 08:00,,2012-06-30 00:00,2012-06-30 00:00,,,2012-04-29 08:00,2012-05-03 16:00,,,,,PT_Normal,,,,,2IWBSu6sKkurAMJR1cU5JA,eoWA/lEUcEC05WYtMGhXTA,,,N,0,0,,,2012-07-16 15:38,2012-07-16 15:38,admin,admin
930,151625,5725,23807,6841,1,100,N,N,N,CP_Drtn,TT_Task,DT_FixedDUR2,RV_OK,TK_Complete,4229PFG35,Client approval on bid committee reccomendation,,,,0,0,0,0,16,0,0,0,,2012-05-14 00:00,2012-05-16 00:00,2012-12-20 08:00,2012-12-20 08:00,,2012-06-30 00:00,2012-06-30 00:00,,,2012-05-20 08:00,2012-05-21 16:00,,,,,PT_Normal,,,,,F7759uwoNkGCifOcbPbG4g,ixCnxIpqdU6jVkm7+e6ltA,,,N,0,0,,,2012-07-16 15:38,2012-07-16 15:38,admin,admin
931,151627,5725,23807,6841,1,100,N,N,N,CP_Drtn,TT_LOE,DT_FixedDUR2,RV_OK,TK_Complete,4229PFG45,MRP for fire  & Gas detection,,,,0,0,0,0,40,0,0,0,,2012-05-28 00:00,2012-05-29 00:00,,,,,,,,2012-06-03 08:00,2012-06-07 16:00,,,,,PT_Normal,,,,,RJu1e0m3Nk+b+O9bq3qrUQ,VWzlyCmBNkqx4/itja5tWg,,,N,0,0,,,2012-07-16 15:38,2012-07-16 15:38,admin,admin
932,151628,5725,23827,6842,1,100,N,N,N,CP_Drtn,TT_Task,DT_FixedDUR2,RV_OK,TK_Complete,4229PLS30,Fabrication upto R.F.S,,,,0,0,0,0,720,0,0,0,,2012-05-23 00:00,2012-05-23 00:00,2013-02-24 16:00,2013-02-24 16:00,,2012-06-30 00:00,2012-06-30 00:00,,,2012-07-13 08:00,2012-10-22 16:00,,,,,PT_Normal,,,,,nP9gSR3cwUWw/UX4u9XSqg,OoxE0JkxKkCu2N33uSQ1Fw,,,N,0,0,,,2012-07-16 15:38,2012-07-16 15:38,admin,admin
933,151629,5725,23827,6843,1,100,N,N,N,CP_Drtn,TT_Task,DT_FixedDUR2,RV_OK,TK_Complete,4229PLS35,Delivery upto site,,,,0,0,0,0,360,0,0,0,,2012-05-23 00:00,2012-05-23 00:00,2013-02-24 16:00,2013-02-24 16:00,,2012-06-30 00:00,2012-06-30 00:00,,,2012-10-23 08:00,2012-12-06 16:00,,,,,PT_Normal,,,,,UD+fzmfr9EuQtpSjY23qoA,5zvjC/YRZUiSNCXmEx7ZuA,,,N,0,0,,,2012-07-16 15:38,2012-07-16 15:38,admin,admin
934,151630,5725,23827,6841,1,100,N,N,N,CP_Drtn,TT_Task,DT_FixedDUR2,RV_OK,TK_Complete,4229PLS40,Receive revised commercial offers,,,,0,0,0,0,40,0,0,0,,2012-05-23 00:00,2012-05-23 00:00,2013-02-24 16:00,2013-02-24 16:00,,2012-06-30 00:00,2012-06-30 00:00,,,2012-06-03 08:00,2012-06-07 16:00,,,,,PT_Normal,,,,,BYAFbTH2hkmVLmVoiuYxbg,pvN2oyXK60mHUF+ERGrRZw,,,N,0,0,,,2012-07-16 15:38,2012-07-16 15:38,admin,admin
935,151631,5725,23827,6841,1,100,N,N,N,CP_Drtn,TT_Task,DT_FixedDUR2,RV_OK,TK_Complete,4229PLS45,Client approval on bid committee reccomendation,,,,0,0,0,0,16,0,0,0,,2012-05-23 00:00,2012-05-23 00:00,2013-02-24 16:00,2013-02-24 16:00,,2012-06-30 00:00,2012-06-30 00:00,,,2012-06-24 08:00,2012-06-25 16:00,,,,,PT_Normal,,,,,ZhdbEnravU2vIE4KaY8URw,5M0rSpuH2U+gba7WQIPYBA,,,N,0,0,,,2012-07-16 15:38,2012-07-16 15:38,admin,admin
936,151632,5725,23827,6841,1,100,N,N,N,CP_Drtn,TT_Task,DT_FixedDUR2,RV_OK,TK_Complete,4229PLS50,L.C issued by Gupco,,,,0,0,0,0,40,0,0,0,,2012-05-23 00:00,2012-05-23 00:00,2013-02-24 16:00,2013-02-24 16:00,,2012-06-30 00:00,2012-06-30 00:00,,,2012-07-08 08:00,2012-07-12 16:00,,,,,PT_Normal,,,,,8UQdRm7/bEaYNvSMKl2+Jw,aN9tdSzSMESH0+5c2wlgeg,,,N,0,0,,,2012-07-16 15:38,2012-07-16 15:38,admin,admin
937,151633,5725,23827,6841,1,100,N,N,N,CP_Drtn,TT_LOE,DT_FixedDrtn,RV_OK,TK_Complete,4229PLS20,T.E.R for life saving equipment,,,,0,0,0,0,120,0,0,0,,2012-02-15 00:00,2012-05-15 00:00,,,,,,,,2012-03-04 08:00,2012-03-22 16:00,,,,,PT_Normal,,,,,MmQ7lLSy9EavOZ/OnOITbw,Bv3JjrxMAEuiSippF7wBNA,,,N,0,0,,,2012-07-16 15:38,2012-07-16 15:38,admin,admin
938,151634,5725,23827,6841,1,100,N,N,N,CP_Drtn,TT_LOE,DT_FixedDUR2,RV_OK,TK_Complete,4229PLS25,MRP for life saving equipment,,,,0,0,0,0,0,0,0,0,,2012-05-15 00:00,2012-05-15 00:00,,,,,,,,2012-05-15 08:00,2012-05-15 08:00,,,,,PT_Normal,,,,,WAuHCRq260+xC0s8zyXl9A,72VeZLjSwkmd6bFuzJS8sg,,,N,0,0,,,2012-07-16 15:38,2012-07-16 15:38,admin,admin
939,151635,5725,23827,6841,1,100,N,N,N,CP_Drtn,TT_Task,DT_FixedDUR2,RV_OK,TK_Complete,4229PLS10,Issue RFQ for Life saving equipment,,,,0,0,0,0,16,0,0,0,2012-01-05 00:00,2012-01-05 08:00,2012-01-05 16:00,2013-02-24 16:00,2013-02-24 16:00,,2012-06-30 00:00,2012-06-30 00:00,,,2012-01-05 08:00,2012-01-08 16:00,,,,CS_MSOA,PT_Normal,,,,,5sTSyR/Wk0Cl7UlX5RpjPQ,UKr6qX7UcEegIWyFsGk/9A,,,N,0,0,,,2012-07-16 15:38,2012-07-16 15:38,admin,admin
940,151636,5725,23827,6842,1,100,N,N,N,CP_Drtn,TT_Task,DT_FixedDUR2,RV_OK,TK_Complete,4229PLS15,Bidding Life saving equipment,,,,0,0,0,0,200,0,0,0,2012-01-09 00:00,2012-01-09 08:00,2012-02-28 00:00,2013-02-24 16:00,2013-02-24 16:00,,2012-06-30 00:00,2012-06-30 00:00,,,2012-01-09 08:00,2012-02-03 16:00,,,,CS_MSOA,PT_Normal,,,,,MmZzu1l8bUKoaHSDK52ncA,z7YUbJQnuUOHHzkwX1ehtw,,,N,0,0,,,2012-07-16 15:38,2012-07-16 15:38,admin,admin
941,151637,5725,23827,6841,1,100,N,N,N,CP_Drtn,TT_Task,DT_FixedDUR2,RV_OK,TK_Complete,4229PLS55,commercial evaluation & bid committee for Life saving equipment,,,,0,0,0,0,80,0,0,0,,2012-05-23 00:00,2012-05-23 00:00,2013-02-24 16:00,2013-02-24 16:00,,2012-06-30 00:00,2012-06-30 00:00,,,2012-06-10 08:00,2012-06-21 16:00,,,,,PT_Normal,,,,,vtJe5zFMyEWJLuFoUvV8xQ,PJXdORg+x0OWNVOvlFITxQ,,,N,0,0,,,2012-07-16 15:38,2012-07-16 15:38,admin,admin
942,151638,5725,23827,6841,1,100,N,N,N,CP_Drtn,TT_Task,DT_FixedDUR2,RV_OK,TK_Complete,4229PLS60,F.O.C for Life saving equipment,,,,0,0,0,0,24,0,0,0,,2012-05-23 00:00,2012-05-23 00:00,2013-02-24 16:00,2013-02-24 16:00,,2012-06-30 00:00,2012-06-30 00:00,,,2012-06-26 08:00,2012-06-28 16:00,,,,,PT_Normal,,,,,iGwf1AH1IkiuXjj178p+Uw,cuvxyESDG0ibNUht1bd3bA,,,N,0,0,,,2012-07-16 15:38,2012-07-16 15:38,admin,admin
943,151639,5725,23827,6841,1,100,N,N,N,CP_Drtn,TT_Task,DT_FixedDUR2,RV_OK,TK_Complete,4229PLS65,P.O for Life saving equipment,,,,0,0,0,0,40,0,0,0,,2012-05-23 00:00,2012-05-23 00:00,2013-02-24 16:00,2013-02-24 16:00,,2012-06-30 00:00,2012-06-30 00:00,,,2012-07-01 08:00,2012-07-05 16:00,,,,,PT_Normal,,,,,WExqkeyRwEqhWmKd84Tkjg,vV4hpMERQ0OLYMdtF2Z0WA,,,N,0,0,,,2012-07-16 15:38,2012-07-16 15:38,admin,admin
944,151640,5725,23828,6841,1,100,N,N,N,CP_Drtn,TT_Task,DT_FixedDUR2,RV_OK,TK_Complete,4229PCP30,Receive revised commercial offers,,,,0,0,0,0,40,0,0,0,,2011-12-28 00:00,2012-01-15 00:00,2013-02-11 08:00,2013-02-11 08:00,,2012-06-30 00:00,2012-06-30 00:00,,,2012-01-01 08:00,2012-01-05 16:00,,,,,PT_Normal,,,,,YEMPE4fiqUaryFS2v/rbAw,rsbY6IPE9Ey3ZU3ZNeLLVg,,,N,0,0,,,2012-07-16 15:38,2012-07-16 15:38,admin,admin
945,151641,5725,23828,6841,1,100,N,N,N,CP_Drtn,TT_Task,DT_FixedDUR2,RV_OK,TK_Complete,4229PCP50,Client approval on bid committee reccommendation,,,,0,0,0,0,16,0,0,0,,2012-02-09 00:00,2012-02-20 00:00,2013-02-11 08:00,2013-02-11 08:00,,2012-06-30 00:00,2012-06-30 00:00,,,2012-03-18 08:00,2012-03-19 16:00,,,,,PT_Normal,,,,,xuWqWJKgokKZQ/tSOWvLBQ,iKP7vyvUVkGYjFWGXsYtWw,,,N,0,0,,,2012-07-16 15:38,2012-07-16 15:38,admin,admin
946,151649,5725,23828,6841,1,100,N,N,N,CP_Drtn,TT_LOE,DT_FixedDrtn,RV_OK,TK_Complete,4229PCP25,T.E.R for cathodic protection,,,,0,0,0,0,151,0,0,0,,2011-11-24 00:00,2011-12-27 00:00,,,,,,,,2011-12-04 08:00,2011-12-28 15:00,,,,,PT_Normal,,,,,ibKZ9N7x9UuprDCY6drNWQ,3KXa9cqK30u8RebBmL/QDw,,,N,0,0,,,2012-07-16 15:38,2012-07-16 15:38,admin,admin
947,151650,5725,23828,6841,1,100,N,N,N,CP_Drtn,TT_LOE,DT_FixedDUR2,RV_OK,TK_Complete,4229PCP65,MRP for cathodic protection,,,,0,0,0,0,40,0,0,0,,2012-02-27 00:00,2012-02-28 00:00,,,,,,,,2012-03-04 08:00,2012-03-08 16:00,,,,,PT_Normal,,,,,iJTrTZQ0X025sp6ZkU2cZw,i8D5fIZvpke+0Tb8UUxLPw,,,N,0,0,,,2012-07-16 15:38,2012-07-16 15:38,admin,admin
948,151651,5725,23829,6841,1,100,N,N,N,CP_Drtn,TT_Task,DT_FixedDUR2,RV_OK,TK_Complete,4229PFF15,Re-issue RFQ for Fire Fighting,,,,0,0,0,0,8,0,0,0,,2012-03-01 00:00,2012-03-03 00:00,2012-09-30 08:00,2012-09-30 08:00,,2012-06-30 00:00,2012-06-30 00:00,,,2012-04-29 08:00,2012-04-29 16:00,,,,,PT_Normal,,,,,DjVWefTN00GaD7b3LzmI+A,,,,N,0,0,,,2012-07-16 15:38,2012-07-16 15:38,admin,admin
949,151658,5725,23829,6841,1,100,N,N,N,CP_Drtn,TT_Task,DT_FixedDUR2,RV_OK,TK_Complete,4229PFF35,commercial evaluation & bid committee for Fire fighting,,,,0,0,0,0,80,0,0,0,,2012-06-10 00:00,2012-06-10 00:00,2012-09-30 08:00,2012-09-30 08:00,,2012-06-30 00:00,2012-06-30 00:00,,,2012-07-04 08:00,2012-07-17 16:00,,,,,PT_Normal,,,,,OR+Vw5XQu02/jZT9Saf8Fg,HB71H4gGzEi8k5nywomlQQ,,,N,0,0,,,2012-07-16 15:38,2012-07-16 15:38,admin,admin
950,151659,5725,23829,6841,1,0,N,N,N,CP_Drtn,TT_Task,DT_FixedDUR2,RV_OK,TK_NotStart,4229PFF45,F.O.C for Fire fighting,,480,0,24,0,0,0,24,0,0,0,,,,2012-10-02 08:00,2012-10-04 16:00,,2012-07-03 08:00,2012-07-05 16:00,2012-07-03 08:00,2012-07-05 16:00,2012-07-03 08:00,2012-07-05 16:00,,2012-10-02 08:00,2012-10-04 16:00,,PT_Normal,,,,,u5YcC5j3x0q5pOX2BksC9w,FKG5q0XubUmv7n25cBnM+A,,,N,0,0,,,2012-07-16 15:38,2012-07-16 15:38,admin,admin
951,151660,5725,23829,6841,1,0,N,N,N,CP_Drtn,TT_Task,DT_FixedDUR2,RV_OK,TK_NotStart,4229PFF55,P.O for Fire fighting,,480,0,40,0,0,0,40,0,0,0,,,,2012-10-07 08:00,2012-10-11 16:00,,2012-07-08 08:00,2012-07-12 16:00,2012-07-08 08:00,2012-07-12 16:00,2012-07-08 08:00,2012-07-12 16:00,,2012-10-07 08:00,2012-10-11 16:00,,PT_Normal,,,,,DdLjfrgQ8U6xIXrHGJ/7WQ,3CKBmFUDZUiNIm/ll8DEwg,,,N,0,0,,,2012-07-16 15:38,2012-07-16 15:38,admin,admin
952,151661,5725,23829,6842,1,0,N,N,N,CP_Drtn,TT_Task,DT_FixedDUR2,RV_OK,TK_NotStart,4229PFF65,Fabrication upto R.F.S,,632,0,672,0,0,0,672,0,0,0,,,,2012-10-19 08:00,2013-01-10 16:00,,2012-07-20 08:00,2012-10-23 16:00,2012-07-20 08:00,2012-10-23 16:00,2012-07-20 08:00,2012-10-23 16:00,,2012-10-19 08:00,2013-01-10 16:00,,PT_Normal,,,,,TgDFpXU7gEKzJ3TH7WgCbw,CqIGa1jDK0i2r+exE2hpBg,,,N,0,0,,,2012-07-16 15:38,2012-07-16 15:38,admin,admin
953,151662,5725,23829,6841,1,100,N,N,N,CP_Drtn,TT_LOE,DT_FixedDUR2,RV_OK,TK_Complete,4229PFF25,T.E.R for fire fighting system,,,,0,0,0,0,168,0,0,0,,2012-04-03 08:00,2012-05-29 00:00,,,,,,,,2012-04-03 08:00,2012-05-01 16:00,,,,,PT_Normal,,,,,8ph+7Z2yjke2PG6DtWqUgg,hYdf5c4+n0uSjfwTIJSUbQ,,,N,0,0,,,2012-07-16 15:38,2012-07-16 15:38,admin,admin
954,151663,5725,23829,6841,1,0,N,N,N,CP_Drtn,TT_LOE,DT_FixedDUR2,RV_OK,TK_Active,4229PFF50,MRP for fire fighting system,,480,0,40,0,0,0,40,0,0,0,,2012-06-25 00:00,,2012-06-25 08:00,2012-10-04 16:00,,2012-07-01 08:00,2012-07-05 16:00,2012-07-01 08:00,2012-07-05 16:00,2012-07-25 08:00,2012-07-31 16:00,,2012-06-25 08:00,2012-10-04 16:00,,PT_Normal,,,,,MABEhl9NqUKoP6bYM/fxVQ,op1JmMtlF0SUYLP8Ya3S/A,,,N,0,0,,,2012-07-16 15:38,2012-07-16 15:38,admin,admin
955,151664,5725,23830,6841,1,100,N,N,N,CP_Drtn,TT_LOE,DT_FixedDUR2,RV_OK,TK_Complete,4229PTR25,T.E.R for L&R,,,,0,0,0,0,120,0,0,0,,2011-09-22 08:00,2011-12-04 08:00,,,,,,,,2011-09-22 08:00,2011-10-13 16:00,,,,,PT_Normal,,,,,MJsrZUyLFUGneIqM5qNIoA,XRyO7VMwTE+DF2zubFzqvw,,,N,0,0,,,2012-07-16 15:38,2012-07-16 15:38,admin,admin
956,151665,5725,23830,6841,1,100,N,N,N,CP_Drtn,TT_LOE,DT_FixedDUR2,RV_OK,TK_Complete,4229PTR65,MRP for L&R,,,,0,0,0,0,40,0,0,0,,2012-02-09 00:00,2012-02-19 00:00,,,,,,,,2012-03-04 08:00,2012-03-08 16:00,,,,,PT_Normal,,,,,BgZIR5PYiUaCNLJhnglt2Q,A5W8mGd6BE2UO+cKbloHZw,,,N,0,0,,,2012-07-16 15:38,2012-07-16 15:38,admin,admin
957,151669,5725,23830,6841,1,100,N,N,N,CP_Drtn,TT_Task,DT_FixedDUR2,RV_OK,TK_Complete,4229PTR50,Client approval on bid committee reccomendation,,,,0,0,0,0,16,0,0,0,,2011-12-25 00:00,2012-01-31 00:00,2012-08-02 08:00,2012-08-02 08:00,,2012-06-30 00:00,2012-06-30 00:00,,,2012-01-22 08:00,2012-01-23 16:00,,,,,PT_Normal,,,,,I/L17cJSvUmTUB34JZZjCg,okMlSxQPlUu8ymqN/KtiYQ,,,N,0,0,,,2012-07-16 15:38,2012-07-16 15:38,admin,admin
958,151680,5725,23831,6841,1,0,N,N,N,CP_Drtn,TT_LOE,DT_FixedDUR2,RV_OK,TK_NotStart,4229PRS25,T.E.R  for Radar System,,944,0,184,0,0,0,184,0,0,0,,,,2012-07-03 08:00,2013-01-29 16:00,,2012-07-03 08:00,2012-08-02 16:00,2012-07-03 08:00,2012-08-02 16:00,2012-07-03 08:00,2012-08-02 16:00,,2012-07-03 08:00,2013-01-29 16:00,,PT_Normal,,,,,U1dQB8MWbU2D8rrPknhXoQ,wSpvN7TbW0C3y0sKPLokBw,,,N,0,0,,,2012-07-16 15:38,2012-07-16 15:38,admin,admin
959,151681,5725,23831,6841,1,0,N,N,N,CP_Drtn,TT_LOE,DT_FixedDUR2,RV_OK,TK_NotStart,4229PRS65,MRP for Radar System,,160,0,40,0,0,0,40,0,0,0,,,,2012-10-03 08:00,2012-10-09 16:00,,2012-09-05 08:00,2012-09-11 16:00,2012-09-05 08:00,2012-09-11 16:00,2012-09-05 08:00,2012-09-11 16:00,,2012-10-03 08:00,2012-10-09 16:00,,PT_Normal,,,,,ncLbTogP1kKzAq3VwCGGXg,budr3CG4i0GaHCpjUSXmxg,,,N,0,0,,,2012-07-16 15:38,2012-07-16 15:38,admin,admin
960,151698,5725,23832,6841,1,100,N,N,N,CP_Drtn,TT_LOE,DT_FixedDUR2,RV_OK,TK_Complete,4229PMP25,T.E.R for MPFM,,,,0,0,0,0,160,0,0,0,,2011-11-14 00:00,2011-12-21 00:00,,,,,,,,2011-12-04 08:00,2011-12-29 16:00,,,,,PT_Normal,,,,,3WN1wEjWH0S9HfCLPeQv0Q,WzgvWtSfhU2NzXehbY6bPQ,,,N,0,0,,,2012-07-16 15:38,2012-07-16 15:38,admin,admin
961,151699,5725,23832,6841,1,100,N,N,N,CP_Drtn,TT_LOE,DT_FixedDrtn,RV_OK,TK_Complete,4229PMP65,MRP for MPFM,,,,0,0,0,0,40,0,0,0,,2012-02-09 00:00,2012-02-20 00:00,,,,,,,,2012-03-04 08:00,2012-03-08 16:00,,,,,PT_Normal,,,,,mxwJXcQq8EGE1H5FU9kkUw,T+0ciQgipEq2+vMtZIK5pQ,,,N,0,0,,,2012-07-16 15:38,2012-07-16 15:38,admin,admin
962,151701,5725,23814,6841,1,100,N,N,N,CP_Drtn,TT_Task,DT_FixedDUR2,RV_OK,TK_Complete,4229PSV50,Client approval on bid committee reccomendation,,,,0,0,0,0,16,0,0,0,,2012-03-07 00:00,2012-04-02 00:00,2012-07-29 08:00,2012-07-29 08:00,,2012-06-30 00:00,2012-06-30 00:00,,,2012-04-01 08:00,2012-04-02 16:00,,,,,PT_Normal,,,,,g/fABrYxgESDW3C4c0PmIA,okMlSxQPlUu8ymqN/KtiYQ,,,N,0,0,,,2012-07-16 15:38,2012-07-16 15:38,admin,admin
963,151710,5725,23814,6841,1,100,N,N,N,CP_Drtn,TT_LOE,DT_FixedDUR2,RV_OK,TK_Complete,4229PSV25,T.E.R for PSV,,,,0,0,0,0,223,0,0,0,,2011-11-17 00:00,2012-01-31 00:00,,,,,,,,2011-11-16 08:00,2011-12-25 15:00,,,,,PT_Normal,,,,,JZbvbCf7mEuLNF9Uy+K2OQ,b2YYy9o+s0qLd1hArx2WDQ,,,N,0,0,,,2012-07-16 15:38,2012-07-16 15:38,admin,admin
964,151711,5725,23814,6841,1,100,N,N,N,CP_Drtn,TT_LOE,DT_FixedDUR2,RV_OK,TK_Complete,4229PSV65,MRP for PSV,,,,0,0,0,0,16,0,0,0,,2012-04-05 08:00,2012-04-09 16:00,,,,,,,,2012-04-05 08:00,2012-04-08 16:00,,,,,PT_Normal,,,,,7ihfUUidvkSXYVmgtJsuQQ,ZXfVgzf22ESh29QZTh9ssg,,,N,0,0,,,2012-07-16 15:38,2012-07-16 15:38,admin,admin
965,151716,5725,23815,6841,1,100,N,N,N,CP_Drtn,TT_Task,DT_FixedDUR2,RV_OK,TK_Complete,4229POV50,Client approval on bid committee reccommendation,,,,0,0,0,0,16,0,0,0,,2012-03-05 00:00,2012-03-28 00:00,2012-07-29 08:00,2012-07-29 08:00,,2012-06-30 00:00,2012-06-30 00:00,,,2012-04-03 08:00,2012-04-04 16:00,,,,,PT_Normal,,,,,7QfNxGI06UqZrAcsFPG+yQ,okMlSxQPlUu8ymqN/KtiYQ,,,N,0,0,,,2012-07-16 15:38,2012-07-16 15:38,admin,admin
966,151721,5725,23815,6841,1,100,N,N,N,CP_Drtn,TT_LOE,DT_FixedDUR2,RV_OK,TK_Complete,4229POV25,T.E.R for SDV,,,,0,0,0,0,160,0,0,0,,2011-11-28 00:00,2012-02-01 16:00,,,,,,,,2011-12-04 08:00,2011-12-29 16:00,,,,,PT_Normal,,,,,D5URsc+mvUWMsSEJc8jTcw,oLwPrR8dtkKCqtyNJtHEow,,,N,0,0,,,2012-07-16 15:38,2012-07-16 15:38,admin,admin
967,151722,5725,23815,6841,1,100,N,N,N,CP_Drtn,TT_LOE,DT_FixedDUR2,RV_OK,TK_Complete,4229POV65,MRP for SDV,,,,0,0,0,0,40,0,0,0,,2012-04-22 00:00,2012-04-26 00:00,,,,,,,,2012-04-29 08:00,2012-05-03 16:00,,,,,PT_Normal,,,,,hcKSH/8sEEyHB9HxinDB5w,TrMWPgitaUmZGiDj84RmyQ,,,N,0,0,,,2012-07-16 15:38,2012-07-16 15:38,admin,admin
968,151728,5725,23816,6841,1,100,N,N,N,CP_Drtn,TT_LOE,DT_FixedDUR2,RV_OK,TK_Complete,4229PPB25,T.E.R for Piping bulk,,,,0,0,0,0,120,0,0,0,,2011-12-22 00:00,2012-01-26 00:00,,,,,,,,2011-12-13 08:00,2012-01-02 16:00,,,,,PT_Normal,,,,,zezLYGdUTkW+4y+l9JJanQ,ffGWAsroqUC7EdTJZrAS1A,,,N,0,0,,,2012-07-16 15:38,2012-07-16 15:38,admin,admin
969,151729,5725,23816,6841,1,100,N,N,N,CP_Drtn,TT_LOE,DT_FixedDUR2,RV_OK,TK_Complete,4229PPB65,MRP for Piping bulk,,,,0,0,0,0,56,0,0,0,,2012-03-19 08:00,2012-03-27 16:00,,,,,,,,2012-03-19 08:00,2012-03-27 16:00,,,,,PT_Normal,,,,,bMNAojijMEG4VlT/Dr9b3Q,v+2pKzAUI0aArXAlsWBTTg,,,N,0,0,,,2012-07-16 15:38,2012-07-16 15:38,admin,admin
970,151731,5725,23816,6841,1,100,N,N,N,CP_Drtn,TT_Task,DT_FixedDUR2,RV_OK,TK_Complete,4229PPB50,Client approval on bid committee reccomendation,,,,0,0,0,0,16,0,0,0,,2012-02-23 00:00,2012-02-29 00:00,2012-12-09 08:00,2012-12-09 08:00,,2012-06-30 00:00,2012-06-30 00:00,,,2012-03-04 08:00,2012-03-05 16:00,,,,,PT_Normal,,,,,OE35o2SaD0yWkyR3M/n7uA,okMlSxQPlUu8ymqN/KtiYQ,,,N,0,0,,,2012-07-16 15:38,2012-07-16 15:38,admin,admin
971,151735,5725,23816,6843,1,0,N,N,N,CP_Drtn,TT_Task,DT_FixedDUR2,RV_OK,TK_NotStart,4229PPB100,Delivery upto site (1st Batch),,1320,1008,360,0,0,0,360,0,0,0,,,,2013-01-11 08:00,2013-02-24 16:00,,2012-08-01 08:00,2012-09-14 16:00,2012-08-01 08:00,2012-09-14 16:00,2012-08-01 08:00,2012-09-14 16:00,,2013-01-11 08:00,2013-02-24 16:00,,PT_Normal,,,,,I4fPbEuLm0GtEhUbFR4NNQ,,,,N,0,0,,,2012-07-16 15:38,2012-07-16 15:38,admin,admin
972,151740,5725,23817,6843,1,0,N,N,N,CP_Drtn,TT_Task,DT_FixedDUR2,RV_OK,TK_NotStart,4229PPV110,Delivery upto site (1st Batch),,1416,1416,112,0,0,0,112,0,0,0,,,,2013-02-11 08:00,2013-02-24 16:00,,2012-08-20 08:00,2012-09-02 16:00,2012-08-20 08:00,2012-09-02 16:00,2012-08-20 08:00,2012-09-02 16:00,,2013-02-11 08:00,2013-02-24 16:00,,PT_Normal,,,,,RAR2duIQt0u3IYSTmWqKMw,Ed1rw6pVGkqfXjRfFT7JpQ,,,N,0,0,,,2012-07-16 15:38,2012-07-16 15:38,admin,admin
973,151741,5725,23817,6842,1,0,N,N,N,CP_Drtn,TT_Task,DT_FixedDUR2,RV_OK,TK_NotStart,4229PPV100,Fabrication upto R.F.S (2nd Batch) for minimal  balance,,240,0,960,0,0,0,960,0,0,0,,,,2012-10-14 08:00,2013-02-10 16:00,,2012-09-14 08:00,2013-01-11 16:00,2012-09-14 08:00,2013-01-11 16:00,2012-09-14 08:00,2013-01-11 16:00,,2012-10-14 08:00,2013-02-10 16:00,,PT_Normal,,,,,63uubhs5rUemh11HAM/2eQ,,,,N,0,0,,,2012-07-16 15:38,2012-07-16 15:38,admin,admin
974,151742,5725,23817,6843,1,0,N,N,N,CP_Drtn,TT_Task,DT_FixedDUR2,RV_OK,TK_NotStart,4229PPV120,Delivery upto site (2nd Batch) for minimal balance,,240,240,112,0,0,0,112,0,0,0,,,,2013-02-11 08:00,2013-02-24 16:00,,2013-01-12 08:00,2013-01-25 16:00,2013-01-12 08:00,2013-01-25 16:00,2013-01-12 08:00,2013-01-25 16:00,,2013-02-11 08:00,2013-02-24 16:00,,PT_Normal,,,,,dxRQQUolh0armL+xIX2/RA,,,,N,0,0,,,2012-07-16 15:38,2012-07-16 15:38,admin,admin
975,151744,5725,23817,6841,1,100,N,N,N,CP_Drtn,TT_Task,DT_FixedDUR2,RV_OK,TK_Complete,4229PPV50,Client approval on bid committee reccomendation,,,,0,0,0,0,16,0,0,0,,2012-03-15 00:00,2012-04-04 00:00,2012-07-29 08:00,2012-07-29 08:00,,2012-06-30 00:00,2012-06-30 00:00,,,2012-04-15 08:00,2012-04-16 16:00,,,,,PT_Normal,,,,,90t5KnA8XEi383xOSKUn7Q,okMlSxQPlUu8ymqN/KtiYQ,,,N,0,0,,,2012-07-16 15:38,2012-07-16 15:38,admin,admin
976,151747,5725,23817,6841,1,100,N,N,N,CP_Drtn,TT_LOE,DT_FixedDUR2,RV_OK,TK_Complete,4229PPV25,T.E.R for Piping valves,,,,0,0,0,0,168,0,0,0,,2012-01-12 08:00,2012-02-08 00:00,,,,,,,,2012-01-12 08:00,2012-02-12 16:00,,,,,PT_Normal,,,,,8h2JsRGyxkWw1jHWzMI9yA,JiEJ7J2QxUaoab2mldizXA,,,N,0,0,,,2012-07-16 15:38,2012-07-16 15:38,admin,admin
977,151748,5725,23817,6841,1,100,N,N,N,CP_Drtn,TT_LOE,DT_FixedDUR2,RV_OK,TK_Complete,4229PPV65,MRP for Piping valves,,,,0,0,0,0,32,0,0,0,,2012-04-08 08:00,2012-04-12 00:00,,,,,,,,2012-04-08 08:00,2012-04-11 16:00,,,,,PT_Normal,,,,,KHaLCBsGl0WEvyDBkVqHRg,HVhuFiMzEUqRKoYy+1e1PQ,,,N,0,0,,,2012-07-16 15:38,2012-07-16 15:38,admin,admin
978,151758,5725,23818,6841,1,100,N,N,N,CP_Drtn,TT_Task,DT_FixedDUR2,RV_OK,TK_Complete,4229PSU50,Client approval on bid committee reccomendation,,,,0,0,0,0,16,0,0,0,,2012-02-29 00:00,2012-03-11 00:00,2012-07-29 08:00,2012-07-29 08:00,,2012-06-30 00:00,2012-06-30 00:00,,,2012-03-06 08:00,2012-03-07 16:00,,,,,PT_Normal,,,,,dpru/cv+DUagrvpmfHr8+A,iKP7vyvUVkGYjFWGXsYtWw,,,N,0,0,,,2012-07-16 15:38,2012-07-16 15:38,admin,admin
979,151761,5725,23818,6841,1,100,N,N,N,CP_Drtn,TT_LOE,DT_FixedDUR2,RV_OK,TK_Complete,4229PSU25,T.ER for solar power unit,,,,0,0,0,0,120,0,0,0,,2011-10-13 00:00,2012-01-31 00:00,,,,,,,,2011-10-02 08:00,2011-10-23 16:00,,,,,PT_Normal,,,,,SnTq9MfmT0e/GBXaPAX7Ng,bw0IVSNTOUG6dpR2CW4B7w,,,N,0,0,,,2012-07-16 15:38,2012-07-16 15:38,admin,admin
980,151762,5725,23818,6841,1,100,N,N,N,CP_Drtn,TT_LOE,DT_FixedDUR2,RV_OK,TK_Complete,4229PSU55,MRP for solar power unit,,,,0,0,0,0,40,0,0,0,,2012-03-08 08:00,2012-03-28 00:00,,,,,,,,2012-03-08 08:00,2012-03-14 16:00,,,,,PT_Normal,,,,,Hvdngl9N4Eu5Otk/CJr3QA,1XvuEt/L4kaY7aCpdA1cKA,,,N,0,0,,,2012-07-16 15:38,2012-07-16 15:38,admin,admin
981,151766,5725,23838,6841,1,100,N,N,N,CP_Drtn,TT_Task,DT_FixedDUR2,RV_OK,TK_Complete,4229PNA50,Client approval on bid committee reccomendation,,,,0,0,0,0,16,0,0,0,,2011-12-13 08:00,2012-01-11 16:00,2012-07-29 08:00,2012-07-29 08:00,,2012-06-30 00:00,2012-06-30 00:00,,,2011-12-13 08:00,2011-12-14 16:00,,,,,PT_Normal,,,,,QUfxa8puf0KXGXAXsxtb7A,iKP7vyvUVkGYjFWGXsYtWw,,,N,0,0,,,2012-07-16 15:38,2012-07-16 15:38,admin,admin
982,151774,5725,23838,6841,1,100,N,N,N,CP_Drtn,TT_LOE,DT_FixedDUR2,RV_OK,TK_Complete,4229EEL320,T.E.R for Navigation aids,,,,0,0,0,0,120,0,0,0,,2011-10-17 08:00,2011-12-07 16:00,,,,,,,,2011-10-17 08:00,2011-11-13 16:00,,,,,PT_Normal,,,,,JZg3ev8m/k+R5W7K1WDmCA,swX0p19rSUOIwyjGZHXYnw,,,N,0,0,,,2012-07-16 15:38,2012-07-16 15:38,admin,admin
983,151775,5725,23838,6841,1,100,N,N,N,CP_Drtn,TT_LOE,DT_FixedDUR2,RV_OK,TK_Complete,4229PNA65,MRP for Navigation aids,,,,0,0,0,0,32,0,0,0,,2012-01-12 00:00,2012-01-18 00:00,,,,,,,,2012-01-12 08:00,2012-01-17 16:00,,,,,PT_Normal,,,,,O0kDY4TNKEGx0ziEjUwBgQ,IE+e2ItCW0OvW1HQfUiFIA,,,N,0,0,,,2012-07-16 15:38,2012-07-16 15:38,admin,admin
984,151776,5725,23820,6841,1,100,N,N,N,CP_Drtn,TT_LOE,DT_FixedDUR2,RV_OK,TK_Complete,4229EEB310,T.E.R for Electrical bulk,,,,0,0,0,0,120,0,0,0,,2012-02-02 00:00,2012-06-10 00:00,,,,,,,,2012-03-05 08:00,2012-03-25 16:00,,,,,PT_Normal,,,,,yr6QJ4AK0kmCfqjjSpQVig,zLLzeS/iI0W7cqmCLSb03g,,,N,0,0,,,2012-07-16 15:38,2012-07-16 15:38,admin,admin
985,151777,5725,23820,6841,1,0,N,N,N,CP_Drtn,TT_LOE,DT_FixedDUR2,RV_OK,TK_NotStart,4229PEB65,MRP for Electrical bulk,,448,0,40,0,0,0,40,0,0,0,,,,2012-10-03 08:00,2012-10-09 16:00,,2012-07-10 08:00,2012-07-16 16:00,2012-07-10 08:00,2012-07-16 16:00,2012-07-10 08:00,2012-07-16 16:00,,2012-10-03 08:00,2012-10-09 16:00,,PT_Normal,,,,,/gZaBCgTrUCMsldg2doHTA,cKQxE56q/ESdNlpuAltyIQ,,,N,0,0,,,2012-07-16 15:38,2012-07-16 15:38,admin,admin
986,151798,5725,23821,6841,1,100,N,N,N,CP_Drtn,TT_LOE,DT_FixedDUR2,RV_OK,TK_Complete,4229PIB1015,T.E.R for Instrument electrical bulk,,,,0,0,0,0,120,0,0,0,,2012-03-26 00:00,2012-06-03 00:00,,,,,,,,2012-04-25 08:00,2012-05-15 16:00,,,,,PT_Normal,,,,,AhusYudpEEe4HQL3i8CrtQ,vrPHaFUofUCwSCVvqK7yeg,,,N,0,0,,,2012-07-16 15:38,2012-07-16 15:38,admin,admin
987,151799,5725,23821,6841,1,0,N,N,N,CP_Drtn,TT_LOE,DT_FixedDUR2,RV_OK,TK_NotStart,4229PIB1055,MRP for Instrument electrical bulk,,512,0,40,0,0,0,40,0,0,0,,,,2012-10-10 08:00,2012-10-16 16:00,,2012-07-05 08:00,2012-07-11 16:00,2012-07-05 08:00,2012-07-11 16:00,2012-07-05 08:00,2012-07-11 16:00,,2012-10-10 08:00,2012-10-16 16:00,,PT_Normal,,,,,H4hB/T3e3UmDAADd/zrcSg,u5tHcOB7wkGarPuA3vE6Rw,,,N,0,0,,,2012-07-16 15:38,2012-07-16 15:38,admin,admin
988,151802,5725,23822,6841,1,100,N,N,N,CP_Drtn,TT_Task,DT_FixedDUR2,RV_OK,TK_Complete,4229PIB50,Client approval on bid committee reccommendation,,,,0,0,0,0,16,0,0,0,,2012-05-31 00:00,2012-05-31 00:00,2013-02-10 08:00,2013-02-10 08:00,,2012-06-30 00:00,2012-06-30 00:00,,,2012-06-24 08:00,2012-06-25 16:00,,,,,PT_Normal,,,,,i/1XpeEUMEmU/jwDVXQ2iQ,okMlSxQPlUu8ymqN/KtiYQ,,,N,0,0,,,2012-07-16 15:38,2012-07-16 15:38,admin,admin
989,151809,5725,23822,6841,1,100,N,N,N,CP_Drtn,TT_LOE,DT_FixedDUR2,RV_OK,TK_Complete,4229PIB15,T.E.R for Instrument  Mechanical bulk,,,,0,0,0,0,120,0,0,0,,2012-03-27 00:00,2012-03-27 00:00,,,,,,,,2012-04-01 08:00,2012-04-19 16:00,,,,,PT_Normal,,,,,dWwtfQEzVE2nClReyhPb+g,GZpEktvPQkCIPEkPnxCk+g,,,N,0,0,,,2012-07-16 15:38,2012-07-16 15:38,admin,admin
990,151810,5725,23822,6841,1,100,N,N,N,CP_Drtn,TT_LOE,DT_FixedDUR2,RV_OK,TK_Complete,4229PIB45,MRP for Instrument Mechanical bulk,,,,0,0,0,0,8,0,0,0,,2012-05-31 00:00,2012-05-31 16:00,,,,,,,,2012-05-31 08:00,2012-05-31 16:00,,,,,PT_Normal,,,,,4CmWEkkOfUyGB2L9SDBbpw,Eo245czxY0mc5Pbd3SnqwA,,,N,0,0,,,2012-07-16 15:38,2012-07-16 15:38,admin,admin
991,151814,5725,23823,6841,1,100,N,N,N,CP_Drtn,TT_LOE,DT_FixedDUR2,RV_OK,TK_Complete,4229PFI25,T.E.R for field Instrument,,,,0,0,0,0,80,0,0,0,,2012-01-17 08:00,2012-05-02 16:00,,,,,,,,2012-01-17 08:00,2012-01-31 16:00,,,,,PT_Normal,,,,,A3oHXb9L9ke0iOpXw6bURg,ct7xw1S//EaYd5hkrUDieg,,,N,0,0,,,2012-07-16 15:38,2012-07-16 15:38,admin,admin
992,151815,5725,23823,6841,1,0,N,N,N,CP_Drtn,TT_LOE,DT_FixedDUR2,RV_OK,TK_NotStart,4229PFI65,MRP for field Instrument,,280,0,40,0,0,0,40,0,0,0,,,,2012-08-30 08:00,2012-09-05 16:00,,2012-07-05 08:00,2012-07-11 16:00,2012-07-05 08:00,2012-07-11 16:00,2012-07-05 08:00,2012-07-11 16:00,,2012-08-30 08:00,2012-09-05 16:00,,PT_Normal,,,,,kcHAkzLl2UKCSLz6xnPaXw,dTXvLV4G8EqSCMWO1CBnLA,,,N,0,0,,,2012-07-16 15:38,2012-07-16 15:38,admin,admin
993,151834,5725,23824,6841,1,100,N,N,N,CP_Drtn,TT_LOE,DT_FixedDUR2,RV_OK,TK_Complete,4229PCV25,T.E.R for choke valves,,,,0,0,0,0,160,0,0,0,,2011-12-27 00:00,2012-04-02 00:00,,,,,,,,2012-01-01 08:00,2012-01-29 16:00,,,,,PT_Normal,,,,,GhpTBpuKWEyix4n6Meka5A,iXh9gte5aEazCHzhI0fQ8w,,,N,0,0,,,2012-07-16 15:38,2012-07-16 15:38,admin,admin
994,151835,5725,23824,6841,1,100,N,N,N,CP_Drtn,TT_LOE,DT_FixedDUR2,RV_OK,TK_Complete,4229PCV65,MRP for Choke valves,,,,0,0,0,0,40,0,0,0,,2012-05-27 00:00,2012-06-05 00:00,,,,,,,,2012-06-03 08:00,2012-06-07 16:00,,,,,PT_Normal,,,,,D1vBtqygrU29CMkfGyDAQA,NjzlulhbIUKcB6s3mpdNUA,,,N,0,0,,,2012-07-16 15:38,2012-07-16 15:38,admin,admin
995,151836,5725,23825,6841,1,100,N,N,N,CP_Drtn,TT_LOE,DT_FixedDUR2,RV_OK,TK_Complete,4229PRV55,MRP for  pressure regulator valves,,,,0,0,0,0,40,0,0,0,,2012-05-27 00:00,2012-05-31 00:00,,,,,,,,2012-06-03 08:00,2012-06-07 16:00,,,,,PT_Normal,,,,,OOwhW+uS0E6YklALnOPTWQ,AwbIFp5LAk2PiImMFdUHFg,,,N,0,0,,,2012-07-16 15:38,2012-07-16 15:38,admin,admin
996,151840,5725,23825,6841,1,100,N,N,N,CP_Drtn,TT_Task,DT_FixedDUR2,RV_OK,TK_Complete,4229PRV50,Client approval on bid committee reccommendation,,,,0,0,0,0,16,0,0,0,,2012-05-13 08:00,2012-05-14 16:00,2012-08-05 08:00,2012-08-05 08:00,,2012-06-30 00:00,2012-06-30 00:00,,,2012-05-13 08:00,2012-05-14 16:00,,,,,PT_Normal,,,,,hFQbHH4Ju06c6TmWqHFb9w,okMlSxQPlUu8ymqN/KtiYQ,,,N,0,0,,,2012-07-16 15:38,2012-07-16 15:38,admin,admin
997,151847,5725,23825,6841,1,100,N,N,N,CP_Drtn,TT_LOE,DT_FixedDUR2,RV_OK,TK_Complete,4229PRV25,T.E.R for  Pressure regulator valves,,,,0,0,0,0,120,0,0,0,,2012-02-02 00:00,2012-04-03 00:00,,,,,,,,2012-03-08 08:00,2012-03-28 16:00,,,,,PT_Normal,,,,,cQ1pvw621EG20zYwzd/Q+A,N0GerPhz6kKoKX7oZlOJsw,,,N,0,0,,,2012-07-16 15:38,2012-07-16 15:38,admin,admin
998,151849,5725,23826,6841,1,100,N,N,N,CP_Drtn,TT_Task,DT_FixedDUR2,RV_OK,TK_Complete,4229PCI50,Client approval on bid committee reccomendation,,,,0,0,0,0,16,0,0,0,,2012-03-13 08:00,2012-03-18 00:00,2012-07-29 08:00,2012-07-29 08:00,,2012-06-30 00:00,2012-06-30 00:00,,,2012-03-13 08:00,2012-03-14 16:00,,,,,PT_Normal,,,,,ZPl3LTXoYE2fsvj4BXtUOw,,,,N,0,0,,,2012-07-16 15:38,2012-07-16 15:38,admin,admin
999,151857,5725,23826,6841,1,100,N,N,N,CP_Drtn,TT_LOE,DT_FixedDrtn,RV_OK,TK_Complete,4229PCI25,T.E.R for Chemical injection,,,,0,0,0,0,160,0,0,0,,2011-09-19 08:00,2011-11-24 00:00,,,,,,,,2011-09-19 08:00,2011-10-17 16:00,,,,,PT_Normal,,,,,HzFZ6RrOuka/A6dVC1dYoA,UynpZlC0SEW7UHo8eeimsg,,,N,0,0,,,2012-07-16 15:38,2012-07-16 15:38,admin,admin
1000,151858,5725,23826,6841,1,100,N,N,N,CP_Drtn,TT_LOE,DT_FixedDUR2,RV_OK,TK_Complete,4229PCI65,MRP for Chemical injection,,,,0,0,0,0,24,0,0,0,,2012-03-25 00:00,2012-04-05 00:00,,,,,,,,2012-03-25 08:00,2012-03-27 16:00,,,,,PT_Normal,,,,,QSjwuE3K7EuWP1BPJY8Mfg,R1Sdma6vEUKAbOUepMCX5Q,,,N,0,0,,,2012-07-16 15:38,2012-07-16 15:38,admin,admin
1001,151862,5725,23792,6841,1,100,N,N,N,CP_Drtn,TT_Task,DT_FixedDUR2,RV_OK,TK_Complete,4229GM40,Final Project Design basis,,,,0,0,0,0,80,0,0,0,,2011-11-14 08:00,2011-11-27 16:00,2013-02-24 16:00,2013-02-24 16:00,,2012-06-30 00:00,2012-06-30 00:00,,,2011-11-14 08:00,2011-11-27 16:00,,,,,PT_Normal,,,,,YU1CzQlklkytOYyjo0X6zw,,,,N,0,0,,,2012-07-16 15:38,2012-07-16 15:38,admin,admin
1002,151875,5725,23885,6841,1,100,N,N,N,CP_Drtn,TT_Task,DT_FixedDUR2,RV_OK,TK_Complete,4229ELP1000,Riser impact risk assessment study -IFA,,,,0,0,0,0,8,0,0,0,,2012-02-15 00:00,2012-02-27 00:00,2013-02-24 16:00,2013-02-24 16:00,,2012-06-30 00:00,2012-06-30 00:00,,,2012-04-29 08:00,2012-04-29 16:00,,,,,PT_Normal,,,,,m4fyJ6N9N0KTaj2Wo4Um2w,,,,N,0,0,,,2012-07-16 15:38,2012-07-16 15:38,admin,admin
1003,151876,5725,23885,6841,1,100,N,N,N,CP_Drtn,TT_Task,DT_FixedDUR2,RV_OK,TK_Complete,4229ELP1010,Final Riser impact  risk assessment study,,,,0,0,0,0,40,0,0,0,,2012-02-28 00:00,2012-05-10 00:00,2013-02-24 16:00,2013-02-24 16:00,,2012-06-30 00:00,2012-06-30 00:00,,,2012-04-29 08:00,2012-05-03 16:00,,,,,PT_Normal,,,,,kSyZBz1lokC1BNcWI9VolQ,,,,N,0,0,,,2012-07-16 15:38,2012-07-16 15:38,admin,admin
1004,151965,5725,23853,6841,1,0,N,N,N,CP_Drtn,TT_Task,DT_FixedDUR2,RV_OK,TK_NotStart,4229EPI460,Issue ISO's -construction (Second batch)- Final MTO,,160,0,80,0,0,0,80,0,0,0,,,,2012-09-09 08:00,2012-09-20 16:00,2012-08-16 16:00,2012-08-05 08:00,2012-08-16 16:00,2012-08-05 08:00,2012-08-16 16:00,2012-08-05 08:00,2012-08-16 16:00,,2012-09-09 08:00,2012-09-20 16:00,,PT_Normal,,,,,JSmqajr/50Oz/kaihfQ4jA,,,,N,0,0,,,2012-07-16 15:38,2012-07-16 15:38,admin,admin
1005,151967,5725,23853,6841,1,0,N,N,N,CP_Drtn,TT_Task,DT_FixedDUR2,RV_OK,TK_NotStart,4229EPI390,Issue plot plans-Construction,,160,0,72,0,0,0,72,0,0,0,,,,2012-08-05 08:00,2012-08-15 16:00,,2012-07-08 08:00,2012-07-18 16:00,2012-07-08 08:00,2012-07-18 16:00,2012-07-08 08:00,2012-07-18 16:00,,2012-08-05 08:00,2012-08-15 16:00,,PT_Normal,,,,,4mUFrE2cR0GfcT5S0FrqJg,FxwlrL7cRzuyVKm0cFtT9w,,,N,0,0,,,2012-07-16 15:38,2012-07-16 15:38,admin,admin
1006,151968,5725,23853,6841,1,0,N,N,N,CP_Drtn,TT_Task,DT_FixedDUR2,RV_OK,TK_NotStart,4229EPI430,Issue ISO's -construction (first batch),,160,0,88,0,0,0,88,0,0,0,,,,2012-08-16 08:00,2012-09-06 16:00,2012-08-02 16:00,2012-07-19 08:00,2012-08-02 16:00,2012-07-19 08:00,2012-08-02 16:00,2012-07-19 08:00,2012-08-02 16:00,,2012-08-16 08:00,2012-09-06 16:00,,PT_Normal,,,,,VN8ldzniPUmZd9UPBOWVbw,1kARNwTqSjCYW0jNvbH2rQ,,,N,0,0,,,2012-07-16 15:38,2012-07-16 15:38,admin,admin
1007,151971,5725,23853,6841,1,0,N,N,N,CP_Drtn,TT_Task,DT_FixedDUR2,RV_OK,TK_NotStart,4229EPI500,Piping supports list / MTO -IFC,,928,0,80,0,0,0,80,0,0,0,,,,2013-02-04 08:00,2013-02-17 16:00,,2012-08-12 08:00,2012-08-30 16:00,2012-08-12 08:00,2012-08-30 16:00,2012-08-12 08:00,2012-08-30 16:00,,2013-02-04 08:00,2013-02-17 16:00,,PT_Normal,,,,,Fu+mCkPKgkmHZJ5jcITbDw,,,,N,0,0,,,2012-07-16 15:38,2012-07-16 15:38,admin,admin
1008,151975,5725,23853,6841,1,0,N,N,N,CP_Drtn,TT_Task,DT_FixedDUR2,RV_OK,TK_NotStart,4229EPI380,Line designation table -Construction,,0,0,64,0,0,0,64,0,0,0,2012-07-01 08:00,,,2012-07-01 08:00,2012-07-10 16:00,,2012-07-01 08:00,2012-07-10 16:00,2012-07-01 08:00,2012-07-10 16:00,2012-07-01 08:00,2012-07-10 16:00,,2012-07-01 08:00,2012-07-10 16:00,CS_MSO,PT_Normal,,,,,uuD42Q/WrUmCjKr1sE1dQQ,,,,N,0,0,,,2012-07-16 15:38,2012-07-16 15:38,admin,admin
1009,151976,5725,23853,6841,1,0,N,N,N,CP_Drtn,TT_Task,DT_FixedDUR2,RV_OK,TK_NotStart,4229EPI440,Hydrotest maps & loops- Construction,,1080,792,120,0,0,0,120,0,0,0,,,,2013-02-04 08:00,2013-02-24 16:00,,2012-07-16 08:00,2012-08-05 16:00,2012-07-16 08:00,2012-08-05 16:00,2012-07-16 08:00,2012-08-05 16:00,,2013-02-04 08:00,2013-02-24 16:00,,PT_Normal,,,,,IVv5VCin1ECy8+tbKeNBAw,,,,N,0,0,,,2012-07-16 15:38,2012-07-16 15:38,admin,admin
1010,151977,5725,23853,6841,1,0,N,N,N,CP_Drtn,TT_Task,DT_FixedDUR2,RV_OK,TK_NotStart,4229EPI490,Standard pipe supports -Construction,,976,688,40,0,0,0,40,0,0,0,,,,2013-02-18 08:00,2013-02-24 16:00,,2012-08-16 08:00,2012-08-29 16:00,2012-08-16 08:00,2012-08-29 16:00,2012-08-16 08:00,2012-08-29 16:00,,2013-02-18 08:00,2013-02-24 16:00,,PT_Normal,,,,,fxuVfUZeNkKJNnK/nR7rNw,,,,N,0,0,,,2012-07-16 15:38,2012-07-16 15:38,admin,admin
1011,151979,5725,23853,6841,1,0,N,N,N,CP_Drtn,TT_Task,DT_FixedDUR2,RV_OK,TK_NotStart,4229EPI400,Critical line list-Construction,,1144,856,80,0,0,0,80,0,0,0,,,,2013-02-11 08:00,2013-02-24 16:00,,2012-07-11 08:00,2012-07-24 16:00,2012-07-11 08:00,2012-07-24 16:00,2012-07-11 08:00,2012-07-24 16:00,,2013-02-11 08:00,2013-02-24 16:00,,PT_Normal,,,,,ZhcDLluHGkeVfMqIM8IIDQ,,,,N,0,0,,,2012-07-16 15:38,2012-07-16 15:38,admin,admin
1012,151981,5725,23853,6841,1,0,N,N,N,CP_Drtn,TT_Task,DT_FixedDUR2,RV_OK,TK_Active,4229EPI370,Piping & Valves classes - Construction,,1240,952,8,0,0,0,40,0,0,0,,2012-06-27 00:00,,2013-02-24 08:00,2013-02-24 16:00,,2012-07-08 08:00,2012-07-08 16:00,2012-07-08 08:00,2012-07-08 16:00,2012-07-08 08:00,2012-07-12 16:00,,2013-02-24 08:00,2013-02-24 16:00,,PT_Normal,,,,,ez5kymgQB0iewU4ZTV6VdQ,,,,N,0,0,,,2012-07-16 15:38,2012-07-16 15:38,admin,admin
1013,151983,5725,23882,6841,1,0,N,N,N,CP_Drtn,TT_Task,DT_FixedDUR2,RV_OK,TK_Active,4229EPI360,Additional piping bulk T.E.R,,696,0,8,0,0,0,160,0,0,0,,2012-06-14 00:00,,2012-11-13 08:00,2012-11-13 16:00,2012-07-01 16:00,2012-07-01 08:00,2012-07-01 16:00,2012-07-01 08:00,2012-07-01 16:00,2012-07-01 08:00,2012-07-26 16:00,,2012-11-13 08:00,2012-11-13 16:00,,PT_Normal,,,,,N/XVjQA9N0++/nWpusCIwA,,,,N,0,0,,,2012-07-16 15:38,2012-07-16 15:38,admin,admin
1014,151984,5725,23882,6841,1,0,N,N,N,CP_Drtn,TT_Task,DT_FixedDUR2,RV_OK,TK_NotStart,4229EPI450,Additional piping bulk MRP,,1008,0,40,0,0,0,40,0,0,0,,,,2013-02-07 08:00,2013-02-13 16:00,,2012-08-01 08:00,2012-08-07 16:00,2012-08-01 08:00,2012-08-07 16:00,2012-08-01 08:00,2012-08-07 16:00,,2013-02-07 08:00,2013-02-13 16:00,,PT_Normal,,,,,dbJZv/8P+02i+zyGBcVqkQ,,,,N,0,0,,,2012-07-16 15:38,2012-07-16 15:38,admin,admin
1015,151993,5725,23882,6841,1,0,N,N,N,CP_Drtn,TT_Task,DT_FixedDUR2,RV_OK,TK_Active,4229EPI420,V.P.R for launcher & receiver traps,,1120,136,160,0,0,0,640,0,0,0,,2012-03-27 00:00,,2013-01-28 08:00,2013-02-24 16:00,,2012-07-02 08:00,2012-07-29 16:00,2012-07-02 08:00,2012-07-29 16:00,2012-03-25 08:00,2012-07-12 16:00,,2013-01-28 08:00,2013-02-24 16:00,,PT_Normal,,,,,jdsY37FHike87cKS4QCX8w,,,,N,0,0,,,2012-07-16 15:38,2012-07-16 15:38,admin,admin
1016,152001,5725,23855,6841,1,0,N,N,N,CP_Drtn,TT_Task,DT_FixedDUR2,RV_OK,TK_Active,4229EPI410,Stress analysis report,,1128,0,48,0,0,0,152,0,0,0,,2012-05-24 00:00,,2013-02-17 08:00,2013-02-24 16:00,2012-07-26 16:00,2012-07-19 08:00,2012-07-26 16:00,2012-07-19 08:00,2012-07-26 16:00,2012-07-03 08:00,2012-07-29 16:00,,2013-02-17 08:00,2013-02-24 16:00,,PT_Normal,,,,,Uy9jUHtPYEWDhIlMEAuHlQ,,,,N,0,0,,,2012-07-16 15:38,2012-07-16 15:38,admin,admin
1017,152104,5725,23875,6841,1,100,N,N,N,CP_Drtn,TT_Task,DT_FixedDUR2,RV_OK,TK_Complete,4229EEL170,Electrical layouts IFD,,,,0,0,0,0,120,0,0,0,,2012-01-08 00:00,2012-01-29 00:00,2013-01-20 08:00,2013-01-20 08:00,,2012-06-30 00:00,2012-06-30 00:00,,,2012-03-04 08:00,2012-03-22 16:00,,,,,PT_Normal,,,,,+iJT58ltaECPG3CgGeFERg,,,,N,0,0,,,2012-07-16 15:38,2012-07-16 15:38,admin,admin
1018,152117,5725,23863,6841,1,0,N,N,N,CP_Drtn,TT_Task,DT_FixedDUR2,RV_OK,TK_NotStart,4229EEL210,MRP for Electrical bulk,,448,0,40,0,0,0,40,0,0,0,,,,2012-10-03 08:00,2012-10-09 16:00,,2012-07-10 08:00,2012-07-16 16:00,2012-07-10 08:00,2012-07-16 16:00,2012-07-10 08:00,2012-07-16 16:00,,2012-10-03 08:00,2012-10-09 16:00,,PT_Normal,,,,,P3SIKLgjSEyztKdPwGoThQ,uCQ7t7XtkE2pu5tmschigw,,,N,0,0,,,2012-07-16 15:38,2012-07-16 15:38,admin,admin
1019,152147,5725,23881,6841,1,100,N,N,N,CP_Drtn,TT_Task,DT_FixedDUR2,RV_OK,TK_Complete,4229EIN320,MRP for  pressure regulator valves,,,,0,0,0,0,40,0,0,0,,2012-05-27 00:00,2012-05-31 00:00,2012-08-05 08:00,2012-08-05 08:00,,2012-06-30 00:00,2012-06-30 00:00,,,2012-06-03 08:00,2012-06-07 16:00,,,,,PT_Normal,,,,,+tHRbxZJbkeK8GuuBDFK4w,uCQ7t7XtkE2pu5tmschigw,,,N,0,0,,,2012-07-16 15:38,2012-07-16 15:38,admin,admin
1020,152151,5725,23881,6841,1,100,N,N,N,CP_Drtn,TT_Task,DT_FixedDUR2,RV_OK,TK_Complete,4229EIN50,Issue MRQ for SDV,,,,0,0,0,0,40,0,0,0,,2011-10-12 08:48,2011-10-26 00:00,2013-02-24 16:00,2013-02-24 16:00,,2012-06-30 00:00,2012-06-30 00:00,,,2011-10-12 08:48,2011-10-19 08:48,,,,,PT_Normal,,,,,APw17chR10OPJzVY+ZQhXQ,oARo+yhXM0mbfyeEpyVYrw,,,N,0,0,,,2012-07-16 15:38,2012-07-16 15:38,admin,admin
1021,152156,5725,23881,6841,1,100,N,N,N,CP_Drtn,TT_Task,DT_FixedDUR2,RV_OK,TK_Complete,4229EIN360,T.E.R for Instrument electrical bulk,,,,0,0,0,0,120,0,0,0,,2012-03-26 00:00,2012-06-03 00:00,2012-10-04 08:00,2012-10-04 08:00,,2012-06-30 00:00,2012-06-30 00:00,,,2012-04-25 08:00,2012-05-15 16:00,,,,,PT_Normal,,,,,uHuPFGgnakGfYTJjRNFL2w,ErUDIEAHkEWZWIjcmb+Ptg,,,N,0,0,,,2012-07-16 15:38,2012-07-16 15:38,admin,admin
1022,152163,5725,23881,6841,1,0,N,N,N,CP_Drtn,TT_Task,DT_FixedDUR2,RV_OK,TK_NotStart,4229EIN350,MRP for field Instrument,,280,0,40,0,0,0,40,0,0,0,,,,2012-08-30 08:00,2012-09-05 16:00,,2012-07-05 08:00,2012-07-11 16:00,2012-07-05 08:00,2012-07-11 16:00,2012-07-05 08:00,2012-07-11 16:00,,2012-08-30 08:00,2012-09-05 16:00,,PT_Normal,,,,,5/eNPsd4VkSwxGgJeOOtjg,uCQ7t7XtkE2pu5tmschigw,,,N,0,0,,,2012-07-16 15:38,2012-07-16 15:38,admin,admin
1023,152170,5725,23881,6841,1,100,N,N,N,CP_Drtn,TT_Task,DT_FixedDUR2,RV_OK,TK_Complete,4229EIN80,T.E.R for  SGS,,,,0,0,0,0,200,0,0,0,,2011-09-28 08:00,2012-01-09 16:00,2012-07-29 08:00,2012-07-29 08:00,,2012-06-30 00:00,2012-06-30 00:00,,,2011-09-28 08:00,2011-11-02 16:00,,,,,PT_Normal,,,,,DAQ6RDqGRkqTV+vCyg69Qg,+adQvSlUzkOZha6HG7fiRA,,,N,0,0,,,2012-07-16 15:38,2012-07-16 15:38,admin,admin
1024,152259,5725,23874,6841,1,0,N,N,N,CP_Drtn,TT_Task,DT_FixedDUR2,RV_OK,TK_NotStart,4229ETE120,Telecommunication equipment layout IFC (Expected to be cancelled),,1096,1096,80,0,0,0,80,0,0,0,,,,2013-02-11 08:00,2013-02-24 16:00,,2012-07-19 08:00,2012-08-01 16:00,2012-07-19 08:00,2012-08-01 16:00,2012-07-19 08:00,2012-08-01 16:00,,2013-02-11 08:00,2013-02-24 16:00,,PT_Normal,,,,,ceNUQoWLeUidAM8tnQ6N0g,,,,N,0,0,,,2012-07-16 15:38,2012-07-16 15:38,admin,admin
1025,152263,5725,24288,6841,1,100,N,N,N,CP_Drtn,TT_Task,DT_FixedDUR2,RV_OK,TK_Complete,4229PAB10,Issue RFQ for Additional Piping Ball valves,,,,0,0,0,0,8,0,0,0,,2012-05-27 00:00,2012-05-27 00:00,2012-07-31 08:00,2012-07-31 08:00,,2012-06-30 00:00,2012-06-30 00:00,,,2012-07-02 08:00,2012-07-02 16:00,,,,,PT_Normal,,,,,AssQymtYO0WFIJ5b4gDRXQ,,,,N,0,0,,,2012-07-16 15:38,2012-07-16 15:38,admin,admin
1026,152264,5725,24288,6841,1,100,N,N,N,CP_Drtn,TT_Task,DT_FixedDUR2,RV_OK,TK_Complete,4229PAB20,Bidding for Piping Ball vlaves,,,,0,0,0,0,8,0,0,0,,2012-05-28 00:00,2012-06-14 00:00,2012-07-31 08:00,2012-07-31 08:00,,2012-06-30 00:00,2012-06-30 00:00,,,2012-07-03 08:00,2012-07-03 16:00,,,,,PT_Normal,,,,,QX1u6aopMkaMXGECmndgwg,,,,N,0,0,,,2012-07-16 15:38,2012-07-16 15:38,admin,admin
1027,152265,5725,24288,6841,1,0,N,N,N,CP_Drtn,TT_Task,DT_FixedDUR2,RV_OK,TK_Active,4229PAB30,T.E.R for Additional Piping Ball valves,,176,0,88,0,0,0,200,0,0,0,,2012-06-18 00:00,,2012-07-31 08:00,2012-08-14 16:00,2012-07-15 16:00,2012-07-01 08:00,2012-07-15 16:00,2012-07-01 08:00,2012-07-15 16:00,2012-07-04 08:00,2012-08-07 16:00,,2012-07-31 08:00,2012-08-14 16:00,,PT_Normal,,,,,12pmnxDQqEy3bCLm2Ug/fg,,,,N,0,0,,,2012-07-16 15:38,2012-07-16 15:38,admin,admin
1028,152266,5725,24288,6841,1,0,N,N,N,CP_Drtn,TT_Task,DT_FixedDUR2,RV_OK,TK_NotStart,4229PAB40,Receive revised commercial offers,,176,0,40,0,0,0,40,0,0,0,,,,2012-08-15 08:00,2012-08-28 16:00,,2012-07-16 08:00,2012-07-22 16:00,2012-07-16 08:00,2012-07-22 16:00,2012-07-16 08:00,2012-07-22 16:00,,2012-08-15 08:00,2012-08-28 16:00,,PT_Normal,,,,,AcMIgC5AyUWyavKeMUV4uQ,FwEF/itl1Eik4NN3KiYyyw,,,N,0,0,,,2012-07-16 15:38,2012-07-16 15:38,admin,admin
1029,152267,5725,24288,6841,1,0,N,N,N,CP_Drtn,TT_Task,DT_FixedDUR2,RV_OK,TK_NotStart,4229PAB50,commercial evaluation & bid committee for Piping Ball valves,,176,0,80,0,0,0,80,0,0,0,,,,2012-08-29 08:00,2012-09-11 16:00,,2012-07-23 08:00,2012-08-05 16:00,2012-07-23 08:00,2012-08-05 16:00,2012-07-23 08:00,2012-08-05 16:00,,2012-08-29 08:00,2012-09-11 16:00,,PT_Normal,,,,,4Lfr1uKvBEeK9CbKcJEdrA,aMkRt1EtRUKICqJrM4PQmg,,,N,0,0,,,2012-07-16 15:38,2012-07-16 15:38,admin,admin
1030,152268,5725,24288,6841,1,0,N,N,N,CP_Drtn,TT_Task,DT_FixedDUR2,RV_OK,TK_NotStart,4229PAB60,Client approval on bid committee reccomendation,,176,0,16,0,0,0,16,0,0,0,,,,2012-09-12 08:00,2012-09-13 16:00,,2012-08-06 08:00,2012-08-07 16:00,2012-08-06 08:00,2012-08-07 16:00,2012-08-06 08:00,2012-08-07 16:00,,2012-09-12 08:00,2012-09-13 16:00,,PT_Normal,,,,,VDciOWovp06oNixGZtPSHw,RH7qpcRJM02b5W1ZQZAbRA,,,N,0,0,,,2012-07-16 15:38,2012-07-16 15:38,admin,admin
1031,152269,5725,24288,6841,1,0,N,N,N,CP_Drtn,TT_Task,DT_FixedDUR2,RV_OK,TK_NotStart,4229PAB70,F.O.C for Piping Ball valves,,176,0,24,0,0,0,24,0,0,0,,,,2012-09-16 08:00,2012-09-18 16:00,,2012-08-08 08:00,2012-08-12 16:00,2012-08-08 08:00,2012-08-12 16:00,2012-08-08 08:00,2012-08-12 16:00,,2012-09-16 08:00,2012-09-18 16:00,,PT_Normal,,,,,Sr3NBXDS6UiEizIgnpY8Tw,,,,N,0,0,,,2012-07-16 15:38,2012-07-16 15:38,admin,admin
1032,152270,5725,24288,6841,1,0,N,N,N,CP_Drtn,TT_LOE,DT_FixedDUR2,RV_OK,TK_NotStart,4229PAB80,MRP for Piping Ball valves,,176,0,40,0,0,0,40,0,0,0,,,,2012-09-19 08:00,2012-09-25 16:00,,2012-08-13 08:00,2012-08-26 16:00,2012-08-13 08:00,2012-08-26 16:00,2012-08-13 08:00,2012-08-26 16:00,,2012-09-19 08:00,2012-09-25 16:00,,PT_Normal,,,,,bAhHBukpqUqqCrgdbX5jmA,,,,N,0,0,,,2012-07-16 15:38,2012-07-16 15:38,admin,admin
1033,152271,5725,24288,6841,1,0,N,N,N,CP_Drtn,TT_Task,DT_FixedDUR2,RV_OK,TK_NotStart,4229PAB90,P.O for Piping Ball valves,,176,0,16,0,0,0,16,0,0,0,,,,2012-09-26 08:00,2012-09-27 16:00,,2012-08-27 08:00,2012-08-28 16:00,2012-08-27 08:00,2012-08-28 16:00,2012-08-27 08:00,2012-08-28 16:00,,2012-09-26 08:00,2012-09-27 16:00,,PT_Normal,,,,,B7KHLOYr/EuS5zzGGMOesg,,,,N,0,0,,,2012-07-16 15:38,2012-07-16 15:38,admin,admin
1034,152272,5725,24288,6841,1,0,N,N,N,CP_Drtn,TT_Task,DT_FixedDUR2,RV_OK,TK_NotStart,4229PAB100,L.C issued by Gupco,,944,944,40,0,0,0,40,0,0,0,,,,2013-02-18 08:00,2013-02-24 16:00,,2012-08-29 08:00,2012-09-04 16:00,2012-08-29 08:00,2012-09-04 16:00,2012-08-29 08:00,2012-09-04 16:00,,2013-02-18 08:00,2013-02-24 16:00,,PT_Normal,,,,,boQOxAfojkqbqxwvYaRNlw,,,,N,0,0,,,2012-07-16 15:38,2012-07-16 15:38,admin,admin
1035,152273,5725,24288,6842,1,0,N,N,N,CP_Drtn,TT_Task,DT_FixedDUR2,RV_OK,TK_NotStart,4229PAB110,Fabrication upto R.F.S,,216,0,1120,0,0,0,1120,0,0,0,,,,2012-09-28 08:00,2013-02-14 16:00,,2012-09-01 08:00,2013-01-18 16:00,2012-09-01 08:00,2013-01-18 16:00,2012-09-01 08:00,2013-01-18 16:00,,2012-09-28 08:00,2013-02-14 16:00,,PT_Normal,,,,,eO9gLfg9nEurMff9/FOpWQ,,,,N,0,0,,,2012-07-16 15:38,2012-07-16 15:38,admin,admin
1036,152274,5725,24288,6842,1,0,N,N,N,CP_Drtn,TT_Task,DT_FixedDUR2,RV_OK,TK_NotStart,4229PAB120,Delivery upto site,,216,216,80,0,0,0,80,0,0,0,,,,2013-02-15 08:00,2013-02-24 16:00,,2013-01-19 08:00,2013-01-28 16:00,2013-01-19 08:00,2013-01-28 16:00,2013-01-19 08:00,2013-01-28 16:00,,2013-02-15 08:00,2013-02-24 16:00,,PT_Normal,,,,,Wrp95CnkVEeP5jr6N5bZNA,,,,N,0,0,,,2012-07-16 15:38,2012-07-16 15:38,admin,admin
1037,152276,5725,24295,6841,1,100,N,N,N,CP_Drtn,TT_Task,DT_FixedDUR2,RV_OK,TK_Complete,4229PAV10,"Issue RFQ for Additional Piping Gate,Globe & Butterfly valves",,,,0,0,0,0,8,0,0,0,,2012-05-27 00:00,2012-05-27 00:00,2012-07-31 08:00,2012-07-31 08:00,,2012-06-30 00:00,2012-06-30 00:00,,,2012-07-02 08:00,2012-07-02 16:00,,,,,PT_Normal,,,,,dv+tyjy18k+115ItxHIX/g,FwEF/itl1Eik4NN3KiYyyw,,,N,0,0,,,2012-07-16 15:38,2012-07-16 15:38,admin,admin
1038,152277,5725,24295,6841,1,100,N,N,N,CP_Drtn,TT_Task,DT_FixedDUR2,RV_OK,TK_Complete,4229PAV20,"Bidding for Piping Gate,Globe & Butterfly valves",,,,0,0,0,0,8,0,0,0,,2012-05-28 00:00,2012-06-14 00:00,2012-07-31 08:00,2012-07-31 08:00,,2012-06-30 00:00,2012-06-30 00:00,,,2012-07-03 08:00,2012-07-03 16:00,,,,,PT_Normal,,,,,vVjE1XtfzU+aoNMGZmPCZQ,aMkRt1EtRUKICqJrM4PQmg,,,N,0,0,,,2012-07-16 15:38,2012-07-16 15:38,admin,admin
1039,152278,5725,24295,6841,1,0,N,N,N,CP_Drtn,TT_Task,DT_FixedDUR2,RV_OK,TK_Active,4229PAV30,"T.E.R for Additional Piping Gate,Globe & Butterfly valves",,176,0,88,0,0,0,200,0,0,0,,2012-06-18 00:00,,2012-07-31 08:00,2012-08-14 16:00,2012-07-15 16:00,2012-07-01 08:00,2012-07-15 16:00,2012-07-01 08:00,2012-07-15 16:00,2012-07-04 08:00,2012-08-07 16:00,,2012-07-31 08:00,2012-08-14 16:00,,PT_Normal,,,,,sm76F6w7d0qKRmneXcBb1A,RH7qpcRJM02b5W1ZQZAbRA,,,N,0,0,,,2012-07-16 15:38,2012-07-16 15:38,admin,admin
1040,152279,5725,24295,6841,1,0,N,N,N,CP_Drtn,TT_Task,DT_FixedDUR2,RV_OK,TK_NotStart,4229PAV40,Receive revised commercial offers,,176,0,40,0,0,0,40,0,0,0,,,,2012-08-15 08:00,2012-08-28 16:00,,2012-07-16 08:00,2012-07-22 16:00,2012-07-16 08:00,2012-07-22 16:00,2012-07-16 08:00,2012-07-22 16:00,,2012-08-15 08:00,2012-08-28 16:00,,PT_Normal,,,,,mtQwWPxl9UGTZzCJFELqaw,KUxnnqxH3Ei7e0eeU0x9xQ,,,N,0,0,,,2012-07-16 15:38,2012-07-16 15:38,admin,admin
1041,152280,5725,24295,6841,1,0,N,N,N,CP_Drtn,TT_Task,DT_FixedDUR2,RV_OK,TK_NotStart,4229PAV50,"commercial evaluation & bid committee for  Piping Gate,Globe & Butterfly valves",,176,0,80,0,0,0,80,0,0,0,,,,2012-08-29 08:00,2012-09-11 16:00,,2012-07-23 08:00,2012-08-05 16:00,2012-07-23 08:00,2012-08-05 16:00,2012-07-23 08:00,2012-08-05 16:00,,2012-08-29 08:00,2012-09-11 16:00,,PT_Normal,,,,,g3BmgpzuRUW2RY/hmqh1Ug,SWSIuejBJUm8AtZ3rQPBPA,,,N,0,0,,,2012-07-16 15:38,2012-07-16 15:38,admin,admin
1042,152281,5725,24295,6841,1,0,N,N,N,CP_Drtn,TT_Task,DT_FixedDUR2,RV_OK,TK_NotStart,4229PAV60,Client approval on bid committee reccomendation,,176,0,16,0,0,0,16,0,0,0,,,,2012-09-12 08:00,2012-09-13 16:00,,2012-08-06 08:00,2012-08-07 16:00,2012-08-06 08:00,2012-08-07 16:00,2012-08-06 08:00,2012-08-07 16:00,,2012-09-12 08:00,2012-09-13 16:00,,PT_Normal,,,,,22IW7jLSLk+gViP/xGdjqQ,E6SjKvXXkUS/0VNojkjwrA,,,N,0,0,,,2012-07-16 15:38,2012-07-16 15:38,admin,admin
1043,152282,5725,24295,6841,1,0,N,N,N,CP_Drtn,TT_Task,DT_FixedDUR2,RV_OK,TK_NotStart,4229PAV70,"F.O.C for Piping Gate,Globe & Butterfly valves",,176,0,24,0,0,0,24,0,0,0,,,,2012-09-16 08:00,2012-09-18 16:00,,2012-08-08 08:00,2012-08-12 16:00,2012-08-08 08:00,2012-08-12 16:00,2012-08-08 08:00,2012-08-12 16:00,,2012-09-16 08:00,2012-09-18 16:00,,PT_Normal,,,,,G+oJ2vyWm0ui8NBAJJkYbA,4iXMPXo2nkaoU95fPW+GkQ,,,N,0,0,,,2012-07-16 15:38,2012-07-16 15:38,admin,admin
1044,152283,5725,24295,6841,1,0,N,N,N,CP_Drtn,TT_LOE,DT_FixedDUR2,RV_OK,TK_NotStart,4229PAV80,"MRP for Piping Gate,Globe & Butterfly valves",,176,0,40,0,0,0,40,0,0,0,,,,2012-09-19 08:00,2012-09-25 16:00,,2012-08-13 08:00,2012-08-26 16:00,2012-08-13 08:00,2012-08-26 16:00,2012-08-13 08:00,2012-08-26 16:00,,2012-09-19 08:00,2012-09-25 16:00,,PT_Normal,,,,,WVUC1Uc5WEuwuhWDTCDVjA,FuA8KN8VkUSjAmeIm0l2Gw,,,N,0,0,,,2012-07-16 15:38,2012-07-16 15:38,admin,admin
1045,152284,5725,24295,6841,1,0,N,N,N,CP_Drtn,TT_Task,DT_FixedDUR2,RV_OK,TK_NotStart,4229PAV90,"P.O for Piping Gate,Globe & Butterfly valves",,176,0,16,0,0,0,16,0,0,0,,,,2012-09-26 08:00,2012-09-27 16:00,,2012-08-27 08:00,2012-08-28 16:00,2012-08-27 08:00,2012-08-28 16:00,2012-08-27 08:00,2012-08-28 16:00,,2012-09-26 08:00,2012-09-27 16:00,,PT_Normal,,,,,nspFHk2MrkW0QZvlcnwOIA,xZ76M0aKkUmgQm/Fxkq2+w,,,N,0,0,,,2012-07-16 15:38,2012-07-16 15:38,admin,admin
1046,152285,5725,24295,6841,1,0,N,N,N,CP_Drtn,TT_Task,DT_FixedDUR2,RV_OK,TK_NotStart,4229PAV100,L.C issued by Gupco,,944,944,40,0,0,0,40,0,0,0,,,,2013-02-18 08:00,2013-02-24 16:00,,2012-08-29 08:00,2012-09-04 16:00,2012-08-29 08:00,2012-09-04 16:00,2012-08-29 08:00,2012-09-04 16:00,,2013-02-18 08:00,2013-02-24 16:00,,PT_Normal,,,,,czjVQOBuw0+HJXhpmQ0Cow,I6ltCAqlK0KCAvUgZ2WY2w,,,N,0,0,,,2012-07-16 15:38,2012-07-16 15:38,admin,admin
1047,152286,5725,24295,6842,1,0,N,N,N,CP_Drtn,TT_Task,DT_FixedDUR2,RV_OK,TK_NotStart,4229PAV110,Fabrication upto R.F.S,,216,0,1120,0,0,0,1120,0,0,0,,,,2012-09-28 08:00,2013-02-14 16:00,,2012-09-01 08:00,2013-01-18 16:00,2012-09-01 08:00,2013-01-18 16:00,2012-09-01 08:00,2013-01-18 16:00,,2012-09-28 08:00,2013-02-14 16:00,,PT_Normal,,,,,4z4a2WyG4U6sVyiLbhOViA,+OB3Vyf/Fkq/vnJiHfo5iQ,,,N,0,0,,,2012-07-16 15:38,2012-07-16 15:38,admin,admin
1048,152287,5725,24295,6842,1,0,N,N,N,CP_Drtn,TT_Task,DT_FixedDUR2,RV_OK,TK_NotStart,4229PAV120,Delivery upto site,,216,216,80,0,0,0,80,0,0,0,,,,2013-02-15 08:00,2013-02-24 16:00,,2013-01-19 08:00,2013-01-28 16:00,2013-01-19 08:00,2013-01-28 16:00,2013-01-19 08:00,2013-01-28 16:00,,2013-02-15 08:00,2013-02-24 16:00,,PT_Normal,,,,,DM7WmygkVEOpWF63WOJpZA,kXNa+ni+dU+elBUqtqirLA,,,N,0,0,,,2012-07-16 15:38,2012-07-16 15:38,admin,admin
1049,152288,5725,23882,6841,1,100,N,N,N,CP_Drtn,TT_Task,DT_FixedDUR2,RV_OK,TK_Complete,4229EPI350,"MRQ for Additional Piping Gate,Globe & Butterfly valves",,,,0,0,0,0,32,0,0,0,,2012-05-20 00:00,2012-05-24 00:00,2012-07-31 08:00,2012-07-31 08:00,,2012-06-30 00:00,2012-06-30 00:00,,,2012-07-01 08:00,2012-07-04 16:00,,,,,PT_Normal,,,,,tLTzHPkw90KA2JB0KfvHWg,,,,N,0,0,,,2012-07-16 15:38,2012-07-16 15:38,admin,admin
1050,152289,5725,23882,6841,1,0,N,N,N,CP_Drtn,TT_Task,DT_FixedDUR2,RV_OK,TK_NotStart,4229EPI470,MRP for additional Piping Ball valves,,176,0,40,0,0,0,40,0,0,0,,,,2012-09-19 08:00,2012-09-25 16:00,,2012-08-13 08:00,2012-08-26 16:00,2012-08-13 08:00,2012-08-26 16:00,2012-08-13 08:00,2012-08-26 16:00,,2012-09-19 08:00,2012-09-25 16:00,,PT_Normal,,,,,R+G6Fotz70qHIrE65WImgA,,,,N,0,0,,,2012-07-16 15:38,2012-07-16 15:38,admin,admin
1051,152290,5725,23882,6841,1,0,N,N,N,CP_Drtn,TT_Task,DT_FixedDUR2,RV_OK,TK_NotStart,4229EPI480,"MRP for Additional Piping Gate,Globe & Butterfly valves",,176,0,40,0,0,0,40,0,0,0,,,,2012-09-19 08:00,2012-09-25 16:00,,2012-08-13 08:00,2012-08-26 16:00,2012-08-13 08:00,2012-08-26 16:00,2012-08-13 08:00,2012-08-26 16:00,,2012-09-19 08:00,2012-09-25 16:00,,PT_Normal,,,,,+35p6srwh06BLLMKMo1bBQ,,,,N,0,0,,,2012-07-16 15:38,2012-07-16 15:38,admin,admin
1052,152291,5725,23853,6841,1,0,N,N,N,CP_Drtn,TT_Task,DT_FixedDUR2,RV_OK,TK_NotStart,4229EPI510,Issue GA`s- Construction,,968,0,40,0,0,0,40,0,0,0,,,,2013-02-18 08:00,2013-02-24 16:00,2012-08-30 16:00,2012-08-26 08:00,2012-08-30 16:00,2012-08-26 08:00,2012-08-30 16:00,2012-08-26 08:00,2012-08-30 16:00,,2013-02-18 08:00,2013-02-24 16:00,,PT_Normal,,,,,ns+CBaDDykur9erJZ5zPpA,,,,N,0,0,,,2012-07-16 15:38,2012-07-16 15:38,admin,admin
