,task_id,proj_id,wbs_id,clndr_id,est_wt,phys_complete_pct,rev_fdbk_flag,lock_plan_flag,auto_compute_act_flag,complete_pct_type,task_type,duration_type,review_type,status_code,task_code,task_name,rsrc_id,total_float_hr_cnt,free_float_hr_cnt,remain_drtn_hr_cnt,act_work_qty,remain_work_qty,target_work_qty,target_drtn_hr_cnt,target_equip_qty,act_equip_qty,remain_equip_qty,cstr_date,act_start_date,act_end_date,late_start_date,late_end_date,expect_end_date,early_start_date,early_end_date,restart_date,reend_date,target_start_date,target_end_date,review_end_date,rem_late_start_date,rem_late_end_date,cstr_type,priority_type,suspend_date,resume_date,float_path,float_path_order,guid,tmpl_guid,cstr_date2,cstr_type2,driving_path_flag,act_this_per_work_qty,act_this_per_equip_qty,external_early_start_date,external_late_end_date,create_date,update_date,create_user,update_user
0,150597,5776,24162,6945,1,0,N,N,N,CP_Drtn,TT_Task,DT_FixedDUR2,RV_OK,TK_NotStart,4229PPC140,Fabrication upto R.F.S for pump,,296,0,1120,0,0,0,1120,0,0,0,,,,2012-08-12 08:00,2013-01-10 16:00,,2012-07-06 08:00,2012-12-04 16:00,2012-07-06 08:00,2012-12-04 16:00,2012-07-06 08:00,2012-12-04 16:00,,2012-08-12 08:00,2013-01-10 16:00,,PT_Normal,,,,,TqhJV97AqU2NUfrog44jYQ,a1p6ym4oS+6+JNBX4DLt6Q,,,N,0,0,,,2012-07-16 15:21,2012-07-16 15:21,admin,admin
1,150598,5776,24162,6946,1,0,N,N,N,CP_Drtn,TT_Task,DT_FixedDUR2,RV_OK,TK_NotStart,4229PPC150,Delivery upto site for pump,,312,312,360,0,0,0,360,0,0,0,,,,2013-01-11 08:00,2013-02-24 16:00,,2012-12-05 08:00,2013-01-16 16:00,2012-12-05 08:00,2013-01-16 16:00,2012-12-05 08:00,2013-01-16 16:00,,2013-01-11 08:00,2013-02-24 16:00,,PT_Normal,,,,,MeYxbhlVIEerINzMJFaWcg,u9JIoe/yQfmyL1WOCEcyRg,,,N,0,0,,,2012-07-16 15:21,2012-07-16 15:21,admin,admin
2,150599,5776,24162,6944,1,100,N,N,N,CP_Drtn,TT_Task,DT_FixedDUR2,RV_OK,TK_Complete,4229PPC130,Receive revised commercial offers for pump,,,,0,0,0,0,40,0,0,0,,2012-06-13 00:00,2012-06-19 00:00,2012-08-05 08:00,2012-08-05 08:00,,2012-06-30 00:00,2012-06-30 00:00,,,2012-07-01 08:00,2012-07-05 16:00,,,,,PT_Normal,,,,,rwxorTv69kSjxwtiz2aRRw,T9aUbtojSXilwnqU2Wi+6w,,,N,0,0,,,2012-07-16 15:21,2012-07-16 15:21,admin,admin
3,150600,5776,24162,6944,1,0,N,N,N,CP_Drtn,TT_Task,DT_FixedDUR2,RV_OK,TK_Active,4229PPC160,Client approval on bid committee reccomendation,,200,0,16,0,0,0,16,0,0,0,,2012-06-25 00:00,,2012-08-05 08:00,2012-08-06 16:00,,2012-07-01 08:00,2012-07-02 16:00,2012-07-01 08:00,2012-07-02 16:00,2012-07-01 08:00,2012-07-02 16:00,,2012-08-05 08:00,2012-08-06 16:00,,PT_Normal,,,,,+GwIbYJ8HUit3VgVRn0iYA,dsqur9zFTQ2kGKH9ey3RIw,,,N,0,0,,,2012-07-16 15:21,2012-07-16 15:21,admin,admin
4,150601,5776,24162,6944,1,0,N,N,N,CP_Drtn,TT_Task,DT_FixedDUR2,RV_OK,TK_NotStart,4229PPC170,L.C issued by Gupco,,1128,1128,40,0,0,0,40,0,0,0,,,,2013-02-18 08:00,2013-02-24 16:00,,2012-07-22 08:00,2012-07-26 16:00,2012-07-22 08:00,2012-07-26 16:00,2012-07-22 08:00,2012-07-26 16:00,,2013-02-18 08:00,2013-02-24 16:00,,PT_Normal,,,,,nMd2137s8E2udKeWNoFwMw,OMAcK7vgQqWlnsKzB4SywA,,,N,0,0,,,2012-07-16 15:21,2012-07-16 15:21,admin,admin
5,150602,5776,24162,6944,1,100,N,N,N,CP_Drtn,TT_Task,DT_FixedDUR2,RV_OK,TK_Complete,4229PPC100,Issue RFQ for pump,,,,0,0,0,0,16,0,0,0,,2012-03-14 00:00,2012-03-20 00:00,2012-08-05 08:00,2012-08-05 08:00,,2012-06-30 00:00,2012-06-30 00:00,,,2012-04-29 08:00,2012-04-30 16:00,,,,,PT_Normal,,,,,EZ84SYKVl0mfYXQfUKjZZw,+2aOWobYTG6hCGLLfOCD3Q,,,N,0,0,,,2012-07-16 15:21,2012-07-16 15:21,admin,admin
6,150603,5776,24162,6945,1,100,N,N,N,CP_Drtn,TT_Task,DT_FixedDUR2,RV_OK,TK_Complete,4229PPC110,Bidding for pump,,,,0,0,0,0,320,0,0,0,,2012-03-21 00:00,2012-04-28 00:00,2012-08-05 08:00,2012-08-05 08:00,,2012-06-30 00:00,2012-06-30 00:00,,,2012-04-28 08:00,2012-06-06 16:00,,,,,PT_Normal,,,,,SiwoBEgQN0KTLcb6kgUevw,tYAyHVveTym5PZWh1QwHuQ,,,N,0,0,,,2012-07-16 15:21,2012-07-16 15:21,admin,admin
7,150604,5776,24162,6944,1,100,N,N,N,CP_Drtn,TT_Task,DT_FixedDUR2,RV_OK,TK_Complete,4229PPC180,commercial evaluation & bid committee for pump,,,,0,0,0,0,0,0,0,0,,2012-06-20 00:00,2012-06-21 00:00,2012-08-05 08:00,2012-08-05 08:00,,2012-06-30 00:00,2012-06-30 00:00,,,2012-07-08 08:00,2012-07-08 08:00,,,,,PT_Normal,,,,,gGi4QC5SU0qR0Cjsu4knDg,7F1NBuHCRsuN+gRucuQXhg,,,N,0,0,,,2012-07-16 15:21,2012-07-16 15:21,admin,admin
8,150605,5776,24162,6944,1,0,N,N,N,CP_Drtn,TT_Task,DT_FixedDUR2,RV_OK,TK_NotStart,4229PPC190,F.O.C for pump,,200,0,24,0,0,0,24,0,0,0,,,,2012-08-07 08:00,2012-08-09 16:00,,2012-07-03 08:00,2012-07-05 16:00,2012-07-03 08:00,2012-07-05 16:00,2012-07-03 08:00,2012-07-05 16:00,,2012-08-07 08:00,2012-08-09 16:00,,PT_Normal,,,,,d1lD4fRi80SjwXXxJdLBhw,s40e5+jDQyOWv96vSoQDuQ,,,N,0,0,,,2012-07-16 15:21,2012-07-16 15:21,admin,admin
9,150606,5776,24162,6944,1,0,N,N,N,CP_Drtn,TT_Task,DT_FixedDUR2,RV_OK,TK_NotStart,4229PPC200,P.O for pump,,1128,0,40,0,0,0,40,0,0,0,,,,2013-02-11 08:00,2013-02-17 16:00,,2012-07-15 08:00,2012-07-19 16:00,2012-07-15 08:00,2012-07-19 16:00,2012-07-15 08:00,2012-07-19 16:00,,2013-02-11 08:00,2013-02-17 16:00,,PT_Normal,,,,,yxausG+IiEa9dnjJuoSXAw,A5Q7aUOxRr+lBFCKOJdk6Q,,,N,0,0,,,2012-07-16 15:22,2012-07-16 15:22,admin,admin
10,150607,5776,24162,6944,1,100,N,N,N,CP_Drtn,TT_LOE,DT_FixedDUR2,RV_OK,TK_Complete,4229PPC120,T.E.R for  pump,,,,0,0,0,0,240,0,0,0,,2012-04-29 00:00,2012-06-12 00:00,,,,,,,,2012-04-29 08:00,2012-06-07 16:00,,,,,PT_Normal,,,,,ShL9Q/HWXkKtaFP/pGcGsw,qop3jGJXRzSmAG4KFxnkEQ,,,N,0,0,,,2012-07-16 15:22,2012-07-16 15:22,admin,admin
11,150608,5776,24162,6944,1,0,N,N,N,CP_Drtn,TT_LOE,DT_FixedDUR2,RV_OK,TK_NotStart,4229PPC210,MRP for pump,,1128,0,40,0,0,0,40,0,0,0,,,,2013-02-04 08:00,2013-02-10 16:00,,2012-07-08 08:00,2012-07-12 16:00,2012-07-08 08:00,2012-07-12 16:00,2012-07-08 08:00,2012-07-12 16:00,,2013-02-04 08:00,2013-02-10 16:00,,PT_Normal,,,,,6jN+pmSOdEKkM5fSCiXYGA,uQOO7klWSbqBLLrj/LWZpQ,,,N,0,0,,,2012-07-16 15:22,2012-07-16 15:22,admin,admin
12,150609,5776,24163,6944,1,0,N,N,N,CP_Drtn,TT_LOE,DT_FixedDUR2,RV_OK,TK_NotStart,4229PFV170,MRP for SDV,,1072,0,40,0,0,0,40,0,0,0,,,,2013-02-07 08:00,2013-02-13 16:00,,2012-07-22 08:00,2012-07-26 16:00,2012-07-22 08:00,2012-07-26 16:00,2012-07-22 08:00,2012-07-26 16:00,,2013-02-07 08:00,2013-02-13 16:00,,PT_Normal,,,,,ZNmRZm12DEunHmv+fb9V6w,yW+b6vdoTdiABNTPTmZG3Q,,,N,0,0,,,2012-07-16 15:22,2012-07-16 15:22,admin,admin
13,150610,5776,24163,6945,1,0,N,N,N,CP_Drtn,TT_Task,DT_FixedDUR2,RV_OK,TK_NotStart,4229PFV200,Fabrication upto R.F.S,,0,0,1344,0,0,0,1344,0,0,0,,,,2012-07-20 08:00,2013-01-15 16:00,,2012-07-20 08:00,2013-01-15 16:00,2012-07-20 08:00,2013-01-15 16:00,2012-07-20 08:00,2013-01-15 16:00,,2012-07-20 08:00,2013-01-15 16:00,,PT_Normal,,,1,4,j6WPgcb5qkiARgKDXvIj5g,YpF1cbjLSNmmuSIlXsh/5g,,,Y,0,0,,,2012-07-16 15:22,2012-07-16 15:22,admin,admin
14,150611,5776,24163,6945,1,0,N,N,N,CP_Drtn,TT_Task,DT_FixedDUR2,RV_OK,TK_NotStart,4229PFV210,Delivery upto site,,0,0,320,0,0,0,320,0,0,0,,,,2013-01-16 08:00,2013-02-24 16:00,,2013-01-16 08:00,2013-02-24 16:00,2013-01-16 08:00,2013-02-24 16:00,2013-01-16 08:00,2013-02-24 16:00,,2013-01-16 08:00,2013-02-24 16:00,,PT_Normal,,,1,5,oC8qD4+HbUSqilMwTrgv4g,NgGQizK+RduStbx0VPvmwQ,,,Y,0,0,,,2012-07-16 15:22,2012-07-16 15:22,admin,admin
15,150612,5776,24163,6944,1,100,N,N,N,CP_Drtn,TT_Task,DT_FixedDUR2,RV_OK,TK_Complete,4229PFV130,Receive revised commercial offers,,,,0,0,0,0,40,0,0,0,,2012-06-26 00:00,2012-06-28 00:00,2012-07-01 08:00,2012-07-01 08:00,,2012-06-30 00:00,2012-06-30 00:00,,,2012-07-01 08:00,2012-07-05 16:00,,,,,PT_Normal,,,,,l9c6Rbv/fEOFwcRFGzV0hA,xZAyxBt6SKW9L4MiAA3DVA,,,Y,0,0,,,2012-07-16 15:22,2012-07-16 15:22,admin,admin
16,150613,5776,24163,6944,1,0,N,N,N,CP_Drtn,TT_Task,DT_FixedDUR2,RV_OK,TK_NotStart,4229PFV150,Client approval on bid committee reccommendation,,0,0,16,0,0,0,16,0,0,0,,,,2012-07-16 08:00,2012-07-17 16:00,,2012-07-16 08:00,2012-07-17 16:00,2012-07-16 08:00,2012-07-17 16:00,2012-07-16 08:00,2012-07-17 16:00,,2012-07-16 08:00,2012-07-17 16:00,,PT_Normal,,,1,2,+LSMERWO90GTGHdqtUagZw,Geyi07DTSxOfOHFyI/Uohw,,,Y,0,0,,,2012-07-16 15:22,2012-07-16 15:22,admin,admin
17,150614,5776,24163,6944,1,0,N,N,N,CP_Drtn,TT_Task,DT_FixedDUR2,RV_OK,TK_NotStart,4229PFV190,L.C issued by Gupco,,1072,1072,40,0,0,0,40,0,0,0,,,,2013-02-18 08:00,2013-02-24 16:00,,2012-07-31 08:00,2012-08-06 16:00,2012-07-31 08:00,2012-08-06 16:00,2012-07-31 08:00,2012-08-06 16:00,,2013-02-18 08:00,2013-02-24 16:00,,PT_Normal,,,,,UfW4u8FGPU+Lq1TNftE0vA,y5LsRR69QQOuwAg4V5LzDQ,,,N,0,0,,,2012-07-16 15:22,2012-07-16 15:22,admin,admin
18,150615,5776,24163,6944,1,100,N,N,N,CP_Drtn,TT_Task,DT_FixedDUR2,RV_OK,TK_Complete,4229PFV100,Issue RFQ for SDV,,,,0,0,0,0,16,0,0,0,,2012-05-06 00:00,2012-05-07 16:00,2012-07-01 08:00,2012-07-01 08:00,,2012-06-30 00:00,2012-06-30 00:00,,,2012-04-29 08:00,2012-04-30 16:00,,,,,PT_Normal,,,,,SXNfOeNOWkWaxsIMtHPh+g,DZgy5C57TmGeuXtV8stk7g,,,Y,0,0,,,2012-07-16 15:22,2012-07-16 15:22,admin,admin
19,150616,5776,24163,6945,1,100,N,N,N,CP_Drtn,TT_Task,DT_FixedDUR2,RV_OK,TK_Complete,4229PFV110,Bidding for SDV,,,,0,0,0,0,240,0,0,0,,2012-05-01 08:00,2012-05-27 00:00,2012-07-01 08:00,2012-07-01 08:00,,2012-06-30 00:00,2012-06-30 00:00,,,2012-05-01 08:00,2012-05-30 16:00,,,,,PT_Normal,,,,,G8ILFtYxUECWV9b+yKICEQ,Y1VZYWCvS+ihGgfVbH0oMw,,,Y,0,0,,,2012-07-16 15:22,2012-07-16 15:22,admin,admin
20,150617,5776,24163,6944,1,0,N,N,N,CP_Drtn,TT_Task,DT_FixedDUR2,RV_OK,TK_Active,4229PFV140,Commercial evaluation & bid committee for SDV,,0,0,88,0,0,0,80,0,0,0,,2012-06-28 00:00,,2012-07-01 08:00,2012-07-15 16:00,,2012-07-01 08:00,2012-07-15 16:00,2012-07-01 08:00,2012-07-15 16:00,2012-07-08 08:00,2012-07-19 16:00,,2012-07-01 08:00,2012-07-15 16:00,,PT_Normal,,,1,1,8HVFaPskRUSAspMedjp6iA,LYMQdgR7RxyEuAULuvCsww,,,Y,0,0,,,2012-07-16 15:22,2012-07-16 15:22,admin,admin
21,150618,5776,24163,6944,1,0,N,N,N,CP_Drtn,TT_Task,DT_FixedDUR2,RV_OK,TK_NotStart,4229PFV160,F.O.C for SDV,,0,0,16,0,0,0,16,0,0,0,,,,2012-07-18 08:00,2012-07-19 16:00,,2012-07-18 08:00,2012-07-19 16:00,2012-07-18 08:00,2012-07-19 16:00,2012-07-18 08:00,2012-07-19 16:00,,2012-07-18 08:00,2012-07-19 16:00,,PT_Normal,,,1,3,3VGfmimyC0++ti5vmMeSeA,JlpKpXEVTleuOfYGVnTtSQ,,,Y,0,0,,,2012-07-16 15:22,2012-07-16 15:22,admin,admin
22,150619,5776,24163,6944,1,0,N,N,N,CP_Drtn,TT_Task,DT_FixedDUR2,RV_OK,TK_NotStart,4229PFV180,P.O for SDV,,1072,0,16,0,0,0,16,0,0,0,,,,2013-02-14 08:00,2013-02-17 16:00,,2012-07-29 08:00,2012-07-30 16:00,2012-07-29 08:00,2012-07-30 16:00,2012-07-29 08:00,2012-07-30 16:00,,2013-02-14 08:00,2013-02-17 16:00,,PT_Normal,,,,,eflLVUVH6k2cxmZAhGx9pQ,Q6pu6xH4QJWG7K0B3PCRfg,,,N,0,0,,,2012-07-16 15:22,2012-07-16 15:22,admin,admin
23,150620,5776,24163,6944,1,100,N,N,N,CP_Drtn,TT_LOE,DT_FixedDUR2,RV_OK,TK_Complete,4229PFV120,T.E.R for SDV,,,,0,0,0,0,80,0,0,0,,2012-05-27 00:00,2012-06-25 00:00,,,,,,,,2012-05-27 08:00,2012-06-07 16:00,,,,,PT_Normal,,,,,sPkLBCkKz0K2rT6tVlv7Xg,95OuTWdmTci9yjKVo77sOQ,,,N,0,0,,,2012-07-16 15:22,2012-07-16 15:22,admin,admin
24,150621,5776,24164,6944,1,0,N,N,N,CP_Drtn,TT_Task,DT_FixedDUR2,RV_OK,TK_NotStart,4229PAP130,Receive revised commercial offers,,696,0,40,0,0,0,40,0,0,0,,,,2012-11-14 08:00,2012-11-20 16:00,,2012-07-02 08:00,2012-07-08 16:00,2012-07-02 08:00,2012-07-08 16:00,2012-07-02 08:00,2012-07-08 16:00,,2012-11-14 08:00,2012-11-20 16:00,,PT_Normal,,,,,0JVC/+lpSkyRuOtEd7HYbw,l5/2fB1JQ1i2IDfyCFhI2Q,,,N,0,0,,,2012-07-16 15:22,2012-07-16 15:22,admin,admin
25,150622,5776,24164,6944,1,0,N,N,N,CP_Drtn,TT_Task,DT_FixedDUR2,RV_OK,TK_NotStart,4229PAP150,Client approval on bid committee reccomendation,,696,0,16,0,0,0,16,0,0,0,,,,2012-12-09 08:00,2012-12-10 16:00,,2012-07-25 08:00,2012-07-26 16:00,2012-07-25 08:00,2012-07-26 16:00,2012-07-25 08:00,2012-07-26 16:00,,2012-12-09 08:00,2012-12-10 16:00,,PT_Normal,,,,,2iXrUKtfq0+XV4A5IDrAJQ,kXkyA5JCSby3AKvv4I+fPw,,,N,0,0,,,2012-07-16 15:22,2012-07-16 15:22,admin,admin
26,150623,5776,24164,6944,1,0,N,N,N,CP_Drtn,TT_Task,DT_FixedDUR2,RV_OK,TK_NotStart,4229PAP190,L.C issued by Gupco,,1008,1008,40,0,0,0,40,0,0,0,,,,2013-02-18 08:00,2013-02-24 16:00,,2012-08-12 08:00,2012-08-16 16:00,2012-08-12 08:00,2012-08-16 16:00,2012-08-12 08:00,2012-08-16 16:00,,2013-02-18 08:00,2013-02-24 16:00,,PT_Normal,,,,,zkNIB9XC3UCpzojlZEtPIw,EMf+ksWjTcGuMuIbswsUsQ,,,N,0,0,,,2012-07-16 15:22,2012-07-16 15:22,admin,admin
27,150624,5776,24164,6946,1,0,N,N,N,CP_Drtn,TT_Task,DT_FixedDUR2,RV_OK,TK_NotStart,4229PAP210,Delivery upto site (Air Freight),,1000,1000,80,0,0,0,80,0,0,0,,,,2013-02-15 08:00,2013-02-24 16:00,,2012-10-15 08:00,2012-10-24 16:00,2012-10-15 08:00,2012-10-24 16:00,2012-10-15 08:00,2012-10-24 16:00,,2013-02-15 08:00,2013-02-24 16:00,,PT_Normal,,,,,UDJINT7vrEGXI3VAqTN9Bw,aOArhSsxTIK7Sik+Ukt+iQ,,,N,0,0,,,2012-07-16 15:22,2012-07-16 15:22,admin,admin
28,150625,5776,24164,6945,1,0,N,N,N,CP_Drtn,TT_Task,DT_FixedDUR2,RV_OK,TK_NotStart,4229PAP200,Fabrication upto R.F.S,,984,0,504,0,0,0,504,0,0,0,,,,2012-12-14 08:00,2013-02-14 16:00,,2012-08-01 08:00,2012-10-14 16:00,2012-08-01 08:00,2012-10-14 16:00,2012-08-01 08:00,2012-10-14 16:00,,2012-12-14 08:00,2013-02-14 16:00,,PT_Normal,,,,,EmB3rdhiW0q5M7n/KKlTdw,cHSTCih9Tk23IDxIZKUWJQ,,,N,0,0,,,2012-07-16 15:22,2012-07-16 15:22,admin,admin
29,150626,5776,24164,6944,1,100,N,N,N,CP_Drtn,TT_Task,DT_FixedDUR2,RV_OK,TK_Complete,4229PAP100,Issue RFQ for Piping bulk,,,,0,0,0,0,16,0,0,0,,2012-05-15 00:00,2012-05-16 16:00,2012-11-13 08:00,2012-11-13 08:00,,2012-06-30 00:00,2012-06-30 00:00,,,2012-04-29 08:00,2012-04-30 16:00,,,,,PT_Normal,,,,,9gjdLW9dVUWkBnRG6i1kag,6KlRPzYwSm21oBDABhlikw,,,N,0,0,,,2012-07-16 15:22,2012-07-16 15:22,admin,admin
30,150627,5776,24164,6944,1,0,N,N,N,CP_Drtn,TT_LOE,DT_FixedDUR2,RV_OK,TK_NotStart,4229PAP170,MRP for Piping bulk,,1008,0,40,0,0,0,40,0,0,0,,,,2013-02-07 08:00,2013-02-13 16:00,,2012-08-01 08:00,2012-08-07 16:00,2012-08-01 08:00,2012-08-07 16:00,2012-08-01 08:00,2012-08-07 16:00,,2013-02-07 08:00,2013-02-13 16:00,,PT_Normal,,,,,KqUzZkGAekOkgP7bmkaP4Q,JsEiLB/fSHyyIe88IaN4EA,,,N,0,0,,,2012-07-16 15:22,2012-07-16 15:22,admin,admin
31,150628,5776,24164,6945,1,100,N,N,N,CP_Drtn,TT_Task,DT_FixedDUR2,RV_OK,TK_Complete,4229PAP110,Bidding for Piping bulk,,,,0,0,0,0,200,0,0,0,,2012-05-17 00:00,2012-06-13 00:00,2012-11-13 08:00,2012-11-13 08:00,,2012-06-30 00:00,2012-06-30 00:00,,,2012-05-01 08:00,2012-05-25 16:00,,,,,PT_Normal,,,,,UUa5sWN5r0CvRW7EBxcE9w,RSkHUusFTRuhwCxDwsC8AA,,,N,0,0,,,2012-07-16 15:22,2012-07-16 15:22,admin,admin
32,150629,5776,24164,6944,1,0,N,N,N,CP_Drtn,TT_Task,DT_FixedDUR2,RV_OK,TK_NotStart,4229PAP140,commercial evaluation & bid committee for Piping bulk,,696,0,96,0,0,0,96,0,0,0,,,,2012-11-21 08:00,2012-12-06 16:00,,2012-07-09 08:00,2012-07-24 16:00,2012-07-09 08:00,2012-07-24 16:00,2012-07-09 08:00,2012-07-24 16:00,,2012-11-21 08:00,2012-12-06 16:00,,PT_Normal,,,,,GxMS0pHXPkCalPjK023XcA,dwbiupqaT4OV78e3gkBdLA,,,N,0,0,,,2012-07-16 15:22,2012-07-16 15:22,admin,admin
33,150630,5776,24164,6944,1,0,N,N,N,CP_Drtn,TT_Task,DT_FixedDUR2,RV_OK,TK_NotStart,4229PAP160,F.O.C for Piping bulk,,696,0,24,0,0,0,24,0,0,0,,,,2012-12-11 08:00,2012-12-13 16:00,,2012-07-29 08:00,2012-07-31 16:00,2012-07-29 08:00,2012-07-31 16:00,2012-07-29 08:00,2012-07-31 16:00,,2012-12-11 08:00,2012-12-13 16:00,,PT_Normal,,,,,543mYd2Mw0maLHn1avHsZg,ZznbW4I5TQyz/MkfaaZZPQ,,,N,0,0,,,2012-07-16 15:22,2012-07-16 15:22,admin,admin
34,150631,5776,24164,6944,1,0,N,N,N,CP_Drtn,TT_Task,DT_FixedDUR2,RV_OK,TK_NotStart,4229PAP180,P.O for Piping bulk,,1008,0,16,0,0,0,16,0,0,0,,,,2013-02-14 08:00,2013-02-17 16:00,,2012-08-08 08:00,2012-08-09 16:00,2012-08-08 08:00,2012-08-09 16:00,2012-08-08 08:00,2012-08-09 16:00,,2013-02-14 08:00,2013-02-17 16:00,,PT_Normal,,,,,rAjCvFCMTEanpwHV18b9Uw,SKWwrxukTLi+Xg4zfSINFg,,,N,0,0,,,2012-07-16 15:22,2012-07-16 15:22,admin,admin
35,150632,5776,24164,6944,1,100,N,N,N,CP_Drtn,TT_LOE,DT_FixedDUR2,RV_OK,TK_Active,4229PAP120,T.E.R for Piping bulk,,696,0,8,0,0,0,160,0,0,0,,2012-06-14 00:00,,2012-06-14 08:00,2012-11-13 16:00,,2012-07-01 08:00,2012-07-01 16:00,2012-07-01 08:00,2012-07-01 16:00,2012-07-01 08:00,2012-07-26 16:00,,2012-06-14 08:00,2012-11-13 16:00,,PT_Normal,,,,,1W5nFyk/iUGXG2b9+JmlRg,sMA8/NSLRxS0HOz3t1hrYg,,,N,0,0,,,2012-07-16 15:22,2012-07-16 15:22,admin,admin
36,150633,5776,24151,6944,1,0,N,N,N,CP_Drtn,TT_Task,DT_FixedDUR2,RV_OK,TK_NotStart,4229PBV150,L.C issued by Gupco,,736,0,40,0,0,0,40,0,0,0,,,,2012-11-20 08:00,2012-11-26 16:00,,2012-07-01 08:00,2012-07-05 16:00,2012-07-01 08:00,2012-07-05 16:00,2012-07-01 08:00,2012-07-05 16:00,,2012-11-20 08:00,2012-11-26 16:00,,PT_Normal,,,,,vzJM4rFigE+OGBJYYAaz0w,wwxo8iztR4uwjBbqOwAQ2A,,,N,0,0,,,2012-07-16 15:22,2012-07-16 15:22,admin,admin
37,150634,5776,24151,6945,1,100,N,N,N,CP_Drtn,TT_Task,DT_FixedDUR2,RV_OK,TK_Complete,4229PBV20,Bidding for Piping Ball Valves,,,,0,0,0,0,112,0,0,0,,2011-12-09 00:00,2012-01-11 00:00,2012-11-20 08:00,2012-11-20 08:00,,2012-06-30 00:00,2012-06-30 00:00,,,2012-01-08 08:00,2012-01-21 16:00,,,,,PT_Normal,,,,,iFlSM6ZQUEa9f+owyAxMJw,Yu8xLuDmTK2083Jgm9UK9w,,,N,0,0,,,2012-07-16 15:22,2012-07-16 15:22,admin,admin
38,150635,5776,24151,6944,1,100,N,N,N,CP_Drtn,TT_Task,DT_FixedDUR2,RV_OK,TK_Complete,4229PBV50,commercial evaluation & bid committee,,,,0,0,0,0,80,0,0,0,,2012-03-14 00:00,2012-03-26 00:00,2012-11-20 08:00,2012-11-20 08:00,,2012-06-30 00:00,2012-06-30 00:00,,,2012-04-02 08:00,2012-04-15 16:00,,,,,PT_Normal,,,,,/5ILK3QH7kCRfywDMjPpIg,8lajj5dDQ12k8uidEmvUJA,,,N,0,0,,,2012-07-16 15:22,2012-07-16 15:22,admin,admin
39,150636,5776,24151,6944,1,100,N,N,N,CP_Drtn,TT_Task,DT_FixedDUR2,RV_OK,TK_Complete,4229PBV70,F.O.C for Piping Ball Valves,,,,0,0,0,0,24,0,0,0,,2012-04-04 00:00,2012-04-05 00:00,2012-11-20 08:00,2012-11-20 08:00,,2012-06-30 00:00,2012-06-30 00:00,,,2012-04-09 08:00,2012-04-11 16:00,,,,,PT_Normal,,,,,nqec6x1vWUeagKr25Z0MOg,fPBWqCCmSjiusQBVBet/Yg,,,N,0,0,,,2012-07-16 15:22,2012-07-16 15:22,admin,admin
40,150637,5776,24151,6944,1,100,N,N,N,CP_Drtn,TT_Task,DT_FixedDUR2,RV_OK,TK_Complete,4229PBV90,P.O for Piping Ball Valves,,,,0,0,0,0,16,0,0,0,,2012-04-15 00:00,2012-04-17 00:00,2012-11-20 08:00,2012-11-20 08:00,,2012-06-30 00:00,2012-06-30 00:00,,,2012-04-12 08:00,2012-04-15 16:00,,,,,PT_Normal,,,,,D612FQ9ThUaqUxjYT5ol5Q,duYuABFbS6q7ugETwQdWAA,,,N,0,0,,,2012-07-16 15:22,2012-07-16 15:22,admin,admin
41,150638,5776,24151,6945,1,0,N,N,N,CP_Drtn,TT_Task,DT_FixedDUR2,RV_OK,TK_Active,4229PBV110,Fabrication upto R.F.S (1st Batch),,1056,0,360,0,0,0,1008,0,0,0,,2012-04-17 00:00,,2012-11-27 08:00,2013-01-10 16:00,2012-08-19 16:00,2012-07-06 08:00,2012-08-19 16:00,2012-07-06 08:00,2012-08-19 16:00,2012-04-23 08:00,2012-09-07 16:00,,2012-11-27 08:00,2013-01-10 16:00,,PT_Normal,,,,,B0BPDHK5D06VEBf6EvTRDg,MUE0xc3sREy7yrbUxfj6Kg,,,N,0,0,,,2012-07-16 15:22,2012-07-16 15:22,admin,admin
42,150639,5776,24151,6946,1,0,N,N,N,CP_Drtn,TT_Task,DT_FixedDUR2,RV_OK,TK_NotStart,4229PBV130,Delivery upto site (1st Batch),,1168,1168,360,0,0,0,360,0,0,0,,,,2013-01-11 08:00,2013-02-24 16:00,,2012-08-20 08:00,2012-10-03 16:00,2012-08-20 08:00,2012-10-03 16:00,2012-08-20 08:00,2012-10-03 16:00,,2013-01-11 08:00,2013-02-24 16:00,,PT_Normal,,,,,yv/VI8G1FkKParzwA3tNkQ,WLKa0aw9R+qpA5hDH3w6uw,,,N,0,0,,,2012-07-16 15:22,2012-07-16 15:22,admin,admin
43,150640,5776,24151,6945,1,0,N,N,N,CP_Drtn,TT_Task,DT_FixedDUR2,RV_OK,TK_NotStart,4229PBV120,Fabrication upto R.F.S (2nd Batch) for minimal  balance,,232,0,960,0,0,0,960,0,0,0,,,,2012-10-13 08:00,2013-02-09 16:00,,2012-09-14 08:00,2013-01-11 16:00,2012-09-14 08:00,2013-01-11 16:00,2012-09-14 08:00,2013-01-11 16:00,,2012-10-13 08:00,2013-02-09 16:00,,PT_Normal,,,,,2zXnNp2eikSeKVr6FDj6sw,m7SNJWfsQZKDCN3in5Q+QA,,,N,0,0,,,2012-07-16 15:22,2012-07-16 15:22,admin,admin
44,150641,5776,24151,6946,1,0,N,N,N,CP_Drtn,TT_Task,DT_FixedDUR2,RV_OK,TK_NotStart,4229PBV140,Delivery upto site (2nd Batch) for minimal  balance,,232,232,120,0,0,0,120,0,0,0,,,,2013-02-10 08:00,2013-02-24 16:00,,2013-01-12 08:00,2013-01-26 16:00,2013-01-12 08:00,2013-01-26 16:00,2013-01-12 08:00,2013-01-26 16:00,,2013-02-10 08:00,2013-02-24 16:00,,PT_Normal,,,,,vJINf1UOQEueFO4BLI2uBg,Vaw+U/N1T9aumpmU0wKkYw,,,N,0,0,,,2012-07-16 15:22,2012-07-16 15:22,admin,admin
45,150642,5776,24151,6944,1,100,N,N,N,CP_Drtn,TT_Task,DT_FixedDUR2,RV_OK,TK_Complete,4229PBV40,Receive revised commercial offers,,,,0,0,0,0,40,0,0,0,,2012-02-14 00:00,2012-03-13 00:00,2012-11-20 08:00,2012-11-20 08:00,,2012-06-30 00:00,2012-06-30 00:00,,,2012-03-04 08:00,2012-03-08 16:00,,,,,PT_Normal,,,,,HE1TiogHVEKZpHH8KpeqfA,gPd+4xZNQWyiUU6UpYt4NA,,,N,0,0,,,2012-07-16 15:22,2012-07-16 15:22,admin,admin
46,150643,5776,24151,6944,1,100,N,N,N,CP_Drtn,TT_Task,DT_FixedDUR2,RV_OK,TK_Complete,4229PBV60,Client approval on bid committee reccomendation,,,,0,0,0,0,16,0,0,0,,2012-03-27 00:00,2012-04-03 16:00,2012-11-20 08:00,2012-11-20 08:00,,2012-06-30 00:00,2012-06-30 00:00,,,2012-04-01 08:00,2012-04-02 16:00,,,,,PT_Normal,,,,,Jh63ehjO9kO6mroS1Ad5bQ,eO33vFhRRgGwJlaL3fIMBQ,,,N,0,0,,,2012-07-16 15:22,2012-07-16 15:22,admin,admin
47,150644,5776,24151,6944,1,100,N,N,N,CP_Drtn,TT_Task,DT_FixedDUR2,RV_OK,TK_Complete,4229PBV10,Issue RFQ for Piping Ball Valves,,,,0,0,0,0,16,0,0,0,,2011-12-08 00:00,2011-12-08 00:00,2012-11-20 08:00,2012-11-20 08:00,,2012-06-30 00:00,2012-06-30 00:00,,,2012-01-01 08:00,2012-01-02 16:00,,,,,PT_Normal,,,,,KiJiFEyM0E6jTJS5x3caEg,yL99yNJ4SBuFcg03a/QZPw,,,N,0,0,,,2012-07-16 15:22,2012-07-16 15:22,admin,admin
48,150645,5776,24151,6944,1,100,N,N,N,CP_Drtn,TT_LOE,DT_FixedDrtn,RV_OK,TK_Complete,4229PBV30,T.E.R for Piping Ball Valves,,,,0,0,0,0,96,0,0,0,,2012-01-12 00:00,2012-02-13 00:00,,,,,,,,2012-01-15 08:00,2012-01-31 16:00,,,,,PT_Normal,,,,,ut1Nv7RIskWqBzNcNP80qQ,HUjbjFE3S0+4svMQFDJBpw,,,N,0,0,,,2012-07-16 15:22,2012-07-16 15:22,admin,admin
49,150646,5776,24151,6944,1,100,N,N,N,CP_Drtn,TT_LOE,DT_FixedDUR2,RV_OK,TK_Complete,4229PBV80,MRP for Piping Ball Valves,,,,0,0,0,0,32,0,0,0,,2012-04-08 08:00,2012-04-12 00:00,,,,,,,,2012-04-08 08:00,2012-04-11 16:00,,,,,PT_Normal,,,,,aZpzoSHlnECE8h88k7DFhg,DBlm3vcAQ5OplCZIzFE2Eg,,,N,0,0,,,2012-07-16 15:22,2012-07-16 15:22,admin,admin
50,150647,5776,24149,6946,1,0,N,N,N,CP_Drtn,TT_Task,DT_FixedDUR2,RV_OK,TK_NotStart,4229PSG100,Delivery upto site (Air freight),,584,272,72,0,0,0,72,0,0,0,,,,2013-02-16 08:00,2013-02-24 16:00,,2012-12-07 08:00,2012-12-15 16:00,2012-12-07 08:00,2012-12-15 16:00,2012-12-07 08:00,2012-12-15 16:00,,2013-02-16 08:00,2013-02-24 16:00,,PT_Normal,,,,,AfQYwXgHEUWZMAeKAr4xxg,Ed1rw6pVGkqfXjRfFT7JpQ,,,N,0,0,,,2012-07-16 15:22,2012-07-16 15:22,admin,admin
51,150648,5776,24149,6944,1,100,N,N,N,CP_Drtn,TT_Task,DT_FixedDUR2,RV_OK,TK_Complete,4229PSG30,Receive revised commercial offers,,,,0,0,0,0,40,0,0,0,,2012-01-16 00:00,2012-01-30 00:00,2012-07-29 08:00,2012-07-29 08:00,,2012-06-30 00:00,2012-06-30 00:00,,,2012-01-10 08:00,2012-01-16 16:00,,,,,PT_Normal,,,,,Wdk0urxxQEWCu15yXwaexQ,rsbY6IPE9Ey3ZU3ZNeLLVg,,,N,0,0,,,2012-07-16 15:22,2012-07-16 15:22,admin,admin
52,150649,5776,24149,6944,1,100,N,N,N,CP_Drtn,TT_Task,DT_FixedDUR2,RV_OK,TK_Complete,4229PSG50,Client approval on bid committee reccomendation,,,,0,0,0,0,16,0,0,0,,2012-02-29 00:00,2012-03-11 00:00,2012-07-29 08:00,2012-07-29 08:00,,2012-06-30 00:00,2012-06-30 00:00,,,2012-03-06 08:00,2012-03-07 16:00,,,,,PT_Normal,,,,,NCnPUQw9m0WF78HvcfE5Zg,iKP7vyvUVkGYjFWGXsYtWw,,,N,0,0,,,2012-07-16 15:22,2012-07-16 15:22,admin,admin
53,150650,5776,24149,6945,1,0,N,N,N,CP_Drtn,TT_Task,DT_FixedDUR2,RV_OK,TK_Active,4229PSG90,Fabrication upto R.F.S,,240,0,1136,0,0,0,1360,0,0,0,,2012-05-27 00:00,,2012-08-05 08:00,2013-01-05 16:00,2012-12-06 16:00,2012-07-06 08:00,2012-12-06 16:00,2012-07-06 08:00,2012-12-06 16:00,2012-05-11 08:00,2012-11-08 16:00,,2012-08-05 08:00,2013-01-05 16:00,,PT_Normal,,,,,bS+fKHPMDUG89NeTw57+WA,7UQ9XmTabEqxyA7/76n9MA,,,N,0,0,,,2012-07-16 15:22,2012-07-16 15:22,admin,admin
54,150651,5776,24149,6944,1,0,N,N,N,CP_Drtn,TT_Task,DT_FixedDUR2,RV_OK,TK_NotStart,4229PSG80,L.C issued by Gupco,,160,0,40,0,0,0,40,0,0,0,,,,2012-07-29 08:00,2012-08-02 16:00,,2012-07-01 08:00,2012-07-05 16:00,2012-07-01 08:00,2012-07-05 16:00,2012-07-01 08:00,2012-07-05 16:00,,2012-07-29 08:00,2012-08-02 16:00,,PT_Normal,,,,,7bhVpMgxREq6A/VRgZ1iJA,/xqtBKQ3QEuTmEP+B+vEag,,,N,0,0,,,2012-07-16 15:22,2012-07-16 15:22,admin,admin
55,150652,5776,24149,6944,1,100,N,N,N,CP_Drtn,TT_Task,DT_FixedDUR2,RV_OK,TK_Complete,4229PSG10,Issue RFQ for SGS,,,,0,0,0,0,16,0,0,0,,2011-08-25 00:00,2011-08-28 00:00,2012-07-29 08:00,2012-07-29 08:00,,2012-06-30 00:00,2012-06-30 00:00,,,2011-08-15 08:00,2011-08-16 16:00,,,,,PT_Normal,,,,,Jm/UoiODpECyO/0he36JEg,PapX/E/5VEedYgMn9pW1WA,,,N,0,0,,,2012-07-16 15:22,2012-07-16 15:22,admin,admin
56,150653,5776,24149,6945,1,100,N,N,N,CP_Drtn,TT_Task,DT_FixedDUR2,RV_OK,TK_Complete,4229PSG20,Bidding for SGS,,,,0,0,0,0,264,0,0,0,,2011-08-29 00:00,2011-09-26 00:00,2012-07-29 08:00,2012-07-29 08:00,,2012-06-30 00:00,2012-06-30 00:00,,,2011-08-17 08:00,2011-09-18 16:00,,,,,PT_Normal,,,,,7d5er3BgZEeIs/xwP51Rcw,WAPraHdgpEiuGrgnPTRw+A,,,N,0,0,,,2012-07-16 15:22,2012-07-16 15:22,admin,admin
57,150654,5776,24149,6944,1,100,N,N,N,CP_Drtn,TT_Task,DT_FixedDUR2,RV_OK,TK_Complete,4229PSG40,commercial evaluation & bid committee for SGS,,,,0,0,0,0,176,0,0,0,,2012-02-01 00:00,2012-02-29 00:00,2012-07-29 08:00,2012-07-29 08:00,,2012-06-30 00:00,2012-06-30 00:00,,,2012-03-06 08:00,2012-04-04 16:00,,,,,PT_Normal,,,,,c8z29d6lbEWZuV3aS4mMHQ,e/V43NRVMUS133iTAw1J2Q,,,N,0,0,,,2012-07-16 15:22,2012-07-16 15:22,admin,admin
58,150655,5776,24149,6944,1,100,N,N,N,CP_Drtn,TT_Task,DT_FixedDUR2,RV_OK,TK_Complete,4229PSG60,F.O.C for SGS,,,,0,0,0,0,24,0,0,0,,2012-03-12 00:00,2012-05-06 00:00,2012-07-29 08:00,2012-07-29 08:00,,2012-06-30 00:00,2012-06-30 00:00,,,2012-04-29 08:00,2012-05-01 16:00,,,,,PT_Normal,,,,,IDVA3rBnQUW5hQMa+R9JxA,4AXOah8HAEeGpjijEBPUrg,,,N,0,0,,,2012-07-16 15:22,2012-07-16 15:22,admin,admin
59,150656,5776,24149,6944,1,100,N,N,N,CP_Drtn,TT_Task,DT_FixedDUR2,RV_OK,TK_Complete,4229PSG70,P.O for SGS,,,,0,0,0,0,16,0,0,0,,2012-05-08 00:00,2012-05-27 00:00,2012-07-29 08:00,2012-07-29 08:00,,2012-06-30 00:00,2012-06-30 00:00,,,2012-05-02 08:00,2012-05-03 16:00,,,,,PT_Normal,,,,,tikoLE0jbEiCJPBtR/sM7w,AvajsHLxjEGyyQn6kYuXCQ,,,N,0,0,,,2012-07-16 15:22,2012-07-16 15:22,admin,admin
60,150657,5776,24149,6944,1,100,N,N,N,CP_Drtn,TT_LOE,DT_FixedDUR2,RV_OK,TK_Complete,4229PSG25,T.E.R for  SGS,,,,0,0,0,0,200,0,0,0,,2011-09-28 08:00,2012-01-16 00:00,,,,,,,,2011-09-28 08:00,2011-11-02 16:00,,,,,PT_Normal,,,,,zM/gIoNMiUega3SfOFqQsw,vXpc3RMask+39YuXt2zsqw,,,N,0,0,,,2012-07-16 15:22,2012-07-16 15:22,admin,admin
61,150658,5776,24149,6944,1,100,N,N,N,CP_Drtn,TT_LOE,DT_FixedDUR2,RV_OK,TK_Complete,4229PSG65,MRP for SGS,,,,0,0,0,0,40,0,0,0,,2012-03-08 08:00,2012-05-08 16:00,,,,,,,,2012-03-08 08:00,2012-03-14 16:00,,,,,PT_Normal,,,,,yPlqHwn4wk6KxjjGXAoLYQ,rUARi0MZeUWCfJu72L1JvQ,,,N,0,0,,,2012-07-16 15:22,2012-07-16 15:22,admin,admin
62,150659,5776,24150,6944,1,100,N,N,N,CP_Drtn,TT_Task,DT_FixedDUR2,RV_OK,TK_Complete,4229PVE40,commercial evaluation & bid committee for pressure vessels,,,,0,0,0,0,80,0,0,0,,2012-02-28 00:00,2012-03-18 00:00,2012-07-29 08:00,2012-07-29 08:00,,2012-06-30 00:00,2012-06-30 00:00,,,2012-03-05 08:00,2012-03-18 16:00,,,,,PT_Normal,,,,,bPyoFvjTTE2GsMqe9JMemQ,e/V43NRVMUS133iTAw1J2Q,,,N,0,0,,,2012-07-16 15:22,2012-07-16 15:22,admin,admin
63,150660,5776,24150,6944,1,100,N,N,N,CP_Drtn,TT_Task,DT_FixedDUR2,RV_OK,TK_Complete,4229PVE60,F.O.C for pressure vessels,,,,0,0,0,0,24,0,0,0,,2012-03-19 00:00,2012-03-20 00:00,2012-07-29 08:00,2012-07-29 08:00,,2012-06-30 00:00,2012-06-30 00:00,,,2012-04-17 08:00,2012-04-19 16:00,,,,,PT_Normal,,,,,4AEqb5TRrUCEBMNpycDe8Q,4AXOah8HAEeGpjijEBPUrg,,,N,0,0,,,2012-07-16 15:22,2012-07-16 15:22,admin,admin
64,150661,5776,24150,6944,1,100,N,N,N,CP_Drtn,TT_Task,DT_FixedDUR2,RV_OK,TK_Complete,4229PVE70,P.O for pressure vessels,,,,0,0,0,0,40,0,0,0,,2012-03-26 00:00,2012-04-01 16:00,2012-07-29 08:00,2012-07-29 08:00,,2012-06-30 00:00,2012-06-30 00:00,,,2012-04-01 08:00,2012-04-05 16:00,,,,,PT_Normal,,,,,3VLTh/yLNEq5aEIcLASiGg,AvajsHLxjEGyyQn6kYuXCQ,,,N,0,0,,,2012-07-16 15:22,2012-07-16 15:22,admin,admin
65,150662,5776,24150,6944,1,100,N,N,N,CP_Drtn,TT_LOE,DT_FixedDUR2,RV_OK,TK_Complete,4229PVE25,T.E.R for pressure vessels,,,,0,0,0,0,160,0,0,0,,2011-12-15 00:00,2012-02-20 00:00,,,,,,,,2011-12-11 08:00,2012-01-05 16:00,,,,,PT_Normal,,,,,uyQi+4oWNkC5qzWQ6sOCnw,TS5Hs2NeCUKGVdf9bmhFig,,,N,0,0,,,2012-07-16 15:22,2012-07-16 15:22,admin,admin
66,150663,5776,24150,6945,1,0,N,N,N,CP_Drtn,TT_Task,DT_FixedDUR2,RV_OK,TK_Active,4229PVE90,Fabrication upto R.F.S,,240,0,584,0,0,0,1456,0,0,0,,2012-04-01 00:00,,2012-08-05 08:00,2012-10-28 16:00,2012-09-28 16:00,2012-07-06 08:00,2012-09-28 16:00,2012-07-06 08:00,2012-09-28 16:00,2012-04-06 08:00,2012-10-16 16:00,,2012-08-05 08:00,2012-10-28 16:00,,PT_Normal,,,,,sYJPrrrtekySSLv4FmFBdQ,7UQ9XmTabEqxyA7/76n9MA,,,N,0,0,,,2012-07-16 15:22,2012-07-16 15:22,admin,admin
67,150664,5776,24150,6946,1,0,N,N,N,CP_Drtn,TT_Task,DT_FixedDUR2,RV_OK,TK_NotStart,4229PVE100,Delivery upto site,,1096,784,112,0,0,0,112,0,0,0,,,,2013-02-11 08:00,2013-02-24 16:00,,2012-09-29 08:00,2012-10-12 16:00,2012-09-29 08:00,2012-10-12 16:00,2012-09-29 08:00,2012-10-12 16:00,,2013-02-11 08:00,2013-02-24 16:00,,PT_Normal,,,,,Dzb89t9kTUmmDLcimFOFrA,Ed1rw6pVGkqfXjRfFT7JpQ,,,N,0,0,,,2012-07-16 15:22,2012-07-16 15:22,admin,admin
68,150665,5776,24150,6944,1,100,N,N,N,CP_Drtn,TT_Task,DT_FixedDUR2,RV_OK,TK_Complete,4229PVE30,Receive revised commercial offers,,,,0,0,0,0,40,0,0,0,,2012-02-21 00:00,2012-02-27 00:00,2012-07-29 08:00,2012-07-29 08:00,,2012-06-30 00:00,2012-06-30 00:00,,,2012-03-04 08:00,2012-03-08 16:00,,,,,PT_Normal,,,,,d8ud5jPFLkyVdhu79GPH4g,rsbY6IPE9Ey3ZU3ZNeLLVg,,,N,0,0,,,2012-07-16 15:22,2012-07-16 15:22,admin,admin
69,150666,5776,24150,6944,1,100,N,N,N,CP_Drtn,TT_Task,DT_FixedDUR2,RV_OK,TK_Complete,4229PVE50,Client approval on bid committee reccommendation,,,,0,0,0,0,16,0,0,0,,2012-03-19 00:00,2012-03-19 00:00,2012-07-29 08:00,2012-07-29 08:00,,2012-06-30 00:00,2012-06-30 00:00,,,2012-04-15 08:00,2012-04-16 16:00,,,,,PT_Normal,,,,,MyKgakxGf0iT4V+C4M7PyQ,iKP7vyvUVkGYjFWGXsYtWw,,,N,0,0,,,2012-07-16 15:22,2012-07-16 15:22,admin,admin
70,150667,5776,24150,6944,1,0,N,N,N,CP_Drtn,TT_Task,DT_FixedDUR2,RV_OK,TK_NotStart,4229PVE80,L.C issued by Gupco,,160,0,40,0,0,0,40,0,0,0,,,,2012-07-29 08:00,2012-08-02 16:00,,2012-07-01 08:00,2012-07-05 16:00,2012-07-01 08:00,2012-07-05 16:00,2012-07-01 08:00,2012-07-05 16:00,,2012-07-29 08:00,2012-08-02 16:00,,PT_Normal,,,,,mV505LezOEaZbmoi5FOJCw,/xqtBKQ3QEuTmEP+B+vEag,,,N,0,0,,,2012-07-16 15:22,2012-07-16 15:22,admin,admin
71,150668,5776,24150,6944,1,100,N,N,N,CP_Drtn,TT_Task,DT_FixedDUR2,RV_OK,TK_Complete,4229PVE10,Issue RFQ for pressure vessels,,,,0,0,0,0,16,0,0,0,,2011-11-17 00:00,2011-11-17 00:00,2012-07-29 08:00,2012-07-29 08:00,,2012-06-30 00:00,2012-06-30 00:00,,,2011-12-04 08:00,2011-12-05 16:00,,,,,PT_Normal,,,,,cZTdZhYZK0iBv8E7WoMyEg,PapX/E/5VEedYgMn9pW1WA,,,N,0,0,,,2012-07-16 15:22,2012-07-16 15:22,admin,admin
72,150669,5776,24150,6945,1,100,N,N,N,CP_Drtn,TT_Task,DT_FixedDUR2,RV_OK,TK_Complete,4229PVE20,Bidding for pressure vessels,,,,0,0,0,0,240,0,0,0,,2011-11-18 00:00,2011-12-08 00:00,2012-07-29 08:00,2012-07-29 08:00,,2012-06-30 00:00,2012-06-30 00:00,,,2011-12-06 08:00,2012-01-16 16:00,,,,,PT_Normal,,,,,soQNN0/5s02z7AMALWPlcw,WAPraHdgpEiuGrgnPTRw+A,,,N,0,0,,,2012-07-16 15:22,2012-07-16 15:22,admin,admin
73,150670,5776,24150,6944,1,100,N,N,N,CP_Drtn,TT_LOE,DT_FixedDUR2,RV_OK,TK_Complete,4229PVE65,MRP for  K.O drum,,,,0,0,0,0,16,0,0,0,,2012-03-21 08:00,2012-03-25 00:00,,,,,,,,2012-03-21 08:00,2012-03-22 16:00,,,,,PT_Normal,,,,,TKLaiI9HYkSzrRFOs7dgaQ,DIoV5T8jvEStrhTR29QXhQ,,,N,0,0,,,2012-07-16 15:22,2012-07-16 15:22,admin,admin
74,150671,5776,24154,6946,1,100,N,N,N,CP_Drtn,TT_Task,DT_FixedDUR2,RV_OK,TK_Complete,4229PTA100,Delivery upto site,,,,0,0,0,0,360,0,0,0,,2012-03-03 00:00,2012-03-03 00:00,2013-02-24 16:00,2013-02-24 16:00,,2012-06-30 00:00,2012-06-30 00:00,,,2012-07-28 08:00,2012-09-10 16:00,,,,,PT_Normal,,,,,A+SUgxuEQE+kh0iCq/ofDQ,Ed1rw6pVGkqfXjRfFT7JpQ,,,N,0,0,,,2012-07-16 15:22,2012-07-16 15:22,admin,admin
75,150672,5776,24154,6944,1,100,N,N,N,CP_Drtn,TT_Task,DT_FixedDUR2,RV_OK,TK_Complete,4229PTA30,Receive revised commercial offers,,,,0,0,0,0,40,0,0,0,,2011-12-29 00:00,2012-01-05 00:00,2012-08-05 08:00,2012-08-05 08:00,,2012-06-30 00:00,2012-06-30 00:00,,,2012-01-01 08:00,2012-01-05 16:00,,,,,PT_Normal,,,,,GT+PeKnV30Wux+65vzNdNw,rsbY6IPE9Ey3ZU3ZNeLLVg,,,N,0,0,,,2012-07-16 15:22,2012-07-16 15:22,admin,admin
76,150673,5776,24154,6944,1,100,N,N,N,CP_Drtn,TT_Task,DT_FixedDUR2,RV_OK,TK_Complete,4229PTA50,Client approval on bid committee reccomendation,,,,0,0,0,0,16,0,0,0,,2012-03-03 00:00,2012-03-03 00:00,2012-08-05 08:00,2012-08-05 08:00,,2012-06-30 00:00,2012-06-30 00:00,,,2012-03-11 08:00,2012-03-12 16:00,,,,,PT_Normal,,,,,1TTKD8ZdUkS9VQjgJuJxLw,iKP7vyvUVkGYjFWGXsYtWw,,,N,0,0,,,2012-07-16 15:22,2012-07-16 15:22,admin,admin
77,150674,5776,24154,6944,1,100,N,N,N,CP_Drtn,TT_Task,DT_FixedDUR2,RV_OK,TK_Complete,4229PTA80,L.C issued by Gupco,,,,0,0,0,0,40,0,0,0,,2012-03-03 00:00,2012-03-03 00:00,2012-08-05 08:00,2012-08-05 08:00,,2012-06-30 00:00,2012-06-30 00:00,,,2012-03-25 08:00,2012-03-29 16:00,,,,,PT_Normal,,,,,U/s+SVCeB02HyqVlwOk8Zg,/xqtBKQ3QEuTmEP+B+vEag,,,N,0,0,,,2012-07-16 15:22,2012-07-16 15:22,admin,admin
78,150675,5776,24154,6944,1,100,N,N,N,CP_Drtn,TT_Task,DT_FixedDUR2,RV_OK,TK_Complete,4229PTA10,Issue RFQ for tanks,,,,0,0,0,0,16,0,0,0,,2011-10-27 00:00,2011-10-27 00:00,2013-02-24 16:00,2013-02-24 16:00,,2012-06-30 00:00,2012-06-30 00:00,,,2011-11-20 08:00,2011-11-21 16:00,,,,,PT_Normal,,,,,m7op3WJZY0yVHBNwX1TTkQ,PapX/E/5VEedYgMn9pW1WA,,,N,0,0,,,2012-07-16 15:22,2012-07-16 15:22,admin,admin
79,150676,5776,24154,6945,1,100,N,N,N,CP_Drtn,TT_Task,DT_FixedDUR2,RV_OK,TK_Complete,4229PTA20,Bidding for tanks,,,,0,0,0,0,240,0,0,0,,2011-10-27 00:00,2011-11-24 00:00,2012-08-05 08:00,2012-08-05 08:00,,2012-06-30 00:00,2012-06-30 00:00,,,2011-11-22 08:00,2011-12-21 16:00,,,,,PT_Normal,,,,,P7YbMKqfHUCuZrwsdfu18w,WAPraHdgpEiuGrgnPTRw+A,,,N,0,0,,,2012-07-16 15:22,2012-07-16 15:22,admin,admin
80,150677,5776,24154,6944,1,100,N,N,N,CP_Drtn,TT_Task,DT_FixedDUR2,RV_OK,TK_Complete,4229PTA40,commercial evaluation & bid committee for tanks,,,,0,0,0,0,80,0,0,0,2012-01-08 00:00,2012-01-08 08:00,2012-03-03 00:00,2012-08-05 08:00,2012-08-05 08:00,,2012-06-30 00:00,2012-06-30 00:00,,,2012-01-08 08:00,2012-01-19 16:00,,,,CS_MSOA,PT_Normal,,,,,gN1G+qOsm0GyGQgCNdFUnA,e/V43NRVMUS133iTAw1J2Q,,,N,0,0,,,2012-07-16 15:22,2012-07-16 15:22,admin,admin
81,150678,5776,24154,6944,1,100,N,N,N,CP_Drtn,TT_Task,DT_FixedDUR2,RV_OK,TK_Complete,4229PTA60,F.O.C for tanks,,,,0,0,0,0,24,0,0,0,,2012-03-03 00:00,2012-03-03 00:00,2012-08-05 08:00,2012-08-05 08:00,,2012-06-30 00:00,2012-06-30 00:00,,,2012-03-13 08:00,2012-03-15 16:00,,,,,PT_Normal,,,,,l1UnT0SdC0iEXof+x3FW9Q,4AXOah8HAEeGpjijEBPUrg,,,N,0,0,,,2012-07-16 15:22,2012-07-16 15:22,admin,admin
82,150679,5776,24154,6944,1,100,N,N,N,CP_Drtn,TT_Task,DT_FixedDUR2,RV_OK,TK_Complete,4229PTA70,P.O for tanks,,,,0,0,0,0,40,0,0,0,,2012-03-03 00:00,2012-03-03 00:00,2012-08-05 08:00,2012-08-05 08:00,,2012-06-30 00:00,2012-06-30 00:00,,,2012-03-18 08:00,2012-03-22 16:00,,,,,PT_Normal,,,,,h4Zwhwcx/Uq+jIZL6LOmaA,AvajsHLxjEGyyQn6kYuXCQ,,,N,0,0,,,2012-07-16 15:22,2012-07-16 15:22,admin,admin
83,150680,5776,24154,6944,1,100,N,N,N,CP_Drtn,TT_LOE,DT_FixedDUR2,RV_OK,TK_Complete,4229PTA25,T.E.R for  tanks,,,,0,0,0,0,160,0,0,0,,2011-11-24 00:00,2011-12-29 00:00,,,,,,,,2011-12-04 08:00,2011-12-29 16:00,,,,,PT_Normal,,,,,CQ8l6UnziUucSsdFijrFbA,J+3VSORnYEKgQCu4Mr4NFw,,,N,0,0,,,2012-07-16 15:22,2012-07-16 15:22,admin,admin
84,150681,5776,24154,6945,1,100,N,N,N,CP_Drtn,TT_Task,DT_FixedDUR2,RV_OK,TK_Complete,4229PTA90,Fabrication upto R.F.S,,,,0,0,0,0,960,0,0,0,,2012-03-03 00:00,2012-03-03 00:00,2012-08-05 08:00,2012-08-05 08:00,,2012-06-30 00:00,2012-06-30 00:00,,,2012-03-30 08:00,2012-07-27 16:00,,,,,PT_Normal,,,,,ehq3SliXA06xHNpC0/uIIQ,7UQ9XmTabEqxyA7/76n9MA,,,N,0,0,,,2012-07-16 15:22,2012-07-16 15:22,admin,admin
85,150682,5776,24154,6944,1,100,N,N,N,CP_Drtn,TT_LOE,DT_FixedDUR2,RV_OK,TK_Complete,4229PTA65,MRP for tanks,,,,0,0,0,0,40,0,0,0,,2012-03-01 00:00,2012-03-03 00:00,,,,,,,,2012-03-18 08:00,2012-03-22 16:00,,,,,PT_Normal,,,,,IR2iOBpxS0WhPbultPTsmw,pGi7uaR4ukGkLPQ1Hd56lg,,,N,0,0,,,2012-07-16 15:22,2012-07-16 15:22,admin,admin
86,150683,5776,24155,6944,1,100,N,N,N,CP_Drtn,TT_Task,DT_FixedDUR2,RV_OK,TK_Complete,4229PPL50,"Issue RFQ for 8"""" pipeline",,,,0,0,0,0,16,0,0,0,,2011-10-31 00:00,2011-10-31 00:00,2013-01-17 08:00,2013-01-17 08:00,,2012-06-30 00:00,2012-06-30 00:00,,,2011-12-04 08:00,2011-12-05 16:00,,,,,PT_Normal,,,,,0CZAjcw6o0iK4kHVkHBssA,,,,N,0,0,,,2012-07-16 15:22,2012-07-16 15:22,admin,admin
87,150684,5776,24155,6945,1,0,N,N,N,CP_Drtn,TT_Task,DT_FixedDUR2,RV_OK,TK_Active,4229PPL110,Fabrication upto R.F.S,,1520,0,16,0,0,0,1008,0,0,0,,2012-02-29 00:00,,2013-01-24 08:00,2013-01-25 16:00,2012-07-07 16:00,2012-07-06 08:00,2012-07-07 16:00,2012-07-06 08:00,2012-07-07 16:00,2012-03-09 08:00,2012-07-12 16:00,,2013-01-24 08:00,2013-01-25 16:00,,PT_Normal,,,,,HHqBQu8SY0e9v89nk7p1aw,R/NAXGokTRCnEENVLJ/sUA,,,N,0,0,,,2012-07-16 15:22,2012-07-16 15:22,admin,admin
88,150685,5776,24155,6946,1,0,N,N,N,CP_Drtn,TT_Task,DT_FixedDUR2,RV_OK,TK_NotStart,4229PPL120,Delivery upto site,,1632,1632,240,0,0,0,240,0,0,0,,,,2013-01-26 08:00,2013-02-24 16:00,,2012-07-08 08:00,2012-08-06 16:00,2012-07-08 08:00,2012-08-06 16:00,2012-07-08 08:00,2012-08-06 16:00,,2013-01-26 08:00,2013-02-24 16:00,,PT_Normal,,,,,/QQezjAFV0O79F523BHr0A,eZ0Jc2KERKSeoPTuttR7qA,,,N,0,0,,,2012-07-16 15:22,2012-07-16 15:22,admin,admin
89,150686,5776,24155,6944,1,100,N,N,N,CP_Drtn,TT_Task,DT_FixedDUR2,RV_OK,TK_Complete,4229PPL70,Client approval on bid committee reccomendation,,,,0,0,0,0,16,0,0,0,,2012-02-13 00:00,2012-02-19 00:00,2013-01-17 08:00,2013-01-17 08:00,,2012-06-30 00:00,2012-06-30 00:00,,,2012-03-20 08:00,2012-03-21 16:00,,,,,PT_Normal,,,,,vwGmem8leE2LRr36AUrZAg,p64Nr72NTx+uaiuhKYMg/w,,,N,0,0,,,2012-07-16 15:22,2012-07-16 15:22,admin,admin
90,150687,5776,24155,6944,1,0,N,N,N,CP_Drtn,TT_Task,DT_FixedDUR2,RV_OK,TK_NotStart,4229PPL100,L.C issued by Gupco,,1072,0,40,0,0,0,40,0,0,0,,,,2013-01-17 08:00,2013-01-23 16:00,,2012-07-01 08:00,2012-07-05 16:00,2012-07-01 08:00,2012-07-05 16:00,2012-07-01 08:00,2012-07-05 16:00,,2013-01-17 08:00,2013-01-23 16:00,,PT_Normal,,,,,nEDnIyyiq0atHbZ6y8AD/Q,bmO2BodKSyWpRC6TayH5ug,,,N,0,0,,,2012-07-16 15:22,2012-07-16 15:22,admin,admin
91,150688,5776,24155,6944,1,100,N,N,N,CP_Drtn,TT_Task,DT_FixedDUR2,RV_OK,TK_Complete,4229PPL60,"commercial evaluation & bid committee for 8""""pipeline",,,,0,0,0,0,80,0,0,0,,2012-01-25 00:00,2012-01-30 00:00,2013-01-17 08:00,2013-01-17 08:00,,2012-06-30 00:00,2012-06-30 00:00,,,2012-03-06 08:00,2012-03-19 16:00,,,,,PT_Normal,,,,,lG+PDwXbyUe7yjo3v2ehdQ,sFxdNzwOTBex/R7q5VbB/Q,,,N,0,0,,,2012-07-16 15:22,2012-07-16 15:22,admin,admin
92,150689,5776,24155,6944,1,100,N,N,N,CP_Drtn,TT_Task,DT_FixedDUR2,RV_OK,TK_Complete,4229PPL80,"F.O.C for 8"""" pipeline",,,,0,0,0,0,24,0,0,0,,2012-02-21 00:00,2012-02-26 00:00,2013-01-17 08:00,2013-01-17 08:00,,2012-06-30 00:00,2012-06-30 00:00,,,2012-03-04 08:00,2012-03-06 16:00,,,,,PT_Normal,,,,,6Vnc4X2S7Eqshf54PbzuXQ,f3+HEw7bS++sH713ZnOX6Q,,,N,0,0,,,2012-07-16 15:22,2012-07-16 15:22,admin,admin
93,150690,5776,24155,6944,1,100,N,N,N,CP_Drtn,TT_Task,DT_FixedDUR2,RV_OK,TK_Complete,4229PPL90,"P.O for 8"""" pipeline",,,,0,0,0,0,40,0,0,0,,2012-02-27 00:00,2012-02-29 00:00,2013-01-17 08:00,2013-01-17 08:00,,2012-06-30 00:00,2012-06-30 00:00,,,2012-03-04 08:00,2012-03-08 16:00,,,,,PT_Normal,,,,,Y+FAS6tAqkuh65qXzlMxjA,Ome5oXQSREmwSDyRtaFKtQ,,,N,0,0,,,2012-07-16 15:22,2012-07-16 15:22,admin,admin
94,150691,5776,24155,6945,1,100,N,N,N,CP_Drtn,TT_Task,DT_FixedDrtn,RV_OK,TK_Complete,4229PPL10,"Bidding for 8"""" pipeline",,,,0,0,0,0,280,0,0,0,,2011-11-01 00:00,2011-11-21 00:00,2013-01-17 08:00,2013-01-17 08:00,,2012-06-30 00:00,2012-06-30 00:00,,,2011-12-06 08:00,2012-01-21 16:00,,,,,PT_Normal,,,,,cw2JBdLyfUSWCJQfuF9rfQ,,,,N,0,0,,,2012-07-16 15:22,2012-07-16 15:22,admin,admin
95,150692,5776,24155,6944,1,100,N,N,N,CP_Drtn,TT_Task,DT_FixedDrtn,RV_OK,TK_Complete,4229PPL20,"Receive revised commercial offers for 8""""pipeline",,,,0,0,0,0,40,0,0,0,,2012-01-09 08:00,2012-01-24 00:00,2013-01-17 08:00,2013-01-17 08:00,,2012-06-30 00:00,2012-06-30 00:00,,,2012-01-09 08:00,2012-01-15 16:00,,,,,PT_Normal,,,,,CEq7pJ32oEKr8gjmP6Gcpw,,,,N,0,0,,,2012-07-16 15:22,2012-07-16 15:22,admin,admin
96,150693,5776,24155,6944,1,100,N,N,N,CP_Drtn,TT_LOE,DT_FixedDUR2,RV_OK,TK_Complete,4229PPL15,"T.E.R for 8""""line pipe",,,,0,0,0,0,231,0,0,0,,2011-11-22 00:00,2012-01-08 16:00,,,,,,,,2012-01-22 08:00,2012-03-01 15:00,,,,,PT_Normal,,,,,GS+dRTE60EK/8TbK0z39xw,7uF5bGdtl0SfRYxvT5GJ0w,,,N,0,0,,,2012-07-16 15:22,2012-07-16 15:22,admin,admin
97,150694,5776,24155,6944,1,100,N,N,N,CP_Drtn,TT_LOE,DT_FixedDUR2,RV_OK,TK_Complete,4229PPL65,"MRP for 8"""" pipeline",,,,0,0,0,0,40,0,0,0,,2012-02-21 00:00,2012-02-26 00:00,,,,,,,,2012-03-04 08:00,2012-03-08 16:00,,,,,PT_Normal,,,,,yJZrJYl5FUmmNLozMYlhLA,J/NOEfck6UScfk4m4xI+Hw,,,N,0,0,,,2012-07-16 15:22,2012-07-16 15:22,admin,admin
98,150695,5776,24152,6944,1,100,N,N,N,CP_Drtn,TT_LOE,DT_FixedDUR2,RV_OK,TK_Complete,4229PKR25,T.E.R for kamos ring,,,,0,0,0,0,151,0,0,0,,2011-11-13 00:00,2011-11-20 00:00,,,,,,,,2011-12-04 08:00,2011-12-28 15:00,,,,,PT_Normal,,,,,URNdDeUJv02OHNSe1ipqWg,VIXmqmrRAE6RPd+GoKSRMQ,,,N,0,0,,,2012-07-16 15:22,2012-07-16 15:22,admin,admin
99,150696,5776,24152,6944,1,100,N,N,N,CP_Drtn,TT_LOE,DT_FixedDUR2,RV_OK,TK_Complete,4229PKR65,MRP for kamos ring,,,,0,0,0,0,40,0,0,0,,2011-12-21 00:00,2011-12-26 00:00,,,,,,,,2012-01-08 08:00,2012-01-12 16:00,,,,,PT_Normal,,,,,FimuRcBuPUevwJ3pziJbsw,AmLZVJIw7EqS3cFL1qtY5Q,,,N,0,0,,,2012-07-16 15:22,2012-07-16 15:22,admin,admin
100,150697,5776,24152,6944,1,100,N,N,N,CP_Drtn,TT_Task,DT_FixedDUR2,RV_OK,TK_Complete,4229PKR80,L.C issued by Gupco,,,,0,0,0,0,8,0,0,0,,2012-01-02 00:00,2012-01-02 00:00,2013-02-24 16:00,2013-02-24 16:00,,2012-06-30 00:00,2012-06-30 00:00,,,2012-01-01 08:00,2012-01-01 16:00,,,,,PT_Normal,,,,,mKvVhUI11kK00dDEtOcFEQ,3jITFGtr+kiLENdPR+Y//g,,,N,0,0,,,2012-07-16 15:22,2012-07-16 15:22,admin,admin
101,150698,5776,24152,6944,1,100,N,N,N,CP_Drtn,TT_Task,DT_FixedDUR2,RV_OK,TK_Complete,4229PKR40,commercial evaluation & bid committee for Kamos ring,,,,0,0,0,0,80,0,0,0,,2011-11-27 00:00,2011-12-07 00:00,2013-02-24 16:00,2013-02-24 16:00,,2012-06-30 00:00,2012-06-30 00:00,,,2011-12-11 08:00,2011-12-22 16:00,,,,,PT_Normal,,,,,LEaS9MCU/0eJXxoFQX3t8A,3ro8V+iM2kWWUdMn3ENIug,,,N,0,0,,,2012-07-16 15:22,2012-07-16 15:22,admin,admin
102,150699,5776,24152,6944,1,100,N,N,N,CP_Drtn,TT_Task,DT_FixedDUR2,RV_OK,TK_Complete,4229PKR60,F.O.C for Kamos ring,,,,0,0,0,0,24,0,0,0,,2011-12-12 00:00,2011-12-20 00:00,2013-02-24 16:00,2013-02-24 16:00,,2012-06-30 00:00,2012-06-30 00:00,,,2012-01-03 08:00,2012-01-05 16:00,,,,,PT_Normal,,,,,J9BXTftGck6nqNn/SO3QLQ,aOz6IP5TRUi7G/HwE9JsZA,,,N,0,0,,,2012-07-16 15:22,2012-07-16 15:22,admin,admin
103,150700,5776,24152,6944,1,100,N,N,N,CP_Drtn,TT_Task,DT_FixedDUR2,RV_OK,TK_Complete,4229PKR70,P.O for Kamos ring,,,,0,0,0,0,32,0,0,0,,2011-12-27 08:00,2012-01-01 16:00,2013-02-24 16:00,2013-02-24 16:00,,2012-06-30 00:00,2012-06-30 00:00,,,2011-12-27 08:00,2012-01-01 16:00,,,,,PT_Normal,,,,,C9PC2VLOt0i4qnbrV7/w+w,4jZsUwnCVkyez1CGClmI4w,,,N,0,0,,,2012-07-16 15:22,2012-07-16 15:22,admin,admin
104,150701,5776,24152,6945,1,100,N,N,N,CP_Drtn,TT_Task,DT_FixedDrtn,RV_OK,TK_Complete,4229PKR20,Bidding for Kamos ring,,,,0,0,0,0,200,0,0,0,,2011-10-06 00:00,2011-11-12 00:00,2013-02-24 16:00,2013-02-24 16:00,,2012-06-30 00:00,2012-06-30 00:00,,,2011-11-01 08:00,2011-11-25 16:00,,,,,PT_Normal,,,,,QPB1s924ek6pZUaR3EEJPw,aqDgHd8b8kmS1ml83ufGuA,,,N,0,0,,,2012-07-16 15:22,2012-07-16 15:22,admin,admin
105,150702,5776,24152,6944,1,100,N,N,N,CP_Drtn,TT_Task,DT_FixedDrtn,RV_OK,TK_Complete,4229PKR30,Receive revised commercial offers for Kamos ring,,,,0,0,0,0,40,0,0,0,,2011-11-21 00:00,2011-11-27 00:00,2013-02-24 16:00,2013-02-24 16:00,,2012-06-30 00:00,2012-06-30 00:00,,,2011-12-04 08:00,2011-12-08 16:00,,,,,PT_Normal,,,,,icm/61+wdECwYtDqQSUcrw,cI8XFbOGtEiLgTZ3toUOuA,,,N,0,0,,,2012-07-16 15:22,2012-07-16 15:22,admin,admin
106,150703,5776,24152,6944,1,100,N,N,N,CP_Drtn,TT_Task,DT_FixedDUR2,RV_OK,TK_Complete,4229PKR10,Issue RFQ for Kamos ring,,,,0,0,0,0,16,0,0,0,,2011-10-05 00:00,2011-10-05 00:00,2013-02-24 16:00,2013-02-24 16:00,,2012-06-30 00:00,2012-06-30 00:00,,,2011-10-30 08:00,2011-10-31 16:00,,,,,PT_Normal,,,,,AYxQgR0IX0OL469aG0gY2Q,MF8ACxsV2EGTaIRXL+YVVw,,,N,0,0,,,2012-07-16 15:22,2012-07-16 15:22,admin,admin
107,150704,5776,24152,6945,1,100,N,N,N,CP_Drtn,TT_Task,DT_FixedDUR2,RV_OK,TK_Complete,4229PKR90,Fabrication upto R.F.S,,,,0,0,0,0,728,0,0,0,,2012-01-02 00:00,2012-03-04 00:00,2013-02-24 16:00,2013-02-24 16:00,,2012-06-30 00:00,2012-06-30 00:00,,,2012-01-28 08:00,2012-04-27 16:00,,,,,PT_Normal,,,,,fLYQ1YzYlUewzfbGVKi9bQ,WR5vIkiNPkm7l0vU5ocNsA,,,N,0,0,,,2012-07-16 15:22,2012-07-16 15:22,admin,admin
108,150705,5776,24152,6946,1,100,N,N,N,CP_Drtn,TT_Task,DT_FixedDUR2,RV_OK,TK_Complete,4229PKR100,Delivery upto site,,,,0,0,0,0,240,0,0,0,,2012-03-05 00:00,2012-03-24 00:00,2013-02-24 16:00,2013-02-24 16:00,,2012-06-30 00:00,2012-06-30 00:00,,,2012-04-02 08:00,2012-05-01 16:00,,,,,PT_Normal,,,,,G7OZhv1jz0ieYxpCcm1kxg,o3ktBGgPHkOGVVqCO95mXA,,,N,0,0,,,2012-07-16 15:22,2012-07-16 15:22,admin,admin
109,150706,5776,24152,6944,1,100,N,N,N,CP_Drtn,TT_Task,DT_FixedDUR2,RV_OK,TK_Complete,4229PKR50,Client approval on bid committee reccomendation,,,,0,0,0,0,16,0,0,0,,2011-12-07 00:00,2011-12-11 00:00,2013-02-24 16:00,2013-02-24 16:00,,2012-06-30 00:00,2012-06-30 00:00,,,2012-01-01 08:00,2012-01-02 16:00,,,,,PT_Normal,,,,,wNzdrLgPu0mrmxoyRsO9jA,mQau4KbKWE2qc5jKaiAg/A,,,N,0,0,,,2012-07-16 15:22,2012-07-16 15:22,admin,admin
110,150707,5776,24153,6944,1,100,N,N,N,CP_Drtn,TT_LOE,DT_FixedDUR2,RV_OK,TK_Complete,4229PAF65,MRP for anchor flanges,,,,0,0,0,0,40,0,0,0,,2012-02-14 00:00,2012-02-28 00:00,,,,,,,,2012-03-04 08:00,2012-03-08 16:00,,,,,PT_Normal,,,,,PUF0J8QRTEqB6I9eN+b9dg,Pdlj45l+qUqauuzEbIoH+w,,,N,0,0,,,2012-07-16 15:22,2012-07-16 15:22,admin,admin
111,150708,5776,24153,6944,1,100,N,N,N,CP_Drtn,TT_LOE,DT_FixedDUR2,RV_OK,TK_Complete,4229PAF25,T.E.R for anchor flanges,,,,0,0,0,0,120,0,0,0,,2011-12-06 08:00,2012-01-05 16:00,,,,,,,,2011-12-06 08:00,2011-12-26 16:00,,,,,PT_Normal,,,,,LLr5PW+Va06KyMjylM+K1A,KcMGieJ0zEOkCUsRzSRnVg,,,N,0,0,,,2012-07-16 15:22,2012-07-16 15:22,admin,admin
112,150709,5776,24153,6944,1,100,N,N,N,CP_Drtn,TT_Task,DT_FixedDUR2,RV_OK,TK_Complete,4229PAF50,Client approval on bid committee reccomendation,,,,0,0,0,0,16,0,0,0,,2012-02-07 00:00,2012-02-09 00:00,2013-02-03 08:00,2013-02-03 08:00,,2012-06-30 00:00,2012-06-30 00:00,,,2012-03-18 08:00,2012-03-19 16:00,,,,,PT_Normal,,,,,6MPlB3kMi0mNsvmd9WNNRQ,HhBbqT7mmkq6ky9/qu9Xrw,,,N,0,0,,,2012-07-16 15:22,2012-07-16 15:22,admin,admin
113,150710,5776,24153,6944,1,0,N,N,N,CP_Drtn,TT_Task,DT_FixedDUR2,RV_OK,TK_NotStart,4229PAF80,L.C issued by Gupco,,1160,0,40,0,0,0,40,0,0,0,,,,2013-02-03 08:00,2013-02-07 16:00,,2012-07-01 08:00,2012-07-05 16:00,2012-07-01 08:00,2012-07-05 16:00,2012-07-01 08:00,2012-07-05 16:00,,2013-02-03 08:00,2013-02-07 16:00,,PT_Normal,,,,,a6l+vrS8GU6Qecf3V8qeqQ,Kd1Io08brUu0r3ObTHOVHg,,,N,0,0,,,2012-07-16 15:22,2012-07-16 15:22,admin,admin
114,150711,5776,24153,6944,1,100,N,N,N,CP_Drtn,TT_Task,DT_FixedDUR2,RV_OK,TK_Complete,4229PAF40,commercial evaluation & bid committee for  Anchor Flanges,,,,0,0,0,0,80,0,0,0,,2012-01-15 08:00,2012-02-06 00:00,2013-02-03 08:00,2013-02-03 08:00,,2012-06-30 00:00,2012-06-30 00:00,,,2012-01-15 08:00,2012-01-29 16:00,,,,,PT_Normal,,,,,LHy4z8fjdUCTNsX48d+OPw,g31Sg/5OdEWgMblFud4aKg,,,N,0,0,,,2012-07-16 15:22,2012-07-16 15:22,admin,admin
115,150712,5776,24153,6944,1,100,N,N,N,CP_Drtn,TT_Task,DT_FixedDUR2,RV_OK,TK_Complete,4229PAF60,F.O.C for  Anchor Flanges,,,,0,0,0,0,24,0,0,0,,2012-02-12 00:00,2012-02-13 00:00,2013-02-03 08:00,2013-02-03 08:00,,2012-06-30 00:00,2012-06-30 00:00,,,2012-03-04 08:00,2012-03-06 16:00,,,,,PT_Normal,,,,,PViN+esHy0W+CB4jMGbCqA,r1kiUYJl5E6F8x873gkW3Q,,,N,0,0,,,2012-07-16 15:22,2012-07-16 15:22,admin,admin
116,150713,5776,24153,6945,1,100,N,N,N,CP_Drtn,TT_Task,DT_FixedDrtn,RV_OK,TK_Complete,4229PAF20,Bidding for  Anchor Flanges,,,,0,0,0,0,200,0,0,0,,2011-10-27 00:00,2011-12-01 00:00,2013-02-03 08:00,2013-02-03 08:00,,2012-06-30 00:00,2012-06-30 00:00,,,2011-11-01 08:00,2011-11-25 16:00,,,,,PT_Normal,,,,,rGi0p18vik6bApKfYL/hRw,3gr+rFvxxEqInjchjLuZiw,,,N,0,0,,,2012-07-16 15:22,2012-07-16 15:22,admin,admin
117,150714,5776,24153,6944,1,100,N,N,N,CP_Drtn,TT_Task,DT_FixedDrtn,RV_OK,TK_Complete,4229PAF30,Receive revised commercial offers for  Anchor Flanges,,,,0,0,0,0,40,0,0,0,2012-01-08 00:00,2012-01-08 08:00,2012-01-12 00:00,2013-02-03 08:00,2013-02-03 08:00,,2012-06-30 00:00,2012-06-30 00:00,,,2012-01-08 08:00,2012-01-12 16:00,,,,CS_MSOA,PT_Normal,,,,,vgDn5sOVaESOjkucCWsjrw,YZqtY743iECtZCI8oAzGEw,,,N,0,0,,,2012-07-16 15:22,2012-07-16 15:22,admin,admin
118,150715,5776,24153,6944,1,100,N,N,N,CP_Drtn,TT_Task,DT_FixedDUR2,RV_OK,TK_Complete,4229PAF10,Issue RFQ for Anchor Flanges,,,,0,0,0,0,16,0,0,0,,2011-10-25 00:00,2011-10-26 00:00,2013-02-03 08:00,2013-02-03 08:00,,2012-06-30 00:00,2012-06-30 00:00,,,2011-10-30 08:00,2011-10-31 16:00,,,,,PT_Normal,,,,,xc2bS2iJlUSwA7Q0lJLvEg,MrFyXV/ZwEKiOJ2hcnyoRg,,,N,0,0,,,2012-07-16 15:22,2012-07-16 15:22,admin,admin
119,150716,5776,24153,6945,1,100,N,N,N,CP_Drtn,TT_Task,DT_FixedDUR2,RV_OK,TK_Complete,4229PAF90,Fabrication upto R.F.S,,,,0,0,0,0,448,0,0,0,,2012-02-28 00:00,2012-05-15 00:00,2013-02-08 08:00,2013-02-08 08:00,,2012-07-05 16:00,2012-07-05 16:00,,,2012-03-09 08:00,2012-05-03 16:00,,,,,PT_Normal,,,,,7S0AuxcTUEOksZZgMpQYQA,qgd69YrpDkOI+oaKInsYUg,,,N,0,0,,,2012-07-16 15:22,2012-07-16 15:22,admin,admin
120,150717,5776,24153,6946,1,0,N,N,N,CP_Drtn,TT_Task,DT_FixedDUR2,RV_OK,TK_Active,4229PAF100,Delivery upto site,,1752,0,136,0,0,0,240,0,0,0,,2012-05-18 00:00,,2013-02-08 08:00,2013-02-24 16:00,2012-07-22 16:00,2012-07-06 08:00,2012-07-22 16:00,2012-07-06 08:00,2012-07-22 16:00,2012-06-08 08:00,2012-07-07 16:00,,2013-02-08 08:00,2013-02-24 16:00,,PT_Normal,,,,,FFh3zVdI+EOqygZo2Fuu2w,oyg01drvjUGu7ia9nCu4jQ,,,N,0,0,,,2012-07-16 15:22,2012-07-16 15:22,admin,admin
121,150718,5776,24153,6944,1,100,N,N,N,CP_Drtn,TT_Task,DT_FixedDUR2,RV_OK,TK_Complete,4229PAF70,P.O for  Anchor Flanges,,,,0,0,0,0,40,0,0,0,,2012-02-28 00:00,2012-02-28 00:00,2013-02-03 08:00,2013-02-03 08:00,,2012-06-30 00:00,2012-06-30 00:00,,,2012-03-04 08:00,2012-03-08 16:00,,,,,PT_Normal,,,,,EqZ90SLTGkqBzsT/EVKxXA,/iUKwzSdjUWnbLh4jcgmjw,,,N,0,0,,,2012-07-16 15:22,2012-07-16 15:22,admin,admin
122,150719,5776,24159,6945,1,100,N,N,N,CP_Drtn,TT_Task,DT_FixedDrtn,RV_OK,TK_Complete,4229PIJ20,Bidding for Isolating joints,,,,0,0,0,0,200,0,0,0,,2011-10-20 00:00,2011-11-10 00:00,2013-02-24 16:00,2013-02-24 16:00,,2012-06-30 00:00,2012-06-30 00:00,,,2011-11-01 08:00,2011-11-25 16:00,,,,,PT_Normal,,,,,cIECQq7wWkKWSPj5bdq6Eg,bBQedupqd0KFz1dIppHZuQ,,,N,0,0,,,2012-07-16 15:22,2012-07-16 15:22,admin,admin
123,150720,5776,24159,6944,1,100,N,N,N,CP_Drtn,TT_Task,DT_FixedDrtn,RV_OK,TK_Complete,4229PIJ30,Receive revised commercial offers for Isolating joints,,,,0,0,0,0,40,0,0,0,,2011-12-13 08:00,2011-12-21 00:00,2013-02-24 16:00,2013-02-24 16:00,,2012-06-30 00:00,2012-06-30 00:00,,,2011-12-13 08:00,2011-12-19 16:00,,,,,PT_Normal,,,,,pUBH+S7LwUiXMfsLNZ1hyQ,klxYrCfhKEa29w2695+dWw,,,N,0,0,,,2012-07-16 15:22,2012-07-16 15:22,admin,admin
124,150721,5776,24159,6944,1,100,N,N,N,CP_Drtn,TT_Task,DT_FixedDUR2,RV_OK,TK_Complete,4229PIJ10,Issue RFQ for Isolating joints,,,,0,0,0,0,16,0,0,0,,2011-10-19 00:00,2011-10-19 00:00,2013-02-24 16:00,2013-02-24 16:00,,2012-06-30 00:00,2012-06-30 00:00,,,2011-10-30 08:00,2011-10-31 16:00,,,,,PT_Normal,,,,,x4/tBVyP0ESun0L8IOyhfg,as1huikPDUKtD+tVXnVG5w,,,N,0,0,,,2012-07-16 15:22,2012-07-16 15:22,admin,admin
125,150722,5776,24159,6945,1,100,N,N,N,CP_Drtn,TT_Task,DT_FixedDUR2,RV_OK,TK_Complete,4229PIJ90,Fabrication upto R.F.S,,,,0,0,0,0,784,0,0,0,,2012-02-03 00:00,2012-06-11 00:00,2013-02-24 16:00,2013-02-24 16:00,,2012-06-30 00:00,2012-06-30 00:00,,,2012-03-09 08:00,2012-06-14 16:00,,,,,PT_Normal,,,,,le31uSBdT06n1KSXX/rA7A,wggRnWZrx0WgSPrgNG50cA,,,N,0,0,,,2012-07-16 15:22,2012-07-16 15:22,admin,admin
126,150723,5776,24159,6946,1,100,N,N,N,CP_Drtn,TT_Task,DT_FixedDUR2,RV_OK,TK_Complete,4229PIJ100,Delivery upto site,,,,0,0,0,0,240,0,0,0,,2012-06-11 00:00,2012-07-21 00:00,2013-02-24 16:00,2013-02-24 16:00,,2012-06-30 00:00,2012-06-30 00:00,,,2012-07-06 08:00,2012-08-04 16:00,,,,,PT_Normal,,,,,9bOzmtklAEmE4FDvZQnsfQ,GuMhgm4xLky6jrSmhJlN2A,,,N,0,0,,,2012-07-16 15:22,2012-07-16 15:22,admin,admin
127,150724,5776,24159,6944,1,100,N,N,N,CP_Drtn,TT_Task,DT_FixedDUR2,RV_OK,TK_Complete,4229PIJ50,Client approval on bid committee reccomendation,,,,0,0,0,0,16,0,0,0,,2011-12-22 00:00,2012-01-03 00:00,2013-02-24 16:00,2013-02-24 16:00,,2012-06-30 00:00,2012-06-30 00:00,,,2012-01-03 08:00,2012-01-04 16:00,,,,,PT_Normal,,,,,ydc+8G4F8EGlwCu0N5+h0w,q/oN1VQYJ0i3Kec9Fshb9w,,,N,0,0,,,2012-07-16 15:22,2012-07-16 15:22,admin,admin
128,150725,5776,24159,6944,1,100,N,N,N,CP_Drtn,TT_Task,DT_FixedDUR2,RV_OK,TK_Complete,4229PIJ40,commercial evaluation & bid committee for Isolating joints,,,,0,0,0,0,80,0,0,0,,2011-12-13 00:00,2011-12-21 00:00,2013-02-24 16:00,2013-02-24 16:00,,2012-06-30 00:00,2012-06-30 00:00,,,2011-12-22 08:00,2012-01-04 16:00,,,,,PT_Normal,,,,,D59PHrn7l0uYReZiFFFjlw,+GIhOJsP5EuRDusTK86C3Q,,,N,0,0,,,2012-07-16 15:22,2012-07-16 15:22,admin,admin
129,150726,5776,24159,6944,1,100,N,N,N,CP_Drtn,TT_Task,DT_FixedDUR2,RV_OK,TK_Complete,4229PIJ60,F.O.C for Isolating joints,,,,0,0,0,0,24,0,0,0,,2012-01-04 00:00,2012-01-23 16:00,2013-02-24 16:00,2013-02-24 16:00,,2012-06-30 00:00,2012-06-30 00:00,,,2012-01-23 08:00,2012-01-26 16:00,,,,,PT_Normal,,,,,gdvJfL+l8k2KKu8W/LhC3Q,m/zaAJ0juUCO2Ynoa4AOIg,,,N,0,0,,,2012-07-16 15:22,2012-07-16 15:22,admin,admin
130,150727,5776,24159,6944,1,100,N,N,N,CP_Drtn,TT_Task,DT_FixedDUR2,RV_OK,TK_Complete,4229PIJ70,P.O for Isolating joints,,,,0,0,0,0,40,0,0,0,,2012-02-01 08:00,2012-02-02 00:00,2013-02-24 16:00,2013-02-24 16:00,,2012-06-30 00:00,2012-06-30 00:00,,,2012-02-01 08:00,2012-02-07 16:00,,,,,PT_Normal,,,,,+BWs1DTf0EmaFJZSUnKruA,51qm2usYr0+stGttA74aog,,,N,0,0,,,2012-07-16 15:22,2012-07-16 15:22,admin,admin
131,150728,5776,24159,6944,1,100,N,N,N,CP_Drtn,TT_LOE,DT_FixedDUR2,RV_OK,TK_Complete,4229PIJ25,T.E.R for isolating joints,,,,0,0,0,0,151,0,0,0,,2011-11-13 00:00,2011-12-08 00:00,,,,,,,,2011-12-04 08:00,2011-12-28 15:00,,,,,PT_Normal,,,,,RrsWXZKpAk69Sm28NNyNOw,/RPpbpU2kkufsg8WhrxLvg,,,N,0,0,,,2012-07-16 15:22,2012-07-16 15:22,admin,admin
132,150729,5776,24159,6944,1,100,N,N,N,CP_Drtn,TT_LOE,DT_FixedDUR2,RV_OK,TK_Complete,4229PIJ65,MRP for isolating joints,,,,0,0,0,0,32,0,0,0,,2012-01-24 00:00,2012-01-31 00:00,,,,,,,,2012-01-29 08:00,2012-02-01 16:00,,,,,PT_Normal,,,,,nKCJiIu+VUOeOWWfn74gKQ,Vx9as0BmD0SZpsBNAJdc+g,,,N,0,0,,,2012-07-16 15:22,2012-07-16 15:22,admin,admin
133,150730,5776,24160,6945,1,100,N,N,N,CP_Drtn,TT_Task,DT_FixedDrtn,RV_OK,TK_Complete,4229PHS20,Bidding for Heat shrink sleeves,,,,0,0,0,0,200,0,0,0,,2011-10-13 00:00,2011-11-02 00:00,2013-02-24 16:00,2013-02-24 16:00,,2012-06-30 00:00,2012-06-30 00:00,,,2011-11-01 08:00,2011-11-25 16:00,,,,,PT_Normal,,,,,TjstPAMJkku4KCo6yxvI/A,07sjOHjKsE6iDWYX7870iw,,,N,0,0,,,2012-07-16 15:22,2012-07-16 15:22,admin,admin
134,150731,5776,24160,6944,1,100,N,N,N,CP_Drtn,TT_Task,DT_FixedDrtn,RV_OK,TK_Complete,4229PHS30,Receive revised commercial offers for Heat shrink sleeves,,,,0,0,0,0,40,0,0,0,,2011-12-06 08:00,2011-12-08 00:00,2013-02-24 16:00,2013-02-24 16:00,,2012-06-30 00:00,2012-06-30 00:00,,,2011-12-06 08:00,2011-12-12 16:00,,,,,PT_Normal,,,,,qCIWLP8iAEOYojm1+IIrLA,iD0sa1SMaEiOKBRQ1O2o6g,,,N,0,0,,,2012-07-16 15:22,2012-07-16 15:22,admin,admin
135,150732,5776,24160,6944,1,100,N,N,N,CP_Drtn,TT_Task,DT_FixedDUR2,RV_OK,TK_Complete,4229PHS10,Issue RFQ for Heat shrink sleeves,,,,0,0,0,0,16,0,0,0,,2011-10-12 00:00,2011-10-12 00:00,2013-02-24 16:00,2013-02-24 16:00,,2012-06-30 00:00,2012-06-30 00:00,,,2011-10-30 08:00,2011-10-31 16:00,,,,,PT_Normal,,,,,2VjUr//ZOkGOHlSC3dRHhw,jfLoOt8Z6kGAt+HgfFvK3w,,,N,0,0,,,2012-07-16 15:22,2012-07-16 15:22,admin,admin
136,150733,5776,24160,6945,1,100,N,N,N,CP_Drtn,TT_Task,DT_FixedDUR2,RV_OK,TK_Complete,4229PHS90,Fabrication upto R.F.S,,,,0,0,0,0,392,0,0,0,,2012-01-24 00:00,2012-03-22 00:00,2013-02-24 16:00,2013-02-24 16:00,,2012-06-30 00:00,2012-06-30 00:00,,,2012-01-30 08:00,2012-03-18 16:00,,,,,PT_Normal,,,,,2vBBhGOBf0ypCHb38v6heA,LLxu6IKLk0yOdCX45wxHIQ,,,N,0,0,,,2012-07-16 15:22,2012-07-16 15:22,admin,admin
137,150734,5776,24160,6946,1,100,N,N,N,CP_Drtn,TT_Task,DT_FixedDUR2,RV_OK,TK_Complete,4229PHS100,Delivery upto site,,,,0,0,0,0,120,0,0,0,,2012-03-23 00:00,2012-05-27 00:00,2013-02-24 16:00,2013-02-24 16:00,,2012-06-30 00:00,2012-06-30 00:00,,,2012-03-31 08:00,2012-04-14 16:00,,,,,PT_Normal,,,,,p6zjhosrM0C4Ajne+lznjw,/LOUFXStZU20NZFdwfal8w,,,N,0,0,,,2012-07-16 15:22,2012-07-16 15:22,admin,admin
138,150735,5776,24160,6944,1,100,N,N,N,CP_Drtn,TT_Task,DT_FixedDUR2,RV_OK,TK_Complete,4229PHS50,Client approval on bid committee reccomendation,,,,0,0,0,0,16,0,0,0,,2011-12-22 00:00,2012-01-03 00:00,2013-02-24 16:00,2013-02-24 16:00,,2012-06-30 00:00,2012-06-30 00:00,,,2012-01-01 08:00,2012-01-02 16:00,,,,,PT_Normal,,,,,61b3k12aNUyu0srd/42Eww,iiL5R/hBgECY7+6p+U01Gg,,,N,0,0,,,2012-07-16 15:22,2012-07-16 15:22,admin,admin
139,150736,5776,24160,6944,1,100,N,N,N,CP_Drtn,TT_Task,DT_FixedDUR2,RV_OK,TK_Complete,4229PHS80,L.C issued by Gupco (not Applicable),,,,0,0,0,0,40,0,0,0,,2012-01-23 00:00,2012-01-23 00:00,2013-02-24 16:00,2013-02-24 16:00,,2012-06-30 00:00,2012-06-30 00:00,,,2012-01-22 08:00,2012-01-29 16:00,,,,,PT_Normal,,,,,njUzFiXU6EmP+g+++/vtNA,P+ALjRxymUWKulYnQG96Og,,,N,0,0,,,2012-07-16 15:22,2012-07-16 15:22,admin,admin
140,150737,5776,24160,6944,1,100,N,N,N,CP_Drtn,TT_Task,DT_FixedDUR2,RV_OK,TK_Complete,4229PHS40,commercial evaluation & bid committee for Heat shrink sleeves,,,,0,0,0,0,80,0,0,0,,2011-12-09 00:00,2011-12-12 00:00,2013-02-24 16:00,2013-02-24 16:00,,2012-06-30 00:00,2012-06-30 00:00,,,2011-12-14 08:00,2011-12-27 16:00,,,,,PT_Normal,,,,,fn3QvzmaM02tR3kc7IP6rA,sKwTyDY27U2BB6/qHgw6OQ,,,N,0,0,,,2012-07-16 15:22,2012-07-16 15:22,admin,admin
141,150738,5776,24160,6944,1,100,N,N,N,CP_Drtn,TT_Task,DT_FixedDUR2,RV_OK,TK_Complete,4229PHS60,F.O.C for Heat shrink sleeves,,,,0,0,0,0,24,0,0,0,,2012-01-04 00:00,2012-01-23 00:00,2013-02-24 16:00,2013-02-24 16:00,,2012-06-30 00:00,2012-06-30 00:00,,,2012-01-03 08:00,2012-01-05 16:00,,,,,PT_Normal,,,,,VV5UWYG/4kuhJnxZNlJDnQ,iXQwi6oD8EyafkjSeVpArg,,,N,0,0,,,2012-07-16 15:22,2012-07-16 15:22,admin,admin
142,150739,5776,24160,6944,1,100,N,N,N,CP_Drtn,TT_Task,DT_FixedDUR2,RV_OK,TK_Complete,4229PHS70,P.O for Heat shrink sleeves,,,,0,0,0,0,40,0,0,0,,2012-01-30 08:00,2012-02-05 16:00,2013-02-24 16:00,2013-02-24 16:00,,2012-06-30 00:00,2012-06-30 00:00,,,2012-01-30 08:00,2012-02-05 16:00,,,,,PT_Normal,,,,,RbtxwvwYSkeYcwUbsL1O6A,vcNgRPq2gE2+G9/qjHSUDA,,,N,0,0,,,2012-07-16 15:22,2012-07-16 15:22,admin,admin
143,150740,5776,24160,6944,1,100,N,N,N,CP_Drtn,TT_LOE,DT_FixedDUR2,RV_OK,TK_Complete,4229PHS25,T.E.R for heat shrink sleeves,,,,0,0,0,0,151,0,0,0,,2011-11-03 00:00,2011-12-05 00:00,,,,,,,,2011-12-04 08:00,2011-12-28 15:00,,,,,PT_Normal,,,,,Bqi6qJH3N0+sWTqwY+3kXQ,TRfzN9uTK0OCBl07/0dyfg,,,N,0,0,,,2012-07-16 15:22,2012-07-16 15:22,admin,admin
144,150741,5776,24160,6944,1,100,N,N,N,CP_Drtn,TT_LOE,DT_FixedDUR2,RV_OK,TK_Complete,4229PHS65,MRP for heat shrink sleeves,,,,0,0,0,0,40,0,0,0,,2012-01-24 08:00,2012-01-30 16:00,,,,,,,,2012-01-29 08:00,2012-02-02 16:00,,,,,PT_Normal,,,,,w9CxQxDHiUOvV112zdJODw,5Z/xpS+fjESkAsXx92SJWw,,,N,0,0,,,2012-07-16 15:22,2012-07-16 15:22,admin,admin
145,150742,5776,24161,6945,1,100,N,N,N,CP_Drtn,TT_Task,DT_FixedDrtn,RV_OK,TK_Complete,4229P4220,Bidding for Flanges,,,,0,0,0,0,16,0,0,0,,2011-11-03 00:00,2011-11-28 00:00,2013-01-26 08:00,2013-01-26 08:00,,2012-06-30 00:00,2012-06-30 00:00,,,2011-12-03 08:00,2011-12-04 16:00,,,,,PT_Normal,,,,,C/AQCWz2nEaq+w4c+P99Kg,4dk1kLWr8Uipwbh1A4uC1Q,,,N,0,0,,,2012-07-16 15:22,2012-07-16 15:22,admin,admin
146,150743,5776,24161,6944,1,100,N,N,N,CP_Drtn,TT_Task,DT_FixedDrtn,RV_OK,TK_Complete,4229PFL30,Receive revised commercial offers for Flanges,,,,0,0,0,0,40,0,0,0,,2012-01-19 00:00,2012-01-24 00:00,2013-01-26 08:00,2013-01-26 08:00,,2012-06-30 00:00,2012-06-30 00:00,,,2012-01-29 08:00,2012-02-02 16:00,,,,,PT_Normal,,,,,wP7m5VN94kSD4TTE2lHb3g,9VDpY57a3UudBJDUjqJGDQ,,,N,0,0,,,2012-07-16 15:22,2012-07-16 15:22,admin,admin
147,150744,5776,24161,6944,1,100,N,N,N,CP_Drtn,TT_Task,DT_FixedDUR2,RV_OK,TK_Complete,4229PFL10,Issue RFQ for Flanges,,,,0,0,0,0,16,0,0,0,,2011-10-31 00:00,2011-11-02 00:00,2013-01-26 08:00,2013-01-26 08:00,,2012-06-30 00:00,2012-06-30 00:00,,,2011-12-04 08:00,2011-12-05 16:00,,,,,PT_Normal,,,,,l9wv1lJi50KaqYYWrolbJg,Ogmu6kUj7USG0/qhOzLW0g,,,N,0,0,,,2012-07-16 15:22,2012-07-16 15:22,admin,admin
148,150745,5776,24161,6945,1,0,N,N,N,CP_Drtn,TT_Task,DT_FixedDUR2,RV_OK,TK_Active,4229PFL90,Fabrication upto R.F.S,,1584,0,128,0,0,0,896,0,0,0,,2012-02-28 00:00,,2013-01-26 08:00,2013-02-10 16:00,,2012-06-30 08:00,2012-07-15 16:00,2012-06-30 08:00,2012-07-15 16:00,2012-03-03 08:00,2012-06-22 16:00,,2013-01-26 08:00,2013-02-10 16:00,,PT_Normal,,,,,iOBJzLELvkeyellXr2mdnA,xpVpHHnMvEKud81vKiQs4w,,,N,0,0,,,2012-07-16 15:22,2012-07-16 15:22,admin,admin
149,150746,5776,24161,6946,1,0,N,N,N,CP_Drtn,TT_Task,DT_FixedDUR2,RV_OK,TK_NotStart,4229PFL100,Delivery upto site,,1696,1696,112,0,0,0,112,0,0,0,,,,2013-02-11 08:00,2013-02-24 16:00,,2012-07-16 08:00,2012-07-29 16:00,2012-07-16 08:00,2012-07-29 16:00,2012-07-16 08:00,2012-07-29 16:00,,2013-02-11 08:00,2013-02-24 16:00,,PT_Normal,,,,,7N/ySYyqXkGWz4uW6ez9BA,Tf7vSjkuA0O8+UofbYSmOg,,,N,0,0,,,2012-07-16 15:22,2012-07-16 15:22,admin,admin
150,150747,5776,24161,6944,1,100,N,N,N,CP_Drtn,TT_Task,DT_FixedDUR2,RV_OK,TK_Complete,4229PFL50,Client approval on bid committee reccomendation,,,,0,0,0,0,16,0,0,0,,2012-02-20 08:00,2012-02-21 16:00,2013-01-26 08:00,2013-01-26 08:00,,2012-06-30 00:00,2012-06-30 00:00,,,2012-02-20 08:00,2012-02-21 16:00,,,,,PT_Normal,,,,,4uWtbENS5UuNCYqlFVwGRQ,9aPvfqhTw0CEwcjlUgOBWQ,,,N,0,0,,,2012-07-16 15:22,2012-07-16 15:22,admin,admin
151,150748,5776,24161,6944,1,0,N,N,N,CP_Drtn,TT_Task,DT_FixedDUR2,RV_OK,TK_NotStart,4229PFL80,L.C issued by Gupco,,1248,1248,40,0,0,0,40,0,0,0,,,,2013-02-18 08:00,2013-02-24 16:00,,2012-07-01 08:00,2012-07-05 16:00,2012-07-01 08:00,2012-07-05 16:00,2012-07-01 08:00,2012-07-05 16:00,,2013-02-18 08:00,2013-02-24 16:00,,PT_Normal,,,,,Zt8T7rRzFkiw+3rJoGLBvA,hju/Z6YvvEKo5Cmbi1YfHw,,,N,0,0,,,2012-07-16 15:22,2012-07-16 15:22,admin,admin
152,150749,5776,24161,6944,1,100,N,N,N,CP_Drtn,TT_Task,DT_FixedDUR2,RV_OK,TK_Complete,4229PFL40,commercial evaluation & bid committee for Flanges,,,,0,0,0,0,80,0,0,0,,2012-01-25 00:00,2012-02-20 00:00,2013-01-26 08:00,2013-01-26 08:00,,2012-06-30 00:00,2012-06-30 00:00,,,2012-02-05 08:00,2012-02-16 16:00,,,,,PT_Normal,,,,,bBGOHlipgEKf4Ruh/bb71w,cwhykWHlMECb4uDsvooIkQ,,,N,0,0,,,2012-07-16 15:22,2012-07-16 15:22,admin,admin
153,150750,5776,24161,6944,1,100,N,N,N,CP_Drtn,TT_Task,DT_FixedDUR2,RV_OK,TK_Complete,4229PFL60,F.O.C for Flanges,,,,0,0,0,0,24,0,0,0,,2012-02-22 00:00,2012-02-26 00:00,2013-01-26 08:00,2013-01-26 08:00,,2012-06-30 00:00,2012-06-30 00:00,,,2012-03-04 08:00,2012-03-06 16:00,,,,,PT_Normal,,,,,yfJJsf39lkigcTcy5HYWDA,Q9JBxixOMkK0UZXQoQ9l3A,,,N,0,0,,,2012-07-16 15:22,2012-07-16 15:22,admin,admin
154,150751,5776,24161,6944,1,100,N,N,N,CP_Drtn,TT_Task,DT_FixedDUR2,RV_OK,TK_Complete,4229PFL70,P.O for Flanges,,,,0,0,0,0,40,0,0,0,,2012-02-28 00:00,2012-02-28 00:00,2013-01-26 08:00,2013-01-26 08:00,,2012-06-30 00:00,2012-06-30 00:00,,,2012-03-04 08:00,2012-03-08 16:00,,,,,PT_Normal,,,,,GSdGahRfg0GJ8TR4v7ykYA,0JXogbR1gUi8jGuDO8H6zw,,,N,0,0,,,2012-07-16 15:22,2012-07-16 15:22,admin,admin
155,150752,5776,24161,6944,1,100,N,N,N,CP_Drtn,TT_LOE,DT_FixedDUR2,RV_OK,TK_Complete,4229PFL25,T.E.R for flanges,,,,0,0,0,0,160,0,0,0,,2011-12-01 00:00,2012-01-18 16:00,,,,,,,,2011-12-05 08:00,2012-01-01 16:00,,,,,PT_Normal,,,,,cwT7cixjzUOibJRTD0l3NA,BTZdt/eNwkmTxOsXDtwf+A,,,N,0,0,,,2012-07-16 15:22,2012-07-16 15:22,admin,admin
156,150753,5776,24161,6944,1,100,N,N,N,CP_Drtn,TT_LOE,DT_FixedDUR2,RV_OK,TK_Complete,4229PFL65,MRP for flanges,,,,0,0,0,0,16,0,0,0,,2012-02-26 00:00,2012-02-27 00:00,,,,,,,,2012-03-07 08:00,2012-03-08 16:00,,,,,PT_Normal,,,,,nvXolPVgJ0Ckte80xs0GIw,rb1Bo9MPykqNAoF60pqpMA,,,N,0,0,,,2012-07-16 15:22,2012-07-16 15:22,admin,admin
157,150754,5776,24157,6944,1,100,N,N,N,CP_Drtn,TT_Task,DT_FixedDrtn,RV_OK,TK_Complete,4229PHB30,Receive revised commercial offers for hot bends,,,,0,0,0,0,40,0,0,0,,2011-12-09 00:00,2011-12-28 00:00,2012-12-02 08:00,2012-12-02 08:00,,2012-06-30 00:00,2012-06-30 00:00,,,2011-12-28 08:00,2012-01-03 16:00,,,,,PT_Normal,,,,,ZlNXQrfQLE6O4Ot5XCH22Q,lshWR38CR9WKmPPoeHu1kw,,,N,0,0,,,2012-07-16 15:22,2012-07-16 15:22,admin,admin
158,150755,5776,24157,6944,1,100,N,N,N,CP_Drtn,TT_Task,DT_FixedDUR2,RV_OK,TK_Complete,4229PHB10,Issue RFQ for hot bends,,,,0,0,0,0,16,0,0,0,,2011-10-09 00:00,2011-10-09 00:00,2012-12-02 08:00,2012-12-02 08:00,,2012-06-30 00:00,2012-06-30 00:00,,,2011-08-15 08:00,2011-08-16 16:00,,,,,PT_Normal,,,,,yH/VZgnCHUW5TaGyRHGcCg,RPisVVpZYky8Ac1mUQPczA,,,N,0,0,,,2012-07-16 15:22,2012-07-16 15:22,admin,admin
159,150756,5776,24157,6945,1,0,N,N,N,CP_Drtn,TT_Task,DT_FixedDUR2,RV_OK,TK_Active,4229PHB100,Fabrication upto R.F.S,,1136,0,400,0,0,0,896,0,0,0,2012-02-09 00:00,2012-04-06 00:00,,2012-12-07 08:00,2013-01-25 16:00,2012-09-05 16:00,2012-07-06 08:00,2012-09-05 16:00,2012-07-06 08:00,2012-09-05 16:00,2012-02-09 08:00,2012-05-30 16:00,,2012-12-07 08:00,2013-01-25 16:00,CS_MSOA,PT_Normal,,,,,nqkYpHjhxkKYRNHZOf5PqA,fKTRcaFxTEmgvZfa7vGZeA,,,N,0,0,,,2012-07-16 15:22,2012-07-16 15:22,admin,admin
160,150757,5776,24157,6946,1,0,N,N,N,CP_Drtn,TT_Task,DT_FixedDUR2,RV_OK,TK_NotStart,4229PHB110,Delivery upto site,,1152,1152,240,0,0,0,240,0,0,0,,,,2013-01-26 08:00,2013-02-24 16:00,,2012-09-06 08:00,2012-10-05 16:00,2012-09-06 08:00,2012-10-05 16:00,2012-09-06 08:00,2012-10-05 16:00,,2013-01-26 08:00,2013-02-24 16:00,,PT_Normal,,,,,kuQJ0CGbokeA2IqqEjcHBw,JNK95J5kqk2yxXXMkxZF1A,,,N,0,0,,,2012-07-16 15:22,2012-07-16 15:22,admin,admin
161,150758,5776,24157,6944,1,100,N,N,N,CP_Drtn,TT_Task,DT_FixedDUR2,RV_OK,TK_Complete,4229PHB60,Client approval on bid committee reccomendation,,,,0,0,0,0,16,0,0,0,,2012-01-26 08:00,2012-01-31 00:00,2012-12-02 08:00,2012-12-02 08:00,,2012-06-30 00:00,2012-06-30 00:00,,,2012-01-26 08:00,2012-01-29 16:00,,,,,PT_Normal,,,,,0ZS7AgqWW0qypK0hoMmi7w,Yu1MLBBnZka81lvnYU4ANQ,,,N,0,0,,,2012-07-16 15:22,2012-07-16 15:22,admin,admin
162,150759,5776,24157,6945,1,100,N,N,N,CP_Drtn,TT_Task,DT_FixedDrtn,RV_OK,TK_Complete,4229PHB20,Bidding for hot bends,,,,0,0,0,0,200,0,0,0,2011-10-10 00:00,2011-10-10 08:00,2011-10-30 16:00,2012-12-02 08:00,2012-12-02 08:00,,2012-06-30 00:00,2012-06-30 00:00,,,2011-10-10 08:00,2011-11-03 16:00,,,,CS_MSOA,PT_Normal,,,,,Dn8qMRVIY0eV9C9l2ewZ4g,Q7yIZtnDRROY+WyhFyvCjg,,,N,0,0,,,2012-07-16 15:22,2012-07-16 15:22,admin,admin
163,150760,5776,24157,6944,1,0,N,N,N,CP_Drtn,TT_Task,DT_FixedDUR2,RV_OK,TK_NotStart,4229PHB90,L.C issued by Gupco,,800,0,40,0,0,0,40,0,0,0,,,,2012-12-02 08:00,2012-12-06 16:00,,2012-07-01 08:00,2012-07-05 16:00,2012-07-01 08:00,2012-07-05 16:00,2012-07-01 08:00,2012-07-05 16:00,,2012-12-02 08:00,2012-12-06 16:00,,PT_Normal,,,,,homQCBxp3U+Lf82Dxv8F+A,3KZie4yXhUOEEKBN+gqN0g,,,N,0,0,,,2012-07-16 15:22,2012-07-16 15:22,admin,admin
164,150761,5776,24157,6944,1,100,N,N,N,CP_Drtn,TT_Task,DT_FixedDUR2,RV_OK,TK_Complete,4229PHB50,commercial evaluation & bid committee for hot bends,,,,0,0,0,0,80,0,0,0,,2011-12-29 00:00,2012-01-24 00:00,2012-12-02 08:00,2012-12-02 08:00,,2012-06-30 00:00,2012-06-30 00:00,,,2012-01-01 08:00,2012-01-12 16:00,,,,,PT_Normal,,,,,gr9xqnZQ2UOH0QssYFh6Sw,hxCKOj5MQkO6l3IH5Tvwyg,,,N,0,0,,,2012-07-16 15:22,2012-07-16 15:22,admin,admin
165,150762,5776,24157,6944,1,100,N,N,N,CP_Drtn,TT_Task,DT_FixedDUR2,RV_OK,TK_Complete,4229PHB70,F.O.C for hot bends,,,,0,0,0,0,24,0,0,0,2012-02-01 00:00,2012-04-01 00:00,2012-04-05 00:00,2012-12-02 08:00,2012-12-02 08:00,,2012-06-30 00:00,2012-06-30 00:00,,,2012-02-01 08:00,2012-02-05 16:00,,,,CS_MSOA,PT_Normal,,,,,PVXjli0TFUC/8yM74dlycg,Oh5RJQL9XEi3/FRFqbhptw,,,N,0,0,,,2012-07-16 15:22,2012-07-16 15:22,admin,admin
166,150763,5776,24157,6944,1,100,N,N,N,CP_Drtn,TT_Task,DT_FixedDUR2,RV_OK,TK_Complete,4229PHB80,P.O for hot bends,,,,0,0,0,0,40,0,0,0,,2012-04-10 00:00,2012-04-18 00:00,2012-12-02 08:00,2012-12-02 08:00,,2012-06-30 00:00,2012-06-30 00:00,,,2012-03-04 08:00,2012-03-08 16:00,,,,,PT_Normal,,,,,S8b+7ip8hEynuad8lVzArw,eUz5eXVrNUuJpSqvEaoIPw,,,N,0,0,,,2012-07-16 15:22,2012-07-16 15:22,admin,admin
167,150764,5776,24157,6944,1,100,N,N,N,CP_Drtn,TT_LOE,DT_FixedDUR2,RV_OK,TK_Complete,4229PHB25,T.E.R for hot bends,,,,0,0,0,0,207,0,0,0,,2011-10-30 00:00,2011-12-08 00:00,,,,,,,,2011-12-04 08:00,2012-01-08 15:00,,,,,PT_Normal,,,,,Af1No9ATEUO017dNDm5+Fw,3s1TUShvtEibPzUOH/ko9w,,,N,0,0,,,2012-07-16 15:22,2012-07-16 15:22,admin,admin
168,150765,5776,24157,6944,1,100,N,N,N,CP_Drtn,TT_LOE,DT_FixedDUR2,RV_OK,TK_Complete,4229PHB65,MRP for hot bends,,,,0,0,0,0,48,0,0,0,,2012-02-09 00:00,2012-02-19 00:00,,,,,,,,2012-02-09 08:00,2012-02-16 16:00,,,,,PT_Normal,,,,,EkFom3JI0UWAmEG8ayipuw,ihnfO4Deq028lkj8sUs7ag,,,N,0,0,,,2012-07-16 15:22,2012-07-16 15:22,admin,admin
169,150766,5776,24158,6944,1,0,N,N,N,CP_Drtn,TT_Task,DT_FixedDUR2,RV_OK,TK_NotStart,4229PFG55,L.C issued by Gupco,,912,0,40,0,0,0,40,0,0,0,,,,2012-12-20 08:00,2012-12-26 16:00,,2012-07-01 08:00,2012-07-05 16:00,2012-07-01 08:00,2012-07-05 16:00,2012-07-01 08:00,2012-07-05 16:00,,2012-12-20 08:00,2012-12-26 16:00,,PT_Normal,,,,,bD4oBvsVKUmzcqcAi7szaQ,hw+Nv+hAEEyyL9o5y71GIw,,,N,0,0,,,2012-07-16 15:22,2012-07-16 15:22,admin,admin
170,150767,5776,24158,6944,1,100,N,N,N,CP_Drtn,TT_Task,DT_FixedDUR2,RV_OK,TK_Complete,4229PFG10,Issue RFQ for Fire & gas detectors,,,,0,0,0,0,16,0,0,0,2012-01-10 00:00,2012-01-10 08:00,2012-01-10 16:00,2012-12-20 08:00,2012-12-20 08:00,,2012-06-30 00:00,2012-06-30 00:00,,,2012-01-10 08:00,2012-01-11 16:00,,,,CS_MSOA,PT_Normal,,,,,n6IdBUVwy0ix4R9to75dqg,I/u8UMyPMEefpVrn15FpHQ,,,N,0,0,,,2012-07-16 15:22,2012-07-16 15:22,admin,admin
171,150768,5776,24158,6945,1,100,N,N,N,CP_Drtn,TT_Task,DT_FixedDUR2,RV_OK,TK_Complete,4229PFG15,Bidding Fire & gas detectors,,,,0,0,0,0,136,0,0,0,,2012-01-11 00:00,2012-02-26 00:00,2012-12-20 08:00,2012-12-20 08:00,,2012-06-30 00:00,2012-06-30 00:00,,,2012-03-03 08:00,2012-03-19 16:00,,,,,PT_Normal,,,,,VTiZSUN6k0KJFlL9DDG6tA,ZLRqpsT2cUyA6ivDGm5BOw,,,N,0,0,,,2012-07-16 15:22,2012-07-16 15:22,admin,admin
172,150769,5776,24158,6944,1,100,N,N,N,CP_Drtn,TT_Task,DT_FixedDUR2,RV_OK,TK_Complete,4229PFG30,commercial evaluation & bid committee for Fire & gas detectors,,,,0,0,0,0,80,0,0,0,,2012-05-10 00:00,2012-05-13 00:00,2012-12-20 08:00,2012-12-20 08:00,,2012-06-30 00:00,2012-06-30 00:00,,,2012-05-06 08:00,2012-05-17 16:00,,,,,PT_Normal,,,,,vhRXFDCN/UO3vD2bvq3GHg,SAfIDt5wDEGyLL3ednrvHw,,,N,0,0,,,2012-07-16 15:22,2012-07-16 15:22,admin,admin
173,150770,5776,24158,6944,1,100,N,N,N,CP_Drtn,TT_Task,DT_FixedDUR2,RV_OK,TK_Complete,4229PFG40,F.O.C for Fire & gas detectors,,,,0,0,0,0,24,0,0,0,,2012-05-17 00:00,2012-05-27 00:00,2012-12-20 08:00,2012-12-20 08:00,,2012-06-30 00:00,2012-06-30 00:00,,,2012-06-10 08:00,2012-06-12 16:00,,,,,PT_Normal,,,,,1qkoU7nueEOTpVhBNI/YBg,huEuXtvgm0aYteDpKcBTIA,,,N,0,0,,,2012-07-16 15:22,2012-07-16 15:22,admin,admin
174,150771,5776,24158,6944,1,100,N,N,N,CP_Drtn,TT_Task,DT_FixedDUR2,RV_OK,TK_Complete,4229PFG50,P.O for Fire & gas detectors,,,,0,0,0,0,40,0,0,0,,2012-06-03 00:00,2012-06-05 00:00,2012-12-20 08:00,2012-12-20 08:00,,2012-06-30 00:00,2012-06-30 00:00,,,2012-07-01 08:00,2012-07-05 16:00,,,,,PT_Normal,,,,,qg5UFzfVCEeumYwLuCGXOg,xCFTiS4W2U+/+XFLdoJJQA,,,N,0,0,,,2012-07-16 15:22,2012-07-16 15:22,admin,admin
175,150772,5776,24158,6946,1,0,N,N,N,CP_Drtn,TT_Task,DT_FixedDUR2,RV_OK,TK_Active,4229PFG60,Fabrication upto R.F.S,,1392,0,416,0,0,0,672,0,0,0,,2012-06-07 00:00,,2012-12-27 08:00,2013-02-14 16:00,,2012-07-06 08:00,2012-08-26 16:00,2012-07-06 08:00,2012-08-26 16:00,2012-07-15 08:00,2012-10-06 16:00,,2012-12-27 08:00,2013-02-14 16:00,,PT_Normal,,,,,hawiYCaFbEaGGy84fmZZkg,lrfM1ie8x0u0Y/bHpNUO2Q,,,N,0,0,,,2012-07-16 15:22,2012-07-16 15:22,admin,admin
176,150773,5776,24158,6946,1,0,N,N,N,CP_Drtn,TT_Task,DT_FixedDUR2,RV_OK,TK_NotStart,4229PFG65,Delivery upto site,,1392,1392,80,0,0,0,80,0,0,0,,,,2013-02-15 08:00,2013-02-24 16:00,,2012-08-27 08:00,2012-09-05 16:00,2012-08-27 08:00,2012-09-05 16:00,2012-08-27 08:00,2012-09-05 16:00,,2013-02-15 08:00,2013-02-24 16:00,,PT_Normal,,,,,gslIxCy2MEyZx8f8LXGEqw,AeL1dzhtuEiobz3qEBUY4w,,,N,0,0,,,2012-07-16 15:22,2012-07-16 15:22,admin,admin
177,150774,5776,24158,6944,1,100,N,N,N,CP_Drtn,TT_Task,DT_FixedDUR2,RV_OK,TK_Complete,4229PFG25,Receive revised commercial offers,,,,0,0,0,0,40,0,0,0,,2012-05-06 00:00,2012-05-10 00:00,2012-12-20 08:00,2012-12-20 08:00,,2012-06-30 00:00,2012-06-30 00:00,,,2012-04-29 08:00,2012-05-03 16:00,,,,,PT_Normal,,,,,DtpYpRikXEi1jhHGq9uQcw,eoWA/lEUcEC05WYtMGhXTA,,,N,0,0,,,2012-07-16 15:22,2012-07-16 15:22,admin,admin
178,150775,5776,24158,6944,1,100,N,N,N,CP_Drtn,TT_Task,DT_FixedDUR2,RV_OK,TK_Complete,4229PFG35,Client approval on bid committee reccomendation,,,,0,0,0,0,16,0,0,0,,2012-05-14 00:00,2012-05-16 00:00,2012-12-20 08:00,2012-12-20 08:00,,2012-06-30 00:00,2012-06-30 00:00,,,2012-05-20 08:00,2012-05-21 16:00,,,,,PT_Normal,,,,,o5E19NoDBEe46JnJctXVxg,ixCnxIpqdU6jVkm7+e6ltA,,,N,0,0,,,2012-07-16 15:22,2012-07-16 15:22,admin,admin
179,150776,5776,24158,6944,1,100,N,N,N,CP_Drtn,TT_LOE,DT_FixedDUR2,RV_OK,TK_Complete,4229PFG20,T.E.R for fire  & Gas detection,,,,0,0,0,0,120,0,0,0,,2012-02-27 00:00,2012-05-03 16:00,,,,,,,,2012-03-20 08:00,2012-04-09 16:00,,,,,PT_Normal,,,,,HWkKG/bZ1UKe7/4Lcl2IVQ,YQA1cLVr7kqboY01YoRhgw,,,N,0,0,,,2012-07-16 15:22,2012-07-16 15:22,admin,admin
180,150777,5776,24158,6944,1,100,N,N,N,CP_Drtn,TT_LOE,DT_FixedDUR2,RV_OK,TK_Complete,4229PFG45,MRP for fire  & Gas detection,,,,0,0,0,0,40,0,0,0,,2012-05-28 00:00,2012-05-29 00:00,,,,,,,,2012-06-03 08:00,2012-06-07 16:00,,,,,PT_Normal,,,,,M9oTlJ3BTE6cjFq2ZxoJmw,VWzlyCmBNkqx4/itja5tWg,,,N,0,0,,,2012-07-16 15:22,2012-07-16 15:22,admin,admin
181,150778,5776,24178,6945,1,100,N,N,N,CP_Drtn,TT_Task,DT_FixedDUR2,RV_OK,TK_Complete,4229PLS30,Fabrication upto R.F.S,,,,0,0,0,0,720,0,0,0,,2012-05-23 00:00,2012-05-23 00:00,2013-02-24 16:00,2013-02-24 16:00,,2012-06-30 00:00,2012-06-30 00:00,,,2012-07-13 08:00,2012-10-22 16:00,,,,,PT_Normal,,,,,FY3ibh8bi0O9rom+OEhxRw,OoxE0JkxKkCu2N33uSQ1Fw,,,N,0,0,,,2012-07-16 15:22,2012-07-16 15:22,admin,admin
182,150779,5776,24178,6946,1,100,N,N,N,CP_Drtn,TT_Task,DT_FixedDUR2,RV_OK,TK_Complete,4229PLS35,Delivery upto site,,,,0,0,0,0,360,0,0,0,,2012-05-23 00:00,2012-05-23 00:00,2013-02-24 16:00,2013-02-24 16:00,,2012-06-30 00:00,2012-06-30 00:00,,,2012-10-23 08:00,2012-12-06 16:00,,,,,PT_Normal,,,,,v7SKM+W7sEiVDsQDUIGq+Q,5zvjC/YRZUiSNCXmEx7ZuA,,,N,0,0,,,2012-07-16 15:22,2012-07-16 15:22,admin,admin
183,150780,5776,24178,6944,1,100,N,N,N,CP_Drtn,TT_Task,DT_FixedDUR2,RV_OK,TK_Complete,4229PLS40,Receive revised commercial offers,,,,0,0,0,0,40,0,0,0,,2012-05-23 00:00,2012-05-23 00:00,2013-02-24 16:00,2013-02-24 16:00,,2012-06-30 00:00,2012-06-30 00:00,,,2012-06-03 08:00,2012-06-07 16:00,,,,,PT_Normal,,,,,u1gMZIGHjU+mUkuMZka/VQ,pvN2oyXK60mHUF+ERGrRZw,,,N,0,0,,,2012-07-16 15:22,2012-07-16 15:22,admin,admin
184,150781,5776,24178,6944,1,100,N,N,N,CP_Drtn,TT_Task,DT_FixedDUR2,RV_OK,TK_Complete,4229PLS45,Client approval on bid committee reccomendation,,,,0,0,0,0,16,0,0,0,,2012-05-23 00:00,2012-05-23 00:00,2013-02-24 16:00,2013-02-24 16:00,,2012-06-30 00:00,2012-06-30 00:00,,,2012-06-24 08:00,2012-06-25 16:00,,,,,PT_Normal,,,,,/q9y8QHOTEK0slPFxo5B3A,5M0rSpuH2U+gba7WQIPYBA,,,N,0,0,,,2012-07-16 15:22,2012-07-16 15:22,admin,admin
185,150782,5776,24178,6944,1,100,N,N,N,CP_Drtn,TT_Task,DT_FixedDUR2,RV_OK,TK_Complete,4229PLS50,L.C issued by Gupco,,,,0,0,0,0,40,0,0,0,,2012-05-23 00:00,2012-05-23 00:00,2013-02-24 16:00,2013-02-24 16:00,,2012-06-30 00:00,2012-06-30 00:00,,,2012-07-08 08:00,2012-07-12 16:00,,,,,PT_Normal,,,,,zo6SglSxA0yshEGZxt5OFg,aN9tdSzSMESH0+5c2wlgeg,,,N,0,0,,,2012-07-16 15:22,2012-07-16 15:22,admin,admin
186,150783,5776,24178,6944,1,100,N,N,N,CP_Drtn,TT_LOE,DT_FixedDrtn,RV_OK,TK_Complete,4229PLS20,T.E.R for life saving equipment,,,,0,0,0,0,120,0,0,0,,2012-02-15 00:00,2012-05-15 00:00,,,,,,,,2012-03-04 08:00,2012-03-22 16:00,,,,,PT_Normal,,,,,WnIW4TTA80iAOTHJnGkJMA,Bv3JjrxMAEuiSippF7wBNA,,,N,0,0,,,2012-07-16 15:22,2012-07-16 15:22,admin,admin
187,150784,5776,24178,6944,1,100,N,N,N,CP_Drtn,TT_LOE,DT_FixedDUR2,RV_OK,TK_Complete,4229PLS25,MRP for life saving equipment,,,,0,0,0,0,0,0,0,0,,2012-05-15 00:00,2012-05-15 00:00,,,,,,,,2012-05-15 08:00,2012-05-15 08:00,,,,,PT_Normal,,,,,3l4pm9hK60SPHyJOi0QU4w,72VeZLjSwkmd6bFuzJS8sg,,,N,0,0,,,2012-07-16 15:22,2012-07-16 15:22,admin,admin
188,150785,5776,24178,6944,1,100,N,N,N,CP_Drtn,TT_Task,DT_FixedDUR2,RV_OK,TK_Complete,4229PLS10,Issue RFQ for Life saving equipment,,,,0,0,0,0,16,0,0,0,2012-01-05 00:00,2012-01-05 08:00,2012-01-05 16:00,2013-02-24 16:00,2013-02-24 16:00,,2012-06-30 00:00,2012-06-30 00:00,,,2012-01-05 08:00,2012-01-08 16:00,,,,CS_MSOA,PT_Normal,,,,,KMqAL2PhsUCqyiKxITiwMw,UKr6qX7UcEegIWyFsGk/9A,,,N,0,0,,,2012-07-16 15:22,2012-07-16 15:22,admin,admin
189,150786,5776,24178,6945,1,100,N,N,N,CP_Drtn,TT_Task,DT_FixedDUR2,RV_OK,TK_Complete,4229PLS15,Bidding Life saving equipment,,,,0,0,0,0,200,0,0,0,2012-01-09 00:00,2012-01-09 08:00,2012-02-28 00:00,2013-02-24 16:00,2013-02-24 16:00,,2012-06-30 00:00,2012-06-30 00:00,,,2012-01-09 08:00,2012-02-03 16:00,,,,CS_MSOA,PT_Normal,,,,,5bmSJau4OECJTBVKvLnY6A,z7YUbJQnuUOHHzkwX1ehtw,,,N,0,0,,,2012-07-16 15:22,2012-07-16 15:22,admin,admin
190,150787,5776,24178,6944,1,100,N,N,N,CP_Drtn,TT_Task,DT_FixedDUR2,RV_OK,TK_Complete,4229PLS55,commercial evaluation & bid committee for Life saving equipment,,,,0,0,0,0,80,0,0,0,,2012-05-23 00:00,2012-05-23 00:00,2013-02-24 16:00,2013-02-24 16:00,,2012-06-30 00:00,2012-06-30 00:00,,,2012-06-10 08:00,2012-06-21 16:00,,,,,PT_Normal,,,,,pp0LGw8Ab02l0KwcZWuVIA,PJXdORg+x0OWNVOvlFITxQ,,,N,0,0,,,2012-07-16 15:22,2012-07-16 15:22,admin,admin
191,150788,5776,24178,6944,1,100,N,N,N,CP_Drtn,TT_Task,DT_FixedDUR2,RV_OK,TK_Complete,4229PLS60,F.O.C for Life saving equipment,,,,0,0,0,0,24,0,0,0,,2012-05-23 00:00,2012-05-23 00:00,2013-02-24 16:00,2013-02-24 16:00,,2012-06-30 00:00,2012-06-30 00:00,,,2012-06-26 08:00,2012-06-28 16:00,,,,,PT_Normal,,,,,wz3sdHFVtkidnOAxfTbq7A,cuvxyESDG0ibNUht1bd3bA,,,N,0,0,,,2012-07-16 15:22,2012-07-16 15:22,admin,admin
192,150789,5776,24178,6944,1,100,N,N,N,CP_Drtn,TT_Task,DT_FixedDUR2,RV_OK,TK_Complete,4229PLS65,P.O for Life saving equipment,,,,0,0,0,0,40,0,0,0,,2012-05-23 00:00,2012-05-23 00:00,2013-02-24 16:00,2013-02-24 16:00,,2012-06-30 00:00,2012-06-30 00:00,,,2012-07-01 08:00,2012-07-05 16:00,,,,,PT_Normal,,,,,puS2TkSJQE22XMZp3RIzoA,vV4hpMERQ0OLYMdtF2Z0WA,,,N,0,0,,,2012-07-16 15:22,2012-07-16 15:22,admin,admin
193,150790,5776,24179,6944,1,100,N,N,N,CP_Drtn,TT_Task,DT_FixedDUR2,RV_OK,TK_Complete,4229PCP30,Receive revised commercial offers,,,,0,0,0,0,40,0,0,0,,2011-12-28 00:00,2012-01-15 00:00,2013-02-11 08:00,2013-02-11 08:00,,2012-06-30 00:00,2012-06-30 00:00,,,2012-01-01 08:00,2012-01-05 16:00,,,,,PT_Normal,,,,,ByqOK5C6HkKqerLXIfiYGg,rsbY6IPE9Ey3ZU3ZNeLLVg,,,N,0,0,,,2012-07-16 15:22,2012-07-16 15:22,admin,admin
194,150791,5776,24179,6944,1,100,N,N,N,CP_Drtn,TT_Task,DT_FixedDUR2,RV_OK,TK_Complete,4229PCP50,Client approval on bid committee reccommendation,,,,0,0,0,0,16,0,0,0,,2012-02-09 00:00,2012-02-20 00:00,2013-02-11 08:00,2013-02-11 08:00,,2012-06-30 00:00,2012-06-30 00:00,,,2012-03-18 08:00,2012-03-19 16:00,,,,,PT_Normal,,,,,AKdusWDJskOOxX0+YCP6yg,iKP7vyvUVkGYjFWGXsYtWw,,,N,0,0,,,2012-07-16 15:22,2012-07-16 15:22,admin,admin
195,150792,5776,24179,6944,1,100,N,N,N,CP_Drtn,TT_Task,DT_FixedDUR2,RV_OK,TK_Complete,4229PCP10,Issue RFQ for Cathodic protection,,,,0,0,0,0,16,0,0,0,,2011-10-26 00:00,2011-10-26 00:00,2013-02-11 08:00,2013-02-11 08:00,,2012-06-30 00:00,2012-06-30 00:00,,,2011-10-30 08:00,2011-10-31 16:00,,,,,PT_Normal,,,,,Txxn8SbjBUqwT1WLbFq9Wg,iEmal3hge0uAij6Wk9qVTQ,,,N,0,0,,,2012-07-16 15:22,2012-07-16 15:22,admin,admin
196,150793,5776,24179,6945,1,100,N,N,N,CP_Drtn,TT_Task,DT_FixedDUR2,RV_OK,TK_Complete,4229PCP20,Bidding for Cathodic protection,,,,0,0,0,0,200,0,0,0,,2011-10-27 00:00,2011-11-24 00:00,2013-02-11 08:00,2013-02-11 08:00,,2012-06-30 00:00,2012-06-30 00:00,,,2011-11-17 08:00,2011-12-11 16:00,,,,,PT_Normal,,,,,q2KkMk+pEUi+DgWChsvsGw,x88PzjMZV0GiGu49qJdzgw,,,N,0,0,,,2012-07-16 15:22,2012-07-16 15:22,admin,admin
197,150794,5776,24179,6944,1,100,N,N,N,CP_Drtn,TT_Task,DT_FixedDUR2,RV_OK,TK_Complete,4229PCP40,Commercial evaluation & bid committee for Cathodic protection,,,,0,0,0,0,80,0,0,0,,2012-01-16 00:00,2012-01-23 00:00,2013-02-11 08:00,2013-02-11 08:00,,2012-06-30 00:00,2012-06-30 00:00,,,2012-01-09 08:00,2012-01-22 16:00,,,,,PT_Normal,,,,,0ovjhStER0Cblgm8utmAhA,ZFrWAGC2TE+1R7WsidTdYQ,,,N,0,0,,,2012-07-16 15:22,2012-07-16 15:22,admin,admin
198,150795,5776,24179,6944,1,100,N,N,N,CP_Drtn,TT_Task,DT_FixedDUR2,RV_OK,TK_Complete,4229PCP60,F.O.C for Cathodic protection,,,,0,0,0,0,24,0,0,0,,2012-02-21 00:00,2012-02-26 00:00,2013-02-11 08:00,2013-02-11 08:00,,2012-06-30 00:00,2012-06-30 00:00,,,2012-03-20 08:00,2012-03-22 16:00,,,,,PT_Normal,,,,,CN1dBgJYZEmJL8Xs2Yi5xg,plWp9w3MSEaEBD3XTKD6uw,,,N,0,0,,,2012-07-16 15:22,2012-07-16 15:22,admin,admin
199,150796,5776,24179,6944,1,100,N,N,N,CP_Drtn,TT_Task,DT_FixedDUR2,RV_OK,TK_Complete,4229PCP70,P.O for Cathodic protection,,,,0,0,0,0,40,0,0,0,,2012-02-29 00:00,2012-03-01 00:00,2013-02-11 08:00,2013-02-11 08:00,,2012-06-30 00:00,2012-06-30 00:00,,,2012-03-04 08:00,2012-03-08 16:00,,,,,PT_Normal,,,,,i1zcnWFWo0+GRd86DrNxOg,XKuDtF9Y5kyIjE3UFTFzuw,,,N,0,0,,,2012-07-16 15:22,2012-07-16 15:22,admin,admin
200,150797,5776,24179,6945,1,100,N,N,N,CP_Drtn,TT_Task,DT_FixedDUR2,RV_OK,TK_Complete,4229PCP90,Fabrication upto R.F.S,,,,0,0,0,0,560,0,0,0,,2012-02-26 00:00,2012-05-28 00:00,2013-02-11 08:00,2013-02-11 08:00,,2012-06-30 00:00,2012-06-30 00:00,,,2012-03-14 08:00,2012-05-22 16:00,,,,,PT_Normal,,,,,xxJI/z3hyEudU6UgX7NRDQ,erBLKNm/ZUeEO9HJpLgTjg,,,N,0,0,,,2012-07-16 15:22,2012-07-16 15:22,admin,admin
201,150798,5776,24179,6946,1,100,N,N,N,CP_Drtn,TT_Task,DT_FixedDUR2,RV_OK,TK_Complete,4229PCP100,Delivery upto site,,,,0,0,0,0,360,0,0,0,,2012-05-29 00:00,2012-06-19 00:00,2013-02-24 16:00,2013-02-24 16:00,,2012-06-30 00:00,2012-06-30 00:00,,,2012-06-08 08:00,2012-07-22 16:00,,,,,PT_Normal,,,,,pypvs12xvU2c0iy+jlpwRg,PvZx3hz21kCQaaYCBE4F/Q,,,N,0,0,,,2012-07-16 15:22,2012-07-16 15:22,admin,admin
202,150799,5776,24179,6944,1,100,N,N,N,CP_Drtn,TT_LOE,DT_FixedDrtn,RV_OK,TK_Complete,4229PCP25,T.E.R for cathodic protection,,,,0,0,0,0,151,0,0,0,,2011-11-24 00:00,2011-12-27 00:00,,,,,,,,2011-12-04 08:00,2011-12-28 15:00,,,,,PT_Normal,,,,,jM6lp+bvnk+lvM/zdW5p/w,3KXa9cqK30u8RebBmL/QDw,,,N,0,0,,,2012-07-16 15:22,2012-07-16 15:22,admin,admin
203,150800,5776,24179,6944,1,100,N,N,N,CP_Drtn,TT_LOE,DT_FixedDUR2,RV_OK,TK_Complete,4229PCP65,MRP for cathodic protection,,,,0,0,0,0,40,0,0,0,,2012-02-27 00:00,2012-02-28 00:00,,,,,,,,2012-03-04 08:00,2012-03-08 16:00,,,,,PT_Normal,,,,,s1ah3Gt7L0mSFJ2zVMyIEg,i8D5fIZvpke+0Tb8UUxLPw,,,N,0,0,,,2012-07-16 15:22,2012-07-16 15:22,admin,admin
204,150801,5776,24180,6944,1,100,N,N,N,CP_Drtn,TT_Task,DT_FixedDUR2,RV_OK,TK_Complete,4229PFF15,Re-issue RFQ for Fire Fighting,,,,0,0,0,0,8,0,0,0,,2012-03-01 00:00,2012-03-03 00:00,2012-09-30 08:00,2012-09-30 08:00,,2012-06-30 00:00,2012-06-30 00:00,,,2012-04-29 08:00,2012-04-29 16:00,,,,,PT_Normal,,,,,KPvBWAX+sUyHAGytGjpTBw,,,,N,0,0,,,2012-07-16 15:22,2012-07-16 15:22,admin,admin
205,150802,5776,24180,6944,1,100,N,N,N,CP_Drtn,TT_Task,DT_FixedDUR2,RV_OK,TK_Complete,4229PFF30,Receive revised commercial offers,,,,0,0,0,0,40,0,0,0,,2012-05-30 00:00,2012-06-07 00:00,2012-09-30 08:00,2012-09-30 08:00,,2012-06-30 00:00,2012-06-30 00:00,,,2012-06-03 08:00,2012-06-07 16:00,,,,,PT_Normal,,,,,463bZwt/G0ehlVTW9UT3KA,AYPNiDXaKE6RLh7mqlxUcQ,,,N,0,0,,,2012-07-16 15:22,2012-07-16 15:22,admin,admin
206,150803,5776,24180,6944,1,0,N,N,N,CP_Drtn,TT_Task,DT_FixedDUR2,RV_OK,TK_Active,4229PFF40,Client approval on bid committee reccomendation,,480,0,16,0,0,0,16,0,0,0,,2012-06-12 00:00,,2012-09-30 08:00,2012-10-01 16:00,,2012-07-01 08:00,2012-07-02 16:00,2012-07-01 08:00,2012-07-02 16:00,2012-07-15 08:00,2012-07-16 16:00,,2012-09-30 08:00,2012-10-01 16:00,,PT_Normal,,,,,/MzqsiFts0qbjEy5mulYNg,okMlSxQPlUu8ymqN/KtiYQ,,,N,0,0,,,2012-07-16 15:22,2012-07-16 15:22,admin,admin
207,150804,5776,24180,6944,1,0,N,N,N,CP_Drtn,TT_Task,DT_FixedDUR2,RV_OK,TK_NotStart,4229PFF60,L.C issued by Gupco,,480,0,40,0,0,0,40,0,0,0,,,,2012-10-14 08:00,2012-10-18 16:00,,2012-07-15 08:00,2012-07-19 16:00,2012-07-15 08:00,2012-07-19 16:00,2012-07-15 08:00,2012-07-19 16:00,,2012-10-14 08:00,2012-10-18 16:00,,PT_Normal,,,,,/sq2EoDNFEicIevs0hdj6g,8XeEO//CcEKYVr5WUWm1nw,,,N,0,0,,,2012-07-16 15:22,2012-07-16 15:22,admin,admin
208,150805,5776,24180,6944,1,100,N,N,N,CP_Drtn,TT_Task,DT_FixedDUR2,RV_OK,TK_Complete,4229PFF10,Issue RFQ for Fire fighting,,,,0,0,0,0,16,0,0,0,2012-01-09 00:00,2012-01-09 08:00,2012-01-10 16:00,2012-09-30 08:00,2012-09-30 08:00,,2012-06-30 00:00,2012-06-30 00:00,,,2012-01-09 08:00,2012-01-10 16:00,,,,CS_MSOA,PT_Normal,,,,,MG2CTJqh0EK85H90Webb3A,JI5SVA605USWDWBKpsEVTw,,,N,0,0,,,2012-07-16 15:22,2012-07-16 15:22,admin,admin
209,150806,5776,24180,6946,1,0,N,N,N,CP_Drtn,TT_Task,DT_FixedDUR2,RV_OK,TK_NotStart,4229PFF70,Delivery upto site,,648,648,360,0,0,0,360,0,0,0,,,,2013-01-11 08:00,2013-02-24 16:00,,2012-10-24 08:00,2012-12-07 16:00,2012-10-24 08:00,2012-12-07 16:00,2012-10-24 08:00,2012-12-07 16:00,,2013-01-11 08:00,2013-02-24 16:00,,PT_Normal,,,,,SRVksbssDUev88P0I6DlRQ,WLZv2gJavUGvjngHCiSujQ,,,N,0,0,,,2012-07-16 15:22,2012-07-16 15:22,admin,admin
210,150807,5776,24180,6945,1,100,N,N,N,CP_Drtn,TT_Task,DT_FixedDUR2,RV_OK,TK_Complete,4229PFF20,Bidding for Fire fighting,,,,0,0,0,0,160,0,0,0,2012-01-11 00:00,2012-03-04 00:00,2012-04-03 00:00,2012-09-30 08:00,2012-09-30 08:00,,2012-06-30 00:00,2012-06-30 00:00,,,2012-01-11 08:00,2012-01-31 16:00,,,,CS_MSOA,PT_Normal,,,,,BExnZ5gEqECVhxhcpwRDxQ,9MnOz/vVdkC9ctNWH2r8qg,,,N,0,0,,,2012-07-16 15:22,2012-07-16 15:22,admin,admin
211,150808,5776,24180,6944,1,100,N,N,N,CP_Drtn,TT_Task,DT_FixedDUR2,RV_OK,TK_Complete,4229PFF35,commercial evaluation & bid committee for Fire fighting,,,,0,0,0,0,80,0,0,0,,2012-06-10 00:00,2012-06-10 00:00,2012-09-30 08:00,2012-09-30 08:00,,2012-06-30 00:00,2012-06-30 00:00,,,2012-07-04 08:00,2012-07-17 16:00,,,,,PT_Normal,,,,,5heEikMbLUGyA3NqODmRJg,HB71H4gGzEi8k5nywomlQQ,,,N,0,0,,,2012-07-16 15:22,2012-07-16 15:22,admin,admin
212,150809,5776,24180,6944,1,0,N,N,N,CP_Drtn,TT_Task,DT_FixedDUR2,RV_OK,TK_NotStart,4229PFF45,F.O.C for Fire fighting,,480,0,24,0,0,0,24,0,0,0,,,,2012-10-02 08:00,2012-10-04 16:00,,2012-07-03 08:00,2012-07-05 16:00,2012-07-03 08:00,2012-07-05 16:00,2012-07-03 08:00,2012-07-05 16:00,,2012-10-02 08:00,2012-10-04 16:00,,PT_Normal,,,,,WBmD0wDCXE61kOEAD/inKw,FKG5q0XubUmv7n25cBnM+A,,,N,0,0,,,2012-07-16 15:22,2012-07-16 15:22,admin,admin
213,150810,5776,24180,6944,1,0,N,N,N,CP_Drtn,TT_Task,DT_FixedDUR2,RV_OK,TK_NotStart,4229PFF55,P.O for Fire fighting,,480,0,40,0,0,0,40,0,0,0,,,,2012-10-07 08:00,2012-10-11 16:00,,2012-07-08 08:00,2012-07-12 16:00,2012-07-08 08:00,2012-07-12 16:00,2012-07-08 08:00,2012-07-12 16:00,,2012-10-07 08:00,2012-10-11 16:00,,PT_Normal,,,,,mR2VwGoDo0SNaOQ5l23+OA,3CKBmFUDZUiNIm/ll8DEwg,,,N,0,0,,,2012-07-16 15:22,2012-07-16 15:22,admin,admin
214,150811,5776,24180,6945,1,0,N,N,N,CP_Drtn,TT_Task,DT_FixedDUR2,RV_OK,TK_NotStart,4229PFF65,Fabrication upto R.F.S,,632,0,672,0,0,0,672,0,0,0,,,,2012-10-19 08:00,2013-01-10 16:00,,2012-07-20 08:00,2012-10-23 16:00,2012-07-20 08:00,2012-10-23 16:00,2012-07-20 08:00,2012-10-23 16:00,,2012-10-19 08:00,2013-01-10 16:00,,PT_Normal,,,,,RQH1pciKxker2F7ybZYZfw,CqIGa1jDK0i2r+exE2hpBg,,,N,0,0,,,2012-07-16 15:22,2012-07-16 15:22,admin,admin
215,150812,5776,24180,6944,1,100,N,N,N,CP_Drtn,TT_LOE,DT_FixedDUR2,RV_OK,TK_Complete,4229PFF25,T.E.R for fire fighting system,,,,0,0,0,0,168,0,0,0,,2012-04-03 08:00,2012-05-29 00:00,,,,,,,,2012-04-03 08:00,2012-05-01 16:00,,,,,PT_Normal,,,,,Zcz4GwVXzkO3mGRMZODXeQ,hYdf5c4+n0uSjfwTIJSUbQ,,,N,0,0,,,2012-07-16 15:22,2012-07-16 15:22,admin,admin
216,150813,5776,24180,6944,1,0,N,N,N,CP_Drtn,TT_LOE,DT_FixedDUR2,RV_OK,TK_Active,4229PFF50,MRP for fire fighting system,,480,0,40,0,0,0,40,0,0,0,,2012-06-25 00:00,,2012-06-25 08:00,2012-10-04 16:00,,2012-07-01 08:00,2012-07-05 16:00,2012-07-01 08:00,2012-07-05 16:00,2012-07-25 08:00,2012-07-31 16:00,,2012-06-25 08:00,2012-10-04 16:00,,PT_Normal,,,,,ZeN7/oEZJ02gymxQjrpUQg,op1JmMtlF0SUYLP8Ya3S/A,,,N,0,0,,,2012-07-16 15:22,2012-07-16 15:22,admin,admin
217,150814,5776,24181,6944,1,100,N,N,N,CP_Drtn,TT_LOE,DT_FixedDUR2,RV_OK,TK_Complete,4229PTR25,T.E.R for L&R,,,,0,0,0,0,120,0,0,0,,2011-09-22 08:00,2011-12-04 08:00,,,,,,,,2011-09-22 08:00,2011-10-13 16:00,,,,,PT_Normal,,,,,6mp7Nb2PCEm3Ph84Y/vidw,XRyO7VMwTE+DF2zubFzqvw,,,N,0,0,,,2012-07-16 15:22,2012-07-16 15:22,admin,admin
218,150815,5776,24181,6944,1,100,N,N,N,CP_Drtn,TT_LOE,DT_FixedDUR2,RV_OK,TK_Complete,4229PTR65,MRP for L&R,,,,0,0,0,0,40,0,0,0,,2012-02-09 00:00,2012-02-19 00:00,,,,,,,,2012-03-04 08:00,2012-03-08 16:00,,,,,PT_Normal,,,,,dgeVU8KmD0eAl8VUkXElOQ,A5W8mGd6BE2UO+cKbloHZw,,,N,0,0,,,2012-07-16 15:22,2012-07-16 15:22,admin,admin
219,150816,5776,24181,6946,1,0,N,N,N,CP_Drtn,TT_Task,DT_FixedDUR2,RV_OK,TK_NotStart,4229PTR100,Delivery upto site,,1504,1504,56,0,0,0,56,0,0,0,,,,2013-02-18 08:00,2013-02-24 16:00,,2012-08-16 08:00,2012-08-22 16:00,2012-08-16 08:00,2012-08-22 16:00,2012-08-16 08:00,2012-08-22 16:00,,2013-02-18 08:00,2013-02-24 16:00,,PT_Normal,,,,,Ee3y479AOEqE+QyJFwEggQ,5ZdU8uO76kyqCb4bfEYLKw,,,N,0,0,,,2012-07-16 15:22,2012-07-16 15:22,admin,admin
220,150817,5776,24181,6945,1,0,N,N,N,CP_Drtn,TT_Task,DT_FixedDUR2,RV_OK,TK_Active,4229PTR90,Fabrication upto R.F.S,,272,0,360,0,0,0,1288,0,0,0,,2012-02-22 00:00,,2012-08-05 08:00,2012-09-30 16:00,2012-08-15 16:00,2012-07-02 08:00,2012-08-15 16:00,2012-07-02 08:00,2012-08-15 16:00,2012-03-05 08:00,2012-08-12 16:00,,2012-08-05 08:00,2012-09-30 16:00,,PT_Normal,,,,,dHCMk2OaUkeVzRs1Ov4SWw,GVaPG4kl40KJCTAmiH7BtQ,,,N,0,0,,,2012-07-16 15:22,2012-07-16 15:22,admin,admin
221,150818,5776,24181,6944,1,100,N,N,N,CP_Drtn,TT_Task,DT_FixedDUR2,RV_OK,TK_Complete,4229PTR30,Receive revised commercial offers,,,,0,0,0,0,40,0,0,0,,2011-12-05 00:00,2011-12-11 00:00,2012-08-02 08:00,2012-08-02 08:00,,2012-06-30 00:00,2012-06-30 00:00,,,2012-01-01 08:00,2012-01-05 16:00,,,,,PT_Normal,,,,,B/08ry9c70ervNN+2We0Hw,AYPNiDXaKE6RLh7mqlxUcQ,,,N,0,0,,,2012-07-16 15:22,2012-07-16 15:22,admin,admin
222,150819,5776,24181,6944,1,100,N,N,N,CP_Drtn,TT_Task,DT_FixedDUR2,RV_OK,TK_Complete,4229PTR50,Client approval on bid committee reccomendation,,,,0,0,0,0,16,0,0,0,,2011-12-25 00:00,2012-01-31 00:00,2012-08-02 08:00,2012-08-02 08:00,,2012-06-30 00:00,2012-06-30 00:00,,,2012-01-22 08:00,2012-01-23 16:00,,,,,PT_Normal,,,,,n6cMxxkf8k2u7VODCjLYDg,okMlSxQPlUu8ymqN/KtiYQ,,,N,0,0,,,2012-07-16 15:22,2012-07-16 15:22,admin,admin
223,150820,5776,24181,6944,1,0,N,N,N,CP_Drtn,TT_Task,DT_FixedDUR2,RV_OK,TK_Active,4229PTR80,L.C issued by Gupco,,192,0,8,0,0,0,40,0,0,0,,2012-02-22 00:00,,2012-08-02 08:00,2012-08-02 16:00,,2012-07-01 08:00,2012-07-01 16:00,2012-07-01 08:00,2012-07-01 16:00,2012-03-04 08:00,2012-03-08 16:00,,2012-08-02 08:00,2012-08-02 16:00,,PT_Normal,,,,,cp9L39gj80KeTOwuKqbHUw,8XeEO//CcEKYVr5WUWm1nw,,,N,0,0,,,2012-07-16 15:22,2012-07-16 15:22,admin,admin
224,150821,5776,24181,6944,1,100,N,N,N,CP_Drtn,TT_Task,DT_FixedDUR2,RV_OK,TK_Complete,4229PTR10,Issue RFQ for L&R traps,,,,0,0,0,0,16,0,0,0,,2011-08-23 08:00,2011-08-25 00:00,2012-08-02 08:00,2012-08-02 08:00,,2012-06-30 00:00,2012-06-30 00:00,,,2011-08-23 08:00,2011-08-24 16:00,,,,,PT_Normal,,,,,rbqYljBbNU2/7Yteh4P4yQ,32IZnXTP7UyV6zFdZX+PkQ,,,N,0,0,,,2012-07-16 15:22,2012-07-16 15:22,admin,admin
225,150822,5776,24181,6945,1,100,N,N,N,CP_Drtn,TT_Task,DT_FixedDUR2,RV_OK,TK_Complete,4229PTR20,Bidding for L&R traps,,,,0,0,0,0,224,0,0,0,,2011-08-26 00:00,2011-09-19 00:00,2012-08-02 08:00,2012-08-02 08:00,,2012-06-30 00:00,2012-06-30 00:00,,,2011-08-25 08:00,2011-09-21 16:00,,,,,PT_Normal,,,,,ltD011++zE6JfHdIu+hLtg,kJ0A+WVz+Eey0qSlfjfY1w,,,N,0,0,,,2012-07-16 15:22,2012-07-16 15:22,admin,admin
226,150823,5776,24181,6944,1,100,N,N,N,CP_Drtn,TT_Task,DT_FixedDUR2,RV_OK,TK_Complete,4229PTR40,commercial evaluation & bid committee for L&R traps,,,,0,0,0,0,80,0,0,0,,2011-12-12 00:00,2011-12-22 00:00,2012-08-02 08:00,2012-08-02 08:00,,2012-06-30 00:00,2012-06-30 00:00,,,2012-01-08 08:00,2012-01-19 16:00,,,,,PT_Normal,,,,,z8sFFabzrkiwmu+UQP6+FQ,4tj9gre8xECDJFXRMB/KMQ,,,N,0,0,,,2012-07-16 15:22,2012-07-16 15:22,admin,admin
227,150824,5776,24181,6944,1,100,N,N,N,CP_Drtn,TT_Task,DT_FixedDUR2,RV_OK,TK_Complete,4229PTR60,F.O.C for L&R traps,,,,0,0,0,0,24,0,0,0,,2012-02-01 00:00,2012-02-08 00:00,2012-08-02 08:00,2012-08-02 08:00,,2012-06-30 00:00,2012-06-30 00:00,,,2012-03-06 08:00,2012-03-08 16:00,,,,,PT_Normal,,,,,KFfnHY2Ik0u50nm+ncidsg,mY9xW1A1UUOQ/dWkE7HdGw,,,N,0,0,,,2012-07-16 15:22,2012-07-16 15:22,admin,admin
228,150825,5776,24181,6944,1,100,N,N,N,CP_Drtn,TT_Task,DT_FixedDUR2,RV_OK,TK_Complete,4229PTR70,P.O for L&R traps,,,,0,0,0,0,16,0,0,0,,2012-02-20 00:00,2012-02-21 00:00,2012-08-02 08:00,2012-08-02 08:00,,2012-06-30 00:00,2012-06-30 00:00,,,2012-03-04 08:00,2012-03-05 16:00,,,,,PT_Normal,,,,,KbHam8zxW0qXaiix7/vSNw,AGbFlgdHtUaygmOdjbChJA,,,N,0,0,,,2012-07-16 15:22,2012-07-16 15:22,admin,admin
229,150826,5776,24182,6944,1,0,N,N,N,CP_Drtn,TT_Task,DT_FixedDUR2,RV_OK,TK_NotStart,4229PRS40,commercial evaluation & bid committee for Radar system,,160,0,80,0,0,0,80,0,0,0,,,,2012-09-12 08:00,2012-09-25 16:00,,2012-08-08 08:00,2012-08-28 16:00,2012-08-08 08:00,2012-08-28 16:00,2012-08-08 08:00,2012-08-28 16:00,,2012-09-12 08:00,2012-09-25 16:00,,PT_Normal,,,,,2gBLCyfuOEyHKO2InVjaaA,MPqcdsw9S6W2dXlu07dRzw,,,N,0,0,,,2012-07-16 15:22,2012-07-16 15:22,admin,admin
230,150827,5776,24182,6944,1,0,N,N,N,CP_Drtn,TT_Task,DT_FixedDUR2,RV_OK,TK_NotStart,4229PRS60,F.O.C for  Radar system,,160,0,24,0,0,0,24,0,0,0,,,,2012-09-30 08:00,2012-10-02 16:00,,2012-09-02 08:00,2012-09-04 16:00,2012-09-02 08:00,2012-09-04 16:00,2012-09-02 08:00,2012-09-04 16:00,,2012-09-30 08:00,2012-10-02 16:00,,PT_Normal,,,,,BD8+8OhjtkWMSduhVEdRgg,8bhvNgcsRzunguxdp4ysfg,,,N,0,0,,,2012-07-16 15:22,2012-07-16 15:22,admin,admin
231,150828,5776,24182,6944,1,0,N,N,N,CP_Drtn,TT_Task,DT_FixedDUR2,RV_OK,TK_NotStart,4229PRS70,P.O for Radar system,,160,0,16,0,0,0,16,0,0,0,,,,2012-10-10 08:00,2012-10-11 16:00,,2012-09-12 08:00,2012-09-13 16:00,2012-09-12 08:00,2012-09-13 16:00,2012-09-12 08:00,2012-09-13 16:00,,2012-10-10 08:00,2012-10-11 16:00,,PT_Normal,,,,,rn17jpKUIkWC6OeJdRQ2Ig,iGsAl0jiSTe9wP87ple5+A,,,N,0,0,,,2012-07-16 15:22,2012-07-16 15:22,admin,admin
232,150829,5776,24182,6945,1,0,N,N,N,CP_Drtn,TT_Task,DT_FixedDUR2,RV_OK,TK_NotStart,4229PRS90,Fabrication upto R.F.S,,296,0,720,0,0,0,720,0,0,0,,,,2012-10-28 08:00,2013-01-25 16:00,,2012-09-21 08:00,2012-12-19 16:00,2012-09-21 08:00,2012-12-19 16:00,2012-09-21 08:00,2012-12-19 16:00,,2012-10-28 08:00,2013-01-25 16:00,,PT_Normal,,,,,PmFA/rEMG0++GZPp9eUPCg,puuO8vGhRUyOmMA5nP1O+g,,,N,0,0,,,2012-07-16 15:22,2012-07-16 15:22,admin,admin
233,150830,5776,24182,6944,1,0,N,N,N,CP_Drtn,TT_LOE,DT_FixedDUR2,RV_OK,TK_NotStart,4229PRS25,T.E.R  for Radar System,,944,0,184,0,0,0,184,0,0,0,,,,2012-07-03 08:00,2013-01-29 16:00,,2012-07-03 08:00,2012-08-02 16:00,2012-07-03 08:00,2012-08-02 16:00,2012-07-03 08:00,2012-08-02 16:00,,2012-07-03 08:00,2013-01-29 16:00,,PT_Normal,,,,,LBiJLtNS9Ei2GOsJtCLQYw,wSpvN7TbW0C3y0sKPLokBw,,,N,0,0,,,2012-07-16 15:22,2012-07-16 15:22,admin,admin
234,150831,5776,24182,6944,1,0,N,N,N,CP_Drtn,TT_LOE,DT_FixedDUR2,RV_OK,TK_NotStart,4229PRS65,MRP for Radar System,,160,0,40,0,0,0,40,0,0,0,,,,2012-10-03 08:00,2012-10-09 16:00,,2012-09-05 08:00,2012-09-11 16:00,2012-09-05 08:00,2012-09-11 16:00,2012-09-05 08:00,2012-09-11 16:00,,2012-10-03 08:00,2012-10-09 16:00,,PT_Normal,,,,,YeuCXJdCU0uUNIiF5NN91Q,budr3CG4i0GaHCpjUSXmxg,,,N,0,0,,,2012-07-16 15:22,2012-07-16 15:22,admin,admin
235,150832,5776,24182,6946,1,0,N,N,N,CP_Drtn,TT_Task,DT_FixedDUR2,RV_OK,TK_NotStart,4229PRS100,Delivery upto site,,312,0,240,0,0,0,240,0,0,0,,,,2013-01-26 08:00,2013-02-24 16:00,,2012-12-20 08:00,2013-01-16 16:00,2012-12-20 08:00,2013-01-16 16:00,2012-12-20 08:00,2013-01-16 16:00,,2013-01-26 08:00,2013-02-24 16:00,,PT_Normal,,,,,h+XuwebHrkez6STNeX0d0A,g8Q0jtgbT/+uddB0tjRcbQ,,,N,0,0,,,2012-07-16 15:22,2012-07-16 15:22,admin,admin
236,150833,5776,24182,6944,1,0,N,N,N,CP_Drtn,TT_Task,DT_FixedDUR2,RV_OK,TK_NotStart,4229PRS30,Receive revised commercial offers,,160,0,24,0,0,0,24,0,0,0,,,,2012-09-09 08:00,2012-09-11 16:00,,2012-08-05 08:00,2012-08-07 16:00,2012-08-05 08:00,2012-08-07 16:00,2012-08-05 08:00,2012-08-07 16:00,,2012-09-09 08:00,2012-09-11 16:00,,PT_Normal,,,,,YGecC1CEHUuoab0dCKPShA,B+Zuduv2SsyLxT8xwR8UPQ,,,N,0,0,,,2012-07-16 15:22,2012-07-16 15:22,admin,admin
237,150834,5776,24182,6944,1,0,N,N,N,CP_Drtn,TT_Task,DT_FixedDUR2,RV_OK,TK_NotStart,4229PRS50,Client approval on bid committee reccomendation,,160,0,16,0,0,0,16,0,0,0,,,,2012-09-26 08:00,2012-09-27 16:00,,2012-08-29 08:00,2012-08-30 16:00,2012-08-29 08:00,2012-08-30 16:00,2012-08-29 08:00,2012-08-30 16:00,,2012-09-26 08:00,2012-09-27 16:00,,PT_Normal,,,,,H9oUeVCsNEOKES8ZhtLM6w,zT/22/TBQsCQFBhN3YnEyg,,,N,0,0,,,2012-07-16 15:22,2012-07-16 15:22,admin,admin
238,150835,5776,24182,6944,1,0,N,N,N,CP_Drtn,TT_Task,DT_FixedDUR2,RV_OK,TK_NotStart,4229PRS80,L.C issued by Gupco,,160,0,40,0,0,0,40,0,0,0,,,,2012-10-14 08:00,2012-10-18 16:00,,2012-09-16 08:00,2012-09-20 16:00,2012-09-16 08:00,2012-09-20 16:00,2012-09-16 08:00,2012-09-20 16:00,,2012-10-14 08:00,2012-10-18 16:00,,PT_Normal,,,,,L4ohVD4gvUGfsFyLYvRi5w,cOseZnNCQ9uilVGDGxsV7A,,,N,0,0,,,2012-07-16 15:22,2012-07-16 15:22,admin,admin
239,150836,5776,24182,6944,1,100,N,N,N,CP_Drtn,TT_Task,DT_FixedDUR2,RV_OK,TK_Complete,4229PRS10,Issue RFQ for Radar system,,,,0,0,0,0,16,0,0,0,,2011-11-30 00:00,2011-11-30 00:00,2012-07-02 08:00,2012-07-02 08:00,,2012-06-30 00:00,2012-06-30 00:00,,,2011-12-04 08:00,2011-12-05 16:00,,,,,PT_Normal,,,,,NQNXl067yk6F4Fmq3W6waw,yASt0/SqSpucA1CBFijq/Q,,,N,0,0,,,2012-07-16 15:22,2012-07-16 15:22,admin,admin
240,150837,5776,24182,6945,1,0,N,N,N,CP_Drtn,TT_Task,DT_FixedDUR2,RV_OK,TK_Active,4229PRS20,Bidding for Radar system,,16,0,8,0,0,0,120,0,0,0,,2011-12-01 00:00,,2012-07-02 08:00,2012-07-02 16:00,2012-06-30 16:00,2012-06-30 08:00,2012-06-30 16:00,2012-06-30 08:00,2012-06-30 16:00,2011-12-06 08:00,2011-12-20 16:00,,2012-07-02 08:00,2012-07-02 16:00,,PT_Normal,,,,,DNOngxvnz0S1adOTSZujlw,rv6U+xZER1a1xRmaRFaz6Q,,,N,0,0,,,2012-07-16 15:22,2012-07-16 15:22,admin,admin
241,150838,5776,24183,6945,1,0,N,N,N,CP_Drtn,TT_Task,DT_FixedDUR2,RV_OK,TK_Active,4229PMP90,Fabrication upto R.F.S,,288,0,832,0,0,0,1888,0,0,0,,2012-02-22 00:00,,2012-08-05 08:00,2012-11-28 16:00,2012-10-23 16:00,2012-06-30 08:00,2012-10-23 16:00,2012-06-30 08:00,2012-10-23 16:00,2012-03-09 08:00,2012-11-11 16:00,,2012-08-05 08:00,2012-11-28 16:00,,PT_Normal,,,,,mp46Y6GXTEuwe0FBKTv1jA,7UQ9XmTabEqxyA7/76n9MA,,,N,0,0,,,2012-07-16 15:22,2012-07-16 15:22,admin,admin
242,150839,5776,24183,6945,1,0,N,N,N,CP_Drtn,TT_Task,DT_FixedDUR2,RV_OK,TK_NotStart,4229PMP100,Delivery upto site,,752,440,240,0,0,0,240,0,0,0,,,,2013-01-26 08:00,2013-02-24 16:00,,2012-10-24 08:00,2012-11-22 16:00,2012-10-24 08:00,2012-11-22 16:00,2012-10-24 08:00,2012-11-22 16:00,,2013-01-26 08:00,2013-02-24 16:00,,PT_Normal,,,,,U5BipzgB2kmoG5amSSHqcA,Ed1rw6pVGkqfXjRfFT7JpQ,,,N,0,0,,,2012-07-16 15:22,2012-07-16 15:22,admin,admin
243,150840,5776,24183,6944,1,100,N,N,N,CP_Drtn,TT_Task,DT_FixedDUR2,RV_OK,TK_Complete,4229PMP30,Receive revised commercial offers,,,,0,0,0,0,32,0,0,0,,2011-12-22 08:00,2011-12-25 00:00,2012-08-05 08:00,2012-08-05 08:00,,2012-06-30 00:00,2012-06-30 00:00,,,2011-12-22 08:00,2011-12-27 16:00,,,,,PT_Normal,,,,,ipi1Wc9mpUmJLPkJJgF/1w,rsbY6IPE9Ey3ZU3ZNeLLVg,,,N,0,0,,,2012-07-16 15:22,2012-07-16 15:22,admin,admin
244,150841,5776,24183,6944,1,100,N,N,N,CP_Drtn,TT_Task,DT_FixedDUR2,RV_OK,TK_Complete,4229PMP50,Client approval on bid committee reccomendation,,,,0,0,0,0,16,0,0,0,,2011-12-29 00:00,2012-01-31 16:00,2012-08-05 08:00,2012-08-05 08:00,,2012-06-30 00:00,2012-06-30 00:00,,,2012-01-29 08:00,2012-01-30 16:00,,,,,PT_Normal,,,,,VIrCMbvel0m5L+y10T8YSA,iKP7vyvUVkGYjFWGXsYtWw,,,N,0,0,,,2012-07-16 15:22,2012-07-16 15:22,admin,admin
245,150842,5776,24183,6944,1,0,N,N,N,CP_Drtn,TT_Task,DT_FixedDUR2,RV_OK,TK_NotStart,4229PMP80,L.C issued by Gupco,,1248,1248,40,0,0,0,40,0,0,0,,,,2013-02-18 08:00,2013-02-24 16:00,,2012-07-01 08:00,2012-07-05 16:00,2012-07-01 08:00,2012-07-05 16:00,2012-07-01 08:00,2012-07-05 16:00,,2013-02-18 08:00,2013-02-24 16:00,,PT_Normal,,,,,i4ndWiaW2k+hnS/ujt7IUg,/xqtBKQ3QEuTmEP+B+vEag,,,N,0,0,,,2012-07-16 15:22,2012-07-16 15:22,admin,admin
246,150843,5776,24183,6944,1,100,N,N,N,CP_Drtn,TT_Task,DT_FixedDUR2,RV_OK,TK_Complete,4229PMP10,Issue RFQ for MPFM,,,,0,0,0,0,16,0,0,0,,2011-10-09 00:00,2011-10-09 00:00,2012-08-05 08:00,2012-08-05 08:00,,2012-06-30 00:00,2012-06-30 00:00,,,2011-08-15 08:00,2011-08-16 16:00,,,,,PT_Normal,,,,,YHNxBCgF90yCbXZ+ZwrRbg,PapX/E/5VEedYgMn9pW1WA,,,N,0,0,,,2012-07-16 15:22,2012-07-16 15:22,admin,admin
247,150844,5776,24183,6945,1,100,N,N,N,CP_Drtn,TT_Task,DT_FixedDUR2,RV_OK,TK_Complete,4229PMP20,Bidding for MPFM,,,,0,0,0,0,240,0,0,0,,2011-10-10 00:00,2011-11-13 00:00,2012-08-05 08:00,2012-08-05 08:00,,2012-06-30 00:00,2012-06-30 00:00,,,2011-08-17 08:00,2011-09-15 16:00,,,,,PT_Normal,,,,,rR+kBeucDkG0mw/Gn9zdDw,WAPraHdgpEiuGrgnPTRw+A,,,N,0,0,,,2012-07-16 15:22,2012-07-16 15:22,admin,admin
248,150845,5776,24183,6944,1,100,N,N,N,CP_Drtn,TT_Task,DT_FixedDUR2,RV_OK,TK_Complete,4229PMP60,F.O.C for MPFM,,,,0,0,0,0,24,0,0,0,,2012-02-01 00:00,2012-02-08 16:00,2012-08-05 08:00,2012-08-05 08:00,,2012-06-30 00:00,2012-06-30 00:00,,,2012-01-31 08:00,2012-02-02 16:00,,,,,PT_Normal,,,,,1qwkb7zrMUWPvLdQNp33pg,4AXOah8HAEeGpjijEBPUrg,,,N,0,0,,,2012-07-16 15:22,2012-07-16 15:22,admin,admin
249,150846,5776,24183,6944,1,100,N,N,N,CP_Drtn,TT_Task,DT_FixedDUR2,RV_OK,TK_Complete,4229PMP70,P.O for MPFM,,,,0,0,0,0,16,0,0,0,,2012-02-20 00:00,2012-02-21 00:00,2012-08-05 08:00,2012-08-05 08:00,,2012-06-30 00:00,2012-06-30 00:00,,,2012-03-04 08:00,2012-03-05 16:00,,,,,PT_Normal,,,,,N33TGZiwOECkso01CK9ySw,AvajsHLxjEGyyQn6kYuXCQ,,,N,0,0,,,2012-07-16 15:22,2012-07-16 15:22,admin,admin
250,150847,5776,24183,6944,1,100,N,N,N,CP_Drtn,TT_Task,DT_FixedDUR2,RV_OK,TK_Complete,4229PMP40,commercial evaluation & bid committee for MPFM,,,,0,0,0,0,80,0,0,0,,2011-12-27 00:00,2011-12-28 00:00,2012-08-05 08:00,2012-08-05 08:00,,2012-06-30 00:00,2012-06-30 00:00,,,2012-01-01 08:00,2012-01-12 16:00,,,,,PT_Normal,,,,,m7F9hIaXv0C7G3w+3gbSYQ,e/V43NRVMUS133iTAw1J2Q,,,N,0,0,,,2012-07-16 15:22,2012-07-16 15:22,admin,admin
251,150848,5776,24183,6944,1,100,N,N,N,CP_Drtn,TT_LOE,DT_FixedDUR2,RV_OK,TK_Complete,4229PMP25,T.E.R for MPFM,,,,0,0,0,0,160,0,0,0,,2011-11-14 00:00,2011-12-21 00:00,,,,,,,,2011-12-04 08:00,2011-12-29 16:00,,,,,PT_Normal,,,,,ebvZ5h0Y8UKSK0lwUM1aYA,WzgvWtSfhU2NzXehbY6bPQ,,,N,0,0,,,2012-07-16 15:22,2012-07-16 15:22,admin,admin
252,150849,5776,24183,6944,1,100,N,N,N,CP_Drtn,TT_LOE,DT_FixedDrtn,RV_OK,TK_Complete,4229PMP65,MRP for MPFM,,,,0,0,0,0,40,0,0,0,,2012-02-09 00:00,2012-02-20 00:00,,,,,,,,2012-03-04 08:00,2012-03-08 16:00,,,,,PT_Normal,,,,,0Xlj5xfwkEWj6kjk26leiQ,T+0ciQgipEq2+vMtZIK5pQ,,,N,0,0,,,2012-07-16 15:22,2012-07-16 15:22,admin,admin
253,150850,5776,24165,6944,1,100,N,N,N,CP_Drtn,TT_Task,DT_FixedDUR2,RV_OK,TK_Complete,4229PSV30,Receive revised commercial offers,,,,0,0,0,0,40,0,0,0,,2012-02-01 08:00,2012-02-27 00:00,2012-07-29 08:00,2012-07-29 08:00,,2012-06-30 00:00,2012-06-30 00:00,,,2012-02-01 08:00,2012-02-07 16:00,,,,,PT_Normal,,,,,v0YxqczFtU+fRp8Oi7YpGA,AYPNiDXaKE6RLh7mqlxUcQ,,,N,0,0,,,2012-07-16 15:22,2012-07-16 15:22,admin,admin
254,150851,5776,24165,6944,1,100,N,N,N,CP_Drtn,TT_Task,DT_FixedDUR2,RV_OK,TK_Complete,4229PSV50,Client approval on bid committee reccomendation,,,,0,0,0,0,16,0,0,0,,2012-03-07 00:00,2012-04-02 00:00,2012-07-29 08:00,2012-07-29 08:00,,2012-06-30 00:00,2012-06-30 00:00,,,2012-04-01 08:00,2012-04-02 16:00,,,,,PT_Normal,,,,,b6/OO93wnUmCYo5vfbYFqg,okMlSxQPlUu8ymqN/KtiYQ,,,N,0,0,,,2012-07-16 15:22,2012-07-16 15:22,admin,admin
255,150852,5776,24165,6944,1,0,N,N,N,CP_Drtn,TT_Task,DT_FixedDUR2,RV_OK,TK_NotStart,4229PSV80,L.C issued by Gupco,,160,0,40,0,0,0,40,0,0,0,,,,2012-07-29 08:00,2012-08-02 16:00,,2012-07-01 08:00,2012-07-05 16:00,2012-07-01 08:00,2012-07-05 16:00,2012-07-01 08:00,2012-07-05 16:00,,2012-07-29 08:00,2012-08-02 16:00,,PT_Normal,,,,,b8qWEO30IkSyt+jxFJNnLg,8XeEO//CcEKYVr5WUWm1nw,,,N,0,0,,,2012-07-16 15:22,2012-07-16 15:22,admin,admin
256,150853,5776,24165,6945,1,0,N,N,N,CP_Drtn,TT_Task,DT_FixedDUR2,RV_OK,TK_Active,4229PSV90,Fabrication upto R.F.S,,240,0,448,0,0,0,1176,0,0,0,,2012-04-11 00:00,,2012-08-05 08:00,2012-10-11 16:00,2012-09-11 16:00,2012-07-06 08:00,2012-09-11 16:00,2012-07-06 08:00,2012-09-11 16:00,2012-04-06 08:00,2012-09-11 16:00,,2012-08-05 08:00,2012-10-11 16:00,,PT_Normal,,,,,sorUMttCE0WuUb23aplACw,erBLKNm/ZUeEO9HJpLgTjg,,,N,0,0,,,2012-07-16 15:22,2012-07-16 15:22,admin,admin
257,150854,5776,24165,6946,1,0,N,N,N,CP_Drtn,TT_Task,DT_FixedDUR2,RV_OK,TK_NotStart,4229PSV100,Delivery upto site,,1232,920,112,0,0,0,112,0,0,0,,,,2013-02-11 08:00,2013-02-24 16:00,,2012-09-12 08:00,2012-09-25 16:00,2012-09-12 08:00,2012-09-25 16:00,2012-09-12 08:00,2012-09-25 16:00,,2013-02-11 08:00,2013-02-24 16:00,,PT_Normal,,,,,xu0u2lR/WkqLdc1v4jkhiw,PvZx3hz21kCQaaYCBE4F/Q,,,N,0,0,,,2012-07-16 15:22,2012-07-16 15:22,admin,admin
258,150855,5776,24165,6944,1,100,N,N,N,CP_Drtn,TT_Task,DT_FixedDUR2,RV_OK,TK_Complete,4229PSV10,Issue RFQ for PSV,,,,0,0,0,0,16,0,0,0,,2011-10-19 00:00,2011-10-20 00:00,2012-07-29 08:00,2012-07-29 08:00,,2012-06-30 00:00,2012-06-30 00:00,,,2011-10-16 08:00,2011-10-17 16:00,,,,,PT_Normal,,,,,lauuZz+OA0qFjCEnajHUcw,iEmal3hge0uAij6Wk9qVTQ,,,N,0,0,,,2012-07-16 15:22,2012-07-16 15:22,admin,admin
259,150856,5776,24165,6945,1,100,N,N,N,CP_Drtn,TT_Task,DT_FixedDUR2,RV_OK,TK_Complete,4229PSV20,Bidding for PSV,,,,0,0,0,0,240,0,0,0,,2011-10-21 00:00,2011-11-16 00:00,2012-07-29 08:00,2012-07-29 08:00,,2012-06-30 00:00,2012-06-30 00:00,,,2011-10-18 08:00,2011-11-16 16:00,,,,,PT_Normal,,,,,2upUk9P6/kW1rUDDu1uevA,x88PzjMZV0GiGu49qJdzgw,,,N,0,0,,,2012-07-16 15:22,2012-07-16 15:22,admin,admin
260,150857,5776,24165,6944,1,100,N,N,N,CP_Drtn,TT_Task,DT_FixedDUR2,RV_OK,TK_Complete,4229PSV40,commercial evaluation & bid committee for PSV,,,,0,0,0,0,80,0,0,0,,2012-02-28 00:00,2012-03-06 00:00,2012-07-29 08:00,2012-07-29 08:00,,2012-06-30 00:00,2012-06-30 00:00,,,2012-03-04 08:00,2012-03-15 16:00,,,,,PT_Normal,,,,,YdOz28LCP0iIjrAa3OIQSA,ZFrWAGC2TE+1R7WsidTdYQ,,,N,0,0,,,2012-07-16 15:22,2012-07-16 15:22,admin,admin
261,150858,5776,24165,6944,1,100,N,N,N,CP_Drtn,TT_Task,DT_FixedDUR2,RV_OK,TK_Complete,4229PSV60,F.O.C for PSV,,,,0,0,0,0,24,0,0,0,,2012-04-02 00:00,2012-04-03 00:00,2012-07-29 08:00,2012-07-29 08:00,,2012-06-30 00:00,2012-06-30 00:00,,,2012-04-03 08:00,2012-04-05 16:00,,,,,PT_Normal,,,,,xeWc6IQmJUye8xn6zgXPww,plWp9w3MSEaEBD3XTKD6uw,,,N,0,0,,,2012-07-16 15:22,2012-07-16 15:22,admin,admin
262,150859,5776,24165,6944,1,100,N,N,N,CP_Drtn,TT_Task,DT_FixedDUR2,RV_OK,TK_Complete,4229PSV70,P.O for PSV,,,,0,0,0,0,40,0,0,0,,2012-04-10 08:00,2012-04-11 00:00,2012-07-29 08:00,2012-07-29 08:00,,2012-06-30 00:00,2012-06-30 00:00,,,2012-04-10 08:00,2012-04-16 16:00,,,,,PT_Normal,,,,,SlQozIYMskuunnNS1VMIhQ,XKuDtF9Y5kyIjE3UFTFzuw,,,N,0,0,,,2012-07-16 15:22,2012-07-16 15:22,admin,admin
263,150860,5776,24165,6944,1,100,N,N,N,CP_Drtn,TT_LOE,DT_FixedDUR2,RV_OK,TK_Complete,4229PSV25,T.E.R for PSV,,,,0,0,0,0,223,0,0,0,,2011-11-17 00:00,2012-01-31 00:00,,,,,,,,2011-11-16 08:00,2011-12-25 15:00,,,,,PT_Normal,,,,,5AIr3JpCvUmd9Hkh1ViMMw,b2YYy9o+s0qLd1hArx2WDQ,,,N,0,0,,,2012-07-16 15:22,2012-07-16 15:22,admin,admin
264,150861,5776,24165,6944,1,100,N,N,N,CP_Drtn,TT_LOE,DT_FixedDUR2,RV_OK,TK_Complete,4229PSV65,MRP for PSV,,,,0,0,0,0,16,0,0,0,,2012-04-05 08:00,2012-04-09 16:00,,,,,,,,2012-04-05 08:00,2012-04-08 16:00,,,,,PT_Normal,,,,,Lbdm6eELfECjcRBzMyiGbQ,ZXfVgzf22ESh29QZTh9ssg,,,N,0,0,,,2012-07-16 15:22,2012-07-16 15:22,admin,admin
265,150862,5776,24166,6944,1,100,N,N,N,CP_Drtn,TT_Task,DT_FixedDUR2,RV_OK,TK_Complete,4229POV10,Issue RFQ for SDV,,,,0,0,0,0,16,0,0,0,,2011-10-27 00:00,2011-10-27 00:00,2013-02-24 16:00,2013-02-24 16:00,,2012-06-30 00:00,2012-06-30 00:00,,,2011-10-20 08:00,2011-10-23 16:00,,,,,PT_Normal,,,,,XnVVnuySWkivSiczegmmxQ,iEmal3hge0uAij6Wk9qVTQ,,,N,0,0,,,2012-07-16 15:22,2012-07-16 15:22,admin,admin
266,150863,5776,24166,6945,1,0,N,N,N,CP_Drtn,TT_Task,DT_FixedDUR2,RV_OK,TK_Active,4229POV90,Fabrication upto R.F.S,,240,0,976,0,0,0,1448,0,0,0,,2012-04-30 00:00,,2012-08-05 08:00,2012-12-16 16:00,2012-11-16 16:00,2012-07-06 08:00,2012-11-16 16:00,2012-07-06 08:00,2012-11-16 16:00,2012-05-08 08:00,2012-11-16 16:00,,2012-08-05 08:00,2012-12-16 16:00,,PT_Normal,,,,,t5tCdgwU60OIH/MZWsk/ng,7UQ9XmTabEqxyA7/76n9MA,,,N,0,0,,,2012-07-16 15:22,2012-07-16 15:22,admin,admin
267,150864,5776,24166,6945,1,0,N,N,N,CP_Drtn,TT_Task,DT_FixedDUR2,RV_OK,TK_NotStart,4229POV100,Delivery upto site,,560,248,240,0,0,0,240,0,0,0,,,,2013-01-26 08:00,2013-02-24 16:00,,2012-11-17 08:00,2012-12-16 16:00,2012-11-17 08:00,2012-12-16 16:00,2012-11-17 08:00,2012-12-16 16:00,,2013-01-26 08:00,2013-02-24 16:00,,PT_Normal,,,,,6ia83yZHWkSCeCYDwChmXg,Ed1rw6pVGkqfXjRfFT7JpQ,,,N,0,0,,,2012-07-16 15:22,2012-07-16 15:22,admin,admin
268,150865,5776,24166,6944,1,100,N,N,N,CP_Drtn,TT_Task,DT_FixedDUR2,RV_OK,TK_Complete,4229POV30,Receive revised commercial offers,,,,0,0,0,0,40,0,0,0,,2012-02-02 00:00,2012-02-16 00:00,2013-02-24 16:00,2013-02-24 16:00,,2012-06-30 00:00,2012-06-30 00:00,,,2012-03-08 08:00,2012-03-14 16:00,,,,,PT_Normal,,,,,wP6ifU2Lk0ai8of2xJLDIQ,AYPNiDXaKE6RLh7mqlxUcQ,,,N,0,0,,,2012-07-16 15:22,2012-07-16 15:22,admin,admin
269,150866,5776,24166,6944,1,100,N,N,N,CP_Drtn,TT_Task,DT_FixedDUR2,RV_OK,TK_Complete,4229POV50,Client approval on bid committee reccommendation,,,,0,0,0,0,16,0,0,0,,2012-03-05 00:00,2012-03-28 00:00,2012-07-29 08:00,2012-07-29 08:00,,2012-06-30 00:00,2012-06-30 00:00,,,2012-04-03 08:00,2012-04-04 16:00,,,,,PT_Normal,,,,,zdiC/CcOkk2SjW/QgWaxIg,okMlSxQPlUu8ymqN/KtiYQ,,,N,0,0,,,2012-07-16 15:22,2012-07-16 15:22,admin,admin
270,150867,5776,24166,6944,1,0,N,N,N,CP_Drtn,TT_Task,DT_FixedDUR2,RV_OK,TK_NotStart,4229POV80,L.C issued by Gupco,,160,0,40,0,0,0,40,0,0,0,,,,2012-07-29 08:00,2012-08-02 16:00,,2012-07-01 08:00,2012-07-05 16:00,2012-07-01 08:00,2012-07-05 16:00,2012-07-01 08:00,2012-07-05 16:00,,2012-07-29 08:00,2012-08-02 16:00,,PT_Normal,,,,,MzT/HzxEl0aEYvPcgvCktg,8XeEO//CcEKYVr5WUWm1nw,,,N,0,0,,,2012-07-16 15:22,2012-07-16 15:22,admin,admin
271,150868,5776,24166,6944,1,100,N,N,N,CP_Drtn,TT_Task,DT_FixedDUR2,RV_OK,TK_Complete,4229POV40,Commercial evaluation & bid committee for SDV,,,,0,0,0,0,80,0,0,0,,2012-02-16 00:00,2012-02-19 00:00,2012-07-29 08:00,2012-07-29 08:00,,2012-06-30 00:00,2012-06-30 00:00,,,2012-03-15 08:00,2012-03-28 16:00,,,,,PT_Normal,,,,,K2aIP/VsK0OTK8FC1X5I5Q,ZFrWAGC2TE+1R7WsidTdYQ,,,N,0,0,,,2012-07-16 15:22,2012-07-16 15:22,admin,admin
272,150869,5776,24166,6944,1,100,N,N,N,CP_Drtn,TT_Task,DT_FixedDUR2,RV_OK,TK_Complete,4229POV60,F.O.C for SDV,,,,0,0,0,0,16,0,0,0,,2012-03-29 00:00,2012-04-22 00:00,2012-07-29 08:00,2012-07-29 08:00,,2012-06-30 00:00,2012-06-30 00:00,,,2012-04-01 08:00,2012-04-02 16:00,,,,,PT_Normal,,,,,F7dq9f45AkWEt6vf2EVzgw,plWp9w3MSEaEBD3XTKD6uw,,,N,0,0,,,2012-07-16 15:22,2012-07-16 15:22,admin,admin
273,150870,5776,24166,6944,1,100,N,N,N,CP_Drtn,TT_Task,DT_FixedDUR2,RV_OK,TK_Complete,4229POV70,P.O for SDV,,,,0,0,0,0,16,0,0,0,,2012-04-29 00:00,2012-04-29 00:00,2012-07-29 08:00,2012-07-29 08:00,,2012-06-30 00:00,2012-06-30 00:00,,,2012-04-29 08:00,2012-04-30 16:00,,,,,PT_Normal,,,,,1tUmE1FUd0WR7PB6R/bTOQ,XKuDtF9Y5kyIjE3UFTFzuw,,,N,0,0,,,2012-07-16 15:22,2012-07-16 15:22,admin,admin
274,150871,5776,24166,6944,1,100,N,N,N,CP_Drtn,TT_LOE,DT_FixedDUR2,RV_OK,TK_Complete,4229POV25,T.E.R for SDV,,,,0,0,0,0,160,0,0,0,,2011-11-28 00:00,2012-02-01 16:00,,,,,,,,2011-12-04 08:00,2011-12-29 16:00,,,,,PT_Normal,,,,,Df2KFc3utk2k1Rhy9H4Y1w,oLwPrR8dtkKCqtyNJtHEow,,,N,0,0,,,2012-07-16 15:22,2012-07-16 15:22,admin,admin
275,150872,5776,24166,6944,1,100,N,N,N,CP_Drtn,TT_LOE,DT_FixedDUR2,RV_OK,TK_Complete,4229POV65,MRP for SDV,,,,0,0,0,0,40,0,0,0,,2012-04-22 00:00,2012-04-26 00:00,,,,,,,,2012-04-29 08:00,2012-05-03 16:00,,,,,PT_Normal,,,,,7mByIHB1k0uP+IZI66ljBg,TrMWPgitaUmZGiDj84RmyQ,,,N,0,0,,,2012-07-16 15:22,2012-07-16 15:22,admin,admin
276,150873,5776,24166,6945,1,100,N,N,N,CP_Drtn,TT_Task,DT_FixedDUR2,RV_OK,TK_Complete,4229POV20,Bidding for SDV,,,,0,0,0,0,240,0,0,0,,2011-10-28 00:00,2011-11-27 00:00,2013-02-24 16:00,2013-02-24 16:00,,2012-06-30 00:00,2012-06-30 00:00,,,2011-11-01 08:00,2011-11-30 16:00,,,,,PT_Normal,,,,,4KAkwT9XpUay4lVIZpF3uA,x88PzjMZV0GiGu49qJdzgw,,,N,0,0,,,2012-07-16 15:22,2012-07-16 15:22,admin,admin
277,150874,5776,24167,6945,1,100,N,N,N,CP_Drtn,TT_Task,DT_FixedDUR2,RV_OK,TK_Complete,4229PPB20,Bidding for Piping bulk,,,,0,0,0,0,112,0,0,0,,2011-11-25 00:00,2011-12-20 00:00,2012-12-09 08:00,2012-12-09 08:00,,2012-06-30 00:00,2012-06-30 00:00,,,2011-12-06 08:00,2011-12-19 16:00,,,,,PT_Normal,,,,,6C81Ra23wUK/Gdto4rUlug,x88PzjMZV0GiGu49qJdzgw,,,N,0,0,,,2012-07-16 15:22,2012-07-16 15:22,admin,admin
278,150875,5776,24167,6944,1,100,N,N,N,CP_Drtn,TT_Task,DT_FixedDUR2,RV_OK,TK_Complete,4229PPB40,commercial evaluation & bid committee for Piping bulk,,,,0,0,0,0,96,0,0,0,,2012-02-08 00:00,2012-02-23 00:00,2012-12-09 08:00,2012-12-09 08:00,,2012-06-30 00:00,2012-06-30 00:00,,,2012-03-11 08:00,2012-03-26 16:00,,,,,PT_Normal,,,,,y3R4tWi3m0KG15DHsc2BgA,ZFrWAGC2TE+1R7WsidTdYQ,,,N,0,0,,,2012-07-16 15:22,2012-07-16 15:22,admin,admin
279,150876,5776,24167,6944,1,100,N,N,N,CP_Drtn,TT_Task,DT_FixedDUR2,RV_OK,TK_Complete,4229PPB60,F.O.C for Piping bulk,,,,0,0,0,0,24,0,0,0,,2012-03-01 00:00,2012-03-18 00:00,2012-12-09 08:00,2012-12-09 08:00,,2012-06-30 00:00,2012-06-30 00:00,,,2012-04-03 08:00,2012-04-05 16:00,,,,,PT_Normal,,,,,/Ge/e+hRQ0eUfoBOlViGCg,plWp9w3MSEaEBD3XTKD6uw,,,N,0,0,,,2012-07-16 15:22,2012-07-16 15:22,admin,admin
280,150877,5776,24167,6944,1,100,N,N,N,CP_Drtn,TT_Task,DT_FixedDUR2,RV_OK,TK_Complete,4229PPB70,P.O for Piping bulk,,,,0,0,0,0,16,0,0,0,,2012-03-28 00:00,2012-03-29 00:00,2012-12-09 08:00,2012-12-09 08:00,,2012-06-30 00:00,2012-06-30 00:00,,,2012-04-01 08:00,2012-04-02 16:00,,,,,PT_Normal,,,,,R6MToa8KqEuG63MZ9UxtCQ,XKuDtF9Y5kyIjE3UFTFzuw,,,N,0,0,,,2012-07-16 15:22,2012-07-16 15:22,admin,admin
281,150878,5776,24167,6944,1,100,N,N,N,CP_Drtn,TT_LOE,DT_FixedDUR2,RV_OK,TK_Complete,4229PPB25,T.E.R for Piping bulk,,,,0,0,0,0,120,0,0,0,,2011-12-22 00:00,2012-01-26 00:00,,,,,,,,2011-12-13 08:00,2012-01-02 16:00,,,,,PT_Normal,,,,,ENLLgNXspUysV4xY5WPbAw,ffGWAsroqUC7EdTJZrAS1A,,,N,0,0,,,2012-07-16 15:22,2012-07-16 15:22,admin,admin
282,150879,5776,24167,6944,1,100,N,N,N,CP_Drtn,TT_LOE,DT_FixedDUR2,RV_OK,TK_Complete,4229PPB65,MRP for Piping bulk,,,,0,0,0,0,56,0,0,0,,2012-03-19 08:00,2012-03-27 16:00,,,,,,,,2012-03-19 08:00,2012-03-27 16:00,,,,,PT_Normal,,,,,SRcl0vSGWkKTmruJnw3ywg,v+2pKzAUI0aArXAlsWBTTg,,,N,0,0,,,2012-07-16 15:22,2012-07-16 15:22,admin,admin
283,150880,5776,24167,6944,1,100,N,N,N,CP_Drtn,TT_Task,DT_FixedDUR2,RV_OK,TK_Complete,4229PPB30,Receive revised commercial offers,,,,0,0,0,0,40,0,0,0,,2012-01-25 00:00,2012-02-07 00:00,2012-12-09 08:00,2012-12-09 08:00,,2012-06-30 00:00,2012-06-30 00:00,,,2012-01-26 08:00,2012-02-01 16:00,,,,,PT_Normal,,,,,RHpmisiRDkKzUkKi1W2cCg,AYPNiDXaKE6RLh7mqlxUcQ,,,N,0,0,,,2012-07-16 15:22,2012-07-16 15:22,admin,admin
284,150881,5776,24167,6944,1,100,N,N,N,CP_Drtn,TT_Task,DT_FixedDUR2,RV_OK,TK_Complete,4229PPB50,Client approval on bid committee reccomendation,,,,0,0,0,0,16,0,0,0,,2012-02-23 00:00,2012-02-29 00:00,2012-12-09 08:00,2012-12-09 08:00,,2012-06-30 00:00,2012-06-30 00:00,,,2012-03-04 08:00,2012-03-05 16:00,,,,,PT_Normal,,,,,x4Fe6lZ470ecrvZ7tw1FIg,okMlSxQPlUu8ymqN/KtiYQ,,,N,0,0,,,2012-07-16 15:22,2012-07-16 15:22,admin,admin
285,150882,5776,24167,6945,1,0,N,N,N,CP_Drtn,TT_Task,DT_FixedDUR2,RV_OK,TK_NotStart,4229PPB110,Fabrication upto R.F.S for minimal piping balance,,240,0,960,0,0,0,960,0,0,0,,,,2012-10-14 08:00,2013-02-10 16:00,,2012-09-14 08:00,2013-01-11 16:00,2012-09-14 08:00,2013-01-11 16:00,2012-09-14 08:00,2013-01-11 16:00,,2012-10-14 08:00,2013-02-10 16:00,,PT_Normal,,,,,uV3+LnBmXUmw9bxqmY1ajQ,,,,N,0,0,,,2012-07-16 15:22,2012-07-16 15:22,admin,admin
286,150883,5776,24167,6946,1,0,N,N,N,CP_Drtn,TT_Task,DT_FixedDUR2,RV_OK,TK_NotStart,4229PPB120,Delivery upto site (2nd Batch) for minimal piping balance,,240,240,112,0,0,0,112,0,0,0,,,,2013-02-11 08:00,2013-02-24 16:00,,2013-01-12 08:00,2013-01-25 16:00,2013-01-12 08:00,2013-01-25 16:00,2013-01-12 08:00,2013-01-25 16:00,,2013-02-11 08:00,2013-02-24 16:00,,PT_Normal,,,,,1A8HdjhPPU68RiguGv1SdQ,,,,N,0,0,,,2012-07-16 15:22,2012-07-16 15:22,admin,admin
287,150884,5776,24167,6944,1,0,N,N,N,CP_Drtn,TT_Task,DT_FixedDUR2,RV_OK,TK_NotStart,4229PPB80,L.C issued by Gupco,,840,0,40,0,0,0,40,0,0,0,,,,2012-12-09 08:00,2012-12-13 16:00,,2012-07-01 08:00,2012-07-05 16:00,2012-07-01 08:00,2012-07-05 16:00,2012-07-01 08:00,2012-07-05 16:00,,2012-12-09 08:00,2012-12-13 16:00,,PT_Normal,,,,,DoGjvJ4GA0+R84NdoXm+qg,8XeEO//CcEKYVr5WUWm1nw,,,N,0,0,,,2012-07-16 15:22,2012-07-16 15:22,admin,admin
288,150885,5776,24167,6946,1,0,N,N,N,CP_Drtn,TT_Task,DT_FixedDUR2,RV_OK,TK_NotStart,4229PPB100,Delivery upto site (1st Batch),,1320,1008,360,0,0,0,360,0,0,0,,,,2013-01-11 08:00,2013-02-24 16:00,,2012-08-01 08:00,2012-09-14 16:00,2012-08-01 08:00,2012-09-14 16:00,2012-08-01 08:00,2012-09-14 16:00,,2013-01-11 08:00,2013-02-24 16:00,,PT_Normal,,,,,JzGe8EozIE+muwjZx0Zq9g,,,,N,0,0,,,2012-07-16 15:22,2012-07-16 15:22,admin,admin
289,150886,5776,24167,6945,1,0,N,N,N,CP_Drtn,TT_Task,DT_FixedDUR2,RV_OK,TK_Active,4229PPB90,Fabrication upto R.F.S (1st Batch),,1208,0,208,0,0,0,784,0,0,0,,2012-04-01 00:00,,2012-12-16 08:00,2013-01-10 16:00,2012-07-31 16:00,2012-07-06 08:00,2012-07-31 16:00,2012-07-06 08:00,2012-07-31 16:00,2012-04-06 08:00,2012-07-12 16:00,,2012-12-16 08:00,2013-01-10 16:00,,PT_Normal,,,,,851Nh0r2dU29uRHku8d3fg,,,,N,0,0,,,2012-07-16 15:22,2012-07-16 15:22,admin,admin
290,150887,5776,24167,6944,1,100,N,N,N,CP_Drtn,TT_Task,DT_FixedDUR2,RV_OK,TK_Complete,4229PPB10,Issue RFQ for Piping bulk,,,,0,0,0,0,16,0,0,0,,2011-11-24 00:00,2011-11-24 00:00,2012-12-09 08:00,2012-12-09 08:00,,2012-06-30 00:00,2012-06-30 00:00,,,2011-12-04 08:00,2011-12-05 16:00,,,,,PT_Normal,,,,,AZrYkfosPkSFXu3Erj9YCQ,iEmal3hge0uAij6Wk9qVTQ,,,N,0,0,,,2012-07-16 15:22,2012-07-16 15:22,admin,admin
291,150888,5776,24168,6944,1,100,N,N,N,CP_Drtn,TT_Task,DT_FixedDUR2,RV_OK,TK_Complete,4229PPV70,P.O for Piping valves,,,,0,0,0,0,16,0,0,0,,2012-04-12 08:00,2012-04-17 00:00,2012-07-29 08:00,2012-07-29 08:00,,2012-06-30 00:00,2012-06-30 00:00,,,2012-04-12 08:00,2012-04-15 16:00,,,,,PT_Normal,,,,,EwPHkRmjZ0yhsN1zmyYV1g,AvajsHLxjEGyyQn6kYuXCQ,,,N,0,0,,,2012-07-16 15:22,2012-07-16 15:22,admin,admin
292,150889,5776,24168,6945,1,0,N,N,N,CP_Drtn,TT_Task,DT_FixedDUR2,RV_OK,TK_Active,4229PPV90,Fabrication upto R.F.S (1st Batch),,240,0,360,0,0,0,1088,0,0,0,,2012-04-17 00:00,,2012-08-05 08:00,2012-09-30 16:00,2012-08-19 16:00,2012-07-06 08:00,2012-08-19 16:00,2012-07-06 08:00,2012-08-19 16:00,2012-04-06 08:00,2012-08-19 16:00,,2012-08-05 08:00,2012-09-30 16:00,,PT_Normal,,,,,CcgJhHM9GEyhr+tfpfsUgQ,7UQ9XmTabEqxyA7/76n9MA,,,N,0,0,,,2012-07-16 15:22,2012-07-16 15:22,admin,admin
293,150890,5776,24168,6946,1,0,N,N,N,CP_Drtn,TT_Task,DT_FixedDUR2,RV_OK,TK_NotStart,4229PPV110,Delivery upto site (1st Batch),,1416,1416,112,0,0,0,112,0,0,0,,,,2013-02-11 08:00,2013-02-24 16:00,,2012-08-20 08:00,2012-09-02 16:00,2012-08-20 08:00,2012-09-02 16:00,2012-08-20 08:00,2012-09-02 16:00,,2013-02-11 08:00,2013-02-24 16:00,,PT_Normal,,,,,RLT0xjQ85Eaqx8NZwq5H7A,Ed1rw6pVGkqfXjRfFT7JpQ,,,N,0,0,,,2012-07-16 15:22,2012-07-16 15:22,admin,admin
294,150891,5776,24168,6945,1,0,N,N,N,CP_Drtn,TT_Task,DT_FixedDUR2,RV_OK,TK_NotStart,4229PPV100,Fabrication upto R.F.S (2nd Batch) for minimal  balance,,240,0,960,0,0,0,960,0,0,0,,,,2012-10-14 08:00,2013-02-10 16:00,,2012-09-14 08:00,2013-01-11 16:00,2012-09-14 08:00,2013-01-11 16:00,2012-09-14 08:00,2013-01-11 16:00,,2012-10-14 08:00,2013-02-10 16:00,,PT_Normal,,,,,Q8UYvPDc+UmPfC/eau0wzw,,,,N,0,0,,,2012-07-16 15:22,2012-07-16 15:22,admin,admin
295,150892,5776,24168,6946,1,0,N,N,N,CP_Drtn,TT_Task,DT_FixedDUR2,RV_OK,TK_NotStart,4229PPV120,Delivery upto site (2nd Batch) for minimal balance,,240,240,112,0,0,0,112,0,0,0,,,,2013-02-11 08:00,2013-02-24 16:00,,2013-01-12 08:00,2013-01-25 16:00,2013-01-12 08:00,2013-01-25 16:00,2013-01-12 08:00,2013-01-25 16:00,,2013-02-11 08:00,2013-02-24 16:00,,PT_Normal,,,,,5UtH2Su8IUmH6jJLSnZw/Q,,,,N,0,0,,,2012-07-16 15:22,2012-07-16 15:22,admin,admin
296,150893,5776,24168,6944,1,100,N,N,N,CP_Drtn,TT_Task,DT_FixedDUR2,RV_OK,TK_Complete,4229PPV30,Receive revised commercial offers,,,,0,0,0,0,40,0,0,0,,2012-02-09 00:00,2012-02-22 00:00,2012-07-29 08:00,2012-07-29 08:00,,2012-06-30 00:00,2012-06-30 00:00,,,2012-03-04 08:00,2012-03-08 16:00,,,,,PT_Normal,,,,,Lc7/arz2lESYVe0TLVCUBA,AYPNiDXaKE6RLh7mqlxUcQ,,,N,0,0,,,2012-07-16 15:22,2012-07-16 15:22,admin,admin
297,150894,5776,24168,6944,1,100,N,N,N,CP_Drtn,TT_Task,DT_FixedDUR2,RV_OK,TK_Complete,4229PPV50,Client approval on bid committee reccomendation,,,,0,0,0,0,16,0,0,0,,2012-03-15 00:00,2012-04-04 00:00,2012-07-29 08:00,2012-07-29 08:00,,2012-06-30 00:00,2012-06-30 00:00,,,2012-04-15 08:00,2012-04-16 16:00,,,,,PT_Normal,,,,,ZmWtk19qH0W6CkPknfjwWA,okMlSxQPlUu8ymqN/KtiYQ,,,N,0,0,,,2012-07-16 15:22,2012-07-16 15:22,admin,admin
298,150895,5776,24168,6944,1,0,N,N,N,CP_Drtn,TT_Task,DT_FixedDUR2,RV_OK,TK_NotStart,4229PPV80,L.C issued by Gupco,,160,0,40,0,0,0,40,0,0,0,,,,2012-07-29 08:00,2012-08-02 16:00,,2012-07-01 08:00,2012-07-05 16:00,2012-07-01 08:00,2012-07-05 16:00,2012-07-01 08:00,2012-07-05 16:00,,2012-07-29 08:00,2012-08-02 16:00,,PT_Normal,,,,,G0b6aCLxNEm4Pd+TjfJtEg,8XeEO//CcEKYVr5WUWm1nw,,,N,0,0,,,2012-07-16 15:22,2012-07-16 15:22,admin,admin
299,150896,5776,24168,6944,1,100,N,N,N,CP_Drtn,TT_Task,DT_FixedDUR2,RV_OK,TK_Complete,4229PPV10,Issue RFQ for Piping valves,,,,0,0,0,0,16,0,0,0,,2011-12-08 00:00,2011-12-08 00:00,2012-07-29 08:00,2012-07-29 08:00,,2012-06-30 00:00,2012-06-30 00:00,,,2012-01-01 08:00,2012-01-02 16:00,,,,,PT_Normal,,,,,MKnOwAh0bkCG3ZvSTLroRg,PapX/E/5VEedYgMn9pW1WA,,,N,0,0,,,2012-07-16 15:22,2012-07-16 15:22,admin,admin
300,150897,5776,24168,6944,1,100,N,N,N,CP_Drtn,TT_LOE,DT_FixedDUR2,RV_OK,TK_Complete,4229PPV25,T.E.R for Piping valves,,,,0,0,0,0,168,0,0,0,,2012-01-12 08:00,2012-02-08 00:00,,,,,,,,2012-01-12 08:00,2012-02-12 16:00,,,,,PT_Normal,,,,,24JcBX6Q/0yi5TERVHj1Pg,JiEJ7J2QxUaoab2mldizXA,,,N,0,0,,,2012-07-16 15:22,2012-07-16 15:22,admin,admin
301,150898,5776,24168,6944,1,100,N,N,N,CP_Drtn,TT_LOE,DT_FixedDUR2,RV_OK,TK_Complete,4229PPV65,MRP for Piping valves,,,,0,0,0,0,32,0,0,0,,2012-04-08 08:00,2012-04-12 00:00,,,,,,,,2012-04-08 08:00,2012-04-11 16:00,,,,,PT_Normal,,,,,1s3pkPrN2U2S/GDnXwhaHA,HVhuFiMzEUqRKoYy+1e1PQ,,,N,0,0,,,2012-07-16 15:22,2012-07-16 15:22,admin,admin
302,150899,5776,24168,6945,1,100,N,N,N,CP_Drtn,TT_Task,DT_FixedDUR2,RV_OK,TK_Complete,4229PPV20,Bidding for Piping valves,,,,0,0,0,0,112,0,0,0,,2011-12-09 00:00,2012-01-03 00:00,2012-07-29 08:00,2012-07-29 08:00,,2012-06-30 00:00,2012-06-30 00:00,,,2012-01-08 08:00,2012-01-21 16:00,,,,,PT_Normal,,,,,auPg+oWFBEuzD6wayd9YqA,WAPraHdgpEiuGrgnPTRw+A,,,N,0,0,,,2012-07-16 15:22,2012-07-16 15:22,admin,admin
303,150900,5776,24168,6944,1,100,N,N,N,CP_Drtn,TT_Task,DT_FixedDUR2,RV_OK,TK_Complete,4229PPV40,commercial evaluation & bid committee for Piping valves,,,,0,0,0,0,80,0,0,0,,2012-02-23 00:00,2012-03-14 00:00,2012-07-29 08:00,2012-07-29 08:00,,2012-06-30 00:00,2012-06-30 00:00,,,2012-03-11 08:00,2012-03-22 16:00,,,,,PT_Normal,,,,,3W4NlRToy0KBr/SxNaybZg,e/V43NRVMUS133iTAw1J2Q,,,N,0,0,,,2012-07-16 15:22,2012-07-16 15:22,admin,admin
304,150901,5776,24168,6944,1,100,N,N,N,CP_Drtn,TT_Task,DT_FixedDUR2,RV_OK,TK_Complete,4229PPV60,F.O.C for Piping valves,,,,0,0,0,0,24,0,0,0,,2012-04-05 00:00,2012-04-05 00:00,2012-07-29 08:00,2012-07-29 08:00,,2012-06-30 00:00,2012-06-30 00:00,,,2012-04-09 08:00,2012-04-11 16:00,,,,,PT_Normal,,,,,n76KCcc2fk20qF7Yx7YLCw,4AXOah8HAEeGpjijEBPUrg,,,N,0,0,,,2012-07-16 15:22,2012-07-16 15:22,admin,admin
305,150902,5776,24169,6945,1,100,N,N,N,CP_Drtn,TT_Task,DT_FixedDUR2,RV_OK,TK_Complete,4229PSU20,Bidding for solar power unit,,,,0,0,0,0,392,0,0,0,,2011-08-25 00:00,2011-10-13 00:00,2012-07-29 08:00,2012-07-29 08:00,,2012-06-30 00:00,2012-06-30 00:00,,,2011-08-17 08:00,2011-10-04 16:00,,,,,PT_Normal,,,,,hqJcVv3whESed4UEpny0QA,WAPraHdgpEiuGrgnPTRw+A,,,N,0,0,,,2012-07-16 15:22,2012-07-16 15:22,admin,admin
306,150903,5776,24169,6944,1,100,N,N,N,CP_Drtn,TT_Task,DT_FixedDUR2,RV_OK,TK_Complete,4229PSU40,commercial evaluation & bid committee for solar power unit,,,,0,0,0,0,120,0,0,0,,2012-02-13 00:00,2012-02-29 00:00,2012-07-29 08:00,2012-07-29 08:00,,2012-06-30 00:00,2012-06-30 00:00,,,2012-03-11 08:00,2012-03-29 16:00,,,,,PT_Normal,,,,,p1lYjgbP0EWZcxJ9aIAsNg,e/V43NRVMUS133iTAw1J2Q,,,N,0,0,,,2012-07-16 15:22,2012-07-16 15:22,admin,admin
307,150904,5776,24169,6944,1,100,N,N,N,CP_Drtn,TT_Task,DT_FixedDUR2,RV_OK,TK_Complete,4229PSU70,P.O for solar power unit,,,,0,0,0,0,40,0,0,0,,2012-04-01 08:00,2012-04-04 00:00,2012-07-29 08:00,2012-07-29 08:00,,2012-06-30 00:00,2012-06-30 00:00,,,2012-04-01 08:00,2012-04-05 16:00,,,,,PT_Normal,,,,,1DJEc0RzXEaAhSrawiwg1w,AvajsHLxjEGyyQn6kYuXCQ,,,N,0,0,,,2012-07-16 15:22,2012-07-16 15:22,admin,admin
308,150905,5776,24169,6945,1,0,N,N,N,CP_Drtn,TT_Task,DT_FixedDUR2,RV_OK,TK_Active,4229PSU90,Fabrication upto R.F.S,,240,0,560,0,0,0,1400,0,0,0,,2012-04-05 00:00,,2012-08-05 08:00,2012-10-25 16:00,2012-09-25 16:00,2012-07-06 08:00,2012-09-25 16:00,2012-07-06 08:00,2012-09-25 16:00,2012-04-13 08:00,2012-10-16 16:00,,2012-08-05 08:00,2012-10-25 16:00,,PT_Normal,,,,,W3PDUT2wTkuMgLWcNfaVcA,7UQ9XmTabEqxyA7/76n9MA,,,N,0,0,,,2012-07-16 15:22,2012-07-16 15:22,admin,admin
309,150906,5776,24169,6946,1,0,N,N,N,CP_Drtn,TT_Task,DT_FixedDUR2,RV_OK,TK_NotStart,4229PSU100,Delivery upto site,,872,560,360,0,0,0,360,0,0,0,,,,2013-01-11 08:00,2013-02-24 16:00,,2012-09-26 08:00,2012-11-09 16:00,2012-09-26 08:00,2012-11-09 16:00,2012-09-26 08:00,2012-11-09 16:00,,2013-01-11 08:00,2013-02-24 16:00,,PT_Normal,,,,,7NWING6fTU2jDL6VnOqsnA,Ed1rw6pVGkqfXjRfFT7JpQ,,,N,0,0,,,2012-07-16 15:22,2012-07-16 15:22,admin,admin
310,150907,5776,24169,6944,1,100,N,N,N,CP_Drtn,TT_Task,DT_FixedDUR2,RV_OK,TK_Complete,4229PSU30,Receive revised commercial offers,,,,0,0,0,0,40,0,0,0,,2012-02-01 00:00,2012-02-12 00:00,2012-07-29 08:00,2012-07-29 08:00,,2012-06-30 00:00,2012-06-30 00:00,,,2012-03-04 08:00,2012-03-08 16:00,,,,,PT_Normal,,,,,qyqqxvLKakWLOpZCpV0ScA,rsbY6IPE9Ey3ZU3ZNeLLVg,,,N,0,0,,,2012-07-16 15:22,2012-07-16 15:22,admin,admin
311,150908,5776,24169,6944,1,100,N,N,N,CP_Drtn,TT_Task,DT_FixedDUR2,RV_OK,TK_Complete,4229PSU50,Client approval on bid committee reccomendation,,,,0,0,0,0,16,0,0,0,,2012-02-29 00:00,2012-03-11 00:00,2012-07-29 08:00,2012-07-29 08:00,,2012-06-30 00:00,2012-06-30 00:00,,,2012-03-06 08:00,2012-03-07 16:00,,,,,PT_Normal,,,,,SgfJcRxknk2im9mG2gLXtQ,iKP7vyvUVkGYjFWGXsYtWw,,,N,0,0,,,2012-07-16 15:22,2012-07-16 15:22,admin,admin
312,150909,5776,24169,6944,1,0,N,N,N,CP_Drtn,TT_Task,DT_FixedDUR2,RV_OK,TK_NotStart,4229PSU80,L.C issued by Gupco,,160,0,40,0,0,0,40,0,0,0,,,,2012-07-29 08:00,2012-08-02 16:00,,2012-07-01 08:00,2012-07-05 16:00,2012-07-01 08:00,2012-07-05 16:00,2012-07-01 08:00,2012-07-05 16:00,,2012-07-29 08:00,2012-08-02 16:00,,PT_Normal,,,,,iIYfvzghBUCHs6BLDWHRzg,/xqtBKQ3QEuTmEP+B+vEag,,,N,0,0,,,2012-07-16 15:22,2012-07-16 15:22,admin,admin
313,150910,5776,24169,6944,1,100,N,N,N,CP_Drtn,TT_Task,DT_FixedDUR2,RV_OK,TK_Complete,4229PSU10,Issue RFQ for solar power unit,,,,0,0,0,0,16,0,0,0,,2011-08-23 00:00,2011-08-24 00:00,2012-07-29 08:00,2012-07-29 08:00,,2012-06-30 00:00,2012-06-30 00:00,,,2011-08-15 08:00,2011-08-16 16:00,,,,,PT_Normal,,,,,xmuLj5uWS0OMNp0h0k7WSQ,PapX/E/5VEedYgMn9pW1WA,,,N,0,0,,,2012-07-16 15:22,2012-07-16 15:22,admin,admin
314,150911,5776,24169,6944,1,100,N,N,N,CP_Drtn,TT_LOE,DT_FixedDUR2,RV_OK,TK_Complete,4229PSU25,T.ER for solar power unit,,,,0,0,0,0,120,0,0,0,,2011-10-13 00:00,2012-01-31 00:00,,,,,,,,2011-10-02 08:00,2011-10-23 16:00,,,,,PT_Normal,,,,,BS6SaqjZWEmE/FsdxM/uQw,bw0IVSNTOUG6dpR2CW4B7w,,,N,0,0,,,2012-07-16 15:22,2012-07-16 15:22,admin,admin
315,150912,5776,24169,6944,1,100,N,N,N,CP_Drtn,TT_LOE,DT_FixedDUR2,RV_OK,TK_Complete,4229PSU55,MRP for solar power unit,,,,0,0,0,0,40,0,0,0,,2012-03-08 08:00,2012-03-28 00:00,,,,,,,,2012-03-08 08:00,2012-03-14 16:00,,,,,PT_Normal,,,,,znCnIUOHG0yk/VkxdLlGIQ,1XvuEt/L4kaY7aCpdA1cKA,,,N,0,0,,,2012-07-16 15:22,2012-07-16 15:22,admin,admin
316,150913,5776,24169,6944,1,100,N,N,N,CP_Drtn,TT_Task,DT_FixedDUR2,RV_OK,TK_Complete,4229PSU60,F.O.C for solar power unit,,,,0,0,0,0,24,0,0,0,,2012-03-28 00:00,2012-03-28 00:00,2012-07-29 08:00,2012-07-29 08:00,,2012-06-30 00:00,2012-06-30 00:00,,,2012-04-01 08:00,2012-04-03 16:00,,,,,PT_Normal,,,,,3E2E3Owyg06sGz8g+YagBQ,4AXOah8HAEeGpjijEBPUrg,,,N,0,0,,,2012-07-16 15:22,2012-07-16 15:22,admin,admin
317,150914,5776,24170,6946,1,0,N,N,N,CP_Drtn,TT_Task,DT_FixedDUR2,RV_OK,TK_NotStart,4229PNA100,Delivery upto site,,1528,1216,360,0,0,0,360,0,0,0,,,,2013-01-11 08:00,2013-02-24 16:00,,2012-07-06 08:00,2012-08-19 16:00,2012-07-06 08:00,2012-08-19 16:00,2012-07-06 08:00,2012-08-19 16:00,,2013-01-11 08:00,2013-02-24 16:00,,PT_Normal,,,,,05EVsNS9rE2Af6XgMj85UQ,lldIlyG8m0eNSv8NbxWToA,,,N,0,0,,,2012-07-16 15:22,2012-07-16 15:22,admin,admin
318,150915,5776,24170,6944,1,100,N,N,N,CP_Drtn,TT_Task,DT_FixedDUR2,RV_OK,TK_Complete,4229PNA30,Receive revised commercial offers,,,,0,0,0,0,40,0,0,0,,2011-12-08 08:00,2011-12-13 00:00,2012-07-29 08:00,2012-07-29 08:00,,2012-06-30 00:00,2012-06-30 00:00,,,2011-12-08 08:00,2011-12-14 16:00,,,,,PT_Normal,,,,,gxwEyWuFxkegeagHD8xwGA,rsbY6IPE9Ey3ZU3ZNeLLVg,,,N,0,0,,,2012-07-16 15:22,2012-07-16 15:22,admin,admin
319,150916,5776,24170,6944,1,100,N,N,N,CP_Drtn,TT_Task,DT_FixedDUR2,RV_OK,TK_Complete,4229PNA50,Client approval on bid committee reccomendation,,,,0,0,0,0,16,0,0,0,,2011-12-13 08:00,2012-01-11 16:00,2012-07-29 08:00,2012-07-29 08:00,,2012-06-30 00:00,2012-06-30 00:00,,,2011-12-13 08:00,2011-12-14 16:00,,,,,PT_Normal,,,,,oM90gZq5UUSgzl2Edt2CVQ,iKP7vyvUVkGYjFWGXsYtWw,,,N,0,0,,,2012-07-16 15:22,2012-07-16 15:22,admin,admin
320,150917,5776,24170,6944,1,0,N,N,N,CP_Drtn,TT_Task,DT_FixedDUR2,RV_OK,TK_NotStart,4229PNA80,L.C issued by Gupco,,160,0,40,0,0,0,40,0,0,0,,,,2012-07-29 08:00,2012-08-02 16:00,,2012-07-01 08:00,2012-07-05 16:00,2012-07-01 08:00,2012-07-05 16:00,2012-07-01 08:00,2012-07-05 16:00,,2012-07-29 08:00,2012-08-02 16:00,,PT_Normal,,,,,eW0ZDx5wikCUd0TP0e6BPw,/xqtBKQ3QEuTmEP+B+vEag,,,N,0,0,,,2012-07-16 15:22,2012-07-16 15:22,admin,admin
321,150918,5776,24170,6944,1,100,N,N,N,CP_Drtn,TT_Task,DT_FixedDUR2,RV_OK,TK_Complete,4229PNA10,Issue RFQ for Navigation aids,,,,0,0,0,0,16,0,0,0,,2011-09-18 00:00,2011-09-18 00:00,2012-07-29 08:00,2012-07-29 08:00,,2012-06-30 00:00,2012-06-30 00:00,,,2011-08-15 08:00,2011-08-16 16:00,,,,,PT_Normal,,,,,ZdZorOn60k2VAfAqplm2TA,PapX/E/5VEedYgMn9pW1WA,,,N,0,0,,,2012-07-16 15:22,2012-07-16 15:22,admin,admin
322,150919,5776,24170,6945,1,100,N,N,N,CP_Drtn,TT_Task,DT_FixedDUR2,RV_OK,TK_Complete,4229PNA20,Bidding for Navigation aids,,,,0,0,0,0,488,0,0,0,,2011-09-19 00:00,2011-10-16 16:00,2012-07-29 08:00,2012-07-29 08:00,,2012-06-30 00:00,2012-06-30 00:00,,,2011-08-17 08:00,2011-10-16 16:00,,,,,PT_Normal,,,,,8QZkISyTu0SgEYc2RDxIIg,WAPraHdgpEiuGrgnPTRw+A,,,N,0,0,,,2012-07-16 15:22,2012-07-16 15:22,admin,admin
323,150920,5776,24170,6944,1,100,N,N,N,CP_Drtn,TT_Task,DT_FixedDUR2,RV_OK,TK_Complete,4229PNA40,commercial evaluation & bid committee for Navigation aids,,,,0,0,0,0,80,0,0,0,,2011-12-14 00:00,2011-12-21 00:00,2012-07-29 08:00,2012-07-29 08:00,,2012-06-30 00:00,2012-06-30 00:00,,,2011-12-15 08:00,2011-12-28 16:00,,,,,PT_Normal,,,,,8sxoMq6geUSOXqkKLp6Jkw,e/V43NRVMUS133iTAw1J2Q,,,N,0,0,,,2012-07-16 15:22,2012-07-16 15:22,admin,admin
324,150921,5776,24170,6944,1,100,N,N,N,CP_Drtn,TT_Task,DT_FixedDUR2,RV_OK,TK_Complete,4229PNA60,F.O.C for Navigation aids,,,,0,0,0,0,24,0,0,0,,2012-01-11 08:00,2012-01-12 00:00,2012-07-29 08:00,2012-07-29 08:00,,2012-06-30 00:00,2012-06-30 00:00,,,2012-01-11 08:00,2012-01-15 16:00,,,,,PT_Normal,,,,,asJszcdRpEaT4Hh99t/G1Q,4AXOah8HAEeGpjijEBPUrg,,,N,0,0,,,2012-07-16 15:22,2012-07-16 15:22,admin,admin
325,150922,5776,24170,6944,1,100,N,N,N,CP_Drtn,TT_Task,DT_FixedDUR2,RV_OK,TK_Complete,4229PNA70,P.O for Navigation aids,,,,0,0,0,0,40,0,0,0,,2012-01-19 08:00,2012-02-01 16:00,2012-07-29 08:00,2012-07-29 08:00,,2012-06-30 00:00,2012-06-30 00:00,,,2012-01-19 08:00,2012-01-26 16:00,,,,,PT_Normal,,,,,aOqBw+9UxkmqfsZ+ZemUMw,AvajsHLxjEGyyQn6kYuXCQ,,,N,0,0,,,2012-07-16 15:22,2012-07-16 15:22,admin,admin
326,150923,5776,24170,6945,1,0,N,N,N,CP_Drtn,TT_Task,DT_FixedDUR2,RV_OK,TK_Active,4229PNA90,Fabrication upto R.F.S,,240,0,0,0,0,0,1040,0,0,0,,2012-02-01 00:00,,2012-08-04 16:00,2012-08-04 16:00,2012-07-01 16:00,2012-07-06 08:00,2012-07-06 08:00,2012-07-06 08:00,2012-07-06 08:00,2012-04-06 08:00,2012-08-13 16:00,,2012-08-04 16:00,2012-08-04 16:00,,PT_Normal,,,,,tfWIpka8q0yx+qUnH9Ezsw,ToVb42xRg0G2L0I31B6C+Q,,,N,0,0,,,2012-07-16 15:22,2012-07-16 15:22,admin,admin
327,150924,5776,24170,6944,1,100,N,N,N,CP_Drtn,TT_LOE,DT_FixedDUR2,RV_OK,TK_Complete,4229EEL320,T.E.R for Navigation aids,,,,0,0,0,0,120,0,0,0,,2011-10-17 08:00,2011-12-07 16:00,,,,,,,,2011-10-17 08:00,2011-11-13 16:00,,,,,PT_Normal,,,,,BrQygKj6E0eRW4FMJ4sfJw,swX0p19rSUOIwyjGZHXYnw,,,N,0,0,,,2012-07-16 15:22,2012-07-16 15:22,admin,admin
328,150925,5776,24170,6944,1,100,N,N,N,CP_Drtn,TT_LOE,DT_FixedDUR2,RV_OK,TK_Complete,4229PNA65,MRP for Navigation aids,,,,0,0,0,0,32,0,0,0,,2012-01-12 00:00,2012-01-18 00:00,,,,,,,,2012-01-12 08:00,2012-01-17 16:00,,,,,PT_Normal,,,,,XxQ77aX2CU65sg+eDc2flg,IE+e2ItCW0OvW1HQfUiFIA,,,N,0,0,,,2012-07-16 15:22,2012-07-16 15:22,admin,admin
329,150926,5776,24171,6944,1,100,N,N,N,CP_Drtn,TT_LOE,DT_FixedDUR2,RV_OK,TK_Complete,4229EEB310,T.E.R for Electrical bulk,,,,0,0,0,0,120,0,0,0,,2012-02-02 00:00,2012-06-10 00:00,,,,,,,,2012-03-05 08:00,2012-03-25 16:00,,,,,PT_Normal,,,,,K8/XSDchV06/u7+o8Ojd/w,zLLzeS/iI0W7cqmCLSb03g,,,N,0,0,,,2012-07-16 15:22,2012-07-16 15:22,admin,admin
330,150927,5776,24171,6944,1,0,N,N,N,CP_Drtn,TT_LOE,DT_FixedDUR2,RV_OK,TK_NotStart,4229PEB65,MRP for Electrical bulk,,448,0,40,0,0,0,40,0,0,0,,,,2012-10-03 08:00,2012-10-09 16:00,,2012-07-10 08:00,2012-07-16 16:00,2012-07-10 08:00,2012-07-16 16:00,2012-07-10 08:00,2012-07-16 16:00,,2012-10-03 08:00,2012-10-09 16:00,,PT_Normal,,,,,rEfUXfwNnkKDg3wyRTyFWQ,cKQxE56q/ESdNlpuAltyIQ,,,N,0,0,,,2012-07-16 15:22,2012-07-16 15:22,admin,admin
331,150928,5776,24171,6945,1,0,N,N,N,CP_Drtn,TT_Task,DT_FixedDUR2,RV_OK,TK_NotStart,4229PEB90,Fabrication upto R.F.S,,584,0,672,0,0,0,672,0,0,0,,,,2012-10-19 08:00,2013-01-10 16:00,,2012-07-26 08:00,2012-10-29 16:00,2012-07-26 08:00,2012-10-29 16:00,2012-07-26 08:00,2012-10-29 16:00,,2012-10-19 08:00,2013-01-10 16:00,,PT_Normal,,,,,+ShDImobtEeQWJWJcBiZCg,7UQ9XmTabEqxyA7/76n9MA,,,N,0,0,,,2012-07-16 15:22,2012-07-16 15:22,admin,admin
332,150929,5776,24171,6946,1,0,N,N,N,CP_Drtn,TT_Task,DT_FixedDUR2,RV_OK,TK_NotStart,4229PEB100,Delivery upto site,,600,288,360,0,0,0,360,0,0,0,,,,2013-01-11 08:00,2013-02-24 16:00,,2012-10-30 08:00,2012-12-13 16:00,2012-10-30 08:00,2012-12-13 16:00,2012-10-30 08:00,2012-12-13 16:00,,2013-01-11 08:00,2013-02-24 16:00,,PT_Normal,,,,,GlWBBLHzNkSIcCIaewJQ/A,Ed1rw6pVGkqfXjRfFT7JpQ,,,N,0,0,,,2012-07-16 15:22,2012-07-16 15:22,admin,admin
333,150930,5776,24171,6944,1,100,N,N,N,CP_Drtn,TT_Task,DT_FixedDUR2,RV_OK,TK_Complete,4229PEB30,Receive revised commercial offers,,,,0,0,0,0,40,0,0,0,,2012-06-11 00:00,2012-06-24 00:00,2012-09-24 08:00,2012-09-24 08:00,,2012-06-30 00:00,2012-06-30 00:00,,,2012-07-01 08:00,2012-07-05 16:00,,,,,PT_Normal,,,,,0fMkBM/enU+JkwYNZeMv+A,rsbY6IPE9Ey3ZU3ZNeLLVg,,,N,0,0,,,2012-07-16 15:22,2012-07-16 15:22,admin,admin
334,150931,5776,24171,6944,1,0,N,N,N,CP_Drtn,TT_Task,DT_FixedDUR2,RV_OK,TK_Active,4229PEB50,Client approval on bid committee reccomendation,,448,0,32,0,0,0,16,0,0,0,,2012-06-28 00:00,,2012-09-24 08:00,2012-09-27 16:00,,2012-07-01 08:00,2012-07-04 16:00,2012-07-01 08:00,2012-07-04 16:00,2012-07-01 08:00,2012-07-02 16:00,,2012-09-24 08:00,2012-09-27 16:00,,PT_Normal,,,,,ZCVYhWvq00SUYr6Wvf6uBA,iKP7vyvUVkGYjFWGXsYtWw,,,N,0,0,,,2012-07-16 15:22,2012-07-16 15:22,admin,admin
335,150932,5776,24171,6944,1,0,N,N,N,CP_Drtn,TT_Task,DT_FixedDUR2,RV_OK,TK_NotStart,4229PEB80,L.C issued by Gupco,,448,0,40,0,0,0,40,0,0,0,,,,2012-10-14 08:00,2012-10-18 16:00,,2012-07-19 08:00,2012-07-25 16:00,2012-07-19 08:00,2012-07-25 16:00,2012-07-19 08:00,2012-07-25 16:00,,2012-10-14 08:00,2012-10-18 16:00,,PT_Normal,,,,,EVINdmg4fEuO7BpmXyt/vQ,/xqtBKQ3QEuTmEP+B+vEag,,,N,0,0,,,2012-07-16 15:22,2012-07-16 15:22,admin,admin
336,150933,5776,24171,6944,1,100,N,N,N,CP_Drtn,TT_Task,DT_FixedDUR2,RV_OK,TK_Complete,4229PEB10,Issue RFQ for Electrical bulk,,,,0,0,0,0,16,0,0,0,,2011-12-28 00:00,2011-12-29 00:00,2012-09-24 08:00,2012-09-24 08:00,,2012-06-30 00:00,2012-06-30 00:00,,,2012-01-11 08:00,2012-01-12 16:00,,,,,PT_Normal,,,,,51KpsNBOL0G52T0fY+P8ow,PapX/E/5VEedYgMn9pW1WA,,,N,0,0,,,2012-07-16 15:22,2012-07-16 15:22,admin,admin
337,150934,5776,24171,6945,1,100,N,N,N,CP_Drtn,TT_Task,DT_FixedDUR2,RV_OK,TK_Complete,4229PEB20,Bidding for Electrical bulk,,,,0,0,0,0,200,0,0,0,,2011-12-30 00:00,2012-02-01 00:00,2012-09-24 08:00,2012-09-24 08:00,,2012-06-30 00:00,2012-06-30 00:00,,,2012-01-13 08:00,2012-02-07 16:00,,,,,PT_Normal,,,,,zOC16JK/aECGMlnJcLfT2w,WAPraHdgpEiuGrgnPTRw+A,,,N,0,0,,,2012-07-16 15:22,2012-07-16 15:22,admin,admin
338,150935,5776,24171,6944,1,100,N,N,N,CP_Drtn,TT_Task,DT_FixedDUR2,RV_OK,TK_Complete,4229PEB40,commercial evaluation & bid committee for Electrical bulk,,,,0,0,0,0,80,0,0,0,,2012-06-25 00:00,2012-06-27 00:00,2012-09-24 08:00,2012-09-24 08:00,,2012-06-30 00:00,2012-06-30 00:00,,,2012-07-08 08:00,2012-07-19 16:00,,,,,PT_Normal,,,,,FHkJvW0+akqQCyEFUFwTDg,e/V43NRVMUS133iTAw1J2Q,,,N,0,0,,,2012-07-16 15:22,2012-07-16 15:22,admin,admin
339,150936,5776,24171,6944,1,0,N,N,N,CP_Drtn,TT_Task,DT_FixedDUR2,RV_OK,TK_NotStart,4229PEB60,F.O.C for Electrical bulk,,448,0,24,0,0,0,24,0,0,0,,,,2012-09-30 08:00,2012-10-02 16:00,,2012-07-05 08:00,2012-07-09 16:00,2012-07-05 08:00,2012-07-09 16:00,2012-07-05 08:00,2012-07-09 16:00,,2012-09-30 08:00,2012-10-02 16:00,,PT_Normal,,,,,JlFb1qg5bUS5eeEucUjeCA,4AXOah8HAEeGpjijEBPUrg,,,N,0,0,,,2012-07-16 15:22,2012-07-16 15:22,admin,admin
340,150937,5776,24171,6944,1,0,N,N,N,CP_Drtn,TT_Task,DT_FixedDUR2,RV_OK,TK_NotStart,4229PEB70,P.O for Electrical bulk,,448,0,16,0,0,0,16,0,0,0,,,,2012-10-10 08:00,2012-10-11 16:00,,2012-07-17 08:00,2012-07-18 16:00,2012-07-17 08:00,2012-07-18 16:00,2012-07-17 08:00,2012-07-18 16:00,,2012-10-10 08:00,2012-10-11 16:00,,PT_Normal,,,,,E7oHmnoRV02/7XSS5WiGTA,AvajsHLxjEGyyQn6kYuXCQ,,,N,0,0,,,2012-07-16 15:22,2012-07-16 15:22,admin,admin
341,150938,5776,24172,6944,1,100,N,N,N,CP_Drtn,TT_Task,DT_FixedDUR2,RV_OK,TK_Complete,4229PIB1020,Receive revised commercial offers,,,,0,0,0,0,40,0,0,0,,2012-06-04 00:00,2012-06-10 00:00,2012-10-04 08:00,2012-10-04 08:00,,2012-06-30 00:00,2012-06-30 00:00,,,2012-07-01 08:00,2012-07-05 16:00,,,,,PT_Normal,,,,,hUxiIFkw0kqZ+1BK+cwLrA,AYPNiDXaKE6RLh7mqlxUcQ,,,N,0,0,,,2012-07-16 15:22,2012-07-16 15:22,admin,admin
342,150939,5776,24172,6944,1,0,N,N,N,CP_Drtn,TT_Task,DT_FixedDUR2,RV_OK,TK_Active,4229PIB1040,Client approval on bid committee reccomendation,,512,0,8,0,0,0,16,0,0,0,,2012-06-19 00:00,,2012-10-04 08:00,2012-10-04 16:00,,2012-07-01 08:00,2012-07-01 16:00,2012-07-01 08:00,2012-07-01 16:00,2012-07-01 08:00,2012-07-02 16:00,,2012-10-04 08:00,2012-10-04 16:00,,PT_Normal,,,,,C7CbriSjPUeRzCd0wTSxzQ,okMlSxQPlUu8ymqN/KtiYQ,,,N,0,0,,,2012-07-16 15:22,2012-07-16 15:22,admin,admin
343,150940,5776,24172,6944,1,0,N,N,N,CP_Drtn,TT_Task,DT_FixedDUR2,RV_OK,TK_NotStart,4229PIB1070,L.C issued by Gupco,,512,0,40,0,0,0,40,0,0,0,,,,2012-10-28 08:00,2012-11-01 16:00,,2012-07-16 08:00,2012-07-22 16:00,2012-07-16 08:00,2012-07-22 16:00,2012-07-16 08:00,2012-07-22 16:00,,2012-10-28 08:00,2012-11-01 16:00,,PT_Normal,,,,,4qNUH2KaeEGAzX0NwXHtmg,8XeEO//CcEKYVr5WUWm1nw,,,N,0,0,,,2012-07-16 15:22,2012-07-16 15:22,admin,admin
344,150941,5776,24172,6945,1,0,N,N,N,CP_Drtn,TT_Task,DT_FixedDUR2,RV_OK,TK_NotStart,4229PIB1080,Fabrication upto R.F.S,,728,0,672,0,0,0,672,0,0,0,,,,2012-11-03 08:00,2013-01-25 16:00,,2012-07-23 08:00,2012-10-26 16:00,2012-07-23 08:00,2012-10-26 16:00,2012-07-23 08:00,2012-10-26 16:00,,2012-11-03 08:00,2013-01-25 16:00,,PT_Normal,,,,,vT9OGH9i6k+ZpuHV5zgHYw,,,,N,0,0,,,2012-07-16 15:22,2012-07-16 15:22,admin,admin
345,150942,5776,24172,6946,1,0,N,N,N,CP_Drtn,TT_Task,DT_FixedDUR2,RV_OK,TK_NotStart,4229PIB1090,Delivery upto site,,744,432,240,0,0,0,240,0,0,0,,,,2013-01-26 08:00,2013-02-24 16:00,,2012-10-27 08:00,2012-11-25 16:00,2012-10-27 08:00,2012-11-25 16:00,2012-10-27 08:00,2012-11-25 16:00,,2013-01-26 08:00,2013-02-24 16:00,,PT_Normal,,,,,iMaKhIrnbU6QB9y4J0LIdA,,,,N,0,0,,,2012-07-16 15:22,2012-07-16 15:22,admin,admin
346,150943,5776,24172,6944,1,100,N,N,N,CP_Drtn,TT_Task,DT_FixedDUR2,RV_OK,TK_Complete,4229PIB1000,Issue RFQ for Instrument electrical bulk,,,,0,0,0,0,8,0,0,0,,2012-02-29 00:00,2012-03-04 00:00,2012-10-04 08:00,2012-10-04 08:00,,2012-06-30 00:00,2012-06-30 00:00,,,2012-02-13 08:00,2012-02-13 16:00,,,,,PT_Normal,,,,,htESVRSUBkClXo8L6rPEmw,JI5SVA605USWDWBKpsEVTw,,,N,0,0,,,2012-07-16 15:22,2012-07-16 15:22,admin,admin
347,150944,5776,24172,6945,1,100,N,N,N,CP_Drtn,TT_Task,DT_FixedDUR2,RV_OK,TK_Complete,4229PIB1010,Bidding for Instrument electrical bulk,,,,0,0,0,0,200,0,0,0,,2012-03-05 00:00,2012-03-26 00:00,2012-10-04 08:00,2012-10-04 08:00,,2012-06-30 00:00,2012-06-30 00:00,,,2012-03-31 08:00,2012-04-24 16:00,,,,,PT_Normal,,,,,aGYvtGje3Ua5JHOMwpzbjQ,9MnOz/vVdkC9ctNWH2r8qg,,,N,0,0,,,2012-07-16 15:22,2012-07-16 15:22,admin,admin
348,150945,5776,24172,6944,1,100,N,N,N,CP_Drtn,TT_Task,DT_FixedDUR2,RV_OK,TK_Complete,4229PIB1030,commercial evaluation & bid committee for Instrument electrical bulk,,,,0,0,0,0,80,0,0,0,,2012-06-10 00:00,2012-06-13 00:00,2012-10-04 08:00,2012-10-04 08:00,,2012-06-30 00:00,2012-06-30 00:00,,,2012-07-08 08:00,2012-07-19 16:00,,,,,PT_Normal,,,,,48NR7WLQQE2g1FHt8nchfA,HB71H4gGzEi8k5nywomlQQ,,,N,0,0,,,2012-07-16 15:22,2012-07-16 15:22,admin,admin
349,150946,5776,24172,6944,1,0,N,N,N,CP_Drtn,TT_Task,DT_FixedDUR2,RV_OK,TK_NotStart,4229PIB1050,F.O.C for Instrument electrical bulk,,512,0,24,0,0,0,24,0,0,0,,,,2012-10-07 08:00,2012-10-09 16:00,,2012-07-02 08:00,2012-07-04 16:00,2012-07-02 08:00,2012-07-04 16:00,2012-07-02 08:00,2012-07-04 16:00,,2012-10-07 08:00,2012-10-09 16:00,,PT_Normal,,,,,gFs20c6/uUSQAKj9IMkx4g,FKG5q0XubUmv7n25cBnM+A,,,N,0,0,,,2012-07-16 15:22,2012-07-16 15:22,admin,admin
350,150947,5776,24172,6944,1,0,N,N,N,CP_Drtn,TT_Task,DT_FixedDUR2,RV_OK,TK_NotStart,4229PIB1060,P.O for Instrument electrical bulk,,512,0,16,0,0,0,16,0,0,0,,,,2012-10-17 08:00,2012-10-18 16:00,,2012-07-12 08:00,2012-07-15 16:00,2012-07-12 08:00,2012-07-15 16:00,2012-07-12 08:00,2012-07-15 16:00,,2012-10-17 08:00,2012-10-18 16:00,,PT_Normal,,,,,JgUsnzjQ2US1geAYnvptmw,3CKBmFUDZUiNIm/ll8DEwg,,,N,0,0,,,2012-07-16 15:22,2012-07-16 15:22,admin,admin
351,150948,5776,24172,6944,1,100,N,N,N,CP_Drtn,TT_LOE,DT_FixedDUR2,RV_OK,TK_Complete,4229PIB1015,T.E.R for Instrument electrical bulk,,,,0,0,0,0,120,0,0,0,,2012-03-26 00:00,2012-06-03 00:00,,,,,,,,2012-04-25 08:00,2012-05-15 16:00,,,,,PT_Normal,,,,,mpi6tuxmkUK0KemL8/u/8g,vrPHaFUofUCwSCVvqK7yeg,,,N,0,0,,,2012-07-16 15:22,2012-07-16 15:22,admin,admin
352,150949,5776,24172,6944,1,0,N,N,N,CP_Drtn,TT_LOE,DT_FixedDUR2,RV_OK,TK_NotStart,4229PIB1055,MRP for Instrument electrical bulk,,512,0,40,0,0,0,40,0,0,0,,,,2012-10-10 08:00,2012-10-16 16:00,,2012-07-05 08:00,2012-07-11 16:00,2012-07-05 08:00,2012-07-11 16:00,2012-07-05 08:00,2012-07-11 16:00,,2012-10-10 08:00,2012-10-16 16:00,,PT_Normal,,,,,i+9BmXDOn0CaPraGFSzC4g,u5tHcOB7wkGarPuA3vE6Rw,,,N,0,0,,,2012-07-16 15:22,2012-07-16 15:22,admin,admin
353,150950,5776,24173,6946,1,100,N,N,N,CP_Drtn,TT_Task,DT_FixedDUR2,RV_OK,TK_Complete,4229PIB100,Delivery upto site,,,,0,0,0,0,280,0,0,0,,2012-05-31 00:00,2012-05-31 00:00,2013-02-24 16:00,2013-02-24 16:00,,2012-06-30 00:00,2012-06-30 00:00,,,2012-10-20 08:00,2012-11-23 16:00,,,,,PT_Normal,,,,,1U2LHxjvoky9mjQMOOdPIw,Ed1rw6pVGkqfXjRfFT7JpQ,,,N,0,0,,,2012-07-16 15:22,2012-07-16 15:22,admin,admin
354,150951,5776,24173,6944,1,100,N,N,N,CP_Drtn,TT_Task,DT_FixedDUR2,RV_OK,TK_Complete,4229PIB30,Receive revised commercial offers,,,,0,0,0,0,40,0,0,0,,2012-05-30 00:00,2012-05-30 00:00,2013-02-10 08:00,2013-02-10 08:00,,2012-06-30 00:00,2012-06-30 00:00,,,2012-06-03 08:00,2012-06-07 16:00,,,,,PT_Normal,,,,,53JevsvGKkihR2i4n4RqSw,AYPNiDXaKE6RLh7mqlxUcQ,,,N,0,0,,,2012-07-16 15:22,2012-07-16 15:22,admin,admin
355,150952,5776,24173,6944,1,100,N,N,N,CP_Drtn,TT_Task,DT_FixedDUR2,RV_OK,TK_Complete,4229PIB50,Client approval on bid committee reccommendation,,,,0,0,0,0,16,0,0,0,,2012-05-31 00:00,2012-05-31 00:00,2013-02-10 08:00,2013-02-10 08:00,,2012-06-30 00:00,2012-06-30 00:00,,,2012-06-24 08:00,2012-06-25 16:00,,,,,PT_Normal,,,,,2vB8jXrkREm0q43/CVoedw,okMlSxQPlUu8ymqN/KtiYQ,,,N,0,0,,,2012-07-16 15:22,2012-07-16 15:22,admin,admin
356,150953,5776,24173,6944,1,100,N,N,N,CP_Drtn,TT_Task,DT_FixedDUR2,RV_OK,TK_Complete,4229PIB80,L.C issued by Gupco,,,,0,0,0,0,40,0,0,0,,2012-05-31 00:00,2012-05-31 00:00,2013-02-10 08:00,2013-02-10 08:00,,2012-06-30 00:00,2012-06-30 00:00,,,2012-07-03 08:00,2012-07-09 16:00,,,,,PT_Normal,,,,,P20lLXtsB0CJ+6VJBaBp5Q,8XeEO//CcEKYVr5WUWm1nw,,,N,0,0,,,2012-07-16 15:22,2012-07-16 15:22,admin,admin
357,150954,5776,24173,6944,1,100,N,N,N,CP_Drtn,TT_Task,DT_FixedDUR2,RV_OK,TK_Complete,4229PIB60,F.O.C for Instrument mechanical bulk,,,,0,0,0,0,24,0,0,0,,2012-05-31 00:00,2012-05-31 00:00,2013-02-10 08:00,2013-02-10 08:00,,2012-06-30 00:00,2012-06-30 00:00,,,2012-06-26 08:00,2012-06-28 16:00,,,,,PT_Normal,,,,,F+Vo5e13WUaaUFA1U0gt0w,wvJHlYKuYEiMge3zEAW6dQ,,,N,0,0,,,2012-07-16 15:22,2012-07-16 15:22,admin,admin
358,150955,5776,24173,6944,1,100,N,N,N,CP_Drtn,TT_Task,DT_FixedDUR2,RV_OK,TK_Complete,4229PIB70,P.O for Instrument mechanical bulk,,,,0,0,0,0,16,0,0,0,,2012-05-31 00:00,2012-05-31 00:00,2013-02-10 08:00,2013-02-10 08:00,,2012-06-30 00:00,2012-06-30 00:00,,,2012-07-01 08:00,2012-07-02 16:00,,,,,PT_Normal,,,,,na37UWNuw0SET/UEMg0gIA,hWfotYgdCUObagj6utqawQ,,,N,0,0,,,2012-07-16 15:22,2012-07-16 15:22,admin,admin
359,150956,5776,24173,6945,1,100,N,N,N,CP_Drtn,TT_Task,DT_FixedDUR2,RV_OK,TK_Complete,4229PIB90,Fabrication upto R.F.S,,,,0,0,0,0,720,0,0,0,,2012-05-31 00:00,2012-05-31 00:00,2013-02-10 08:00,2013-02-10 08:00,,2012-06-30 00:00,2012-06-30 00:00,,,2012-07-10 08:00,2012-10-19 16:00,,,,,PT_Normal,,,,,SOJ+ROVkckaOFgDQhOr4CQ,7UQ9XmTabEqxyA7/76n9MA,,,N,0,0,,,2012-07-16 15:22,2012-07-16 15:22,admin,admin
360,150957,5776,24173,6945,1,100,N,N,N,CP_Drtn,TT_Task,DT_FixedDUR2,RV_OK,TK_Complete,4229PIB20,Bidding for Instrument mechanical bulk,,,,0,0,0,0,144,0,0,0,,2012-02-22 00:00,2012-03-29 00:00,2013-02-10 08:00,2013-02-10 08:00,,2012-06-30 00:00,2012-06-30 00:00,,,2012-03-03 08:00,2012-03-20 16:00,,,,,PT_Normal,,,,,FWILieVwo0CcsjCpvFpC7g,Qw2K70fh0Uyvygb6Wxm90Q,,,N,0,0,,,2012-07-16 15:22,2012-07-16 15:22,admin,admin
361,150958,5776,24173,6944,1,100,N,N,N,CP_Drtn,TT_Task,DT_FixedDUR2,RV_OK,TK_Complete,4229PIB40,commercial evaluation & bid committee for Instrument mechanical bulk,,,,0,0,0,0,80,0,0,0,,2012-05-31 00:00,2012-05-31 00:00,2013-02-10 08:00,2013-02-10 08:00,,2012-06-30 00:00,2012-06-30 00:00,,,2012-06-10 08:00,2012-06-21 16:00,,,,,PT_Normal,,,,,C9t2LHVUikyyzF7Z0S8Stg,YJ2YdK0gtkq3MSsnZFqeCg,,,N,0,0,,,2012-07-16 15:22,2012-07-16 15:22,admin,admin
362,150959,5776,24173,6944,1,100,N,N,N,CP_Drtn,TT_LOE,DT_FixedDUR2,RV_OK,TK_Complete,4229PIB15,T.E.R for Instrument  Mechanical bulk,,,,0,0,0,0,120,0,0,0,,2012-03-27 00:00,2012-03-27 00:00,,,,,,,,2012-04-01 08:00,2012-04-19 16:00,,,,,PT_Normal,,,,,NPVBJiwfTE6IUUlVmfc3YQ,GZpEktvPQkCIPEkPnxCk+g,,,N,0,0,,,2012-07-16 15:22,2012-07-16 15:22,admin,admin
363,150960,5776,24173,6944,1,100,N,N,N,CP_Drtn,TT_LOE,DT_FixedDUR2,RV_OK,TK_Complete,4229PIB45,MRP for Instrument Mechanical bulk,,,,0,0,0,0,8,0,0,0,,2012-05-31 00:00,2012-05-31 16:00,,,,,,,,2012-05-31 08:00,2012-05-31 16:00,,,,,PT_Normal,,,,,2T4mQ57s/0m2qLhfcZo6Yw,Eo245czxY0mc5Pbd3SnqwA,,,N,0,0,,,2012-07-16 15:22,2012-07-16 15:22,admin,admin
364,150961,5776,24173,6944,1,100,N,N,N,CP_Drtn,TT_Task,DT_FixedDUR2,RV_OK,TK_Complete,4229PIB10,Issue RFQ for Instrument mechanical bulk,,,,0,0,0,0,16,0,0,0,,2012-01-25 00:00,2012-02-21 00:00,2013-02-10 08:00,2013-02-10 08:00,,2012-06-30 00:00,2012-06-30 00:00,,,2012-02-13 08:00,2012-02-14 16:00,,,,,PT_Normal,,,,,VQz63oPDS0+CuekEhAcbQw,OCnd8pP/p0aatV0O4h2pyA,,,N,0,0,,,2012-07-16 15:22,2012-07-16 15:22,admin,admin
365,150962,5776,24174,6944,1,0,N,N,N,CP_Drtn,TT_Task,DT_FixedDUR2,RV_OK,TK_NotStart,4229PFI60,F.O.C for field Instrument,,280,0,24,0,0,0,24,0,0,0,,,,2012-08-27 08:00,2012-08-29 16:00,,2012-07-02 08:00,2012-07-04 16:00,2012-07-02 08:00,2012-07-04 16:00,2012-07-02 08:00,2012-07-04 16:00,,2012-08-27 08:00,2012-08-29 16:00,,PT_Normal,,,,,8JUGYQxVoEGY+xrrDq/z3w,4AXOah8HAEeGpjijEBPUrg,,,N,0,0,,,2012-07-16 15:22,2012-07-16 15:22,admin,admin
366,150963,5776,24174,6944,1,0,N,N,N,CP_Drtn,TT_Task,DT_FixedDUR2,RV_OK,TK_NotStart,4229PFI70,P.O for field Instrument,,280,0,16,0,0,0,16,0,0,0,,,,2012-09-06 08:00,2012-09-09 16:00,,2012-07-12 08:00,2012-07-15 16:00,2012-07-12 08:00,2012-07-15 16:00,2012-07-12 08:00,2012-07-15 16:00,,2012-09-06 08:00,2012-09-09 16:00,,PT_Normal,,,,,UP6tS7LdwUei6+CMedbvpQ,AvajsHLxjEGyyQn6kYuXCQ,,,N,0,0,,,2012-07-16 15:22,2012-07-16 15:22,admin,admin
367,150964,5776,24174,6944,1,100,N,N,N,CP_Drtn,TT_LOE,DT_FixedDUR2,RV_OK,TK_Complete,4229PFI25,T.E.R for field Instrument,,,,0,0,0,0,80,0,0,0,,2012-01-17 08:00,2012-05-02 16:00,,,,,,,,2012-01-17 08:00,2012-01-31 16:00,,,,,PT_Normal,,,,,TsYsTLr+FEaN/SmSg2YrKw,ct7xw1S//EaYd5hkrUDieg,,,N,0,0,,,2012-07-16 15:22,2012-07-16 15:22,admin,admin
368,150965,5776,24174,6944,1,0,N,N,N,CP_Drtn,TT_LOE,DT_FixedDUR2,RV_OK,TK_NotStart,4229PFI65,MRP for field Instrument,,280,0,40,0,0,0,40,0,0,0,,,,2012-08-30 08:00,2012-09-05 16:00,,2012-07-05 08:00,2012-07-11 16:00,2012-07-05 08:00,2012-07-11 16:00,2012-07-05 08:00,2012-07-11 16:00,,2012-08-30 08:00,2012-09-05 16:00,,PT_Normal,,,,,HloTD4pIpk273VuW0jmVKQ,dTXvLV4G8EqSCMWO1CBnLA,,,N,0,0,,,2012-07-16 15:22,2012-07-16 15:22,admin,admin
369,150966,5776,24174,6945,1,0,N,N,N,CP_Drtn,TT_Task,DT_FixedDUR2,RV_OK,TK_NotStart,4229PFI90,Fabrication upto R.F.S,,352,0,1008,0,0,0,1008,0,0,0,,,,2012-09-17 08:00,2013-01-20 16:00,,2012-07-23 08:00,2012-12-07 16:00,2012-07-23 08:00,2012-12-07 16:00,2012-07-23 08:00,2012-12-07 16:00,,2012-09-17 08:00,2013-01-20 16:00,,PT_Normal,,,,,1Wygz68KH0G4ddxNffBMWQ,7UQ9XmTabEqxyA7/76n9MA,,,N,0,0,,,2012-07-16 15:22,2012-07-16 15:22,admin,admin
370,150967,5776,24174,6946,1,0,N,N,N,CP_Drtn,TT_Task,DT_FixedDUR2,RV_OK,TK_NotStart,4229PFI100,Delivery upto site,,368,56,280,0,0,0,280,0,0,0,,,,2013-01-21 08:00,2013-02-24 16:00,,2012-12-08 08:00,2013-01-09 16:00,2012-12-08 08:00,2013-01-09 16:00,2012-12-08 08:00,2013-01-09 16:00,,2013-01-21 08:00,2013-02-24 16:00,,PT_Normal,,,,,kb3Cyafja0SlzaxJL6lXzg,Ed1rw6pVGkqfXjRfFT7JpQ,,,N,0,0,,,2012-07-16 15:22,2012-07-16 15:22,admin,admin
371,150968,5776,24174,6944,1,100,N,N,N,CP_Drtn,TT_Task,DT_FixedDUR2,RV_OK,TK_Complete,4229PFI30,Receive revised commercial offers,,,,0,0,0,0,40,0,0,0,,2012-05-03 00:00,2012-05-09 00:00,2012-08-26 08:00,2012-08-26 08:00,,2012-06-30 00:00,2012-06-30 00:00,,,2012-04-29 08:00,2012-05-03 16:00,,,,,PT_Normal,,,,,3eTszgKus0SJ3IPAvOKSgQ,AYPNiDXaKE6RLh7mqlxUcQ,,,N,0,0,,,2012-07-16 15:22,2012-07-16 15:22,admin,admin
372,150969,5776,24174,6944,1,0,N,N,N,CP_Drtn,TT_Task,DT_FixedDUR2,RV_OK,TK_Active,4229PFI50,Client approval on bid committee reccomendation,,280,0,8,0,0,0,16,0,0,0,,2012-06-19 00:00,,2012-08-26 08:00,2012-08-26 16:00,,2012-07-01 08:00,2012-07-01 16:00,2012-07-01 08:00,2012-07-01 16:00,2012-07-15 08:00,2012-07-16 16:00,,2012-08-26 08:00,2012-08-26 16:00,,PT_Normal,,,,,GBdgVrixV0SgogVrPby2SQ,okMlSxQPlUu8ymqN/KtiYQ,,,N,0,0,,,2012-07-16 15:22,2012-07-16 15:22,admin,admin
373,150970,5776,24174,6944,1,0,N,N,N,CP_Drtn,TT_Task,DT_FixedDUR2,RV_OK,TK_NotStart,4229PFI80,L.C issued by Gupco,,280,0,40,0,0,0,40,0,0,0,,,,2012-09-10 08:00,2012-09-16 16:00,,2012-07-16 08:00,2012-07-22 16:00,2012-07-16 08:00,2012-07-22 16:00,2012-07-16 08:00,2012-07-22 16:00,,2012-09-10 08:00,2012-09-16 16:00,,PT_Normal,,,,,BDvEgIxshE6Yid+J4EFAmw,8XeEO//CcEKYVr5WUWm1nw,,,N,0,0,,,2012-07-16 15:22,2012-07-16 15:22,admin,admin
374,150971,5776,24174,6944,1,100,N,N,N,CP_Drtn,TT_Task,DT_FixedDUR2,RV_OK,TK_Complete,4229PFI10,Issue RFQ for Field Instrument,,,,0,0,0,0,8,0,0,0,,2011-12-13 00:00,2011-12-14 00:00,2012-08-26 08:00,2012-08-26 08:00,,2012-06-30 00:00,2012-06-30 00:00,,,2012-01-01 08:00,2012-01-01 16:00,,,,,PT_Normal,,,,,9mrptxtCFkqYLTt2x94aZg,PapX/E/5VEedYgMn9pW1WA,,,N,0,0,,,2012-07-16 15:22,2012-07-16 15:22,admin,admin
375,150972,5776,24174,6945,1,100,N,N,N,CP_Drtn,TT_Task,DT_FixedDUR2,RV_OK,TK_Complete,4229PFI20,Bidding for field Instrument,,,,0,0,0,0,168,0,0,0,,2011-12-15 00:00,2012-01-12 16:00,2012-08-26 08:00,2012-08-26 08:00,,2012-06-30 00:00,2012-06-30 00:00,,,2011-12-31 08:00,2012-01-28 16:00,,,,,PT_Normal,,,,,lOoS9OW2yEufUymKElhRhw,WAPraHdgpEiuGrgnPTRw+A,,,N,0,0,,,2012-07-16 15:22,2012-07-16 15:22,admin,admin
376,150973,5776,24174,6944,1,100,N,N,N,CP_Drtn,TT_Task,DT_FixedDUR2,RV_OK,TK_Complete,4229PFI40,commercial evaluation & bid committee for field Instrument,,,,0,0,0,0,80,0,0,0,,2012-05-10 00:00,2012-06-03 00:00,2012-08-26 08:00,2012-08-26 08:00,,2012-06-30 00:00,2012-06-30 00:00,,,2012-07-01 08:00,2012-07-12 16:00,,,,,PT_Normal,,,,,iodxSUnfWEeSFbRFN9r+Xg,e/V43NRVMUS133iTAw1J2Q,,,N,0,0,,,2012-07-16 15:22,2012-07-16 15:22,admin,admin
377,150974,5776,24175,6945,1,0,N,N,N,CP_Drtn,TT_Task,DT_FixedDUR2,RV_OK,TK_Active,4229PCV90,Fabrication upto R.F.S,,936,0,560,0,0,0,504,0,0,0,,2012-06-07 00:00,,2012-11-12 08:00,2013-01-20 16:00,2012-09-25 16:00,2012-07-06 08:00,2012-09-25 16:00,2012-07-06 08:00,2012-09-25 16:00,2012-07-13 08:00,2012-09-25 16:00,,2012-11-12 08:00,2013-01-20 16:00,,PT_Normal,,,,,g0Nuv4l0dkC5enaFPWVuow,7UQ9XmTabEqxyA7/76n9MA,,,N,0,0,,,2012-07-16 15:22,2012-07-16 15:22,admin,admin
378,150975,5776,24175,6946,1,0,N,N,N,CP_Drtn,TT_Task,DT_FixedDUR2,RV_OK,TK_NotStart,4229PCV100,Delivery upto site,,952,952,280,0,0,0,280,0,0,0,,,,2013-01-21 08:00,2013-02-24 16:00,,2012-09-26 08:00,2012-10-30 16:00,2012-09-26 08:00,2012-10-30 16:00,2012-09-26 08:00,2012-10-30 16:00,,2013-01-21 08:00,2013-02-24 16:00,,PT_Normal,,,,,C1Fz6z7+9EOg3Yiq5w5oBg,Ed1rw6pVGkqfXjRfFT7JpQ,,,N,0,0,,,2012-07-16 15:22,2012-07-16 15:22,admin,admin
379,150976,5776,24175,6944,1,100,N,N,N,CP_Drtn,TT_Task,DT_FixedDUR2,RV_OK,TK_Complete,4229PCV30,Receive revised commercial offers,,,,0,0,0,0,40,0,0,0,,2012-04-10 00:00,2012-04-26 00:00,2012-08-05 08:00,2012-08-05 08:00,,2012-06-30 00:00,2012-06-30 00:00,,,2012-04-01 08:00,2012-04-05 16:00,,,,,PT_Normal,,,,,lWbHkIvrsEyHfKPihuIs1Q,AYPNiDXaKE6RLh7mqlxUcQ,,,N,0,0,,,2012-07-16 15:22,2012-07-16 15:22,admin,admin
380,150977,5776,24175,6944,1,100,N,N,N,CP_Drtn,TT_Task,DT_FixedDUR2,RV_OK,TK_Complete,4229PCV50,Client approval on bid committee reccomendation,,,,0,0,0,0,16,0,0,0,,2012-05-13 08:00,2012-05-17 00:00,2012-08-05 08:00,2012-08-05 08:00,,2012-06-30 00:00,2012-06-30 00:00,,,2012-05-13 08:00,2012-05-14 16:00,,,,,PT_Normal,,,,,wIUVY1CoL0OnPzJxwszUfA,okMlSxQPlUu8ymqN/KtiYQ,,,N,0,0,,,2012-07-16 15:22,2012-07-16 15:22,admin,admin
381,150978,5776,24175,6944,1,0,N,N,N,CP_Drtn,TT_Task,DT_FixedDUR2,RV_OK,TK_NotStart,4229PCV80,L.C issued by Gupco,,648,0,40,0,0,0,40,0,0,0,,,,2012-11-05 08:00,2012-11-11 16:00,,2012-07-01 08:00,2012-07-05 16:00,2012-07-01 08:00,2012-07-05 16:00,2012-07-01 08:00,2012-07-05 16:00,,2012-11-05 08:00,2012-11-11 16:00,,PT_Normal,,,,,lNY4D6edz02gph3KamgfjA,8XeEO//CcEKYVr5WUWm1nw,,,N,0,0,,,2012-07-16 15:22,2012-07-16 15:22,admin,admin
382,150979,5776,24175,6944,1,100,N,N,N,CP_Drtn,TT_Task,DT_FixedDUR2,RV_OK,TK_Complete,4229PCV10,Issue RFQ for Choke valves,,,,0,0,0,0,16,0,0,0,,2011-11-24 00:00,2011-11-24 00:00,2012-08-05 08:00,2012-08-05 08:00,,2012-06-30 00:00,2012-06-30 00:00,,,2011-12-04 08:00,2011-12-05 16:00,,,,,PT_Normal,,,,,fuRwPE2rO02jr+RgXjYARA,PapX/E/5VEedYgMn9pW1WA,,,N,0,0,,,2012-07-16 15:22,2012-07-16 15:22,admin,admin
383,150980,5776,24175,6945,1,100,N,N,N,CP_Drtn,TT_Task,DT_FixedDUR2,RV_OK,TK_Complete,4229PCV20,Bidding for Choke valves,,,,0,0,0,0,240,0,0,0,,2011-11-25 00:00,2011-12-26 00:00,2012-08-05 08:00,2012-08-05 08:00,,2012-06-30 00:00,2012-06-30 00:00,,,2011-12-06 08:00,2012-01-16 16:00,,,,,PT_Normal,,,,,mfSRtMz1y0ilIC2AVSBLQQ,WAPraHdgpEiuGrgnPTRw+A,,,N,0,0,,,2012-07-16 15:22,2012-07-16 15:22,admin,admin
384,150981,5776,24175,6944,1,100,N,N,N,CP_Drtn,TT_Task,DT_FixedDUR2,RV_OK,TK_Complete,4229PCV40,commercial evaluation & bid committee for Choke valves,,,,0,0,0,0,80,0,0,0,,2012-04-29 08:00,2012-05-13 16:00,2012-08-05 08:00,2012-08-05 08:00,,2012-06-30 00:00,2012-06-30 00:00,,,2012-04-29 08:00,2012-05-10 16:00,,,,,PT_Normal,,,,,PL6RT2i93kGgBzVdVpvLbA,e/V43NRVMUS133iTAw1J2Q,,,N,0,0,,,2012-07-16 15:22,2012-07-16 15:22,admin,admin
385,150982,5776,24175,6944,1,100,N,N,N,CP_Drtn,TT_Task,DT_FixedDUR2,RV_OK,TK_Complete,4229PCV60,F.O.C for Choke valves,,,,0,0,0,0,24,0,0,0,,2012-05-17 00:00,2012-06-04 00:00,2012-08-05 08:00,2012-08-05 08:00,,2012-06-30 00:00,2012-06-30 00:00,,,2012-04-29 08:00,2012-05-01 16:00,,,,,PT_Normal,,,,,CzXr2KaoskOmTyY5q1TbCw,4AXOah8HAEeGpjijEBPUrg,,,N,0,0,,,2012-07-16 15:22,2012-07-16 15:22,admin,admin
386,150983,5776,24175,6944,1,100,N,N,N,CP_Drtn,TT_Task,DT_FixedDUR2,RV_OK,TK_Complete,4229PCV70,P.O for Choke valves,,,,0,0,0,0,40,0,0,0,,2012-06-05 00:00,2012-06-06 00:00,2012-11-05 08:00,2012-11-05 08:00,,2012-06-30 00:00,2012-06-30 00:00,,,2012-07-01 08:00,2012-07-05 16:00,,,,,PT_Normal,,,,,Bm+n4K2tFU2gTJYTQPYSXQ,AvajsHLxjEGyyQn6kYuXCQ,,,N,0,0,,,2012-07-16 15:22,2012-07-16 15:22,admin,admin
387,150984,5776,24175,6944,1,100,N,N,N,CP_Drtn,TT_LOE,DT_FixedDUR2,RV_OK,TK_Complete,4229PCV25,T.E.R for choke valves,,,,0,0,0,0,160,0,0,0,,2011-12-27 00:00,2012-04-02 00:00,,,,,,,,2012-01-01 08:00,2012-01-29 16:00,,,,,PT_Normal,,,,,l/DCDeZvRkKqLCtefdgjaw,iXh9gte5aEazCHzhI0fQ8w,,,N,0,0,,,2012-07-16 15:22,2012-07-16 15:22,admin,admin
388,150985,5776,24175,6944,1,100,N,N,N,CP_Drtn,TT_LOE,DT_FixedDUR2,RV_OK,TK_Complete,4229PCV65,MRP for Choke valves,,,,0,0,0,0,40,0,0,0,,2012-05-27 00:00,2012-06-05 00:00,,,,,,,,2012-06-03 08:00,2012-06-07 16:00,,,,,PT_Normal,,,,,IEvH2ZA7wkOh3nu2SkzCGw,NjzlulhbIUKcB6s3mpdNUA,,,N,0,0,,,2012-07-16 15:22,2012-07-16 15:22,admin,admin
389,150986,5776,24176,6944,1,100,N,N,N,CP_Drtn,TT_LOE,DT_FixedDUR2,RV_OK,TK_Complete,4229PRV55,MRP for  pressure regulator valves,,,,0,0,0,0,40,0,0,0,,2012-05-27 00:00,2012-05-31 00:00,,,,,,,,2012-06-03 08:00,2012-06-07 16:00,,,,,PT_Normal,,,,,wc7d1xPHKEOCONCv62rOng,AwbIFp5LAk2PiImMFdUHFg,,,N,0,0,,,2012-07-16 15:22,2012-07-16 15:22,admin,admin
390,150987,5776,24176,6945,1,0,N,N,N,CP_Drtn,TT_Task,DT_FixedDUR2,RV_OK,TK_Active,4229PRV90,Fabrication upto R.F.S,,288,0,1048,0,0,0,1024,0,0,0,,2012-06-06 00:00,,2012-08-05 08:00,2012-12-25 16:00,2012-11-19 16:00,2012-06-30 08:00,2012-11-19 16:00,2012-06-30 08:00,2012-11-19 16:00,2012-07-03 08:00,2012-11-19 16:00,,2012-08-05 08:00,2012-12-25 16:00,,PT_Normal,,,,,nNhPOjFPf0iKco2fhMN4nQ,7UQ9XmTabEqxyA7/76n9MA,,,N,0,0,,,2012-07-16 15:22,2012-07-16 15:22,admin,admin
391,150988,5776,24176,6946,1,0,N,N,N,CP_Drtn,TT_Task,DT_FixedDUR2,RV_OK,TK_NotStart,4229PRV100,Delivery upto site,,552,240,240,0,0,0,240,0,0,0,,,,2013-01-26 08:00,2013-02-24 16:00,,2012-11-20 08:00,2012-12-19 16:00,2012-11-20 08:00,2012-12-19 16:00,2012-11-20 08:00,2012-12-19 16:00,,2013-01-26 08:00,2013-02-24 16:00,,PT_Normal,,,,,tAvSkniXJku48aKIfRCDdg,Ed1rw6pVGkqfXjRfFT7JpQ,,,N,0,0,,,2012-07-16 15:22,2012-07-16 15:22,admin,admin
392,150989,5776,24176,6944,1,100,N,N,N,CP_Drtn,TT_Task,DT_FixedDUR2,RV_OK,TK_Complete,4229PRV30,Receive revised commercial offers,,,,0,0,0,0,40,0,0,0,,2012-04-04 00:00,2012-04-15 00:00,2012-08-05 08:00,2012-08-05 08:00,,2012-06-30 00:00,2012-06-30 00:00,,,2012-04-01 08:00,2012-04-05 16:00,,,,,PT_Normal,,,,,KNE4TQHiHEOF0WzbzE/CsA,AYPNiDXaKE6RLh7mqlxUcQ,,,N,0,0,,,2012-07-16 15:22,2012-07-16 15:22,admin,admin
393,150990,5776,24176,6944,1,100,N,N,N,CP_Drtn,TT_Task,DT_FixedDUR2,RV_OK,TK_Complete,4229PRV50,Client approval on bid committee reccommendation,,,,0,0,0,0,16,0,0,0,,2012-05-13 08:00,2012-05-14 16:00,2012-08-05 08:00,2012-08-05 08:00,,2012-06-30 00:00,2012-06-30 00:00,,,2012-05-13 08:00,2012-05-14 16:00,,,,,PT_Normal,,,,,+/Ur73m1zEOKJJ7vP6s6Rw,okMlSxQPlUu8ymqN/KtiYQ,,,N,0,0,,,2012-07-16 15:22,2012-07-16 15:22,admin,admin
394,150991,5776,24176,6944,1,0,N,N,N,CP_Drtn,TT_Task,DT_FixedDUR2,RV_OK,TK_NotStart,4229PRV80,L.C issued by Gupco,,1264,1264,24,0,0,0,24,0,0,0,,,,2013-02-20 08:00,2013-02-24 16:00,,2012-07-01 08:00,2012-07-03 16:00,2012-07-01 08:00,2012-07-03 16:00,2012-07-01 08:00,2012-07-03 16:00,,2013-02-20 08:00,2013-02-24 16:00,,PT_Normal,,,,,VujuQc23eE6EAJi1IOQQYA,8XeEO//CcEKYVr5WUWm1nw,,,N,0,0,,,2012-07-16 15:22,2012-07-16 15:22,admin,admin
395,150992,5776,24176,6944,1,100,N,N,N,CP_Drtn,TT_Task,DT_FixedDUR2,RV_OK,TK_Complete,4229PRV10,Issue RFQ for pressure regulator valves,,,,0,0,0,0,16,0,0,0,,2011-10-06 00:00,2011-10-09 00:00,2012-08-05 08:00,2012-08-05 08:00,,2012-06-30 00:00,2012-06-30 00:00,,,2011-10-09 08:48,2011-10-11 08:48,,,,,PT_Normal,,,,,l4fN1UWd1E2Z/Ryozc38iA,PapX/E/5VEedYgMn9pW1WA,,,N,0,0,,,2012-07-16 15:22,2012-07-16 15:22,admin,admin
396,150993,5776,24176,6945,1,100,N,N,N,CP_Drtn,TT_Task,DT_FixedDUR2,RV_OK,TK_Complete,4229PRV20,Bidding for pressure regulator valves,,,,0,0,0,0,248,0,0,0,,2011-10-10 00:00,2012-02-01 00:00,2012-08-05 08:00,2012-08-05 08:00,,2012-06-30 00:00,2012-06-30 00:00,,,2011-10-11 08:48,2011-11-11 08:48,,,,,PT_Normal,,,,,rsefPJEbWkCcY/Z0hQJqZg,WAPraHdgpEiuGrgnPTRw+A,,,N,0,0,,,2012-07-16 15:22,2012-07-16 15:22,admin,admin
397,150994,5776,24176,6944,1,100,N,N,N,CP_Drtn,TT_Task,DT_FixedDUR2,RV_OK,TK_Complete,4229PRV40,Commercial evaluation & bid committee for pressure regulator valves,,,,0,0,0,0,80,0,0,0,,2012-04-17 00:00,2012-05-10 16:00,2012-08-05 08:00,2012-08-05 08:00,,2012-06-30 00:00,2012-06-30 00:00,,,2012-04-29 08:00,2012-05-10 16:00,,,,,PT_Normal,,,,,VoQSzyTlVUSRye5oRUOKsA,e/V43NRVMUS133iTAw1J2Q,,,N,0,0,,,2012-07-16 15:22,2012-07-16 15:22,admin,admin
398,150995,5776,24176,6944,1,100,N,N,N,CP_Drtn,TT_Task,DT_FixedDUR2,RV_OK,TK_Complete,4229PRV60,F.O.C for pressure regulator valves,,,,0,0,0,0,16,0,0,0,,2012-05-15 08:00,2012-06-04 00:00,2012-08-05 08:00,2012-08-05 08:00,,2012-06-30 00:00,2012-06-30 00:00,,,2012-05-15 08:00,2012-05-16 16:00,,,,,PT_Normal,,,,,tAEJQFS6IEKRZGuZfxfD+w,4AXOah8HAEeGpjijEBPUrg,,,N,0,0,,,2012-07-16 15:22,2012-07-16 15:22,admin,admin
399,150996,5776,24176,6944,1,100,N,N,N,CP_Drtn,TT_Task,DT_FixedDUR2,RV_OK,TK_Complete,4229PRV70,P.O for pressure regulator valves,,,,0,0,0,0,16,0,0,0,,2012-06-05 00:00,2012-06-05 00:00,2012-08-05 08:00,2012-08-05 08:00,,2012-06-30 00:00,2012-06-30 00:00,,,2012-07-01 08:00,2012-07-02 16:00,,,,,PT_Normal,,,,,awVo9qiXV02PrxvOpDFx2A,AvajsHLxjEGyyQn6kYuXCQ,,,N,0,0,,,2012-07-16 15:22,2012-07-16 15:22,admin,admin
400,150997,5776,24176,6944,1,100,N,N,N,CP_Drtn,TT_LOE,DT_FixedDUR2,RV_OK,TK_Complete,4229PRV25,T.E.R for  Pressure regulator valves,,,,0,0,0,0,120,0,0,0,,2012-02-02 00:00,2012-04-03 00:00,,,,,,,,2012-03-08 08:00,2012-03-28 16:00,,,,,PT_Normal,,,,,S6Qza0MzukantWCE13A9Cw,N0GerPhz6kKoKX7oZlOJsw,,,N,0,0,,,2012-07-16 15:22,2012-07-16 15:22,admin,admin
401,150998,5776,24177,6944,1,100,N,N,N,CP_Drtn,TT_Task,DT_FixedDUR2,RV_OK,TK_Complete,4229PCI30,Receive revised commercial offers,,,,0,0,0,0,40,0,0,0,,2012-02-05 00:00,2012-02-27 00:00,2012-07-29 08:00,2012-07-29 08:00,,2012-06-30 00:00,2012-06-30 00:00,,,2012-03-25 08:00,2012-03-29 16:00,,,,,PT_Normal,,,,,WZrFMWs1vEOotDtUqKgH0w,,,,N,0,0,,,2012-07-16 15:22,2012-07-16 15:22,admin,admin
402,150999,5776,24177,6944,1,100,N,N,N,CP_Drtn,TT_Task,DT_FixedDUR2,RV_OK,TK_Complete,4229PCI50,Client approval on bid committee reccomendation,,,,0,0,0,0,16,0,0,0,,2012-03-13 08:00,2012-03-18 00:00,2012-07-29 08:00,2012-07-29 08:00,,2012-06-30 00:00,2012-06-30 00:00,,,2012-03-13 08:00,2012-03-14 16:00,,,,,PT_Normal,,,,,A99TqNNycEmST8UC2XkPag,,,,N,0,0,,,2012-07-16 15:22,2012-07-16 15:22,admin,admin
403,151000,5776,24177,6945,1,0,N,N,N,CP_Drtn,TT_Task,DT_FixedDUR2,RV_OK,TK_Active,4229PCI90,Fabrication upto R.F.S,,240,0,256,0,0,0,1120,0,0,0,,2012-03-21 00:00,,2012-08-05 08:00,2012-09-17 16:00,2012-08-06 16:00,2012-07-06 08:00,2012-08-06 16:00,2012-07-06 08:00,2012-08-06 16:00,2012-04-06 08:00,2012-09-04 16:00,,2012-08-05 08:00,2012-09-17 16:00,,PT_Normal,,,,,YsNVLyiG9ES1slymjaZY6g,,,,N,0,0,,,2012-07-16 15:22,2012-07-16 15:22,admin,admin
404,151001,5776,24177,6946,1,0,N,N,N,CP_Drtn,TT_Task,DT_FixedDUR2,RV_OK,TK_NotStart,4229PCI100,Delivery upto site,,1272,1272,360,0,0,0,360,0,0,0,,,,2013-01-11 08:00,2013-02-24 16:00,,2012-08-07 08:00,2012-09-20 16:00,2012-08-07 08:00,2012-09-20 16:00,2012-08-07 08:00,2012-09-20 16:00,,2013-01-11 08:00,2013-02-24 16:00,,PT_Normal,,,,,gX8YkC1/ZUK5+sWNjPL2mw,,,,N,0,0,,,2012-07-16 15:22,2012-07-16 15:22,admin,admin
405,151002,5776,24177,6944,1,100,N,N,N,CP_Drtn,TT_Task,DT_FixedDUR2,RV_OK,TK_Complete,4229PCI10,Issue RFQ for Chemical injection Pkg.,,,,0,0,0,0,16,0,0,0,,2011-08-24 08:00,2011-08-25 16:00,2012-07-29 08:00,2012-07-29 08:00,,2012-06-30 00:00,2012-06-30 00:00,,,2011-08-24 08:00,2011-08-25 16:00,,,,,PT_Normal,,,,,fIL9MRkuH0G7n+rNpIo7cA,,,,N,0,0,,,2012-07-16 15:22,2012-07-16 15:22,admin,admin
406,151003,5776,24177,6945,1,100,N,N,N,CP_Drtn,TT_Task,DT_FixedDUR2,RV_OK,TK_Complete,4229PCI20,Bidding for Chemical injection Pkg.,,,,0,0,0,0,192,0,0,0,,2011-08-26 08:00,2011-09-19 00:00,2012-07-29 08:00,2012-07-29 08:00,,2012-06-30 00:00,2012-06-30 00:00,,,2011-08-26 08:00,2011-09-18 16:00,,,,,PT_Normal,,,,,XtfK0tmKqUW8CoKNX9hUog,,,,N,0,0,,,2012-07-16 15:22,2012-07-16 15:22,admin,admin
407,151004,5776,24177,6944,1,100,N,N,N,CP_Drtn,TT_Task,DT_FixedDUR2,RV_OK,TK_Complete,4229PCI40,Commercial evaluation & bid committee for Chemical injection Pkg.,,,,0,0,0,0,80,0,0,0,,2012-02-28 00:00,2012-03-06 16:00,2012-07-29 08:00,2012-07-29 08:00,,2012-06-30 00:00,2012-06-30 00:00,,,2012-03-04 08:00,2012-03-15 16:00,,,,,PT_Normal,,,,,3/RbZDBcpEaXcXKOt5m7Qg,,,,N,0,0,,,2012-07-16 15:22,2012-07-16 15:22,admin,admin
408,151005,5776,24177,6944,1,100,N,N,N,CP_Drtn,TT_Task,DT_FixedDUR2,RV_OK,TK_Complete,4229PCI60,F.O.C for Chemical injection Pkg.,,,,0,0,0,0,24,0,0,0,,2012-03-07 00:00,2012-03-20 00:00,2012-07-29 08:00,2012-07-29 08:00,,2012-06-30 00:00,2012-06-30 00:00,,,2012-04-01 08:00,2012-04-03 16:00,,,,,PT_Normal,,,,,ezgZU9TjuUKP0Uk79yOV/w,,,,N,0,0,,,2012-07-16 15:22,2012-07-16 15:22,admin,admin
409,151006,5776,24177,6944,1,100,N,N,N,CP_Drtn,TT_Task,DT_FixedDUR2,RV_OK,TK_Complete,4229PCI70,P.O for Chemical injection Pkg.,,,,0,0,0,0,40,0,0,0,,2012-04-08 00:00,2012-04-08 00:00,2012-07-29 08:00,2012-07-29 08:00,,2012-06-30 00:00,2012-06-30 00:00,,,2012-04-01 08:00,2012-04-05 16:00,,,,,PT_Normal,,,,,r5mRQqWiQkG01CIHysJOtQ,,,,N,0,0,,,2012-07-16 15:22,2012-07-16 15:22,admin,admin
410,151007,5776,24177,6944,1,100,N,N,N,CP_Drtn,TT_LOE,DT_FixedDrtn,RV_OK,TK_Complete,4229PCI25,T.E.R for Chemical injection,,,,0,0,0,0,160,0,0,0,,2011-09-19 08:00,2011-11-24 00:00,,,,,,,,2011-09-19 08:00,2011-10-17 16:00,,,,,PT_Normal,,,,,7zD9sx2h70ieXw8l8TsnPA,UynpZlC0SEW7UHo8eeimsg,,,N,0,0,,,2012-07-16 15:22,2012-07-16 15:22,admin,admin
411,151008,5776,24177,6944,1,100,N,N,N,CP_Drtn,TT_LOE,DT_FixedDUR2,RV_OK,TK_Complete,4229PCI65,MRP for Chemical injection,,,,0,0,0,0,24,0,0,0,,2012-03-25 00:00,2012-04-05 00:00,,,,,,,,2012-03-25 08:00,2012-03-27 16:00,,,,,PT_Normal,,,,,JxH2KECHEU2hVhqiNIHd7w,R1Sdma6vEUKAbOUepMCX5Q,,,N,0,0,,,2012-07-16 15:22,2012-07-16 15:22,admin,admin
412,151009,5776,24177,6944,1,0,N,N,N,CP_Drtn,TT_Task,DT_FixedDUR2,RV_OK,TK_NotStart,4229PCI80,L.C issued by Gupco,,160,0,40,0,0,0,40,0,0,0,,,,2012-07-29 08:00,2012-08-02 16:00,,2012-07-01 08:00,2012-07-05 16:00,2012-07-01 08:00,2012-07-05 16:00,2012-07-01 08:00,2012-07-05 16:00,,2012-07-29 08:00,2012-08-02 16:00,,PT_Normal,,,,,H3A9+1JeVEGvKUMDHr7bTw,,,,N,0,0,,,2012-07-16 15:22,2012-07-16 15:22,admin,admin
413,151010,5776,24143,6944,1,100,N,N,N,CP_Drtn,TT_Task,DT_FixedDUR2,RV_OK,TK_Complete,4229GM70,P/L Installation package- Approval,,,,0,0,0,0,200,0,0,0,,2011-09-28 08:00,2011-11-02 16:00,2013-02-24 16:00,2013-02-24 16:00,,2012-06-30 00:00,2012-06-30 00:00,,,2011-09-28 08:00,2011-11-02 16:00,,,,,PT_Normal,,,,,CvX00VtaNkOCXdAo0QH6+w,,,,N,0,0,,,2012-07-16 15:22,2012-07-16 15:22,admin,admin
414,151011,5776,24143,6944,1,100,N,N,N,CP_Drtn,TT_Task,DT_FixedDUR2,RV_OK,TK_Complete,4229GM90,P/L  Installation package- Final,,,,0,0,0,0,160,0,0,0,,2011-11-24 08:00,2011-11-29 00:00,2013-02-24 16:00,2013-02-24 16:00,,2012-06-30 00:00,2012-06-30 00:00,,,2011-11-24 08:00,2011-12-21 16:00,,,,,PT_Normal,,,,,t3mZ9ATFmEGJD9y/MqPRpA,,,,N,0,0,,,2012-07-16 15:22,2012-07-16 15:22,admin,admin
415,151012,5776,24143,6944,1,100,N,N,N,CP_Drtn,TT_Task,DT_FixedDUR2,RV_OK,TK_Complete,4229GM40,Final Project Design basis,,,,0,0,0,0,80,0,0,0,,2011-11-14 08:00,2011-11-27 16:00,2013-02-24 16:00,2013-02-24 16:00,,2012-06-30 00:00,2012-06-30 00:00,,,2011-11-14 08:00,2011-11-27 16:00,,,,,PT_Normal,,,,,D79yaC0gakGv7XTJcnbIew,,,,N,0,0,,,2012-07-16 15:22,2012-07-16 15:22,admin,admin
416,151013,5776,24143,6944,1,100,N,N,N,CP_Drtn,TT_Task,DT_FixedDUR2,RV_OK,TK_Complete,4229GM50,Platform Installation package- Approval,,,,0,0,0,0,160,0,0,0,,2011-08-15 00:00,2011-10-23 00:00,2013-02-24 16:00,2013-02-24 16:00,,2012-06-30 00:00,2012-06-30 00:00,,,2011-10-17 08:00,2011-11-20 16:00,,,,,PT_Normal,,,,,7+jlWK0nSk2sPIJ1Oi/45g,,,,N,0,0,,,2012-07-16 15:22,2012-07-16 15:22,admin,admin
417,151014,5776,24143,6944,1,100,N,N,N,CP_Drtn,TT_Task,DT_FixedDUR2,RV_OK,TK_Complete,4229GM80,Platform Installation package- Final,,,,0,0,0,0,160,0,0,0,,2011-10-23 00:00,2011-10-24 00:00,2013-02-24 16:00,2013-02-24 16:00,,2012-06-30 00:00,2012-06-30 00:00,,,2011-11-13 08:00,2011-12-08 16:00,,,,,PT_Normal,,,,,GCDgv05eyk+5YPROs9D0tw,,,,N,0,0,,,2012-07-16 15:22,2012-07-16 15:22,admin,admin
418,151015,5776,24143,6944,1,0,N,N,N,CP_Drtn,TT_Task,DT_FixedDUR2,RV_OK,TK_NotStart,4229GM130,Internal Design Review meeting,,1272,984,16,0,0,0,16,0,0,0,,,,2013-02-21 08:00,2013-02-24 16:00,,2012-07-01 08:00,2012-07-02 16:00,2012-07-01 08:00,2012-07-02 16:00,2012-07-01 08:00,2012-07-02 16:00,,2013-02-21 08:00,2013-02-24 16:00,,PT_Normal,,,,,VY18Fe5x+ki2o345GBHIXQ,,,,N,0,0,,,2012-07-16 15:22,2012-07-16 15:22,admin,admin
419,151016,5776,24143,6944,1,100,N,N,N,CP_Drtn,TT_Task,DT_FixedDUR2,RV_OK,TK_Complete,4229GM20,Project Design basis IFA,,,,0,0,0,0,80,0,0,0,,2011-09-29 08:00,2011-10-23 16:00,2013-02-24 16:00,2013-02-24 16:00,,2012-06-30 00:00,2012-06-30 00:00,,,2011-09-29 08:00,2011-10-13 16:00,,,,,PT_Normal,,,,,4UCnAtBnQUO8wnUaVqZlbg,q7j6wPJqRLqWzOiikNoPRg,,,N,0,0,,,2012-07-16 15:22,2012-07-16 15:22,admin,admin
420,151017,5776,24143,6944,1,100,N,N,N,CP_Drtn,TT_Task,DT_FixedDUR2,RV_OK,TK_Complete,4229GM30,Platform fabrication package- Approval,,,,0,0,0,0,336,0,0,0,,2011-08-15 08:00,2011-10-23 00:00,2013-02-24 16:00,2013-02-24 16:00,,2012-06-30 00:00,2012-06-30 00:00,,,2011-08-15 08:00,2011-10-16 16:00,,,,,PT_Normal,,,,,Qsw75fSvKkO9AeQCMMl6Tw,,,,N,0,0,,,2012-07-16 15:22,2012-07-16 15:22,admin,admin
421,151018,5776,24143,6944,1,100,N,N,N,CP_Drtn,TT_Task,DT_FixedDUR2,RV_OK,TK_Complete,4229GM60,Platform fabrication  package- Final,,,,0,0,0,0,120,0,0,0,,2011-10-23 08:00,2011-10-24 00:00,2013-02-24 16:00,2013-02-24 16:00,,2012-06-30 00:00,2012-06-30 00:00,,,2011-10-23 08:00,2011-11-17 16:00,,,,,PT_Normal,,,,,XsHhbZWQ80mYIfjq8wqSMg,,,,N,0,0,,,2012-07-16 15:22,2012-07-16 15:22,admin,admin
422,151019,5776,24143,6944,1,100,N,N,N,CP_Drtn,TT_Task,DT_FixedDUR2,RV_OK,TK_Complete,4229GM150,Project quality assurance plan,,,,0,0,0,0,160,0,0,0,,2011-10-17 00:00,2011-11-13 00:00,2013-02-24 16:00,2013-02-24 16:00,,2012-06-30 00:00,2012-06-30 00:00,,,2011-10-30 08:00,2011-12-01 16:00,,,,,PT_Normal,,,,,7gcF7cC9ykmfj4awl11Xtg,,,,N,0,0,,,2012-07-16 15:22,2012-07-16 15:22,admin,admin
423,151020,5776,24144,6946,0,0,N,N,N,CP_Drtn,TT_FinMile,DT_FixedDrtn,RV_OK,TK_NotStart,4229GM110,Material delivered at site- except additional shutdown valve (offshore installation),,312,312,0,0,0,0,0,0,0,0,,,,2013-02-24 16:00,2013-02-24 16:00,,2013-01-16 16:00,2013-01-16 16:00,2013-01-16 16:00,2013-01-16 16:00,2013-01-16 16:00,2013-01-16 16:00,,2013-02-24 16:00,2013-02-24 16:00,,PT_Normal,,,,,kgp2zl9K70On+OZKZ/t4PA,p1tAFd/EwEWZbX7CxHkw5g,,,N,0,0,,,2012-07-16 15:22,2012-07-16 15:22,admin,admin
424,151021,5776,24144,6946,0,0,N,N,N,CP_Drtn,TT_FinMile,DT_FixedDrtn,RV_OK,TK_NotStart,4229GM120,Enppi scope completion,,0,0,0,0,0,0,0,0,0,0,,,,2013-02-24 16:00,2013-02-24 16:00,,2013-02-24 16:00,2013-02-24 16:00,2013-02-24 16:00,2013-02-24 16:00,2013-02-24 16:00,2013-02-24 16:00,,2013-02-24 16:00,2013-02-24 16:00,,PT_Normal,,,1,6,0qyi63yLwEyE0qn8OdRbWg,BiEujtK1VU2+qG7Mqg1nkw,,,Y,0,0,,,2012-07-16 15:22,2012-07-16 15:22,admin,admin
425,151022,5776,24144,6944,0,100,N,N,N,CP_Drtn,TT_Mile,DT_FixedDrtn,RV_OK,TK_Complete,4229GM10,Project Coming into force / Kick-off meeting,,,,0,0,0,0,0,0,0,0,,2011-08-15 08:00,2011-08-15 08:00,,,,,,,,2011-08-15 08:00,2011-08-15 08:00,,,,,PT_Normal,,,,,jbiYKDdStkOd3dZqPPbjrw,cEclb7XgSZ2M9TMglt0yjw,,,N,0,0,,,2012-07-16 15:22,2012-07-16 15:22,admin,admin
426,151023,5776,24144,6944,0,0,N,N,N,CP_Drtn,TT_FinMile,DT_FixedDrtn,RV_OK,TK_NotStart,4229GM100,Engineering completion,,288,288,0,0,0,0,0,0,0,0,,,,2013-02-24 16:00,2013-02-24 16:00,,2013-01-03 16:00,2013-01-03 16:00,2013-01-03 16:00,2013-01-03 16:00,2013-01-03 16:00,2013-01-03 16:00,,2013-02-24 16:00,2013-02-24 16:00,,PT_Normal,,,,,eKQGsi9ER0CjY+4o1Ix3lA,,,,N,0,0,,,2012-07-16 15:22,2012-07-16 15:22,admin,admin
427,151024,5776,24144,6944,0,100,N,N,N,CP_Drtn,TT_FinMile,DT_FixedDrtn,RV_OK,TK_Complete,4229GM140,Change order 1 approval,,,,0,0,0,0,0,0,0,0,,2011-10-16 16:00,2011-10-16 16:00,,,,,,,,2011-10-16 16:00,2011-10-16 16:00,,,,,PT_Normal,,,,,yTP88TxbOkC09yu/T0xB2w,,,,N,0,0,,,2012-07-16 15:22,2012-07-16 15:22,admin,admin
428,151025,5776,24196,6944,1,100,N,N,N,CP_Drtn,TT_Task,DT_FixedDUR2,RV_OK,TK_Complete,4229ELP1000,Riser impact risk assessment study -IFA,,,,0,0,0,0,8,0,0,0,,2012-02-15 00:00,2012-02-27 00:00,2013-02-24 16:00,2013-02-24 16:00,,2012-06-30 00:00,2012-06-30 00:00,,,2012-04-29 08:00,2012-04-29 16:00,,,,,PT_Normal,,,,,ZGRMii6brEeTjIyEEvHbzw,,,,N,0,0,,,2012-07-16 15:22,2012-07-16 15:22,admin,admin
429,151026,5776,24196,6944,1,100,N,N,N,CP_Drtn,TT_Task,DT_FixedDUR2,RV_OK,TK_Complete,4229ELP1010,Final Riser impact  risk assessment study,,,,0,0,0,0,40,0,0,0,,2012-02-28 00:00,2012-05-10 00:00,2013-02-24 16:00,2013-02-24 16:00,,2012-06-30 00:00,2012-06-30 00:00,,,2012-04-29 08:00,2012-05-03 16:00,,,,,PT_Normal,,,,,vIUlox6bYkeLr+NC+CbE+Q,,,,N,0,0,,,2012-07-16 15:22,2012-07-16 15:22,admin,admin
430,151027,5776,24198,6944,1,100,N,N,N,CP_Drtn,TT_Task,DT_FixedDUR2,RV_OK,TK_Complete,4229ELP540,Update & issue safety life cycle-Design,,,,0,0,0,0,176,0,0,0,,2012-04-05 00:00,2012-04-10 00:00,2013-02-24 16:00,2013-02-24 16:00,,2012-06-30 00:00,2012-06-30 00:00,,,2012-04-01 08:00,2012-04-30 16:00,,,,,PT_Normal,,,,,CbITlE2J4USsSr/FRMXzXg,,,,N,0,0,,,2012-07-16 15:22,2012-07-16 15:22,admin,admin
431,151028,5776,24198,6944,1,100,N,N,N,CP_Drtn,TT_Task,DT_FixedDUR2,RV_OK,TK_Complete,4229ELP130,HAZOP meeting /Report,,,,0,0,0,0,80,0,0,0,2012-02-06 08:00,2012-02-02 00:00,2012-02-21 00:00,2013-01-08 08:00,2013-01-08 08:00,,2012-06-30 00:00,2012-06-30 00:00,,,2012-03-04 08:00,2012-03-15 16:00,,,,CS_MSO,PT_Normal,,,,,Tz3B/h1T40G4AWARyGLAIQ,,,,N,0,0,,,2012-07-16 15:22,2012-07-16 15:22,admin,admin
432,151029,5776,24198,6944,1,100,N,N,N,CP_Drtn,TT_Task,DT_FixedDUR2,RV_OK,TK_Complete,4229ELP10,HSE Plan -Approval,,,,0,0,0,0,80,0,0,0,,2011-09-29 08:00,2011-10-13 16:00,2013-01-09 08:00,2013-01-09 08:00,,2012-06-30 00:00,2012-06-30 00:00,,,2011-09-29 08:00,2011-10-13 16:00,,,,,PT_Normal,,,,,ZnojJSi5Akm2xZqdcO4HXg,,,,N,0,0,,,2012-07-16 15:22,2012-07-16 15:22,admin,admin
433,151030,5776,24198,6944,1,100,N,N,N,CP_Drtn,TT_Task,DT_FixedDUR2,RV_OK,TK_Complete,4229ELP20,HSE Plan -Final,,,,0,0,0,0,40,0,0,0,,2011-11-13 00:00,2011-11-15 00:00,2013-02-13 08:00,2013-02-13 08:00,,2012-06-30 00:00,2012-06-30 00:00,,,2011-12-04 08:00,2011-12-08 16:00,,,,,PT_Normal,,,,,DHnrEDz4dUigpq/9zpS8ig,,,,N,0,0,,,2012-07-16 15:22,2012-07-16 15:22,admin,admin
434,151031,5776,24198,6944,1,100,N,N,N,CP_Drtn,TT_Task,DT_FixedDUR2,RV_OK,TK_Complete,4229ELP30,HSE philosophy - Approval,,,,0,0,0,0,80,0,0,0,,2011-10-16 00:00,2011-11-03 00:00,2013-01-09 08:00,2013-01-09 08:00,,2012-06-30 00:00,2012-06-30 00:00,,,2011-12-04 08:00,2011-12-15 16:00,,,,,PT_Normal,,,,,/Lt0aNlfpk+wjOnpsOWjuw,,,,N,0,0,,,2012-07-16 15:22,2012-07-16 15:22,admin,admin
435,151032,5776,24198,6944,1,100,N,N,N,CP_Drtn,TT_Task,DT_FixedDUR2,RV_OK,TK_Complete,4229ELP90,HSE philosophy - Final,,,,0,0,0,0,40,0,0,0,,2011-11-20 00:00,2011-11-23 00:00,2013-02-13 08:00,2013-02-13 08:00,,2012-06-30 00:00,2012-06-30 00:00,,,2011-12-25 08:00,2011-12-29 16:00,,,,,PT_Normal,,,,,7pI7q42zPEiAfAjw4Tf5+A,,,,N,0,0,,,2012-07-16 15:22,2012-07-16 15:22,admin,admin
436,151033,5776,24198,6944,1,100,N,N,N,CP_Drtn,TT_Task,DT_FixedDUR2,RV_OK,TK_Complete,4229ELP410,SIL Review report-Final,,,,0,0,0,0,88,0,0,0,,2012-04-23 00:00,2012-05-30 00:00,2013-02-24 16:00,2013-02-24 16:00,,2012-06-30 00:00,2012-06-30 00:00,,,2012-06-03 08:00,2012-06-17 16:00,,,,,PT_Normal,,,,,QZMu0lM2pk+BE1f3+Sb1zQ,,,,N,0,0,,,2012-07-16 15:22,2012-07-16 15:22,admin,admin
437,151034,5776,24198,6944,1,100,N,N,N,CP_Drtn,TT_Task,DT_FixedDUR2,RV_OK,TK_Complete,4229ELP100,Fire & explosion HAZARD analysis- Approval,,,,0,0,0,0,120,0,0,0,,2011-11-22 00:00,2011-11-23 00:00,2013-01-09 08:00,2013-01-09 08:00,,2012-06-30 00:00,2012-06-30 00:00,,,2011-12-04 08:00,2011-12-22 16:00,,,,,PT_Normal,,,,,ROqOcQsFMkCyXW0CZbxaTA,,,,N,0,0,,,2012-07-16 15:22,2012-07-16 15:22,admin,admin
438,151035,5776,24198,6944,1,100,N,N,N,CP_Drtn,TT_Task,DT_FixedDUR2,RV_OK,TK_Complete,4229ELP140,Fire & Explosion HAZARD analysis- Final,,,,0,0,0,0,80,0,0,0,,2012-02-16 00:00,2012-03-05 00:00,2013-01-09 08:00,2013-01-09 08:00,,2012-06-30 00:00,2012-06-30 00:00,,,2012-01-01 08:00,2012-01-12 16:00,,,,,PT_Normal,,,,,3TwFJM2QlkyeJpZ88ijpBg,,,,N,0,0,,,2012-07-16 15:22,2012-07-16 15:22,admin,admin
439,151036,5776,24198,6944,1,0,N,N,N,CP_Drtn,TT_Task,DT_FixedDUR2,RV_OK,TK_NotStart,4229ELP120,SAMS report-Approval,,1016,0,80,0,0,0,80,0,0,0,,,,2013-01-09 08:00,2013-01-22 16:00,,2012-07-02 08:00,2012-07-15 16:00,2012-07-02 08:00,2012-07-15 16:00,2012-07-02 08:00,2012-07-15 16:00,,2013-01-09 08:00,2013-01-22 16:00,,PT_Normal,,,,,dskGqgMc0Um/jq8rAzPKFQ,,,,N,0,0,,,2012-07-16 15:22,2012-07-16 15:22,admin,admin
440,151037,5776,24198,6944,1,0,N,N,N,CP_Drtn,TT_Task,DT_FixedDUR2,RV_OK,TK_NotStart,4229ELP180,SAMS report-Final,,1016,0,80,0,0,0,80,0,0,0,,,,2013-01-30 08:00,2013-02-12 16:00,,2012-07-23 08:00,2012-08-05 16:00,2012-07-23 08:00,2012-08-05 16:00,2012-07-23 08:00,2012-08-05 16:00,,2013-01-30 08:00,2013-02-12 16:00,,PT_Normal,,,,,QuaJ7U0s80a4T1r0Z72kTw,,,,N,0,0,,,2012-07-16 15:22,2012-07-16 15:22,admin,admin
441,151038,5776,24198,6944,1,0,N,N,N,CP_Drtn,TT_Task,DT_FixedDUR2,RV_OK,TK_NotStart,4229ELP340,HAZARD register,,1016,728,64,0,0,0,64,0,0,0,,,,2013-02-13 08:00,2013-02-24 16:00,,2012-08-06 08:00,2012-08-15 16:00,2012-08-06 08:00,2012-08-15 16:00,2012-08-06 08:00,2012-08-15 16:00,,2013-02-13 08:00,2013-02-24 16:00,,PT_Normal,,,,,T5zCzFWtI0Kn1yFsJxTIDQ,,,,N,0,0,,,2012-07-16 15:22,2012-07-16 15:22,admin,admin
442,151039,5776,24198,6944,1,100,N,N,N,CP_Drtn,TT_Task,DT_FixedDUR2,RV_OK,TK_Complete,4229ELP190,SCE performance standards-Approval,,,,0,0,0,0,80,0,0,0,,2012-02-09 00:00,2012-02-22 00:00,2013-01-09 08:00,2013-01-09 08:00,,2012-06-30 00:00,2012-06-30 00:00,,,2012-03-20 08:00,2012-04-02 16:00,,,,,PT_Normal,,,,,VRG45eMsa0qAkCVVhkGAVA,,,,N,0,0,,,2012-07-16 15:22,2012-07-16 15:22,admin,admin
443,151040,5776,24198,6944,1,100,N,N,N,CP_Drtn,TT_Task,DT_FixedDUR2,RV_OK,TK_Complete,4229ELP200,QRA -Approval,,,,0,0,0,0,120,0,0,0,,2012-02-26 00:00,2012-03-20 00:00,2013-01-09 08:00,2013-01-09 08:00,,2012-06-30 00:00,2012-06-30 00:00,,,2012-03-04 08:00,2012-03-22 16:00,,,,,PT_Normal,,,,,nB//crgWRk+P9GyWAP8JXg,,,,N,0,0,,,2012-07-16 15:22,2012-07-16 15:22,admin,admin
444,151041,5776,24198,6944,1,100,N,N,N,CP_Drtn,TT_Task,DT_FixedDUR2,RV_OK,TK_Complete,4229ELP300,QRA -Final,,,,0,0,0,0,120,0,0,0,,2012-04-15 08:00,2012-04-18 00:00,2013-02-13 08:00,2013-02-13 08:00,,2012-06-30 00:00,2012-06-30 00:00,,,2012-04-15 08:00,2012-05-03 16:00,,,,,PT_Normal,,,,,qAbX75s1BUu7a4pcAWneiQ,,,,N,0,0,,,2012-07-16 15:22,2012-07-16 15:22,admin,admin
445,151042,5776,24198,6944,1,100,N,N,N,CP_Drtn,TT_Task,DT_FixedDUR2,RV_OK,TK_Complete,4229ELP240,HAZID report,,,,0,0,0,0,80,0,0,0,,2012-03-28 00:00,2012-05-03 00:00,2013-01-09 08:00,2013-01-09 08:00,,2012-06-30 00:00,2012-06-30 00:00,,,2012-04-01 08:00,2012-04-12 16:00,,,,,PT_Normal,,,,,ZKf8+8eTBkyUpekyF78j6A,,,,N,0,0,,,2012-07-16 15:22,2012-07-16 15:22,admin,admin
446,151043,5776,24198,6944,1,100,N,N,N,CP_Drtn,TT_Task,DT_FixedDUR2,RV_OK,TK_Complete,4229ELP250,ENVID report,,,,0,0,0,0,80,0,0,0,,2012-03-28 00:00,2012-05-03 00:00,2013-01-09 08:00,2013-01-09 08:00,,2012-06-30 00:00,2012-06-30 00:00,,,2012-04-01 08:00,2012-04-12 16:00,,,,,PT_Normal,,,,,vvlhajdCI0W1ZY79Wt1idg,,,,N,0,0,,,2012-07-16 15:22,2012-07-16 15:22,admin,admin
447,151044,5776,24198,6944,1,0,N,N,N,CP_Drtn,TT_Task,DT_FixedDUR2,RV_OK,TK_Active,4229ELP210,HAZOP close out report,,1016,0,8,0,0,0,120,0,0,0,,2012-03-28 00:00,,2013-01-08 08:00,2013-01-08 16:00,2012-07-01 16:00,2012-07-01 08:00,2012-07-01 16:00,2012-07-01 08:00,2012-07-01 16:00,2012-04-03 08:00,2012-04-23 16:00,,2013-01-08 08:00,2013-01-08 16:00,,PT_Normal,,,,,vmT+HDdtPEaNsmce+SkP0A,,,,N,0,0,,,2012-07-16 15:22,2012-07-16 15:22,admin,admin
448,151045,5776,24198,6944,1,100,N,N,N,CP_Drtn,TT_Task,DT_FixedDUR2,RV_OK,TK_Complete,4229ELP280,PSSR report-Approval,,,,0,0,0,0,120,0,0,0,,2012-03-31 00:00,2012-03-31 00:00,2013-01-09 08:00,2013-01-09 08:00,,2012-06-30 00:00,2012-06-30 00:00,,,2012-04-01 08:00,2012-04-19 16:00,,,,,PT_Normal,,,,,lhzQDoxt6U6mPv2UE1UEvA,,,,N,0,0,,,2012-07-16 15:22,2012-07-16 15:22,admin,admin
449,151046,5776,24198,6944,1,0,N,N,N,CP_Drtn,TT_Task,DT_FixedDUR2,RV_OK,TK_NotStart,4229ELP290,CHAZOP review report,,1008,720,96,0,0,0,96,0,0,0,,,,2013-02-07 08:00,2013-02-24 16:00,,2012-08-01 08:00,2012-08-16 16:00,2012-08-01 08:00,2012-08-16 16:00,2012-08-01 08:00,2012-08-16 16:00,,2013-02-07 08:00,2013-02-24 16:00,,PT_Normal,,,,,QWOoKos+Z0KuVvayZ8Jk0w,,,,N,0,0,,,2012-07-16 15:22,2012-07-16 15:22,admin,admin
450,151047,5776,24198,6944,1,100,N,N,N,CP_Drtn,TT_Task,DT_FixedDUR2,RV_OK,TK_Complete,4229ELP160,SIL Review report-Approval,,,,0,0,0,0,80,0,0,0,2012-04-19 00:00,2012-04-19 00:00,2012-05-09 00:00,2013-01-09 08:00,2013-01-09 08:00,,2012-06-30 00:00,2012-06-30 00:00,,,2012-04-19 08:00,2012-05-02 16:00,,,,CS_MSOA,PT_Normal,,,,,kLyq3u/AsUy0F3gDfg8yhg,,,,N,0,0,,,2012-07-16 15:22,2012-07-16 15:22,admin,admin
451,151048,5776,24198,6944,1,100,N,N,N,CP_Drtn,TT_Task,DT_FixedDUR2,RV_OK,TK_Complete,4229ELP50,Update & issue safety life cycle-Approval,,,,0,0,0,0,0,0,0,0,,2012-02-19 00:00,2012-02-23 00:00,2013-02-13 08:00,2013-02-13 08:00,,2012-06-30 00:00,2012-06-30 00:00,,,2012-03-04 08:00,2012-03-04 08:00,,,,,PT_Normal,,,,,viAYVfIIAku1ZOqyVxyImg,,,,N,0,0,,,2012-07-16 15:22,2012-07-16 15:22,admin,admin
452,151049,5776,24198,6944,1,100,N,N,N,CP_Drtn,TT_Task,DT_FixedDUR2,RV_OK,TK_Complete,4229ELP270,SCE performance standards-Final,,,,0,0,0,0,40,0,0,0,,2012-03-15 00:00,2012-03-20 00:00,2013-02-24 16:00,2013-02-24 16:00,,2012-06-30 00:00,2012-06-30 00:00,,,2012-04-01 08:00,2012-04-05 16:00,,,,,PT_Normal,,,,,S530+XSom0mBQUFxw1Ugcw,,,,N,0,0,,,2012-07-16 15:22,2012-07-16 15:22,admin,admin
453,151050,5776,24198,6944,1,100,N,N,N,CP_Drtn,TT_Task,DT_FixedDUR2,RV_OK,TK_Complete,4229ELP350,PSSR report-Final,,,,0,0,0,0,80,0,0,0,,2012-03-31 00:00,2012-03-31 00:00,2013-02-24 16:00,2013-02-24 16:00,,2012-06-30 00:00,2012-06-30 00:00,,,2012-04-15 08:00,2012-04-26 16:00,,,,,PT_Normal,,,,,eN704fExV0GDpOqGwxtCBQ,,,,N,0,0,,,2012-07-16 15:22,2012-07-16 15:22,admin,admin
454,151051,5776,24206,6944,1,100,N,N,N,CP_Drtn,TT_Task,DT_FixedDUR2,RV_OK,TK_Complete,4229ELP460,F& G cable list -Design,,,,0,0,0,0,40,0,0,0,,2012-01-15 00:00,2012-01-24 00:00,2013-02-18 08:00,2013-02-18 08:00,,2012-06-30 00:00,2012-06-30 00:00,,,2012-03-04 08:00,2012-03-08 16:00,,,,,PT_Normal,,,,,GFh7OG4Yd0WGIQnmWPspqQ,,,,N,0,0,,,2012-07-16 15:22,2012-07-16 15:22,admin,admin
455,151052,5776,24206,6944,1,0,N,N,N,CP_Drtn,TT_Task,DT_FixedDUR2,RV_OK,TK_NotStart,4229ELP470,F& G cable list -Construction,,1016,40,40,0,0,0,40,0,0,0,,,,2013-02-11 08:00,2013-02-17 16:00,,2012-08-02 08:00,2012-08-08 16:00,2012-08-02 08:00,2012-08-08 16:00,2012-08-02 08:00,2012-08-08 16:00,,2013-02-11 08:00,2013-02-17 16:00,,PT_Normal,,,,,aaBdMYefeEysXQEsGP1S1A,,,,N,0,0,,,2012-07-16 15:22,2012-07-16 15:22,admin,admin
456,151053,5776,24206,6944,1,0,N,N,N,CP_Drtn,TT_Task,DT_FixedDUR2,RV_OK,TK_NotStart,4229ELP500,Interconnection wiring diagram-Construction,,976,0,80,0,0,0,80,0,0,0,,,,2013-02-04 08:00,2013-02-17 16:00,,2012-08-02 08:00,2012-08-15 16:00,2012-08-02 08:00,2012-08-15 16:00,2012-08-02 08:00,2012-08-15 16:00,,2013-02-04 08:00,2013-02-17 16:00,,PT_Normal,,,,,/j7pfXvD60KYk0hCOfwxFQ,,,,N,0,0,,,2012-07-16 15:22,2012-07-16 15:22,admin,admin
457,151054,5776,24206,6944,1,100,N,N,N,CP_Drtn,TT_Task,DT_FixedDUR2,RV_OK,TK_Complete,4229ELP510,F&G installation details -Approval,,,,0,0,0,0,80,0,0,0,,2011-11-13 00:00,2012-02-15 00:00,2013-02-18 08:00,2013-02-18 08:00,,2012-06-30 00:00,2012-06-30 00:00,,,2011-12-04 08:00,2011-12-15 16:00,,,,,PT_Normal,,,,,MKuSUXNPVECz/IKv5NCXAA,,,,N,0,0,,,2012-07-16 15:22,2012-07-16 15:22,admin,admin
458,151055,5776,24206,6944,1,100,N,N,N,CP_Drtn,TT_Task,DT_FixedDUR2,RV_OK,TK_Complete,4229ELP520,F&G installation details -Design,,,,0,0,0,0,80,0,0,0,,2012-02-26 00:00,2012-06-03 00:00,2013-02-18 08:00,2013-02-18 08:00,,2012-06-30 00:00,2012-06-30 00:00,,,2012-03-04 08:00,2012-03-15 16:00,,,,,PT_Normal,,,,,NVFIQSAVxEGM7Wyfgu0P3A,,,,N,0,0,,,2012-07-16 15:22,2012-07-16 15:22,admin,admin
459,151056,5776,24206,6944,1,0,N,N,N,CP_Drtn,TT_Task,DT_FixedDUR2,RV_OK,TK_NotStart,4229ELP530,F&G installation details -Construction,,976,688,40,0,0,0,40,0,0,0,,,,2013-02-18 08:00,2013-02-24 16:00,,2012-08-16 08:00,2012-08-29 16:00,2012-08-16 08:00,2012-08-29 16:00,2012-08-16 08:00,2012-08-29 16:00,,2013-02-18 08:00,2013-02-24 16:00,,PT_Normal,,,,,eyS4FXAhvE+v1/4nHt3iHQ,,,,N,0,0,,,2012-07-16 15:22,2012-07-16 15:22,admin,admin
460,151057,5776,24206,6944,1,100,N,N,N,CP_Drtn,TT_Task,DT_FixedDUR2,RV_OK,TK_Complete,4229ELP70,F& G detection layout -Approval,,,,0,0,0,0,80,0,0,0,,2011-11-22 00:00,2011-12-28 00:00,2013-02-18 08:00,2013-02-18 08:00,,2012-06-30 00:00,2012-06-30 00:00,,,2011-12-04 08:00,2011-12-15 16:00,,,,,PT_Normal,,,,,aw9Sl2y/0kmSnSr4DW0UXA,,,,N,0,0,,,2012-07-16 15:22,2012-07-16 15:22,admin,admin
461,151058,5776,24206,6944,1,100,N,N,N,CP_Drtn,TT_Task,DT_FixedDUR2,RV_OK,TK_Complete,4229ELP220,F& G detection layout -Design,,,,0,0,0,0,120,0,0,0,,2012-01-19 00:00,2012-02-27 00:00,2013-02-18 08:00,2013-02-18 08:00,,2012-06-30 00:00,2012-06-30 00:00,,,2012-03-04 08:00,2012-03-22 16:00,,,,,PT_Normal,,,,,mR5hs/5jyEirmdvKZ7DXcA,,,,N,0,0,,,2012-07-16 15:22,2012-07-16 15:22,admin,admin
462,151059,5776,24206,6944,1,0,N,N,N,CP_Drtn,TT_Task,DT_FixedDUR2,RV_OK,TK_NotStart,4229ELP360,F& G detection layout -Construction,,1016,40,120,0,0,0,120,0,0,0,,,,2013-01-28 08:00,2013-02-17 16:00,,2012-07-19 08:00,2012-08-08 16:00,2012-07-19 08:00,2012-08-08 16:00,2012-07-19 08:00,2012-08-08 16:00,,2013-01-28 08:00,2013-02-17 16:00,,PT_Normal,,,,,tLb7KTbG50CYp/2UEB6Bug,,,,N,0,0,,,2012-07-16 15:22,2012-07-16 15:22,admin,admin
463,151060,5776,24206,6944,1,100,N,N,N,CP_Drtn,TT_Task,DT_FixedDUR2,RV_OK,TK_Complete,4229ELP80,"Firefighting, Safety equipment & escape route layout-Approval",,,,0,0,0,0,80,0,0,0,,2011-11-22 00:00,2011-12-29 08:00,2013-02-18 08:00,2013-02-18 08:00,,2012-06-30 00:00,2012-06-30 00:00,,,2011-12-04 08:00,2011-12-15 16:00,,,,,PT_Normal,,,,,1f/3sdkbSEaEr8B8bd9xGw,,,,N,0,0,,,2012-07-16 15:22,2012-07-16 15:22,admin,admin
464,151061,5776,24206,6944,1,100,N,N,N,CP_Drtn,TT_Task,DT_FixedDUR2,RV_OK,TK_Complete,4229ELP230,"Fire fighting, Safety equipment & escape route layout-Design",,,,0,0,0,0,120,0,0,0,2012-01-01 00:00,2012-01-29 00:00,2012-01-29 00:00,2013-02-18 08:00,2013-02-18 08:00,,2012-06-30 00:00,2012-06-30 00:00,,,2012-03-04 08:00,2012-03-22 16:00,,,,CS_MSOA,PT_Normal,,,,,mr5prq6pV0+vJrBH0MtEBw,,,,N,0,0,,,2012-07-16 15:22,2012-07-16 15:22,admin,admin
465,151062,5776,24206,6944,1,0,N,N,N,CP_Drtn,TT_Task,DT_FixedDUR2,RV_OK,TK_NotStart,4229ELP380,"Fire fighting, Safety equipment & escape route layout-Construction",,976,0,80,0,0,0,80,0,0,0,,,,2013-01-21 08:00,2013-02-03 16:00,,2012-07-19 08:00,2012-08-01 16:00,2012-07-19 08:00,2012-08-01 16:00,2012-07-19 08:00,2012-08-01 16:00,,2013-01-21 08:00,2013-02-03 16:00,,PT_Normal,,,,,zQZ3FHWLX0Gc90I98eXxEg,,,,N,0,0,,,2012-07-16 15:22,2012-07-16 15:22,admin,admin
466,151063,5776,24206,6944,1,100,N,N,N,CP_Drtn,TT_Task,DT_FixedDUR2,RV_OK,TK_Complete,4229ELP110,F& G cable routing -Approval,,,,0,0,0,0,40,0,0,0,,2012-01-01 08:00,2012-01-26 00:00,2013-01-20 08:00,2013-01-20 08:00,,2012-06-30 00:00,2012-06-30 00:00,,,2012-01-01 08:00,2012-01-05 16:00,,,,,PT_Normal,,,,,pCV6YftpBk6XTVULsTVa1g,,,,N,0,0,,,2012-07-16 15:22,2012-07-16 15:22,admin,admin
467,151064,5776,24206,6944,1,100,N,N,N,CP_Drtn,TT_Task,DT_FixedDUR2,RV_OK,TK_Complete,4229ELP260,F& G cable routing -Design,,,,0,0,0,0,80,0,0,0,,2012-01-29 00:00,2012-02-06 00:00,2013-02-18 08:00,2013-02-18 08:00,,2012-06-30 00:00,2012-06-30 00:00,,,2012-03-06 08:00,2012-03-19 16:00,,,,,PT_Normal,,,,,8eG/wH6vTEieYbZeM0VSjQ,,,,N,0,0,,,2012-07-16 15:22,2012-07-16 15:22,admin,admin
468,151065,5776,24206,6944,1,0,N,N,N,CP_Drtn,TT_Task,DT_FixedDUR2,RV_OK,TK_NotStart,4229ELP390,F& G cable routing -Construction,,976,0,80,0,0,0,80,0,0,0,,,,2013-01-28 08:00,2013-02-10 16:00,,2012-07-26 08:00,2012-08-08 16:00,2012-07-26 08:00,2012-08-08 16:00,2012-07-26 08:00,2012-08-08 16:00,,2013-01-28 08:00,2013-02-10 16:00,,PT_Normal,,,,,yId25EcwIkyckcQpw0QH0A,,,,N,0,0,,,2012-07-16 15:22,2012-07-16 15:22,admin,admin
469,151066,5776,24206,6944,1,100,N,N,N,CP_Drtn,TT_Task,DT_FixedDUR2,RV_OK,TK_Complete,4229ELP40,Hazardous area classification schedule-IFA,,,,0,0,0,0,24,0,0,0,,2011-11-10 00:00,2011-11-13 00:00,2013-02-11 08:00,2013-02-11 08:00,,2012-06-30 00:00,2012-06-30 00:00,,,2011-12-18 08:00,2011-12-20 16:00,,,,,PT_Normal,,,,,rnVOqjit8UOazcr/9mp0CA,,,,N,0,0,,,2012-07-16 15:22,2012-07-16 15:22,admin,admin
470,151067,5776,24206,6944,1,100,N,N,N,CP_Drtn,TT_Task,DT_FixedDUR2,RV_OK,TK_Complete,4229ELP150,Hazardous area classification schedule-IFD,,,,0,0,0,0,24,0,0,0,,2011-11-20 00:00,2011-11-23 00:00,2013-02-18 08:00,2013-02-18 08:00,,2012-06-30 00:00,2012-06-30 00:00,,,2012-01-09 08:00,2012-01-11 16:00,,,,,PT_Normal,,,,,DjkVq4KMCUKUy8fhLe8SoQ,,,,N,0,0,,,2012-07-16 15:22,2012-07-16 15:22,admin,admin
471,151068,5776,24206,6944,1,0,N,N,N,CP_Drtn,TT_Task,DT_FixedDUR2,RV_OK,TK_NotStart,4229ELP370,Hazardous area classification schedule-IFC,,992,0,24,0,0,0,24,0,0,0,,,,2013-01-23 08:00,2013-01-27 16:00,,2012-07-19 08:00,2012-07-23 16:00,2012-07-19 08:00,2012-07-23 16:00,2012-07-19 08:00,2012-07-23 16:00,,2013-01-23 08:00,2013-01-27 16:00,,PT_Normal,,,,,N24KXkrUnUmgmKGO+YlyKQ,,,,N,0,0,,,2012-07-16 15:22,2012-07-16 15:22,admin,admin
472,151069,5776,24206,6944,1,100,N,N,N,CP_Drtn,TT_Task,DT_FixedDUR2,RV_OK,TK_Complete,4229ELP450,F& G cable list -Approval,,,,0,0,0,0,40,0,0,0,2012-01-09 00:00,2012-01-09 08:00,2012-01-19 00:00,2013-02-18 08:00,2013-02-18 08:00,,2012-06-30 00:00,2012-06-30 00:00,,,2012-01-09 08:00,2012-01-15 16:00,,,,CS_MSOA,PT_Normal,,,,,HO2R2bKf10qkkma8lvtwGw,,,,N,0,0,,,2012-07-16 15:22,2012-07-16 15:22,admin,admin
473,151070,5776,24206,6944,1,100,N,N,N,CP_Drtn,TT_Task,DT_FixedDUR2,RV_OK,TK_Complete,4229ELP480,Interconnection wiring diagram-Approval,,,,0,0,0,0,40,0,0,0,,2012-01-04 08:00,2012-02-01 00:00,2013-02-18 08:00,2013-02-18 08:00,,2012-06-30 00:00,2012-06-30 00:00,,,2012-01-04 08:00,2012-01-10 16:00,,,,,PT_Normal,,,,,Pq77KhHFU0+sTRDKONU22Q,,,,N,0,0,,,2012-07-16 15:22,2012-07-16 15:22,admin,admin
474,151071,5776,24206,6944,1,100,N,N,N,CP_Drtn,TT_Task,DT_FixedDUR2,RV_OK,TK_Complete,4229ELP490,Interconnection wiring diagram-Design,,,,0,0,0,0,80,0,0,0,,2012-03-15 00:00,2012-03-20 00:00,2013-02-18 08:00,2013-02-18 08:00,,2012-06-30 00:00,2012-06-30 00:00,,,2012-04-01 08:00,2012-04-12 16:00,,,,,PT_Normal,,,,,gz98muO9uE6lc2p1AHTgcQ,,,,N,0,0,,,2012-07-16 15:22,2012-07-16 15:22,admin,admin
475,151072,5776,24207,6944,1,0,N,N,N,CP_Drtn,TT_Task,DT_FixedDUR2,RV_OK,TK_Active,4229ELP580,V.P.R for fire  & Gas detection,,1096,1096,112,0,0,0,280,0,0,0,,2012-06-10 00:00,,2013-02-05 08:00,2013-02-24 16:00,,2012-07-15 08:00,2012-08-01 16:00,2012-07-15 08:00,2012-08-01 16:00,2012-08-12 08:00,2012-10-04 16:00,,2013-02-05 08:00,2013-02-24 16:00,,PT_Normal,,,,,BBM7NCqebU+eHoJf489x+A,FUD2dy+nUkWc4VQGU8Fo/w,,,N,0,0,,,2012-07-16 15:22,2012-07-16 15:22,admin,admin
476,151073,5776,24207,6944,1,100,N,N,N,CP_Drtn,TT_Task,DT_FixedDUR2,RV_OK,TK_Complete,4229ELP590,MRQ for life saving equioment,,,,0,0,0,0,40,0,0,0,,2011-12-29 00:00,2012-01-02 16:00,2013-02-24 16:00,2013-02-24 16:00,,2012-06-30 00:00,2012-06-30 00:00,,,2012-01-01 08:00,2012-01-05 16:00,,,,,PT_Normal,,,,,XXVkQBF4G0apYnbm6pF/YQ,ZarfSMY5fUiYAgPPzTZXNw,,,N,0,0,,,2012-07-16 15:22,2012-07-16 15:22,admin,admin
477,151074,5776,24207,6944,1,100,N,N,N,CP_Drtn,TT_Task,DT_FixedDUR2,RV_OK,TK_Complete,4229ELP600,T.E.R for life saving equipment,,,,0,0,0,0,120,0,0,0,,2012-02-15 00:00,2012-05-15 00:00,2013-02-24 16:00,2013-02-24 16:00,,2012-06-30 00:00,2012-06-30 00:00,,,2012-03-04 08:00,2012-03-22 16:00,,,,,PT_Normal,,,,,zpKnNeJcIkevbiCSsHVwPQ,OB2BdTMxnk6owJhgDyBB4w,,,N,0,0,,,2012-07-16 15:22,2012-07-16 15:22,admin,admin
478,151075,5776,24207,6944,1,100,N,N,N,CP_Drtn,TT_Task,DT_FixedDUR2,RV_OK,TK_Complete,4229ELP610,MRP for life saving equipment,,,,0,0,0,0,40,0,0,0,,2012-05-15 00:00,2012-05-15 00:00,2013-02-24 16:00,2013-02-24 16:00,,2012-06-30 00:00,2012-06-30 00:00,,,2012-06-18 08:00,2012-06-24 16:00,,,,,PT_Normal,,,,,FV31XgwHzEKsQ1bqt9cN4A,KKpGjp0KxUWDHbPmNRucRw,,,N,0,0,,,2012-07-16 15:22,2012-07-16 15:22,admin,admin
479,151076,5776,24207,6944,1,100,N,N,N,CP_Drtn,TT_Task,DT_FixedDUR2,RV_OK,TK_Complete,4229ELP620,V.P.R for life saving equipment,,,,0,0,0,0,240,0,0,0,,2012-05-15 00:00,2012-05-15 00:00,2013-02-24 16:00,2013-02-24 16:00,,2012-06-30 00:00,2012-06-30 00:00,,,2012-07-08 08:00,2012-08-16 16:00,,,,,PT_Normal,,,,,HAja8qfg1kivz0eTEGjTXA,FUD2dy+nUkWc4VQGU8Fo/w,,,N,0,0,,,2012-07-16 15:22,2012-07-16 15:22,admin,admin
480,151077,5776,24207,6944,1,100,N,N,N,CP_Drtn,TT_Task,DT_FixedDUR2,RV_OK,TK_Complete,4229ELP60,MRQ for fire fighting system,,,,0,0,0,0,64,0,0,0,,2011-11-21 00:00,2011-11-22 00:00,2012-09-30 08:00,2012-09-30 08:00,,2012-06-30 00:00,2012-06-30 00:00,,,2011-12-04 08:00,2011-12-13 16:00,,,,,PT_Normal,,,,,zMUraJAhNk2ZFP0eA9trCw,,,,N,0,0,,,2012-07-16 15:22,2012-07-16 15:22,admin,admin
481,151078,5776,24207,6944,1,100,N,N,N,CP_Drtn,TT_Task,DT_FixedDUR2,RV_OK,TK_Complete,4229ELP170,T.E.R for fire fighting system,,,,0,0,0,0,160,0,0,0,2012-04-03 00:00,2012-04-03 08:00,2012-05-29 00:00,2012-09-30 08:00,2012-09-30 08:00,,2012-06-30 00:00,2012-06-30 00:00,,,2012-04-03 08:00,2012-04-30 16:00,,,,CS_MSOA,PT_Normal,,,,,mrt5uZCV00etwkKT4uSyFw,,,,N,0,0,,,2012-07-16 15:22,2012-07-16 15:22,admin,admin
482,151079,5776,24207,6944,1,0,N,N,N,CP_Drtn,TT_Task,DT_FixedDUR2,RV_OK,TK_Active,4229ELP330,MRP for fire fighting system,,480,0,0,0,0,0,40,0,0,0,,2012-06-25 00:00,,2012-10-04 16:00,2012-10-04 16:00,2012-07-03 16:00,2012-07-08 08:00,2012-07-08 08:00,2012-07-08 08:00,2012-07-08 08:00,2012-07-25 08:00,2012-07-31 16:00,,2012-10-04 16:00,2012-10-04 16:00,,PT_Normal,,,,,OB2PAFE5DkCtS8MT6wj7qg,,,,N,0,0,,,2012-07-16 15:22,2012-07-16 15:22,admin,admin
483,151080,5776,24207,6944,1,0,N,N,N,CP_Drtn,TT_Task,DT_FixedDUR2,RV_OK,TK_NotStart,4229ELP400,V.P.R for fire fighting system,,768,480,240,0,0,0,240,0,0,0,,,,2013-01-14 08:00,2013-02-24 16:00,,2012-08-26 08:00,2012-10-04 16:00,2012-08-26 08:00,2012-10-04 16:00,2012-08-26 08:00,2012-10-04 16:00,,2013-01-14 08:00,2013-02-24 16:00,,PT_Normal,,,,,HTw4Rx4GJkmE8d10Hg0D6Q,,,,N,0,0,,,2012-07-16 15:22,2012-07-16 15:22,admin,admin
484,151081,5776,24207,6944,1,100,N,N,N,CP_Drtn,TT_Task,DT_FixedDUR2,RV_OK,TK_Complete,4229ELP550,MRQ for fire  & Gas detection,,,,0,0,0,0,16,0,0,0,,2011-11-28 00:00,2012-01-01 16:00,2013-02-24 16:00,2013-02-24 16:00,,2012-06-30 00:00,2012-06-30 00:00,,,2011-12-08 08:00,2011-12-11 16:00,,,,,PT_Normal,,,,,lsBTeSrBO0KaSv0lsmujDw,ZarfSMY5fUiYAgPPzTZXNw,,,N,0,0,,,2012-07-16 15:22,2012-07-16 15:22,admin,admin
485,151082,5776,24207,6944,1,100,N,N,N,CP_Drtn,TT_Task,DT_FixedDUR2,RV_OK,TK_Complete,4229ELP560,T.E.R for fire  & Gas detection,,,,0,0,0,0,120,0,0,0,,2012-02-27 00:00,2012-05-03 16:00,2012-12-20 08:00,2012-12-20 08:00,,2012-06-30 00:00,2012-06-30 00:00,,,2012-03-20 08:00,2012-04-09 16:00,,,,,PT_Normal,,,,,EOOE64zp2UOqdagi2hvsHw,OB2BdTMxnk6owJhgDyBB4w,,,N,0,0,,,2012-07-16 15:22,2012-07-16 15:22,admin,admin
486,151083,5776,24207,6944,1,100,N,N,N,CP_Drtn,TT_Task,DT_FixedDUR2,RV_OK,TK_Complete,4229ELP570,MRP for fire  & Gas detection,,,,0,0,0,0,40,0,0,0,,2012-05-28 00:00,2012-05-29 00:00,2012-12-20 08:00,2012-12-20 08:00,,2012-06-30 00:00,2012-06-30 00:00,,,2012-06-03 08:00,2012-06-07 16:00,,,,,PT_Normal,,,,,vqMV3rj2r0qIkqjsZlXMzA,KKpGjp0KxUWDHbPmNRucRw,,,N,0,0,,,2012-07-16 15:22,2012-07-16 15:22,admin,admin
487,151084,5776,24197,6944,1,100,N,N,N,CP_Drtn,TT_Task,DT_FixedDUR2,RV_OK,TK_Complete,4229EPR140,Shutdown & control philosophy -Final,,,,0,0,0,0,80,0,0,0,,2011-12-26 00:00,2012-05-13 00:00,2013-02-24 16:00,2013-02-24 16:00,,2012-06-30 00:00,2012-06-30 00:00,,,2011-12-08 08:00,2011-12-21 16:00,,,,,PT_Normal,,,,,6MvMEHEQjEOtbjEOHniNRw,,,,N,0,0,,,2012-07-16 15:22,2012-07-16 15:22,admin,admin
488,151085,5776,24197,6944,1,0,N,N,N,CP_Drtn,TT_Task,DT_FixedDUR2,RV_OK,TK_NotStart,4229EPR210,"Commissioning ,Pre-commissioning & operating philosophy-IFA",,1064,0,80,0,0,0,80,0,0,0,,,,2013-01-23 08:00,2013-02-05 16:00,,2012-07-08 08:00,2012-07-19 16:00,2012-07-08 08:00,2012-07-19 16:00,2012-07-08 08:00,2012-07-19 16:00,,2013-01-23 08:00,2013-02-05 16:00,,PT_Normal,,,,,cKT0sF21F0C9D63ghgMnNQ,,,,N,0,0,,,2012-07-16 15:22,2012-07-16 15:22,admin,admin
489,151086,5776,24197,6944,1,0,N,N,N,CP_Drtn,TT_Task,DT_FixedDUR2,RV_OK,TK_NotStart,4229EPR230,"Commissioning ,Pre-commissioning & operating philosophy-Final",,1064,776,64,0,0,0,64,0,0,0,,,,2013-02-13 08:00,2013-02-24 16:00,,2012-07-29 08:00,2012-08-07 16:00,2012-07-29 08:00,2012-08-07 16:00,2012-07-29 08:00,2012-08-07 16:00,,2013-02-13 08:00,2013-02-24 16:00,,PT_Normal,,,,,XeXofG8Xo0CVGuygviLCBg,,,,N,0,0,,,2012-07-16 15:22,2012-07-16 15:22,admin,admin
490,151087,5776,24197,6944,1,100,N,N,N,CP_Drtn,TT_Task,DT_FixedDUR2,RV_OK,TK_Complete,4229EPR110,Flow assurance report-Final,,,,0,0,0,0,40,0,0,0,,2011-11-24 08:00,2011-11-30 16:00,2013-02-24 16:00,2013-02-24 16:00,,2012-06-30 00:00,2012-06-30 00:00,,,2011-11-24 08:00,2011-11-30 16:00,,,,,PT_Normal,,,,,y1N/1piM70qsxzIAljxDdA,,,,N,0,0,,,2012-07-16 15:22,2012-07-16 15:22,admin,admin
491,151088,5776,24197,6944,1,100,N,N,N,CP_Drtn,TT_Task,DT_FixedDUR2,RV_OK,TK_Complete,4229EPR30,Flow assurance report-Approval,,,,0,0,0,0,160,0,0,0,,2011-09-26 08:00,2011-11-03 00:00,2013-02-24 16:00,2013-02-24 16:00,,2012-06-30 00:00,2012-06-30 00:00,,,2011-09-26 08:00,2011-10-24 16:00,,,,,PT_Normal,,,,,/GkuXmeyDUu1TmfIW07cYg,,,,N,0,0,,,2012-07-16 15:22,2012-07-16 15:22,admin,admin
492,151089,5776,24197,6944,1,100,N,N,N,CP_Drtn,TT_Task,DT_FixedDUR2,RV_OK,TK_Complete,4229EPR220,Process simulation final report,,,,0,0,0,0,80,0,0,0,,2011-11-21 00:00,2011-11-21 00:00,2013-02-24 16:00,2013-02-24 16:00,,2012-06-30 00:00,2012-06-30 00:00,,,2011-11-24 08:00,2011-12-07 16:00,,,,,PT_Normal,,,,,ybumL5oFOk26Q3YTiVIUyA,,,,N,0,0,,,2012-07-16 15:22,2012-07-16 15:22,admin,admin
493,151090,5776,24197,6944,1,100,N,N,N,CP_Drtn,TT_Task,DT_FixedDUR2,RV_OK,TK_Complete,4229EPR260,Process simulation report-Approval,,,,0,0,0,0,64,0,0,0,,2011-10-31 08:00,2011-11-21 00:00,2013-02-24 16:00,2013-02-24 16:00,,2012-06-30 00:00,2012-06-30 00:00,,,2011-10-31 08:00,2011-11-16 16:00,,,,,PT_Normal,,,,,uGky1sb9UEG14YDz8uCMGg,,,,N,0,0,,,2012-07-16 15:22,2012-07-16 15:22,admin,admin
494,151091,5776,24197,6944,1,100,N,N,N,CP_Drtn,TT_Task,DT_FixedDUR2,RV_OK,TK_Complete,4229EPR100,Shutdown & control philosophy -Approval,,,,0,0,0,0,64,0,0,0,,2011-10-26 00:00,2011-11-23 00:00,2013-02-24 16:00,2013-02-24 16:00,,2012-06-30 00:00,2012-06-30 00:00,,,2011-10-30 08:00,2011-11-15 16:00,,,,,PT_Normal,,,,,nM3IX1CYuUygc7IdEJddXA,,,,N,0,0,,,2012-07-16 15:22,2012-07-16 15:22,admin,admin
495,151092,5776,24197,6944,1,100,N,N,N,CP_Drtn,TT_Task,DT_FixedDUR2,RV_OK,TK_Complete,4229EPR50,Process simulation,,,,0,0,0,0,80,0,0,0,,2011-08-25 08:00,2011-09-11 16:00,2012-07-29 08:00,2012-07-29 08:00,,2012-06-30 00:00,2012-06-30 00:00,,,2011-08-25 08:00,2011-09-11 16:00,,,,,PT_Normal,,,,,0zEzYj0FM0CcLTUfpVWTYw,9K5lbSWWSU+ZW7VGbG9JcQ,,,N,0,0,,,2012-07-16 15:22,2012-07-16 15:22,admin,admin
496,151093,5776,24210,6944,1,0,N,N,N,CP_Drtn,TT_Task,DT_FixedDUR2,RV_OK,TK_Active,4229EPR250,V.P.R for chemical injection,,1168,104,48,0,0,0,400,0,0,0,,2012-04-01 00:00,,2013-02-11 08:00,2013-02-18 16:00,,2012-07-08 08:00,2012-07-15 16:00,2012-07-08 08:00,2012-07-15 16:00,2012-05-20 08:00,2012-07-26 16:00,,2013-02-11 08:00,2013-02-18 16:00,,PT_Normal,,,,,qtfMuN/uEkKEsxvlF8L+ow,,,,N,0,0,,,2012-07-16 15:22,2012-07-16 15:22,admin,admin
497,151094,5776,24210,6944,1,0,N,N,N,CP_Drtn,TT_Task,DT_FixedDUR2,RV_OK,TK_Active,4229EPR240,V.P.R for P.S.V,,968,104,280,0,0,0,320,0,0,0,,2012-04-17 00:00,,2013-01-07 08:00,2013-02-24 16:00,,2012-07-08 08:00,2012-08-30 16:00,2012-07-08 08:00,2012-08-30 16:00,2012-05-17 08:00,2012-07-11 16:00,,2013-01-07 08:00,2013-02-24 16:00,,PT_Normal,,,,,lNsNX09TP06BwGGSNuCykw,,,,N,0,0,,,2012-07-16 15:22,2012-07-16 15:22,admin,admin
498,151095,5776,24210,6944,1,100,N,N,N,CP_Drtn,TT_Task,DT_FixedDUR2,RV_OK,TK_Complete,4229EPR70,T.E.R for Chemical injection,,,,0,0,0,0,160,0,0,0,,2011-09-19 08:00,2011-11-24 00:00,2012-07-29 08:00,2012-07-29 08:00,,2012-06-30 00:00,2012-06-30 00:00,,,2011-09-19 08:00,2011-10-17 16:00,,,,,PT_Normal,,,,,Xb1HgN6o8UaZPvK4FkrR4w,,,,N,0,0,,,2012-07-16 15:22,2012-07-16 15:22,admin,admin
499,151096,5776,24210,6944,1,100,N,N,N,CP_Drtn,TT_Task,DT_FixedDUR2,RV_OK,TK_Complete,4229EPR150,MRP for Chemical injection,,,,0,0,0,0,24,0,0,0,,2012-03-25 00:00,2012-04-05 00:00,2012-07-29 08:00,2012-07-29 08:00,,2012-06-30 00:00,2012-06-30 00:00,,,2012-03-21 08:00,2012-03-25 16:00,,,,,PT_Normal,,,,,cbuK27YuSUqvHkw5JksYNA,,,,N,0,0,,,2012-07-16 15:22,2012-07-16 15:22,admin,admin
500,151097,5776,24210,6944,1,100,N,N,N,CP_Drtn,TT_Task,DT_FixedDUR2,RV_OK,TK_Complete,4229EPR160,T.E.R for PSV,,,,0,0,0,0,160,0,0,0,,2011-11-17 00:00,2012-01-31 00:00,2012-07-29 08:00,2012-07-29 08:00,,2012-06-30 00:00,2012-06-30 00:00,,,2011-11-16 08:00,2011-12-13 16:00,,,,,PT_Normal,,,,,n8uYIXanTE6iCrqDf9WZng,QZSem8n3HEqSrXo4nZ4rrA,,,N,0,0,,,2012-07-16 15:22,2012-07-16 15:22,admin,admin
501,151098,5776,24210,6944,1,100,N,N,N,CP_Drtn,TT_Task,DT_FixedDUR2,RV_OK,TK_Complete,4229EPR170,MRP for PSV,,,,0,0,0,0,40,0,0,0,,2012-04-05 00:00,2012-04-09 00:00,2012-07-29 08:00,2012-07-29 08:00,,2012-06-30 00:00,2012-06-30 00:00,,,2012-04-09 08:00,2012-04-15 16:00,,,,,PT_Normal,,,,,0t5Q9BJQEUSbWV7+JMtsXg,ulMsewoMhEiApbF+oxOLEA,,,N,0,0,,,2012-07-16 15:22,2012-07-16 15:22,admin,admin
502,151099,5776,24210,6944,1,100,N,N,N,CP_Drtn,TT_Task,DT_FixedDUR2,RV_OK,TK_Complete,4229EPR60,Issue MRQ for PSV,,,,0,0,0,0,40,0,0,0,,2011-10-09 08:00,2011-10-19 00:00,2012-07-29 08:00,2012-07-29 08:00,,2012-06-30 00:00,2012-06-30 00:00,,,2011-10-09 08:00,2011-10-13 16:00,,,,,PT_Normal,,,,,cFkbztltKUe+gOeJr6szXA,oARo+yhXM0mbfyeEpyVYrw,,,N,0,0,,,2012-07-16 15:22,2012-07-16 15:22,admin,admin
503,151100,5776,24210,6944,1,100,N,N,N,CP_Drtn,TT_Task,DT_FixedDUR2,RV_OK,TK_Complete,4229EPR10,Issue MRQ for Chemical injection,,,,0,0,0,0,56,0,0,0,,2011-08-16 08:00,2011-08-24 16:00,2012-07-29 08:00,2012-07-29 08:00,,2012-06-30 00:00,2012-06-30 00:00,,,2011-08-16 08:00,2011-08-24 16:00,,,,,PT_Normal,,,,,ggA+e/ZGaEC7Sbn9bLvL5w,,,,N,0,0,,,2012-07-16 15:22,2012-07-16 15:22,admin,admin
504,151101,5776,24210,6944,1,100,N,N,N,CP_Drtn,TT_Task,DT_FixedDUR2,RV_OK,TK_Complete,4229EPR310,RE-ISSUE T.E.R for Chemical injection,,,,0,0,0,0,120,0,0,0,,2012-01-01 08:00,2012-02-21 00:00,2012-07-29 08:00,2012-07-29 08:00,,2012-06-30 00:00,2012-06-30 00:00,,,2012-01-01 08:00,2012-01-19 16:00,,,,,PT_Normal,,,,,rI2rxud110WPlNTRZobaNA,,,,N,0,0,,,2012-07-16 15:22,2012-07-16 15:22,admin,admin
505,151102,5776,24199,6944,1,100,N,N,N,CP_Drtn,TT_Task,DT_FixedDUR2,RV_OK,TK_Complete,4229EPR90,C&E -Approval,,,,0,0,0,0,64,0,0,0,,2011-10-26 00:00,2011-11-23 16:00,2013-01-09 08:00,2013-01-09 08:00,,2012-06-30 00:00,2012-06-30 00:00,,,2011-10-30 08:00,2011-11-15 16:00,,,,,PT_Normal,,,,,JxxdHw0ChkWCkmTIc0maXw,,,,N,0,0,,,2012-07-16 15:22,2012-07-16 15:22,admin,admin
506,151103,5776,24199,6944,1,100,N,N,N,CP_Drtn,TT_Task,DT_FixedDUR2,RV_OK,TK_Complete,4229EPR130,C&E -Design,,,,0,0,0,0,64,0,0,0,,2011-12-01 00:00,2011-12-11 08:00,2013-01-09 08:00,2013-01-09 08:00,,2012-06-30 00:00,2012-06-30 00:00,,,2011-12-18 08:00,2011-12-27 16:00,,,,,PT_Normal,,,,,5MCMFr9ya02eE/crfe5mig,,,,N,0,0,,,2012-07-16 15:22,2012-07-16 15:22,admin,admin
507,151104,5776,24199,6944,1,0,N,N,N,CP_Drtn,TT_Task,DT_FixedDUR2,RV_OK,TK_NotStart,4229EPR200,C&E -Construction,,1080,0,40,0,0,0,40,0,0,0,,,,2013-01-27 08:00,2013-01-31 16:00,,2012-07-08 08:00,2012-07-12 16:00,2012-07-08 08:00,2012-07-12 16:00,2012-07-08 08:00,2012-07-12 16:00,,2013-01-27 08:00,2013-01-31 16:00,,PT_Normal,,,,,4BBxjLCw+EuI3l16vATYbw,,,,N,0,0,,,2012-07-16 15:22,2012-07-16 15:22,admin,admin
508,151105,5776,24199,6944,1,100,N,N,N,CP_Drtn,TT_Task,DT_FixedDUR2,RV_OK,TK_Complete,4229EPR270,GUPCO approval on PFD's & material balance,,,,0,0,0,0,80,0,0,0,,2011-09-29 08:00,2011-10-24 00:00,2012-07-31 08:00,2012-07-31 08:00,,2012-06-30 00:00,2012-06-30 00:00,,,2011-09-29 08:00,2011-10-13 16:00,,,,,PT_Normal,,,,,CA3UlsPoiEea+NCL8rA6Kw,,,,N,0,0,,,2012-07-16 15:22,2012-07-16 15:22,admin,admin
509,151106,5776,24199,6944,1,100,N,N,N,CP_Drtn,TT_Task,DT_FixedDUR2,RV_OK,TK_Complete,4229EPR280,GUPCO approval on P&ID'S / Equipment list,,,,0,0,0,0,80,0,0,0,,2011-10-24 00:00,2011-11-22 00:00,2012-10-04 08:00,2012-10-04 08:00,,2012-06-30 00:00,2012-06-30 00:00,,,2011-10-30 08:00,2011-11-17 16:00,,,,,PT_Normal,,,,,atgdYAhPEk63H/Z2JdW2Fw,1xx29x7gQw6UEWuqC1JfgA,,,N,0,0,,,2012-07-16 15:22,2012-07-16 15:22,admin,admin
510,151107,5776,24199,6944,1,100,N,N,N,CP_Drtn,TT_Task,DT_FixedDUR2,RV_OK,TK_Complete,4229EPR290,GUPCO approval on cause & effect,,,,0,0,0,0,80,0,0,0,,2011-11-24 00:00,2011-12-01 00:00,2013-01-09 08:00,2013-01-09 08:00,,2012-06-30 00:00,2012-06-30 00:00,,,2011-11-03 08:00,2011-11-23 16:00,,,,,PT_Normal,,,,,OB72BiIXEk24JdffRqdC3Q,,,,N,0,0,,,2012-07-16 15:22,2012-07-16 15:22,admin,admin
511,151108,5776,24199,6944,1,100,N,N,N,CP_Drtn,TT_Task,DT_FixedDUR2,RV_OK,TK_Complete,4229EPR20,Isuue PFD's / UFD's & material balance -Approval,,,,0,0,0,0,104,0,0,0,,2011-09-12 08:00,2011-09-27 00:00,2012-07-29 08:00,2012-07-29 08:00,,2012-06-30 00:00,2012-06-30 00:00,,,2011-09-12 08:00,2011-09-28 16:00,,,,,PT_Normal,,,,,OLA4VZOmBkaeAqZFuntXhQ,4+V64hr8QGaVcGgwUXQVsA,,,N,0,0,,,2012-07-16 15:22,2012-07-16 15:22,admin,admin
512,151109,5776,24199,6944,1,100,N,N,N,CP_Drtn,TT_Task,DT_FixedDUR2,RV_OK,TK_Complete,4229EPR40,Issue P&ID'S / Equipment list-Approval,,,,0,0,0,0,80,0,0,0,,2011-09-28 00:00,2011-10-25 00:00,2012-07-31 08:00,2012-07-31 08:00,,2012-06-30 00:00,2012-06-30 00:00,,,2011-09-28 08:00,2011-10-12 16:00,,,,,PT_Normal,,,,,A1M1Bmkr/UyE3NTxoso/Uw,bW1BefXsQ8qWdnGis0iRXg,,,N,0,0,,,2012-07-16 15:22,2012-07-16 15:22,admin,admin
513,151110,5776,24199,6944,1,100,N,N,N,CP_Drtn,TT_Task,DT_FixedDUR2,RV_OK,TK_Complete,4229EPR180,Issue P&ID'S / Equipment list-Construction,,,,0,0,0,0,120,0,0,0,,2012-06-03 00:00,2012-06-26 00:00,2012-08-05 08:00,2012-08-05 08:00,,2012-07-06 08:00,2012-07-06 08:00,,,2012-06-10 08:00,2012-06-28 16:00,,,,,PT_Normal,,,,,jbSadWA9Sk6nH8M7f1f1SQ,0PYR8E0oSzmyuW10YXrt8A,,,N,0,0,,,2012-07-16 15:22,2012-07-16 15:22,admin,admin
514,151111,5776,24199,6944,1,100,N,N,N,CP_Drtn,TT_Task,DT_FixedDUR2,RV_OK,TK_Complete,4229EPR80,Isuue PFD's / UFD's  & material balance -Design,,,,0,0,0,0,56,0,0,0,,2011-10-25 00:00,2011-10-30 16:00,2012-07-31 08:00,2012-07-31 08:00,,2012-06-30 00:00,2012-06-30 00:00,,,2011-10-16 08:00,2011-10-24 16:00,,,,,PT_Normal,,,,,wBoDDK0jakCGsyYSHYikaA,ikkxFXoDQymD74BDpjE9Cw,,,N,0,0,,,2012-07-16 15:22,2012-07-16 15:22,admin,admin
515,151112,5776,24199,6944,1,100,N,N,N,CP_Drtn,TT_Task,DT_FixedDUR2,RV_OK,TK_Complete,4229EPR120,Issue P&ID'S / Equipment list-Design,,,,0,0,0,0,80,0,0,0,,2011-11-23 00:00,2011-12-06 00:00,2012-10-04 08:00,2012-10-04 08:00,,2012-06-30 00:00,2012-06-30 00:00,,,2011-11-14 08:00,2011-11-27 16:00,,,,,PT_Normal,,,,,DHIrjnENkUemt9fxzYFehQ,y4kSxUB0QgmwrKOKSq45nQ,,,N,0,0,,,2012-07-16 15:22,2012-07-16 15:22,admin,admin
516,151113,5776,24199,6944,1,0,N,N,N,CP_Drtn,TT_Task,DT_FixedDUR2,RV_OK,TK_Active,4229EPR190,Isuue PFD's / UFD's & material balance -Construction,,1208,0,40,0,0,0,40,0,0,0,,2012-06-27 00:00,,2013-02-11 08:00,2013-02-17 16:00,,2012-07-01 08:00,2012-07-05 16:00,2012-07-01 08:00,2012-07-05 16:00,2012-07-03 08:00,2012-07-09 16:00,,2013-02-11 08:00,2013-02-17 16:00,,PT_Normal,,,,,XBGlDTMDj0WiSEx30VB8tA,,,,N,0,0,,,2012-07-16 15:22,2012-07-16 15:22,admin,admin
517,151114,5776,24199,6944,1,100,N,N,N,CP_Drtn,TT_Task,DT_FixedDUR2,RV_OK,TK_Complete,4229EPR320,Issue P&ID'S implementing HAZOP,,,,0,0,0,0,80,0,0,0,,2012-02-12 00:00,2012-03-12 00:00,2013-02-24 16:00,2013-02-24 16:00,,2012-06-30 00:00,2012-06-30 00:00,,,2012-03-18 08:00,2012-03-29 16:00,,,,,PT_Normal,,,,,YX4573BK7kWgMAlMgjBK2A,,,,N,0,0,,,2012-07-16 15:22,2012-07-16 15:22,admin,admin
518,151115,5776,24200,6944,1,0,N,N,N,CP_Drtn,TT_Task,DT_FixedDUR2,RV_OK,TK_NotStart,4229EPI460,Issue ISO's -construction (Second batch)- Final MTO,,160,0,80,0,0,0,80,0,0,0,,,,2012-09-09 08:00,2012-09-20 16:00,2012-08-16 16:00,2012-08-05 08:00,2012-08-16 16:00,2012-08-05 08:00,2012-08-16 16:00,2012-08-05 08:00,2012-08-16 16:00,,2012-09-09 08:00,2012-09-20 16:00,,PT_Normal,,,,,iVDeFbWggECFMvR/zGiGoA,,,,N,0,0,,,2012-07-16 15:22,2012-07-16 15:22,admin,admin
519,151116,5776,24200,6944,1,100,N,N,N,CP_Drtn,TT_Task,DT_FixedDUR2,RV_OK,TK_Complete,4229EPI220,Issue plot plans-Design,,,,0,0,0,0,120,0,0,0,,2011-12-20 08:00,2012-01-05 16:00,2012-10-04 08:00,2012-10-04 08:00,,2012-06-30 00:00,2012-06-30 00:00,,,2011-12-20 08:00,2012-01-09 16:00,,,,,PT_Normal,,,,,9p74smTUB0OyLtHBv7CNrA,cr+Ze/sDR+mGSVpxpwrL0A,,,N,0,0,,,2012-07-16 15:22,2012-07-16 15:22,admin,admin
520,151117,5776,24200,6944,1,0,N,N,N,CP_Drtn,TT_Task,DT_FixedDUR2,RV_OK,TK_NotStart,4229EPI390,Issue plot plans-Construction,,160,0,72,0,0,0,72,0,0,0,,,,2012-08-05 08:00,2012-08-15 16:00,,2012-07-08 08:00,2012-07-18 16:00,2012-07-08 08:00,2012-07-18 16:00,2012-07-08 08:00,2012-07-18 16:00,,2012-08-05 08:00,2012-08-15 16:00,,PT_Normal,,,,,cPFCNhfmZ0yKGQa9UskAfw,FxwlrL7cRzuyVKm0cFtT9w,,,N,0,0,,,2012-07-16 15:22,2012-07-16 15:22,admin,admin
521,151118,5776,24200,6944,1,0,N,N,N,CP_Drtn,TT_Task,DT_FixedDUR2,RV_OK,TK_NotStart,4229EPI430,Issue ISO's -construction (first batch),,160,0,88,0,0,0,88,0,0,0,,,,2012-08-16 08:00,2012-09-06 16:00,2012-08-02 16:00,2012-07-19 08:00,2012-08-02 16:00,2012-07-19 08:00,2012-08-02 16:00,2012-07-19 08:00,2012-08-02 16:00,,2012-08-16 08:00,2012-09-06 16:00,,PT_Normal,,,,,8XSTUYdzg02V7SSznGq6GA,1kARNwTqSjCYW0jNvbH2rQ,,,N,0,0,,,2012-07-16 15:22,2012-07-16 15:22,admin,admin
522,151119,5776,24200,6944,1,100,N,N,N,CP_Drtn,TT_Task,DT_FixedDUR2,RV_OK,TK_Complete,4229EPI230,Issue GA's -Approval,,,,0,0,0,0,224,0,0,0,,2011-12-22 00:00,2012-01-17 16:00,2013-02-24 08:00,2013-02-24 08:00,,2012-06-30 00:00,2012-06-30 00:00,,,2012-01-01 08:00,2012-02-08 16:00,,,,,PT_Normal,,,,,1W38foQ8C0KS3KPUFTjpcg,,,,N,0,0,,,2012-07-16 15:22,2012-07-16 15:22,admin,admin
523,151120,5776,24200,6944,1,100,N,N,N,CP_Drtn,TT_Task,DT_FixedDUR2,RV_OK,TK_Complete,4229EPI280,Issue GA's -Design,,,,0,0,0,0,160,0,0,0,,2012-02-02 00:00,2012-02-16 00:00,2012-10-04 08:00,2012-10-04 08:00,,2012-06-30 00:00,2012-06-30 00:00,,,2012-01-29 08:00,2012-02-23 16:00,,,,,PT_Normal,,,,,6mx66Ey0z0WkdbNtpec45g,,,,N,0,0,,,2012-07-16 15:22,2012-07-16 15:22,admin,admin
524,151121,5776,24200,6944,1,0,N,N,N,CP_Drtn,TT_Task,DT_FixedDUR2,RV_OK,TK_NotStart,4229EPI500,Piping supports list / MTO -IFC,,928,0,80,0,0,0,80,0,0,0,,,,2013-02-04 08:00,2013-02-17 16:00,,2012-08-12 08:00,2012-08-30 16:00,2012-08-12 08:00,2012-08-30 16:00,2012-08-12 08:00,2012-08-30 16:00,,2013-02-04 08:00,2013-02-17 16:00,,PT_Normal,,,,,UEBF4wBr30eJ9kII53fLtQ,,,,N,0,0,,,2012-07-16 15:22,2012-07-16 15:22,admin,admin
525,151122,5776,24200,6944,1,100,N,N,N,CP_Drtn,TT_Task,DT_FixedDUR2,RV_OK,TK_Complete,4229EPI210,Line designation table -Approval,,,,0,0,0,0,48,0,0,0,,2011-10-24 00:00,2012-01-02 16:00,2013-02-24 16:00,2013-02-24 16:00,,2012-06-30 00:00,2012-06-30 00:00,,,2011-10-30 08:00,2011-11-13 16:00,,,,,PT_Normal,,,,,3tapQktZJkyUqvt/MrSrKg,,,,N,0,0,,,2012-07-16 15:22,2012-07-16 15:22,admin,admin
526,151123,5776,24200,6944,1,100,N,N,N,CP_Drtn,TT_Task,DT_FixedDUR2,RV_OK,TK_Complete,4229EPI110,Issue plot plans-Approval,,,,0,0,0,0,80,0,0,0,,2011-10-26 00:00,2011-11-21 00:00,2012-09-24 08:00,2012-09-24 08:00,,2012-06-30 00:00,2012-06-30 00:00,,,2011-12-04 08:00,2011-12-15 16:00,,,,,PT_Normal,,,,,G/YLEty8bEuvW9QNF6H/dg,ZsEQ0tICRLeOA9EICN0T6Q,,,N,0,0,,,2012-07-16 15:22,2012-07-16 15:22,admin,admin
527,151124,5776,24200,6944,1,100,N,N,N,CP_Drtn,TT_Task,DT_FixedDUR2,RV_OK,TK_Complete,4229EPI240,Line designation table -Design,,,,0,0,0,0,64,0,0,0,,2012-01-10 08:00,2012-01-24 00:00,2013-02-24 16:00,2013-02-24 16:00,,2012-06-30 00:00,2012-06-30 00:00,,,2012-01-10 08:00,2012-01-19 16:00,,,,,PT_Normal,,,,,PQ1lT7uj1UOYKhElVv7xIg,,,,N,0,0,,,2012-07-16 15:22,2012-07-16 15:22,admin,admin
528,151125,5776,24200,6944,1,0,N,N,N,CP_Drtn,TT_Task,DT_FixedDUR2,RV_OK,TK_NotStart,4229EPI380,Line designation table -Construction,,0,0,64,0,0,0,64,0,0,0,2012-07-01 08:00,,,2012-07-01 08:00,2012-07-10 16:00,,2012-07-01 08:00,2012-07-10 16:00,2012-07-01 08:00,2012-07-10 16:00,2012-07-01 08:00,2012-07-10 16:00,,2012-07-01 08:00,2012-07-10 16:00,CS_MSO,PT_Normal,,,,,Qzsp+htntEWdzNFwlWOJ+Q,,,,N,0,0,,,2012-07-16 15:22,2012-07-16 15:22,admin,admin
529,151126,5776,24200,6944,1,0,N,N,N,CP_Drtn,TT_Task,DT_FixedDUR2,RV_OK,TK_NotStart,4229EPI440,Hydrotest maps & loops- Construction,,1080,792,120,0,0,0,120,0,0,0,,,,2013-02-04 08:00,2013-02-24 16:00,,2012-07-16 08:00,2012-08-05 16:00,2012-07-16 08:00,2012-08-05 16:00,2012-07-16 08:00,2012-08-05 16:00,,2013-02-04 08:00,2013-02-24 16:00,,PT_Normal,,,,,hwihJg2upUiDWCuX1dlwrg,,,,N,0,0,,,2012-07-16 15:22,2012-07-16 15:22,admin,admin
530,151127,5776,24200,6944,1,0,N,N,N,CP_Drtn,TT_Task,DT_FixedDUR2,RV_OK,TK_NotStart,4229EPI490,Standard pipe supports -Construction,,976,688,40,0,0,0,40,0,0,0,,,,2013-02-18 08:00,2013-02-24 16:00,,2012-08-16 08:00,2012-08-29 16:00,2012-08-16 08:00,2012-08-29 16:00,2012-08-16 08:00,2012-08-29 16:00,,2013-02-18 08:00,2013-02-24 16:00,,PT_Normal,,,,,ySM6lSZqkkaLkoom3v0tXg,,,,N,0,0,,,2012-07-16 15:22,2012-07-16 15:22,admin,admin
531,151128,5776,24200,6944,1,100,N,N,N,CP_Drtn,TT_Task,DT_FixedDUR2,RV_OK,TK_Complete,4229EPI170,Piping & Valves classes - Approval (Deleted),,,,0,0,0,0,40,0,0,0,,2011-10-24 00:00,2011-12-06 00:00,2013-02-24 16:00,2013-02-24 16:00,,2012-06-30 00:00,2012-06-30 00:00,,,2011-10-30 08:00,2011-11-03 16:00,,,,,PT_Normal,,,,,jmrdUD27Rk29swx4nl+D/A,,,,N,0,0,,,2012-07-16 15:22,2012-07-16 15:22,admin,admin
532,151129,5776,24200,6944,1,0,N,N,N,CP_Drtn,TT_Task,DT_FixedDUR2,RV_OK,TK_NotStart,4229EPI400,Critical line list-Construction,,1144,856,80,0,0,0,80,0,0,0,,,,2013-02-11 08:00,2013-02-24 16:00,,2012-07-11 08:00,2012-07-24 16:00,2012-07-11 08:00,2012-07-24 16:00,2012-07-11 08:00,2012-07-24 16:00,,2013-02-11 08:00,2013-02-24 16:00,,PT_Normal,,,,,7xLsNIFznk2lDOPBRrI/TA,,,,N,0,0,,,2012-07-16 15:22,2012-07-16 15:22,admin,admin
533,151130,5776,24200,6944,1,100,N,N,N,CP_Drtn,TT_Task,DT_FixedDUR2,RV_OK,TK_Complete,4229EPI180,Piping & Valves classes - Design,,,,0,0,0,0,40,0,0,0,,2011-10-24 00:00,2011-12-06 00:00,2013-02-24 16:00,2013-02-24 16:00,,2012-06-30 00:00,2012-06-30 00:00,,,2011-12-08 08:00,2011-12-14 16:00,,,,,PT_Normal,,,,,6lUMOb0khk2N6uBpvzaWsA,,,,N,0,0,,,2012-07-16 15:22,2012-07-16 15:22,admin,admin
534,151131,5776,24200,6944,1,0,N,N,N,CP_Drtn,TT_Task,DT_FixedDUR2,RV_OK,TK_Active,4229EPI370,Piping & Valves classes - Construction,,1240,952,8,0,0,0,40,0,0,0,,2012-06-27 00:00,,2013-02-24 08:00,2013-02-24 16:00,,2012-07-08 08:00,2012-07-08 16:00,2012-07-08 08:00,2012-07-08 16:00,2012-07-08 08:00,2012-07-12 16:00,,2013-02-24 08:00,2013-02-24 16:00,,PT_Normal,,,,,KUe4msfwaEG2gHTa+lmzVQ,,,,N,0,0,,,2012-07-16 15:22,2012-07-16 15:22,admin,admin
535,151132,5776,24214,6944,1,100,N,N,N,CP_Drtn,TT_Task,DT_FixedDUR2,RV_OK,TK_Complete,4229EPI330,Additional piping bulk MRQ,,,,0,0,0,0,120,0,0,0,,2012-04-15 00:00,2012-05-16 00:00,2012-11-13 08:00,2012-11-13 08:00,,2012-06-30 00:00,2012-06-30 00:00,,,2012-04-29 08:00,2012-05-17 16:00,,,,,PT_Normal,,,,,0hyCfPczIEGqtPe2IV4/jA,,,,N,0,0,,,2012-07-16 15:22,2012-07-16 15:22,admin,admin
536,151133,5776,24214,6944,1,0,N,N,N,CP_Drtn,TT_Task,DT_FixedDUR2,RV_OK,TK_Active,4229EPI360,Additional piping bulk T.E.R,,696,0,8,0,0,0,160,0,0,0,,2012-06-14 00:00,,2012-11-13 08:00,2012-11-13 16:00,2012-07-01 16:00,2012-07-01 08:00,2012-07-01 16:00,2012-07-01 08:00,2012-07-01 16:00,2012-07-01 08:00,2012-07-26 16:00,,2012-11-13 08:00,2012-11-13 16:00,,PT_Normal,,,,,Cd0tK7PRjEq7pytjjFh0Lw,,,,N,0,0,,,2012-07-16 15:22,2012-07-16 15:22,admin,admin
537,151134,5776,24214,6944,1,0,N,N,N,CP_Drtn,TT_Task,DT_FixedDUR2,RV_OK,TK_NotStart,4229EPI450,Additional piping bulk MRP,,1008,0,40,0,0,0,40,0,0,0,,,,2013-02-07 08:00,2013-02-13 16:00,,2012-08-01 08:00,2012-08-07 16:00,2012-08-01 08:00,2012-08-07 16:00,2012-08-01 08:00,2012-08-07 16:00,,2013-02-07 08:00,2013-02-13 16:00,,PT_Normal,,,,,I6jqANEXrk+Ue1bUFawZ0A,,,,N,0,0,,,2012-07-16 15:22,2012-07-16 15:22,admin,admin
538,151135,5776,24214,6944,1,100,N,N,N,CP_Drtn,TT_Task,DT_FixedDUR2,RV_OK,TK_Complete,4229EPI190,"Issue MRQ for Gate, Globe & butterfly valves",,,,0,0,0,0,8,0,0,0,,2011-11-24 00:00,2011-12-08 00:00,2013-02-24 16:00,2013-02-24 16:00,,2012-06-30 00:00,2012-06-30 00:00,,,2012-04-29 08:00,2012-04-29 16:00,,,,,PT_Normal,,,,,SCB5I/o39Ue8JbQk8rhj1g,,,,N,0,0,,,2012-07-16 15:22,2012-07-16 15:22,admin,admin
539,151136,5776,24214,6944,1,100,N,N,N,CP_Drtn,TT_Task,DT_FixedDUR2,RV_OK,TK_Complete,4229EPI120,Issue MRQ for Piping bulk,,,,0,0,0,0,64,0,0,0,,2011-11-15 00:00,2011-11-24 00:00,2012-12-09 08:00,2012-12-09 08:00,,2012-06-30 00:00,2012-06-30 00:00,,,2011-12-04 08:00,2011-12-13 16:00,,,,,PT_Normal,,,,,+o2kxhTstkKHF0Uwm9gq+Q,oARo+yhXM0mbfyeEpyVYrw,,,N,0,0,,,2012-07-16 15:22,2012-07-16 15:22,admin,admin
540,151137,5776,24214,6944,1,100,N,N,N,CP_Drtn,TT_Task,DT_FixedDUR2,RV_OK,TK_Complete,4229EPI260,"T.E.R for Piping Gate, Globe & Butterfly valves",,,,0,0,0,0,160,0,0,0,2012-01-12 00:00,2012-01-12 08:00,2012-02-08 00:00,2012-07-29 08:00,2012-07-29 08:00,,2012-06-30 00:00,2012-06-30 00:00,,,2012-01-12 08:00,2012-02-09 16:00,,,,CS_MSOA,PT_Normal,,,,,p2GYtQHUek66PZXFvn743g,+adQvSlUzkOZha6HG7fiRA,,,N,0,0,,,2012-07-16 15:22,2012-07-16 15:22,admin,admin
541,151138,5776,24214,6944,1,100,N,N,N,CP_Drtn,TT_Task,DT_FixedDUR2,RV_OK,TK_Complete,4229EPI310,"MRP for Piping Gate, Globe & Butterfly valves",,,,0,0,0,0,40,0,0,0,,2012-04-08 00:00,2012-04-12 00:00,2012-07-29 08:00,2012-07-29 08:00,,2012-06-30 00:00,2012-06-30 00:00,,,2012-04-12 08:00,2012-04-18 16:00,,,,,PT_Normal,,,,,QcwVekryz0C+PZRh2eDglg,uCQ7t7XtkE2pu5tmschigw,,,N,0,0,,,2012-07-16 15:22,2012-07-16 15:22,admin,admin
542,151139,5776,24214,6944,1,100,N,N,N,CP_Drtn,TT_Task,DT_FixedDUR2,RV_OK,TK_Complete,4229EPI200,Issue MRQ for Ball valves,,,,0,0,0,0,40,0,0,0,,2011-11-24 00:00,2011-12-08 00:00,2012-11-20 08:00,2012-11-20 08:00,,2012-06-30 00:00,2012-06-30 00:00,,,2011-12-04 08:00,2011-12-08 16:00,,,,,PT_Normal,,,,,/b/EG9X+TU+vtPHbYlGsJA,fa+QQs2lrkWif6ZY5ZmI+Q,,,N,0,0,,,2012-07-16 15:22,2012-07-16 15:22,admin,admin
543,151140,5776,24214,6944,1,100,N,N,N,CP_Drtn,TT_Task,DT_FixedDUR2,RV_OK,TK_Complete,4229EPI100,Issue MRQ for L&R traps,,,,0,0,0,0,56,0,0,0,,2011-08-15 08:00,2011-08-23 16:00,2012-08-02 08:00,2012-08-02 08:00,,2012-06-30 00:00,2012-06-30 00:00,,,2011-08-15 08:00,2011-08-23 16:00,,,,,PT_Normal,,,,,yuGJT2PYZkifedzFEVngfw,,,,N,0,0,,,2012-07-16 15:22,2012-07-16 15:22,admin,admin
544,151141,5776,24214,6944,1,100,N,N,N,CP_Drtn,TT_Task,DT_FixedDUR2,RV_OK,TK_Complete,4229EPI160,T.E.R for L&R,,,,0,0,0,0,120,0,0,0,,2011-09-22 08:00,2011-12-04 00:00,2012-08-02 08:00,2012-08-02 08:00,,2012-06-30 00:00,2012-06-30 00:00,,,2011-09-22 08:00,2011-10-13 16:00,,,,,PT_Normal,,,,,rfGB6amJpEu4bCawgPffgg,ErUDIEAHkEWZWIjcmb+Ptg,,,N,0,0,,,2012-07-16 15:22,2012-07-16 15:22,admin,admin
545,151142,5776,24214,6944,1,100,N,N,N,CP_Drtn,TT_Task,DT_FixedDUR2,RV_OK,TK_Complete,4229EPI290,MRP for L&R,,,,0,0,0,0,40,0,0,0,,2012-02-09 00:00,2012-02-20 00:00,2012-08-02 08:00,2012-08-02 08:00,,2012-06-30 00:00,2012-06-30 00:00,,,2012-03-04 08:00,2012-03-08 16:00,,,,,PT_Normal,,,,,G0V4iGy1FUq1o73TsHoCDg,,,,N,0,0,,,2012-07-16 15:22,2012-07-16 15:22,admin,admin
546,151143,5776,24214,6944,1,0,N,N,N,CP_Drtn,TT_Task,DT_FixedDUR2,RV_OK,TK_Active,4229EPI420,V.P.R for launcher & receiver traps,,1120,136,160,0,0,0,640,0,0,0,,2012-03-27 00:00,,2013-01-28 08:00,2013-02-24 16:00,,2012-07-02 08:00,2012-07-29 16:00,2012-07-02 08:00,2012-07-29 16:00,2012-03-25 08:00,2012-07-12 16:00,,2013-01-28 08:00,2013-02-24 16:00,,PT_Normal,,,,,b825J6ohw0u5Jh+tHSoo1w,,,,N,0,0,,,2012-07-16 15:22,2012-07-16 15:22,admin,admin
547,151144,5776,24214,6944,1,100,N,N,N,CP_Drtn,TT_Task,DT_FixedDUR2,RV_OK,TK_Complete,4229EPI130,Thermal insulation specification,,,,0,0,0,0,40,0,0,0,,2011-11-21 00:00,2011-11-24 00:00,2013-02-24 16:00,2013-02-24 16:00,,2012-06-30 00:00,2012-06-30 00:00,,,2011-12-04 08:00,2011-12-08 16:00,,,,,PT_Normal,,,,,ELY+ov6U+EevdtLXC6QvJg,,,,N,0,0,,,2012-07-16 15:22,2012-07-16 15:22,admin,admin
548,151145,5776,24214,6944,1,100,N,N,N,CP_Drtn,TT_Task,DT_FixedDUR2,RV_OK,TK_Complete,4229EPI150,Piping fabrication and erection specification,,,,0,0,0,0,40,0,0,0,,2011-11-21 00:00,2011-11-27 00:00,2013-02-24 16:00,2013-02-24 16:00,,2012-06-30 00:00,2012-06-30 00:00,,,2011-12-04 08:00,2011-12-08 16:00,,,,,PT_Normal,,,,,dLrWe5GTHUChXGGRT5xDBA,,,,N,0,0,,,2012-07-16 15:22,2012-07-16 15:22,admin,admin
549,151146,5776,24214,6944,1,100,N,N,N,CP_Drtn,TT_Task,DT_FixedDUR2,RV_OK,TK_Complete,4229EPI140,Field test of piping specification.,,,,0,0,0,0,40,0,0,0,,2011-11-21 00:00,2011-11-24 00:00,2013-02-24 16:00,2013-02-24 16:00,,2012-06-30 00:00,2012-06-30 00:00,,,2011-12-11 08:00,2011-12-15 16:00,,,,,PT_Normal,,,,,AfEYKhiLi0+r8Ls1+sckqA,,,,N,0,0,,,2012-07-16 15:22,2012-07-16 15:22,admin,admin
550,151147,5776,24214,6944,1,100,N,N,N,CP_Drtn,TT_Task,DT_FixedDUR2,RV_OK,TK_Complete,4229EPI250,T.E.R for Piping bulk,,,,0,0,0,0,120,0,0,0,,2011-12-22 00:00,2012-01-26 00:00,2012-12-09 08:00,2012-12-09 08:00,,2012-06-30 00:00,2012-06-30 00:00,,,2011-12-13 08:00,2012-01-02 16:00,,,,,PT_Normal,,,,,8JmWWU7UqkCvLxwU69iqsw,QZSem8n3HEqSrXo4nZ4rrA,,,N,0,0,,,2012-07-16 15:22,2012-07-16 15:22,admin,admin
551,151148,5776,24214,6944,1,100,N,N,N,CP_Drtn,TT_Task,DT_FixedDUR2,RV_OK,TK_Complete,4229EPI300,MRP for Piping bulk,,,,0,0,0,0,40,0,0,0,,2012-03-19 00:00,2012-03-27 16:00,2012-12-09 08:00,2012-12-09 08:00,,2012-06-30 00:00,2012-06-30 00:00,,,2012-03-20 08:00,2012-03-26 16:00,,,,,PT_Normal,,,,,LViFh6+fRUm41fIYd/J3bQ,ulMsewoMhEiApbF+oxOLEA,,,N,0,0,,,2012-07-16 15:22,2012-07-16 15:22,admin,admin
552,151149,5776,24214,6944,1,100,N,N,N,CP_Drtn,TT_Task,DT_FixedDUR2,RV_OK,TK_Complete,4229EPI270,T.E.R for Piping Ball Valves,,,,0,0,0,0,168,0,0,0,,2012-01-12 00:00,2012-02-13 00:00,2012-11-20 08:00,2012-11-20 08:00,,2012-06-30 00:00,2012-06-30 00:00,,,2012-03-04 08:00,2012-04-01 16:00,,,,,PT_Normal,,,,,Ck+A1hFlNUSh0dv7Yk8pHQ,,,,N,0,0,,,2012-07-16 15:22,2012-07-16 15:22,admin,admin
553,151150,5776,24214,6944,1,100,N,N,N,CP_Drtn,TT_Task,DT_FixedDUR2,RV_OK,TK_Complete,4229EPI320,MRP for Piping Ball Valves,,,,0,0,0,0,88,0,0,0,,2012-04-08 00:00,2012-04-12 00:00,2012-11-20 08:00,2012-11-20 08:00,,2012-06-30 00:00,2012-06-30 00:00,,,2012-04-12 08:00,2012-04-26 16:00,,,,,PT_Normal,,,,,i05e9Z6mOEeO+UiNYMztnQ,,,,N,0,0,,,2012-07-16 15:22,2012-07-16 15:22,admin,admin
554,151151,5776,24202,6944,1,0,N,N,N,CP_Drtn,TT_Task,DT_FixedDUR2,RV_OK,TK_Active,4229EPI410,Stress analysis report,,1128,0,48,0,0,0,152,0,0,0,,2012-05-24 00:00,,2013-02-17 08:00,2013-02-24 16:00,2012-07-26 16:00,2012-07-19 08:00,2012-07-26 16:00,2012-07-19 08:00,2012-07-26 16:00,2012-07-03 08:00,2012-07-29 16:00,,2013-02-17 08:00,2013-02-24 16:00,,PT_Normal,,,,,e+XXJsWkMk2VdRKD7CAZSQ,,,,N,0,0,,,2012-07-16 15:22,2012-07-16 15:22,admin,admin
555,151152,5776,24208,6944,1,100,N,N,N,CP_Drtn,TT_Task,DT_FixedDUR2,RV_OK,TK_Complete,4229EME30,Motor load list IFA,,,,0,0,0,0,40,0,0,0,,2011-10-24 00:00,2011-11-16 00:00,2013-02-11 08:00,2013-02-11 08:00,,2012-06-30 00:00,2012-06-30 00:00,,,2011-10-13 08:00,2011-10-19 16:00,,,,,PT_Normal,,,,,O0aJfefJukWJZsZduKVkyA,,,,N,0,0,,,2012-07-16 15:22,2012-07-16 15:22,admin,admin
556,151153,5776,24208,6944,1,0,N,N,N,CP_Drtn,TT_Task,DT_FixedDUR2,RV_OK,TK_NotStart,4229EME70,Final Motor load list,,1112,0,16,0,0,0,16,0,0,0,,,,2013-01-31 08:00,2013-02-03 16:00,,2012-07-08 08:00,2012-07-09 16:00,2012-07-08 08:00,2012-07-09 16:00,2012-07-08 08:00,2012-07-09 16:00,,2013-01-31 08:00,2013-02-03 16:00,,PT_Normal,,,,,nE0rIWO5h0irMS0HbmnzkA,,,,N,0,0,,,2012-07-16 15:22,2012-07-16 15:22,admin,admin
557,151154,5776,24208,6944,1,100,N,N,N,CP_Drtn,TT_Task,DT_FixedDUR2,RV_OK,TK_Complete,4229EME20,Material selection Guide IFA,,,,0,0,0,0,112,0,0,0,,2011-09-25 08:00,2011-10-27 00:00,2013-02-24 16:00,2013-02-24 16:00,,2012-06-30 00:00,2012-06-30 00:00,,,2011-09-25 08:00,2011-10-13 16:00,,,,,PT_Normal,,,,,6BBOAHNtNEWOSdCMufQc1A,fS2yCILzQ1+s4v+Esy3IrA,,,N,0,0,,,2012-07-16 15:22,2012-07-16 15:22,admin,admin
558,151155,5776,24208,6944,1,100,N,N,N,CP_Drtn,TT_Task,DT_FixedDUR2,RV_OK,TK_Complete,4229EME40,Material selection Guide IFD,,,,0,0,0,0,40,0,0,0,2012-01-17 08:00,2012-01-17 08:00,2012-01-22 16:00,2013-02-24 16:00,2013-02-24 16:00,,2012-06-30 00:00,2012-06-30 00:00,,,2012-01-17 08:00,2012-01-23 16:00,,,,CS_MSO,PT_Normal,,,,,1jl1sivdS0Cg0SKy39q82Q,,,,N,0,0,,,2012-07-16 15:22,2012-07-16 15:22,admin,admin
559,151156,5776,24208,6944,1,0,N,N,N,CP_Drtn,TT_Task,DT_FixedDUR2,RV_OK,TK_NotStart,4229EME210,Material Selection Guide IFF,,1208,920,40,0,0,0,40,0,0,0,,,,2013-02-18 08:00,2013-02-24 16:00,,2012-07-08 08:00,2012-07-12 16:00,2012-07-08 08:00,2012-07-12 16:00,2012-07-08 08:00,2012-07-12 16:00,,2013-02-18 08:00,2013-02-24 16:00,,PT_Normal,,,,,QQTJd8hlr0KuBbq2Uutpng,,,,N,0,0,,,2012-07-16 15:22,2012-07-16 15:22,admin,admin
560,151157,5776,24218,6944,1,100,N,N,N,CP_Drtn,TT_Task,DT_FixedDUR2,RV_OK,TK_Complete,4229EME50,Material handling study IFA,,,,0,0,0,0,80,0,0,0,,2011-11-30 00:00,2012-01-08 00:00,2013-02-24 16:00,2013-02-24 16:00,,2012-06-30 00:00,2012-06-30 00:00,,,2011-12-04 08:00,2011-12-15 16:00,,,,,PT_Normal,,,,,jAsML3KyV0aY2hmwNSrzGg,,,,N,0,0,,,2012-07-16 15:22,2012-07-16 15:22,admin,admin
561,151158,5776,24218,6944,1,100,N,N,N,CP_Drtn,TT_Task,DT_FixedDUR2,RV_OK,TK_Complete,4229EME90,Final Material handling study,,,,0,0,0,0,48,0,0,0,,2012-01-29 08:00,2012-04-04 00:00,2013-02-24 16:00,2013-02-24 16:00,,2012-06-30 00:00,2012-06-30 00:00,,,2012-01-29 08:00,2012-02-05 16:00,,,,,PT_Normal,,,,,NAdOG/+f8U2qif+DQzm8Fg,,,,N,0,0,,,2012-07-16 15:22,2012-07-16 15:22,admin,admin
562,151159,5776,24218,6944,1,100,N,N,N,CP_Drtn,TT_Task,DT_FixedDUR2,RV_OK,TK_Complete,4229EME80,Material Selection philosophy report-Approval,,,,0,0,0,0,80,0,0,0,,2011-11-30 00:00,2012-01-29 00:00,2013-02-24 16:00,2013-02-24 16:00,,2012-06-30 00:00,2012-06-30 00:00,,,2011-12-18 08:00,2011-12-29 16:00,,,,,PT_Normal,,,,,tUgS6rCX6keVaN7i+uQCcQ,,,,N,0,0,,,2012-07-16 15:22,2012-07-16 15:22,admin,admin
563,151160,5776,24218,6944,1,100,N,N,N,CP_Drtn,TT_Task,DT_FixedDUR2,RV_OK,TK_Complete,4229EME110,Material Selection philosophy report-Final,,,,0,0,0,0,80,0,0,0,,2012-03-04 08:00,2012-03-15 16:00,2013-02-24 16:00,2013-02-24 16:00,,2012-06-30 00:00,2012-06-30 00:00,,,2012-03-04 08:00,2012-03-15 16:00,,,,,PT_Normal,,,,,aqYRwLnjzUiHdFyDPJhq3Q,,,,N,0,0,,,2012-07-16 15:22,2012-07-16 15:22,admin,admin
564,151161,5776,24201,6944,1,100,N,N,N,CP_Drtn,TT_Task,DT_FixedDUR2,RV_OK,TK_Complete,4229EME170,MRQ for Progressive Cavity Pump,,,,0,0,0,0,40,0,0,0,,2012-03-07 00:00,2012-03-13 00:00,2012-08-05 08:00,2012-08-05 08:00,,2012-06-30 00:00,2012-06-30 00:00,,,2012-04-29 08:00,2012-05-03 16:00,,,,,PT_Normal,,,,,kZdOfX+720Wtun4B8zfJBg,,,,N,0,0,,,2012-07-16 15:22,2012-07-16 15:22,admin,admin
565,151162,5776,24201,6944,1,0,N,N,N,CP_Drtn,TT_Task,DT_FixedDUR2,RV_OK,TK_NotStart,4229EME190,V.P.R for Progressive Cavity pump,,448,448,800,0,0,0,800,0,0,0,,,,2012-10-01 08:00,2013-02-24 16:00,,2012-07-08 08:00,2012-12-06 16:00,2012-07-08 08:00,2012-12-06 16:00,2012-07-08 08:00,2012-12-06 16:00,,2012-10-01 08:00,2013-02-24 16:00,,PT_Normal,,,,,4EpytpAgpU+/wxJHKg+4wA,,,,N,0,0,,,2012-07-16 15:22,2012-07-16 15:22,admin,admin
566,151163,5776,24201,6944,1,0,N,N,N,CP_Drtn,TT_Task,DT_FixedDUR2,RV_OK,TK_NotStart,4229EME200,MRP for Progressive Cavity pump,,1128,0,40,0,0,0,40,0,0,0,,,,2013-02-04 08:00,2013-02-10 16:00,,2012-07-08 08:00,2012-07-12 16:00,2012-07-08 08:00,2012-07-12 16:00,2012-07-08 08:00,2012-07-12 16:00,,2013-02-04 08:00,2013-02-10 16:00,,PT_Normal,,,,,qy1ZGV7ZB0OZdA3ExEmixA,,,,N,0,0,,,2012-07-16 15:22,2012-07-16 15:22,admin,admin
567,151164,5776,24201,6944,1,100,N,N,N,CP_Drtn,TT_Task,DT_FixedDUR2,RV_OK,TK_Complete,4229EME180,T.E.R. for Progressive cavity pump,,,,0,0,0,0,240,0,0,0,,2012-04-29 00:00,2012-06-12 00:00,2012-08-05 08:00,2012-08-05 08:00,,2012-06-30 00:00,2012-06-30 00:00,,,2012-05-02 08:00,2012-06-12 16:00,,,,,PT_Normal,,,,,pep9w0508EWoXrfWzi8pSw,,,,N,0,0,,,2012-07-16 15:22,2012-07-16 15:22,admin,admin
568,151165,5776,24201,6944,1,100,N,N,N,CP_Drtn,TT_Task,DT_FixedDUR2,RV_OK,TK_Complete,4229EME120,V.P.R for cathodic protection,,,,0,0,0,0,360,0,0,0,,2012-03-27 00:00,2012-05-22 00:00,2013-02-11 08:00,2013-02-11 08:00,,2012-06-30 00:00,2012-06-30 00:00,,,2012-04-08 08:00,2012-06-07 16:00,,,,,PT_Normal,,,,,TvYIWEOwO0SAwR4cYRUTqQ,,,,N,0,0,,,2012-07-16 15:22,2012-07-16 15:22,admin,admin
569,151166,5776,24201,6944,1,100,N,N,N,CP_Drtn,TT_Task,DT_FixedDUR2,RV_OK,TK_Complete,4229EME130,Data sheets for corrosion inhibitor pump-Purchase,,,,0,0,0,0,24,0,0,0,,2012-03-25 00:00,2012-04-04 00:00,2013-02-24 16:00,2013-02-24 16:00,,2012-06-30 00:00,2012-06-30 00:00,,,2012-04-01 08:00,2012-04-03 16:00,,,,,PT_Normal,,,,,i9iRlzk1BESFHZhf3wv1ng,,,,N,0,0,,,2012-07-16 15:22,2012-07-16 15:22,admin,admin
570,151167,5776,24201,6944,1,100,N,N,N,CP_Drtn,TT_Task,DT_FixedDUR2,RV_OK,TK_Complete,4229EME140,Data sheets for demulsifier injection pump-Purchase,,,,0,0,0,0,40,0,0,0,,2012-03-25 00:00,2012-03-27 00:00,2013-02-24 16:00,2013-02-24 16:00,,2012-06-30 00:00,2012-06-30 00:00,,,2012-04-05 08:00,2012-04-11 16:00,,,,,PT_Normal,,,,,eRLBX9FAjEy2/OZ41LEhyA,,,,N,0,0,,,2012-07-16 15:22,2012-07-16 15:22,admin,admin
571,151168,5776,24201,6944,1,100,N,N,N,CP_Drtn,TT_Task,DT_FixedDUR2,RV_OK,TK_Complete,4229EME150,Data sheets for scale inhibitor -Purchase,,,,0,0,0,0,40,0,0,0,,2012-03-25 00:00,2012-03-27 00:00,2013-02-24 16:00,2013-02-24 16:00,,2012-06-30 00:00,2012-06-30 00:00,,,2012-04-05 08:00,2012-04-11 16:00,,,,,PT_Normal,,,,,PSjyKQuBYEqVtzzwWc4gQw,,,,N,0,0,,,2012-07-16 15:22,2012-07-16 15:22,admin,admin
572,151169,5776,24201,6944,1,100,N,N,N,CP_Drtn,TT_Task,DT_FixedDUR2,RV_OK,TK_Complete,4229EME160,Specifications for positive displacement pumps,,,,0,0,0,0,40,0,0,0,,2012-03-25 00:00,2012-03-27 00:00,2013-02-24 16:00,2013-02-24 16:00,,2012-06-30 00:00,2012-06-30 00:00,,,2012-04-05 08:00,2012-04-11 16:00,,,,,PT_Normal,,,,,1l/t/PLkDkuM2IKxUva4Qw,,,,N,0,0,,,2012-07-16 15:22,2012-07-16 15:22,admin,admin
573,151170,5776,24201,6944,1,100,N,N,N,CP_Drtn,TT_Task,DT_FixedDUR2,RV_OK,TK_Complete,4229EME10,MRQ for cathodic protection,,,,0,0,0,0,120,0,0,0,,2011-09-28 08:00,2011-10-20 00:00,2013-02-11 08:00,2013-02-11 08:00,,2012-06-30 00:00,2012-06-30 00:00,,,2011-09-28 08:00,2011-10-19 16:00,,,,,PT_Normal,,,,,xlrf8SDCrEmX9uqVgf2AIw,,,,N,0,0,,,2012-07-16 15:22,2012-07-16 15:22,admin,admin
574,151171,5776,24201,6944,1,100,N,N,N,CP_Drtn,TT_Task,DT_FixedDUR2,RV_OK,TK_Complete,4229EME60,T.E.R for cathodic protection,,,,0,0,0,0,120,0,0,0,,2011-11-24 00:00,2011-12-27 00:00,2013-02-11 08:00,2013-02-11 08:00,,2012-06-30 00:00,2012-06-30 00:00,,,2011-12-04 08:00,2011-12-22 16:00,,,,,PT_Normal,,,,,Y953zEZeM0yNQ2gKgpIIBA,,,,N,0,0,,,2012-07-16 15:22,2012-07-16 15:22,admin,admin
575,151172,5776,24201,6944,1,100,N,N,N,CP_Drtn,TT_Task,DT_FixedDUR2,RV_OK,TK_Complete,4229EME100,MRP for cathodic protection,,,,0,0,0,0,40,0,0,0,,2012-02-26 00:00,2012-02-28 00:00,2013-02-11 08:00,2013-02-11 08:00,,2012-06-30 00:00,2012-06-30 00:00,,,2012-03-04 08:00,2012-03-08 16:00,,,,,PT_Normal,,,,,8d/24H0fN0SVeMNRopqZAA,,,,N,0,0,,,2012-07-16 15:22,2012-07-16 15:22,admin,admin
576,151173,5776,24222,6944,1,100,N,N,N,CP_Drtn,TT_Task,DT_FixedDUR2,RV_OK,TK_Complete,4229EOF410,Grating & handrails drawings-Construction,,,,0,0,0,0,120,0,0,0,,2012-01-10 00:00,2012-01-19 00:00,2013-02-24 16:00,2013-02-24 16:00,,2012-06-30 00:00,2012-06-30 00:00,,,2012-02-27 08:00,2012-03-18 16:00,,,,,PT_Normal,,,,,gS4itfSFVUmjE5iXw57DUQ,,,,N,0,0,,,2012-07-16 15:22,2012-07-16 15:22,admin,admin
577,151174,5776,24222,6944,1,0,N,N,N,CP_Drtn,TT_Task,DT_FixedDUR2,RV_OK,TK_NotStart,4229EOF580,Piping supports -Construction,,1048,760,40,0,0,0,40,0,0,0,,,,2013-02-18 08:00,2013-02-24 16:00,,2012-08-05 08:00,2012-08-09 16:00,2012-08-05 08:00,2012-08-09 16:00,2012-08-05 08:00,2012-08-09 16:00,,2013-02-18 08:00,2013-02-24 16:00,,PT_Normal,,,,,mTrbfipq50qhFuhoNJP+uQ,,,,N,0,0,,,2012-07-16 15:22,2012-07-16 15:22,admin,admin
578,151175,5776,24222,6944,1,0,N,N,N,CP_Drtn,TT_Task,DT_FixedDUR2,RV_OK,TK_NotStart,4229EOF590,Cable trays supports -Construction,,928,640,80,0,0,0,80,0,0,0,,,,2013-02-11 08:00,2013-02-24 16:00,,2012-08-26 08:00,2012-09-06 16:00,2012-08-26 08:00,2012-09-06 16:00,2012-08-26 08:00,2012-09-06 16:00,,2013-02-11 08:00,2013-02-24 16:00,,PT_Normal,,,,,SODKVOj/KkqJK9ztE2wWdA,,,,N,0,0,,,2012-07-16 15:22,2012-07-16 15:22,admin,admin
579,151176,5776,24222,6944,1,100,N,N,N,CP_Drtn,TT_Task,DT_FixedDUR2,RV_OK,TK_Complete,4229EOF200,Jacket appartenues Drawings-Approval,,,,0,0,0,0,160,0,0,0,,2011-12-14 08:00,2011-12-25 00:00,2013-02-24 16:00,2013-02-24 16:00,,2012-06-30 00:00,2012-06-30 00:00,,,2011-12-14 08:00,2012-01-10 16:00,,,,,PT_Normal,,,,,+KBfNWMfPUSv1jr/4H0l4Q,,,,N,0,0,,,2012-07-16 15:22,2012-07-16 15:22,admin,admin
580,151177,5776,24222,6944,1,100,N,N,N,CP_Drtn,TT_Task,DT_FixedDUR2,RV_OK,TK_Complete,4229EOF520,Jacket Appurtenances Drawings-Construction,,,,0,0,0,0,0,0,0,0,,2012-06-17 00:00,2012-06-26 00:00,2013-02-24 16:00,2013-02-24 16:00,,2012-06-30 00:00,2012-06-30 00:00,,,2012-07-01 08:00,2012-07-01 08:00,,,,,PT_Normal,,,,,9ckELyAfz0enbyxEV7lBoA,,,,N,0,0,,,2012-07-16 15:22,2012-07-16 15:22,admin,admin
581,151178,5776,24222,6944,1,100,N,N,N,CP_Drtn,TT_Task,DT_FixedDUR2,RV_OK,TK_Complete,4229EOF310,Grating & handrails drawings-Approval,,,,0,0,0,0,120,0,0,0,,2012-01-04 00:00,2012-01-08 00:00,2013-02-24 16:00,2013-02-24 16:00,,2012-06-30 00:00,2012-06-30 00:00,,,2012-01-30 08:00,2012-02-19 16:00,,,,,PT_Normal,,,,,mttOTEy8xUOcw82yJMr65w,,,,N,0,0,,,2012-07-16 15:22,2012-07-16 15:22,admin,admin
582,151179,5776,24222,6944,1,0,N,N,N,CP_Drtn,TT_Task,DT_FixedDUR2,RV_OK,TK_NotStart,4229EOF360,Piping supports -Approval,,1184,0,64,0,0,0,64,0,0,0,,,,2013-02-06 08:00,2013-02-17 16:00,,2012-07-01 08:00,2012-07-10 16:00,2012-07-01 08:00,2012-07-10 16:00,2012-07-01 08:00,2012-07-10 16:00,,2013-02-06 08:00,2013-02-17 16:00,,PT_Normal,,,,,+IQamu3xbkedM9Sx7TF+CQ,,,,N,0,0,,,2012-07-16 15:22,2012-07-16 15:22,admin,admin
583,151180,5776,24222,6944,1,100,N,N,N,CP_Drtn,TT_Task,DT_FixedDUR2,RV_OK,TK_Complete,4229EOF120,General drawings-Approval,,,,0,0,0,0,200,0,0,0,,2011-10-19 08:00,2011-11-22 00:00,2013-02-24 16:00,2013-02-24 16:00,,2012-06-30 00:00,2012-06-30 00:00,,,2011-10-19 08:00,2011-11-29 16:00,,,,,PT_Normal,,,,,ZDJ75xD2XkeauG6iUKOk8g,pHZmOGuMSlyGsG/c/oK2Fg,,,N,0,0,,,2012-07-16 15:22,2012-07-16 15:22,admin,admin
584,151181,5776,24222,6944,1,100,N,N,N,CP_Drtn,TT_Task,DT_FixedDUR2,RV_OK,TK_Complete,4229EOF270,General Drawings- Construction,,,,0,0,0,0,160,0,0,0,,2011-12-07 00:00,2011-12-29 00:00,2013-02-24 16:00,2013-02-24 16:00,,2012-06-30 00:00,2012-06-30 00:00,,,2012-01-01 08:00,2012-01-29 16:00,,,,,PT_Normal,,,,,LWY11VdoCkCMZ3D1HamSZA,,,,N,0,0,,,2012-07-16 15:22,2012-07-16 15:22,admin,admin
585,151182,5776,24222,6944,1,100,N,N,N,CP_Drtn,TT_Task,DT_FixedDUR2,RV_OK,TK_Complete,4229EOF130,Deck primary steel Drawings- Approval,,,,0,0,0,0,160,0,0,0,,2011-11-22 00:00,2011-12-29 00:00,2013-01-13 08:00,2013-01-13 08:00,,2012-06-30 00:00,2012-06-30 00:00,,,2011-12-04 08:00,2011-12-29 16:00,,,,,PT_Normal,,,,,TfI4ixql2UupA0BA6BPCfw,r1vh6DQ+T+Sw8D8Gqb1mPA,,,N,0,0,,,2012-07-16 15:22,2012-07-16 15:22,admin,admin
586,151183,5776,24222,6944,1,100,N,N,N,CP_Drtn,TT_Task,DT_FixedDUR2,RV_OK,TK_Complete,4229EOF10,Jacket primary steel  Drawings-Approval,,,,0,0,0,0,200,0,0,0,,2011-10-19 08:00,2011-11-22 00:00,2013-01-13 08:00,2013-01-13 08:00,,2012-06-30 00:00,2012-06-30 00:00,,,2011-10-19 08:00,2011-11-29 16:00,,,,,PT_Normal,,,,,p3hZTQ8B20equ45cNTmmnA,5t6WlUnKSuqJQ8zryJtE8g,,,N,0,0,,,2012-07-16 15:22,2012-07-16 15:22,admin,admin
587,151184,5776,24222,6944,1,100,N,N,N,CP_Drtn,TT_Task,DT_FixedDUR2,RV_OK,TK_Complete,4229EOF260,Jacket primary steel  Drawings- Construction,,,,0,0,0,0,160,0,0,0,,2011-12-15 00:00,2011-12-29 00:00,2013-02-24 16:00,2013-02-24 16:00,,2012-06-30 00:00,2012-06-30 00:00,,,2012-01-01 08:00,2012-01-29 16:00,,,,,PT_Normal,,,,,2x2P0crSGUupNdahoP7BJg,72Fq/cOZRx2mimvebPGxUw,,,N,0,0,,,2012-07-16 15:22,2012-07-16 15:22,admin,admin
588,151185,5776,24222,6944,1,0,N,N,N,CP_Drtn,TT_Task,DT_FixedDUR2,RV_OK,TK_Active,4229EOF550,Deck primary steel Drawings- Construction,,928,0,48,0,0,0,120,0,0,0,,2012-05-20 00:00,,2013-01-13 08:00,2013-01-20 16:00,2012-07-26 16:00,2012-07-19 08:00,2012-07-26 16:00,2012-07-19 08:00,2012-07-26 16:00,2012-06-18 08:00,2012-07-08 16:00,,2013-01-13 08:00,2013-01-20 16:00,,PT_Normal,,,,,4TH7KZGmhkKiCGlavAqnaQ,cKAHJrH+Ry+KoWBkOlxCOw,,,N,0,0,,,2012-07-16 15:22,2012-07-16 15:22,admin,admin
589,151186,5776,24222,6944,1,100,N,N,N,CP_Drtn,TT_Task,DT_FixedDUR2,RV_OK,TK_Complete,4229EOF290,Stairs drawings-Approval,,,,0,0,0,0,80,0,0,0,,2012-01-01 08:00,2012-02-20 00:00,2013-02-24 16:00,2013-02-24 16:00,,2012-06-30 00:00,2012-06-30 00:00,,,2012-01-01 08:00,2012-01-12 16:00,,,,,PT_Normal,,,,,oORCbJb+UEiutGfV4OoT9Q,,,,N,0,0,,,2012-07-16 15:22,2012-07-16 15:22,admin,admin
590,151187,5776,24222,6944,1,100,N,N,N,CP_Drtn,TT_Task,DT_FixedDUR2,RV_OK,TK_Complete,4229EOF390,Stairs drawings-Construction,,,,0,0,0,0,80,0,0,0,,2012-06-18 00:00,2012-06-24 00:00,2013-02-24 16:00,2013-02-24 16:00,,2012-07-18 16:00,2012-07-18 16:00,,,2012-07-29 08:00,2012-08-09 16:00,,,,,PT_Normal,,,,,O2Yn0h8i5EqmQ24iizX8rA,,,,N,0,0,,,2012-07-16 15:22,2012-07-16 15:22,admin,admin
591,151188,5776,24222,6944,1,0,N,N,N,CP_Drtn,TT_Task,DT_FixedDUR2,RV_OK,TK_NotStart,4229EOF600,Equipment fixation deatils-Construction,,1064,776,80,0,0,0,80,0,0,0,,,,2013-02-11 08:00,2013-02-24 16:00,,2012-07-25 08:00,2012-08-07 16:00,2012-07-25 08:00,2012-08-07 16:00,2012-07-25 08:00,2012-08-07 16:00,,2013-02-11 08:00,2013-02-24 16:00,,PT_Normal,,,,,NDsVLQ6WJkyijrsUfxyjbg,,,,N,0,0,,,2012-07-16 15:22,2012-07-16 15:22,admin,admin
592,151189,5776,24222,6944,1,0,N,N,N,CP_Drtn,TT_Task,DT_FixedDUR2,RV_OK,TK_Active,4229EOF280,Cable trays supports -Approval,,1080,0,88,0,0,0,96,0,0,0,2012-05-15 08:00,2012-01-29 00:00,,2013-01-20 08:00,2013-02-03 16:00,2012-07-15 16:00,2012-07-01 08:00,2012-07-15 16:00,2012-07-01 08:00,2012-07-15 16:00,2012-05-15 08:00,2012-05-30 16:00,,2013-01-20 08:00,2013-02-03 16:00,CS_MSO,PT_Normal,,,,,k7fAC64EikWb82ULR8A94Q,,,,N,0,0,,,2012-07-16 15:22,2012-07-16 15:22,admin,admin
593,151190,5776,24222,6944,1,100,N,N,N,CP_Drtn,TT_Task,DT_FixedDUR2,RV_OK,TK_Complete,4229EOF170,Jacket secondary steel  & piles Drawings-Approval,,,,0,0,0,0,120,0,0,0,,2011-11-23 00:00,2011-12-15 00:00,2013-02-24 16:00,2013-02-24 16:00,,2012-06-30 00:00,2012-06-30 00:00,,,2011-12-04 08:00,2011-12-22 16:00,,,,,PT_Normal,,,,,CS/+jn1WH0OFoyNHC8WK2g,,,,N,0,0,,,2012-07-16 15:22,2012-07-16 15:22,admin,admin
594,151191,5776,24222,6944,1,100,N,N,N,CP_Drtn,TT_Task,DT_FixedDUR2,RV_OK,TK_Complete,4229EOF230,Deck secondary steel Drawings- Approval,,,,0,0,0,0,160,0,0,0,,2011-12-14 08:00,2012-01-08 00:00,2013-02-24 16:00,2013-02-24 16:00,,2012-06-30 00:00,2012-06-30 00:00,,,2011-12-14 08:00,2012-01-10 16:00,,,,,PT_Normal,,,,,B5qWNjn4PEiDXWXybeXnwA,,,,N,0,0,,,2012-07-16 15:22,2012-07-16 15:22,admin,admin
595,151192,5776,24222,6944,1,100,N,N,N,CP_Drtn,TT_Task,DT_FixedDUR2,RV_OK,TK_Complete,4229EOF350,Jacket secondary steel  & piles Drawings- Construction,,,,0,0,0,0,120,0,0,0,,2012-01-15 00:00,2012-02-28 00:00,2013-02-24 16:00,2013-02-24 16:00,,2012-06-30 00:00,2012-06-30 00:00,,,2012-01-29 08:00,2012-02-16 16:00,,,,,PT_Normal,,,,,jNMSt0JKsU+eq80Q5uFqGg,,,,N,0,0,,,2012-07-16 15:22,2012-07-16 15:22,admin,admin
596,151193,5776,24222,6944,1,0,N,N,N,CP_Drtn,TT_Task,DT_FixedDUR2,RV_OK,TK_Active,4229EOF560,Deck secondary  steel Drawings- Construction,,928,0,120,0,0,0,120,0,0,0,,2012-05-20 00:00,,2013-01-21 08:00,2013-02-10 16:00,,2012-07-29 08:00,2012-08-16 16:00,2012-07-29 08:00,2012-08-16 16:00,2012-07-09 08:00,2012-07-29 16:00,,2013-01-21 08:00,2013-02-10 16:00,,PT_Normal,,,,,jXJQUuu+6kmJpgLOeY6wEg,,,,N,0,0,,,2012-07-16 15:22,2012-07-16 15:22,admin,admin
597,151194,5776,24204,6944,1,100,N,N,N,CP_Drtn,TT_Task,DT_FixedDUR2,RV_OK,TK_Complete,4229EOF340,Jacket lifting analysis design report-Final,,,,0,0,0,0,80,0,0,0,,2012-01-29 08:00,2012-02-09 00:00,2013-02-24 16:00,2013-02-24 16:00,,2012-06-30 00:00,2012-06-30 00:00,,,2012-01-29 08:00,2012-02-09 16:00,,,,,PT_Normal,,,,,Ggh0dapraky6pm3nmIp/cA,,,,N,0,0,,,2012-07-16 15:22,2012-07-16 15:22,admin,admin
598,151195,5776,24204,6944,1,100,N,N,N,CP_Drtn,TT_Task,DT_FixedDUR2,RV_OK,TK_Complete,4229EOF90,Jacket floatation & upending analysis report-Approval,,,,0,0,0,0,496,0,0,0,,2011-10-19 08:00,2012-01-31 00:00,2013-02-24 16:00,2013-02-24 16:00,,2012-06-30 00:00,2012-06-30 00:00,,,2011-10-19 08:00,2012-01-19 16:00,,,,,PT_Normal,,,,,+5OVconU2Eik3GHx2FEI/w,,,,N,0,0,,,2012-07-16 15:22,2012-07-16 15:22,admin,admin
599,151196,5776,24204,6944,1,100,N,N,N,CP_Drtn,TT_Task,DT_FixedDUR2,RV_OK,TK_Complete,4229EOF370,Jacket floatation & upending analysis report-Final,,,,0,0,0,0,80,0,0,0,,2012-02-13 00:00,2012-03-07 00:00,2013-02-24 16:00,2013-02-24 16:00,,2012-06-30 00:00,2012-06-30 00:00,,,2012-03-27 08:00,2012-04-09 16:00,,,,,PT_Normal,,,,,JKSD7RiMU0SpwPgtaxeNTQ,,,,N,0,0,,,2012-07-16 15:22,2012-07-16 15:22,admin,admin
600,151197,5776,24204,6944,1,100,N,N,N,CP_Drtn,TT_Task,DT_FixedDUR2,RV_OK,TK_Complete,4229EOF100,Jacket on-bottom stability report-Approval,,,,0,0,0,0,496,0,0,0,,2011-10-19 08:00,2012-01-31 00:00,2013-02-24 16:00,2013-02-24 16:00,,2012-06-30 00:00,2012-06-30 00:00,,,2011-10-19 08:00,2012-01-19 16:00,,,,,PT_Normal,,,,,wghhYAELREurlqIsoQN11w,,,,N,0,0,,,2012-07-16 15:22,2012-07-16 15:22,admin,admin
601,151198,5776,24204,6944,1,100,N,N,N,CP_Drtn,TT_Task,DT_FixedDUR2,RV_OK,TK_Complete,4229EOF380,Jacket on-bottom stability report-Final,,,,0,0,0,0,80,0,0,0,,2012-02-13 00:00,2012-02-26 00:00,2013-02-24 16:00,2013-02-24 16:00,,2012-06-30 00:00,2012-06-30 00:00,,,2012-03-29 08:00,2012-04-11 16:00,,,,,PT_Normal,,,,,rRQoCClBJE+xn+ie9Z2uog,,,,N,0,0,,,2012-07-16 15:22,2012-07-16 15:22,admin,admin
602,151199,5776,24204,6944,1,100,N,N,N,CP_Drtn,TT_Task,DT_FixedDUR2,RV_OK,TK_Complete,4229EOF110,Pile foundation design report-Approval,,,,0,0,0,0,648,0,0,0,,2011-10-19 08:00,2012-03-14 00:00,2013-02-24 16:00,2013-02-24 16:00,,2012-06-30 00:00,2012-06-30 00:00,,,2011-10-19 08:00,2012-02-16 16:00,,,,,PT_Normal,,,,,V6axim3xckOpS/M5MY7s4g,,,,N,0,0,,,2012-07-16 15:22,2012-07-16 15:22,admin,admin
603,151200,5776,24204,6944,1,100,N,N,N,CP_Drtn,TT_Task,DT_FixedDUR2,RV_OK,TK_Complete,4229EOF250,Pushover analysis design SOW,,,,0,0,0,0,144,0,0,0,2012-03-01 08:00,2011-12-15 00:00,2011-12-29 00:00,2013-02-24 16:00,2013-02-24 16:00,,2012-06-30 00:00,2012-06-30 00:00,,,2012-03-04 08:00,2012-03-27 16:00,,,,CS_MSO,PT_Normal,,,,,YfeUIs7JzUuwH3lInBNaXA,,,,N,0,0,,,2012-07-16 15:22,2012-07-16 15:22,admin,admin
604,151201,5776,24204,6944,1,0,N,N,N,CP_Drtn,TT_Task,DT_FixedDUR2,RV_OK,TK_NotStart,4229EOF470,Pile foundation design report-Final,,1048,760,80,0,0,0,80,0,0,0,,,,2013-02-11 08:00,2013-02-24 16:00,,2012-07-29 08:00,2012-08-09 16:00,2012-07-29 08:00,2012-08-09 16:00,2012-07-29 08:00,2012-08-09 16:00,,2013-02-11 08:00,2013-02-24 16:00,,PT_Normal,,,,,ihu9YCUvGE2mARPIiYtXsQ,,,,N,0,0,,,2012-07-16 15:22,2012-07-16 15:22,admin,admin
605,151202,5776,24204,6944,1,100,N,N,N,CP_Drtn,TT_Task,DT_FixedDUR2,RV_OK,TK_Complete,4229EOF480,Pushover analysis design T.E.R,,,,0,0,0,0,80,0,0,0,,2012-02-01 00:00,2012-03-04 16:00,2013-02-24 16:00,2013-02-24 16:00,,2012-06-30 00:00,2012-06-30 00:00,,,2012-05-03 08:00,2012-05-16 16:00,,,,,PT_Normal,,,,,3Gc9HHsUEUSvPThR9l4KAw,,,,N,0,0,,,2012-07-16 15:22,2012-07-16 15:22,admin,admin
606,151203,5776,24204,6944,1,100,N,N,N,CP_Drtn,TT_Task,DT_FixedDUR2,RV_OK,TK_Complete,4229EOF180,Jacket miscellaneous design report-Approval,,,,0,0,0,0,392,0,0,0,,2011-11-23 00:00,2012-02-09 00:00,2013-02-24 16:00,2013-02-24 16:00,,2012-06-30 00:00,2012-06-30 00:00,,,2011-12-04 08:00,2012-02-09 16:00,,,,,PT_Normal,,,,,2OqHy0I7QUy9IOGHLzPx2Q,,,,N,0,0,,,2012-07-16 15:22,2012-07-16 15:22,admin,admin
607,151204,5776,24204,6944,1,0,N,N,N,CP_Drtn,TT_Task,DT_FixedDUR2,RV_OK,TK_NotStart,4229EOF630,Jacket miscellaneous design report-Final,,928,640,80,0,0,0,80,0,0,0,,,,2013-02-11 08:00,2013-02-24 16:00,,2012-08-26 08:00,2012-09-06 16:00,2012-08-26 08:00,2012-09-06 16:00,2012-08-26 08:00,2012-09-06 16:00,,2013-02-11 08:00,2013-02-24 16:00,,PT_Normal,,,,,TcYNy5c9pEaeJGQDRz53Ug,,,,N,0,0,,,2012-07-16 15:22,2012-07-16 15:22,admin,admin
608,151205,5776,24204,6944,1,100,N,N,N,CP_Drtn,TT_Task,DT_FixedDUR2,RV_OK,TK_Complete,4229EOF190,Jacket weight control report -Approval,,,,0,0,0,0,64,0,0,0,,2011-12-14 00:00,2012-01-26 00:00,2013-02-24 16:00,2013-02-24 16:00,,2012-06-30 00:00,2012-06-30 00:00,,,2012-01-01 08:00,2012-01-10 16:00,,,,,PT_Normal,,,,,eQXi/OmjSUCsmZAE6x8QSg,,,,N,0,0,,,2012-07-16 15:22,2012-07-16 15:22,admin,admin
609,151206,5776,24204,6944,1,100,N,N,N,CP_Drtn,TT_Task,DT_FixedDUR2,RV_OK,TK_Complete,4229EOF300,Topside weight control report- Approval,,,,0,0,0,0,64,0,0,0,,2011-11-22 00:00,2012-01-31 00:00,2013-02-24 16:00,2013-02-24 16:00,,2012-06-30 00:00,2012-06-30 00:00,,,2012-01-18 08:00,2012-01-30 16:00,,,,,PT_Normal,,,,,97MhDenSrkCr29WEtkgb0A,,,,N,0,0,,,2012-07-16 15:22,2012-07-16 15:22,admin,admin
610,151207,5776,24204,6944,1,100,N,N,N,CP_Drtn,TT_Task,DT_FixedDUR2,RV_OK,TK_Complete,4229EOF430,Jacket weight control report -Final,,,,0,0,0,0,64,0,0,0,,2012-01-11 00:00,2012-02-09 00:00,2013-02-24 16:00,2013-02-24 16:00,,2012-06-30 00:00,2012-06-30 00:00,,,2012-03-25 08:00,2012-04-03 16:00,,,,,PT_Normal,,,,,SZEnnE0o+E6gjiCXCSYMXw,,,,N,0,0,,,2012-07-16 15:22,2012-07-16 15:22,admin,admin
611,151208,5776,24204,6944,1,0,N,N,N,CP_Drtn,TT_Task,DT_FixedDUR2,RV_OK,TK_Active,4229EOF610,Topside weight control report- Final,,1048,40,0,0,0,0,64,0,0,0,,2012-06-28 00:00,,2013-02-10 16:00,2013-02-10 16:00,,2012-07-29 08:00,2012-07-29 08:00,2012-07-29 08:00,2012-07-29 08:00,2012-08-26 08:00,2012-09-04 16:00,,2013-02-10 16:00,2013-02-10 16:00,,PT_Normal,,,,,IyZ7eGisUU++OrAtypRcjA,,,,N,0,0,,,2012-07-16 15:22,2012-07-16 15:22,admin,admin
612,151209,5776,24204,6944,1,0,N,N,N,CP_Drtn,TT_Task,DT_FixedDUR2,RV_OK,TK_NotStart,4229EOF570,Constructability study report,,1008,720,80,0,0,0,80,0,0,0,,,,2013-02-11 08:00,2013-02-24 16:00,,2012-08-05 08:00,2012-08-16 16:00,2012-08-05 08:00,2012-08-16 16:00,2012-08-05 08:00,2012-08-16 16:00,,2013-02-11 08:00,2013-02-24 16:00,,PT_Normal,,,,,QTdlljPG+UKGdQdLyAWgJA,,,,N,0,0,,,2012-07-16 15:22,2012-07-16 15:22,admin,admin
613,151210,5776,24204,6944,1,100,N,N,N,CP_Drtn,TT_Task,DT_FixedDUR2,RV_OK,TK_Complete,4229EOF20,In-place analysis design report-Approval,,,,0,0,0,0,576,0,0,0,,2011-10-19 08:00,2012-02-16 00:00,2013-02-11 08:00,2013-02-11 08:00,,2012-06-30 00:00,2012-06-30 00:00,,,2011-10-19 08:00,2012-02-05 16:00,,,,,PT_Normal,,,,,wwpqk2P1TkmZ99pwOIUyyg,,,,N,0,0,,,2012-07-16 15:22,2012-07-16 15:22,admin,admin
614,151211,5776,24204,6944,1,0,N,N,N,CP_Drtn,TT_Task,DT_FixedDUR2,RV_OK,TK_NotStart,4229EOF420,In-place analysis design report-Final,,1008,0,80,0,0,0,80,0,0,0,,,,2013-01-28 08:00,2013-02-10 16:00,2012-03-21 16:00,2012-07-22 08:00,2012-08-02 16:00,2012-07-22 08:00,2012-08-02 16:00,2012-07-22 08:00,2012-08-02 16:00,,2013-01-28 08:00,2013-02-10 16:00,,PT_Normal,,,,,7knNHCLCck+wDurdTliqUA,,,,N,0,0,,,2012-07-16 15:22,2012-07-16 15:22,admin,admin
615,151212,5776,24204,6944,1,100,N,N,N,CP_Drtn,TT_Task,DT_FixedDUR2,RV_OK,TK_Complete,4229EOF30,Earthquake analysis design report-Approval,,,,0,0,0,0,576,0,0,0,,2011-10-19 08:00,2012-02-28 00:00,2013-02-24 16:00,2013-02-24 16:00,,2012-06-30 00:00,2012-06-30 00:00,,,2011-10-19 08:00,2012-02-05 16:00,,,,,PT_Normal,,,,,0ZXXp3qKbEqCOo/TzMmONQ,,,,N,0,0,,,2012-07-16 15:22,2012-07-16 15:22,admin,admin
616,151213,5776,24204,6944,1,0,N,N,N,CP_Drtn,TT_Task,DT_FixedDUR2,RV_OK,TK_NotStart,4229EOF440,Earthquake analysis design report-Final,,1048,0,80,0,0,0,80,0,0,0,,,,2013-02-11 08:00,2013-02-24 16:00,2012-03-21 16:00,2012-07-29 08:00,2012-08-09 16:00,2012-07-29 08:00,2012-08-09 16:00,2012-07-29 08:00,2012-08-09 16:00,,2013-02-11 08:00,2013-02-24 16:00,,PT_Normal,,,,,w+DvXmi52kyO3L9jBuTeHQ,,,,N,0,0,,,2012-07-16 15:22,2012-07-16 15:22,admin,admin
617,151214,5776,24204,6944,1,100,N,N,N,CP_Drtn,TT_Task,DT_FixedDUR2,RV_OK,TK_Complete,4229EOF140,Deck loadout analysis report-Approval,,,,0,0,0,0,560,0,0,0,,2012-02-26 00:00,2012-02-26 00:00,2013-02-11 08:00,2013-02-11 08:00,,2012-06-30 00:00,2012-06-30 00:00,,,2011-10-27 08:00,2012-02-09 16:00,,,,,PT_Normal,,,,,XubY8Z1zwUy7t+WS636I0Q,,,,N,0,0,,,2012-07-16 15:22,2012-07-16 15:22,admin,admin
618,151215,5776,24204,6944,1,0,N,N,N,CP_Drtn,TT_Task,DT_FixedDUR2,RV_OK,TK_NotStart,4229EOF490,Deck loadout analysis report-Final,,1048,0,80,0,0,0,80,0,0,0,,,,2013-02-11 08:00,2013-02-24 16:00,2012-03-21 16:00,2012-07-29 08:00,2012-08-09 16:00,2012-07-29 08:00,2012-08-09 16:00,2012-07-29 08:00,2012-08-09 16:00,,2013-02-11 08:00,2013-02-24 16:00,,PT_Normal,,,,,lCFm8KiRyU+WlyqslWO3UA,,,,N,0,0,,,2012-07-16 15:22,2012-07-16 15:22,admin,admin
619,151216,5776,24204,6944,1,100,N,N,N,CP_Drtn,TT_Task,DT_FixedDUR2,RV_OK,TK_Complete,4229EOF150,Deck transportation analysis report-Approval,,,,0,0,0,0,560,0,0,0,,2011-10-27 08:00,2012-02-16 00:00,2013-02-11 08:00,2013-02-11 08:00,,2012-06-30 00:00,2012-06-30 00:00,,,2011-10-27 08:00,2012-02-09 16:00,,,,,PT_Normal,,,,,3HNyN33HVkaGhNaNBDGCbg,,,,N,0,0,,,2012-07-16 15:22,2012-07-16 15:22,admin,admin
620,151217,5776,24204,6944,1,0,N,N,N,CP_Drtn,TT_Task,DT_FixedDUR2,RV_OK,TK_NotStart,4229EOF500,Deck transportation analysis report-Final,,1088,0,80,0,0,0,80,0,0,0,,,,2013-02-11 08:00,2013-02-24 16:00,2012-03-21 16:00,2012-07-22 08:00,2012-08-02 16:00,2012-07-22 08:00,2012-08-02 16:00,2012-07-22 08:00,2012-08-02 16:00,,2013-02-11 08:00,2013-02-24 16:00,,PT_Normal,,,,,uay2yJZm0UGZc3pLBwo4sQ,,,,N,0,0,,,2012-07-16 15:22,2012-07-16 15:22,admin,admin
621,151218,5776,24204,6944,1,100,N,N,N,CP_Drtn,TT_Task,DT_FixedDUR2,RV_OK,TK_Complete,4229EOF160,Deck lifting analysis design report-Approval,,,,0,0,0,0,560,0,0,0,,2011-10-27 08:00,2012-03-08 16:00,2013-02-24 16:00,2013-02-24 16:00,,2012-06-30 00:00,2012-06-30 00:00,,,2011-10-27 08:00,2012-02-09 16:00,,,,,PT_Normal,,,,,P7QNtRDggEuqeZ7s/1Y8yw,,,,N,0,0,,,2012-07-16 15:22,2012-07-16 15:22,admin,admin
622,151219,5776,24204,6944,1,0,N,N,N,CP_Drtn,TT_Task,DT_FixedDUR2,RV_OK,TK_NotStart,4229EOF510,Deck lifting analysis design report-Final,,1088,800,80,0,0,0,80,0,0,0,,,,2013-02-11 08:00,2013-02-24 16:00,,2012-07-22 08:00,2012-08-02 16:00,2012-07-22 08:00,2012-08-02 16:00,2012-07-22 08:00,2012-08-02 16:00,,2013-02-11 08:00,2013-02-24 16:00,,PT_Normal,,,,,g6Qib8xBr0measxQ0pAdrQ,,,,N,0,0,,,2012-07-16 15:22,2012-07-16 15:22,admin,admin
623,151220,5776,24204,6944,1,0,N,N,N,CP_Drtn,TT_Task,DT_FixedDUR2,RV_OK,TK_Active,4229EOF240,Deck miscellaneous design report-Approval,,1184,0,0,0,0,0,440,0,0,0,,2011-12-14 00:00,,2013-02-24 16:00,2013-02-24 16:00,2012-03-29 16:00,2012-07-18 08:00,2012-07-18 08:00,2012-07-18 08:00,2012-07-18 08:00,2012-01-01 08:00,2012-03-18 16:00,,2013-02-24 16:00,2013-02-24 16:00,,PT_Normal,,,,,bnxMCRfHqUmDlYkXLyTRgw,,,,N,0,0,,,2012-07-16 15:22,2012-07-16 15:22,admin,admin
624,151221,5776,24204,6944,1,0,N,N,N,CP_Drtn,TT_Task,DT_FixedDUR2,RV_OK,TK_NotStart,4229EOF530,Deck miscellaneous design report-Final,,1048,760,80,0,0,0,80,0,0,0,,,,2013-02-11 08:00,2013-02-24 16:00,,2012-07-29 08:00,2012-08-09 16:00,2012-07-29 08:00,2012-08-09 16:00,2012-07-29 08:00,2012-08-09 16:00,,2013-02-11 08:00,2013-02-24 16:00,,PT_Normal,,,,,TB74e0vXEU2RCvfgYNjRBg,,,,N,0,0,,,2012-07-16 15:22,2012-07-16 15:22,admin,admin
625,151222,5776,24204,6944,1,100,N,N,N,CP_Drtn,TT_Task,DT_FixedDUR2,RV_OK,TK_Complete,4229EOF40,Fatigue analysis design report-Approval,,,,0,0,0,0,616,0,0,0,,2011-10-19 08:00,2012-02-09 00:00,2013-02-11 08:00,2013-02-11 08:00,,2012-06-30 00:00,2012-06-30 00:00,,,2011-10-19 08:00,2012-02-12 16:00,,,,,PT_Normal,,,,,XhUaGhBEQUKzknX+c5jVqA,,,,N,0,0,,,2012-07-16 15:22,2012-07-16 15:22,admin,admin
626,151223,5776,24204,6944,1,100,N,N,N,CP_Drtn,TT_Task,DT_FixedDUR2,RV_OK,TK_Complete,4229EOF450,Fatigue analysis design report-Final,,,,0,0,0,0,80,0,0,0,,2012-02-21 00:00,2012-03-08 16:00,2013-02-24 16:00,2013-02-24 16:00,,2012-06-30 00:00,2012-06-30 00:00,,,2012-04-02 08:00,2012-04-15 16:00,,,,,PT_Normal,,,,,73P5yxOmPU24T6NXQ3UlVg,,,,N,0,0,,,2012-07-16 15:22,2012-07-16 15:22,admin,admin
627,151224,5776,24204,6944,1,100,N,N,N,CP_Drtn,TT_Task,DT_FixedDUR2,RV_OK,TK_Complete,4229EOF50,Boat impact design analysis report-Approval,,,,0,0,0,0,616,0,0,0,,2011-10-19 08:00,2012-02-26 00:00,2013-02-24 16:00,2013-02-24 16:00,,2012-06-30 00:00,2012-06-30 00:00,,,2011-10-19 08:00,2012-02-12 16:00,,,,,PT_Normal,,,,,3Fis2AC110Gp+xhzmV6uYA,,,,N,0,0,,,2012-07-16 15:22,2012-07-16 15:22,admin,admin
628,151225,5776,24204,6944,1,100,N,N,N,CP_Drtn,TT_Task,DT_FixedDUR2,RV_OK,TK_Complete,4229EOF460,Boat impact design analysis report-Final,,,,0,0,0,0,80,0,0,0,,2012-03-11 08:00,2012-03-26 00:00,2013-02-24 16:00,2013-02-24 16:00,,2012-06-30 00:00,2012-06-30 00:00,,,2012-03-11 08:00,2012-03-22 16:00,,,,,PT_Normal,,,,,UKqetehtfkCUCVuB+uIaxA,,,,N,0,0,,,2012-07-16 15:22,2012-07-16 15:22,admin,admin
629,151226,5776,24204,6944,1,100,N,N,N,CP_Drtn,TT_Task,DT_FixedDUR2,RV_OK,TK_Complete,4229EOF60,Jacket loadout analysis design report-Approval,,,,0,0,0,0,416,0,0,0,,2011-10-19 08:00,2012-01-22 00:00,2013-02-24 16:00,2013-02-24 16:00,,2012-06-30 00:00,2012-06-30 00:00,,,2011-10-19 08:00,2012-01-05 16:00,,,,,PT_Normal,,,,,CDe9VQBQ9kSSCQ2pwj3b5w,,,,N,0,0,,,2012-07-16 15:22,2012-07-16 15:22,admin,admin
630,151227,5776,24204,6944,1,100,N,N,N,CP_Drtn,TT_Task,DT_FixedDUR2,RV_OK,TK_Complete,4229EOF320,Jacket loadout analysis design report-Final,,,,0,0,0,0,80,0,0,0,2012-01-30 00:00,2012-02-07 00:00,2012-02-09 00:00,2013-02-24 16:00,2013-02-24 16:00,,2012-06-30 00:00,2012-06-30 00:00,,,2012-03-04 08:00,2012-03-15 16:00,,,,CS_MSOA,PT_Normal,,,,,17oETsEkikuMRR3eMJIXYA,,,,N,0,0,,,2012-07-16 15:22,2012-07-16 15:22,admin,admin
631,151228,5776,24204,6944,1,100,N,N,N,CP_Drtn,TT_Task,DT_FixedDUR2,RV_OK,TK_Complete,4229EOF70,Jacket transportation analysis design report-Approval,,,,0,0,0,0,416,0,0,0,,2011-10-19 08:00,2012-01-22 00:00,2013-02-24 16:00,2013-02-24 16:00,,2012-06-30 00:00,2012-06-30 00:00,,,2011-10-19 08:00,2012-01-05 16:00,,,,,PT_Normal,,,,,8KjUWn7RkEuCe8cg1Ma0YA,,,,N,0,0,,,2012-07-16 15:22,2012-07-16 15:22,admin,admin
632,151229,5776,24204,6944,1,100,N,N,N,CP_Drtn,TT_Task,DT_FixedDUR2,RV_OK,TK_Complete,4229EOF80,Jacket lifting analysis design report-Approval,,,,0,0,0,0,416,0,0,0,,2011-10-19 08:00,2012-01-05 00:00,2013-02-24 16:00,2013-02-24 16:00,,2012-06-30 00:00,2012-06-30 00:00,,,2011-10-19 08:00,2012-01-05 16:00,,,,,PT_Normal,,,,,STv8E6XTjE69oGRH0EN3Cw,,,,N,0,0,,,2012-07-16 15:22,2012-07-16 15:22,admin,admin
633,151230,5776,24204,6944,1,100,N,N,N,CP_Drtn,TT_Task,DT_FixedDUR2,RV_OK,TK_Complete,4229EOF330,Jacket transportation analysis design report- Final,,,,0,0,0,0,80,0,0,0,,2012-02-07 00:00,2012-02-09 00:00,2013-02-24 16:00,2013-02-24 16:00,,2012-06-30 00:00,2012-06-30 00:00,,,2012-03-04 08:00,2012-03-15 16:00,,,,,PT_Normal,,,,,KTxQ+LDLwEuGN51Oedb1aA,,,,N,0,0,,,2012-07-16 15:22,2012-07-16 15:22,admin,admin
634,151231,5776,24205,6037,1,100,N,N,N,CP_Drtn,TT_Task,DT_FixedDUR2,RV_OK,TK_Complete,4229EOF210,Steel structure specification,,,,0,0,0,0,48,0,0,0,,2011-12-13 00:00,2011-12-20 16:00,2013-02-24 16:00,2013-02-24 16:00,,2012-06-30 00:00,2012-06-30 00:00,,,2011-12-14 16:00,2011-12-20 16:00,,,,,PT_Normal,,,,,YcYozLKZSUiwZ1ysmrbGyw,nh2OsvLATSC5rtxCW++dPA,,,N,0,0,,,2012-07-16 15:22,2012-07-16 15:22,admin,admin
635,151232,5776,24205,6037,1,100,N,N,N,CP_Drtn,TT_Task,DT_FixedDUR2,RV_OK,TK_Complete,4229EOF220,Weight control procedures,,,,0,0,0,0,48,0,0,0,,2011-12-13 00:00,2011-12-20 16:00,2013-02-24 16:00,2013-02-24 16:00,,2012-06-30 00:00,2012-06-30 00:00,,,2011-12-14 16:00,2011-12-20 16:00,,,,,PT_Normal,,,,,xX+Bd46PpkasRGPRJ/j7hg,P/q4bOA8Q5mdAZKi/N3pnw,,,N,0,0,,,2012-07-16 15:22,2012-07-16 15:22,admin,admin
636,151233,5776,24205,6037,1,100,N,N,N,CP_Drtn,TT_Task,DT_FixedDUR2,RV_OK,TK_Complete,4229EOF620,Deck Secondary  Steel structure MTO,,,,0,0,0,0,40,0,0,0,,2011-12-18 00:00,2011-12-28 00:00,2013-02-24 16:00,2013-02-24 16:00,,2012-08-16 16:00,2012-08-16 16:00,,,2012-08-30 16:00,2012-09-04 16:00,,,,,PT_Normal,,,,,A2Kg2f9/Fky0TOpFNFK9eA,sANoBJq9SXeJwue+C5ok0Q,,,N,0,0,,,2012-07-16 15:22,2012-07-16 15:22,admin,admin
637,151234,5776,24205,6037,1,100,N,N,N,CP_Drtn,TT_Task,DT_FixedDUR2,RV_OK,TK_Complete,4229EOF540,Jacket secondary steel & Piles  MTO,,,,0,0,0,0,40,0,0,0,,2011-12-18 08:00,2011-12-28 00:00,2013-02-24 16:00,2013-02-24 16:00,,2012-06-30 00:00,2012-06-30 00:00,,,2011-12-18 08:00,2011-12-22 17:00,,,,,PT_Normal,,,,,XCwV6pOP0EmAmbNdT8Z53w,f8msic+ESYmMQVyjAZKluA,,,N,0,0,,,2012-07-16 15:22,2012-07-16 15:22,admin,admin
638,151235,5776,24205,6037,1,100,N,N,N,CP_Drtn,TT_Task,DT_FixedDUR2,RV_OK,TK_Complete,4229EOF640,Jacket  Primary  Steel structure MTO,,,,0,0,0,0,40,0,0,0,,2011-12-18 08:00,2011-12-25 00:00,2013-02-24 16:00,2013-02-24 16:00,,2012-06-30 00:00,2012-06-30 00:00,,,2011-12-18 08:00,2011-12-22 17:00,,,,,PT_Normal,,,,,uqO5wT9HgkKjRsi2hJDlmg,WfW5Cj3gRpKnkh5ags/fyQ,,,N,0,0,,,2012-07-16 15:22,2012-07-16 15:22,admin,admin
639,151236,5776,24205,6037,1,100,N,N,N,CP_Drtn,TT_Task,DT_FixedDUR2,RV_OK,TK_Complete,4229EOF650,Deck Primary Steel structure MTO,,,,0,0,0,0,40,0,0,0,,2011-12-18 08:00,2011-12-28 00:00,2013-02-24 16:00,2013-02-24 16:00,,2012-06-30 00:00,2012-06-30 00:00,,,2011-12-18 08:00,2011-12-22 17:00,,,,,PT_Normal,,,,,wf4ZKwlmyUylG2D3nsoasw,BbgcnaE3QVSI7hB6gcXwgQ,,,N,0,0,,,2012-07-16 15:22,2012-07-16 15:22,admin,admin
640,151237,5776,24205,6037,1,100,N,N,N,CP_Drtn,TT_Task,DT_FixedDUR2,RV_OK,TK_Complete,4229EOF660,Jacket app. MTO,,,,0,0,0,0,40,0,0,0,,2011-12-18 00:00,2011-12-28 00:00,2013-02-24 16:00,2013-02-24 16:00,,2012-06-30 00:00,2012-06-30 00:00,,,2012-05-21 16:00,2012-05-26 16:00,,,,,PT_Normal,,,,,54k6D4pwMUOzHdrcPXigGw,RtOWAB3Bl0iNbQrSBz3AiA,,,N,0,0,,,2012-07-16 15:22,2012-07-16 15:22,admin,admin
641,151238,5776,24226,6944,1,100,N,N,N,CP_Drtn,TT_Task,DT_FixedDUR2,RV_OK,TK_Complete,4229EEL90,Cable schedule IFA,,,,0,0,0,0,40,0,0,0,,2011-12-04 00:00,2011-12-06 00:00,2012-09-24 08:00,2012-09-24 08:00,,2012-06-30 00:00,2012-06-30 00:00,,,2011-12-11 08:00,2011-12-15 16:00,,,,,PT_Normal,,,,,DVvooo605028HA2+iiWJNQ,,,,N,0,0,,,2012-07-16 15:22,2012-07-16 15:22,admin,admin
642,151239,5776,24226,6944,1,100,N,N,N,CP_Drtn,TT_Task,DT_FixedDUR2,RV_OK,TK_Complete,4229EEL180,Cable schedule IFD,,,,0,0,0,0,40,0,0,0,,2012-01-19 00:00,2012-02-01 00:00,2013-02-04 08:00,2013-02-04 08:00,,2012-06-30 00:00,2012-06-30 00:00,,,2012-03-25 08:00,2012-03-29 16:00,,,,,PT_Normal,,,,,AEWpIOMLkUCiOleYMCGEqA,g6eh+Mkywk6aOzOj8iXrVw,,,N,0,0,,,2012-07-16 15:22,2012-07-16 15:22,admin,admin
643,151240,5776,24226,6944,1,100,N,N,N,CP_Drtn,TT_Task,DT_FixedDUR2,RV_OK,TK_Complete,4229EEL100,Electrical cable routing layouts -Approval,,,,0,0,0,0,80,0,0,0,2012-01-11 08:00,2011-11-30 00:00,2011-12-20 00:00,2012-09-24 08:00,2012-09-24 08:00,,2012-06-30 00:00,2012-06-30 00:00,,,2012-01-11 08:00,2012-01-24 16:00,,,,CS_MSO,PT_Normal,,,,,a5To5D1GFEuVkde1cMTIGg,,,,N,0,0,,,2012-07-16 15:22,2012-07-16 15:22,admin,admin
644,151241,5776,24226,6944,1,100,N,N,N,CP_Drtn,TT_Task,DT_FixedDUR2,RV_OK,TK_Complete,4229EEL190,Electrical cable routing layouts -Design,,,,0,0,0,0,80,0,0,0,,2012-01-01 00:00,2012-01-30 00:00,2013-01-20 08:00,2013-01-20 08:00,,2012-06-30 00:00,2012-06-30 00:00,,,2012-03-18 08:00,2012-03-29 16:00,,,,,PT_Normal,,,,,vaNVqpttk0mca54JWdRopg,,,,N,0,0,,,2012-07-16 15:22,2012-07-16 15:22,admin,admin
645,151242,5776,24226,6944,1,0,N,N,N,CP_Drtn,TT_Task,DT_FixedDUR2,RV_OK,TK_NotStart,4229EEL260,Electrical cable routing layouts -Construction,,928,0,80,0,0,0,80,0,0,0,,,,2013-01-28 08:00,2013-02-10 16:00,,2012-08-05 08:00,2012-08-16 16:00,2012-08-05 08:00,2012-08-16 16:00,2012-08-05 08:00,2012-08-16 16:00,,2013-01-28 08:00,2013-02-10 16:00,,PT_Normal,,,,,GRtrLlEJtUuLh8g1GEqM1w,,,,N,0,0,,,2012-07-16 15:22,2012-07-16 15:22,admin,admin
646,151243,5776,24226,6944,1,0,N,N,N,CP_Drtn,TT_Task,DT_FixedDUR2,RV_OK,TK_NotStart,4229EEL250,Cable schedule IFC,,928,0,40,0,0,0,40,0,0,0,,,,2013-02-04 08:00,2013-02-10 16:00,,2012-08-12 08:00,2012-08-16 16:00,2012-08-12 08:00,2012-08-16 16:00,2012-08-12 08:00,2012-08-16 16:00,,2013-02-04 08:00,2013-02-10 16:00,,PT_Normal,,,,,U+M5I2R/Qk2yVfP98N4Fmw,,,,N,0,0,,,2012-07-16 15:22,2012-07-16 15:22,admin,admin
647,151244,5776,24226,6944,1,0,N,N,N,CP_Drtn,TT_Task,DT_FixedDUR2,RV_OK,TK_NotStart,4229EEL220,Interconnection & wiring diagram- Construction,,1016,88,120,0,0,0,120,0,0,0,,,,2013-01-21 08:00,2013-02-10 16:00,,2012-07-12 08:00,2012-08-01 16:00,2012-07-12 08:00,2012-08-01 16:00,2012-07-12 08:00,2012-08-01 16:00,,2013-01-21 08:00,2013-02-10 16:00,,PT_Normal,,,,,LkIRrr1SrEyAXptDzRB7hA,,,,N,0,0,,,2012-07-16 15:22,2012-07-16 15:22,admin,admin
648,151245,5776,24226,6944,1,0,N,N,N,CP_Drtn,TT_Task,DT_FixedDUR2,RV_OK,TK_NotStart,4229EEL270,Electrical installation details -Construction,,928,640,80,0,0,0,80,0,0,0,,,,2013-02-11 08:00,2013-02-24 16:00,,2012-08-26 08:00,2012-09-06 16:00,2012-08-26 08:00,2012-09-06 16:00,2012-08-26 08:00,2012-09-06 16:00,,2013-02-11 08:00,2013-02-24 16:00,,PT_Normal,,,,,dTNPZsFF+UindnFJ70+oHg,,,,N,0,0,,,2012-07-16 15:22,2012-07-16 15:22,admin,admin
649,151246,5776,24226,6944,1,0,N,N,N,CP_Drtn,TT_Task,DT_FixedDUR2,RV_OK,TK_NotStart,4229EEL290,Single line diagram -Construction,,1112,824,80,0,0,0,80,0,0,0,,,,2013-02-11 08:00,2013-02-24 16:00,,2012-07-17 08:00,2012-07-30 16:00,2012-07-17 08:00,2012-07-30 16:00,2012-07-17 08:00,2012-07-30 16:00,,2013-02-11 08:00,2013-02-24 16:00,,PT_Normal,,,,,MIa6WCqZkUGErN/RncxgLg,Qx0q73DiTyaQe37JuO5tMQ,,,N,0,0,,,2012-07-16 15:22,2012-07-16 15:22,admin,admin
650,151247,5776,24226,6944,1,100,N,N,N,CP_Drtn,TT_Task,DT_FixedDUR2,RV_OK,TK_Complete,4229EEL50,Electrical Load analysis -Design,,,,0,0,0,0,40,0,0,0,,2011-11-02 00:00,2011-12-15 00:00,2013-02-11 08:00,2013-02-11 08:00,,2012-06-30 00:00,2012-06-30 00:00,,,2011-12-07 08:00,2011-12-13 16:00,,,,,PT_Normal,,,,,QWPRadxgkkushTa9PQ60Yw,MiQZLA+kQ+6Rx/LgkcR9vw,,,N,0,0,,,2012-07-16 15:22,2012-07-16 15:22,admin,admin
651,151248,5776,24226,6944,1,0,N,N,N,CP_Drtn,TT_Task,DT_FixedDUR2,RV_OK,TK_NotStart,4229EEL110,Electrical Load analysis -Final,,1112,0,40,0,0,0,40,0,0,0,,,,2013-02-04 08:00,2013-02-10 16:00,,2012-07-10 08:00,2012-07-16 16:00,2012-07-10 08:00,2012-07-16 16:00,2012-07-10 08:00,2012-07-16 16:00,,2013-02-04 08:00,2013-02-10 16:00,,PT_Normal,,,,,p1cTlJxJuEOVnjlJqJ0gwA,P+VGqfXaRf+wtG1WDLthHA,,,N,0,0,,,2012-07-16 15:22,2012-07-16 15:22,admin,admin
652,151249,5776,24226,6944,1,100,N,N,N,CP_Drtn,TT_Task,DT_FixedDUR2,RV_OK,TK_Complete,4229EEL120,Single line diagram -Design,,,,0,0,0,0,64,0,0,0,,2011-11-20 00:00,2011-11-27 00:00,2013-02-11 08:00,2013-02-11 08:00,,2012-07-16 16:00,2012-07-16 16:00,,,2011-12-27 08:00,2012-01-05 16:00,,,,,PT_Normal,,,,,ESfdF1V+Xkapwj2Lu+mBSQ,1bglG1aCRFG8YhRS8hMk7Q,,,N,0,0,,,2012-07-16 15:22,2012-07-16 15:22,admin,admin
653,151250,5776,24226,6944,1,100,N,N,N,CP_Drtn,TT_Task,DT_FixedDUR2,RV_OK,TK_Complete,4229EEL70,Hazardous area classification layout -IFA,,,,0,0,0,0,80,0,0,0,,2011-11-21 00:00,2011-11-29 00:00,2013-02-11 08:00,2013-02-11 08:00,,2012-06-30 00:00,2012-06-30 00:00,,,2011-12-04 08:00,2011-12-15 16:00,,,,,PT_Normal,,,,,0mVCa4SL10mBjVUzAfjtYQ,,,,N,0,0,,,2012-07-16 15:22,2012-07-16 15:22,admin,admin
654,151251,5776,24226,6944,1,100,N,N,N,CP_Drtn,TT_Task,DT_FixedDUR2,RV_OK,TK_Complete,4229EEL160,Hazardous area classification layout -IFD,,,,0,0,0,0,80,0,0,0,,2011-11-27 00:00,2012-01-24 16:00,2013-02-11 08:00,2013-02-11 08:00,,2012-06-30 00:00,2012-06-30 00:00,,,2012-01-12 08:00,2012-01-26 16:00,,,,,PT_Normal,,,,,8v0DQeX2ZEqULoz9rTVQUg,,,,N,0,0,,,2012-07-16 15:22,2012-07-16 15:22,admin,admin
655,151252,5776,24226,6944,1,0,N,N,N,CP_Drtn,TT_Task,DT_FixedDUR2,RV_OK,TK_NotStart,4229EEL240,Hazardous area classification layout -IFC,,992,64,80,0,0,0,80,0,0,0,,,,2013-01-28 08:00,2013-02-10 16:00,,2012-07-24 08:00,2012-08-06 16:00,2012-07-24 08:00,2012-08-06 16:00,2012-07-24 08:00,2012-08-06 16:00,,2013-01-28 08:00,2013-02-10 16:00,,PT_Normal,,,,,utsnKbi3+k2q2XFkBuy0Mw,,,,N,0,0,,,2012-07-16 15:22,2012-07-16 15:22,admin,admin
656,151253,5776,24226,6944,1,100,N,N,N,CP_Drtn,TT_Task,DT_FixedDUR2,RV_OK,TK_Complete,4229EEL80,Electrical layouts IFA,,,,0,0,0,0,120,0,0,0,,2011-11-22 00:00,2011-12-08 00:00,2012-09-24 08:00,2012-09-24 08:00,,2012-06-30 00:00,2012-06-30 00:00,,,2011-12-04 08:00,2011-12-22 16:00,,,,,PT_Normal,,,,,ZOt8VLe4JkqsHGCYPRfjeQ,,,,N,0,0,,,2012-07-16 15:22,2012-07-16 15:22,admin,admin
657,151254,5776,24226,6944,1,100,N,N,N,CP_Drtn,TT_Task,DT_FixedDUR2,RV_OK,TK_Complete,4229EEL170,Electrical layouts IFD,,,,0,0,0,0,120,0,0,0,,2012-01-08 00:00,2012-01-29 00:00,2013-01-20 08:00,2013-01-20 08:00,,2012-06-30 00:00,2012-06-30 00:00,,,2012-03-04 08:00,2012-03-22 16:00,,,,,PT_Normal,,,,,wCYn0q86iEOEbpmZ46oBAw,,,,N,0,0,,,2012-07-16 15:22,2012-07-16 15:22,admin,admin
658,151255,5776,24226,6944,1,100,N,N,N,CP_Drtn,TT_Task,DT_FixedDUR2,RV_OK,TK_Complete,4229EEL20,Single line diagram -Approval,,,,0,0,0,0,40,0,0,0,,2011-08-21 00:00,2011-08-25 00:00,2013-02-11 08:00,2013-02-11 08:00,,2012-06-30 00:00,2012-06-30 00:00,,,2011-12-11 08:00,2011-12-15 16:00,,,,,PT_Normal,,,,,XzjriuzcHUS/zWvCQKa0KQ,kHcphadgQQqJiQj5rZMbkQ,,,N,0,0,,,2012-07-16 15:22,2012-07-16 15:22,admin,admin
659,151256,5776,24226,6944,1,0,N,N,N,CP_Drtn,TT_Task,DT_FixedDUR2,RV_OK,TK_NotStart,4229EEL230,Electrical layouts-Construction,,976,48,80,0,0,0,80,0,0,0,,,,2013-01-21 08:00,2013-02-03 16:00,,2012-07-19 08:00,2012-08-01 16:00,2012-07-19 08:00,2012-08-01 16:00,2012-07-19 08:00,2012-08-01 16:00,,2013-01-21 08:00,2013-02-03 16:00,,PT_Normal,,,,,oxw+7sgTdEGOcCpPRSCWlA,,,,N,0,0,,,2012-07-16 15:22,2012-07-16 15:22,admin,admin
660,151257,5776,24209,6944,1,100,N,N,N,CP_Drtn,TT_Task,DT_FixedDUR2,RV_OK,TK_Complete,4229EEL140,Issue MRQ for Electrical bulk,,,,0,0,0,0,64,0,0,0,,2011-12-18 08:00,2011-12-27 16:00,2012-09-24 08:00,2012-09-24 08:00,,2012-06-30 00:00,2012-06-30 00:00,,,2011-12-18 08:00,2011-12-27 16:00,,,,,PT_Normal,,,,,Mu2MdfNsbEGfoMFEzg70Wg,fa+QQs2lrkWif6ZY5ZmI+Q,,,N,0,0,,,2012-07-16 15:22,2012-07-16 15:22,admin,admin
661,151258,5776,24209,6944,1,0,N,N,N,CP_Drtn,TT_Task,DT_FixedDUR2,RV_OK,TK_Active,4229EEL300,V.P.R for Navigation aids,,1280,992,8,0,0,0,104,0,0,0,,2012-04-26 00:00,,2013-02-24 08:00,2013-02-24 16:00,,2012-07-01 08:00,2012-07-01 16:00,2012-07-01 08:00,2012-07-01 16:00,2012-05-06 08:00,2012-05-22 16:00,,2013-02-24 08:00,2013-02-24 16:00,,PT_Normal,,,,,uv1f7RDqt0mM3qSkIVHu4A,,,,N,0,0,,,2012-07-16 15:22,2012-07-16 15:22,admin,admin
662,151259,5776,24209,6944,1,0,N,N,N,CP_Drtn,TT_Task,DT_FixedDUR2,RV_OK,TK_Active,4229EEL280,V.P.R for solar power unit,,968,968,280,0,0,0,560,0,0,0,,2012-04-05 00:00,,2013-01-07 08:00,2013-02-24 16:00,,2012-07-08 08:00,2012-08-30 16:00,2012-07-08 08:00,2012-08-30 16:00,2012-05-06 08:00,2012-08-09 16:00,,2013-01-07 08:00,2013-02-24 16:00,,PT_Normal,,,,,yxtgKEI63UW5myK/dyD5Eg,,,,N,0,0,,,2012-07-16 15:22,2012-07-16 15:22,admin,admin
663,151260,5776,24209,6944,1,100,N,N,N,CP_Drtn,TT_Task,DT_FixedDUR2,RV_OK,TK_Complete,4229EEL40,T.E.R for solar power unit,,,,0,0,0,0,120,0,0,0,,2011-10-13 00:00,2012-01-31 00:00,2012-07-29 08:00,2012-07-29 08:00,,2012-06-30 00:00,2012-06-30 00:00,,,2011-10-16 08:00,2011-11-03 16:00,,,,,PT_Normal,,,,,g0CVbt2K9kOvk3zUPIqK3g,+adQvSlUzkOZha6HG7fiRA,,,N,0,0,,,2012-07-16 15:22,2012-07-16 15:22,admin,admin
664,151261,5776,24209,6944,1,100,N,N,N,CP_Drtn,TT_Task,DT_FixedDUR2,RV_OK,TK_Complete,4229EEL130,MRP for solar power unit,,,,0,0,0,0,40,0,0,0,,2012-03-08 08:00,2012-03-28 00:00,2012-07-29 08:00,2012-07-29 08:00,,2012-06-30 00:00,2012-06-30 00:00,,,2012-03-08 08:00,2012-03-14 16:00,,,,,PT_Normal,,,,,heUu7MZSx0KYewuE6ZHW+g,uCQ7t7XtkE2pu5tmschigw,,,N,0,0,,,2012-07-16 15:22,2012-07-16 15:22,admin,admin
665,151262,5776,24209,6944,1,100,N,N,N,CP_Drtn,TT_Task,DT_FixedDUR2,RV_OK,TK_Complete,4229EEL10,Issue MRQ for solar power unit,,,,0,0,0,0,56,0,0,0,,2011-08-15 08:00,2011-08-23 16:00,2012-07-29 08:00,2012-07-29 08:00,,2012-06-30 00:00,2012-06-30 00:00,,,2011-08-15 08:00,2011-08-23 16:00,,,,,PT_Normal,,,,,ZJBJAXRjd0q6DEUmJMWlhw,fa+QQs2lrkWif6ZY5ZmI+Q,,,N,0,0,,,2012-07-16 15:22,2012-07-16 15:22,admin,admin
666,151263,5776,24209,6944,1,100,N,N,N,CP_Drtn,TT_Task,DT_FixedDUR2,RV_OK,TK_Complete,4229EEL60,T.E.R for Navigation aids,,,,0,0,0,0,120,0,0,0,,2011-10-17 08:00,2011-12-07 16:00,2012-07-29 08:00,2012-07-29 08:00,,2012-06-30 00:00,2012-06-30 00:00,,,2011-10-17 08:00,2011-11-13 16:00,,,,,PT_Normal,,,,,WZQQTGgwuku7sk8/DkqwGg,+adQvSlUzkOZha6HG7fiRA,,,N,0,0,,,2012-07-16 15:22,2012-07-16 15:22,admin,admin
667,151264,5776,24209,6944,1,100,N,N,N,CP_Drtn,TT_Task,DT_FixedDUR2,RV_OK,TK_Complete,4229EEL150,MRP for Navigation aids,,,,0,0,0,0,40,0,0,0,,2012-01-12 00:00,2012-01-18 00:00,2012-07-29 08:00,2012-07-29 08:00,,2012-06-30 00:00,2012-06-30 00:00,,,2012-01-16 08:00,2012-01-22 16:00,,,,,PT_Normal,,,,,ojYsxzCueUCrVrD4we/Yrw,uCQ7t7XtkE2pu5tmschigw,,,N,0,0,,,2012-07-16 15:22,2012-07-16 15:22,admin,admin
668,151265,5776,24209,6944,1,100,N,N,N,CP_Drtn,TT_Task,DT_FixedDUR2,RV_OK,TK_Complete,4229EEL30,Issue MRQ for Navigation aids,,,,0,0,0,0,24,0,0,0,,2011-09-15 08:00,2011-09-19 16:00,2012-07-29 08:00,2012-07-29 08:00,,2012-06-30 00:00,2012-06-30 00:00,,,2011-09-15 08:00,2011-09-19 16:00,,,,,PT_Normal,,,,,NeVDsGPI80SoL6LqbJap0g,fa+QQs2lrkWif6ZY5ZmI+Q,,,N,0,0,,,2012-07-16 15:22,2012-07-16 15:22,admin,admin
669,151266,5776,24209,6944,1,100,N,N,N,CP_Drtn,TT_Task,DT_FixedDUR2,RV_OK,TK_Complete,4229EEL200,T.E.R for Electrical bulk,,,,0,0,0,0,120,0,0,0,,2012-02-02 00:00,2012-06-10 00:00,2012-09-24 08:00,2012-09-24 08:00,,2012-06-30 00:00,2012-06-30 00:00,,,2012-03-05 08:00,2012-03-25 16:00,,,,,PT_Normal,,,,,6Biew/Flpky8XrODzg9pRA,+adQvSlUzkOZha6HG7fiRA,,,N,0,0,,,2012-07-16 15:22,2012-07-16 15:22,admin,admin
670,151267,5776,24209,6944,1,0,N,N,N,CP_Drtn,TT_Task,DT_FixedDUR2,RV_OK,TK_NotStart,4229EEL210,MRP for Electrical bulk,,448,0,40,0,0,0,40,0,0,0,,,,2012-10-03 08:00,2012-10-09 16:00,,2012-07-10 08:00,2012-07-16 16:00,2012-07-10 08:00,2012-07-16 16:00,2012-07-10 08:00,2012-07-16 16:00,,2012-10-03 08:00,2012-10-09 16:00,,PT_Normal,,,,,1nb1ToD6qUSPjFBV9RH5vQ,uCQ7t7XtkE2pu5tmschigw,,,N,0,0,,,2012-07-16 15:22,2012-07-16 15:22,admin,admin
671,151268,5776,24211,6944,1,100,N,N,N,CP_Drtn,TT_Task,DT_FixedDUR2,RV_OK,TK_Complete,4229EIN70,Instrument I/O list issued for approval,,,,0,0,0,0,16,0,0,0,,2011-09-29 00:00,2011-10-09 00:00,2013-02-24 16:00,2013-02-24 16:00,,2012-06-30 00:00,2012-06-30 00:00,,,2011-10-13 08:00,2011-10-16 16:00,,,,,PT_Normal,,,,,UvhIIB7KGEiO0jg8QqM3Nw,GemY4T2B0EmUheDKIF6NWQ,,,N,0,0,,,2012-07-16 15:22,2012-07-16 15:22,admin,admin
672,151269,5776,24211,6944,1,100,N,N,N,CP_Drtn,TT_Task,DT_FixedDUR2,RV_OK,TK_Complete,4229EIN140,Instrument  cable / tubing routing layouts IFA,,,,0,0,0,0,80,0,0,0,,2011-12-05 00:00,2012-01-26 00:00,2013-01-20 08:00,2013-01-20 08:00,,2012-06-30 00:00,2012-06-30 00:00,,,2011-12-11 08:00,2011-12-22 16:00,,,,,PT_Normal,,,,,3pchupN690OW5lUzwA81Rg,,,,N,0,0,,,2012-07-16 15:22,2012-07-16 15:22,admin,admin
673,151270,5776,24211,6944,1,0,N,N,N,CP_Drtn,TT_Task,DT_FixedDUR2,RV_OK,TK_NotStart,4229EIN440,Instrument hook-ups issued for construction,,1096,808,80,0,0,0,80,0,0,0,,,,2013-02-11 08:00,2013-02-24 16:00,,2012-07-19 08:00,2012-08-01 16:00,2012-07-19 08:00,2012-08-01 16:00,2012-07-19 08:00,2012-08-01 16:00,,2013-02-11 08:00,2013-02-24 16:00,,PT_Normal,,,,,1Tw1eUxe0UaGAwCvW855tA,Q6A1MJ+tAkeyDTn8ferz6A,,,N,0,0,,,2012-07-16 15:22,2012-07-16 15:22,admin,admin
674,151271,5776,24211,6944,1,0,N,N,N,CP_Drtn,TT_Task,DT_FixedDUR2,RV_OK,TK_NotStart,4229EIN460,Instrument  cable / tubing routing layouts IFC,,976,0,80,0,0,0,80,0,0,0,,,,2013-01-28 08:00,2013-02-10 16:00,,2012-07-26 08:00,2012-08-08 16:00,2012-07-26 08:00,2012-08-08 16:00,2012-07-26 08:00,2012-08-08 16:00,,2013-01-28 08:00,2013-02-10 16:00,,PT_Normal,,,,,8ghhxWQ3HkqnlEagh847yg,avZG58y2z0Gkt+UeaJ1/ug,,,N,0,0,,,2012-07-16 15:22,2012-07-16 15:22,admin,admin
675,151272,5776,24211,6944,1,0,N,N,N,CP_Drtn,TT_Task,DT_FixedDUR2,RV_OK,TK_NotStart,4229EIN410,Instrument I/O list issued for construction,,1200,912,40,0,0,0,40,0,0,0,,,,2013-02-18 08:00,2013-02-24 16:00,,2012-07-09 08:00,2012-07-15 16:00,2012-07-09 08:00,2012-07-15 16:00,2012-07-09 08:00,2012-07-15 16:00,,2013-02-18 08:00,2013-02-24 16:00,,PT_Normal,,,,,/+hSVxUTVkaBAvrU5jzf2Q,GemY4T2B0EmUheDKIF6NWQ,,,N,0,0,,,2012-07-16 15:22,2012-07-16 15:22,admin,admin
676,151273,5776,24211,6944,1,0,N,N,N,CP_Drtn,TT_Task,DT_FixedDUR2,RV_OK,TK_Active,4229EIN400,Instrument index issued for construction,,1200,0,8,0,0,0,40,0,0,0,,2012-06-27 00:00,,2013-02-17 08:00,2013-02-17 16:00,,2012-07-08 08:00,2012-07-08 16:00,2012-07-08 08:00,2012-07-08 16:00,2012-07-08 08:00,2012-07-12 16:00,,2013-02-17 08:00,2013-02-17 16:00,,PT_Normal,,,,,SFfFGTvKo0mtD1908juVxQ,tEpanMSzcU6QCV0SomSrAg,,,N,0,0,,,2012-07-16 15:22,2012-07-16 15:22,admin,admin
677,151274,5776,24211,6944,1,100,N,N,N,CP_Drtn,TT_Task,DT_FixedDUR2,RV_OK,TK_Complete,4229EIN130,Instrument index issued for design,,,,0,0,0,0,40,0,0,0,,2011-11-28 00:00,2011-12-13 00:00,2013-02-24 16:00,2013-02-24 16:00,,2012-06-30 00:00,2012-06-30 00:00,,,2011-12-08 08:00,2011-12-14 16:00,,,,,PT_Normal,,,,,1WqV3t8CT02yTQU2R+0acg,,,,N,0,0,,,2012-07-16 15:22,2012-07-16 15:22,admin,admin
678,151275,5776,24211,6944,1,100,N,N,N,CP_Drtn,TT_Task,DT_FixedDUR2,RV_OK,TK_Complete,4229EIN150,Instrument I/O list issued for design,,,,0,0,0,0,16,0,0,0,,2011-10-23 00:00,2011-12-16 00:00,2013-02-24 16:00,2013-02-24 16:00,,2012-06-30 00:00,2012-06-30 00:00,,,2011-12-15 08:00,2011-12-18 16:00,,,,,PT_Normal,,,,,K7+wbx6JE0K02gpymGkifA,,,,N,0,0,,,2012-07-16 15:22,2012-07-16 15:22,admin,admin
679,151276,5776,24211,6944,1,100,N,N,N,CP_Drtn,TT_Task,DT_FixedDUR2,RV_OK,TK_Complete,4229EIN300,Instrument cable / tubing schedule for design,,,,0,0,0,0,40,0,0,0,,2012-01-24 00:00,2012-01-24 00:00,2013-02-24 16:00,2013-02-24 16:00,,2012-06-30 00:00,2012-06-30 00:00,,,2012-03-04 08:00,2012-03-08 16:00,,,,,PT_Normal,,,,,ImozSBS8Dkicvi+Ntucn4w,,,,N,0,0,,,2012-07-16 15:22,2012-07-16 15:22,admin,admin
680,151277,5776,24211,6944,1,100,N,N,N,CP_Drtn,TT_Task,DT_FixedDUR2,RV_OK,TK_Complete,4229EIN310,Instrument hook-ups issued for design,,,,0,0,0,0,80,0,0,0,,2012-01-10 00:00,2012-02-02 00:00,2013-02-24 16:00,2013-02-24 16:00,,2012-06-30 00:00,2012-06-30 00:00,,,2012-03-04 08:00,2012-03-15 16:00,,,,,PT_Normal,,,,,zcyepT25gkO+nDNXBgaB3Q,,,,N,0,0,,,2012-07-16 15:22,2012-07-16 15:22,admin,admin
681,151278,5776,24211,6944,1,0,N,N,N,CP_Drtn,TT_Task,DT_FixedDUR2,RV_OK,TK_NotStart,4229EIN390,Safeguard system schematic diagram- Construction,,968,680,80,0,0,0,80,0,0,0,,,,2013-02-11 08:00,2013-02-24 16:00,,2012-08-12 08:00,2012-08-30 16:00,2012-08-12 08:00,2012-08-30 16:00,2012-08-12 08:00,2012-08-30 16:00,,2013-02-11 08:00,2013-02-24 16:00,,PT_Normal,,,,,MCY/aw/nVUSacXYuWQDkTA,,,,N,0,0,,,2012-07-16 15:22,2012-07-16 15:22,admin,admin
682,151279,5776,24211,6944,1,0,N,N,N,CP_Drtn,TT_Task,DT_FixedDUR2,RV_OK,TK_NotStart,4229EIN430,Instrument wiring diagram-Construction,,968,680,80,0,0,0,80,0,0,0,,,,2013-02-11 08:00,2013-02-24 16:00,,2012-08-12 08:00,2012-08-30 16:00,2012-08-12 08:00,2012-08-30 16:00,2012-08-12 08:00,2012-08-30 16:00,,2013-02-11 08:00,2013-02-24 16:00,,PT_Normal,,,,,wAr0uXnwykqFfW1eGJ4m0g,,,,N,0,0,,,2012-07-16 15:22,2012-07-16 15:22,admin,admin
683,151280,5776,24211,6944,1,100,N,N,N,CP_Drtn,TT_Task,DT_FixedDUR2,RV_OK,TK_Complete,4229EIN120,Instrument layouts -Approval,,,,0,0,0,0,120,0,0,0,,2011-11-22 00:00,2011-12-15 00:00,2013-02-24 16:00,2013-02-24 16:00,,2012-06-30 00:00,2012-06-30 00:00,,,2011-12-04 08:00,2011-12-22 16:00,,,,,PT_Normal,,,,,1F3NY4eXiUaAMjACPE7BtA,,,,N,0,0,,,2012-07-16 15:22,2012-07-16 15:22,admin,admin
684,151281,5776,24211,6944,1,100,N,N,N,CP_Drtn,TT_Task,DT_FixedDUR2,RV_OK,TK_Complete,4229EIN270,Instrument layouts -Design,,,,0,0,0,0,0,0,0,0,,2012-01-29 08:00,2012-02-16 00:00,2013-02-24 16:00,2013-02-24 16:00,,2012-06-30 00:00,2012-06-30 00:00,,,2012-01-29 08:00,2012-01-29 08:00,,,,,PT_Normal,,,,,DpzUbzkMWkqoX47sc/u5Kg,,,,N,0,0,,,2012-07-16 15:22,2012-07-16 15:22,admin,admin
685,151282,5776,24211,6944,1,100,N,N,N,CP_Drtn,TT_Task,DT_FixedDUR2,RV_OK,TK_Complete,4229EIN580,Instrument loop diagram-Design,,,,0,0,0,0,80,0,0,0,,2012-03-28 00:00,2012-05-02 00:00,2013-02-24 08:00,2013-02-24 08:00,,2012-06-30 00:00,2012-06-30 00:00,,,2012-04-01 08:00,2012-04-12 16:00,,,,,PT_Normal,,,,,Hm5of9JICU6Y8d8NoOJEOw,,,,N,0,0,,,2012-07-16 15:22,2012-07-16 15:22,admin,admin
686,151283,5776,24211,6944,1,100,N,N,N,CP_Drtn,TT_Task,DT_FixedDUR2,RV_OK,TK_Complete,4229EIN570,Instrument loop Diagram-Approval,,,,0,0,0,0,8,0,0,0,,2012-02-22 00:00,2012-02-26 00:00,2013-02-24 08:00,2013-02-24 08:00,,2012-06-30 00:00,2012-06-30 00:00,,,2012-03-04 08:00,2012-03-04 16:00,,,,,PT_Normal,,,,,Sm9pTiMyzEul+H3NtwE2Qw,,,,N,0,0,,,2012-07-16 15:22,2012-07-16 15:22,admin,admin
687,151284,5776,24211,6944,1,0,N,N,N,CP_Drtn,TT_Task,DT_FixedDUR2,RV_OK,TK_NotStart,4229EIN590,Instrument loop diagram-Construction,,1080,792,8,0,0,0,8,0,0,0,,,,2013-02-24 08:00,2013-02-24 16:00,,2012-08-05 08:00,2012-08-05 16:00,2012-08-05 08:00,2012-08-05 16:00,2012-08-05 08:00,2012-08-05 16:00,,2013-02-24 08:00,2013-02-24 16:00,,PT_Normal,,,,,w34qHIPRzEyzo5Gp1oLJ9A,,,,N,0,0,,,2012-07-16 15:22,2012-07-16 15:22,admin,admin
688,151285,5776,24211,6944,1,100,N,N,N,CP_Drtn,TT_Task,DT_FixedDUR2,RV_OK,TK_Complete,4229EIN60,Instrument index -Approval,,,,0,0,0,0,40,0,0,0,,2011-10-26 00:00,2011-11-20 00:00,2013-02-24 16:00,2013-02-24 16:00,,2012-06-30 00:00,2012-06-30 00:00,,,2011-10-30 08:00,2011-11-03 16:00,,,,,PT_Normal,,,,,CNWS+Cek20urMozsxi6ioA,,,,N,0,0,,,2012-07-16 15:22,2012-07-16 15:22,admin,admin
689,151286,5776,24211,6944,1,100,N,N,N,CP_Drtn,TT_Task,DT_FixedDUR2,RV_OK,TK_Complete,4229EIN200,Instrument cable / tubing schedule for approval,,,,0,0,0,0,40,0,0,0,2012-01-09 08:00,2012-01-05 00:00,2012-01-11 00:00,2013-02-24 08:00,2013-02-24 08:00,,2012-06-30 00:00,2012-06-30 00:00,,,2012-01-09 08:00,2012-01-15 16:00,,,,CS_MSOA,PT_Normal,,,,,m9VALYqOkkOxsKuPZpjrZA,+fuN/Ikg/kK9fNQ0HqYtyQ,,,N,0,0,,,2012-07-16 15:22,2012-07-16 15:22,admin,admin
690,151287,5776,24211,6944,1,0,N,N,N,CP_Drtn,TT_Task,DT_FixedDUR2,RV_OK,TK_NotStart,4229EIN470,Instrument cable / tubing schedule for construction,,1016,728,40,0,0,0,40,0,0,0,,,,2013-02-18 08:00,2013-02-24 16:00,,2012-08-09 08:00,2012-08-15 16:00,2012-08-09 08:00,2012-08-15 16:00,2012-08-09 08:00,2012-08-15 16:00,,2013-02-18 08:00,2013-02-24 16:00,,PT_Normal,,,,,SoYgvEoV/0i9NoXd7OfTYQ,MFJOUGZvAkSTBODSA6uthQ,,,N,0,0,,,2012-07-16 15:22,2012-07-16 15:22,admin,admin
691,151288,5776,24211,6944,1,0,N,N,N,CP_Drtn,TT_Task,DT_FixedDUR2,RV_OK,TK_NotStart,4229EIN450,Instrument layouts -Construction,,976,0,80,0,0,0,80,0,0,0,,,,2013-01-21 08:00,2013-02-03 16:00,,2012-07-19 08:00,2012-08-01 16:00,2012-07-19 08:00,2012-08-01 16:00,2012-07-19 08:00,2012-08-01 16:00,,2013-01-21 08:00,2013-02-03 16:00,,PT_Normal,,,,,+783ZpH4PE6XQkzjGpwtgQ,,,,N,0,0,,,2012-07-16 15:22,2012-07-16 15:22,admin,admin
692,151289,5776,24211,6944,1,100,N,N,N,CP_Drtn,TT_Task,DT_FixedDUR2,RV_OK,TK_Complete,4229EIN100,Functional loop diagram-Approval,,,,0,0,0,0,120,0,0,0,,2012-01-05 00:00,2012-01-11 00:00,2013-02-24 08:00,2013-02-24 08:00,,2012-06-30 00:00,2012-06-30 00:00,,,2012-01-17 08:00,2012-02-07 16:00,,,,,PT_Normal,,,,,iKEDNf22t0+AQ0xIYBF22Q,,,,N,0,0,,,2012-07-16 15:22,2012-07-16 15:22,admin,admin
693,151290,5776,24211,6944,1,100,N,N,N,CP_Drtn,TT_Task,DT_FixedDUR2,RV_OK,TK_Complete,4229EIN240,Functional loop diagram-Design,,,,0,0,0,0,48,0,0,0,,2012-01-15 00:00,2012-02-27 00:00,2013-02-24 16:00,2013-02-24 16:00,,2012-06-30 00:00,2012-06-30 00:00,,,2012-03-04 08:00,2012-03-11 16:00,,,,,PT_Normal,,,,,Q2WOB0VZYUmHM/k/MbuwVA,,,,N,0,0,,,2012-07-16 15:22,2012-07-16 15:22,admin,admin
694,151291,5776,24211,6944,1,0,N,N,N,CP_Drtn,TT_Task,DT_FixedDUR2,RV_OK,TK_NotStart,4229EIN420,Functional loop diagram-Construction,,1080,0,120,0,0,0,120,0,0,0,,,,2013-02-03 08:00,2013-02-21 16:00,,2012-07-15 08:00,2012-08-02 16:00,2012-07-15 08:00,2012-08-02 16:00,2012-07-15 08:00,2012-08-02 16:00,,2013-02-03 08:00,2013-02-21 16:00,,PT_Normal,,,,,h5TmccctJ0uqqJtYvAinBA,,,,N,0,0,,,2012-07-16 15:22,2012-07-16 15:22,admin,admin
695,151292,5776,24211,6944,1,100,N,N,N,CP_Drtn,TT_Task,DT_FixedDUR2,RV_OK,TK_Complete,4229EIN520,Instrument wiring diagram-Approval,,,,0,0,0,0,80,0,0,0,,2011-12-09 00:00,2011-12-14 00:00,2013-02-24 08:00,2013-02-24 08:00,,2012-06-30 00:00,2012-06-30 00:00,,,2012-01-11 08:00,2012-01-24 16:00,,,,,PT_Normal,,,,,7GW7KTTBYEm6B0auOPwVaA,,,,N,0,0,,,2012-07-16 15:22,2012-07-16 15:22,admin,admin
696,151293,5776,24211,6944,1,100,N,N,N,CP_Drtn,TT_Task,DT_FixedDUR2,RV_OK,TK_Complete,4229EIN530,Instrument wiring diagram-Design,,,,0,0,0,0,80,0,0,0,,2012-01-15 00:00,2012-01-24 00:00,2013-02-24 16:00,2013-02-24 16:00,,2012-06-30 00:00,2012-06-30 00:00,,,2012-02-13 08:00,2012-02-26 16:00,,,,,PT_Normal,,,,,bc9OytMsGki5d1dJdSrjIw,,,,N,0,0,,,2012-07-16 15:22,2012-07-16 15:22,admin,admin
697,151294,5776,24211,6944,1,100,N,N,N,CP_Drtn,TT_Task,DT_FixedDUR2,RV_OK,TK_Complete,4229EIN280,Instrument cable / tubing routing layouts IFD,,,,0,0,0,0,64,0,0,0,,2012-02-29 00:00,2012-02-29 00:00,2012-10-04 08:00,2012-10-04 08:00,,2012-06-30 00:00,2012-06-30 00:00,,,2012-03-04 08:00,2012-03-13 16:00,,,,,PT_Normal,,,,,6e0IT3HxnUKGYgxJda7VLA,,,,N,0,0,,,2012-07-16 15:22,2012-07-16 15:22,admin,admin
698,151295,5776,24211,6944,1,100,N,N,N,CP_Drtn,TT_Task,DT_FixedDUR2,RV_OK,TK_Complete,4229EIN190,Instrument hook-ups issued for approval,,,,0,0,0,0,80,0,0,0,,2011-12-12 08:00,2012-01-02 00:00,2013-02-24 16:00,2013-02-24 16:00,,2012-06-30 00:00,2012-06-30 00:00,,,2011-12-12 08:00,2011-12-25 16:00,,,,,PT_Normal,,,,,UbSYqdm7rkOy9RdMD5wzzA,,,,N,0,0,,,2012-07-16 15:22,2012-07-16 15:22,admin,admin
699,151296,5776,24213,6944,1,100,N,N,N,CP_Drtn,TT_Task,DT_FixedDUR2,RV_OK,TK_Complete,4229EIN160,T.E.R for  Pressure regulator valves,,,,0,0,0,0,120,0,0,0,,2012-02-02 00:00,2012-04-03 00:00,2012-08-05 08:00,2012-08-05 08:00,,2012-06-30 00:00,2012-06-30 00:00,,,2012-03-08 08:00,2012-03-28 16:00,,,,,PT_Normal,,,,,kpCSj/IckEii6vVoXhiKsA,+adQvSlUzkOZha6HG7fiRA,,,N,0,0,,,2012-07-16 15:22,2012-07-16 15:22,admin,admin
700,151297,5776,24213,6944,1,100,N,N,N,CP_Drtn,TT_Task,DT_FixedDUR2,RV_OK,TK_Complete,4229EIN320,MRP for  pressure regulator valves,,,,0,0,0,0,40,0,0,0,,2012-05-27 00:00,2012-05-31 00:00,2012-08-05 08:00,2012-08-05 08:00,,2012-06-30 00:00,2012-06-30 00:00,,,2012-06-03 08:00,2012-06-07 16:00,,,,,PT_Normal,,,,,OTkyV4bu60yvnx2r5KNeLA,uCQ7t7XtkE2pu5tmschigw,,,N,0,0,,,2012-07-16 15:22,2012-07-16 15:22,admin,admin
701,151298,5776,24213,6944,1,100,N,N,N,CP_Drtn,TT_Task,DT_FixedDUR2,RV_OK,TK_Complete,4229EIN30,Issue MRQ for Pressure regulator valves,,,,0,0,0,0,24,0,0,0,,2011-10-03 08:48,2011-10-09 08:48,2012-08-05 08:00,2012-08-05 08:00,,2012-06-30 00:00,2012-06-30 00:00,,,2011-10-03 08:48,2011-10-09 08:48,,,,,PT_Normal,,,,,IRuAlDoO5keE4iEJ6XrzBw,fa+QQs2lrkWif6ZY5ZmI+Q,,,N,0,0,,,2012-07-16 15:22,2012-07-16 15:22,admin,admin
702,151299,5776,24213,6944,1,100,N,N,N,CP_Drtn,TT_Task,DT_FixedDUR2,RV_OK,TK_Complete,4229EIN110,T.E.R for MPFM,,,,0,0,0,0,160,0,0,0,,2011-11-14 00:00,2011-12-21 00:00,2012-08-05 08:00,2012-08-05 08:00,,2012-06-30 00:00,2012-06-30 00:00,,,2011-12-04 08:00,2011-12-29 16:00,,,,,PT_Normal,,,,,mcyyu64VcEKNn9Izgvajig,+adQvSlUzkOZha6HG7fiRA,,,N,0,0,,,2012-07-16 15:22,2012-07-16 15:22,admin,admin
703,151300,5776,24213,6944,1,100,N,N,N,CP_Drtn,TT_Task,DT_FixedDUR2,RV_OK,TK_Complete,4229EIN330,MRP for SDV,,,,0,0,0,0,40,0,0,0,,2012-04-22 00:00,2012-04-26 00:00,2012-07-29 08:00,2012-07-29 08:00,,2012-06-30 00:00,2012-06-30 00:00,,,2012-04-29 08:00,2012-05-03 16:00,,,,,PT_Normal,,,,,Gk/V5Nqtz0GxBpsxfQYYbw,ulMsewoMhEiApbF+oxOLEA,,,N,0,0,,,2012-07-16 15:22,2012-07-16 15:22,admin,admin
704,151301,5776,24213,6944,1,100,N,N,N,CP_Drtn,TT_Task,DT_FixedDUR2,RV_OK,TK_Complete,4229EIN50,Issue MRQ for SDV,,,,0,0,0,0,40,0,0,0,,2011-10-12 08:48,2011-10-26 00:00,2013-02-24 16:00,2013-02-24 16:00,,2012-06-30 00:00,2012-06-30 00:00,,,2011-10-12 08:48,2011-10-19 08:48,,,,,PT_Normal,,,,,yn70D/8tzUuseW9mTJ5QLw,oARo+yhXM0mbfyeEpyVYrw,,,N,0,0,,,2012-07-16 15:22,2012-07-16 15:22,admin,admin
705,151302,5776,24213,6944,1,0,N,N,N,CP_Drtn,TT_Task,DT_FixedDUR2,RV_OK,TK_NotStart,4229EIN500,V.P.R for choke valves,,888,888,320,0,0,0,320,0,0,0,,,,2012-12-31 08:00,2013-02-24 16:00,,2012-07-15 08:00,2012-09-13 16:00,2012-07-15 08:00,2012-09-13 16:00,2012-07-15 08:00,2012-09-13 16:00,,2012-12-31 08:00,2013-02-24 16:00,,PT_Normal,,,,,X7KLb6cwe0iOsnMLd1MoIQ,,,,N,0,0,,,2012-07-16 15:22,2012-07-16 15:22,admin,admin
706,151303,5776,24213,6944,1,0,N,N,N,CP_Drtn,TT_Task,DT_FixedDUR2,RV_OK,TK_Active,4229EIN510,V.P.R for Pressure regulator valves,,552,552,696,0,0,0,720,0,0,0,,2012-06-06 00:00,,2012-10-18 08:00,2013-02-24 16:00,,2012-07-08 08:00,2012-11-19 16:00,2012-07-08 08:00,2012-11-19 16:00,2012-07-08 08:00,2012-11-22 16:00,,2012-10-18 08:00,2013-02-24 16:00,,PT_Normal,,,,,gk8K7jYsHEegOWTkHcjYeg,,,,N,0,0,,,2012-07-16 15:22,2012-07-16 15:22,admin,admin
707,151304,5776,24213,6944,1,0,N,N,N,CP_Drtn,TT_Task,DT_FixedDUR2,RV_OK,TK_Active,4229EIN490,V.P.R for MPFM,,712,712,576,0,0,0,720,0,0,0,,2012-03-08 00:00,,2012-11-15 08:00,2013-02-24 16:00,,2012-07-01 08:00,2012-10-15 16:00,2012-07-01 08:00,2012-10-15 16:00,2012-05-06 08:00,2012-09-13 16:00,,2012-11-15 08:00,2013-02-24 16:00,,PT_Normal,,,,,RJ9nEoTv+06AnpHc0V1GYQ,,,,N,0,0,,,2012-07-16 15:22,2012-07-16 15:22,admin,admin
708,151305,5776,24213,6944,1,0,N,N,N,CP_Drtn,TT_Task,DT_FixedDUR2,RV_OK,TK_Active,4229EIN480,V.P.R for safeguard system,,712,0,480,0,0,0,640,0,0,0,,2012-05-10 00:00,,2012-12-03 08:00,2013-02-24 16:00,,2012-07-17 08:00,2012-10-15 16:00,2012-07-17 08:00,2012-10-15 16:00,2012-06-25 08:00,2012-10-28 16:00,,2012-12-03 08:00,2013-02-24 16:00,,PT_Normal,,,,,Pv5S6q/kd0Sw4UY3o/fgGg,,,,N,0,0,,,2012-07-16 15:22,2012-07-16 15:22,admin,admin
709,151306,5776,24213,6944,1,100,N,N,N,CP_Drtn,TT_Task,DT_FixedDUR2,RV_OK,TK_Complete,4229EIN360,T.E.R for Instrument electrical bulk,,,,0,0,0,0,120,0,0,0,,2012-03-26 00:00,2012-06-03 00:00,2012-10-04 08:00,2012-10-04 08:00,,2012-06-30 00:00,2012-06-30 00:00,,,2012-04-25 08:00,2012-05-15 16:00,,,,,PT_Normal,,,,,3ZU3GIBrj0yCzWPnsXGUlg,ErUDIEAHkEWZWIjcmb+Ptg,,,N,0,0,,,2012-07-16 15:22,2012-07-16 15:22,admin,admin
710,151307,5776,24213,6944,1,0,N,N,N,CP_Drtn,TT_Task,DT_FixedDUR2,RV_OK,TK_NotStart,4229EIN380,MRP for Instrument electrical bulk,,512,0,40,0,0,0,40,0,0,0,,,,2012-10-10 08:00,2012-10-16 16:00,,2012-07-05 08:00,2012-07-11 16:00,2012-07-05 08:00,2012-07-11 16:00,2012-07-05 08:00,2012-07-11 16:00,,2012-10-10 08:00,2012-10-16 16:00,,PT_Normal,,,,,qnFy1bZGc0OFcSbZvD6dcQ,qah8G7VN60mBQqGfXfCzXw,,,N,0,0,,,2012-07-16 15:22,2012-07-16 15:22,admin,admin
711,151308,5776,24213,6944,1,100,N,N,N,CP_Drtn,TT_Task,DT_FixedDUR2,RV_OK,TK_Complete,4229EIN230,Issue MRQ for Instrument electrical bulk,,,,0,0,0,0,80,0,0,0,2012-01-16 00:00,2012-01-16 08:00,2012-02-27 00:00,2012-10-04 08:00,2012-10-04 08:00,,2012-06-30 00:00,2012-06-30 00:00,,,2012-01-16 08:00,2012-01-30 16:00,,,,CS_MSOA,PT_Normal,,,,,HmTAzLRRp0SP9pyL/61hHw,azlRJTqqs0W0Ln7rWFbhVg,,,N,0,0,,,2012-07-16 15:22,2012-07-16 15:22,admin,admin
712,151309,5776,24213,6944,1,100,N,N,N,CP_Drtn,TT_Task,DT_FixedDUR2,RV_OK,TK_Complete,4229EIN340,T.E.R for Instrument  Mechanical bulk,,,,0,0,0,0,120,0,0,0,,2012-03-27 00:00,2012-03-27 00:00,2013-02-10 08:00,2013-02-10 08:00,,2012-06-30 00:00,2012-06-30 00:00,,,2012-04-01 08:00,2012-04-19 16:00,,,,,PT_Normal,,,,,FB1yYvXX6EOZhI5Q4pM5Cw,4hM7c1CEokC8T6AEFK3z1g,,,N,0,0,,,2012-07-16 15:22,2012-07-16 15:22,admin,admin
713,151310,5776,24213,6944,1,100,N,N,N,CP_Drtn,TT_Task,DT_FixedDUR2,RV_OK,TK_Complete,4229EIN370,MRP for Instrument Mechanical bulk,,,,0,0,0,0,40,0,0,0,,2012-05-31 00:00,2012-05-31 16:00,2013-02-10 08:00,2013-02-10 08:00,,2012-06-30 00:00,2012-06-30 00:00,,,2012-05-27 08:00,2012-05-31 16:00,,,,,PT_Normal,,,,,nvOjlscR3k25TOnlDBXnPw,qQiaMneyqke6pEtTAv4l9g,,,N,0,0,,,2012-07-16 15:22,2012-07-16 15:22,admin,admin
714,151311,5776,24213,6944,1,100,N,N,N,CP_Drtn,TT_Task,DT_FixedDUR2,RV_OK,TK_Complete,4229EIN180,Issue MRQ for Instrument mechanical bulk,,,,0,0,0,0,80,0,0,0,,2012-01-08 08:00,2012-02-19 00:00,2013-02-10 08:00,2013-02-10 08:00,,2012-06-30 00:00,2012-06-30 00:00,,,2012-01-08 08:00,2012-01-19 16:00,,,,,PT_Normal,,,,,DmJUkHYqI0u9nJX39SW+JA,xkY73sBs+E6w0i1R8ODp4g,,,N,0,0,,,2012-07-16 15:22,2012-07-16 15:22,admin,admin
715,151312,5776,24213,6944,1,100,N,N,N,CP_Drtn,TT_Task,DT_FixedDUR2,RV_OK,TK_Complete,4229EIN250,T.E.R for field Instrument,,,,0,0,0,0,120,0,0,0,2012-01-17 00:00,2012-01-17 08:00,2012-05-02 16:00,2012-08-26 08:00,2012-08-26 08:00,,2012-06-30 00:00,2012-06-30 00:00,,,2012-01-17 08:00,2012-02-07 16:00,,,,CS_MSOA,PT_Normal,,,,,cpsd4Po7o0aApIcvB+bvoQ,+adQvSlUzkOZha6HG7fiRA,,,N,0,0,,,2012-07-16 15:22,2012-07-16 15:22,admin,admin
716,151313,5776,24213,6944,1,0,N,N,N,CP_Drtn,TT_Task,DT_FixedDUR2,RV_OK,TK_NotStart,4229EIN350,MRP for field Instrument,,280,0,40,0,0,0,40,0,0,0,,,,2012-08-30 08:00,2012-09-05 16:00,,2012-07-05 08:00,2012-07-11 16:00,2012-07-05 08:00,2012-07-11 16:00,2012-07-05 08:00,2012-07-11 16:00,,2012-08-30 08:00,2012-09-05 16:00,,PT_Normal,,,,,paFCbXlNm0yxqzpxAQ2wIQ,uCQ7t7XtkE2pu5tmschigw,,,N,0,0,,,2012-07-16 15:22,2012-07-16 15:22,admin,admin
717,151314,5776,24213,6944,1,100,N,N,N,CP_Drtn,TT_Task,DT_FixedDUR2,RV_OK,TK_Complete,4229EIN90,Issue MRQ for field Instrument,,,,0,0,0,0,40,0,0,0,,2011-11-16 00:00,2011-12-13 00:00,2012-08-26 08:00,2012-08-26 08:00,,2012-06-30 00:00,2012-06-30 00:00,,,2011-12-04 08:00,2011-12-08 16:00,,,,,PT_Normal,,,,,/WL84foxCEOlfi2+I0ecUg,fa+QQs2lrkWif6ZY5ZmI+Q,,,N,0,0,,,2012-07-16 15:22,2012-07-16 15:22,admin,admin
718,151315,5776,24213,6944,1,100,N,N,N,CP_Drtn,TT_Task,DT_FixedDUR2,RV_OK,TK_Complete,4229EIN170,T.E.R for choke valves,,,,0,0,0,0,160,0,0,0,,2011-12-27 00:00,2012-04-03 00:00,2012-08-05 08:00,2012-08-05 08:00,,2012-06-30 00:00,2012-06-30 00:00,,,2012-01-01 08:00,2012-01-29 16:00,,,,,PT_Normal,,,,,EKfJscwblkiSNbl7QbduZg,+adQvSlUzkOZha6HG7fiRA,,,N,0,0,,,2012-07-16 15:22,2012-07-16 15:22,admin,admin
719,151316,5776,24213,6944,1,100,N,N,N,CP_Drtn,TT_Task,DT_FixedDUR2,RV_OK,TK_Complete,4229EIN290,MRP for Choke valves,,,,0,0,0,0,40,0,0,0,,2012-05-27 00:00,2012-06-05 00:00,2012-11-05 08:00,2012-11-05 08:00,,2012-06-30 00:00,2012-06-30 00:00,,,2012-06-03 08:00,2012-06-07 16:00,,,,,PT_Normal,,,,,VWyGx1CWnUufwUKyaJq1+g,uCQ7t7XtkE2pu5tmschigw,,,N,0,0,,,2012-07-16 15:22,2012-07-16 15:22,admin,admin
720,151317,5776,24213,6944,1,100,N,N,N,CP_Drtn,TT_Task,DT_FixedDUR2,RV_OK,TK_Complete,4229EIN40,Issue MRQ for Choke valves,,,,0,0,0,0,40,0,0,0,,2011-10-10 08:48,2011-11-24 00:00,2012-08-05 08:00,2012-08-05 08:00,,2012-06-30 00:00,2012-06-30 00:00,,,2011-10-10 08:48,2011-10-17 08:48,,,,,PT_Normal,,,,,/XW4Wd2g3EWU43cQBLJ9Sw,fa+QQs2lrkWif6ZY5ZmI+Q,,,N,0,0,,,2012-07-16 15:22,2012-07-16 15:22,admin,admin
721,151318,5776,24213,6944,1,0,N,N,N,CP_Drtn,TT_Task,DT_FixedDUR2,RV_OK,TK_NotStart,4229EIN560,V.P.R for Instrument Electrical bulk,,712,424,160,0,0,0,160,0,0,0,,,,2013-01-28 08:00,2013-02-24 16:00,,2012-09-18 08:00,2012-10-15 16:00,2012-09-18 08:00,2012-10-15 16:00,2012-09-18 08:00,2012-10-15 16:00,,2013-01-28 08:00,2013-02-24 16:00,,PT_Normal,,,,,f0gPRkbC10OcGIU28vzS9Q,,,,N,0,0,,,2012-07-16 15:22,2012-07-16 15:22,admin,admin
722,151319,5776,24213,6944,1,0,N,N,N,CP_Drtn,TT_Task,DT_FixedDUR2,RV_OK,TK_NotStart,4229EIN540,V.P.R for field instruments,,592,304,280,0,0,0,280,0,0,0,,,,2013-01-07 08:00,2013-02-24 16:00,,2012-09-18 08:00,2012-11-12 16:00,2012-09-18 08:00,2012-11-12 16:00,2012-09-18 08:00,2012-11-12 16:00,,2013-01-07 08:00,2013-02-24 16:00,,PT_Normal,,,,,IhbYTATsXEaxM5SwcIQKwA,,,,N,0,0,,,2012-07-16 15:22,2012-07-16 15:22,admin,admin
723,151320,5776,24213,6944,1,100,N,N,N,CP_Drtn,TT_Task,DT_FixedDUR2,RV_OK,TK_Complete,4229EIN80,T.E.R for  SGS,,,,0,0,0,0,200,0,0,0,,2011-09-28 08:00,2012-01-09 16:00,2012-07-29 08:00,2012-07-29 08:00,,2012-06-30 00:00,2012-06-30 00:00,,,2011-09-28 08:00,2011-11-02 16:00,,,,,PT_Normal,,,,,Av0jAgaWsUWk2vU/Cin0Ig,+adQvSlUzkOZha6HG7fiRA,,,N,0,0,,,2012-07-16 15:22,2012-07-16 15:22,admin,admin
724,151321,5776,24213,6944,1,100,N,N,N,CP_Drtn,TT_Task,DT_FixedDUR2,RV_OK,TK_Complete,4229EIN210,MRP for SGS,,,,0,0,0,0,40,0,0,0,,2012-03-08 08:00,2012-05-08 00:00,2012-07-29 08:00,2012-07-29 08:00,,2012-06-30 00:00,2012-06-30 00:00,,,2012-03-08 08:00,2012-03-14 16:00,,,,,PT_Normal,,,,,aCW6hXP/g0Ond/pooeXTOw,uCQ7t7XtkE2pu5tmschigw,,,N,0,0,,,2012-07-16 15:22,2012-07-16 15:22,admin,admin
725,151322,5776,24213,6944,1,100,N,N,N,CP_Drtn,TT_Task,DT_FixedDUR2,RV_OK,TK_Complete,4229EIN10,Issue MRQ for SGS,,,,0,0,0,0,64,0,0,0,,2011-08-15 08:00,2011-08-24 16:00,2012-07-29 08:00,2012-07-29 08:00,,2012-06-30 00:00,2012-06-30 00:00,,,2011-08-15 08:00,2011-08-24 16:00,,,,,PT_Normal,,,,,sbClxXlrHUaqixGtr047yA,fa+QQs2lrkWif6ZY5ZmI+Q,,,N,0,0,,,2012-07-16 15:22,2012-07-16 15:22,admin,admin
726,151323,5776,24213,6944,1,100,N,N,N,CP_Drtn,TT_Task,DT_FixedDUR2,RV_OK,TK_Complete,4229EIN220,T.E.R for SDV,,,,0,0,0,0,160,0,0,0,,2011-11-28 00:00,2012-02-01 00:00,2013-02-24 16:00,2013-02-24 16:00,,2012-06-30 00:00,2012-06-30 00:00,,,2011-12-04 08:00,2011-12-29 16:00,,,,,PT_Normal,,,,,P+UrQ09eS02vrzZ3peG5ig,QZSem8n3HEqSrXo4nZ4rrA,,,N,0,0,,,2012-07-16 15:22,2012-07-16 15:22,admin,admin
727,151324,5776,24213,6944,1,100,N,N,N,CP_Drtn,TT_Task,DT_FixedDUR2,RV_OK,TK_Complete,4229EIN610,Additional shutdown valves T.E.R,,,,0,0,0,0,112,0,0,0,,2012-05-27 00:00,2012-06-25 00:00,2012-07-01 08:00,2012-07-01 08:00,,2012-06-30 00:00,2012-06-30 00:00,,,2012-05-31 08:00,2012-06-19 16:00,,,,,PT_Normal,,,,,OcXURQIytEKyJXnjKDbwFw,,,,Y,0,0,,,2012-07-16 15:22,2012-07-16 15:22,admin,admin
728,151325,5776,24213,6944,1,0,N,N,N,CP_Drtn,TT_Task,DT_FixedDUR2,RV_OK,TK_NotStart,4229EIN620,Additional shutdown valves MRP,,1072,0,40,0,0,0,40,0,0,0,,,,2013-02-07 08:00,2013-02-13 16:00,,2012-07-22 08:00,2012-07-26 16:00,2012-07-22 08:00,2012-07-26 16:00,2012-07-22 08:00,2012-07-26 16:00,,2013-02-07 08:00,2013-02-13 16:00,,PT_Normal,,,,,EurkYlswckeCDt5gglhh+g,,,,N,0,0,,,2012-07-16 15:22,2012-07-16 15:22,admin,admin
729,151326,5776,24213,6944,1,100,N,N,N,CP_Drtn,TT_Task,DT_FixedDUR2,RV_OK,TK_Complete,4229EIN600,Additional shutdown valves MRQ,,,,0,0,0,0,80,0,0,0,,2012-04-29 08:00,2012-05-06 00:00,2012-07-01 08:00,2012-07-01 08:00,,2012-06-30 00:00,2012-06-30 00:00,,,2012-04-29 08:00,2012-05-10 16:00,,,,,PT_Normal,,,,,whbewbdfsU2rdmOpzxJ56Q,,,,Y,0,0,,,2012-07-16 15:22,2012-07-16 15:22,admin,admin
730,151327,5776,24213,6944,1,0,N,N,N,CP_Drtn,TT_Task,DT_FixedDUR2,RV_OK,TK_Active,4229EPR300,V.P.R for Shutdown valves,,568,280,680,0,0,0,680,0,0,0,,2012-04-29 00:00,,2012-10-29 08:00,2013-02-24 16:00,,2012-07-08 08:00,2012-11-15 16:00,2012-07-08 08:00,2012-11-15 16:00,2012-06-20 08:00,2012-10-30 16:00,,2012-10-29 08:00,2013-02-24 16:00,,PT_Normal,,,,,kjDY3TvbkU+rmJ5YWyI8nA,,,,N,0,0,,,2012-07-16 15:22,2012-07-16 15:22,admin,admin
731,151328,5776,24213,6944,1,100,N,N,N,CP_Drtn,TT_Task,DT_FixedDUR2,RV_OK,TK_Complete,4229EIN550,V.P.R for Instrument Mechanical bulk,,,,0,0,0,0,240,0,0,0,,2012-05-31 00:00,2012-05-31 00:00,2013-02-24 16:00,2013-02-24 16:00,,2012-06-30 00:00,2012-06-30 00:00,,,2012-07-22 08:00,2012-09-06 16:00,,,,,PT_Normal,,,,,Civ7iWvdz0mr0JOydrc5CA,,,,N,0,0,,,2012-07-16 15:22,2012-07-16 15:22,admin,admin
732,151329,5776,24213,6944,1,100,N,N,N,CP_Drtn,TT_Task,DT_FixedDUR2,RV_OK,TK_Complete,4229EIN20,Issue MRQ for MPFM,,,,0,0,0,0,40,0,0,0,,2011-09-29 08:00,2011-10-04 00:00,2012-08-05 08:00,2012-08-05 08:00,,2012-06-30 00:00,2012-06-30 00:00,,,2011-09-29 08:00,2011-10-05 16:00,,,,,PT_Normal,,,,,XlS15d9lcUeTi9wx4gPUfQ,fa+QQs2lrkWif6ZY5ZmI+Q,,,N,0,0,,,2012-07-16 15:22,2012-07-16 15:22,admin,admin
733,151330,5776,24213,6944,1,100,N,N,N,CP_Drtn,TT_Task,DT_FixedDUR2,RV_OK,TK_Complete,4229EIN260,MRP for MPFM,,,,0,0,0,0,40,0,0,0,,2012-02-09 00:00,2012-02-20 00:00,2012-08-05 08:00,2012-08-05 08:00,,2012-06-30 00:00,2012-06-30 00:00,,,2012-03-04 08:00,2012-03-08 16:00,,,,,PT_Normal,,,,,pDzK9bqqq0ywnhLkJIJm/A,uCQ7t7XtkE2pu5tmschigw,,,N,0,0,,,2012-07-16 15:22,2012-07-16 15:22,admin,admin
734,151331,5776,24215,6944,1,100,N,N,N,CP_Drtn,TT_Task,DT_FixedDUR2,RV_OK,TK_Complete,4229EPL290,"18"""" spool arangement drawing -Design",,,,0,0,0,0,120,0,0,0,,2011-12-29 00:00,2012-02-13 00:00,2013-02-18 08:00,2013-02-18 08:00,,2012-06-30 00:00,2012-06-30 00:00,,,2012-01-01 08:00,2012-01-19 16:00,,,,,PT_Normal,,,,,nz+XEECwEkeZwF97lb06LQ,,,,N,0,0,,,2012-07-16 15:22,2012-07-16 15:22,admin,admin
735,151332,5776,24215,6944,1,100,N,N,N,CP_Drtn,TT_Task,DT_FixedDUR2,RV_OK,TK_Complete,4229EPL390,"18"""" spool arangement drawing -Construction",,,,0,0,0,0,120,0,0,0,,2012-03-18 00:00,2012-03-27 00:00,2013-02-24 16:00,2013-02-24 16:00,,2012-06-30 00:00,2012-06-30 00:00,,,2012-03-04 08:00,2012-03-22 16:00,,,,,PT_Normal,,,,,dFWiyprDmk6quB6hm8YvFA,,,,N,0,0,,,2012-07-16 15:22,2012-07-16 15:22,admin,admin
736,151333,5776,24215,6944,1,100,N,N,N,CP_Drtn,TT_Task,DT_FixedDUR2,RV_OK,TK_Complete,4229EPL170,"8"""" spool arrangement drawing -Approval",,,,0,0,0,0,120,0,0,0,,2011-11-23 00:00,2011-12-15 00:00,2013-02-18 08:00,2013-02-18 08:00,,2012-06-30 00:00,2012-06-30 00:00,,,2011-12-04 08:00,2011-12-22 16:00,,,,,PT_Normal,,,,,xkx1mC7m3kS7NYmtVdZX4w,jOOEz2anUU+9clXvBjEQhQ,,,N,0,0,,,2012-07-16 15:22,2012-07-16 15:22,admin,admin
737,151334,5776,24215,6944,1,100,N,N,N,CP_Drtn,TT_Task,DT_FixedDUR2,RV_OK,TK_Complete,4229EPL310,"8"""" spool arrangement drawing -Design",,,,0,0,0,0,120,0,0,0,,2011-12-29 00:00,2012-02-13 00:00,2013-02-18 08:00,2013-02-18 08:00,,2012-06-30 00:00,2012-06-30 00:00,,,2012-01-01 08:00,2012-01-19 16:00,,,,,PT_Normal,,,,,uJDYOYmrFUSaipWkFZCzIg,0TGBIs4CqUS2FVJ2PYQVfA,,,N,0,0,,,2012-07-16 15:22,2012-07-16 15:22,admin,admin
738,151335,5776,24215,6944,1,100,N,N,N,CP_Drtn,TT_Task,DT_FixedDUR2,RV_OK,TK_Complete,4229EPL410,"8"""" spool arangement drawing -Construction",,,,0,0,0,0,120,0,0,0,,2012-03-18 00:00,2012-03-27 00:00,2013-02-24 16:00,2013-02-24 16:00,,2012-06-30 00:00,2012-06-30 00:00,,,2012-03-04 08:00,2012-03-22 16:00,,,,,PT_Normal,,,,,UA+flJc0AEuPd58/Jo/q8g,8R1bdDNv6USkyU4V9lAC9w,,,N,0,0,,,2012-07-16 15:22,2012-07-16 15:22,admin,admin
739,151336,5776,24215,6944,1,100,N,N,N,CP_Drtn,TT_Task,DT_FixedDUR2,RV_OK,TK_Complete,4229EPL230,"8"""" riser arrangement drawing -Approval",,,,0,0,0,0,80,0,0,0,,2011-12-14 08:00,2011-12-28 00:00,2013-02-18 08:00,2013-02-18 08:00,,2012-06-30 00:00,2012-06-30 00:00,,,2011-12-14 08:00,2011-12-27 16:00,,,,,PT_Normal,,,,,EYMCEMbwc0muGFgH969HVA,8jUDyxPYdU2TST0Gh6JkUg,,,N,0,0,,,2012-07-16 15:22,2012-07-16 15:22,admin,admin
740,151337,5776,24215,6944,1,100,N,N,N,CP_Drtn,TT_Task,DT_FixedDUR2,RV_OK,TK_Complete,4229EPL330,"8"""" riser arrangement drawing -Design",,,,0,0,0,0,80,0,0,0,,2012-02-26 00:00,2012-02-29 00:00,2013-02-18 08:00,2013-02-18 08:00,,2012-06-30 00:00,2012-06-30 00:00,,,2012-03-13 08:00,2012-03-26 16:00,,,,,PT_Normal,,,,,lwniicrFk06FpzQIuGY7KQ,DqhkdzQg0USL5rbPHbkl1Q,,,N,0,0,,,2012-07-16 15:22,2012-07-16 15:22,admin,admin
741,151338,5776,24215,6944,1,100,N,N,N,CP_Drtn,TT_Task,DT_FixedDUR2,RV_OK,TK_Complete,4229EPL420,"8"""" riser arrangement drawing -Construction",,,,0,0,0,0,120,0,0,0,,2012-03-25 00:00,2012-04-19 00:00,2013-02-24 16:00,2013-02-24 16:00,,2012-06-30 00:00,2012-06-30 00:00,,,2012-04-01 08:00,2012-04-19 16:00,,,,,PT_Normal,,,,,Lhau9rpF90SKcKQxpMkV1w,w2TMQgyxDEm1NRXaCHdGig,,,N,0,0,,,2012-07-16 15:22,2012-07-16 15:22,admin,admin
742,151339,5776,24215,6944,1,100,N,N,N,CP_Drtn,TT_Task,DT_FixedDUR2,RV_OK,TK_Complete,4229EPL240,"18"""" riser arrangement drawing -Approval",,,,0,0,0,0,80,0,0,0,,2011-12-14 08:00,2011-12-28 00:00,2013-02-18 08:00,2013-02-18 08:00,,2012-06-30 00:00,2012-06-30 00:00,,,2011-12-14 08:00,2011-12-27 16:00,,,,,PT_Normal,,,,,SKub76z+9kyrDx9sqMUubw,c9vMafYWtkK1NGoiHIJ1wA,,,N,0,0,,,2012-07-16 15:22,2012-07-16 15:22,admin,admin
743,151340,5776,24215,6944,1,100,N,N,N,CP_Drtn,TT_Task,DT_FixedDUR2,RV_OK,TK_Complete,4229EPL350,"18"""" riser arrangement drawing -Design",,,,0,0,0,0,80,0,0,0,,2012-02-26 00:00,2012-02-29 00:00,2013-02-18 08:00,2013-02-18 08:00,,2012-06-30 00:00,2012-06-30 00:00,,,2012-03-13 08:00,2012-03-26 16:00,,,,,PT_Normal,,,,,0XkAsJLcHky7U3QjHLzBjQ,ducMrzoJrUqdTOcWLFVgnw,,,N,0,0,,,2012-07-16 15:22,2012-07-16 15:22,admin,admin
744,151341,5776,24215,6944,1,100,N,N,N,CP_Drtn,TT_Task,DT_FixedDUR2,RV_OK,TK_Complete,4229EPL430,"18"""" riser arrangement drawing -Construction",,,,0,0,0,0,120,0,0,0,,2012-03-25 00:00,2012-04-19 00:00,2013-02-24 16:00,2013-02-24 16:00,,2012-06-30 00:00,2012-06-30 00:00,,,2012-04-01 08:00,2012-04-19 16:00,,,,,PT_Normal,,,,,e1N8mBzSxUGBlx+F3hob9g,VwsEWnSmS0O0TiUHBQD99w,,,N,0,0,,,2012-07-16 15:22,2012-07-16 15:22,admin,admin
745,151342,5776,24215,6944,1,100,N,N,N,CP_Drtn,TT_Task,DT_FixedDUR2,RV_OK,TK_Complete,4229EPL440,"18""""Spool ISO-IFC",,,,0,0,0,0,0,0,0,0,,2012-05-02 00:00,2012-05-29 00:00,2013-02-24 16:00,2013-02-24 16:00,,2012-06-30 00:00,2012-06-30 00:00,,,2012-06-03 08:00,2012-06-03 08:00,,,,,PT_Normal,,,,,WmzGoFWCmUil1g/d4ViulQ,,,,N,0,0,,,2012-07-16 15:22,2012-07-16 15:22,admin,admin
746,151343,5776,24215,6944,1,100,N,N,N,CP_Drtn,TT_Task,DT_FixedDUR2,RV_OK,TK_Complete,4229EPL450,"8""""Spool ISO-IFC",,,,0,0,0,0,0,0,0,0,,2012-05-02 00:00,2012-05-29 00:00,2013-02-24 16:00,2013-02-24 16:00,,2012-06-30 00:00,2012-06-30 00:00,,,2012-06-03 08:00,2012-06-03 08:00,,,,,PT_Normal,,,,,vEjOBrtca0KlHn/RFInqMA,QWvo4lzWEkeSB/GI9TalYQ,,,N,0,0,,,2012-07-16 15:22,2012-07-16 15:22,admin,admin
747,151344,5776,24215,6944,1,100,N,N,N,CP_Drtn,TT_Task,DT_FixedDUR2,RV_OK,TK_Complete,4229EPL460,"8""""Riser ISO-IFC",,,,0,0,0,0,0,0,0,0,,2012-05-02 00:00,2012-05-29 00:00,2013-02-24 16:00,2013-02-24 16:00,,2012-06-30 00:00,2012-06-30 00:00,,,2012-06-03 08:00,2012-06-03 08:00,,,,,PT_Normal,,,,,P3UCJtxHQEmv7GHEXmeHig,,,,N,0,0,,,2012-07-16 15:22,2012-07-16 15:22,admin,admin
748,151345,5776,24215,6944,1,100,N,N,N,CP_Drtn,TT_Task,DT_FixedDUR2,RV_OK,TK_Complete,4229EPL470,"18""""Riser ISO-IFC",,,,0,0,0,0,0,0,0,0,,2012-05-02 00:00,2012-05-29 00:00,2013-02-24 16:00,2013-02-24 16:00,,2012-06-30 00:00,2012-06-30 00:00,,,2012-06-03 08:00,2012-06-03 08:00,,,,,PT_Normal,,,,,mwowO4OoLUmUNoDaTQ8GaA,,,,N,0,0,,,2012-07-16 15:22,2012-07-16 15:22,admin,admin
749,151346,5776,24215,6944,1,100,N,N,N,CP_Drtn,TT_Task,DT_FixedDUR2,RV_OK,TK_Complete,4229EPL480,MTO for risers / spools,,,,0,0,0,0,48,0,0,0,,2012-05-28 00:00,2012-06-11 00:00,2013-02-24 16:00,2013-02-24 16:00,,2012-06-30 00:00,2012-06-30 00:00,,,2012-07-01 08:00,2012-07-08 16:00,,,,,PT_Normal,,,,,dXcqYaRsyUyDhdUbXTnxGw,,,,N,0,0,,,2012-07-16 15:22,2012-07-16 15:22,admin,admin
750,151347,5776,24215,6944,1,100,N,N,N,CP_Drtn,TT_Task,DT_FixedDUR2,RV_OK,TK_Complete,4229EPL320,"18""""Spool ISO-IFD",,,,0,0,0,0,120,0,0,0,,2012-02-01 00:00,2012-02-21 00:00,2013-02-24 16:00,2013-02-24 16:00,,2012-06-30 00:00,2012-06-30 00:00,,,2012-03-04 08:00,2012-03-22 16:00,,,,,PT_Normal,,,,,60zQYK4b0UGgoiRG/a7qjA,QWvo4lzWEkeSB/GI9TalYQ,,,N,0,0,,,2012-07-16 15:22,2012-07-16 15:22,admin,admin
751,151348,5776,24215,6944,1,100,N,N,N,CP_Drtn,TT_Task,DT_FixedDUR2,RV_OK,TK_Complete,4229EPL340,"8""""Spool ISO-IFD",,,,0,0,0,0,120,0,0,0,,2012-02-01 00:00,2012-02-21 00:00,2013-02-24 16:00,2013-02-24 16:00,,2012-06-30 00:00,2012-06-30 00:00,,,2012-03-04 08:00,2012-03-22 16:00,,,,,PT_Normal,,,,,y7LFVz2RKUeOCzdZbew79w,+FL8Jip98kWoIme5/i161w,,,N,0,0,,,2012-07-16 15:22,2012-07-16 15:22,admin,admin
752,151349,5776,24215,6944,1,100,N,N,N,CP_Drtn,TT_Task,DT_FixedDUR2,RV_OK,TK_Complete,4229EPL380,"8""""Riser ISO-IFD",,,,0,0,0,0,120,0,0,0,,2012-02-26 00:00,2012-03-15 00:00,2013-02-24 16:00,2013-02-24 16:00,,2012-06-30 00:00,2012-06-30 00:00,,,2012-03-05 08:00,2012-03-25 16:00,,,,,PT_Normal,,,,,Um1Xf6+rF0KXLPfTsTtC7A,An0k6jaeek+tGUVppnFC2g,,,N,0,0,,,2012-07-16 15:22,2012-07-16 15:22,admin,admin
753,151350,5776,24215,6944,1,100,N,N,N,CP_Drtn,TT_Task,DT_FixedDUR2,RV_OK,TK_Complete,4229EPL400,"18""""Riser ISO-IFD",,,,0,0,0,0,120,0,0,0,,2012-02-26 08:00,2012-03-15 00:00,2013-02-24 16:00,2013-02-24 16:00,,2012-06-30 00:00,2012-06-30 00:00,,,2012-02-26 08:00,2012-03-15 16:00,,,,,PT_Normal,,,,,nr/GuiPXikWN/FAKq5ct8A,pGWAx7T7vESmiNqcx8nO8w,,,N,0,0,,,2012-07-16 15:22,2012-07-16 15:22,admin,admin
754,151351,5776,24215,6944,1,100,N,N,N,CP_Drtn,TT_Task,DT_FixedDUR2,RV_OK,TK_Complete,4229EPL160,"18"""" spool arrangement drawing -Approval",,,,0,0,0,0,120,0,0,0,,2011-11-15 00:00,2011-12-15 00:00,2013-02-18 08:00,2013-02-18 08:00,,2012-06-30 00:00,2012-06-30 00:00,,,2011-12-04 08:00,2011-12-22 16:00,,,,,PT_Normal,,,,,Pe9HoRMFGk6OyD0njU6iYQ,,,,N,0,0,,,2012-07-16 15:22,2012-07-16 15:22,admin,admin
755,151352,5776,24216,6944,1,100,N,N,N,CP_Drtn,TT_Task,DT_FixedDUR2,RV_OK,TK_Complete,4229EPL120,Wall thickness report for risers & spools-Approval,,,,0,0,0,0,40,0,0,0,,2011-11-30 00:00,2011-12-05 16:00,2013-02-24 16:00,2013-02-24 16:00,,2012-06-30 00:00,2012-06-30 00:00,,,2011-12-11 08:00,2011-12-15 16:00,,,,,PT_Normal,,,,,6X49LB7VME2dygWxiFuNjw,,,,N,0,0,,,2012-07-16 15:22,2012-07-16 15:22,admin,admin
756,151353,5776,24216,6944,1,100,N,N,N,CP_Drtn,TT_Task,DT_FixedDUR2,RV_OK,TK_Complete,4229EPL200,Wall thickness report for risers & spools-Final,,,,0,0,0,0,40,0,0,0,,2011-12-06 00:00,2011-12-19 16:00,2013-02-24 16:00,2013-02-24 16:00,,2012-06-30 00:00,2012-06-30 00:00,,,2011-12-13 08:00,2011-12-19 16:00,,,,,PT_Normal,,,,,tuFtIQ2D9UGPnmmFpYYSXg,,,,N,0,0,,,2012-07-16 15:22,2012-07-16 15:22,admin,admin
757,151354,5776,24216,6944,1,100,N,N,N,CP_Drtn,TT_Task,DT_FixedDUR2,RV_OK,TK_Complete,4229EPL490,Risers / spoolpieces stress analysis report-Construction,,,,0,0,0,0,80,0,0,0,,2012-04-26 00:00,2012-06-05 00:00,2013-02-24 16:00,2013-02-24 16:00,,2012-06-30 00:00,2012-06-30 00:00,,,2012-05-24 08:00,2012-06-06 16:00,,,,,PT_Normal,,,,,kF3TbpKjgUCVcvOnrDzzBA,,,,N,0,0,,,2012-07-16 15:22,2012-07-16 15:22,admin,admin
758,151355,5776,24217,6944,1,100,N,N,N,CP_Drtn,TT_Task,DT_FixedDUR2,RV_OK,TK_Complete,4229EPL260,MRP for heat shrink sleeves,,,,0,0,0,0,40,0,0,0,,2012-01-24 08:00,2012-02-02 00:00,2013-02-24 16:00,2013-02-24 16:00,,2012-06-30 00:00,2012-06-30 00:00,,,2012-01-24 08:00,2012-01-31 16:00,,,,,PT_Normal,,,,,AslTS9P0vU2X2K6DfIlf7g,,,,N,0,0,,,2012-07-16 15:22,2012-07-16 15:22,admin,admin
759,151356,5776,24217,6944,1,100,N,N,N,CP_Drtn,TT_Task,DT_FixedDUR2,RV_OK,TK_Complete,4229EPL270,MRP for kamos ring,,,,0,0,0,0,40,0,0,0,,2011-12-21 00:00,2011-12-26 00:00,2013-02-24 16:00,2013-02-24 16:00,,2012-06-30 00:00,2012-06-30 00:00,,,2012-01-08 08:00,2012-01-12 16:00,,,,,PT_Normal,,,,,rZP6b8XS70qhC4mG4NeJPQ,,,,N,0,0,,,2012-07-16 15:22,2012-07-16 15:22,admin,admin
760,151357,5776,24217,6944,1,100,N,N,N,CP_Drtn,TT_Task,DT_FixedDUR2,RV_OK,TK_Complete,4229EPL300,MRP for isolating joints,,,,0,0,0,0,8,0,0,0,,2012-01-24 00:00,2012-01-31 00:00,2013-02-24 16:00,2013-02-24 16:00,,2012-06-30 00:00,2012-06-30 00:00,,,2012-01-29 08:00,2012-01-29 16:00,,,,,PT_Normal,,,,,fIDDmmsk30+z6lk3IGW0sQ,,,,N,0,0,,,2012-07-16 15:22,2012-07-16 15:22,admin,admin
761,151358,5776,24217,6944,1,100,N,N,N,CP_Drtn,TT_Task,DT_FixedDUR2,RV_OK,TK_Complete,4229EPL190,MRP for hot bends,,,,0,0,0,0,40,0,0,0,,2012-02-09 00:00,2012-02-19 00:00,2012-12-02 08:00,2012-12-02 08:00,,2012-06-30 00:00,2012-06-30 00:00,,,2012-01-29 08:00,2012-02-02 16:00,,,,,PT_Normal,,,,,cxzAkqbk90a9n6fHGB27Dw,,,,N,0,0,,,2012-07-16 15:22,2012-07-16 15:22,admin,admin
762,151359,5776,24217,6944,1,100,N,N,N,CP_Drtn,TT_Task,DT_FixedDUR2,RV_OK,TK_Complete,4229EPL550,VPR for isolating joints,,,,0,0,0,0,320,0,0,0,,2012-01-09 00:00,2012-04-16 00:00,2013-02-24 16:00,2013-02-24 16:00,,2012-06-30 00:00,2012-06-30 00:00,,,2012-03-11 08:00,2012-05-03 16:00,,,,,PT_Normal,,,,,yBTJsFqsnU+z2PmXf7KqDw,,,,N,0,0,,,2012-07-16 15:22,2012-07-16 15:22,admin,admin
763,151360,5776,24217,6944,1,100,N,N,N,CP_Drtn,TT_Task,DT_FixedDUR2,RV_OK,TK_Complete,4229EPL520,VPR for  anchor flanges,,,,0,0,0,0,320,0,0,0,,2012-02-21 00:00,2012-03-20 00:00,2013-02-24 16:00,2013-02-24 16:00,,2012-07-05 16:00,2012-07-05 16:00,,,2012-04-22 08:00,2012-06-14 16:00,,,,,PT_Normal,,,,,ttJyXg94d0CMsbwfPdLG9w,,,,N,0,0,,,2012-07-16 15:22,2012-07-16 15:22,admin,admin
764,151361,5776,24217,6944,1,0,N,N,N,CP_Drtn,TT_Task,DT_FixedDUR2,RV_OK,TK_Active,4229EPL510,VPR for flanges,,1200,1200,88,0,0,0,320,0,0,0,,2012-03-11 00:00,,2013-02-10 08:00,2013-02-24 16:00,,2012-07-01 08:00,2012-07-15 16:00,2012-07-01 08:00,2012-07-15 16:00,2012-03-29 08:00,2012-05-23 16:00,,2013-02-10 08:00,2013-02-24 16:00,,PT_Normal,,,,,67RwC8FPZUCEQ4ltgXJvRQ,,,,N,0,0,,,2012-07-16 15:22,2012-07-16 15:22,admin,admin
765,151362,5776,24217,6944,1,100,N,N,N,CP_Drtn,TT_Task,DT_FixedDUR2,RV_OK,TK_Complete,4229EPL530,VPR for heat shrink sleeves,,,,0,0,0,0,320,0,0,0,,2012-02-19 00:00,2012-02-29 00:00,2013-02-24 16:00,2013-02-24 16:00,,2012-06-30 00:00,2012-06-30 00:00,,,2012-03-04 08:00,2012-04-26 16:00,,,,,PT_Normal,,,,,6DEc+sGViE+8HDIwdWE+sw,,,,N,0,0,,,2012-07-16 15:22,2012-07-16 15:22,admin,admin
766,151363,5776,24217,6944,1,100,N,N,N,CP_Drtn,TT_Task,DT_FixedDUR2,RV_OK,TK_Complete,4229EPL540,VPR for  kamos ring,,,,0,0,0,0,320,0,0,0,,2012-02-01 00:00,2012-03-01 00:00,2013-02-24 16:00,2013-02-24 16:00,,2012-06-30 00:00,2012-06-30 00:00,,,2012-03-04 08:00,2012-04-26 16:00,,,,,PT_Normal,,,,,4uRXEKzEKkqU+H6rZtoWGw,,,,N,0,0,,,2012-07-16 15:22,2012-07-16 15:22,admin,admin
767,151364,5776,24217,6944,1,100,N,N,N,CP_Drtn,TT_Task,DT_FixedDUR2,RV_OK,TK_Complete,4229EPL70,"T.E.R for 8""""line pipe",,,,0,0,0,0,160,0,0,0,,2011-11-22 00:00,2012-01-08 16:00,2013-01-17 08:00,2013-01-17 08:00,,2012-06-30 00:00,2012-06-30 00:00,,,2012-01-22 08:00,2012-02-19 16:00,,,,,PT_Normal,,,,,QO+h7CV4AEOTQUIAz/96Rg,,,,N,0,0,,,2012-07-16 15:22,2012-07-16 15:22,admin,admin
768,151365,5776,24217,6944,1,100,N,N,N,CP_Drtn,TT_Task,DT_FixedDUR2,RV_OK,TK_Complete,4229EPL90,T.E.R for hot bends,,,,0,0,0,0,160,0,0,0,,2011-10-30 00:00,2011-12-08 00:00,2012-12-02 08:00,2012-12-02 08:00,,2012-06-30 00:00,2012-06-30 00:00,,,2011-12-04 08:00,2011-12-29 16:00,,,,,PT_Normal,,,,,HZbH9iqQkEihzNQuJ091nQ,,,,N,0,0,,,2012-07-16 15:22,2012-07-16 15:22,admin,admin
769,151366,5776,24217,6944,1,100,N,N,N,CP_Drtn,TT_Task,DT_FixedDUR2,RV_OK,TK_Complete,4229EPL100,T.E.R for flanges,,,,0,0,0,0,160,0,0,0,,2011-12-01 00:00,2012-01-18 16:00,2013-01-26 08:00,2013-01-26 08:00,,2012-06-30 00:00,2012-06-30 00:00,,,2011-12-05 08:00,2012-01-01 16:00,,,,,PT_Normal,,,,,h1YLd8oNvU2zbIKItJ6eRw,,,,N,0,0,,,2012-07-16 15:22,2012-07-16 15:22,admin,admin
770,151367,5776,24217,6944,1,100,N,N,N,CP_Drtn,TT_Task,DT_FixedDUR2,RV_OK,TK_Complete,4229EPL130,T.E.R for heat shrink sleeves,,,,0,0,0,0,120,0,0,0,,2011-11-03 00:00,2011-12-05 00:00,2013-02-24 16:00,2013-02-24 16:00,,2012-06-30 00:00,2012-06-30 00:00,,,2011-12-04 08:00,2011-12-22 16:00,,,,,PT_Normal,,,,,N93Q7xxjjEqOCD8lS+bpLQ,,,,N,0,0,,,2012-07-16 15:22,2012-07-16 15:22,admin,admin
771,151368,5776,24217,6944,1,100,N,N,N,CP_Drtn,TT_Task,DT_FixedDUR2,RV_OK,TK_Complete,4229EPL140,T.E.R for kamos ring,,,,0,0,0,0,120,0,0,0,,2011-11-13 00:00,2011-11-20 00:00,2013-02-24 16:00,2013-02-24 16:00,,2012-06-30 00:00,2012-06-30 00:00,,,2011-12-04 08:00,2011-12-22 16:00,,,,,PT_Normal,,,,,lTNcytlxIk2C+9RqSfJi6g,,,,N,0,0,,,2012-07-16 15:22,2012-07-16 15:22,admin,admin
772,151369,5776,24217,6944,1,100,N,N,N,CP_Drtn,TT_Task,DT_FixedDUR2,RV_OK,TK_Complete,4229EPL210,T.E.R for isolating joints,,,,0,0,0,0,120,0,0,0,,2011-11-13 00:00,2011-12-08 00:00,2013-02-24 16:00,2013-02-24 16:00,,2012-06-30 00:00,2012-06-30 00:00,,,2011-12-04 08:00,2011-12-22 16:00,,,,,PT_Normal,,,,,QFRy7vNoXkm3N+zfURhJ2A,,,,N,0,0,,,2012-07-16 15:22,2012-07-16 15:22,admin,admin
773,151370,5776,24217,6944,1,100,N,N,N,CP_Drtn,TT_Task,DT_FixedDUR2,RV_OK,TK_Complete,4229EPL150,T.E.R for anchor flanges,,,,0,0,0,0,120,0,0,0,,2011-12-06 08:00,2012-01-05 00:00,2013-02-03 08:00,2013-02-03 08:00,,2012-06-30 00:00,2012-06-30 00:00,,,2011-12-06 08:00,2011-12-26 16:00,,,,,PT_Normal,,,,,KYiDbhfYTkyYcRIEvWMYJA,,,,N,0,0,,,2012-07-16 15:22,2012-07-16 15:22,admin,admin
774,151371,5776,24217,6944,1,100,N,N,N,CP_Drtn,TT_Task,DT_FixedDUR2,RV_OK,TK_Complete,4229EPL10,Pipeline specifications & data sheets,,,,0,0,0,0,168,0,0,0,,2011-08-15 08:00,2011-09-14 16:00,2012-12-02 08:00,2012-12-02 08:00,,2012-06-30 00:00,2012-06-30 00:00,,,2011-08-15 08:00,2011-09-14 16:00,,,,,PT_Normal,,,,,m5DEi4dlAk2P9pY39d7vYQ,vfWL9w00SHKHeaxQNrnnog,,,N,0,0,,,2012-07-16 15:22,2012-07-16 15:22,admin,admin
775,151372,5776,24217,6944,1,100,N,N,N,CP_Drtn,TT_Task,DT_FixedDUR2,RV_OK,TK_Complete,4229EPL40,MRQ for heat shrink sleeves,,,,0,0,0,0,80,0,0,0,,2011-09-27 08:00,2011-10-11 16:00,2013-02-18 08:00,2013-02-18 08:00,,2012-06-30 00:00,2012-06-30 00:00,,,2011-09-27 08:00,2011-10-11 16:00,,,,,PT_Normal,,,,,uGroZNHET0WIFKFqZl80JQ,,,,N,0,0,,,2012-07-16 15:22,2012-07-16 15:22,admin,admin
776,151373,5776,24217,6944,1,100,N,N,N,CP_Drtn,TT_Task,DT_FixedDUR2,RV_OK,TK_Complete,4229EPL560,"MRQ for 8"""" line pipe",,,,0,0,0,0,80,0,0,0,,2011-10-09 08:00,2011-10-23 00:00,2013-01-17 08:00,2013-01-17 08:00,,2012-06-30 00:00,2012-06-30 00:00,,,2011-10-09 08:00,2011-10-20 16:00,,,,,PT_Normal,,,,,ZhaE67Yhf0a4zopP/HbYnA,,,,N,0,0,,,2012-07-16 15:22,2012-07-16 15:22,admin,admin
777,151374,5776,24217,6944,1,0,N,N,N,CP_Drtn,TT_Task,DT_FixedDUR2,RV_OK,TK_Active,4229EPL570,"VPR for  8""""line pipe",,1280,1280,8,0,0,0,320,0,0,0,,2012-04-05 00:00,,2013-02-24 08:00,2013-02-24 16:00,,2012-07-01 08:00,2012-07-01 16:00,2012-07-01 08:00,2012-07-01 16:00,2012-05-06 08:00,2012-06-28 16:00,,2013-02-24 08:00,2013-02-24 16:00,,PT_Normal,,,,,JbREemaubEyLCTJlTtEnbg,,,,N,0,0,,,2012-07-16 15:22,2012-07-16 15:22,admin,admin
778,151375,5776,24217,6944,1,100,N,N,N,CP_Drtn,TT_Task,DT_FixedDUR2,RV_OK,TK_Complete,4229EPL20,MRQ for hot bends,,,,0,0,0,0,120,0,0,0,,2011-09-15 08:00,2011-10-02 00:00,2012-12-02 08:00,2012-12-02 08:00,,2012-06-30 00:00,2012-06-30 00:00,,,2011-09-15 08:00,2011-10-05 16:00,,,,,PT_Normal,,,,,qb7oEWrYLky9Ovdq6EzWhQ,,,,N,0,0,,,2012-07-16 15:22,2012-07-16 15:22,admin,admin
779,151376,5776,24217,6944,1,100,N,N,N,CP_Drtn,TT_Task,DT_FixedDUR2,RV_OK,TK_Complete,4229EPL220,MRP for flanges,,,,0,0,0,0,40,0,0,0,,2012-02-26 00:00,2012-02-28 00:00,2013-01-26 08:00,2013-01-26 08:00,,2012-06-30 00:00,2012-06-30 00:00,,,2012-03-07 08:00,2012-03-13 16:00,,,,,PT_Normal,,,,,uJZVHi+LXU6BIcgun/f4oA,,,,N,0,0,,,2012-07-16 15:22,2012-07-16 15:22,admin,admin
780,151377,5776,24217,6944,1,100,N,N,N,CP_Drtn,TT_Task,DT_FixedDUR2,RV_OK,TK_Complete,4229EPL280,MRP for anchor flanges,,,,0,0,0,0,40,0,0,0,,2012-02-14 00:00,2012-02-28 00:00,2013-02-03 08:00,2013-02-03 08:00,,2012-06-30 00:00,2012-06-30 00:00,,,2012-03-04 08:00,2012-03-08 16:00,,,,,PT_Normal,,,,,zxFlR79S/0qFa6WtYBvr1g,,,,N,0,0,,,2012-07-16 15:22,2012-07-16 15:22,admin,admin
781,151378,5776,24217,6944,1,100,N,N,N,CP_Drtn,TT_Task,DT_FixedDUR2,RV_OK,TK_Complete,4229EPL60,MRQ for Kamos ring,,,,0,0,0,0,80,0,0,0,,2011-09-22 08:00,2011-10-02 00:00,2013-02-18 08:00,2013-02-18 08:00,,2012-06-30 00:00,2012-06-30 00:00,,,2011-09-22 08:00,2011-10-05 16:00,,,,,PT_Normal,,,,,zQJU9GGU5UeiM2i6crFTIg,,,,N,0,0,,,2012-07-16 15:22,2012-07-16 15:22,admin,admin
782,151379,5776,24217,6944,1,100,N,N,N,CP_Drtn,TT_Task,DT_FixedDUR2,RV_OK,TK_Complete,4229EPL80,MRQ for isolating joints,,,,0,0,0,0,80,0,0,0,,2011-10-04 08:00,2011-10-19 00:00,2013-02-18 08:00,2013-02-18 08:00,,2012-06-30 00:00,2012-06-30 00:00,,,2011-10-04 08:00,2011-10-18 16:00,,,,,PT_Normal,,,,,FAxZHc0G3UmYD0HbgnadXg,Iy03cOKrXESwGRujrHG5XQ,,,N,0,0,,,2012-07-16 15:22,2012-07-16 15:22,admin,admin
783,151380,5776,24217,6944,1,100,N,N,N,CP_Drtn,TT_Task,DT_FixedDUR2,RV_OK,TK_Complete,4229EPL50,MRQ for anchor flanges,,,,0,0,0,0,64,0,0,0,,2011-10-16 08:00,2011-10-25 16:00,2013-01-17 08:00,2013-01-17 08:00,,2012-06-30 00:00,2012-06-30 00:00,,,2011-10-16 08:00,2011-10-25 16:00,,,,,PT_Normal,,,,,1gKgGWNr8Ua/I+e4ifJ+Tg,,,,N,0,0,,,2012-07-16 15:22,2012-07-16 15:22,admin,admin
784,151381,5776,24217,6944,1,100,N,N,N,CP_Drtn,TT_Task,DT_FixedDUR2,RV_OK,TK_Complete,4229EPL30,MRQ for flanges,,,,0,0,0,0,40,0,0,0,,2011-10-09 08:00,2011-10-13 16:00,2013-01-17 08:00,2013-01-17 08:00,,2012-06-30 00:00,2012-06-30 00:00,,,2011-10-09 08:00,2011-10-13 16:00,,,,,PT_Normal,,,,,qJLYiLW72EKAMH0HyE3PRw,,,,N,0,0,,,2012-07-16 15:22,2012-07-16 15:22,admin,admin
785,151382,5776,24217,6944,1,100,N,N,N,CP_Drtn,TT_Task,DT_FixedDUR2,RV_OK,TK_Complete,4229EPL110,"MRP for 8"""" pipeline",,,,0,0,0,0,40,0,0,0,,2012-02-21 00:00,2012-02-26 00:00,2013-01-17 08:00,2013-01-17 08:00,,2012-06-30 00:00,2012-06-30 00:00,,,2012-03-04 08:00,2012-03-08 16:00,,,,,PT_Normal,,,,,tU7h5Poul0KlB+RyzKGj5w,,,,N,0,0,,,2012-07-16 15:22,2012-07-16 15:22,admin,admin
786,151383,5776,24217,6944,1,100,N,N,N,CP_Drtn,TT_Task,DT_FixedDUR2,RV_OK,TK_Complete,4229EPL250,Testing & pre-commissioning specification-Approval,,,,0,0,0,0,80,0,0,0,,2011-12-14 08:00,2012-01-02 16:00,2013-02-18 08:00,2013-02-18 08:00,,2012-06-30 00:00,2012-06-30 00:00,,,2011-12-14 08:00,2011-12-27 16:00,,,,,PT_Normal,,,,,i6qUYCMQMkClRR7sxxwtfg,,,,N,0,0,,,2012-07-16 15:22,2012-07-16 15:22,admin,admin
787,151384,5776,24217,6944,1,0,N,N,N,CP_Drtn,TT_Task,DT_FixedDUR2,RV_OK,TK_NotStart,4229EPL360,Testing & pre-commissioning specification-Final,,928,640,40,0,0,0,40,0,0,0,,,,2013-02-18 08:00,2013-02-24 16:00,,2012-09-02 08:00,2012-09-06 16:00,2012-09-02 08:00,2012-09-06 16:00,2012-09-02 08:00,2012-09-06 16:00,,2013-02-18 08:00,2013-02-24 16:00,,PT_Normal,,,,,rMACL8vWykq8xIbhUm4bMA,,,,N,0,0,,,2012-07-16 15:22,2012-07-16 15:22,admin,admin
788,151385,5776,24217,6944,1,100,N,N,N,CP_Drtn,TT_Task,DT_FixedDUR2,RV_OK,TK_Complete,4229EPL180,Welding  & NDT specification-Design,,,,0,0,0,0,80,0,0,0,,2011-12-01 00:00,2011-12-21 00:00,2013-02-24 16:00,2013-02-24 16:00,,2012-06-30 00:00,2012-06-30 00:00,,,2011-12-04 08:00,2011-12-15 16:00,,,,,PT_Normal,,,,,ywNtZfZneUyOO7hx+aT+ww,SduIFwWkCkaQdv/5HupADw,,,N,0,0,,,2012-07-16 15:22,2012-07-16 15:22,admin,admin
789,151386,5776,24217,6944,1,100,N,N,N,CP_Drtn,TT_Task,DT_FixedDUR2,RV_OK,TK_Complete,4229EPL370,Welding  & NDT specification-Final,,,,0,0,0,0,40,0,0,0,,2012-01-01 00:00,2012-03-08 00:00,2013-02-24 16:00,2013-02-24 16:00,,2012-06-30 00:00,2012-06-30 00:00,,,2012-07-19 08:00,2012-07-25 16:00,,,,,PT_Normal,,,,,meox8Wjn2EyoO/Aa/+vusA,FggATIGo6UWUldhCHJdfyQ,,,N,0,0,,,2012-07-16 15:22,2012-07-16 15:22,admin,admin
790,151387,5776,24217,6944,1,0,N,N,N,CP_Drtn,TT_Task,DT_FixedDUR2,RV_OK,TK_Active,4229EPL500,VPR for hot bends,,968,968,280,0,0,0,320,0,0,0,,2012-04-18 00:00,,2013-01-07 08:00,2013-02-24 16:00,,2012-07-08 08:00,2012-08-30 16:00,2012-07-08 08:00,2012-08-30 16:00,2012-04-08 08:00,2012-05-31 16:00,,2013-01-07 08:00,2013-02-24 16:00,,PT_Normal,,,,,qmJeKJlka0mhIzLkRpHQ7w,,,,N,0,0,,,2012-07-16 15:22,2012-07-16 15:22,admin,admin
791,151388,5776,24221,6944,1,100,N,N,N,CP_Drtn,TT_Task,DT_FixedDUR2,RV_OK,TK_Complete,4229EPV10,Issue MRQ for Small Tanks,,,,0,0,0,0,40,0,0,0,,2011-09-25 00:00,2011-10-24 00:00,2013-02-24 16:00,2013-02-24 16:00,,2012-06-30 00:00,2012-06-30 00:00,,,2011-10-27 08:00,2011-11-02 16:00,,,,,PT_Normal,,,,,e0RPk47stkmf2fX14gpMZA,fa+QQs2lrkWif6ZY5ZmI+Q,,,N,0,0,,,2012-07-16 15:22,2012-07-16 15:22,admin,admin
792,151389,5776,24221,6944,1,100,N,N,N,CP_Drtn,TT_Task,DT_FixedDUR2,RV_OK,TK_Complete,4229EPV40,T.E.R for Pressure Vessels,,,,0,0,0,0,160,0,0,0,,2011-12-15 00:00,2012-02-20 00:00,2012-07-29 08:00,2012-07-29 08:00,,2012-06-30 00:00,2012-06-30 00:00,,,2011-12-11 08:00,2012-01-05 16:00,,,,,PT_Normal,,,,,0dzx5pX/jUe1sJEaUONgHQ,+adQvSlUzkOZha6HG7fiRA,,,N,0,0,,,2012-07-16 15:22,2012-07-16 15:22,admin,admin
793,151390,5776,24221,6944,1,100,N,N,N,CP_Drtn,TT_Task,DT_FixedDUR2,RV_OK,TK_Complete,4229EPV60,MRP for  Pressure Vessels,,,,0,0,0,0,40,0,0,0,,2012-03-25 08:00,2012-03-25 16:00,2012-07-29 08:00,2012-07-29 08:00,,2012-06-30 00:00,2012-06-30 00:00,,,2012-03-25 08:00,2012-03-29 16:00,,,,,PT_Normal,,,,,pkSzcTJ1xUeTVjky+OHNIQ,uCQ7t7XtkE2pu5tmschigw,,,N,0,0,,,2012-07-16 15:22,2012-07-16 15:22,admin,admin
794,151391,5776,24221,6944,1,100,N,N,N,CP_Drtn,TT_Task,DT_FixedDUR2,RV_OK,TK_Complete,4229EPV20,Issue MRQ for Pressure vesseles,,,,0,0,0,0,40,0,0,0,,2011-09-25 00:00,2011-11-17 00:00,2012-07-29 08:00,2012-07-29 08:00,,2012-06-30 00:00,2012-06-30 00:00,,,2011-11-01 08:00,2011-11-14 16:00,,,,,PT_Normal,,,,,FPvHdXn+qkKR71kKsRj2Cg,fa+QQs2lrkWif6ZY5ZmI+Q,,,N,0,0,,,2012-07-16 15:22,2012-07-16 15:22,admin,admin
795,151392,5776,24221,6944,1,100,N,N,N,CP_Drtn,TT_Task,DT_FixedDUR2,RV_OK,TK_Complete,4229EPV70,V.P.R for Small Tanks (cancelled),,,,0,0,0,0,400,0,0,0,,2012-03-03 00:00,2012-03-03 00:00,2013-02-24 16:00,2013-02-24 16:00,,2012-06-30 00:00,2012-06-30 00:00,,,2012-04-29 08:00,2012-07-05 16:00,,,,,PT_Normal,,,,,qsB3MG2ztEK1uKA4Yhh0Jg,,,,N,0,0,,,2012-07-16 15:22,2012-07-16 15:22,admin,admin
796,151393,5776,24221,6944,1,0,N,N,N,CP_Drtn,TT_Task,DT_FixedDUR2,RV_OK,TK_Active,4229EPV80,V.P.R for Pressure Vesseles,,928,928,320,0,0,0,320,0,0,0,,2012-04-09 00:00,,2012-12-31 08:00,2013-02-24 16:00,,2012-07-08 08:00,2012-09-06 16:00,2012-07-08 08:00,2012-09-06 16:00,2012-05-06 08:00,2012-06-28 16:00,,2012-12-31 08:00,2013-02-24 16:00,,PT_Normal,,,,,WTQNQzOTJEKkxuyQcULESw,,,,N,0,0,,,2012-07-16 15:22,2012-07-16 15:22,admin,admin
797,151394,5776,24221,6944,1,100,N,N,N,CP_Drtn,TT_Task,DT_FixedDUR2,RV_OK,TK_Complete,4229EPV30,T.E.R for  Small Tanks,,,,0,0,0,0,160,0,0,0,,2011-11-24 00:00,2011-12-29 00:00,2012-08-05 08:00,2012-08-05 08:00,,2012-06-30 00:00,2012-06-30 00:00,,,2011-12-04 08:00,2011-12-29 16:00,,,,,PT_Normal,,,,,VKyKObIy+0G/LYTf+Ll2Mg,+adQvSlUzkOZha6HG7fiRA,,,N,0,0,,,2012-07-16 15:22,2012-07-16 15:22,admin,admin
798,151395,5776,24221,6944,1,100,N,N,N,CP_Drtn,TT_Task,DT_FixedDUR2,RV_OK,TK_Complete,4229EPV50,MRP for Small Tanks (cancelled),,,,0,0,0,0,40,0,0,0,,2012-03-03 00:00,2012-03-03 00:00,2012-08-05 08:00,2012-08-05 08:00,,2012-06-30 00:00,2012-06-30 00:00,,,2012-03-18 08:00,2012-03-22 16:00,,,,,PT_Normal,,,,,DjmPWI1SRk2PIpseteudLA,uCQ7t7XtkE2pu5tmschigw,,,N,0,0,,,2012-07-16 15:22,2012-07-16 15:22,admin,admin
799,151396,5776,24223,6944,1,100,N,N,N,CP_Drtn,TT_Task,DT_FixedDUR2,RV_OK,TK_Complete,4229ETE20,Final Telecommunication Philosophy,,,,0,0,0,0,64,0,0,0,,2011-11-28 00:00,2011-12-04 00:00,2013-02-24 16:00,2013-02-24 16:00,,2012-06-30 00:00,2012-06-30 00:00,,,2011-12-04 08:00,2011-12-13 16:00,,,,,PT_Normal,,,,,CVmoMx3Nx0eqVKGGILLQrQ,,,,N,0,0,,,2012-07-16 15:22,2012-07-16 15:22,admin,admin
800,151397,5776,24223,6944,1,100,N,N,N,CP_Drtn,TT_Task,DT_FixedDUR2,RV_OK,TK_Complete,4229ETE10,Telecommunication Philosophy IFA,,,,0,0,0,0,80,0,0,0,,2011-10-13 08:00,2011-10-26 16:00,2013-02-24 16:00,2013-02-24 16:00,,2012-06-30 00:00,2012-06-30 00:00,,,2011-10-13 08:00,2011-10-26 16:00,,,,,PT_Normal,,,,,wvOAXvUr3kyiKvIeZ5SRhA,,,,N,0,0,,,2012-07-16 15:22,2012-07-16 15:22,admin,admin
801,151398,5776,24224,6944,1,100,N,N,N,CP_Drtn,TT_Task,DT_FixedDUR2,RV_OK,TK_Complete,4229ETE30,Point To Point VHF Radio System specification,,,,0,0,0,0,72,0,0,0,,2011-10-17 00:00,2011-11-17 00:00,2013-02-24 16:00,2013-02-24 16:00,,2012-06-30 00:00,2012-06-30 00:00,,,2011-12-21 08:00,2012-01-02 16:00,,,,,PT_Normal,,,,,9Np1jCgODEO6y5p0UpKLiQ,,,,N,0,0,,,2012-07-16 15:22,2012-07-16 15:22,admin,admin
802,151399,5776,24224,6944,1,100,N,N,N,CP_Drtn,TT_Task,DT_FixedDUR2,RV_OK,TK_Complete,4229ETE40,Radar system specification IFA,,,,0,0,0,0,160,0,0,0,,2011-10-17 08:00,2011-11-17 00:00,2012-07-02 08:00,2012-07-02 08:00,,2012-06-30 00:00,2012-06-30 00:00,,,2011-10-17 08:00,2011-11-20 16:00,,,,,PT_Normal,,,,,xq+kfCTwGka1Vn0dHdsWhQ,,,,N,0,0,,,2012-07-16 15:22,2012-07-16 15:22,admin,admin
803,151400,5776,24224,6944,1,100,N,N,N,CP_Drtn,TT_Task,DT_FixedDUR2,RV_OK,TK_Complete,4229ETE50,Radar system specification IFD,,,,0,0,0,0,80,0,0,0,,2011-11-21 00:00,2011-11-30 00:00,2013-02-24 16:00,2013-02-24 16:00,,2012-06-30 00:00,2012-06-30 00:00,,,2011-12-04 08:00,2011-12-15 16:00,,,,,PT_Normal,,,,,5TP3W/n1vEabsfepYMiRfw,,,,N,0,0,,,2012-07-16 15:22,2012-07-16 15:22,admin,admin
804,151401,5776,24224,6944,1,0,N,N,N,CP_Drtn,TT_Task,DT_FixedDUR2,RV_OK,TK_NotStart,4229ETE60,Radar system specification IFP,,904,904,40,0,0,0,40,0,0,0,,,,2013-02-18 08:00,2013-02-24 16:00,,2012-09-05 08:00,2012-09-11 16:00,2012-09-05 08:00,2012-09-11 16:00,2012-09-05 08:00,2012-09-11 16:00,,2013-02-18 08:00,2013-02-24 16:00,,PT_Normal,,,,,aHkY3RInUEC91czfoj6kPg,,,,N,0,0,,,2012-07-16 15:22,2012-07-16 15:22,admin,admin
805,151402,5776,24224,6944,1,100,N,N,N,CP_Drtn,TT_Task,DT_FixedDUR2,RV_OK,TK_Complete,4229ETE70,MRQ for Radar System IFA,,,,0,0,0,0,64,0,0,0,,2011-11-21 00:00,2011-11-30 00:00,2012-07-02 08:00,2012-07-02 08:00,,2012-06-30 00:00,2012-06-30 00:00,,,2011-12-11 08:00,2011-12-20 16:00,,,,,PT_Normal,,,,,qSkxb/TeFk+NBrk0eE8umg,,,,N,0,0,,,2012-07-16 15:22,2012-07-16 15:22,admin,admin
806,151403,5776,24224,6944,1,100,N,N,N,CP_Drtn,TT_Task,DT_FixedDUR2,RV_OK,TK_Complete,4229ETE80,MRQ for Radar System IFI,,,,0,0,0,0,32,0,0,0,,2011-11-21 00:00,2011-11-30 00:00,2012-07-02 08:00,2012-07-02 08:00,,2012-06-30 00:00,2012-06-30 00:00,,,2011-12-27 08:00,2012-01-01 16:00,,,,,PT_Normal,,,,,xhKRh+Uvt0WgHcp6OC49TA,,,,N,0,0,,,2012-07-16 15:22,2012-07-16 15:22,admin,admin
807,151404,5776,24224,6944,1,0,N,N,N,CP_Drtn,TT_Task,DT_FixedDUR2,RV_OK,TK_NotStart,4229ETE90,MRP for Radar System,,160,0,40,0,0,0,40,0,0,0,,,,2012-10-03 08:00,2012-10-09 16:00,,2012-09-05 08:00,2012-09-11 16:00,2012-09-05 08:00,2012-09-11 16:00,2012-09-05 08:00,2012-09-11 16:00,,2012-10-03 08:00,2012-10-09 16:00,,PT_Normal,,,,,oKD8RzwhYECCeqw+lmO0xA,,,,N,0,0,,,2012-07-16 15:22,2012-07-16 15:22,admin,admin
808,151405,5776,24224,6944,1,0,N,N,N,CP_Drtn,TT_Task,DT_FixedDUR2,RV_OK,TK_NotStart,4229ETE160,V.P.R  for Radar System,,288,0,400,0,0,0,400,0,0,0,,,,2012-12-17 08:00,2013-02-24 16:00,,2012-10-28 08:00,2013-01-03 16:00,2012-10-28 08:00,2013-01-03 16:00,2012-10-28 08:00,2013-01-03 16:00,,2012-12-17 08:00,2013-02-24 16:00,,PT_Normal,,,,,f+iBSZr9cEuTxWR4A1FGrA,,,,N,0,0,,,2012-07-16 15:22,2012-07-16 15:22,admin,admin
809,151406,5776,24224,6944,1,0,N,N,N,CP_Drtn,TT_Task,DT_FixedDUR2,RV_OK,TK_NotStart,4229ETE170,T.E.R for Radar System,,0,0,184,0,0,0,184,0,0,0,2012-07-03 08:00,,,2012-07-03 08:00,2012-08-02 16:00,,2012-07-03 08:00,2012-08-02 16:00,2012-07-03 08:00,2012-08-02 16:00,2012-07-03 08:00,2012-08-02 16:00,,2012-07-03 08:00,2012-08-02 16:00,CS_MSO,PT_Normal,,,2,1,fxSTeVnceE6yLeRcpeShKg,,,,N,0,0,,,2012-07-16 15:22,2012-07-16 15:22,admin,admin
810,151407,5776,24225,6944,1,100,N,N,N,CP_Drtn,TT_Task,DT_FixedDUR2,RV_OK,TK_Complete,4229ETE100,Telecommunication equipment layout IFA,,,,0,0,0,0,96,0,0,0,,2011-12-05 00:00,2011-12-08 00:00,2013-02-24 16:00,2013-02-24 16:00,,2012-06-30 00:00,2012-06-30 00:00,,,2011-12-04 08:00,2011-12-19 16:00,,,,,PT_Normal,,,,,saxsTygK5kCUU0egzGLKng,,,,N,0,0,,,2012-07-16 15:22,2012-07-16 15:22,admin,admin
811,151408,5776,24225,6944,1,0,N,N,N,CP_Drtn,TT_Task,DT_FixedDUR2,RV_OK,TK_NotStart,4229ETE110,Telecommunication equipment layout IFD (Expected to be cancelled),,1144,48,24,0,0,0,24,0,0,0,,,,2013-01-30 08:00,2013-02-03 16:00,,2012-07-01 08:00,2012-07-03 16:00,2012-07-01 08:00,2012-07-03 16:00,2012-07-01 08:00,2012-07-03 16:00,,2013-01-30 08:00,2013-02-03 16:00,,PT_Normal,,,,,u51UzndI/ke/5YSyKlmKXw,,,,N,0,0,,,2012-07-16 15:22,2012-07-16 15:22,admin,admin
812,151409,5776,24225,6944,1,0,N,N,N,CP_Drtn,TT_Task,DT_FixedDUR2,RV_OK,TK_NotStart,4229ETE120,Telecommunication equipment layout IFC (Expected to be cancelled),,1096,1096,80,0,0,0,80,0,0,0,,,,2013-02-11 08:00,2013-02-24 16:00,,2012-07-19 08:00,2012-08-01 16:00,2012-07-19 08:00,2012-08-01 16:00,2012-07-19 08:00,2012-08-01 16:00,,2013-02-11 08:00,2013-02-24 16:00,,PT_Normal,,,,,MetweUWyUECKwptAeYw7Vg,,,,N,0,0,,,2012-07-16 15:22,2012-07-16 15:22,admin,admin
813,151410,5776,24225,6944,1,100,N,N,N,CP_Drtn,TT_Task,DT_FixedDUR2,RV_OK,TK_Complete,4229ETE130,Telecommunication cable routing IFA,,,,0,0,0,0,80,0,0,0,,2011-12-05 00:00,2012-01-19 16:00,2013-02-24 16:00,2013-02-24 16:00,,2012-06-30 00:00,2012-06-30 00:00,,,2012-01-01 08:00,2012-01-12 16:00,,,,,PT_Normal,,,,,nELOJjZW2EysdFP7w+wjgQ,,,,N,0,0,,,2012-07-16 15:22,2012-07-16 15:22,admin,admin
814,151411,5776,24225,6944,1,100,N,N,N,CP_Drtn,TT_Task,DT_FixedDUR2,RV_OK,TK_Complete,4229ETE140,Telecommunication cable routing IFD,,,,0,0,0,0,80,0,0,0,,2012-02-01 00:00,2012-02-19 00:00,2013-02-24 16:00,2013-02-24 16:00,,2012-06-30 00:00,2012-06-30 00:00,,,2012-03-04 08:00,2012-03-15 16:00,,,,,PT_Normal,,,,,+KoHXSfF4kqe3I7UXB+atA,,,,N,0,0,,,2012-07-16 15:22,2012-07-16 15:22,admin,admin
815,151412,5776,24225,6944,1,0,N,N,N,CP_Drtn,TT_Task,DT_FixedDUR2,RV_OK,TK_NotStart,4229ETE150,Telecommunication cable routing IFC,,1056,768,80,0,0,0,80,0,0,0,,,,2013-02-11 08:00,2013-02-24 16:00,,2012-07-26 08:00,2012-08-08 16:00,2012-07-26 08:00,2012-08-08 16:00,2012-07-26 08:00,2012-08-08 16:00,,2013-02-11 08:00,2013-02-24 16:00,,PT_Normal,,,,,avciWUP83UGrTS6/rBW9lQ,,,,N,0,0,,,2012-07-16 15:22,2012-07-16 15:22,admin,admin
816,151413,5776,24188,6944,1,100,N,N,N,CP_Drtn,TT_Task,DT_FixedDUR2,RV_OK,TK_Complete,4229PAB10,Issue RFQ for Additional Piping Ball valves,,,,0,0,0,0,8,0,0,0,,2012-05-27 00:00,2012-05-27 00:00,2012-07-31 08:00,2012-07-31 08:00,,2012-06-30 00:00,2012-06-30 00:00,,,2012-07-02 08:00,2012-07-02 16:00,,,,,PT_Normal,,,,,f6o0vGdKGkeAz6TpzkYOPA,,,,N,0,0,,,2012-07-16 15:22,2012-07-16 15:22,admin,admin
817,151414,5776,24188,6944,1,100,N,N,N,CP_Drtn,TT_Task,DT_FixedDUR2,RV_OK,TK_Complete,4229PAB20,Bidding for Piping Ball vlaves,,,,0,0,0,0,8,0,0,0,,2012-05-28 00:00,2012-06-14 00:00,2012-07-31 08:00,2012-07-31 08:00,,2012-06-30 00:00,2012-06-30 00:00,,,2012-07-03 08:00,2012-07-03 16:00,,,,,PT_Normal,,,,,p2zfSkYs5E+POthoeno04w,,,,N,0,0,,,2012-07-16 15:22,2012-07-16 15:22,admin,admin
818,151415,5776,24188,6944,1,0,N,N,N,CP_Drtn,TT_Task,DT_FixedDUR2,RV_OK,TK_Active,4229PAB30,T.E.R for Additional Piping Ball valves,,176,0,88,0,0,0,200,0,0,0,,2012-06-18 00:00,,2012-07-31 08:00,2012-08-14 16:00,2012-07-15 16:00,2012-07-01 08:00,2012-07-15 16:00,2012-07-01 08:00,2012-07-15 16:00,2012-07-04 08:00,2012-08-07 16:00,,2012-07-31 08:00,2012-08-14 16:00,,PT_Normal,,,,,pjmS7HNkjU2s8hzLnNZBUQ,,,,N,0,0,,,2012-07-16 15:22,2012-07-16 15:22,admin,admin
819,151416,5776,24188,6944,1,0,N,N,N,CP_Drtn,TT_Task,DT_FixedDUR2,RV_OK,TK_NotStart,4229PAB40,Receive revised commercial offers,,176,0,40,0,0,0,40,0,0,0,,,,2012-08-15 08:00,2012-08-28 16:00,,2012-07-16 08:00,2012-07-22 16:00,2012-07-16 08:00,2012-07-22 16:00,2012-07-16 08:00,2012-07-22 16:00,,2012-08-15 08:00,2012-08-28 16:00,,PT_Normal,,,,,CpUoOiMfu0ez79fpnqer2Q,FwEF/itl1Eik4NN3KiYyyw,,,N,0,0,,,2012-07-16 15:22,2012-07-16 15:22,admin,admin
820,151417,5776,24188,6944,1,0,N,N,N,CP_Drtn,TT_Task,DT_FixedDUR2,RV_OK,TK_NotStart,4229PAB50,commercial evaluation & bid committee for Piping Ball valves,,176,0,80,0,0,0,80,0,0,0,,,,2012-08-29 08:00,2012-09-11 16:00,,2012-07-23 08:00,2012-08-05 16:00,2012-07-23 08:00,2012-08-05 16:00,2012-07-23 08:00,2012-08-05 16:00,,2012-08-29 08:00,2012-09-11 16:00,,PT_Normal,,,,,NY8ngdgY7Eqx9plezPVGHQ,aMkRt1EtRUKICqJrM4PQmg,,,N,0,0,,,2012-07-16 15:22,2012-07-16 15:22,admin,admin
821,151418,5776,24188,6944,1,0,N,N,N,CP_Drtn,TT_Task,DT_FixedDUR2,RV_OK,TK_NotStart,4229PAB60,Client approval on bid committee reccomendation,,176,0,16,0,0,0,16,0,0,0,,,,2012-09-12 08:00,2012-09-13 16:00,,2012-08-06 08:00,2012-08-07 16:00,2012-08-06 08:00,2012-08-07 16:00,2012-08-06 08:00,2012-08-07 16:00,,2012-09-12 08:00,2012-09-13 16:00,,PT_Normal,,,,,HCgVRBREEUS1WBVLCdVcTA,RH7qpcRJM02b5W1ZQZAbRA,,,N,0,0,,,2012-07-16 15:22,2012-07-16 15:22,admin,admin
822,151419,5776,24188,6944,1,0,N,N,N,CP_Drtn,TT_Task,DT_FixedDUR2,RV_OK,TK_NotStart,4229PAB70,F.O.C for Piping Ball valves,,176,0,24,0,0,0,24,0,0,0,,,,2012-09-16 08:00,2012-09-18 16:00,,2012-08-08 08:00,2012-08-12 16:00,2012-08-08 08:00,2012-08-12 16:00,2012-08-08 08:00,2012-08-12 16:00,,2012-09-16 08:00,2012-09-18 16:00,,PT_Normal,,,,,mY7x/G8QBkq7QsDJ3c8JWQ,,,,N,0,0,,,2012-07-16 15:22,2012-07-16 15:22,admin,admin
823,151420,5776,24188,6944,1,0,N,N,N,CP_Drtn,TT_LOE,DT_FixedDUR2,RV_OK,TK_NotStart,4229PAB80,MRP for Piping Ball valves,,176,0,40,0,0,0,40,0,0,0,,,,2012-09-19 08:00,2012-09-25 16:00,,2012-08-13 08:00,2012-08-26 16:00,2012-08-13 08:00,2012-08-26 16:00,2012-08-13 08:00,2012-08-26 16:00,,2012-09-19 08:00,2012-09-25 16:00,,PT_Normal,,,,,Z8+6248vMkiuMOqLp5UPeg,,,,N,0,0,,,2012-07-16 15:22,2012-07-16 15:22,admin,admin
824,151421,5776,24188,6944,1,0,N,N,N,CP_Drtn,TT_Task,DT_FixedDUR2,RV_OK,TK_NotStart,4229PAB90,P.O for Piping Ball valves,,176,0,16,0,0,0,16,0,0,0,,,,2012-09-26 08:00,2012-09-27 16:00,,2012-08-27 08:00,2012-08-28 16:00,2012-08-27 08:00,2012-08-28 16:00,2012-08-27 08:00,2012-08-28 16:00,,2012-09-26 08:00,2012-09-27 16:00,,PT_Normal,,,,,MTGlzESywkamW377enY4Ig,,,,N,0,0,,,2012-07-16 15:22,2012-07-16 15:22,admin,admin
825,151422,5776,24188,6944,1,0,N,N,N,CP_Drtn,TT_Task,DT_FixedDUR2,RV_OK,TK_NotStart,4229PAB100,L.C issued by Gupco,,944,944,40,0,0,0,40,0,0,0,,,,2013-02-18 08:00,2013-02-24 16:00,,2012-08-29 08:00,2012-09-04 16:00,2012-08-29 08:00,2012-09-04 16:00,2012-08-29 08:00,2012-09-04 16:00,,2013-02-18 08:00,2013-02-24 16:00,,PT_Normal,,,,,zNwra2ncEEyoNBhaBHnE7A,,,,N,0,0,,,2012-07-16 15:22,2012-07-16 15:22,admin,admin
826,151423,5776,24188,6945,1,0,N,N,N,CP_Drtn,TT_Task,DT_FixedDUR2,RV_OK,TK_NotStart,4229PAB110,Fabrication upto R.F.S,,216,0,1120,0,0,0,1120,0,0,0,,,,2012-09-28 08:00,2013-02-14 16:00,,2012-09-01 08:00,2013-01-18 16:00,2012-09-01 08:00,2013-01-18 16:00,2012-09-01 08:00,2013-01-18 16:00,,2012-09-28 08:00,2013-02-14 16:00,,PT_Normal,,,,,TMEb2CGaeUGkJP2L2DkTRg,,,,N,0,0,,,2012-07-16 15:22,2012-07-16 15:22,admin,admin
827,151424,5776,24188,6945,1,0,N,N,N,CP_Drtn,TT_Task,DT_FixedDUR2,RV_OK,TK_NotStart,4229PAB120,Delivery upto site,,216,216,80,0,0,0,80,0,0,0,,,,2013-02-15 08:00,2013-02-24 16:00,,2013-01-19 08:00,2013-01-28 16:00,2013-01-19 08:00,2013-01-28 16:00,2013-01-19 08:00,2013-01-28 16:00,,2013-02-15 08:00,2013-02-24 16:00,,PT_Normal,,,,,raa5lH6Ac0uOuw0pKkDnHA,,,,N,0,0,,,2012-07-16 15:22,2012-07-16 15:22,admin,admin
828,151425,5776,24214,6944,1,100,N,N,N,CP_Drtn,TT_Task,DT_FixedDUR2,RV_OK,TK_Complete,4229EPI340,MRQ for Additional Piping Ball valves,,,,0,0,0,0,32,0,0,0,,2012-05-20 00:00,2012-05-24 00:00,2012-07-31 08:00,2012-07-31 08:00,,2012-06-30 00:00,2012-06-30 00:00,,,2012-07-01 08:00,2012-07-04 16:00,,,,,PT_Normal,,,,,ltcfsh9Om0enDB0wQ7gg8Q,,,,N,0,0,,,2012-07-16 15:22,2012-07-16 15:22,admin,admin
829,151426,5776,24195,6944,1,100,N,N,N,CP_Drtn,TT_Task,DT_FixedDUR2,RV_OK,TK_Complete,4229PAV10,"Issue RFQ for Additional Piping Gate,Globe & Butterfly valves",,,,0,0,0,0,8,0,0,0,,2012-05-27 00:00,2012-05-27 00:00,2012-07-31 08:00,2012-07-31 08:00,,2012-06-30 00:00,2012-06-30 00:00,,,2012-07-02 08:00,2012-07-02 16:00,,,,,PT_Normal,,,,,EIXoRc1HW0CbQvDHHx73BA,FwEF/itl1Eik4NN3KiYyyw,,,N,0,0,,,2012-07-16 15:22,2012-07-16 15:22,admin,admin
830,151427,5776,24195,6944,1,100,N,N,N,CP_Drtn,TT_Task,DT_FixedDUR2,RV_OK,TK_Complete,4229PAV20,"Bidding for Piping Gate,Globe & Butterfly valves",,,,0,0,0,0,8,0,0,0,,2012-05-28 00:00,2012-06-14 00:00,2012-07-31 08:00,2012-07-31 08:00,,2012-06-30 00:00,2012-06-30 00:00,,,2012-07-03 08:00,2012-07-03 16:00,,,,,PT_Normal,,,,,evvyyvZNwEyu4HL2RHewJg,aMkRt1EtRUKICqJrM4PQmg,,,N,0,0,,,2012-07-16 15:22,2012-07-16 15:22,admin,admin
831,151428,5776,24195,6944,1,0,N,N,N,CP_Drtn,TT_Task,DT_FixedDUR2,RV_OK,TK_Active,4229PAV30,"T.E.R for Additional Piping Gate,Globe & Butterfly valves",,176,0,88,0,0,0,200,0,0,0,,2012-06-18 00:00,,2012-07-31 08:00,2012-08-14 16:00,2012-07-15 16:00,2012-07-01 08:00,2012-07-15 16:00,2012-07-01 08:00,2012-07-15 16:00,2012-07-04 08:00,2012-08-07 16:00,,2012-07-31 08:00,2012-08-14 16:00,,PT_Normal,,,,,IKk2odKJ8kqK546loOHwmw,RH7qpcRJM02b5W1ZQZAbRA,,,N,0,0,,,2012-07-16 15:22,2012-07-16 15:22,admin,admin
832,151429,5776,24195,6944,1,0,N,N,N,CP_Drtn,TT_Task,DT_FixedDUR2,RV_OK,TK_NotStart,4229PAV40,Receive revised commercial offers,,176,0,40,0,0,0,40,0,0,0,,,,2012-08-15 08:00,2012-08-28 16:00,,2012-07-16 08:00,2012-07-22 16:00,2012-07-16 08:00,2012-07-22 16:00,2012-07-16 08:00,2012-07-22 16:00,,2012-08-15 08:00,2012-08-28 16:00,,PT_Normal,,,,,fMEYglpOlkSakZ4zSObmSw,KUxnnqxH3Ei7e0eeU0x9xQ,,,N,0,0,,,2012-07-16 15:22,2012-07-16 15:22,admin,admin
833,151430,5776,24195,6944,1,0,N,N,N,CP_Drtn,TT_Task,DT_FixedDUR2,RV_OK,TK_NotStart,4229PAV50,"commercial evaluation & bid committee for  Piping Gate,Globe & Butterfly valves",,176,0,80,0,0,0,80,0,0,0,,,,2012-08-29 08:00,2012-09-11 16:00,,2012-07-23 08:00,2012-08-05 16:00,2012-07-23 08:00,2012-08-05 16:00,2012-07-23 08:00,2012-08-05 16:00,,2012-08-29 08:00,2012-09-11 16:00,,PT_Normal,,,,,er1p6VmJo0OlqfiFltS0bw,SWSIuejBJUm8AtZ3rQPBPA,,,N,0,0,,,2012-07-16 15:22,2012-07-16 15:22,admin,admin
834,151431,5776,24195,6944,1,0,N,N,N,CP_Drtn,TT_Task,DT_FixedDUR2,RV_OK,TK_NotStart,4229PAV60,Client approval on bid committee reccomendation,,176,0,16,0,0,0,16,0,0,0,,,,2012-09-12 08:00,2012-09-13 16:00,,2012-08-06 08:00,2012-08-07 16:00,2012-08-06 08:00,2012-08-07 16:00,2012-08-06 08:00,2012-08-07 16:00,,2012-09-12 08:00,2012-09-13 16:00,,PT_Normal,,,,,rfx73s91NUKjsPsZqSYdoA,E6SjKvXXkUS/0VNojkjwrA,,,N,0,0,,,2012-07-16 15:22,2012-07-16 15:22,admin,admin
835,151432,5776,24195,6944,1,0,N,N,N,CP_Drtn,TT_Task,DT_FixedDUR2,RV_OK,TK_NotStart,4229PAV70,"F.O.C for Piping Gate,Globe & Butterfly valves",,176,0,24,0,0,0,24,0,0,0,,,,2012-09-16 08:00,2012-09-18 16:00,,2012-08-08 08:00,2012-08-12 16:00,2012-08-08 08:00,2012-08-12 16:00,2012-08-08 08:00,2012-08-12 16:00,,2012-09-16 08:00,2012-09-18 16:00,,PT_Normal,,,,,w51FmNHgOku6+j2x+Xw9xA,4iXMPXo2nkaoU95fPW+GkQ,,,N,0,0,,,2012-07-16 15:22,2012-07-16 15:22,admin,admin
836,151433,5776,24195,6944,1,0,N,N,N,CP_Drtn,TT_LOE,DT_FixedDUR2,RV_OK,TK_NotStart,4229PAV80,"MRP for Piping Gate,Globe & Butterfly valves",,176,0,40,0,0,0,40,0,0,0,,,,2012-09-19 08:00,2012-09-25 16:00,,2012-08-13 08:00,2012-08-26 16:00,2012-08-13 08:00,2012-08-26 16:00,2012-08-13 08:00,2012-08-26 16:00,,2012-09-19 08:00,2012-09-25 16:00,,PT_Normal,,,,,xeKKfdPxJkWNZC0lOPzjEA,FuA8KN8VkUSjAmeIm0l2Gw,,,N,0,0,,,2012-07-16 15:22,2012-07-16 15:22,admin,admin
837,151434,5776,24195,6944,1,0,N,N,N,CP_Drtn,TT_Task,DT_FixedDUR2,RV_OK,TK_NotStart,4229PAV90,"P.O for Piping Gate,Globe & Butterfly valves",,176,0,16,0,0,0,16,0,0,0,,,,2012-09-26 08:00,2012-09-27 16:00,,2012-08-27 08:00,2012-08-28 16:00,2012-08-27 08:00,2012-08-28 16:00,2012-08-27 08:00,2012-08-28 16:00,,2012-09-26 08:00,2012-09-27 16:00,,PT_Normal,,,,,s32pBn4/2U2hOk7gZxuMlA,xZ76M0aKkUmgQm/Fxkq2+w,,,N,0,0,,,2012-07-16 15:22,2012-07-16 15:22,admin,admin
838,151435,5776,24195,6944,1,0,N,N,N,CP_Drtn,TT_Task,DT_FixedDUR2,RV_OK,TK_NotStart,4229PAV100,L.C issued by Gupco,,944,944,40,0,0,0,40,0,0,0,,,,2013-02-18 08:00,2013-02-24 16:00,,2012-08-29 08:00,2012-09-04 16:00,2012-08-29 08:00,2012-09-04 16:00,2012-08-29 08:00,2012-09-04 16:00,,2013-02-18 08:00,2013-02-24 16:00,,PT_Normal,,,,,s6cB5rVLs064naAgL/P4tQ,I6ltCAqlK0KCAvUgZ2WY2w,,,N,0,0,,,2012-07-16 15:22,2012-07-16 15:22,admin,admin
839,151436,5776,24195,6945,1,0,N,N,N,CP_Drtn,TT_Task,DT_FixedDUR2,RV_OK,TK_NotStart,4229PAV110,Fabrication upto R.F.S,,216,0,1120,0,0,0,1120,0,0,0,,,,2012-09-28 08:00,2013-02-14 16:00,,2012-09-01 08:00,2013-01-18 16:00,2012-09-01 08:00,2013-01-18 16:00,2012-09-01 08:00,2013-01-18 16:00,,2012-09-28 08:00,2013-02-14 16:00,,PT_Normal,,,,,b3rnj9UMFEOvlZRzKoKeZQ,+OB3Vyf/Fkq/vnJiHfo5iQ,,,N,0,0,,,2012-07-16 15:22,2012-07-16 15:22,admin,admin
840,151437,5776,24195,6945,1,0,N,N,N,CP_Drtn,TT_Task,DT_FixedDUR2,RV_OK,TK_NotStart,4229PAV120,Delivery upto site,,216,216,80,0,0,0,80,0,0,0,,,,2013-02-15 08:00,2013-02-24 16:00,,2013-01-19 08:00,2013-01-28 16:00,2013-01-19 08:00,2013-01-28 16:00,2013-01-19 08:00,2013-01-28 16:00,,2013-02-15 08:00,2013-02-24 16:00,,PT_Normal,,,,,9enadgB8wkutm1KcWPqZfg,kXNa+ni+dU+elBUqtqirLA,,,N,0,0,,,2012-07-16 15:22,2012-07-16 15:22,admin,admin
841,151438,5776,24214,6944,1,100,N,N,N,CP_Drtn,TT_Task,DT_FixedDUR2,RV_OK,TK_Complete,4229EPI350,"MRQ for Additional Piping Gate,Globe & Butterfly valves",,,,0,0,0,0,32,0,0,0,,2012-05-20 00:00,2012-05-24 00:00,2012-07-31 08:00,2012-07-31 08:00,,2012-06-30 00:00,2012-06-30 00:00,,,2012-07-01 08:00,2012-07-04 16:00,,,,,PT_Normal,,,,,E/r+h0kzgU60uybS0EBEwQ,,,,N,0,0,,,2012-07-16 15:22,2012-07-16 15:22,admin,admin
842,151439,5776,24214,6944,1,0,N,N,N,CP_Drtn,TT_Task,DT_FixedDUR2,RV_OK,TK_NotStart,4229EPI470,MRP for additional Piping Ball valves,,176,0,40,0,0,0,40,0,0,0,,,,2012-09-19 08:00,2012-09-25 16:00,,2012-08-13 08:00,2012-08-26 16:00,2012-08-13 08:00,2012-08-26 16:00,2012-08-13 08:00,2012-08-26 16:00,,2012-09-19 08:00,2012-09-25 16:00,,PT_Normal,,,,,lVq+P2woyEKo1EOAc6OE+g,,,,N,0,0,,,2012-07-16 15:22,2012-07-16 15:22,admin,admin
843,151440,5776,24214,6944,1,0,N,N,N,CP_Drtn,TT_Task,DT_FixedDUR2,RV_OK,TK_NotStart,4229EPI480,"MRP for Additional Piping Gate,Globe & Butterfly valves",,176,0,40,0,0,0,40,0,0,0,,,,2012-09-19 08:00,2012-09-25 16:00,,2012-08-13 08:00,2012-08-26 16:00,2012-08-13 08:00,2012-08-26 16:00,2012-08-13 08:00,2012-08-26 16:00,,2012-09-19 08:00,2012-09-25 16:00,,PT_Normal,,,,,mT9hTlsTmkCHIatsEjnIZQ,,,,N,0,0,,,2012-07-16 15:22,2012-07-16 15:22,admin,admin
844,151441,5776,24200,6944,1,0,N,N,N,CP_Drtn,TT_Task,DT_FixedDUR2,RV_OK,TK_NotStart,4229EPI510,Issue GA`s- Construction,,968,0,40,0,0,0,40,0,0,0,,,,2013-02-18 08:00,2013-02-24 16:00,2012-08-30 16:00,2012-08-26 08:00,2012-08-30 16:00,2012-08-26 08:00,2012-08-30 16:00,2012-08-26 08:00,2012-08-30 16:00,,2013-02-18 08:00,2013-02-24 16:00,,PT_Normal,,,,,80Wlyqfph0C2q8/OZhMYYQ,,,,N,0,0,,,2012-07-16 15:22,2012-07-16 15:22,admin,admin
