,task_id,proj_id,wbs_id,clndr_id,est_wt,phys_complete_pct,rev_fdbk_flag,lock_plan_flag,auto_compute_act_flag,complete_pct_type,task_type,duration_type,review_type,status_code,task_code,task_name,rsrc_id,total_float_hr_cnt,free_float_hr_cnt,remain_drtn_hr_cnt,act_work_qty,remain_work_qty,target_work_qty,target_drtn_hr_cnt,target_equip_qty,act_equip_qty,remain_equip_qty,cstr_date,act_start_date,act_end_date,late_start_date,late_end_date,expect_end_date,early_start_date,early_end_date,restart_date,reend_date,target_start_date,target_end_date,review_end_date,rem_late_start_date,rem_late_end_date,cstr_type,priority_type,suspend_date,resume_date,float_path,float_path_order,guid,tmpl_guid,cstr_date2,cstr_type2,driving_path_flag,act_this_per_work_qty,act_this_per_equip_qty,external_early_start_date,external_late_end_date,create_date,update_date,create_user,update_user
0,81899,829,10532,913,0,100,N,N,N,CP_Drtn,TT_Mile,DT_FixedDUR2,RV_OK,TK_Complete,0000000010,Project Partial Start,,,,0,0,0,0,0,0,0,0,,2007-12-07 08:00,2007-12-07 08:00,,,,,,,,2007-12-07 08:00,2007-12-07 08:00,,,,,PT_Normal,,,,,6CLjHoTA7k6ANV8gkHd3dA,,,,N,0,0
1,81900,829,10532,913,0,100,N,N,N,CP_Drtn,TT_FinMile,DT_FixedDUR2,RV_OK,TK_Complete,0000000015,Mobilization,,,,0,0,0,0,0,0,0,0,,2008-02-05 08:00,2008-02-05 08:00,,,,,,,,2008-02-05 08:00,2008-02-05 08:00,,,,,PT_Normal,,,,,jHVoCesTbkK9ucJWpjys7w,,,,N,0,0
2,81901,829,10532,913,0,100,N,N,N,CP_Drtn,TT_FinMile,DT_FixedDUR2,RV_OK,TK_Complete,0000000020,Substructure works (upto slab @ GLL level),,,,0,0,0,0,0,0,0,0,,2008-06-09 08:00,2008-06-09 08:00,,,,,,,,2008-06-09 08:00,2008-06-09 08:00,,,,,PT_Normal,,,,,4kKxEpgY4UKTUaT6WkdKCg,,,,N,0,0
3,81902,829,10532,913,0,0,N,N,N,CP_Drtn,TT_FinMile,DT_FixedDUR2,RV_OK,TK_NotStart,0000000030,Super structure works (upto roof parapet),,1352,1352,0,0,0,0,0,0,0,0,,,,2009-04-07 08:00,2009-04-06 17:00,,2008-10-20 08:00,2008-10-19 17:00,2008-10-20 08:00,2008-10-20 08:00,2008-10-20 08:00,2008-10-20 08:00,,,,,PT_Normal,,,,,thedx3tMxE6qM77RO7rLVg,,,,N,0,0
4,81903,829,10532,913,0,0,N,N,N,CP_Drtn,TT_FinMile,DT_FixedDUR2,RV_OK,TK_NotStart,0000000035,Mock-up flat,,744,744,0,0,0,0,0,0,0,0,,,,2009-04-01 08:00,2009-03-31 17:00,,2008-12-29 08:00,2008-12-28 17:00,2008-12-29 08:00,2008-12-29 08:00,2008-12-29 08:00,2008-12-29 08:00,,,,,PT_Normal,,,,,lT128Q/YpEmwkjGjYWw8Mw,,,,N,0,0
5,81904,829,10532,913,0,0,N,N,N,CP_Drtn,TT_FinMile,DT_FixedDUR2,RV_OK,TK_NotStart,0000000040,Finishing works (without painting final coat),,368,368,0,0,0,0,0,0,0,0,,,,2009-04-07 08:00,2009-04-06 17:00,,2009-02-20 08:00,2009-02-19 17:00,2009-02-20 08:00,2009-02-20 08:00,2009-02-20 08:00,2009-02-20 08:00,,,,,PT_Normal,,,,,rz/mjKU9d0OBKsvnq4vhZg,,,,N,0,0
6,81905,829,10532,912,0,0,N,N,N,CP_Drtn,TT_Mile,DT_FixedDUR2,RV_OK,TK_NotStart,0000000045,Fresh air test,,680,680,0,0,0,0,0,0,0,0,,,,2009-04-07 08:00,2009-04-06 17:00,,2008-12-29 08:00,2008-12-28 17:00,2008-12-29 08:00,2008-12-29 08:00,2008-12-29 08:00,2008-12-29 08:00,,,,,PT_Normal,,,,,9cDV4DuWOUyLkCyMFGgU0g,,,,N,0,0
7,81906,829,10532,912,0,100,N,N,N,CP_Drtn,TT_Mile,DT_FixedDUR2,RV_OK,TK_Complete,0000000047,Landscaping work (Details from Consultant),,,,0,0,0,0,0,0,0,0,,2007-12-08 08:00,2007-12-08 08:00,,,,,,,,2007-12-08 08:00,2007-12-08 08:00,,,,,PT_Normal,,,,,TyDkx+RgB0GNU80kQeY+fQ,,,,N,0,0
8,81907,829,10532,913,0,0,N,N,N,CP_Drtn,TT_FinMile,DT_FixedDUR2,RV_OK,TK_NotStart,0000000050,MEP works (upto final fixes),,480,480,0,0,0,0,0,0,0,0,,,,2009-04-07 08:00,2009-04-06 17:00,,2009-02-06 08:00,2009-02-05 17:00,2009-02-06 08:00,2009-02-06 08:00,2009-02-06 08:00,2009-02-06 08:00,,,,,PT_Normal,,,,,ZxOXkNDgn0O4Q43sXDzk/g,,,,N,0,0
9,81908,829,10532,913,0,0,N,N,N,CP_Drtn,TT_FinMile,DT_FixedDUR2,RV_OK,TK_NotStart,0000000055,External works,,240,240,0,0,0,0,0,0,0,0,,,,2009-03-20 08:00,2009-03-19 17:00,,2009-02-18 08:00,2009-02-17 17:00,2009-02-18 08:00,2009-02-18 08:00,2009-02-18 08:00,2009-02-18 08:00,,,,,PT_Normal,,,,,h1ab9sAb7EGoZ+3nKJj09g,,,,N,0,0
10,81909,829,10532,913,0,0,N,N,N,CP_Drtn,TT_FinMile,DT_FixedDUR2,RV_OK,TK_NotStart,0000000060,Handing over (Incentive finishing date),,0,0,0,0,0,0,0,0,0,0,,,,2009-04-01 08:00,2009-03-31 17:00,,2009-04-01 08:00,2009-03-31 17:00,2009-04-01 08:00,2009-04-01 08:00,2009-04-01 08:00,2009-04-01 08:00,,,,,PT_Normal,,,,,+3xvSBSjOESwXHbFENTp8Q,,,,N,0,0
11,81910,829,10532,913,0,0,N,N,N,CP_Drtn,TT_FinMile,DT_FixedDUR2,RV_OK,TK_NotStart,0000000070,Project contructual finishing date,,0,0,0,0,0,0,0,0,0,0,,,,2009-04-07 08:00,2009-04-06 17:00,,2009-04-07 08:00,2009-04-06 17:00,2009-04-07 08:00,2009-04-07 08:00,2009-04-07 08:00,2009-04-07 08:00,,,,,PT_Normal,,,,,lsiWFtpDFkmySGJYTUmrBg,,,,N,0,0
12,81911,829,10532,913,0,100,N,N,N,CP_Drtn,TT_Mile,DT_FixedDUR2,RV_OK,TK_Complete,0000000080,Project Official Start,,,,0,0,0,0,0,0,0,0,,2007-12-07 08:00,2007-12-07 08:00,,,,,,,,2007-12-07 08:00,2007-12-07 08:00,,,,,PT_Normal,,,,,dDJmmnprEEW4iPRscfMwng,,,,N,0,0
13,81912,829,10533,913,1,0,N,N,N,CP_Drtn,TT_Task,DT_FixedDUR2,RV_OK,TK_NotStart,0100000010,Authority inspection & approval for substations,2283,496,0,112,0,112,112,112,0,0,0,,,,2009-01-31 08:00,2009-02-13 17:00,,2008-11-30 08:00,2008-12-13 17:00,2008-11-30 08:00,2008-12-13 17:00,2008-11-30 08:00,2008-12-13 17:00,,,,,PT_Normal,,,,,m1cv2PdbZ0uvRVtFnrkflw,,,,N,0,0
14,81913,829,10533,913,1,0,N,N,N,CP_Drtn,TT_Task,DT_FixedDUR2,RV_OK,TK_NotStart,0100000020,Authority approval for chiled water tie-in,2283,352,0,112,0,112,112,112,0,0,0,,,,2009-02-08 08:00,2009-02-21 17:00,,2008-12-26 08:00,2009-01-08 17:00,2008-12-26 08:00,2009-01-08 17:00,2008-12-26 08:00,2009-01-08 17:00,,,,,PT_Normal,,,,,h5ebiTBM8ECmyLIaeyOHzA,,,,N,0,0
15,81914,829,10533,913,1,0,N,N,N,CP_Drtn,TT_Task,DT_FixedDUR2,RV_OK,TK_NotStart,0100000030,Authority approval for potable water tie-in,2283,400,0,112,0,112,112,112,0,0,0,,,,2009-02-11 08:00,2009-02-24 17:00,,2008-12-23 08:00,2009-01-05 17:00,2008-12-23 08:00,2009-01-05 17:00,2008-12-23 08:00,2009-01-05 17:00,,,,,PT_Normal,,,,,qHs5ZjJyYk+aBQtW8mjfwg,,,,N,0,0
16,81915,829,10533,913,1,0,N,N,N,CP_Drtn,TT_Task,DT_FixedDUR2,RV_OK,TK_NotStart,0100000040,Authority approval for drainage tie-in,2283,392,0,112,0,112,112,112,0,0,0,,,,2009-02-11 08:00,2009-02-24 17:00,,2008-12-24 08:00,2009-01-06 17:00,2008-12-24 08:00,2009-01-06 17:00,2008-12-24 08:00,2009-01-06 17:00,,,,,PT_Normal,,,,,OYrIzugzLE2WMfNIt6OI7A,,,,N,0,0
17,81916,829,10533,913,1,0,N,N,N,CP_Drtn,TT_Task,DT_FixedDUR2,RV_OK,TK_NotStart,0100000050,Authority approval for LPG tie-in,2283,400,0,112,0,112,112,112,0,0,0,,,,2009-02-05 08:00,2009-02-18 17:00,,2008-12-17 08:00,2008-12-30 17:00,2008-12-17 08:00,2008-12-30 17:00,2008-12-17 08:00,2008-12-30 17:00,,,,,PT_Normal,,,,,9nWE6C2E2Uqr5ZP4Y7kadA,,,,N,0,0
18,81917,829,10533,913,1,0,N,N,N,CP_Drtn,TT_Task,DT_FixedDUR2,RV_OK,TK_NotStart,0100000060,Authority approval for Telecom tie-in,2283,488,0,112,0,112,112,112,0,0,0,,,,2009-02-25 08:00,2009-03-10 17:00,,2008-12-26 08:00,2009-01-08 17:00,2008-12-26 08:00,2009-01-08 17:00,2008-12-26 08:00,2009-01-08 17:00,,,,,PT_Normal,,,,,SRC2r4lSfUWywSwlXpEMLA,,,,N,0,0
19,81918,829,10533,912,1,0,N,N,N,CP_Drtn,TT_Task,DT_FixedDUR2,RV_OK,TK_NotStart,0100000070,Authority approval for Fire Fighting System tie-,2283,304,0,112,0,112,112,112,0,0,0,,,,2009-02-05 08:00,2009-02-21 17:00,,2008-12-23 08:00,2009-01-07 17:00,2008-12-23 08:00,2009-01-07 17:00,2008-12-23 08:00,2009-01-07 17:00,,,,,PT_Normal,,,,,26iDpuAeJ0SMkVop/tMZyQ,,,,N,0,0
20,81919,829,10533,912,1,0,N,N,N,CP_Drtn,TT_Task,DT_FixedDUR2,RV_OK,TK_NotStart,0100000080,Authority approval for Fire Alarm system,2283,304,0,112,0,112,112,112,0,0,0,,,,2009-02-05 08:00,2009-02-21 17:00,,2008-12-23 08:00,2009-01-07 17:00,2008-12-23 08:00,2009-01-07 17:00,2008-12-23 08:00,2009-01-07 17:00,,,,,PT_Normal,,,,,DMqxAUJEzUa/5DCqF6ehcw,,,,N,0,0
21,81920,829,10533,912,1,0,N,N,N,CP_Drtn,TT_Task,DT_FixedDUR2,RV_OK,TK_NotStart,0100000090,Payment of fees for power connection,2283,424,0,16,0,16,16,16,0,0,0,,,,2009-02-14 08:00,2009-02-15 17:00,,2008-12-14 08:00,2008-12-15 17:00,2008-12-14 08:00,2008-12-15 17:00,2008-12-14 08:00,2008-12-15 17:00,,,,,PT_Normal,,,,,G6KTlIuOt06mR1JplKKUMg,,,,N,0,0
22,81921,829,10525,913,1,100,N,N,N,CP_Drtn,TT_Task,DT_FixedDUR2,RV_OK,TK_Complete,1000000020,Site offices & facilities,2283,0,0,0,224,0,224,224,,,0,,2007-12-07 08:00,2008-01-03 17:00,2008-10-02 08:00,2008-10-01 17:00,,2008-10-02 08:00,2008-10-01 17:00,,,2007-12-07 08:00,2008-01-03 17:00,,,,,PT_Normal,,,,,6y3yGd3FdkSkSQsJ8qNEZQ,,,,N,224,0
23,81922,829,10525,913,1,100,N,N,N,CP_Drtn,TT_Task,DT_FixedDUR2,RV_OK,TK_Complete,1000000030,Sign boards,2283,0,0,0,72,0,72,72,,,0,,2008-01-06 08:00,2008-01-14 17:00,2008-10-02 08:00,2008-10-01 17:00,,2008-10-02 08:00,2008-10-01 17:00,,,2008-01-06 08:00,2008-01-14 17:00,,,,,PT_Normal,,,,,u2XvXFqRAEmaF3O1w7/VLQ,,,,N,72,0
24,81923,829,10525,913,1,100,N,N,N,CP_Drtn,TT_Task,DT_FixedDUR2,RV_OK,TK_Complete,1000000040,Stores & yards arrangements,2283,0,0,0,224,0,224,224,,,0,,2007-12-07 08:00,2008-01-03 17:00,2008-10-02 08:00,2008-10-01 17:00,,2008-10-02 08:00,2008-10-01 17:00,,,2007-12-07 08:00,2008-01-03 17:00,,,,,PT_Normal,,,,,UEQa1nnrHEKRaJanw/gLEA,,,,N,224,0
25,81924,829,10525,913,1,100,N,N,N,CP_Drtn,TT_Task,DT_FixedDUR2,RV_OK,TK_Complete,1000000050,Temporary power & water supply arrangements,2283,0,0,0,224,0,224,224,,,0,,2007-12-07 08:00,2008-01-03 17:00,2008-10-02 08:00,2008-10-01 17:00,,2008-10-02 08:00,2008-10-01 17:00,,,2007-12-07 08:00,2008-01-03 17:00,,,,,PT_Normal,,,,,MPvs286LNUGGNVB8eilsjQ,,,,N,224,0
26,81925,829,10525,912,1,100,N,N,N,CP_Drtn,TT_Task,DT_FixedDUR2,RV_OK,TK_Complete,1000000060,Tower Crane Installation,2283,0,0,0,72,0,72,72,,,0,,2008-01-26 08:00,2008-02-04 17:00,2008-10-02 08:00,2008-10-01 17:00,,2008-10-02 08:00,2008-10-01 17:00,,,2008-01-26 08:00,2008-02-04 17:00,,,,,PT_Normal,,,,,RYI1J/VTnE2oivl/Z/exBQ,,,,N,72,0
27,81926,829,10544,913,1,100,N,N,N,CP_Drtn,TT_Task,DT_FixedDUR2,RV_OK,TK_Complete,2000000000,MEP works-subcontracting,2296,0,0,0,204,0,204,64,,,0,,2007-12-07 08:00,2007-12-14 17:00,2008-10-02 08:00,2008-10-01 17:00,,2008-10-02 08:00,2008-10-01 17:00,,,2007-12-07 08:00,2007-12-14 17:00,,,,,PT_Normal,,,,,lm0twkrq00Coo23LldD4wA,,,,N,204,0
28,81927,829,10544,913,1,100,N,N,N,CP_Drtn,TT_Task,DT_FixedDUR2,RV_OK,TK_Complete,2000000002,Ready mix supplier-subcontracting,2296,0,0,0,272,0,272,72,,,0,,2007-12-15 08:00,2007-12-23 17:00,2008-10-02 08:00,2008-10-01 17:00,,2008-10-02 08:00,2008-10-01 17:00,,,2007-12-15 08:00,2007-12-23 17:00,,,,,PT_Normal,,,,,ed+Oq7hN7k+Btklmhk1NAg,,,,N,272,0
29,81928,829,10544,913,1,100,N,N,N,CP_Drtn,TT_Task,DT_FixedDUR2,RV_OK,TK_Complete,2000000004,Testing Laboratory-subcontracting,2296,0,0,0,204,0,204,64,,,0,,2007-12-15 08:00,2007-12-22 17:00,2008-10-02 08:00,2008-10-01 17:00,,2008-10-02 08:00,2008-10-01 17:00,,,2007-12-15 08:00,2007-12-22 17:00,,,,,PT_Normal,,,,,jwxIg8e01U2kncaF3RfDag,,,,N,204,0
30,81929,829,10543,913,1,100,N,N,N,CP_Drtn,TT_Task,DT_FixedDUR2,RV_OK,TK_Complete,2000000010,MEP works-subcontracting,2281,0,0,0,102,0,102,32,,,0,,2007-12-07 08:00,2007-12-10 17:00,2008-10-02 08:00,2008-10-01 17:00,,2008-10-02 08:00,2008-10-01 17:00,,,2007-12-07 08:00,2007-12-10 17:00,,,,,PT_Normal,,,,,F16hKOcaRkyTHUrQ4z7hww,,,,N,102,0
31,81930,829,10543,913,1,100,N,N,N,CP_Drtn,TT_Task,DT_FixedDUR2,RV_OK,TK_Complete,2000000012,Ready mix supplier-subcontracting,2281,0,0,0,204,0,204,64,,,0,,2007-12-07 08:00,2007-12-14 17:00,2008-10-02 08:00,2008-10-01 17:00,,2008-10-02 08:00,2008-10-01 17:00,,,2007-12-07 08:00,2007-12-14 17:00,,,,,PT_Normal,,,,,eH/YlOdBa0eV3toXOe9sUw,,,,N,204,0
32,81931,829,10543,913,1,100,N,N,N,CP_Drtn,TT_Task,DT_FixedDUR2,RV_OK,TK_Complete,2000000014,Testing Laboratory-subcontracting,2281,0,0,0,224,0,224,64,,,0,,2007-12-07 08:00,2007-12-14 17:00,2008-10-02 08:00,2008-10-01 17:00,,2008-10-02 08:00,2008-10-01 17:00,,,2007-12-07 08:00,2007-12-14 17:00,,,,,PT_Normal,,,,,LLarIzqjOEGXixkbKwXX4w,,,,N,224,0
33,81932,829,10544,913,1,100,N,N,N,CP_Drtn,TT_Task,DT_FixedDUR2,RV_OK,TK_Complete,2000022000,Waterproofing works-subcontracting,2296,200,0,0,204,0,204,64,,,0,,2007-12-15 08:00,2007-12-22 17:00,2008-10-27 08:00,2008-10-26 17:00,,2008-10-02 08:00,2008-10-01 17:00,,,2007-12-15 08:00,2007-12-22 17:00,,,,,PT_Normal,,,,,6Bh4jazdmkaGULH+vexAwQ,,,,N,204,0
34,81933,829,10543,913,1,100,N,N,N,CP_Drtn,TT_Task,DT_FixedDUR2,RV_OK,TK_Complete,2000022010,Waterproofing works-subcontracting,2281,200,0,0,224,0,224,64,,,0,,2007-12-07 08:00,2007-12-14 17:00,2008-10-27 08:00,2008-10-26 17:00,,2008-10-02 08:00,2008-10-01 17:00,,,2007-12-07 08:00,2007-12-14 17:00,,,,,PT_Normal,,,,,bjVXtOK7qk2OpvUKvMEDxA,,,,N,224,0
35,81934,829,10544,913,1,100,N,N,N,CP_Drtn,TT_Task,DT_FixedDUR2,RV_OK,TK_Complete,2000024000,Aluminum and Glazing Works-subcontracting,2296,368,0,0,204,0,204,64,,,0,,2007-12-16 08:00,2007-12-23 17:00,2008-11-17 08:00,2008-11-16 17:00,,2008-10-02 08:00,2008-10-01 17:00,,,2007-12-16 08:00,2007-12-23 17:00,,,,,PT_Normal,,,,,uaHqkPFGoEao59heWL9oQQ,,,,N,204,0
36,81935,829,10544,913,1,100,N,N,N,CP_Drtn,TT_Task,DT_FixedDUR2,RV_OK,TK_Complete,2000024002,Staircase Handrails-subcontracting,2296,1168,0,0,204,0,204,64,,,0,,2007-12-16 08:00,2007-12-23 17:00,2009-02-25 08:00,2009-02-24 17:00,,2008-10-02 08:00,2008-10-01 17:00,,,2007-12-16 08:00,2007-12-23 17:00,,,,,PT_Normal,,,,,FFz1MmEV8Um5/puj6sSH+w,,,,N,204,0
37,81936,829,10543,913,1,100,N,N,N,CP_Drtn,TT_Task,DT_FixedDUR2,RV_OK,TK_Complete,2000024010,Aluminum and Glazing Works-subcontracting,2281,368,0,0,272,0,272,72,,,0,,2007-12-07 08:00,2007-12-15 17:00,2008-11-17 08:00,2008-11-16 17:00,,2008-10-02 08:00,2008-10-01 17:00,,,2007-12-07 08:00,2007-12-15 17:00,,,,,PT_Normal,,,,,NhgmCjnH90+/JeH5dg9jiA,,,,N,272,0
38,81937,829,10543,913,1,100,N,N,N,CP_Drtn,TT_Task,DT_FixedDUR2,RV_OK,TK_Complete,2000024012,Staircase Handrails-subcontracting,2281,1168,0,0,272,0,272,72,,,0,,2007-12-07 08:00,2007-12-15 17:00,2009-02-25 08:00,2009-02-24 17:00,,2008-10-02 08:00,2008-10-01 17:00,,,2007-12-07 08:00,2007-12-15 17:00,,,,,PT_Normal,,,,,e5fwKjM7S0OTRMu+Q+lGXw,,,,N,272,0
39,81938,829,10544,913,1,100,N,N,N,CP_Drtn,TT_Task,DT_FixedDUR2,RV_OK,TK_Complete,2000026000,Steel Doors-subcontracting,2296,592,0,0,204,0,204,64,,,0,,2007-12-16 08:00,2007-12-23 17:00,2008-12-15 08:00,2008-12-14 17:00,,2008-10-02 08:00,2008-10-01 17:00,,,2007-12-16 08:00,2007-12-23 17:00,,,,,PT_Normal,,,,,8wYXo8NWUkufOiHjJWe5YA,,,,N,204,0
40,81939,829,10543,913,1,100,N,N,N,CP_Drtn,TT_Task,DT_FixedDUR2,RV_OK,TK_Complete,2000026010,Steel Doors-subcontracting,2281,592,0,0,272,0,272,72,,,0,,2007-12-07 08:00,2007-12-15 17:00,2008-12-15 08:00,2008-12-14 17:00,,2008-10-02 08:00,2008-10-01 17:00,,,2007-12-07 08:00,2007-12-15 17:00,,,,,PT_Normal,,,,,B6zpzhGcP0SRdpaPNUj/ww,,,,N,272,0
41,81940,829,10544,913,1,100,N,N,N,CP_Drtn,TT_Task,DT_FixedDUR2,RV_OK,TK_Complete,2000032000,Joinery works-subcontracting,2296,320,0,0,204,0,204,64,,,0,,2007-12-15 08:00,2007-12-22 17:00,2008-11-11 08:00,2008-11-10 17:00,,2008-10-02 08:00,2008-10-01 17:00,,,2007-12-15 08:00,2007-12-22 17:00,,,,,PT_Normal,,,,,8NiSBsgH4USc/Aa4F3Xlfw,,,,N,204,0
42,81941,829,10543,913,1,100,N,N,N,CP_Drtn,TT_Task,DT_FixedDUR2,RV_OK,TK_Complete,2000032010,Joinery works-subcontracting,2281,320,0,0,204,0,204,64,,,0,,2007-12-07 08:00,2007-12-14 17:00,2008-11-11 08:00,2008-11-10 17:00,,2008-10-02 08:00,2008-10-01 17:00,,,2007-12-07 08:00,2007-12-14 17:00,,,,,PT_Normal,,,,,CKueP5pLp0eBXDE+Z3kFXA,,,,N,204,0
43,81942,829,10544,913,1,100,N,N,N,CP_Drtn,TT_Task,DT_FixedDUR2,RV_OK,TK_Complete,2000034000,False Ceiling Works-subcontracting,2296,200,0,0,204,0,204,64,,,0,,2007-12-14 08:00,2007-12-21 17:00,2008-10-27 08:00,2008-10-26 17:00,,2008-10-02 08:00,2008-10-01 17:00,,,2007-12-14 08:00,2007-12-21 17:00,,,,,PT_Normal,,,,,71OaAn26a06CMVVeXuP66Q,,,,N,204,0
44,81943,829,10543,913,1,100,N,N,N,CP_Drtn,TT_Task,DT_FixedDUR2,RV_OK,TK_Complete,2000034010,False Ceiling Works-subcontracting,2281,200,0,0,176,0,176,56,,,0,,2007-12-07 08:00,2007-12-13 17:00,2008-10-27 08:00,2008-10-26 17:00,,2008-10-02 08:00,2008-10-01 17:00,,,2007-12-07 08:00,2007-12-13 17:00,,,,,PT_Normal,,,,,0VWdLfK6J0CcFQmLZkcRVg,,,,N,176,0
45,81944,829,10544,913,1,100,N,N,N,CP_Drtn,TT_Task,DT_FixedDUR2,RV_OK,TK_Complete,2000042000,Signs-subcontracting,2296,1096,0,0,204,0,204,64,,,0,,2007-12-17 08:00,2007-12-24 17:00,2009-02-16 08:00,2009-02-15 17:00,,2008-10-02 08:00,2008-10-01 17:00,,,2007-12-17 08:00,2007-12-24 17:00,,,,,PT_Normal,,,,,u7omwRUccEOzbu+fvuQ+rA,,,,N,204,0
46,81945,829,10543,913,1,100,N,N,N,CP_Drtn,TT_Task,DT_FixedDUR2,RV_OK,TK_Complete,2000042010,Signs-subcontracting,2281,1096,0,0,330,0,330,80,,,0,,2007-12-07 08:00,2007-12-16 17:00,2009-02-16 08:00,2009-02-15 17:00,,2008-10-02 08:00,2008-10-01 17:00,,,2007-12-07 08:00,2007-12-16 17:00,,,,,PT_Normal,,,,,0YOZcdgP/kKB4VwQx6WYVQ,,,,N,330,0
47,81946,829,10544,913,1,100,N,N,N,CP_Drtn,TT_Task,DT_FixedDUR2,RV_OK,TK_Complete,2000046000,Lift works-subcontracting,2296,552,0,0,204,0,204,64,,,0,,2007-12-19 08:00,2007-12-26 17:00,2008-12-10 08:00,2008-12-09 17:00,,2008-10-02 08:00,2008-10-01 17:00,,,2007-12-19 08:00,2007-12-26 17:00,,,,,PT_Normal,,,,,ee1U1kPtZEiJdwFpmgK9qw,,,,N,204,0
48,81947,829,10543,913,1,100,N,N,N,CP_Drtn,TT_Task,DT_FixedDUR2,RV_OK,TK_Complete,2000046010,Lift works-subcontracting,2281,552,0,0,356,0,356,96,,,0,,2007-12-07 08:00,2007-12-18 17:00,2008-12-10 08:00,2008-12-09 17:00,,2008-10-02 08:00,2008-10-01 17:00,,,2007-12-07 08:00,2007-12-18 17:00,,,,,PT_Normal,,,,,/LyTlDED6kqHg1+aq/gM6w,,,,N,356,0
49,81948,829,10544,913,1,100,N,N,N,CP_Drtn,TT_Task,DT_FixedDUR2,RV_OK,TK_Complete,2000048000,Refuse chute-subcontracting,2296,648,0,0,204,0,204,64,,,0,,2007-12-16 08:00,2007-12-23 17:00,2008-12-22 08:00,2008-12-21 17:00,,2008-10-02 08:00,2008-10-01 17:00,,,2007-12-16 08:00,2007-12-23 17:00,,,,,PT_Normal,,,,,+2/sRkLH6EyGrcj01v+Pjg,,,,N,204,0
50,81949,829,10543,913,1,100,N,N,N,CP_Drtn,TT_Task,DT_FixedDUR2,RV_OK,TK_Complete,2000048010,Refuse chute-subcontracting,2281,648,0,0,272,0,272,72,,,0,,2007-12-07 08:00,2007-12-15 17:00,2008-12-22 08:00,2008-12-21 17:00,,2008-10-02 08:00,2008-10-01 17:00,,,2007-12-07 08:00,2007-12-15 17:00,,,,,PT_Normal,,,,,ovYzvIrKV06WGpVr2WC/tg,,,,N,272,0
51,81950,829,10559,913,1,100,N,N,N,CP_Drtn,TT_Task,DT_FixedDUR2,RV_OK,TK_Complete,3000010000,Substructure water proofing -Shop drawing,2296,0,0,0,204,0,204,64,,,0,,2007-12-11 08:00,2007-12-18 17:00,2008-10-02 08:00,2008-10-01 17:00,,2008-10-02 08:00,2008-10-01 17:00,,,2007-12-11 08:00,2007-12-18 17:00,,,,,PT_Normal,,,,,i3GQ+LwJoUyj3KxqWylw2A,,,,N,204,0
52,81951,829,10555,913,1,100,N,N,N,CP_Drtn,TT_Task,DT_FixedDUR2,RV_OK,TK_Complete,3000010010,Substructure water proofing -Shop drawing,2276,0,0,0,172,0,172,32,,,0,,2007-12-07 08:00,2007-12-10 17:00,2008-10-02 08:00,2008-10-01 17:00,,2008-10-02 08:00,2008-10-01 17:00,,,2007-12-07 08:00,2007-12-10 17:00,,,,,PT_Normal,,,,,9KBB+pL95kCylx3tflpXHA,,,,N,172,0
53,81952,829,10559,913,1,100,N,N,N,CP_Drtn,TT_Task,DT_FixedDUR2,RV_OK,TK_Complete,3000014000,Block work drawings -Shop drawing,2296,152,0,0,204,0,204,64,,,0,,2007-12-15 08:00,2007-12-22 17:00,2008-10-21 08:00,2008-10-20 17:00,,2008-10-02 08:00,2008-10-01 17:00,,,2007-12-15 08:00,2007-12-22 17:00,,,,,PT_Normal,,,,,6jCJ9CXd00S6t08Fa6XFqQ,,,,N,204,0
54,81953,829,10555,913,1,100,N,N,N,CP_Drtn,TT_Task,DT_FixedDUR2,RV_OK,TK_Complete,3000014010,Block work drawings -Shop drawing,2276,152,0,0,344,0,344,64,,,0,,2007-12-07 08:00,2007-12-14 17:00,2008-10-21 08:00,2008-10-20 17:00,,2008-10-02 08:00,2008-10-01 17:00,,,2007-12-07 08:00,2007-12-14 17:00,,,,,PT_Normal,,,,,9h3AOi+XAkelDZK68SCKzg,,,,N,344,0
55,81954,829,10559,913,1,100,N,N,N,CP_Drtn,TT_Task,DT_FixedDUR2,RV_OK,TK_Complete,3000016000,Plaster works -Shop drawing,2296,48,0,0,204,0,204,64,,,0,,2007-12-15 08:00,2007-12-22 17:00,2008-10-08 08:00,2008-10-07 17:00,,2008-10-02 08:00,2008-10-01 17:00,,,2007-12-15 08:00,2007-12-22 17:00,,,,,PT_Normal,,,,,XV6vc64tI0a3ewSOm0ptwA,,,,N,204,0
56,81955,829,10555,913,1,100,N,N,N,CP_Drtn,TT_Task,DT_FixedDUR2,RV_OK,TK_Complete,3000016010,Plaster works -Shop drawing,2276,48,0,0,344,0,344,64,,,0,,2007-12-07 08:00,2007-12-14 17:00,2008-10-08 08:00,2008-10-07 17:00,,2008-10-02 08:00,2008-10-01 17:00,,,2007-12-07 08:00,2007-12-14 17:00,,,,,PT_Normal,,,,,Jp7Xi7vbeUK+FMrEvjP2Wg,,,,N,344,0
57,81956,829,10559,913,1,100,N,N,N,CP_Drtn,TT_Task,DT_FixedDUR2,RV_OK,TK_Complete,3000020000,Tile layouts -Shop drawing,2296,240,0,0,204,0,204,64,,,0,,2007-12-31 08:00,2008-01-07 17:00,2008-11-01 08:00,2008-10-31 17:00,,2008-10-02 08:00,2008-10-01 17:00,,,2007-12-31 08:00,2008-01-07 17:00,,,,,PT_Normal,,,,,NhQQMsF01EWVWVvNMwCNSA,,,,N,204,0
58,81957,829,10555,913,1,100,N,N,N,CP_Drtn,TT_Task,DT_FixedDUR2,RV_OK,TK_Complete,3000020010,Tile layouts -Shop drawing,2276,240,0,0,464,0,464,64,,,0,,2007-12-23 08:00,2007-12-30 17:00,2008-11-01 08:00,2008-10-31 17:00,,2008-10-02 08:00,2008-10-01 17:00,,,2007-12-23 08:00,2007-12-30 17:00,,,,,PT_Normal,,,,,jzvKTTcRiEaOfxqIjo70Bg,,,,N,464,0
59,81958,829,10559,913,1,100,N,N,N,CP_Drtn,TT_Task,DT_FixedDUR2,RV_OK,TK_Complete,3000022000,Wet area W/P works -Shop drawing,2296,208,0,0,204,0,204,64,,,0,,2008-01-16 08:00,2008-01-23 17:00,2008-10-28 08:00,2008-10-27 17:00,,2008-10-02 08:00,2008-10-01 17:00,,,2008-01-16 08:00,2008-01-23 17:00,,,,,PT_Normal,,,,,ByLwAWcCskaq5D9gY4kxBA,,,,N,204,0
60,81959,829,10559,913,1,100,N,N,N,CP_Drtn,TT_Task,DT_FixedDUR2,RV_OK,TK_Complete,3000022002,Roof W/P works -Shop drawing,2296,328,0,0,204,0,204,64,,,0,,2008-01-08 08:00,2008-01-15 17:00,2008-11-12 08:00,2008-11-11 17:00,,2008-10-02 08:00,2008-10-01 17:00,,,2008-01-08 08:00,2008-01-15 17:00,,,,,PT_Normal,,,,,N50IMGiS3kiB9N6aO8NaxA,,,,N,204,0
61,81960,829,10555,913,1,100,N,N,N,CP_Drtn,TT_Task,DT_FixedDUR2,RV_OK,TK_Complete,3000022010,Wet area W/P works -Shop drawing,2276,208,0,0,344,0,344,64,,,0,,2008-01-08 08:00,2008-01-15 17:00,2008-10-28 08:00,2008-10-27 17:00,,2008-10-02 08:00,2008-10-01 17:00,,,2008-01-08 08:00,2008-01-15 17:00,,,,,PT_Normal,,,,,gt2Y3DlSrUqmGH0Gs2xnRw,,,,N,344,0
62,81961,829,10555,913,1,100,N,N,N,CP_Drtn,TT_Task,DT_FixedDUR2,RV_OK,TK_Complete,3000022012,Roof W/P works -Shop drawing,2276,328,0,0,344,0,344,64,,,0,,2007-12-31 08:00,2008-01-07 17:00,2008-11-12 08:00,2008-11-11 17:00,,2008-10-02 08:00,2008-10-01 17:00,,,2007-12-31 08:00,2008-01-07 17:00,,,,,PT_Normal,,,,,Cu+5aHFmfEii5QpV7MqWQg,,,,N,344,0
63,81962,829,10559,913,1,100,N,N,N,CP_Drtn,TT_Task,DT_FixedDUR2,RV_OK,TK_Complete,3000024000,Aluminum doors & windows -Shop drawing,2296,368,0,0,204,0,204,64,,,0,,2008-01-22 08:00,2008-01-29 17:00,2008-11-17 08:00,2008-11-16 17:00,,2008-10-02 08:00,2008-10-01 17:00,,,2008-01-22 08:00,2008-01-29 17:00,,,,,PT_Normal,,,,,vqB3UBaZsUW7T5YNzR0d+w,,,,N,204,0
64,81963,829,10559,913,1,100,N,N,N,CP_Drtn,TT_Task,DT_FixedDUR2,RV_OK,TK_Complete,3000024002,Staircase Handrails -Shop drawing,2296,1168,0,0,204,0,204,64,,,0,,2008-01-17 08:00,2008-01-24 17:00,2009-02-25 08:00,2009-02-24 17:00,,2008-10-02 08:00,2008-10-01 17:00,,,2008-01-17 08:00,2008-01-24 17:00,,,,,PT_Normal,,,,,ikMOI17UY0WI/r8TT1TDbg,,,,N,204,0
65,81964,829,10555,913,1,100,N,N,N,CP_Drtn,TT_Task,DT_FixedDUR2,RV_OK,TK_Complete,3000024010,Aluminum doors & windows -Shop drawing,2276,368,0,0,344,0,344,64,,,0,,2008-01-14 08:00,2008-01-21 17:00,2008-11-17 08:00,2008-11-16 17:00,,2008-10-02 08:00,2008-10-01 17:00,,,2008-01-14 08:00,2008-01-21 17:00,,,,,PT_Normal,,,,,YpvfZq5CO0Kv2sQ5BNpQuQ,,,,N,344,0
66,81965,829,10555,913,1,100,N,N,N,CP_Drtn,TT_Task,DT_FixedDUR2,RV_OK,TK_Complete,3000024012,Staircase Handrails -Shop drawing,2276,1168,0,0,344,0,344,64,,,0,,2008-01-09 08:00,2008-01-16 17:00,2009-02-25 08:00,2009-02-24 17:00,,2008-10-02 08:00,2008-10-01 17:00,,,2008-01-09 08:00,2008-01-16 17:00,,,,,PT_Normal,,,,,aKovhfIFFE2FacPUIX/8Fw,,,,N,344,0
67,81966,829,10559,913,1,100,N,N,N,CP_Drtn,TT_Task,DT_FixedDUR2,RV_OK,TK_Complete,3000026000,Steel doors -Shop drawing,2296,592,0,0,204,0,204,64,,,0,,2008-01-17 08:00,2008-01-24 17:00,2008-12-15 08:00,2008-12-14 17:00,,2008-10-02 08:00,2008-10-01 17:00,,,2008-01-17 08:00,2008-01-24 17:00,,,,,PT_Normal,,,,,k1/bMN8WWEaY7GGTG9JBEA,,,,N,204,0
68,81967,829,10555,913,1,100,N,N,N,CP_Drtn,TT_Task,DT_FixedDUR2,RV_OK,TK_Complete,3000026010,Steel doors -Shop drawing,2276,592,0,0,344,0,344,64,,,0,,2008-01-09 08:00,2008-01-16 17:00,2008-12-15 08:00,2008-12-14 17:00,,2008-10-02 08:00,2008-10-01 17:00,,,2008-01-09 08:00,2008-01-16 17:00,,,,,PT_Normal,,,,,Vak1Yc/s6EqF2DW+jMvN1w,,,,N,344,0
69,81968,829,10559,913,1,100,N,N,N,CP_Drtn,TT_Task,DT_FixedDUR2,RV_OK,TK_Complete,3000030000,Wooden doors -Shop drawing,2296,320,0,0,204,0,204,64,,,0,,2008-01-16 08:00,2008-01-23 17:00,2008-11-11 08:00,2008-11-10 17:00,,2008-10-02 08:00,2008-10-01 17:00,,,2008-01-16 08:00,2008-01-23 17:00,,,,,PT_Normal,,,,,51It8b2ppkeBjhXDH9uBaQ,,,,N,204,0
70,81969,829,10555,913,1,100,N,N,N,CP_Drtn,TT_Task,DT_FixedDUR2,RV_OK,TK_Complete,3000030010,Wooden doors -Shop drawing,2276,320,0,0,344,0,344,64,,,0,,2008-01-08 08:00,2008-01-15 17:00,2008-11-11 08:00,2008-11-10 17:00,,2008-10-02 08:00,2008-10-01 17:00,,,2008-01-08 08:00,2008-01-15 17:00,,,,,PT_Normal,,,,,tDOtY+9e5kG3xKDZOl0gHQ,,,,N,344,0
71,81970,829,10559,913,1,100,N,N,N,CP_Drtn,TT_Task,DT_FixedDUR2,RV_OK,TK_Complete,3000032000,Wardrobes -Shop drawing,2296,576,0,0,204,0,204,64,,,0,,2008-01-17 08:00,2008-01-24 17:00,2008-12-13 08:00,2008-12-12 17:00,,2008-10-02 08:00,2008-10-01 17:00,,,2008-01-17 08:00,2008-01-24 17:00,,,,,PT_Normal,,,,,U8aOZx+LL06gbCjF7WI5Gw,,,,N,204,0
72,81971,829,10559,913,1,100,N,N,N,CP_Drtn,TT_Task,DT_FixedDUR2,RV_OK,TK_Complete,3000032002,Kitchen cabinets -Shop drawing,2296,560,0,0,204,0,204,64,,,0,,2008-01-17 08:00,2008-01-24 17:00,2008-12-11 08:00,2008-12-10 17:00,,2008-10-02 08:00,2008-10-01 17:00,,,2008-01-17 08:00,2008-01-24 17:00,,,,,PT_Normal,,,,,lF4i/ecrp0GE0VAe7sqZDg,,,,N,204,0
73,81972,829,10559,913,1,100,N,N,N,CP_Drtn,TT_Task,DT_FixedDUR2,RV_OK,TK_Complete,3000032006,Vanity counters (PC) -Shop drawing,2296,416,0,0,204,0,204,64,,,0,,2008-01-16 08:00,2008-01-23 17:00,2008-11-23 08:00,2008-11-22 17:00,,2008-10-02 08:00,2008-10-01 17:00,,,2008-01-16 08:00,2008-01-23 17:00,,,,,PT_Normal,,,,,PMzSift670qaF2uWfPv1IQ,,,,N,204,0
74,81973,829,10555,913,1,100,N,N,N,CP_Drtn,TT_Task,DT_FixedDUR2,RV_OK,TK_Complete,3000032010,Wardrobes -Shop drawing,2276,576,0,0,472,0,472,72,,,0,,2008-01-08 08:00,2008-01-16 17:00,2008-12-13 08:00,2008-12-12 17:00,,2008-10-02 08:00,2008-10-01 17:00,,,2008-01-08 08:00,2008-01-16 17:00,,,,,PT_Normal,,,,,72/+h/bFaUSOGm7ijAxfpQ,,,,N,472,0
75,81974,829,10555,913,1,100,N,N,N,CP_Drtn,TT_Task,DT_FixedDUR2,RV_OK,TK_Complete,3000032012,Kitchen cabinets -Shop drawing,2276,560,0,0,472,0,472,72,,,0,,2008-01-08 08:00,2008-01-16 17:00,2008-12-11 08:00,2008-12-10 17:00,,2008-10-02 08:00,2008-10-01 17:00,,,2008-01-08 08:00,2008-01-16 17:00,,,,,PT_Normal,,,,,9qAnJydz80OILHcDQPWXMw,,,,N,472,0
76,81975,829,10555,913,1,100,N,N,N,CP_Drtn,TT_Task,DT_FixedDUR2,RV_OK,TK_Complete,3000032016,Vanity counters (PC) -Shop drawing,2276,416,0,0,344,0,344,64,,,0,,2008-01-08 08:00,2008-01-15 17:00,2008-11-23 08:00,2008-11-22 17:00,,2008-10-02 08:00,2008-10-01 17:00,,,2008-01-08 08:00,2008-01-15 17:00,,,,,PT_Normal,,,,,tCODJKlbQkaR/b8++TDRiA,,,,N,344,0
77,81976,829,10559,913,1,100,N,N,N,CP_Drtn,TT_Task,DT_FixedDUR2,RV_OK,TK_Complete,3000034000,False ceiling works -Shop drawing,2296,200,0,0,204,0,204,64,,,0,,2008-01-13 08:00,2008-01-20 17:00,2008-10-27 08:00,2008-10-26 17:00,,2008-10-02 08:00,2008-10-01 17:00,,,2008-01-13 08:00,2008-01-20 17:00,,,,,PT_Normal,,,,,B4oKr2sPf0OR3NykDFxXqA,,,,N,204,0
78,81977,829,10555,913,1,100,N,N,N,CP_Drtn,TT_Task,DT_FixedDUR2,RV_OK,TK_Complete,3000034010,False ceiling works -Shop drawing,2276,200,0,0,344,0,344,64,,,0,,2008-01-05 08:00,2008-01-12 17:00,2008-10-27 08:00,2008-10-26 17:00,,2008-10-02 08:00,2008-10-01 17:00,,,2008-01-05 08:00,2008-01-12 17:00,,,,,PT_Normal,,,,,Mkyavp7eGUu4wMmZOh9vaQ,,,,N,344,0
79,81978,829,10559,913,1,100,N,N,N,CP_Drtn,TT_Task,DT_FixedDUR2,RV_OK,TK_Complete,3000040000,Duplex staircases -Shop drawing,2296,384,0,0,204,0,204,64,,,0,,2007-12-23 08:00,2007-12-30 17:00,2008-11-19 08:00,2008-11-18 17:00,,2008-10-02 08:00,2008-10-01 17:00,,,2007-12-23 08:00,2007-12-30 17:00,,,,,PT_Normal,,,,,va1A1S1uvkmuzuq0u68WgQ,,,,N,204,0
80,81979,829,10555,913,1,100,N,N,N,CP_Drtn,TT_Task,DT_FixedDUR2,RV_OK,TK_Complete,3000040010,Duplex staircases -Shop drawing,2276,384,0,0,344,0,344,64,,,0,,2007-12-15 08:00,2007-12-22 17:00,2008-11-19 08:00,2008-11-18 17:00,,2008-10-02 08:00,2008-10-01 17:00,,,2007-12-15 08:00,2007-12-22 17:00,,,,,PT_Normal,,,,,L3GEQEeZbUO+vXi3uQDs/Q,,,,N,344,0
81,81980,829,10559,913,1,100,N,N,N,CP_Drtn,TT_Task,DT_FixedDUR2,RV_OK,TK_Complete,3000042000,Signs -Shop drawing,2296,1096,0,0,204,0,204,64,,,0,,2008-01-18 08:00,2008-01-25 17:00,2009-02-16 08:00,2009-02-15 17:00,,2008-10-02 08:00,2008-10-01 17:00,,,2008-01-18 08:00,2008-01-25 17:00,,,,,PT_Normal,,,,,4FZtKMvhAEC9w3N/MSGf0g,,,,N,204,0
82,81981,829,10555,913,1,100,N,N,N,CP_Drtn,TT_Task,DT_FixedDUR2,RV_OK,TK_Complete,3000042010,Signs -Shop drawing,2276,1096,0,0,344,0,344,64,,,0,,2008-01-10 08:00,2008-01-17 17:00,2009-02-16 08:00,2009-02-15 17:00,,2008-10-02 08:00,2008-10-01 17:00,,,2008-01-10 08:00,2008-01-17 17:00,,,,,PT_Normal,,,,,Ed/FiFbsgUi09rRsWcUxaA,,,,N,344,0
83,81982,829,10559,913,1,100,N,N,N,CP_Drtn,TT_Task,DT_FixedDUR2,RV_OK,TK_Complete,3000046000,Lift works -Shop drawing,2296,552,0,0,204,0,204,64,,,0,,2008-01-20 08:00,2008-01-27 17:00,2008-12-10 08:00,2008-12-09 17:00,,2008-10-02 08:00,2008-10-01 17:00,,,2008-01-20 08:00,2008-01-27 17:00,,,,,PT_Normal,,,,,0a6PEAxm7UGb9cNj8WGf/w,,,,N,204,0
84,81983,829,10555,913,1,100,N,N,N,CP_Drtn,TT_Task,DT_FixedDUR2,RV_OK,TK_Complete,3000046010,Lift works -Shop drawing,2276,552,0,0,344,0,344,64,,,0,,2008-01-12 08:00,2008-01-19 17:00,2008-12-10 08:00,2008-12-09 17:00,,2008-10-02 08:00,2008-10-01 17:00,,,2008-01-12 08:00,2008-01-19 17:00,,,,,PT_Normal,,,,,T5K/x60gD0K/HUzsBb6x6A,,,,N,344,0
85,81984,829,10559,913,1,100,N,N,N,CP_Drtn,TT_Task,DT_FixedDUR2,RV_OK,TK_Complete,3000048000,Garbage system -Shop drawing,2296,648,0,0,204,0,204,64,,,0,,2008-01-10 08:00,2008-01-17 17:00,2008-12-22 08:00,2008-12-21 17:00,,2008-10-02 08:00,2008-10-01 17:00,,,2008-01-10 08:00,2008-01-17 17:00,,,,,PT_Normal,,,,,xAI6vOWgt0+yb9vvRjyDvg,,,,N,204,0
86,81985,829,10555,913,1,100,N,N,N,CP_Drtn,TT_Task,DT_FixedDUR2,RV_OK,TK_Complete,3000048010,Garbage system -Shop drawing,2276,648,0,0,472,0,472,72,,,0,,2008-01-01 08:00,2008-01-09 17:00,2008-12-22 08:00,2008-12-21 17:00,,2008-10-02 08:00,2008-10-01 17:00,,,2008-01-01 08:00,2008-01-09 17:00,,,,,PT_Normal,,,,,ycrCeccN7EqkxPc3hnwBgg,,,,N,472,0
87,81986,829,10559,913,1,100,N,N,N,CP_Drtn,TT_Task,DT_FixedDUR2,RV_OK,TK_Complete,3000054002,Mirrors -Shop drawing,2296,504,0,0,204,0,204,64,,,0,,2007-12-23 08:00,2007-12-30 17:00,2008-12-04 08:00,2008-12-03 17:00,,2008-10-02 08:00,2008-10-01 17:00,,,2007-12-23 08:00,2007-12-30 17:00,,,,,PT_Normal,,,,,yNvb/r2Lxk+qYjLm7/JP7A,,,,N,204,0
88,81987,829,10555,913,1,100,N,N,N,CP_Drtn,TT_Task,DT_FixedDUR2,RV_OK,TK_Complete,3000054012,Mirrors -Shop drawing,2276,504,0,0,344,0,344,64,,,0,,2007-12-15 08:00,2007-12-22 17:00,2008-12-04 08:00,2008-12-03 17:00,,2008-10-02 08:00,2008-10-01 17:00,,,2007-12-15 08:00,2007-12-22 17:00,,,,,PT_Normal,,,,,lvWvskeZ1ECKQitAdHkqng,,,,N,344,0
89,81988,829,10559,913,1,100,N,N,N,CP_Drtn,TT_Task,DT_FixedDUR2,RV_OK,TK_Complete,3000080000,Road works -Shop drawing,2296,864,0,0,204,0,204,64,,,0,,2008-01-01 08:00,2008-01-08 17:00,2009-01-18 08:00,2009-01-17 17:00,,2008-10-02 08:00,2008-10-01 17:00,,,2008-01-01 08:00,2008-01-08 17:00,,,,,PT_Normal,,,,,UzJY9aBWaEmtmsL81J83sw,,,,N,204,0
90,81989,829,10555,913,1,100,N,N,N,CP_Drtn,TT_Task,DT_FixedDUR2,RV_OK,TK_Complete,3000080010,Road works -Shop drawing,2276,864,0,0,472,0,472,72,,,0,,2007-12-23 08:00,2007-12-31 17:00,2009-01-18 08:00,2009-01-17 17:00,,2008-10-02 08:00,2008-10-01 17:00,,,2007-12-23 08:00,2007-12-31 17:00,,,,,PT_Normal,,,,,avfuBCd6HU6JMsUwgADURQ,,,,N,472,0
91,81990,829,10559,913,1,100,N,N,N,CP_Drtn,TT_Task,DT_FixedDUR2,RV_OK,TK_Complete,30000AS100,General site drawings -Shop drawing,2296,0,0,0,102,0,102,32,,,0,,2007-12-11 08:00,2007-12-14 17:00,2008-10-02 08:00,2008-10-01 17:00,,2008-10-02 08:00,2008-10-01 17:00,,,2007-12-11 08:00,2007-12-14 17:00,,,,,PT_Normal,,,,,gETSFkwBTE+Fvdk1ggmLTg,,,,N,102,0
92,81991,829,10555,913,1,100,N,N,N,CP_Drtn,TT_Task,DT_FixedDUR2,RV_OK,TK_Complete,30000AS110,General site drawings -Shop drawing,2276,0,0,0,172,0,172,32,,,0,,2007-12-07 08:00,2007-12-10 17:00,2008-10-02 08:00,2008-10-01 17:00,,2008-10-02 08:00,2008-10-01 17:00,,,2007-12-07 08:00,2007-12-10 17:00,,,,,PT_Normal,,,,,lwliPX73LkW/3QMMFYsciQ,,,,N,172,0
93,81992,829,10559,913,1,100,N,N,N,CP_Drtn,TT_Task,DT_FixedDUR2,RV_OK,TK_Complete,30000AS200,General plans -Shop drawing,2296,368,0,0,420,0,420,120,,,0,,2007-12-22 08:00,2008-01-05 17:00,2008-11-17 08:00,2008-11-16 17:00,,2008-10-02 08:00,2008-10-01 17:00,,,2007-12-22 08:00,2008-01-05 17:00,,,,,PT_Normal,,,,,LZVKw/Hx40aKEq0grEc/CQ,,,,N,420,0
94,81993,829,10555,913,1,100,N,N,N,CP_Drtn,TT_Task,DT_FixedDUR2,RV_OK,TK_Complete,30000AS210,General plans -Shop drawing,2276,368,0,0,720,0,720,120,,,0,,2007-12-07 08:00,2007-12-21 17:00,2008-11-17 08:00,2008-11-16 17:00,,2008-10-02 08:00,2008-10-01 17:00,,,2007-12-07 08:00,2007-12-21 17:00,,,,,PT_Normal,,,,,eT9RpFEE0UGwLtlioGPz3A,,,,N,720,0
95,81994,829,10559,913,1,100,N,N,N,CP_Drtn,TT_Task,DT_FixedDUR2,RV_OK,TK_Complete,30000AS300,Elevations -Shop drawing,2296,368,0,0,204,0,204,64,,,0,,2007-12-15 08:00,2007-12-22 17:00,2008-11-17 08:00,2008-11-16 17:00,,2008-10-02 08:00,2008-10-01 17:00,,,2007-12-15 08:00,2007-12-22 17:00,,,,,PT_Normal,,,,,bHjhcgoHUEee2xCw5Z98yQ,,,,N,204,0
96,81995,829,10555,913,1,100,N,N,N,CP_Drtn,TT_Task,DT_FixedDUR2,RV_OK,TK_Complete,30000AS310,Elevations -Shop drawing,2276,368,0,0,344,0,344,64,,,0,,2007-12-07 08:00,2007-12-14 17:00,2008-11-17 08:00,2008-11-16 17:00,,2008-10-02 08:00,2008-10-01 17:00,,,2007-12-07 08:00,2007-12-14 17:00,,,,,PT_Normal,,,,,nTMcDUMMK0OEcul3x3ieKQ,,,,N,344,0
97,81996,829,10558,913,1,100,N,N,N,CP_Drtn,TT_Task,DT_FixedDUR2,RV_OK,TK_Complete,30000SS100,Level 2 - Upper duplex level drawings -Shop draw,2296,16,0,0,204,0,204,64,,,0,,2007-12-16 08:00,2007-12-23 17:00,2008-10-04 08:00,2008-10-03 17:00,,2008-10-02 08:00,2008-10-01 17:00,,,2007-12-16 08:00,2007-12-23 17:00,,,,,PT_Normal,,,,,C7wj8S5KQEOHMTWEXYlxBw,,,,N,204,0
98,81997,829,10558,913,1,100,N,N,N,CP_Drtn,TT_Task,DT_FixedDUR2,RV_OK,TK_Complete,30000SS105,Roof drawings -Shop drawing,2296,16,0,0,204,0,204,64,,,0,,2007-12-16 08:00,2007-12-23 17:00,2008-10-04 08:00,2008-10-03 17:00,,2008-10-02 08:00,2008-10-01 17:00,,,2007-12-16 08:00,2007-12-23 17:00,,,,,PT_Normal,,,,,TQees3TEU0mLoqQHA6lg+g,,,,N,204,0
99,81998,829,10551,913,1,100,N,N,N,CP_Drtn,TT_Task,DT_FixedDUR2,RV_OK,TK_Complete,30000SS110,Level 2 - Upper duplex level drawings -Shop draw,2276,16,0,0,492,0,492,72,,,0,,2007-12-07 08:00,2007-12-15 17:00,2008-10-04 08:00,2008-10-03 17:00,,2008-10-02 08:00,2008-10-01 17:00,,,2007-12-07 08:00,2007-12-15 17:00,,,,,PT_Normal,,,,,odFiJFXk5kiRjOzfEP0upA,,,,N,492,0
100,81999,829,10551,913,1,100,N,N,N,CP_Drtn,TT_Task,DT_FixedDUR2,RV_OK,TK_Complete,30000SS115,Roof drawings -Shop drawing,2276,16,0,0,492,0,492,72,,,0,,2007-12-07 08:00,2007-12-15 17:00,2008-10-04 08:00,2008-10-03 17:00,,2008-10-02 08:00,2008-10-01 17:00,,,2007-12-07 08:00,2007-12-15 17:00,,,,,PT_Normal,,,,,7kdWKCf9/kG3GlNuojrKBQ,,,,N,492,0
101,82000,829,10558,913,1,100,N,N,N,CP_Drtn,TT_Task,DT_FixedDUR2,RV_OK,TK_Complete,30000SS200,Foundations -Shop drawing,2296,0,0,0,204,0,204,64,,,0,,2007-12-16 08:00,2007-12-23 17:00,2008-10-02 08:00,2008-10-01 17:00,,2008-10-02 08:00,2008-10-01 17:00,,,2007-12-16 08:00,2007-12-23 17:00,,,,,PT_Normal,,,,,sVCu1NjsZkKyKMnkocH1tA,,,,N,204,0
102,82001,829,10551,913,1,100,N,N,N,CP_Drtn,TT_Task,DT_FixedDUR2,RV_OK,TK_Complete,30000SS210,Foundations -Shop drawing,2276,0,0,0,492,0,492,72,,,0,,2007-12-07 08:00,2007-12-15 17:00,2008-10-02 08:00,2008-10-01 17:00,,2008-10-02 08:00,2008-10-01 17:00,,,2007-12-07 08:00,2007-12-15 17:00,,,,,PT_Normal,,,,,JSxf+JTsHU29G/8/6GNsOA,,,,N,492,0
103,82002,829,10558,913,1,100,N,N,N,CP_Drtn,TT_Task,DT_FixedDUR2,RV_OK,TK_Complete,30000SS300,Columns & walls -Shop drawing,2296,0,0,0,204,0,204,64,,,0,,2007-12-16 08:00,2007-12-23 17:00,2008-10-02 08:00,2008-10-01 17:00,,2008-10-02 08:00,2008-10-01 17:00,,,2007-12-16 08:00,2007-12-23 17:00,,,,,PT_Normal,,,,,6S3XNCpN3kea0QLhmUS6tQ,,,,N,204,0
104,82003,829,10551,913,1,100,N,N,N,CP_Drtn,TT_Task,DT_FixedDUR2,RV_OK,TK_Complete,30000SS310,Columns & walls -Shop drawing,2276,0,0,0,492,0,492,72,,,0,,2007-12-07 08:00,2007-12-15 17:00,2008-10-02 08:00,2008-10-01 17:00,,2008-10-02 08:00,2008-10-01 17:00,,,2007-12-07 08:00,2007-12-15 17:00,,,,,PT_Normal,,,,,cy8fVG4o6ECnUNFjx+r5kg,,,,N,492,0
105,82004,829,10558,913,1,100,N,N,N,CP_Drtn,TT_Task,DT_FixedDUR2,RV_OK,TK_Complete,30000SS400,Staircases -Shop drawing,2296,248,0,0,204,0,204,64,,,0,,2007-12-16 08:00,2007-12-23 17:00,2008-11-02 08:00,2008-11-01 17:00,,2008-10-02 08:00,2008-10-01 17:00,,,2007-12-16 08:00,2007-12-23 17:00,,,,,PT_Normal,,,,,aSqGtqUyCkqws21z8pPCxA,,,,N,204,0
106,82005,829,10551,913,1,100,N,N,N,CP_Drtn,TT_Task,DT_FixedDUR2,RV_OK,TK_Complete,30000SS410,Staircases -Shop drawing,2276,248,0,0,492,0,492,72,,,0,,2007-12-07 08:00,2007-12-15 17:00,2008-11-02 08:00,2008-11-01 17:00,,2008-10-02 08:00,2008-10-01 17:00,,,2007-12-07 08:00,2007-12-15 17:00,,,,,PT_Normal,,,,,5MKSLjz5Hk+PfvdfnJ26eA,,,,N,492,0
107,82006,829,10558,913,1,100,N,N,N,CP_Drtn,TT_Task,DT_FixedDUR2,RV_OK,TK_Complete,30000SS500,Ground - Lower loft level drawings -Shop drawing,2296,0,0,0,204,0,204,64,,,0,,2007-12-16 08:00,2007-12-23 17:00,2008-10-02 08:00,2008-10-01 17:00,,2008-10-02 08:00,2008-10-01 17:00,,,2007-12-16 08:00,2007-12-23 17:00,,,,,PT_Normal,,,,,VEcEKNzws0ytJZUvEdDxDw,,,,N,204,0
108,82007,829,10551,913,1,100,N,N,N,CP_Drtn,TT_Task,DT_FixedDUR2,RV_OK,TK_Complete,30000SS510,Ground - Lower loft level drawings -Shop drawing,2276,0,0,0,492,0,492,72,,,0,,2007-12-07 08:00,2007-12-15 17:00,2008-10-02 08:00,2008-10-01 17:00,,2008-10-02 08:00,2008-10-01 17:00,,,2007-12-07 08:00,2007-12-15 17:00,,,,,PT_Normal,,,,,FCSqmMPbYkOnYp3DK9aTpg,,,,N,492,0
109,82008,829,10558,913,1,100,N,N,N,CP_Drtn,TT_Task,DT_FixedDUR2,RV_OK,TK_Complete,30000SS600,Ground - Upper loft level drawings -Shop drawing,2296,0,0,0,204,0,204,64,,,0,,2007-12-16 08:00,2007-12-23 17:00,2008-10-02 08:00,2008-10-01 17:00,,2008-10-02 08:00,2008-10-01 17:00,,,2007-12-16 08:00,2007-12-23 17:00,,,,,PT_Normal,,,,,F4EGTTHSIUqVM+VDfUAhug,,,,N,204,0
110,82009,829,10551,913,1,100,N,N,N,CP_Drtn,TT_Task,DT_FixedDUR2,RV_OK,TK_Complete,30000SS610,Ground - Upper loft level drawings -Shop drawing,2276,0,0,0,492,0,492,72,,,0,,2007-12-07 08:00,2007-12-15 17:00,2008-10-02 08:00,2008-10-01 17:00,,2008-10-02 08:00,2008-10-01 17:00,,,2007-12-07 08:00,2007-12-15 17:00,,,,,PT_Normal,,,,,feKeNbLmTUWzFeK7ELy8lA,,,,N,492,0
111,82010,829,10558,913,1,100,N,N,N,CP_Drtn,TT_Task,DT_FixedDUR2,RV_OK,TK_Complete,30000SS700,Level 1 - Lower duplex level drawings -Shop draw,2296,0,0,0,204,0,204,64,,,0,,2007-12-16 08:00,2007-12-23 17:00,2008-10-02 08:00,2008-10-01 17:00,,2008-10-02 08:00,2008-10-01 17:00,,,2007-12-16 08:00,2007-12-23 17:00,,,,,PT_Normal,,,,,jshmBKViQUKOwNxQb9QcdQ,,,,N,204,0
112,82011,829,10551,913,1,100,N,N,N,CP_Drtn,TT_Task,DT_FixedDUR2,RV_OK,TK_Complete,30000SS710,Level 1 - Lower duplex level drawings -Shop draw,2276,0,0,0,492,0,492,72,,,0,,2007-12-07 08:00,2007-12-15 17:00,2008-10-02 08:00,2008-10-01 17:00,,2008-10-02 08:00,2008-10-01 17:00,,,2007-12-07 08:00,2007-12-15 17:00,,,,,PT_Normal,,,,,7CU8WaF/c0yaFBFHccSytw,,,,N,492,0
113,82012,829,10558,913,1,100,N,N,N,CP_Drtn,TT_Task,DT_FixedDUR2,RV_OK,TK_Complete,30000SS800,Level 1 - Upper duplex level drawings -Shop draw,2296,0,0,0,204,0,204,64,,,0,,2007-12-16 08:00,2007-12-23 17:00,2008-10-02 08:00,2008-10-01 17:00,,2008-10-02 08:00,2008-10-01 17:00,,,2007-12-16 08:00,2007-12-23 17:00,,,,,PT_Normal,,,,,bZ6QTW0ZcUaeJG4GqSOOTw,,,,N,204,0
114,82013,829,10551,913,1,100,N,N,N,CP_Drtn,TT_Task,DT_FixedDUR2,RV_OK,TK_Complete,30000SS810,Level 1 - Upper duplex level drawings -Shop draw,2276,0,0,0,492,0,492,72,,,0,,2007-12-07 08:00,2007-12-15 17:00,2008-10-02 08:00,2008-10-01 17:00,,2008-10-02 08:00,2008-10-01 17:00,,,2007-12-07 08:00,2007-12-15 17:00,,,,,PT_Normal,,,,,gSm08i+jTUqtRkhF+TpTow,,,,N,492,0
115,82014,829,10558,913,1,100,N,N,N,CP_Drtn,TT_Task,DT_FixedDUR2,RV_OK,TK_Complete,30000SS900,Level 2 - Lower duplex level drawings -Shop draw,2296,0,0,0,204,0,204,64,,,0,,2007-12-16 08:00,2007-12-23 17:00,2008-10-02 08:00,2008-10-01 17:00,,2008-10-02 08:00,2008-10-01 17:00,,,2007-12-16 08:00,2007-12-23 17:00,,,,,PT_Normal,,,,,oXKoHmu5nEWJT3UVeJZCSw,,,,N,204,0
116,82015,829,10551,913,1,100,N,N,N,CP_Drtn,TT_Task,DT_FixedDUR2,RV_OK,TK_Complete,30000SS910,Level 2 - Lower duplex level drawings -Shop draw,2276,0,0,0,492,0,492,72,,,0,,2007-12-07 08:00,2007-12-15 17:00,2008-10-02 08:00,2008-10-01 17:00,,2008-10-02 08:00,2008-10-01 17:00,,,2007-12-07 08:00,2007-12-15 17:00,,,,,PT_Normal,,,,,CORoheDNpk+r7egry49MyA,,,,N,492,0
117,82016,829,10605,913,1,100,N,N,N,CP_Drtn,TT_Task,DT_FixedDUR2,RV_OK,TK_Complete,3001L52000,A/C layouts 1L-Shop drawing,2296,0,0,0,204,0,204,64,,,0,,2007-12-23 08:00,2007-12-30 17:00,2008-10-02 08:00,2008-10-01 17:00,,2008-10-02 08:00,2008-10-01 17:00,,,2007-12-23 08:00,2007-12-30 17:00,,,,,PT_Normal,,,,,oyhzxKyaQ0yC9hcs58oYdg,,,,N,204,0
118,82017,829,10612,913,1,100,N,N,N,CP_Drtn,TT_Task,DT_FixedDUR2,RV_OK,TK_Complete,3001L52010,A/C layouts 1L-Shop drawing,2295,0,0,0,344,0,344,64,,,0,,2007-12-15 08:00,2007-12-22 17:00,2008-10-02 08:00,2008-10-01 17:00,,2008-10-02 08:00,2008-10-01 17:00,,,2007-12-15 08:00,2007-12-22 17:00,,,,,PT_Normal,,,,,tiR/ckmNbUWEc5NH5z6VmA,,,,N,344,0
119,82018,829,10587,913,1,100,N,N,N,CP_Drtn,TT_Task,DT_FixedDUR2,RV_OK,TK_Complete,3001L54000,Plumbing layouts 1L-Shop drawing,2296,0,0,0,204,0,204,64,,,0,,2007-12-23 08:00,2007-12-30 17:00,2008-10-02 08:00,2008-10-01 17:00,,2008-10-02 08:00,2008-10-01 17:00,,,2007-12-23 08:00,2007-12-30 17:00,,,,,PT_Normal,,,,,lpWd8JQtskOmYHwhz2Fbiw,,,,N,204,0
120,82019,829,10585,913,1,100,N,N,N,CP_Drtn,TT_Task,DT_FixedDUR2,RV_OK,TK_Complete,3001L54010,Plumbing layouts 1L-Shop drawing,2295,0,0,0,344,0,344,64,,,0,,2007-12-15 08:00,2007-12-22 17:00,2008-10-02 08:00,2008-10-01 17:00,,2008-10-02 08:00,2008-10-01 17:00,,,2007-12-15 08:00,2007-12-22 17:00,,,,,PT_Normal,,,,,vylbLnZpV0ieEj0lGaTL4g,,,,N,344,0
121,82020,829,10588,913,1,100,N,N,N,CP_Drtn,TT_Task,DT_FixedDUR2,RV_OK,TK_Complete,3001L56000,Drainage system layouts 1L-Shop drawing,2296,0,0,0,204,0,204,64,,,0,,2007-12-23 08:00,2007-12-30 17:00,2008-10-02 08:00,2008-10-01 17:00,,2008-10-02 08:00,2008-10-01 17:00,,,2007-12-23 08:00,2007-12-30 17:00,,,,,PT_Normal,,,,,vk4xWgGW6UaI3bgLR+K0bA,,,,N,204,0
122,82021,829,10586,913,1,100,N,N,N,CP_Drtn,TT_Task,DT_FixedDUR2,RV_OK,TK_Complete,3001L56010,Drainage system layouts 1L-Shop drawing,2295,0,0,0,344,0,344,64,,,0,,2007-12-15 08:00,2007-12-22 17:00,2008-10-02 08:00,2008-10-01 17:00,,2008-10-02 08:00,2008-10-01 17:00,,,2007-12-15 08:00,2007-12-22 17:00,,,,,PT_Normal,,,,,1syw2NLgO0ORUCUEr2X2xA,,,,N,344,0
123,82022,829,10608,913,1,100,N,N,N,CP_Drtn,TT_Task,DT_FixedDUR2,RV_OK,TK_Complete,3001L58000,Fire fighting layouts 1L-Shop drawing,2296,0,0,0,204,0,204,64,,,0,,2007-12-23 08:00,2007-12-30 17:00,2008-10-02 08:00,2008-10-01 17:00,,2008-10-02 08:00,2008-10-01 17:00,,,2007-12-23 08:00,2007-12-30 17:00,,,,,PT_Normal,,,,,oBstufeG50upvp3KbZ+m+Q,,,,N,204,0
124,82023,829,10611,913,1,100,N,N,N,CP_Drtn,TT_Task,DT_FixedDUR2,RV_OK,TK_Complete,3001L58010,Fire fighting layouts 1L-Shop drawing,2295,0,0,0,344,0,344,64,,,0,,2007-12-15 08:00,2007-12-22 17:00,2008-10-02 08:00,2008-10-01 17:00,,2008-10-02 08:00,2008-10-01 17:00,,,2007-12-15 08:00,2007-12-22 17:00,,,,,PT_Normal,,,,,QAtQQjvZxUuPeZwThjpXTw,,,,N,344,0
125,82024,829,10597,913,1,100,N,N,N,CP_Drtn,TT_Task,DT_FixedDUR2,RV_OK,TK_Complete,3001L68000,Lighting layout 1L-Shop drawing,2296,0,0,0,204,0,204,64,,,0,,2007-12-23 08:00,2007-12-30 17:00,2008-10-02 08:00,2008-10-01 17:00,,2008-10-02 08:00,2008-10-01 17:00,,,2007-12-23 08:00,2007-12-30 17:00,,,,,PT_Normal,,,,,UVYZPZxwWkO5F3P53qujDg,,,,N,204,0
126,82025,829,10597,913,1,100,N,N,N,CP_Drtn,TT_Task,DT_FixedDUR2,RV_OK,TK_Complete,3001L68002,Power layout 1L-Shop drawing,2296,0,0,0,204,0,204,64,,,0,,2007-12-23 08:00,2007-12-30 17:00,2008-10-02 08:00,2008-10-01 17:00,,2008-10-02 08:00,2008-10-01 17:00,,,2007-12-23 08:00,2007-12-30 17:00,,,,,PT_Normal,,,,,Ec8XIaAuP0Oe0szwSPob0A,,,,N,204,0
127,82026,829,10589,913,1,100,N,N,N,CP_Drtn,TT_Task,DT_FixedDUR2,RV_OK,TK_Complete,3001L68010,Lighting layout 1L-Shop drawing,2295,0,0,0,344,0,344,64,,,0,,2007-12-15 08:00,2007-12-22 17:00,2008-10-02 08:00,2008-10-01 17:00,,2008-10-02 08:00,2008-10-01 17:00,,,2007-12-15 08:00,2007-12-22 17:00,,,,,PT_Normal,,,,,30BOIwwLpEO3NfZXdi6fWQ,,,,N,344,0
128,82027,829,10589,913,1,100,N,N,N,CP_Drtn,TT_Task,DT_FixedDUR2,RV_OK,TK_Complete,3001L68012,Power layout 1L-Shop drawing,2295,0,0,0,344,0,344,64,,,0,,2007-12-15 08:00,2007-12-22 17:00,2008-10-02 08:00,2008-10-01 17:00,,2008-10-02 08:00,2008-10-01 17:00,,,2007-12-15 08:00,2007-12-22 17:00,,,,,PT_Normal,,,,,Y2EiNaVkrEujqIoWM4U2qg,,,,N,344,0
129,82028,829,10599,913,1,100,N,N,N,CP_Drtn,TT_Task,DT_FixedDUR2,RV_OK,TK_Complete,3001L70000,Emergency Lighting 1L-Shop drawing,2296,0,0,0,204,0,204,64,,,0,,2007-12-23 08:00,2007-12-30 17:00,2008-10-02 08:00,2008-10-01 17:00,,2008-10-02 08:00,2008-10-01 17:00,,,2007-12-23 08:00,2007-12-30 17:00,,,,,PT_Normal,,,,,rqaUti2wZUiqPViyWIFBCA,,,,N,204,0
130,82029,829,10591,913,1,100,N,N,N,CP_Drtn,TT_Task,DT_FixedDUR2,RV_OK,TK_Complete,3001L70010,Emergency Lighting 1L-Shop drawing,2295,0,0,0,344,0,344,64,,,0,,2007-12-15 08:00,2007-12-22 17:00,2008-10-02 08:00,2008-10-01 17:00,,2008-10-02 08:00,2008-10-01 17:00,,,2007-12-15 08:00,2007-12-22 17:00,,,,,PT_Normal,,,,,5VeMTn/oSUesYjdY+ZR9sA,,,,N,344,0
131,82030,829,10584,913,1,100,N,N,N,CP_Drtn,TT_Task,DT_FixedDUR2,RV_OK,TK_Complete,3001L72002,Door phone First Floor-Shop drawing,2296,0,0,0,204,0,204,64,,,0,,2007-12-23 08:00,2007-12-30 17:00,2008-10-02 08:00,2008-10-01 17:00,,2008-10-02 08:00,2008-10-01 17:00,,,2007-12-23 08:00,2007-12-30 17:00,,,,,PT_Normal,,,,,aYnp5yZiyU2T+VjDj1fGIQ,,,,N,204,0
132,82031,829,10592,913,1,100,N,N,N,CP_Drtn,TT_Task,DT_FixedDUR2,RV_OK,TK_Complete,3001L72012,Door phone First Floor-Shop drawing,2295,0,0,0,344,0,344,64,,,0,,2007-12-15 08:00,2007-12-22 17:00,2008-10-02 08:00,2008-10-01 17:00,,2008-10-02 08:00,2008-10-01 17:00,,,2007-12-15 08:00,2007-12-22 17:00,,,,,PT_Normal,,,,,79v/oGFy1U+tPyBNjTpuNw,,,,N,344,0
133,82032,829,10602,913,1,100,N,N,N,CP_Drtn,TT_Task,DT_FixedDUR2,RV_OK,TK_Complete,3001L74000,Fire Alarm 1L-Shop drawing,2296,0,0,0,204,0,204,64,,,0,,2007-12-23 08:00,2007-12-30 17:00,2008-10-02 08:00,2008-10-01 17:00,,2008-10-02 08:00,2008-10-01 17:00,,,2007-12-23 08:00,2007-12-30 17:00,,,,,PT_Normal,,,,,1aNJO20YhkeqNZQfyPbWlA,,,,N,204,0
134,82033,829,10603,913,1,100,N,N,N,CP_Drtn,TT_Task,DT_FixedDUR2,RV_OK,TK_Complete,3001L74002,Public Adress 1L-Shop drawing,2296,0,0,0,204,0,204,64,,,0,,2007-12-23 08:00,2007-12-30 17:00,2008-10-02 08:00,2008-10-01 17:00,,2008-10-02 08:00,2008-10-01 17:00,,,2007-12-23 08:00,2007-12-30 17:00,,,,,PT_Normal,,,,,CQBRr/+3kUqVTV2Rbrs2mw,,,,N,204,0
135,82034,829,10593,913,1,100,N,N,N,CP_Drtn,TT_Task,DT_FixedDUR2,RV_OK,TK_Complete,3001L74010,Fire Alarm 1L-Shop drawing,2295,0,0,0,344,0,344,64,,,0,,2007-12-15 08:00,2007-12-22 17:00,2008-10-02 08:00,2008-10-01 17:00,,2008-10-02 08:00,2008-10-01 17:00,,,2007-12-15 08:00,2007-12-22 17:00,,,,,PT_Normal,,,,,IgX3VFScb0KFa294us7VOQ,,,,N,344,0
136,82035,829,10583,913,1,100,N,N,N,CP_Drtn,TT_Task,DT_FixedDUR2,RV_OK,TK_Complete,3001L74012,Public Adress 1L-Shop drawing,2295,0,0,0,344,0,344,64,,,0,,2007-12-15 08:00,2007-12-22 17:00,2008-10-02 08:00,2008-10-01 17:00,,2008-10-02 08:00,2008-10-01 17:00,,,2007-12-15 08:00,2007-12-22 17:00,,,,,PT_Normal,,,,,PEWFeuGUIEiLoRI0t2XjFA,,,,N,344,0
137,82036,829,10604,913,1,100,N,N,N,CP_Drtn,TT_Task,DT_FixedDUR2,RV_OK,TK_Complete,3001L76000,Tel & Data 1L-Shop drawing,2296,0,0,0,204,0,204,64,,,0,,2007-12-23 08:00,2007-12-30 17:00,2008-10-02 08:00,2008-10-01 17:00,,2008-10-02 08:00,2008-10-01 17:00,,,2007-12-23 08:00,2007-12-30 17:00,,,,,PT_Normal,,,,,NLaLAdPOFEGTsV7C8cuF1w,,,,N,204,0
138,82037,829,10595,913,1,100,N,N,N,CP_Drtn,TT_Task,DT_FixedDUR2,RV_OK,TK_Complete,3001L76010,Tel & Data 1L-Shop drawing,2295,0,0,0,344,0,344,64,,,0,,2007-12-15 08:00,2007-12-22 17:00,2008-10-02 08:00,2008-10-01 17:00,,2008-10-02 08:00,2008-10-01 17:00,,,2007-12-15 08:00,2007-12-22 17:00,,,,,PT_Normal,,,,,f9vV2QVQ/0S7qT46wO60SQ,,,,N,344,0
139,82038,829,10605,913,1,100,N,N,N,CP_Drtn,TT_Task,DT_FixedDUR2,RV_OK,TK_Complete,3001U52000,A/C layouts 1U-Shop drawing,2296,0,0,0,204,0,204,64,,,0,,2007-12-23 08:00,2007-12-30 17:00,2008-10-02 08:00,2008-10-01 17:00,,2008-10-02 08:00,2008-10-01 17:00,,,2007-12-23 08:00,2007-12-30 17:00,,,,,PT_Normal,,,,,5bDs//NCiEW3/SrnR3O+bg,,,,N,204,0
140,82039,829,10612,913,1,100,N,N,N,CP_Drtn,TT_Task,DT_FixedDUR2,RV_OK,TK_Complete,3001U52010,A/C layouts 1U-Shop drawing,2295,0,0,0,344,0,344,64,,,0,,2007-12-15 08:00,2007-12-22 17:00,2008-10-02 08:00,2008-10-01 17:00,,2008-10-02 08:00,2008-10-01 17:00,,,2007-12-15 08:00,2007-12-22 17:00,,,,,PT_Normal,,,,,x0Myl3HbgkqEIxWI9OC05g,,,,N,344,0
141,82040,829,10587,913,1,100,N,N,N,CP_Drtn,TT_Task,DT_FixedDUR2,RV_OK,TK_Complete,3001U54000,Plumbing layouts 1U-Shop drawing,2296,0,0,0,204,0,204,64,,,0,,2007-12-23 08:00,2007-12-30 17:00,2008-10-02 08:00,2008-10-01 17:00,,2008-10-02 08:00,2008-10-01 17:00,,,2007-12-23 08:00,2007-12-30 17:00,,,,,PT_Normal,,,,,FFqky+EC7UiatEV6ZefAWg,,,,N,204,0
142,82041,829,10585,913,1,100,N,N,N,CP_Drtn,TT_Task,DT_FixedDUR2,RV_OK,TK_Complete,3001U54010,Plumbing layouts 1U-Shop drawing,2295,0,0,0,344,0,344,64,,,0,,2007-12-15 08:00,2007-12-22 17:00,2008-10-02 08:00,2008-10-01 17:00,,2008-10-02 08:00,2008-10-01 17:00,,,2007-12-15 08:00,2007-12-22 17:00,,,,,PT_Normal,,,,,WRseJ0BK1kqudZYnilKSvA,,,,N,344,0
143,82042,829,10588,913,1,100,N,N,N,CP_Drtn,TT_Task,DT_FixedDUR2,RV_OK,TK_Complete,3001U56000,Drainage system layouts 1U-Shop drawing,2296,0,0,0,204,0,204,64,,,0,,2007-12-23 08:00,2007-12-30 17:00,2008-10-02 08:00,2008-10-01 17:00,,2008-10-02 08:00,2008-10-01 17:00,,,2007-12-23 08:00,2007-12-30 17:00,,,,,PT_Normal,,,,,6mLpl8SHWkWXcl6VgPTWWA,,,,N,204,0
144,82043,829,10586,913,1,100,N,N,N,CP_Drtn,TT_Task,DT_FixedDUR2,RV_OK,TK_Complete,3001U56010,Drainage system layouts 1U-Shop drawing,2295,0,0,0,344,0,344,64,,,0,,2007-12-15 08:00,2007-12-22 17:00,2008-10-02 08:00,2008-10-01 17:00,,2008-10-02 08:00,2008-10-01 17:00,,,2007-12-15 08:00,2007-12-22 17:00,,,,,PT_Normal,,,,,kXT61/xxwkCS4OF5lYZebA,,,,N,344,0
145,82044,829,10608,913,1,100,N,N,N,CP_Drtn,TT_Task,DT_FixedDUR2,RV_OK,TK_Complete,3001U58000,Fire fighting layouts 1U-Shop drawing,2296,0,0,0,204,0,204,64,,,0,,2007-12-23 08:00,2007-12-30 17:00,2008-10-02 08:00,2008-10-01 17:00,,2008-10-02 08:00,2008-10-01 17:00,,,2007-12-23 08:00,2007-12-30 17:00,,,,,PT_Normal,,,,,nAZxjbMdi0GVd3C/Y9a1Dg,,,,N,204,0
146,82045,829,10611,913,1,100,N,N,N,CP_Drtn,TT_Task,DT_FixedDUR2,RV_OK,TK_Complete,3001U58010,Fire fighting layouts 1U-Shop drawing,2295,0,0,0,344,0,344,64,,,0,,2007-12-15 08:00,2007-12-22 17:00,2008-10-02 08:00,2008-10-01 17:00,,2008-10-02 08:00,2008-10-01 17:00,,,2007-12-15 08:00,2007-12-22 17:00,,,,,PT_Normal,,,,,Jx5Hf6hPNEmMlHEp3Kb+Ug,,,,N,344,0
147,82046,829,10597,913,1,100,N,N,N,CP_Drtn,TT_Task,DT_FixedDUR2,RV_OK,TK_Complete,3001U68000,Lighting layout 1U-Shop drawing,2296,0,0,0,204,0,204,64,,,0,,2007-12-23 08:00,2007-12-30 17:00,2008-10-02 08:00,2008-10-01 17:00,,2008-10-02 08:00,2008-10-01 17:00,,,2007-12-23 08:00,2007-12-30 17:00,,,,,PT_Normal,,,,,AtzwPiqpM0+0qdYQUdLyaA,,,,N,204,0
148,82047,829,10597,913,1,100,N,N,N,CP_Drtn,TT_Task,DT_FixedDUR2,RV_OK,TK_Complete,3001U68002,Power layout 1U-Shop drawing,2296,0,0,0,204,0,204,64,,,0,,2007-12-23 08:00,2007-12-30 17:00,2008-10-02 08:00,2008-10-01 17:00,,2008-10-02 08:00,2008-10-01 17:00,,,2007-12-23 08:00,2007-12-30 17:00,,,,,PT_Normal,,,,,Z9ridPcALUOtFX4D6SldJQ,,,,N,204,0
149,82048,829,10589,913,1,100,N,N,N,CP_Drtn,TT_Task,DT_FixedDUR2,RV_OK,TK_Complete,3001U68010,Lighting layout 1U-Shop drawing,2295,0,0,0,344,0,344,64,,,0,,2007-12-15 08:00,2007-12-22 17:00,2008-10-02 08:00,2008-10-01 17:00,,2008-10-02 08:00,2008-10-01 17:00,,,2007-12-15 08:00,2007-12-22 17:00,,,,,PT_Normal,,,,,AZZftIiBjkKmvQeibXyubg,,,,N,344,0
150,82049,829,10589,913,1,100,N,N,N,CP_Drtn,TT_Task,DT_FixedDUR2,RV_OK,TK_Complete,3001U68012,Power layout 1U-Shop drawing,2295,0,0,0,344,0,344,64,,,0,,2007-12-15 08:00,2007-12-22 17:00,2008-10-02 08:00,2008-10-01 17:00,,2008-10-02 08:00,2008-10-01 17:00,,,2007-12-15 08:00,2007-12-22 17:00,,,,,PT_Normal,,,,,8oU66aWw5kapd7VA/aIsGA,,,,N,344,0
151,82050,829,10599,913,1,100,N,N,N,CP_Drtn,TT_Task,DT_FixedDUR2,RV_OK,TK_Complete,3001U70000,Emergency Lighting 1U-Shop drawing,2296,0,0,0,204,0,204,64,,,0,,2007-12-23 08:00,2007-12-30 17:00,2008-10-02 08:00,2008-10-01 17:00,,2008-10-02 08:00,2008-10-01 17:00,,,2007-12-23 08:00,2007-12-30 17:00,,,,,PT_Normal,,,,,YmataiRnW0KiQxAShBbY7Q,,,,N,204,0
152,82051,829,10591,913,1,100,N,N,N,CP_Drtn,TT_Task,DT_FixedDUR2,RV_OK,TK_Complete,3001U70010,Emergency Lighting 1U-Shop drawing,2295,0,0,0,344,0,344,64,,,0,,2007-12-15 08:00,2007-12-22 17:00,2008-10-02 08:00,2008-10-01 17:00,,2008-10-02 08:00,2008-10-01 17:00,,,2007-12-15 08:00,2007-12-22 17:00,,,,,PT_Normal,,,,,5KdbzG6qW0W2iDWPW4vX8g,,,,N,344,0
153,82052,829,10602,913,1,100,N,N,N,CP_Drtn,TT_Task,DT_FixedDUR2,RV_OK,TK_Complete,3001U74000,Fire Alarm 1U-Shop drawing,2296,0,0,0,204,0,204,64,,,0,,2007-12-23 08:00,2007-12-30 17:00,2008-10-02 08:00,2008-10-01 17:00,,2008-10-02 08:00,2008-10-01 17:00,,,2007-12-23 08:00,2007-12-30 17:00,,,,,PT_Normal,,,,,mewsCBc+xEmzi7qT83Chug,,,,N,204,0
154,82053,829,10593,913,1,100,N,N,N,CP_Drtn,TT_Task,DT_FixedDUR2,RV_OK,TK_Complete,3001U74010,Fire Alarm 1U-Shop drawing,2295,0,0,0,344,0,344,64,,,0,,2007-12-15 08:00,2007-12-22 17:00,2008-10-02 08:00,2008-10-01 17:00,,2008-10-02 08:00,2008-10-01 17:00,,,2007-12-15 08:00,2007-12-22 17:00,,,,,PT_Normal,,,,,gXgEr4aclUWJtTJ/q2aWqg,,,,N,344,0
155,82054,829,10604,913,1,100,N,N,N,CP_Drtn,TT_Task,DT_FixedDUR2,RV_OK,TK_Complete,3001U76000,Tel & Data 1U-Shop drawing,2296,0,0,0,204,0,204,64,,,0,,2007-12-23 08:00,2007-12-30 17:00,2008-10-02 08:00,2008-10-01 17:00,,2008-10-02 08:00,2008-10-01 17:00,,,2007-12-23 08:00,2007-12-30 17:00,,,,,PT_Normal,,,,,mWFsxG+u60WKex6VtBFYFg,,,,N,204,0
156,82055,829,10595,913,1,100,N,N,N,CP_Drtn,TT_Task,DT_FixedDUR2,RV_OK,TK_Complete,3001U76010,Tel & Data 1U-Shop drawing,2295,0,0,0,344,0,344,64,,,0,,2007-12-15 08:00,2007-12-22 17:00,2008-10-02 08:00,2008-10-01 17:00,,2008-10-02 08:00,2008-10-01 17:00,,,2007-12-15 08:00,2007-12-22 17:00,,,,,PT_Normal,,,,,2/cZ0IQrskO49Xuf86jDjQ,,,,N,344,0
157,82056,829,10605,913,1,100,N,N,N,CP_Drtn,TT_Task,DT_FixedDUR2,RV_OK,TK_Complete,3002L52000,A/C layouts 2L-Shop drawing,2296,0,0,0,204,0,204,64,,,0,,2007-12-23 08:00,2007-12-30 17:00,2008-10-02 08:00,2008-10-01 17:00,,2008-10-02 08:00,2008-10-01 17:00,,,2007-12-23 08:00,2007-12-30 17:00,,,,,PT_Normal,,,,,i+SChsUV2E2W5IXRYSeQ0Q,,,,N,204,0
158,82057,829,10612,913,1,100,N,N,N,CP_Drtn,TT_Task,DT_FixedDUR2,RV_OK,TK_Complete,3002L52010,A/C layouts 2L-Shop drawing,2295,0,0,0,344,0,344,64,,,0,,2007-12-15 08:00,2007-12-22 17:00,2008-10-02 08:00,2008-10-01 17:00,,2008-10-02 08:00,2008-10-01 17:00,,,2007-12-15 08:00,2007-12-22 17:00,,,,,PT_Normal,,,,,4simg9GKVUmolCxXwHguxg,,,,N,344,0
159,82058,829,10587,913,1,100,N,N,N,CP_Drtn,TT_Task,DT_FixedDUR2,RV_OK,TK_Complete,3002L54000,Plumbing layouts 2L-Shop drawing,2296,0,0,0,204,0,204,64,,,0,,2007-12-23 08:00,2007-12-30 17:00,2008-10-02 08:00,2008-10-01 17:00,,2008-10-02 08:00,2008-10-01 17:00,,,2007-12-23 08:00,2007-12-30 17:00,,,,,PT_Normal,,,,,dAS8GuFMC0+IEzXntH3tWA,,,,N,204,0
160,82059,829,10585,913,1,100,N,N,N,CP_Drtn,TT_Task,DT_FixedDUR2,RV_OK,TK_Complete,3002L54010,Plumbing layouts 2L-Shop drawing,2295,0,0,0,344,0,344,64,,,0,,2007-12-15 08:00,2007-12-22 17:00,2008-10-02 08:00,2008-10-01 17:00,,2008-10-02 08:00,2008-10-01 17:00,,,2007-12-15 08:00,2007-12-22 17:00,,,,,PT_Normal,,,,,AB+Ukoa7AUeB6M6JlUALCw,,,,N,344,0
161,82060,829,10588,913,1,100,N,N,N,CP_Drtn,TT_Task,DT_FixedDUR2,RV_OK,TK_Complete,3002L56000,Drainage system layouts 2L-Shop drawing,2296,0,0,0,204,0,204,64,,,0,,2007-12-23 08:00,2007-12-30 17:00,2008-10-02 08:00,2008-10-01 17:00,,2008-10-02 08:00,2008-10-01 17:00,,,2007-12-23 08:00,2007-12-30 17:00,,,,,PT_Normal,,,,,Ozevn+9Dnk2suKCkGLBRuA,,,,N,204,0
162,82061,829,10586,913,1,100,N,N,N,CP_Drtn,TT_Task,DT_FixedDUR2,RV_OK,TK_Complete,3002L56010,Drainage system layouts 2L-Shop drawing,2295,0,0,0,344,0,344,64,,,0,,2007-12-15 08:00,2007-12-22 17:00,2008-10-02 08:00,2008-10-01 17:00,,2008-10-02 08:00,2008-10-01 17:00,,,2007-12-15 08:00,2007-12-22 17:00,,,,,PT_Normal,,,,,n+0feYkbZkatpF3lzbPUpQ,,,,N,344,0
163,82062,829,10608,913,1,100,N,N,N,CP_Drtn,TT_Task,DT_FixedDUR2,RV_OK,TK_Complete,3002L58000,Fire fighting layouts 2L-Shop drawing,2296,0,0,0,204,0,204,64,,,0,,2007-12-23 08:00,2007-12-30 17:00,2008-10-02 08:00,2008-10-01 17:00,,2008-10-02 08:00,2008-10-01 17:00,,,2007-12-23 08:00,2007-12-30 17:00,,,,,PT_Normal,,,,,j01ELEtCQkuy7GptLoJiQg,,,,N,204,0
164,82063,829,10611,913,1,100,N,N,N,CP_Drtn,TT_Task,DT_FixedDUR2,RV_OK,TK_Complete,3002L58010,Fire fighting layouts 2L-Shop drawing,2295,0,0,0,344,0,344,64,,,0,,2007-12-15 08:00,2007-12-22 17:00,2008-10-02 08:00,2008-10-01 17:00,,2008-10-02 08:00,2008-10-01 17:00,,,2007-12-15 08:00,2007-12-22 17:00,,,,,PT_Normal,,,,,0kzBEk9zhUWdELG22vr0vg,,,,N,344,0
165,82064,829,10597,913,1,100,N,N,N,CP_Drtn,TT_Task,DT_FixedDUR2,RV_OK,TK_Complete,3002L68000,Lighting layout 2L-Shop drawing,2296,0,0,0,204,0,204,64,,,0,,2007-12-23 08:00,2007-12-30 17:00,2008-10-02 08:00,2008-10-01 17:00,,2008-10-02 08:00,2008-10-01 17:00,,,2007-12-23 08:00,2007-12-30 17:00,,,,,PT_Normal,,,,,wUbRx8HluE2MD2rliSRzZw,,,,N,204,0
166,82065,829,10597,913,1,100,N,N,N,CP_Drtn,TT_Task,DT_FixedDUR2,RV_OK,TK_Complete,3002L68002,Power layout 2L-Shop drawing,2296,0,0,0,204,0,204,64,,,0,,2007-12-23 08:00,2007-12-30 17:00,2008-10-02 08:00,2008-10-01 17:00,,2008-10-02 08:00,2008-10-01 17:00,,,2007-12-23 08:00,2007-12-30 17:00,,,,,PT_Normal,,,,,1qstZFOi1UC4jSg+OOHLHA,,,,N,204,0
167,82066,829,10589,913,1,100,N,N,N,CP_Drtn,TT_Task,DT_FixedDUR2,RV_OK,TK_Complete,3002L68010,Lighting layout 2L-Shop drawing,2295,0,0,0,344,0,344,64,,,0,,2007-12-15 08:00,2007-12-22 17:00,2008-10-02 08:00,2008-10-01 17:00,,2008-10-02 08:00,2008-10-01 17:00,,,2007-12-15 08:00,2007-12-22 17:00,,,,,PT_Normal,,,,,gTMESIZcGkeeRvszVvRyuQ,,,,N,344,0
168,82067,829,10589,913,1,100,N,N,N,CP_Drtn,TT_Task,DT_FixedDUR2,RV_OK,TK_Complete,3002L68012,Power layout 2L-Shop drawing,2295,0,0,0,344,0,344,64,,,0,,2007-12-15 08:00,2007-12-22 17:00,2008-10-02 08:00,2008-10-01 17:00,,2008-10-02 08:00,2008-10-01 17:00,,,2007-12-15 08:00,2007-12-22 17:00,,,,,PT_Normal,,,,,XX0csZZGJE2FJiL+COks9Q,,,,N,344,0
169,82068,829,10599,913,1,100,N,N,N,CP_Drtn,TT_Task,DT_FixedDUR2,RV_OK,TK_Complete,3002L70000,Emergency Lighting 2L-Shop drawing,2296,0,0,0,204,0,204,64,,,0,,2007-12-23 08:00,2007-12-30 17:00,2008-10-02 08:00,2008-10-01 17:00,,2008-10-02 08:00,2008-10-01 17:00,,,2007-12-23 08:00,2007-12-30 17:00,,,,,PT_Normal,,,,,ipFv/r2lHUituasqfPUwmw,,,,N,204,0
170,82069,829,10591,913,1,100,N,N,N,CP_Drtn,TT_Task,DT_FixedDUR2,RV_OK,TK_Complete,3002L70010,Emergency Lighting 2L-Shop drawing,2295,0,0,0,344,0,344,64,,,0,,2007-12-15 08:00,2007-12-22 17:00,2008-10-02 08:00,2008-10-01 17:00,,2008-10-02 08:00,2008-10-01 17:00,,,2007-12-15 08:00,2007-12-22 17:00,,,,,PT_Normal,,,,,AJL12l4lek2Ei/hQGbB1rQ,,,,N,344,0
171,82070,829,10584,913,1,100,N,N,N,CP_Drtn,TT_Task,DT_FixedDUR2,RV_OK,TK_Complete,3002L72002,Door phone Second Floor-Shop drawing,2296,0,0,0,204,0,204,64,,,0,,2007-12-23 08:00,2007-12-30 17:00,2008-10-02 08:00,2008-10-01 17:00,,2008-10-02 08:00,2008-10-01 17:00,,,2007-12-23 08:00,2007-12-30 17:00,,,,,PT_Normal,,,,,r0B2y51qKESbLEjxWQsjPg,,,,N,204,0
172,82071,829,10592,913,1,100,N,N,N,CP_Drtn,TT_Task,DT_FixedDUR2,RV_OK,TK_Complete,3002L72012,Door phone Second Floor-Shop drawing,2295,0,0,0,344,0,344,64,,,0,,2007-12-15 08:00,2007-12-22 17:00,2008-10-02 08:00,2008-10-01 17:00,,2008-10-02 08:00,2008-10-01 17:00,,,2007-12-15 08:00,2007-12-22 17:00,,,,,PT_Normal,,,,,UX0UdVVyA0aet1k1yb1EIg,,,,N,344,0
173,82072,829,10602,913,1,100,N,N,N,CP_Drtn,TT_Task,DT_FixedDUR2,RV_OK,TK_Complete,3002L74000,Fire Alarm 2L-Shop drawing,2296,0,0,0,204,0,204,64,,,0,,2007-12-23 08:00,2007-12-30 17:00,2008-10-02 08:00,2008-10-01 17:00,,2008-10-02 08:00,2008-10-01 17:00,,,2007-12-23 08:00,2007-12-30 17:00,,,,,PT_Normal,,,,,zaaez3gN9USM6Da7bLeUYw,,,,N,204,0
174,82073,829,10603,913,1,100,N,N,N,CP_Drtn,TT_Task,DT_FixedDUR2,RV_OK,TK_Complete,3002L74002,Public Adress 2L-Shop drawing,2296,0,0,0,204,0,204,64,,,0,,2007-12-23 08:00,2007-12-30 17:00,2008-10-02 08:00,2008-10-01 17:00,,2008-10-02 08:00,2008-10-01 17:00,,,2007-12-23 08:00,2007-12-30 17:00,,,,,PT_Normal,,,,,0Y6qM/L17Eud28876Va6cg,,,,N,204,0
175,82074,829,10593,913,1,100,N,N,N,CP_Drtn,TT_Task,DT_FixedDUR2,RV_OK,TK_Complete,3002L74010,Fire Alarm 2L-Shop drawing,2295,0,0,0,344,0,344,64,,,0,,2007-12-15 08:00,2007-12-22 17:00,2008-10-02 08:00,2008-10-01 17:00,,2008-10-02 08:00,2008-10-01 17:00,,,2007-12-15 08:00,2007-12-22 17:00,,,,,PT_Normal,,,,,4DpXnHcfRkq4vSmCYOQ8lA,,,,N,344,0
176,82075,829,10583,913,1,100,N,N,N,CP_Drtn,TT_Task,DT_FixedDUR2,RV_OK,TK_Complete,3002L74012,Public Adress 2L-Shop drawing,2295,0,0,0,344,0,344,64,,,0,,2007-12-15 08:00,2007-12-22 17:00,2008-10-02 08:00,2008-10-01 17:00,,2008-10-02 08:00,2008-10-01 17:00,,,2007-12-15 08:00,2007-12-22 17:00,,,,,PT_Normal,,,,,qrpCxmnwfECdbQQJ8x/n3w,,,,N,344,0
177,82076,829,10604,913,1,100,N,N,N,CP_Drtn,TT_Task,DT_FixedDUR2,RV_OK,TK_Complete,3002L76000,Tel & Data 2L-Shop drawing,2296,0,0,0,204,0,204,64,,,0,,2007-12-23 08:00,2007-12-30 17:00,2008-10-02 08:00,2008-10-01 17:00,,2008-10-02 08:00,2008-10-01 17:00,,,2007-12-23 08:00,2007-12-30 17:00,,,,,PT_Normal,,,,,tytNHMHgB0K0sUmQ/FecmQ,,,,N,204,0
178,82077,829,10595,913,1,100,N,N,N,CP_Drtn,TT_Task,DT_FixedDUR2,RV_OK,TK_Complete,3002L76010,Tel & Data 2L-Shop drawing,2295,0,0,0,344,0,344,64,,,0,,2007-12-15 08:00,2007-12-22 17:00,2008-10-02 08:00,2008-10-01 17:00,,2008-10-02 08:00,2008-10-01 17:00,,,2007-12-15 08:00,2007-12-22 17:00,,,,,PT_Normal,,,,,xtCDrhc9uEqOtI3VBgWPpA,,,,N,344,0
179,82078,829,10605,913,1,100,N,N,N,CP_Drtn,TT_Task,DT_FixedDUR2,RV_OK,TK_Complete,3002U52000,A/C layouts 2U-Shop drawing,2296,16,0,0,204,0,204,64,,,0,,2007-12-23 08:00,2007-12-30 17:00,2008-10-04 08:00,2008-10-03 17:00,,2008-10-02 08:00,2008-10-01 17:00,,,2007-12-23 08:00,2007-12-30 17:00,,,,,PT_Normal,,,,,B6fmElBQrUyufBPGEJ4zrg,,,,N,204,0
180,82079,829,10612,913,1,100,N,N,N,CP_Drtn,TT_Task,DT_FixedDUR2,RV_OK,TK_Complete,3002U52010,A/C layouts 2U-Shop drawing,2295,16,0,0,344,0,344,64,,,0,,2007-12-15 08:00,2007-12-22 17:00,2008-10-04 08:00,2008-10-03 17:00,,2008-10-02 08:00,2008-10-01 17:00,,,2007-12-15 08:00,2007-12-22 17:00,,,,,PT_Normal,,,,,hK2zIy/48Em4yb08I7HqNw,,,,N,344,0
181,82080,829,10587,913,1,100,N,N,N,CP_Drtn,TT_Task,DT_FixedDUR2,RV_OK,TK_Complete,3002U54000,Plumbing layouts 2U-Shop drawing,2296,16,0,0,204,0,204,64,,,0,,2007-12-23 08:00,2007-12-30 17:00,2008-10-04 08:00,2008-10-03 17:00,,2008-10-02 08:00,2008-10-01 17:00,,,2007-12-23 08:00,2007-12-30 17:00,,,,,PT_Normal,,,,,iVIh1FvTnEuabj/Ev0jzog,,,,N,204,0
182,82081,829,10585,913,1,100,N,N,N,CP_Drtn,TT_Task,DT_FixedDUR2,RV_OK,TK_Complete,3002U54010,Plumbing layouts 2U-Shop drawing,2295,16,0,0,344,0,344,64,,,0,,2007-12-15 08:00,2007-12-22 17:00,2008-10-04 08:00,2008-10-03 17:00,,2008-10-02 08:00,2008-10-01 17:00,,,2007-12-15 08:00,2007-12-22 17:00,,,,,PT_Normal,,,,,5MBhkE8QvUuyHxQopWyxVw,,,,N,344,0
183,82082,829,10588,913,1,100,N,N,N,CP_Drtn,TT_Task,DT_FixedDUR2,RV_OK,TK_Complete,3002U56000,Drainage system layouts 2U-Shop drawing,2296,16,0,0,204,0,204,64,,,0,,2007-12-23 08:00,2007-12-30 17:00,2008-10-04 08:00,2008-10-03 17:00,,2008-10-02 08:00,2008-10-01 17:00,,,2007-12-23 08:00,2007-12-30 17:00,,,,,PT_Normal,,,,,5TeMyW6TKkisv9TkbAbjUA,,,,N,204,0
184,82083,829,10586,913,1,100,N,N,N,CP_Drtn,TT_Task,DT_FixedDUR2,RV_OK,TK_Complete,3002U56010,Drainage system layouts 2U-Shop drawing,2295,16,0,0,344,0,344,64,,,0,,2007-12-15 08:00,2007-12-22 17:00,2008-10-04 08:00,2008-10-03 17:00,,2008-10-02 08:00,2008-10-01 17:00,,,2007-12-15 08:00,2007-12-22 17:00,,,,,PT_Normal,,,,,Hb4Pbi3fMkGrkhG/TJfRhw,,,,N,344,0
185,82084,829,10608,913,1,100,N,N,N,CP_Drtn,TT_Task,DT_FixedDUR2,RV_OK,TK_Complete,3002U58000,Fire fighting layouts 2U-Shop drawing,2296,16,0,0,204,0,204,64,,,0,,2007-12-23 08:00,2007-12-30 17:00,2008-10-04 08:00,2008-10-03 17:00,,2008-10-02 08:00,2008-10-01 17:00,,,2007-12-23 08:00,2007-12-30 17:00,,,,,PT_Normal,,,,,QVfzG4atjE+tSQDEmWRb7w,,,,N,204,0
186,82085,829,10611,913,1,100,N,N,N,CP_Drtn,TT_Task,DT_FixedDUR2,RV_OK,TK_Complete,3002U58010,Fire fighting layouts 2U-Shop drawing,2295,16,0,0,344,0,344,64,,,0,,2007-12-15 08:00,2007-12-22 17:00,2008-10-04 08:00,2008-10-03 17:00,,2008-10-02 08:00,2008-10-01 17:00,,,2007-12-15 08:00,2007-12-22 17:00,,,,,PT_Normal,,,,,sHrFP0oxMEaFFYJUExxPfQ,,,,N,344,0
187,82086,829,10597,913,1,100,N,N,N,CP_Drtn,TT_Task,DT_FixedDUR2,RV_OK,TK_Complete,3002U68000,Lighting layout 2U-Shop drawing,2296,16,0,0,204,0,204,64,,,0,,2007-12-23 08:00,2007-12-30 17:00,2008-10-04 08:00,2008-10-03 17:00,,2008-10-02 08:00,2008-10-01 17:00,,,2007-12-23 08:00,2007-12-30 17:00,,,,,PT_Normal,,,,,w1aUf8vu1k2eFcBU/HArqQ,,,,N,204,0
188,82087,829,10597,913,1,100,N,N,N,CP_Drtn,TT_Task,DT_FixedDUR2,RV_OK,TK_Complete,3002U68002,Power layout 2U-Shop drawing,2296,16,0,0,204,0,204,64,,,0,,2007-12-23 08:00,2007-12-30 17:00,2008-10-04 08:00,2008-10-03 17:00,,2008-10-02 08:00,2008-10-01 17:00,,,2007-12-23 08:00,2007-12-30 17:00,,,,,PT_Normal,,,,,9AV0p0mLzEy/IZwAcLiUEQ,,,,N,204,0
189,82088,829,10589,913,1,100,N,N,N,CP_Drtn,TT_Task,DT_FixedDUR2,RV_OK,TK_Complete,3002U68010,Lighting layout 2U-Shop drawing,2295,16,0,0,344,0,344,64,,,0,,2007-12-15 08:00,2007-12-22 17:00,2008-10-04 08:00,2008-10-03 17:00,,2008-10-02 08:00,2008-10-01 17:00,,,2007-12-15 08:00,2007-12-22 17:00,,,,,PT_Normal,,,,,cIA2leoT9EOEkj4ymjDmlg,,,,N,344,0
190,82089,829,10589,913,1,100,N,N,N,CP_Drtn,TT_Task,DT_FixedDUR2,RV_OK,TK_Complete,3002U68012,Power layout 2U-Shop drawing,2295,16,0,0,344,0,344,64,,,0,,2007-12-15 08:00,2007-12-22 17:00,2008-10-04 08:00,2008-10-03 17:00,,2008-10-02 08:00,2008-10-01 17:00,,,2007-12-15 08:00,2007-12-22 17:00,,,,,PT_Normal,,,,,9PTxx3arkUGLgwEdnFfVBw,,,,N,344,0
191,82090,829,10599,913,1,100,N,N,N,CP_Drtn,TT_Task,DT_FixedDUR2,RV_OK,TK_Complete,3002U70000,Emergency Lighting 2U-Shop drawing,2296,16,0,0,204,0,204,64,,,0,,2007-12-23 08:00,2007-12-30 17:00,2008-10-04 08:00,2008-10-03 17:00,,2008-10-02 08:00,2008-10-01 17:00,,,2007-12-23 08:00,2007-12-30 17:00,,,,,PT_Normal,,,,,8YK2JuVkEUSNZydkMw2EjA,,,,N,204,0
192,82091,829,10591,913,1,100,N,N,N,CP_Drtn,TT_Task,DT_FixedDUR2,RV_OK,TK_Complete,3002U70010,Emergency Lighting 2U-Shop drawing,2295,16,0,0,344,0,344,64,,,0,,2007-12-15 08:00,2007-12-22 17:00,2008-10-04 08:00,2008-10-03 17:00,,2008-10-02 08:00,2008-10-01 17:00,,,2007-12-15 08:00,2007-12-22 17:00,,,,,PT_Normal,,,,,0ULS0+yGM0Szrmb1Sev0eg,,,,N,344,0
193,82092,829,10602,913,1,100,N,N,N,CP_Drtn,TT_Task,DT_FixedDUR2,RV_OK,TK_Complete,3002U74000,Fire Alarm 2U-Shop drawing,2296,16,0,0,204,0,204,64,,,0,,2007-12-23 08:00,2007-12-30 17:00,2008-10-04 08:00,2008-10-03 17:00,,2008-10-02 08:00,2008-10-01 17:00,,,2007-12-23 08:00,2007-12-30 17:00,,,,,PT_Normal,,,,,DJ/fJEJYoUSe8gNQKeJ5wQ,,,,N,204,0
194,82093,829,10593,913,1,100,N,N,N,CP_Drtn,TT_Task,DT_FixedDUR2,RV_OK,TK_Complete,3002U74010,Fire Alarm 2U-Shop drawing,2295,16,0,0,344,0,344,64,,,0,,2007-12-15 08:00,2007-12-22 17:00,2008-10-04 08:00,2008-10-03 17:00,,2008-10-02 08:00,2008-10-01 17:00,,,2007-12-15 08:00,2007-12-22 17:00,,,,,PT_Normal,,,,,hZqIH7fnTUeNTwgDt+XGPA,,,,N,344,0
195,82094,829,10604,913,1,100,N,N,N,CP_Drtn,TT_Task,DT_FixedDUR2,RV_OK,TK_Complete,3002U76000,Tel & Data 2U-Shop drawing,2296,16,0,0,204,0,204,64,,,0,,2007-12-23 08:00,2007-12-30 17:00,2008-10-04 08:00,2008-10-03 17:00,,2008-10-02 08:00,2008-10-01 17:00,,,2007-12-23 08:00,2007-12-30 17:00,,,,,PT_Normal,,,,,GUun396DWESMc72tt5H/Pg,,,,N,204,0
196,82095,829,10595,913,1,100,N,N,N,CP_Drtn,TT_Task,DT_FixedDUR2,RV_OK,TK_Complete,3002U76010,Tel & Data 2U-Shop drawing,2295,16,0,0,344,0,344,64,,,0,,2007-12-15 08:00,2007-12-22 17:00,2008-10-04 08:00,2008-10-03 17:00,,2008-10-02 08:00,2008-10-01 17:00,,,2007-12-15 08:00,2007-12-22 17:00,,,,,PT_Normal,,,,,jsSqr1svqEyJCWdZwSshjA,,,,N,344,0
197,82096,829,10605,913,1,100,N,N,N,CP_Drtn,TT_Task,DT_FixedDUR2,RV_OK,TK_Complete,300BM52000,A/C layouts BM-Shop drawing,2296,0,0,0,204,0,204,64,,,0,,2007-12-23 08:00,2007-12-30 17:00,2008-10-02 08:00,2008-10-01 17:00,,2008-10-02 08:00,2008-10-01 17:00,,,2007-12-23 08:00,2007-12-30 17:00,,,,,PT_Normal,,,,,eKzHRdvGyUCjk2w77nf2vg,,,,N,204,0
198,82097,829,10612,913,1,100,N,N,N,CP_Drtn,TT_Task,DT_FixedDUR2,RV_OK,TK_Complete,300BM52010,A/C layouts BM-Shop drawing,2295,0,0,0,344,0,344,64,,,0,,2007-12-15 08:00,2007-12-22 17:00,2008-10-02 08:00,2008-10-01 17:00,,2008-10-02 08:00,2008-10-01 17:00,,,2007-12-15 08:00,2007-12-22 17:00,,,,,PT_Normal,,,,,cPIwkuN6+U+5qTHWSJEcsw,,,,N,344,0
199,82098,829,10587,913,1,100,N,N,N,CP_Drtn,TT_Task,DT_FixedDUR2,RV_OK,TK_Complete,300BM54000,Plumbing layouts BM-Shop drawing,2296,0,0,0,204,0,204,64,,,0,,2007-12-23 08:00,2007-12-30 17:00,2008-10-02 08:00,2008-10-01 17:00,,2008-10-02 08:00,2008-10-01 17:00,,,2007-12-23 08:00,2007-12-30 17:00,,,,,PT_Normal,,,,,+4e2IxTj406+q9nJsxv7Pg,,,,N,204,0
200,82099,829,10585,913,1,100,N,N,N,CP_Drtn,TT_Task,DT_FixedDUR2,RV_OK,TK_Complete,300BM54010,Plumbing layouts BM-Shop drawing,2295,0,0,0,344,0,344,64,,,0,,2007-12-15 08:00,2007-12-22 17:00,2008-10-02 08:00,2008-10-01 17:00,,2008-10-02 08:00,2008-10-01 17:00,,,2007-12-15 08:00,2007-12-22 17:00,,,,,PT_Normal,,,,,WsQknuJqz0+vPnBlZYaVAA,,,,N,344,0
201,82100,829,10588,913,1,100,N,N,N,CP_Drtn,TT_Task,DT_FixedDUR2,RV_OK,TK_Complete,300BM56000,Drainage system layouts BM-Shop drawing,2296,0,0,0,204,0,204,64,,,0,,2007-12-23 08:00,2007-12-30 17:00,2008-10-02 08:00,2008-10-01 17:00,,2008-10-02 08:00,2008-10-01 17:00,,,2007-12-23 08:00,2007-12-30 17:00,,,,,PT_Normal,,,,,u0OHACNIUUaXGJG3g4xxMg,,,,N,204,0
202,82101,829,10586,913,1,100,N,N,N,CP_Drtn,TT_Task,DT_FixedDUR2,RV_OK,TK_Complete,300BM56010,Drainage system layouts BM-Shop drawing,2295,0,0,0,344,0,344,64,,,0,,2007-12-15 08:00,2007-12-22 17:00,2008-10-02 08:00,2008-10-01 17:00,,2008-10-02 08:00,2008-10-01 17:00,,,2007-12-15 08:00,2007-12-22 17:00,,,,,PT_Normal,,,,,+rcYtrrb8U2Jt+jtuwuRWw,,,,N,344,0
203,82102,829,10608,913,1,100,N,N,N,CP_Drtn,TT_Task,DT_FixedDUR2,RV_OK,TK_Complete,300BM58000,Fire fighting layouts BM-Shop drawing,2296,0,0,0,204,0,204,64,,,0,,2007-12-23 08:00,2007-12-30 17:00,2008-10-02 08:00,2008-10-01 17:00,,2008-10-02 08:00,2008-10-01 17:00,,,2007-12-23 08:00,2007-12-30 17:00,,,,,PT_Normal,,,,,0Suoe5DPKEypQI5hUTd6/w,,,,N,204,0
204,82103,829,10611,913,1,100,N,N,N,CP_Drtn,TT_Task,DT_FixedDUR2,RV_OK,TK_Complete,300BM58010,Fire fighting layouts BM-Shop drawing,2295,0,0,0,344,0,344,64,,,0,,2007-12-15 08:00,2007-12-22 17:00,2008-10-02 08:00,2008-10-01 17:00,,2008-10-02 08:00,2008-10-01 17:00,,,2007-12-15 08:00,2007-12-22 17:00,,,,,PT_Normal,,,,,8yGkWEm5ikeUUHwJTTqezw,,,,N,344,0
205,82104,829,10597,913,1,100,N,N,N,CP_Drtn,TT_Task,DT_FixedDUR2,RV_OK,TK_Complete,300BM68000,Lighting layout BM-Shop drawing,2296,0,0,0,204,0,204,64,,,0,,2007-12-23 08:00,2007-12-30 17:00,2008-10-02 08:00,2008-10-01 17:00,,2008-10-02 08:00,2008-10-01 17:00,,,2007-12-23 08:00,2007-12-30 17:00,,,,,PT_Normal,,,,,HlB2f6LDHk2oklCkxyqtRQ,,,,N,204,0
206,82105,829,10597,913,1,100,N,N,N,CP_Drtn,TT_Task,DT_FixedDUR2,RV_OK,TK_Complete,300BM68002,Power layout BM-Shop drawing,2296,0,0,0,204,0,204,64,,,0,,2007-12-23 08:00,2007-12-30 17:00,2008-10-02 08:00,2008-10-01 17:00,,2008-10-02 08:00,2008-10-01 17:00,,,2007-12-23 08:00,2007-12-30 17:00,,,,,PT_Normal,,,,,4145X1nV10KzZSi046kfsw,,,,N,204,0
207,82106,829,10598,913,1,100,N,N,N,CP_Drtn,TT_Task,DT_FixedDUR2,RV_OK,TK_Complete,300BM68004,Earthing Layout BM -Shop drawing,2296,0,0,0,204,0,204,64,,,0,,2007-12-23 08:00,2007-12-30 17:00,2008-10-02 08:00,2008-10-01 17:00,,2008-10-02 08:00,2008-10-01 17:00,,,2007-12-23 08:00,2007-12-30 17:00,,,,,PT_Normal,,,,,hwfIFdi560KbC18n87vccg,,,,N,204,0
208,82107,829,10598,913,1,100,N,N,N,CP_Drtn,TT_Task,DT_FixedDUR2,RV_OK,TK_Complete,300BM68005,Lightning Layout BM -Shop drawing,2296,0,0,0,204,0,204,64,,,0,,2007-12-23 08:00,2007-12-30 17:00,2008-10-02 08:00,2008-10-01 17:00,,2008-10-02 08:00,2008-10-01 17:00,,,2007-12-23 08:00,2007-12-30 17:00,,,,,PT_Normal,,,,,MsrQPWh+606TYNPtC+T5Uw,,,,N,204,0
209,82108,829,10589,913,1,100,N,N,N,CP_Drtn,TT_Task,DT_FixedDUR2,RV_OK,TK_Complete,300BM68010,Lighting layout BM-Shop drawing,2295,0,0,0,344,0,344,64,,,0,,2007-12-15 08:00,2007-12-22 17:00,2008-10-02 08:00,2008-10-01 17:00,,2008-10-02 08:00,2008-10-01 17:00,,,2007-12-15 08:00,2007-12-22 17:00,,,,,PT_Normal,,,,,wn84XQ0BVUqcsfU48Pzsgg,,,,N,344,0
210,82109,829,10589,913,1,100,N,N,N,CP_Drtn,TT_Task,DT_FixedDUR2,RV_OK,TK_Complete,300BM68012,Power layout BM-Shop drawing,2295,0,0,0,344,0,344,64,,,0,,2007-12-15 08:00,2007-12-22 17:00,2008-10-02 08:00,2008-10-01 17:00,,2008-10-02 08:00,2008-10-01 17:00,,,2007-12-15 08:00,2007-12-22 17:00,,,,,PT_Normal,,,,,NmwQrbeemkK6MkjdhrsbpQ,,,,N,344,0
211,82110,829,10590,913,1,100,N,N,N,CP_Drtn,TT_Task,DT_FixedDUR2,RV_OK,TK_Complete,300BM68014,Earthing Layout BM -Shop drawing,2295,0,0,0,344,0,344,64,,,0,,2007-12-15 08:00,2007-12-22 17:00,2008-10-02 08:00,2008-10-01 17:00,,2008-10-02 08:00,2008-10-01 17:00,,,2007-12-15 08:00,2007-12-22 17:00,,,,,PT_Normal,,,,,XvDQOVeYiUSiZ0xT6g4ytw,,,,N,344,0
212,82111,829,10590,913,1,100,N,N,N,CP_Drtn,TT_Task,DT_FixedDUR2,RV_OK,TK_Complete,300BM68015,Lightning Layout BM -Shop drawing,2295,0,0,0,344,0,344,64,,,0,,2007-12-15 08:00,2007-12-22 17:00,2008-10-02 08:00,2008-10-01 17:00,,2008-10-02 08:00,2008-10-01 17:00,,,2007-12-15 08:00,2007-12-22 17:00,,,,,PT_Normal,,,,,zKcyMHBLcEanEbQxH/bKNw,,,,N,344,0
213,82112,829,10599,913,1,100,N,N,N,CP_Drtn,TT_Task,DT_FixedDUR2,RV_OK,TK_Complete,300BM70000,Emergency Lighting BM-Shop drawing,2296,0,0,0,204,0,204,64,,,0,,2007-12-23 08:00,2007-12-30 17:00,2008-10-02 08:00,2008-10-01 17:00,,2008-10-02 08:00,2008-10-01 17:00,,,2007-12-23 08:00,2007-12-30 17:00,,,,,PT_Normal,,,,,I54tbY6XkU2WtNq76Zma4A,,,,N,204,0
214,82113,829,10591,913,1,100,N,N,N,CP_Drtn,TT_Task,DT_FixedDUR2,RV_OK,TK_Complete,300BM70010,Emergency Lighting BM-Shop drawing,2295,0,0,0,344,0,344,64,,,0,,2007-12-15 08:00,2007-12-22 17:00,2008-10-02 08:00,2008-10-01 17:00,,2008-10-02 08:00,2008-10-01 17:00,,,2007-12-15 08:00,2007-12-22 17:00,,,,,PT_Normal,,,,,ahDdVHXSNkiy6ovXcaV3pA,,,,N,344,0
215,82114,829,10600,913,1,100,N,N,N,CP_Drtn,TT_Task,DT_FixedDUR2,RV_OK,TK_Complete,300BM72000,CCTV BM-Shop drawing,2296,0,0,0,204,0,204,64,,,0,,2007-12-23 08:00,2007-12-30 17:00,2008-10-02 08:00,2008-10-01 17:00,,2008-10-02 08:00,2008-10-01 17:00,,,2007-12-23 08:00,2007-12-30 17:00,,,,,PT_Normal,,,,,ZKwEL/MaX0CAn7Qivcrt+A,,,,N,204,0
216,82115,829,10596,913,1,100,N,N,N,CP_Drtn,TT_Task,DT_FixedDUR2,RV_OK,TK_Complete,300BM72010,CCTV BM-Shop drawing,2295,0,0,0,344,0,344,64,,,0,,2007-12-15 08:00,2007-12-22 17:00,2008-10-02 08:00,2008-10-01 17:00,,2008-10-02 08:00,2008-10-01 17:00,,,2007-12-15 08:00,2007-12-22 17:00,,,,,PT_Normal,,,,,fuIhGxgPdkSi+kYvyCCTOg,,,,N,344,0
217,82116,829,10602,913,1,100,N,N,N,CP_Drtn,TT_Task,DT_FixedDUR2,RV_OK,TK_Complete,300BM74000,Fire Alarm BM-Shop drawing,2296,0,0,0,204,0,204,64,,,0,,2007-12-23 08:00,2007-12-30 17:00,2008-10-02 08:00,2008-10-01 17:00,,2008-10-02 08:00,2008-10-01 17:00,,,2007-12-23 08:00,2007-12-30 17:00,,,,,PT_Normal,,,,,UqRlamT+dEyMjFwEa1sbQA,,,,N,204,0
218,82117,829,10593,913,1,100,N,N,N,CP_Drtn,TT_Task,DT_FixedDUR2,RV_OK,TK_Complete,300BM74010,Fire Alarm BM-Shop drawing,2295,0,0,0,344,0,344,64,,,0,,2007-12-15 08:00,2007-12-22 17:00,2008-10-02 08:00,2008-10-01 17:00,,2008-10-02 08:00,2008-10-01 17:00,,,2007-12-15 08:00,2007-12-22 17:00,,,,,PT_Normal,,,,,VL2OiI/nV0qFVpstnUwv6A,,,,N,344,0
219,82118,829,10604,913,1,100,N,N,N,CP_Drtn,TT_Task,DT_FixedDUR2,RV_OK,TK_Complete,300BM76000,Tel & Data BM-Shop drawing,2296,0,0,0,204,0,204,64,,,0,,2007-12-23 08:00,2007-12-30 17:00,2008-10-02 08:00,2008-10-01 17:00,,2008-10-02 08:00,2008-10-01 17:00,,,2007-12-23 08:00,2007-12-30 17:00,,,,,PT_Normal,,,,,TnsF2YGcV06y5Uz11qemKg,,,,N,204,0
220,82119,829,10595,913,1,100,N,N,N,CP_Drtn,TT_Task,DT_FixedDUR2,RV_OK,TK_Complete,300BM76010,Tel & Data BM-Shop drawing,2295,0,0,0,344,0,344,64,,,0,,2007-12-15 08:00,2007-12-22 17:00,2008-10-02 08:00,2008-10-01 17:00,,2008-10-02 08:00,2008-10-01 17:00,,,2007-12-15 08:00,2007-12-22 17:00,,,,,PT_Normal,,,,,FVReGIt7jU+Ttkk7PnDuyQ,,,,N,344,0
221,82120,829,10605,913,1,100,N,N,N,CP_Drtn,TT_Task,DT_FixedDUR2,RV_OK,TK_Complete,300GL52000,A/C layouts GL-Shop drawing,2296,0,0,0,204,0,204,64,,,0,,2007-12-23 08:00,2007-12-30 17:00,2008-10-02 08:00,2008-10-01 17:00,,2008-10-02 08:00,2008-10-01 17:00,,,2007-12-23 08:00,2007-12-30 17:00,,,,,PT_Normal,,,,,0FdBE94SeUmbu3OGohroaQ,,,,N,204,0
222,82121,829,10612,913,1,100,N,N,N,CP_Drtn,TT_Task,DT_FixedDUR2,RV_OK,TK_Complete,300GL52010,A/C layouts GL-Shop drawing,2295,0,0,0,344,0,344,64,,,0,,2007-12-15 08:00,2007-12-22 17:00,2008-10-02 08:00,2008-10-01 17:00,,2008-10-02 08:00,2008-10-01 17:00,,,2007-12-15 08:00,2007-12-22 17:00,,,,,PT_Normal,,,,,k/twSfB5eEO9iZOLjz9XHA,,,,N,344,0
223,82122,829,10587,913,1,100,N,N,N,CP_Drtn,TT_Task,DT_FixedDUR2,RV_OK,TK_Complete,300GL54000,Plumbing layouts GL-Shop drawing,2296,0,0,0,204,0,204,64,,,0,,2007-12-23 08:00,2007-12-30 17:00,2008-10-02 08:00,2008-10-01 17:00,,2008-10-02 08:00,2008-10-01 17:00,,,2007-12-23 08:00,2007-12-30 17:00,,,,,PT_Normal,,,,,Ij/kn9Dd00iegp6rqAvggQ,,,,N,204,0
224,82123,829,10585,913,1,100,N,N,N,CP_Drtn,TT_Task,DT_FixedDUR2,RV_OK,TK_Complete,300GL54010,Plumbing layouts GL-Shop drawing,2295,0,0,0,344,0,344,64,,,0,,2007-12-15 08:00,2007-12-22 17:00,2008-10-02 08:00,2008-10-01 17:00,,2008-10-02 08:00,2008-10-01 17:00,,,2007-12-15 08:00,2007-12-22 17:00,,,,,PT_Normal,,,,,Oh71QzBc4UCFzqdWOiH0xg,,,,N,344,0
225,82124,829,10588,913,1,100,N,N,N,CP_Drtn,TT_Task,DT_FixedDUR2,RV_OK,TK_Complete,300GL56000,Drainage system layouts GL-Shop drawing,2296,0,0,0,204,0,204,64,,,0,,2007-12-23 08:00,2007-12-30 17:00,2008-10-02 08:00,2008-10-01 17:00,,2008-10-02 08:00,2008-10-01 17:00,,,2007-12-23 08:00,2007-12-30 17:00,,,,,PT_Normal,,,,,haGBg1ER30qvHaakwOi/yA,,,,N,204,0
226,82125,829,10586,913,1,100,N,N,N,CP_Drtn,TT_Task,DT_FixedDUR2,RV_OK,TK_Complete,300GL56010,Drainage system layouts GL-Shop drawing,2295,0,0,0,344,0,344,64,,,0,,2007-12-15 08:00,2007-12-22 17:00,2008-10-02 08:00,2008-10-01 17:00,,2008-10-02 08:00,2008-10-01 17:00,,,2007-12-15 08:00,2007-12-22 17:00,,,,,PT_Normal,,,,,UYb2x3NTMkGYjtOI0TixJA,,,,N,344,0
227,82126,829,10608,913,1,100,N,N,N,CP_Drtn,TT_Task,DT_FixedDUR2,RV_OK,TK_Complete,300GL58000,Fire fighting layouts GL-Shop drawing,2296,0,0,0,204,0,204,64,,,0,,2007-12-23 08:00,2007-12-30 17:00,2008-10-02 08:00,2008-10-01 17:00,,2008-10-02 08:00,2008-10-01 17:00,,,2007-12-23 08:00,2007-12-30 17:00,,,,,PT_Normal,,,,,rqVFj1wAi0Wa9cWZ5TBMgA,,,,N,204,0
228,82127,829,10611,913,1,100,N,N,N,CP_Drtn,TT_Task,DT_FixedDUR2,RV_OK,TK_Complete,300GL58010,Fire fighting layouts GL-Shop drawing,2295,0,0,0,344,0,344,64,,,0,,2007-12-15 08:00,2007-12-22 17:00,2008-10-02 08:00,2008-10-01 17:00,,2008-10-02 08:00,2008-10-01 17:00,,,2007-12-15 08:00,2007-12-22 17:00,,,,,PT_Normal,,,,,nuZ7ym4360CaHhpE4pm1wg,,,,N,344,0
229,82128,829,10597,913,1,100,N,N,N,CP_Drtn,TT_Task,DT_FixedDUR2,RV_OK,TK_Complete,300GL68000,Lighting layout GL-Shop drawing,2296,0,0,0,204,0,204,64,,,0,,2007-12-23 08:00,2007-12-30 17:00,2008-10-02 08:00,2008-10-01 17:00,,2008-10-02 08:00,2008-10-01 17:00,,,2007-12-23 08:00,2007-12-30 17:00,,,,,PT_Normal,,,,,5fHsJOhmf0WYbmVP/PRiSw,,,,N,204,0
230,82129,829,10597,913,1,100,N,N,N,CP_Drtn,TT_Task,DT_FixedDUR2,RV_OK,TK_Complete,300GL68002,Power layout GL-Shop drawing,2296,0,0,0,204,0,204,64,,,0,,2007-12-23 08:00,2007-12-30 17:00,2008-10-02 08:00,2008-10-01 17:00,,2008-10-02 08:00,2008-10-01 17:00,,,2007-12-23 08:00,2007-12-30 17:00,,,,,PT_Normal,,,,,+HGkaF/U902R7qjpPknofQ,,,,N,204,0
231,82130,829,10589,913,1,100,N,N,N,CP_Drtn,TT_Task,DT_FixedDUR2,RV_OK,TK_Complete,300GL68010,Lighting layout GL-Shop drawing,2295,0,0,0,344,0,344,64,,,0,,2007-12-15 08:00,2007-12-22 17:00,2008-10-02 08:00,2008-10-01 17:00,,2008-10-02 08:00,2008-10-01 17:00,,,2007-12-15 08:00,2007-12-22 17:00,,,,,PT_Normal,,,,,GzBwkGT2/EaptLkqi+MOnA,,,,N,344,0
232,82131,829,10589,913,1,100,N,N,N,CP_Drtn,TT_Task,DT_FixedDUR2,RV_OK,TK_Complete,300GL68012,Power layout GL-Shop drawing,2295,0,0,0,344,0,344,64,,,0,,2007-12-15 08:00,2007-12-22 17:00,2008-10-02 08:00,2008-10-01 17:00,,2008-10-02 08:00,2008-10-01 17:00,,,2007-12-15 08:00,2007-12-22 17:00,,,,,PT_Normal,,,,,Y9C2zNBC5UG7hjGJey6s/Q,,,,N,344,0
233,82132,829,10599,913,1,100,N,N,N,CP_Drtn,TT_Task,DT_FixedDUR2,RV_OK,TK_Complete,300GL70000,Emergency Lighting GL-Shop drawing,2296,0,0,0,204,0,204,64,,,0,,2007-12-23 08:00,2007-12-30 17:00,2008-10-02 08:00,2008-10-01 17:00,,2008-10-02 08:00,2008-10-01 17:00,,,2007-12-23 08:00,2007-12-30 17:00,,,,,PT_Normal,,,,,e6mS7y9l8kWKbPKG9FBdcw,,,,N,204,0
234,82133,829,10591,913,1,100,N,N,N,CP_Drtn,TT_Task,DT_FixedDUR2,RV_OK,TK_Complete,300GL70010,Emergency Lighting GL-Shop drawing,2295,0,0,0,344,0,344,64,,,0,,2007-12-15 08:00,2007-12-22 17:00,2008-10-02 08:00,2008-10-01 17:00,,2008-10-02 08:00,2008-10-01 17:00,,,2007-12-15 08:00,2007-12-22 17:00,,,,,PT_Normal,,,,,frwu/l1WZ0CIZPVPTSAKiw,,,,N,344,0
235,82134,829,10600,913,1,100,N,N,N,CP_Drtn,TT_Task,DT_FixedDUR2,RV_OK,TK_Complete,300GL72000,CCTV GL-Shop drawing,2296,0,0,0,204,0,204,64,,,0,,2007-12-23 08:00,2007-12-30 17:00,2008-10-02 08:00,2008-10-01 17:00,,2008-10-02 08:00,2008-10-01 17:00,,,2007-12-23 08:00,2007-12-30 17:00,,,,,PT_Normal,,,,,gmv2HlmJbkO19XyZzcDlZA,,,,N,204,0
236,82135,829,10584,913,1,100,N,N,N,CP_Drtn,TT_Task,DT_FixedDUR2,RV_OK,TK_Complete,300GL72002,Door phone Ground Floor-Shop drawing,2296,0,0,0,204,0,204,64,,,0,,2007-12-23 08:00,2007-12-30 17:00,2008-10-02 08:00,2008-10-01 17:00,,2008-10-02 08:00,2008-10-01 17:00,,,2007-12-23 08:00,2007-12-30 17:00,,,,,PT_Normal,,,,,6FKCm8ae2UqXVEuFqDmuEw,,,,N,204,0
237,82136,829,10596,913,1,100,N,N,N,CP_Drtn,TT_Task,DT_FixedDUR2,RV_OK,TK_Complete,300GL72010,CCTV GL-Shop drawing,2295,0,0,0,344,0,344,64,,,0,,2007-12-15 08:00,2007-12-22 17:00,2008-10-02 08:00,2008-10-01 17:00,,2008-10-02 08:00,2008-10-01 17:00,,,2007-12-15 08:00,2007-12-22 17:00,,,,,PT_Normal,,,,,dUGvpHEs1k6FOu8oKnPBPA,,,,N,344,0
238,82137,829,10592,913,1,100,N,N,N,CP_Drtn,TT_Task,DT_FixedDUR2,RV_OK,TK_Complete,300GL72012,Door phone Ground Floor-Shop drawing,2295,0,0,0,344,0,344,64,,,0,,2007-12-15 08:00,2007-12-22 17:00,2008-10-02 08:00,2008-10-01 17:00,,2008-10-02 08:00,2008-10-01 17:00,,,2007-12-15 08:00,2007-12-22 17:00,,,,,PT_Normal,,,,,s8cwuxpsfk6/+Hz+55fm9w,,,,N,344,0
239,82138,829,10602,913,1,100,N,N,N,CP_Drtn,TT_Task,DT_FixedDUR2,RV_OK,TK_Complete,300GL74000,Fire Alarm GL-Shop drawing,2296,0,0,0,204,0,204,64,,,0,,2007-12-23 08:00,2007-12-30 17:00,2008-10-02 08:00,2008-10-01 17:00,,2008-10-02 08:00,2008-10-01 17:00,,,2007-12-23 08:00,2007-12-30 17:00,,,,,PT_Normal,,,,,0yiwzLUqTkOQk5ierwjJYw,,,,N,204,0
240,82139,829,10603,913,1,100,N,N,N,CP_Drtn,TT_Task,DT_FixedDUR2,RV_OK,TK_Complete,300GL74002,Public Adress GL-Shop drawing,2296,0,0,0,204,0,204,64,,,0,,2007-12-23 08:00,2007-12-30 17:00,2008-10-02 08:00,2008-10-01 17:00,,2008-10-02 08:00,2008-10-01 17:00,,,2007-12-23 08:00,2007-12-30 17:00,,,,,PT_Normal,,,,,0qBuKhfaDkWceXMsoyZYDw,,,,N,204,0
241,82140,829,10593,913,1,100,N,N,N,CP_Drtn,TT_Task,DT_FixedDUR2,RV_OK,TK_Complete,300GL74010,Fire Alarm GL-Shop drawing,2295,0,0,0,344,0,344,64,,,0,,2007-12-15 08:00,2007-12-22 17:00,2008-10-02 08:00,2008-10-01 17:00,,2008-10-02 08:00,2008-10-01 17:00,,,2007-12-15 08:00,2007-12-22 17:00,,,,,PT_Normal,,,,,I5LefVbwVEept0hBvIle4g,,,,N,344,0
242,82141,829,10583,913,1,100,N,N,N,CP_Drtn,TT_Task,DT_FixedDUR2,RV_OK,TK_Complete,300GL74012,Public Adress GL-Shop drawing,2295,0,0,0,344,0,344,64,,,0,,2007-12-15 08:00,2007-12-22 17:00,2008-10-02 08:00,2008-10-01 17:00,,2008-10-02 08:00,2008-10-01 17:00,,,2007-12-15 08:00,2007-12-22 17:00,,,,,PT_Normal,,,,,T4dmRZT2CU+ZZ/FoGYiqpQ,,,,N,344,0
243,82142,829,10604,913,1,100,N,N,N,CP_Drtn,TT_Task,DT_FixedDUR2,RV_OK,TK_Complete,300GL76000,Tel & Data GL-Shop drawing,2296,0,0,0,204,0,204,64,,,0,,2007-12-23 08:00,2007-12-30 17:00,2008-10-02 08:00,2008-10-01 17:00,,2008-10-02 08:00,2008-10-01 17:00,,,2007-12-23 08:00,2007-12-30 17:00,,,,,PT_Normal,,,,,5Qj2HpkjBUaZTZhxAeimPQ,,,,N,204,0
244,82143,829,10595,913,1,100,N,N,N,CP_Drtn,TT_Task,DT_FixedDUR2,RV_OK,TK_Complete,300GL76010,Tel & Data GL-Shop drawing,2295,0,0,0,344,0,344,64,,,0,,2007-12-15 08:00,2007-12-22 17:00,2008-10-02 08:00,2008-10-01 17:00,,2008-10-02 08:00,2008-10-01 17:00,,,2007-12-15 08:00,2007-12-22 17:00,,,,,PT_Normal,,,,,OtTkcuQgoUGapva5AemjGg,,,,N,344,0
245,82144,829,10605,913,1,100,N,N,N,CP_Drtn,TT_Task,DT_FixedDUR2,RV_OK,TK_Complete,300GU52000,A/C layouts GU-Shop drawing,2296,0,0,0,204,0,204,64,,,0,,2007-12-23 08:00,2007-12-30 17:00,2008-10-02 08:00,2008-10-01 17:00,,2008-10-02 08:00,2008-10-01 17:00,,,2007-12-23 08:00,2007-12-30 17:00,,,,,PT_Normal,,,,,V7/4cK2PDEiNUdLLFc6+qA,,,,N,204,0
246,82145,829,10612,913,1,100,N,N,N,CP_Drtn,TT_Task,DT_FixedDUR2,RV_OK,TK_Complete,300GU52010,A/C layouts GU-Shop drawing,2295,0,0,0,344,0,344,64,,,0,,2007-12-15 08:00,2007-12-22 17:00,2008-10-02 08:00,2008-10-01 17:00,,2008-10-02 08:00,2008-10-01 17:00,,,2007-12-15 08:00,2007-12-22 17:00,,,,,PT_Normal,,,,,FMvRkEJaNE+lP565kBrA5g,,,,N,344,0
247,82146,829,10587,913,1,100,N,N,N,CP_Drtn,TT_Task,DT_FixedDUR2,RV_OK,TK_Complete,300GU54000,Plumbing layouts GU-Shop drawing,2296,0,0,0,204,0,204,64,,,0,,2007-12-23 08:00,2007-12-30 17:00,2008-10-02 08:00,2008-10-01 17:00,,2008-10-02 08:00,2008-10-01 17:00,,,2007-12-23 08:00,2007-12-30 17:00,,,,,PT_Normal,,,,,79XzGnn6o066xT/YVk5SnQ,,,,N,204,0
248,82147,829,10585,913,1,100,N,N,N,CP_Drtn,TT_Task,DT_FixedDUR2,RV_OK,TK_Complete,300GU54010,Plumbing layouts GU-Shop drawing,2295,0,0,0,344,0,344,64,,,0,,2007-12-15 08:00,2007-12-22 17:00,2008-10-02 08:00,2008-10-01 17:00,,2008-10-02 08:00,2008-10-01 17:00,,,2007-12-15 08:00,2007-12-22 17:00,,,,,PT_Normal,,,,,MjgJOnjmPUuuHc5AodpFkw,,,,N,344,0
249,82148,829,10588,913,1,100,N,N,N,CP_Drtn,TT_Task,DT_FixedDUR2,RV_OK,TK_Complete,300GU56000,Drainage system layouts GU-Shop drawing,2296,0,0,0,204,0,204,64,,,0,,2007-12-23 08:00,2007-12-30 17:00,2008-10-02 08:00,2008-10-01 17:00,,2008-10-02 08:00,2008-10-01 17:00,,,2007-12-23 08:00,2007-12-30 17:00,,,,,PT_Normal,,,,,Mnae5KddLUOH9DsmvzCdtA,,,,N,204,0
250,82149,829,10586,913,1,100,N,N,N,CP_Drtn,TT_Task,DT_FixedDUR2,RV_OK,TK_Complete,300GU56010,Drainage system layouts GU-Shop drawing,2295,0,0,0,344,0,344,64,,,0,,2007-12-15 08:00,2007-12-22 17:00,2008-10-02 08:00,2008-10-01 17:00,,2008-10-02 08:00,2008-10-01 17:00,,,2007-12-15 08:00,2007-12-22 17:00,,,,,PT_Normal,,,,,CwMiJMjIWUujheN6lKxhuA,,,,N,344,0
251,82150,829,10608,913,1,100,N,N,N,CP_Drtn,TT_Task,DT_FixedDUR2,RV_OK,TK_Complete,300GU58000,Fire fighting layouts GU-Shop drawing,2296,0,0,0,204,0,204,64,,,0,,2007-12-23 08:00,2007-12-30 17:00,2008-10-02 08:00,2008-10-01 17:00,,2008-10-02 08:00,2008-10-01 17:00,,,2007-12-23 08:00,2007-12-30 17:00,,,,,PT_Normal,,,,,pQo19rHxpE2ZL3lEOuEbrg,,,,N,204,0
252,82151,829,10611,913,1,100,N,N,N,CP_Drtn,TT_Task,DT_FixedDUR2,RV_OK,TK_Complete,300GU58010,Fire fighting layouts GU-Shop drawing,2295,0,0,0,344,0,344,64,,,0,,2007-12-15 08:00,2007-12-22 17:00,2008-10-02 08:00,2008-10-01 17:00,,2008-10-02 08:00,2008-10-01 17:00,,,2007-12-15 08:00,2007-12-22 17:00,,,,,PT_Normal,,,,,Jh14RGSeBk2gvd9ZFxmYqA,,,,N,344,0
253,82152,829,10597,913,1,100,N,N,N,CP_Drtn,TT_Task,DT_FixedDUR2,RV_OK,TK_Complete,300GU68000,Lighting layout GU-Shop drawing,2296,0,0,0,204,0,204,64,,,0,,2007-12-23 08:00,2007-12-30 17:00,2008-10-02 08:00,2008-10-01 17:00,,2008-10-02 08:00,2008-10-01 17:00,,,2007-12-23 08:00,2007-12-30 17:00,,,,,PT_Normal,,,,,yuJvfJDpmEWzCT7AVdqzZg,,,,N,204,0
254,82153,829,10597,913,1,100,N,N,N,CP_Drtn,TT_Task,DT_FixedDUR2,RV_OK,TK_Complete,300GU68002,Power layout GU-Shop drawing,2296,0,0,0,204,0,204,64,,,0,,2007-12-23 08:00,2007-12-30 17:00,2008-10-02 08:00,2008-10-01 17:00,,2008-10-02 08:00,2008-10-01 17:00,,,2007-12-23 08:00,2007-12-30 17:00,,,,,PT_Normal,,,,,hQ8SGgjT8Uy/VmK60sGRZg,,,,N,204,0
255,82154,829,10589,913,1,100,N,N,N,CP_Drtn,TT_Task,DT_FixedDUR2,RV_OK,TK_Complete,300GU68010,Lighting layout GU-Shop drawing,2295,0,0,0,344,0,344,64,,,0,,2007-12-15 08:00,2007-12-22 17:00,2008-10-02 08:00,2008-10-01 17:00,,2008-10-02 08:00,2008-10-01 17:00,,,2007-12-15 08:00,2007-12-22 17:00,,,,,PT_Normal,,,,,iRXnUpFID0ugArFnpPWZdA,,,,N,344,0
256,82155,829,10589,913,1,100,N,N,N,CP_Drtn,TT_Task,DT_FixedDUR2,RV_OK,TK_Complete,300GU68012,Power layout GU-Shop drawing,2295,0,0,0,344,0,344,64,,,0,,2007-12-15 08:00,2007-12-22 17:00,2008-10-02 08:00,2008-10-01 17:00,,2008-10-02 08:00,2008-10-01 17:00,,,2007-12-15 08:00,2007-12-22 17:00,,,,,PT_Normal,,,,,P2eLjQZEgkSNlggDyma4qA,,,,N,344,0
257,82156,829,10599,913,1,100,N,N,N,CP_Drtn,TT_Task,DT_FixedDUR2,RV_OK,TK_Complete,300GU70000,Emergency Lighting GU-Shop drawing,2296,0,0,0,204,0,204,64,,,0,,2007-12-23 08:00,2007-12-30 17:00,2008-10-02 08:00,2008-10-01 17:00,,2008-10-02 08:00,2008-10-01 17:00,,,2007-12-23 08:00,2007-12-30 17:00,,,,,PT_Normal,,,,,zE+VGqojaUOcO+hMI7DcoA,,,,N,204,0
258,82157,829,10591,913,1,100,N,N,N,CP_Drtn,TT_Task,DT_FixedDUR2,RV_OK,TK_Complete,300GU70010,Emergency Lighting GU-Shop drawing,2295,0,0,0,344,0,344,64,,,0,,2007-12-15 08:00,2007-12-22 17:00,2008-10-02 08:00,2008-10-01 17:00,,2008-10-02 08:00,2008-10-01 17:00,,,2007-12-15 08:00,2007-12-22 17:00,,,,,PT_Normal,,,,,oKwrZ2s+8UW8FqWGIHNa7A,,,,N,344,0
259,82158,829,10602,913,1,100,N,N,N,CP_Drtn,TT_Task,DT_FixedDUR2,RV_OK,TK_Complete,300GU74000,Fire Alarm GU-Shop drawing,2296,0,0,0,204,0,204,64,,,0,,2007-12-23 08:00,2007-12-30 17:00,2008-10-02 08:00,2008-10-01 17:00,,2008-10-02 08:00,2008-10-01 17:00,,,2007-12-23 08:00,2007-12-30 17:00,,,,,PT_Normal,,,,,hEcQ8cYl9UGDIf1ZSuML8Q,,,,N,204,0
260,82159,829,10593,913,1,100,N,N,N,CP_Drtn,TT_Task,DT_FixedDUR2,RV_OK,TK_Complete,300GU74010,Fire Alarm GU-Shop drawing,2295,0,0,0,344,0,344,64,,,0,,2007-12-15 08:00,2007-12-22 17:00,2008-10-02 08:00,2008-10-01 17:00,,2008-10-02 08:00,2008-10-01 17:00,,,2007-12-15 08:00,2007-12-22 17:00,,,,,PT_Normal,,,,,LUoijcpSxEG/VgTnw5vo0g,,,,N,344,0
261,82160,829,10604,913,1,100,N,N,N,CP_Drtn,TT_Task,DT_FixedDUR2,RV_OK,TK_Complete,300GU76000,Tel & Data GU-Shop drawing,2296,0,0,0,204,0,204,64,,,0,,2007-12-23 08:00,2007-12-30 17:00,2008-10-02 08:00,2008-10-01 17:00,,2008-10-02 08:00,2008-10-01 17:00,,,2007-12-23 08:00,2007-12-30 17:00,,,,,PT_Normal,,,,,UjrwW+BAVkSC4eeYH6gKng,,,,N,204,0
262,82161,829,10595,913,1,100,N,N,N,CP_Drtn,TT_Task,DT_FixedDUR2,RV_OK,TK_Complete,300GU76010,Tel & Data GU-Shop drawing,2295,0,0,0,344,0,344,64,,,0,,2007-12-15 08:00,2007-12-22 17:00,2008-10-02 08:00,2008-10-01 17:00,,2008-10-02 08:00,2008-10-01 17:00,,,2007-12-15 08:00,2007-12-22 17:00,,,,,PT_Normal,,,,,TFvl3pDSw0WQw5FAuvO9xg,,,,N,344,0
263,82162,829,10587,913,1,100,N,N,N,CP_Drtn,TT_Task,DT_FixedDUR2,RV_OK,TK_Complete,300RF54000,Plumbing layouts RF-Shop drawing,2296,16,0,0,204,0,204,64,,,0,,2007-12-23 08:00,2007-12-30 17:00,2008-10-04 08:00,2008-10-03 17:00,,2008-10-02 08:00,2008-10-01 17:00,,,2007-12-23 08:00,2007-12-30 17:00,,,,,PT_Normal,,,,,qcw+ULfT3kiY2Az8SYR9iA,,,,N,204,0
264,82163,829,10585,913,1,100,N,N,N,CP_Drtn,TT_Task,DT_FixedDUR2,RV_OK,TK_Complete,300RF54010,Plumbing layouts RF-Shop drawing,2295,16,0,0,344,0,344,64,,,0,,2007-12-15 08:00,2007-12-22 17:00,2008-10-04 08:00,2008-10-03 17:00,,2008-10-02 08:00,2008-10-01 17:00,,,2007-12-15 08:00,2007-12-22 17:00,,,,,PT_Normal,,,,,JV8ZHXk2hkS01qdEYVl6/A,,,,N,344,0
265,82164,829,10588,913,1,100,N,N,N,CP_Drtn,TT_Task,DT_FixedDUR2,RV_OK,TK_Complete,300RF56000,Drainage system layouts RF-Shop drawing,2296,16,0,0,204,0,204,64,,,0,,2007-12-23 08:00,2007-12-30 17:00,2008-10-04 08:00,2008-10-03 17:00,,2008-10-02 08:00,2008-10-01 17:00,,,2007-12-23 08:00,2007-12-30 17:00,,,,,PT_Normal,,,,,AJpGAQxYeE62m2MZHkzZZQ,,,,N,204,0
266,82165,829,10586,913,1,100,N,N,N,CP_Drtn,TT_Task,DT_FixedDUR2,RV_OK,TK_Complete,300RF56010,Drainage system layouts RF-Shop drawing,2295,16,0,0,344,0,344,64,,,0,,2007-12-15 08:00,2007-12-22 17:00,2008-10-04 08:00,2008-10-03 17:00,,2008-10-02 08:00,2008-10-01 17:00,,,2007-12-15 08:00,2007-12-22 17:00,,,,,PT_Normal,,,,,14EPjoPfcUWd3KhnIHaRxA,,,,N,344,0
267,82166,829,10608,913,1,100,N,N,N,CP_Drtn,TT_Task,DT_FixedDUR2,RV_OK,TK_Complete,300RF58000,Fire fighting layouts RF-Shop drawing,2296,16,0,0,204,0,204,64,,,0,,2007-12-23 08:00,2007-12-30 17:00,2008-10-04 08:00,2008-10-03 17:00,,2008-10-02 08:00,2008-10-01 17:00,,,2007-12-23 08:00,2007-12-30 17:00,,,,,PT_Normal,,,,,qZzWvuUIXUCJWYeca8F3Lg,,,,N,204,0
268,82167,829,10611,913,1,100,N,N,N,CP_Drtn,TT_Task,DT_FixedDUR2,RV_OK,TK_Complete,300RF58010,Fire fighting layouts RF-Shop drawing,2295,16,0,0,344,0,344,64,,,0,,2007-12-15 08:00,2007-12-22 17:00,2008-10-04 08:00,2008-10-03 17:00,,2008-10-02 08:00,2008-10-01 17:00,,,2007-12-15 08:00,2007-12-22 17:00,,,,,PT_Normal,,,,,NYnHGorWL0qsLNmb64J+PQ,,,,N,344,0
269,82168,829,10597,913,1,100,N,N,N,CP_Drtn,TT_Task,DT_FixedDUR2,RV_OK,TK_Complete,300RF68000,Lighting layout RF-Shop drawing,2296,16,0,0,204,0,204,64,,,0,,2007-12-23 08:00,2007-12-30 17:00,2008-10-04 08:00,2008-10-03 17:00,,2008-10-02 08:00,2008-10-01 17:00,,,2007-12-23 08:00,2007-12-30 17:00,,,,,PT_Normal,,,,,p+h655RNu0uZ1jrzgjyU1w,,,,N,204,0
270,82169,829,10597,913,1,100,N,N,N,CP_Drtn,TT_Task,DT_FixedDUR2,RV_OK,TK_Complete,300RF68002,Power layout RF-Shop drawing,2296,16,0,0,204,0,204,64,,,0,,2007-12-23 08:00,2007-12-30 17:00,2008-10-04 08:00,2008-10-03 17:00,,2008-10-02 08:00,2008-10-01 17:00,,,2007-12-23 08:00,2007-12-30 17:00,,,,,PT_Normal,,,,,TtQg16zQM06mQ7ohiJVNEA,,,,N,204,0
271,82170,829,10598,913,1,100,N,N,N,CP_Drtn,TT_Task,DT_FixedDUR2,RV_OK,TK_Complete,300RF68005,Lightning Layout RF -Shop drawing,2296,16,0,0,204,0,204,64,,,0,,2007-12-23 08:00,2007-12-30 17:00,2008-10-04 08:00,2008-10-03 17:00,,2008-10-02 08:00,2008-10-01 17:00,,,2007-12-23 08:00,2007-12-30 17:00,,,,,PT_Normal,,,,,Nf438UZ7d0mOOppvPuXCEw,,,,N,204,0
272,82171,829,10589,913,1,100,N,N,N,CP_Drtn,TT_Task,DT_FixedDUR2,RV_OK,TK_Complete,300RF68010,Lighting layout RF-Shop drawing,2295,16,0,0,344,0,344,64,,,0,,2007-12-15 08:00,2007-12-22 17:00,2008-10-04 08:00,2008-10-03 17:00,,2008-10-02 08:00,2008-10-01 17:00,,,2007-12-15 08:00,2007-12-22 17:00,,,,,PT_Normal,,,,,i8r/aLfiyUutdneyILy1KA,,,,N,344,0
273,82172,829,10589,913,1,100,N,N,N,CP_Drtn,TT_Task,DT_FixedDUR2,RV_OK,TK_Complete,300RF68012,Power layout RF-Shop drawing,2295,16,0,0,344,0,344,64,,,0,,2007-12-15 08:00,2007-12-22 17:00,2008-10-04 08:00,2008-10-03 17:00,,2008-10-02 08:00,2008-10-01 17:00,,,2007-12-15 08:00,2007-12-22 17:00,,,,,PT_Normal,,,,,+rm7wS9wlkOA3pbhYMQ3bg,,,,N,344,0
274,82173,829,10590,913,1,100,N,N,N,CP_Drtn,TT_Task,DT_FixedDUR2,RV_OK,TK_Complete,300RF68015,Lightning Layout RF -Shop drawing,2295,16,0,0,344,0,344,64,,,0,,2007-12-15 08:00,2007-12-22 17:00,2008-10-04 08:00,2008-10-03 17:00,,2008-10-02 08:00,2008-10-01 17:00,,,2007-12-15 08:00,2007-12-22 17:00,,,,,PT_Normal,,,,,jJSywGci6Uer1zJKS3hFZA,,,,N,344,0
275,82174,829,10599,913,1,100,N,N,N,CP_Drtn,TT_Task,DT_FixedDUR2,RV_OK,TK_Complete,300RF70000,Emergency Lighting RF-Shop drawing,2296,16,0,0,204,0,204,64,,,0,,2007-12-23 08:00,2007-12-30 17:00,2008-10-04 08:00,2008-10-03 17:00,,2008-10-02 08:00,2008-10-01 17:00,,,2007-12-23 08:00,2007-12-30 17:00,,,,,PT_Normal,,,,,maAOlNLMMUq8c2AwHvMJ7Q,,,,N,204,0
276,82175,829,10591,913,1,100,N,N,N,CP_Drtn,TT_Task,DT_FixedDUR2,RV_OK,TK_Complete,300RF70010,Emergency Lighting RF-Shop drawing,2295,16,0,0,344,0,344,64,,,0,,2007-12-15 08:00,2007-12-22 17:00,2008-10-04 08:00,2008-10-03 17:00,,2008-10-02 08:00,2008-10-01 17:00,,,2007-12-15 08:00,2007-12-22 17:00,,,,,PT_Normal,,,,,5poGKz2hbEOyHg9Ok3/OVQ,,,,N,344,0
277,82176,829,10602,913,1,100,N,N,N,CP_Drtn,TT_Task,DT_FixedDUR2,RV_OK,TK_Complete,300RF74000,Fire Alarm RF-Shop drawing,2296,16,0,0,204,0,204,64,,,0,,2007-12-23 08:00,2007-12-30 17:00,2008-10-04 08:00,2008-10-03 17:00,,2008-10-02 08:00,2008-10-01 17:00,,,2007-12-23 08:00,2007-12-30 17:00,,,,,PT_Normal,,,,,e99SH4CCVk2boa+KAeMXvg,,,,N,204,0
278,82177,829,10603,913,1,100,N,N,N,CP_Drtn,TT_Task,DT_FixedDUR2,RV_OK,TK_Complete,300RF74002,Public Adress RF-Shop drawing,2296,16,0,0,204,0,204,64,,,0,,2007-12-23 08:00,2007-12-30 17:00,2008-10-04 08:00,2008-10-03 17:00,,2008-10-02 08:00,2008-10-01 17:00,,,2007-12-23 08:00,2007-12-30 17:00,,,,,PT_Normal,,,,,jTmUEEPQc06E5rYAeFUoYA,,,,N,204,0
279,82178,829,10593,913,1,100,N,N,N,CP_Drtn,TT_Task,DT_FixedDUR2,RV_OK,TK_Complete,300RF74010,Fire Alarm RF-Shop drawing,2295,16,0,0,344,0,344,64,,,0,,2007-12-15 08:00,2007-12-22 17:00,2008-10-04 08:00,2008-10-03 17:00,,2008-10-02 08:00,2008-10-01 17:00,,,2007-12-15 08:00,2007-12-22 17:00,,,,,PT_Normal,,,,,7y5hrcRxEUaDU6eDq/YJpA,,,,N,344,0
280,82179,829,10583,913,1,100,N,N,N,CP_Drtn,TT_Task,DT_FixedDUR2,RV_OK,TK_Complete,300RF74012,Public Adress RF-Shop drawing,2295,16,0,0,344,0,344,64,,,0,,2007-12-15 08:00,2007-12-22 17:00,2008-10-04 08:00,2008-10-03 17:00,,2008-10-02 08:00,2008-10-01 17:00,,,2007-12-15 08:00,2007-12-22 17:00,,,,,PT_Normal,,,,,bkYvDv5o9EaXBTWDlSfb5g,,,,N,344,0
281,82180,829,10604,913,1,100,N,N,N,CP_Drtn,TT_Task,DT_FixedDUR2,RV_OK,TK_Complete,300RF76000,Tel & Data RF-Shop drawing,2296,16,0,0,204,0,204,64,,,0,,2007-12-23 08:00,2007-12-30 17:00,2008-10-04 08:00,2008-10-03 17:00,,2008-10-02 08:00,2008-10-01 17:00,,,2007-12-23 08:00,2007-12-30 17:00,,,,,PT_Normal,,,,,NhC+nTM49UCL4O3K6MddPg,,,,N,204,0
282,82181,829,10595,913,1,100,N,N,N,CP_Drtn,TT_Task,DT_FixedDUR2,RV_OK,TK_Complete,300RF76010,Tel & Data RF-Shop drawing,2295,16,0,0,344,0,344,64,,,0,,2007-12-15 08:00,2007-12-22 17:00,2008-10-04 08:00,2008-10-03 17:00,,2008-10-02 08:00,2008-10-01 17:00,,,2007-12-15 08:00,2007-12-22 17:00,,,,,PT_Normal,,,,,aEhxdfPQVUWPnglv27KLxg,,,,N,344,0
283,82182,829,10570,913,1,100,N,N,N,CP_Drtn,TT_Task,DT_FixedDUR2,RV_OK,TK_Complete,4000010000,Substructure Waterproofing System -Material,2296,0,0,0,204,0,204,64,,,0,,2007-12-15 08:00,2007-12-22 17:00,2008-10-02 08:00,2008-10-01 17:00,,2008-10-02 08:00,2008-10-01 17:00,,,2007-12-15 08:00,2007-12-22 17:00,,,,,PT_Normal,,,,,EWyLmMDGcUKL5XA3N1VgAg,,,,N,204,0
284,82183,829,10569,913,1,100,N,N,N,CP_Drtn,TT_Task,DT_FixedDUR2,RV_OK,TK_Complete,4000010010,Substructure Waterproofing System -Material,2278,0,0,0,134,0,134,64,,,0,,2007-12-07 08:00,2007-12-14 17:00,2008-10-02 08:00,2008-10-01 17:00,,2008-10-02 08:00,2008-10-01 17:00,,,2007-12-07 08:00,2007-12-14 17:00,,,,,PT_Normal,,,,,C4hlrSZ8XE+04AmDwiJ9sQ,,,,N,134,0
285,82184,829,10570,913,1,100,N,N,N,CP_Drtn,TT_Task,DT_FixedDUR2,RV_OK,TK_Complete,4000018000,Internal & External Painting system -Material,2296,48,0,0,204,0,204,64,,,0,,2007-12-15 08:00,2007-12-22 17:00,2008-10-08 08:00,2008-10-07 17:00,,2008-10-02 08:00,2008-10-01 17:00,,,2007-12-15 08:00,2007-12-22 17:00,,,,,PT_Normal,,,,,D69wrMUz7EGryhDoFKUbKQ,,,,N,204,0
286,82185,829,10569,913,1,100,N,N,N,CP_Drtn,TT_Task,DT_FixedDUR2,RV_OK,TK_Complete,4000018010,Internal & External Painting system -Material,2278,48,0,0,134,0,134,64,,,0,,2007-12-07 08:00,2007-12-14 17:00,2008-10-08 08:00,2008-10-07 17:00,,2008-10-02 08:00,2008-10-01 17:00,,,2007-12-07 08:00,2007-12-14 17:00,,,,,PT_Normal,,,,,aUMO9A9XS0OJGYmKwp6fNg,,,,N,134,0
287,82186,829,10570,913,1,100,N,N,N,CP_Drtn,TT_Task,DT_FixedDUR2,RV_OK,TK_Complete,4000020000,Ceramic & Porcelain Tiles (PC) -Material,2296,200,0,0,204,0,204,64,,,0,,2007-12-15 08:00,2007-12-22 17:00,2008-10-27 08:00,2008-10-26 17:00,,2008-10-02 08:00,2008-10-01 17:00,,,2007-12-15 08:00,2007-12-22 17:00,,,,,PT_Normal,,,,,fjIUM/FdKEiIprT+uhG3aw,,,,N,204,0
288,82187,829,10569,913,1,100,N,N,N,CP_Drtn,TT_Task,DT_FixedDUR2,RV_OK,TK_Complete,4000020010,Ceramic & Porcelain Tiles (PC) -Material,2278,200,0,0,134,0,134,64,,,0,,2007-12-07 08:00,2007-12-14 17:00,2008-10-27 08:00,2008-10-26 17:00,,2008-10-02 08:00,2008-10-01 17:00,,,2007-12-07 08:00,2007-12-14 17:00,,,,,PT_Normal,,,,,oFauvPZxsE+HIh+pYA1Wfw,,,,N,134,0
289,82188,829,10570,913,1,100,N,N,N,CP_Drtn,TT_Task,DT_FixedDUR2,RV_OK,TK_Complete,4000022000,Wet Area Waterproofing system -Material,2296,200,0,0,204,0,204,64,,,0,,2007-12-31 08:00,2008-01-07 17:00,2008-10-27 08:00,2008-10-26 17:00,,2008-10-02 08:00,2008-10-01 17:00,,,2007-12-31 08:00,2008-01-07 17:00,,,,,PT_Normal,,,,,RMFrZfNQgESKri9Na0nQ3g,,,,N,204,0
290,82189,829,10570,913,1,100,N,N,N,CP_Drtn,TT_Task,DT_FixedDUR2,RV_OK,TK_Complete,4000022002,Roof Waterproofing System -Material,2296,280,0,0,204,0,204,64,,,0,,2007-12-31 08:00,2008-01-07 17:00,2008-11-06 08:00,2008-11-05 17:00,,2008-10-02 08:00,2008-10-01 17:00,,,2007-12-31 08:00,2008-01-07 17:00,,,,,PT_Normal,,,,,iCFsXoquekKu8iu8u5mYWA,,,,N,204,0
291,82190,829,10570,913,1,100,N,N,N,CP_Drtn,TT_Task,DT_FixedDUR2,RV_OK,TK_Complete,4000022004,Water tank coating -Material,2296,1496,0,0,204,0,204,64,,,0,,2007-12-15 08:00,2007-12-22 17:00,2009-04-07 08:00,2009-04-06 17:00,,2008-10-02 08:00,2008-10-01 17:00,,,2007-12-15 08:00,2007-12-22 17:00,,,,,PT_Normal,,,,,wN7jLer6a0y9iAyvCJL0jg,,,,N,204,0
292,82191,829,10569,913,1,100,N,N,N,CP_Drtn,TT_Task,DT_FixedDUR2,RV_OK,TK_Complete,4000022010,Wet Area Waterproofing system -Material,2278,200,0,0,134,0,134,64,,,0,,2007-12-23 08:00,2007-12-30 17:00,2008-10-27 08:00,2008-10-26 17:00,,2008-10-02 08:00,2008-10-01 17:00,,,2007-12-23 08:00,2007-12-30 17:00,,,,,PT_Normal,,,,,RIRzsARbBU+HW0ZdoDvtrg,,,,N,134,0
293,82192,829,10569,913,1,100,N,N,N,CP_Drtn,TT_Task,DT_FixedDUR2,RV_OK,TK_Complete,4000022012,Roof Waterproofing System -Material,2278,280,0,0,134,0,134,64,,,0,,2007-12-23 08:00,2007-12-30 17:00,2008-11-06 08:00,2008-11-05 17:00,,2008-10-02 08:00,2008-10-01 17:00,,,2007-12-23 08:00,2007-12-30 17:00,,,,,PT_Normal,,,,,zAO72vyFhUSDBwvjPrFCuw,,,,N,134,0
294,82193,829,10569,913,1,100,N,N,N,CP_Drtn,TT_Task,DT_FixedDUR2,RV_OK,TK_Complete,4000022014,Water tank coating -Material,2278,1496,0,0,134,0,134,64,,,0,,2007-12-07 08:00,2007-12-14 17:00,2009-04-07 08:00,2009-04-06 17:00,,2008-10-02 08:00,2008-10-01 17:00,,,2007-12-07 08:00,2007-12-14 17:00,,,,,PT_Normal,,,,,Q9WWlnI4VU+TVw0VF/+0Mg,,,,N,134,0
295,82194,829,10570,913,1,100,N,N,N,CP_Drtn,TT_Task,DT_FixedDUR2,RV_OK,TK_Complete,4000024000,Aluminum and Glazing Works -Material,2296,368,0,0,204,0,204,64,,,0,,2008-01-14 08:00,2008-01-21 17:00,2008-11-17 08:00,2008-11-16 17:00,,2008-10-02 08:00,2008-10-01 17:00,,,2008-01-14 08:00,2008-01-21 17:00,,,,,PT_Normal,,,,,1piRNy7OeEu1uJ1nwImvmg,,,,N,204,0
296,82195,829,10570,913,1,100,N,N,N,CP_Drtn,TT_Task,DT_FixedDUR2,RV_OK,TK_Complete,4000024002,Staircase Handrails -Material,2296,1168,0,0,204,0,204,64,,,0,,2008-01-01 08:00,2008-01-08 17:00,2009-02-25 08:00,2009-02-24 17:00,,2008-10-02 08:00,2008-10-01 17:00,,,2008-01-01 08:00,2008-01-08 17:00,,,,,PT_Normal,,,,,/3JFIGy8S0mdmVoucG0m2g,,,,N,204,0
297,82196,829,10569,913,1,100,N,N,N,CP_Drtn,TT_Task,DT_FixedDUR2,RV_OK,TK_Complete,4000024010,Aluminum and Glazing Works -Material,2278,368,0,0,134,0,134,64,,,0,,2008-01-06 08:00,2008-01-13 17:00,2008-11-17 08:00,2008-11-16 17:00,,2008-10-02 08:00,2008-10-01 17:00,,,2008-01-06 08:00,2008-01-13 17:00,,,,,PT_Normal,,,,,kiYJvuCOF0CADdub9kk4eg,,,,N,134,0
298,82197,829,10569,913,1,100,N,N,N,CP_Drtn,TT_Task,DT_FixedDUR2,RV_OK,TK_Complete,4000024012,Staircase Handrails -Material,2278,1168,0,0,134,0,134,64,,,0,,2007-12-24 08:00,2007-12-31 17:00,2009-02-25 08:00,2009-02-24 17:00,,2008-10-02 08:00,2008-10-01 17:00,,,2007-12-24 08:00,2007-12-31 17:00,,,,,PT_Normal,,,,,5ra7V/eEJkCdn39s4xObPg,,,,N,134,0
299,82198,829,10570,913,1,100,N,N,N,CP_Drtn,TT_Task,DT_FixedDUR2,RV_OK,TK_Complete,4000026000,Steel Doors -Material,2296,592,0,0,204,0,204,64,,,0,,2008-01-01 08:00,2008-01-08 17:00,2008-12-15 08:00,2008-12-14 17:00,,2008-10-02 08:00,2008-10-01 17:00,,,2008-01-01 08:00,2008-01-08 17:00,,,,,PT_Normal,,,,,pDYSdPFSJEq+289MjiqXBQ,,,,N,204,0
300,82199,829,10569,913,1,100,N,N,N,CP_Drtn,TT_Task,DT_FixedDUR2,RV_OK,TK_Complete,4000026010,Steel Doors -Material,2278,592,0,0,134,0,134,64,,,0,,2007-12-24 08:00,2007-12-31 17:00,2008-12-15 08:00,2008-12-14 17:00,,2008-10-02 08:00,2008-10-01 17:00,,,2007-12-24 08:00,2007-12-31 17:00,,,,,PT_Normal,,,,,j5Z37vwC90moPr2twjlghQ,,,,N,134,0
301,82200,829,10570,913,1,100,N,N,N,CP_Drtn,TT_Task,DT_FixedDUR2,RV_OK,TK_Complete,4000030000,Wooden doors (PC) -Material,2296,320,0,0,204,0,204,64,,,0,,2007-12-31 08:00,2008-01-07 17:00,2008-11-11 08:00,2008-11-10 17:00,,2008-10-02 08:00,2008-10-01 17:00,,,2007-12-31 08:00,2008-01-07 17:00,,,,,PT_Normal,,,,,k0YR5Ik7p0qTYTuFGXIj6A,,,,N,204,0
302,82201,829,10569,913,1,100,N,N,N,CP_Drtn,TT_Task,DT_FixedDUR2,RV_OK,TK_Complete,4000030010,Wooden doors (PC) -Material,2278,320,0,0,134,0,134,64,,,0,,2007-12-23 08:00,2007-12-30 17:00,2008-11-11 08:00,2008-11-10 17:00,,2008-10-02 08:00,2008-10-01 17:00,,,2007-12-23 08:00,2007-12-30 17:00,,,,,PT_Normal,,,,,sdUxoTUGnUe9cdLEKN/ioQ,,,,N,134,0
303,82202,829,10570,913,1,100,N,N,N,CP_Drtn,TT_Task,DT_FixedDUR2,RV_OK,TK_Complete,4000032000,Pantry cabinets (PC) -Material,2296,560,0,0,204,0,204,64,,,0,,2007-12-31 08:00,2008-01-07 17:00,2008-12-11 08:00,2008-12-10 17:00,,2008-10-02 08:00,2008-10-01 17:00,,,2007-12-31 08:00,2008-01-07 17:00,,,,,PT_Normal,,,,,wVKGrnWrpUityVKr9zqJ3w,,,,N,204,0
304,82203,829,10570,913,1,100,N,N,N,CP_Drtn,TT_Task,DT_FixedDUR2,RV_OK,TK_Complete,4000032002,Wordrobes (PC) -Material,2296,576,0,0,204,0,204,64,,,0,,2007-12-31 08:00,2008-01-07 17:00,2008-12-13 08:00,2008-12-12 17:00,,2008-10-02 08:00,2008-10-01 17:00,,,2007-12-31 08:00,2008-01-07 17:00,,,,,PT_Normal,,,,,x69hyMjwpk6bOZ9rnCD3Hg,,,,N,204,0
305,82204,829,10570,913,1,100,N,N,N,CP_Drtn,TT_Task,DT_FixedDUR2,RV_OK,TK_Complete,4000032004,Kitchen Sink (PC) -Material,2296,560,0,0,204,0,204,64,,,0,,2007-12-31 08:00,2008-01-07 17:00,2008-12-11 08:00,2008-12-10 17:00,,2008-10-02 08:00,2008-10-01 17:00,,,2007-12-31 08:00,2008-01-07 17:00,,,,,PT_Normal,,,,,gbWRGkwGjUW5evlgytzGyQ,,,,N,204,0
306,82205,829,10570,913,1,100,N,N,N,CP_Drtn,TT_Task,DT_FixedDUR2,RV_OK,TK_Complete,4000032006,Vanity counters (PC) -Material,2296,416,0,0,204,0,204,64,,,0,,2007-12-31 08:00,2008-01-07 17:00,2008-11-23 08:00,2008-11-22 17:00,,2008-10-02 08:00,2008-10-01 17:00,,,2007-12-31 08:00,2008-01-07 17:00,,,,,PT_Normal,,,,,sE+8uJLoWUaE9zhjlVgptw,,,,N,204,0
307,82206,829,10569,913,1,100,N,N,N,CP_Drtn,TT_Task,DT_FixedDUR2,RV_OK,TK_Complete,4000032010,Pantry cabinets (PC) -Material,2278,560,0,0,134,0,134,64,,,0,,2007-12-23 08:00,2007-12-30 17:00,2008-12-11 08:00,2008-12-10 17:00,,2008-10-02 08:00,2008-10-01 17:00,,,2007-12-23 08:00,2007-12-30 17:00,,,,,PT_Normal,,,,,fUNNI/F8p0urUNaKbBmMZQ,,,,N,134,0
308,82207,829,10569,913,1,100,N,N,N,CP_Drtn,TT_Task,DT_FixedDUR2,RV_OK,TK_Complete,4000032012,Wordrobes (PC) -Material,2278,576,0,0,134,0,134,64,,,0,,2007-12-23 08:00,2007-12-30 17:00,2008-12-13 08:00,2008-12-12 17:00,,2008-10-02 08:00,2008-10-01 17:00,,,2007-12-23 08:00,2007-12-30 17:00,,,,,PT_Normal,,,,,PBucpVWYY0uxSxmc+UTFtw,,,,N,134,0
309,82208,829,10569,913,1,100,N,N,N,CP_Drtn,TT_Task,DT_FixedDUR2,RV_OK,TK_Complete,4000032014,Kitchen Sink (PC) -Material,2278,560,0,0,134,0,134,64,,,0,,2007-12-23 08:00,2007-12-30 17:00,2008-12-11 08:00,2008-12-10 17:00,,2008-10-02 08:00,2008-10-01 17:00,,,2007-12-23 08:00,2007-12-30 17:00,,,,,PT_Normal,,,,,3MEYfCTkNUO0FI6owg2G3A,,,,N,134,0
310,82209,829,10569,913,1,100,N,N,N,CP_Drtn,TT_Task,DT_FixedDUR2,RV_OK,TK_Complete,4000032016,Vanity counters (PC) -Material,2278,416,0,0,134,0,134,64,,,0,,2007-12-23 08:00,2007-12-30 17:00,2008-11-23 08:00,2008-11-22 17:00,,2008-10-02 08:00,2008-10-01 17:00,,,2007-12-23 08:00,2007-12-30 17:00,,,,,PT_Normal,,,,,SDYniSJkoEGgGLbocnkysA,,,,N,134,0
311,82210,829,10570,913,1,100,N,N,N,CP_Drtn,TT_Task,DT_FixedDUR2,RV_OK,TK_Complete,4000034000,False Ceiling Works -Material,2296,200,0,0,204,0,204,64,,,0,,2007-12-28 08:00,2008-01-04 17:00,2008-10-27 08:00,2008-10-26 17:00,,2008-10-02 08:00,2008-10-01 17:00,,,2007-12-28 08:00,2008-01-04 17:00,,,,,PT_Normal,,,,,F+F4A/PcIEyuHV6u4418bA,,,,N,204,0
312,82211,829,10569,913,1,100,N,N,N,CP_Drtn,TT_Task,DT_FixedDUR2,RV_OK,TK_Complete,4000034010,False Ceiling Works -Material,2278,200,0,0,98,0,98,48,,,0,,2007-12-22 08:00,2007-12-27 17:00,2008-10-27 08:00,2008-10-26 17:00,,2008-10-02 08:00,2008-10-01 17:00,,,2007-12-22 08:00,2007-12-27 17:00,,,,,PT_Normal,,,,,LYrs1tAqckCHeCHFovyjIw,,,,N,98,0
313,82212,829,10570,913,1,100,N,N,N,CP_Drtn,TT_Task,DT_FixedDUR2,RV_OK,TK_Complete,4000036000,Marble and stone Works (PC) -Material,2296,240,0,0,204,0,204,64,,,0,,2007-12-15 08:00,2007-12-22 17:00,2008-11-01 08:00,2008-10-31 17:00,,2008-10-02 08:00,2008-10-01 17:00,,,2007-12-15 08:00,2007-12-22 17:00,,,,,PT_Normal,,,,,t+HBUGoxBUGVvb02ZjHI6A,,,,N,204,0
314,82213,829,10569,913,1,100,N,N,N,CP_Drtn,TT_Task,DT_FixedDUR2,RV_OK,TK_Complete,4000036010,Marble and stone Works (PC) -Material,2278,240,0,0,134,0,134,64,,,0,,2007-12-07 08:00,2007-12-14 17:00,2008-11-01 08:00,2008-10-31 17:00,,2008-10-02 08:00,2008-10-01 17:00,,,2007-12-07 08:00,2007-12-14 17:00,,,,,PT_Normal,,,,,HCmvf3/HLkuoKXd1FYfsQQ,,,,N,134,0
315,82214,829,10570,913,1,100,N,N,N,CP_Drtn,TT_Task,DT_FixedDUR2,RV_OK,TK_Complete,4000038000,Epoxy Coating for Parking area & Marking -Materi,2296,928,0,0,204,0,204,64,,,0,,2007-12-15 08:00,2007-12-22 17:00,2009-01-26 08:00,2009-01-25 17:00,,2008-10-02 08:00,2008-10-01 17:00,,,2007-12-15 08:00,2007-12-22 17:00,,,,,PT_Normal,,,,,YcqAtr+1zEy2MQXlKBwWog,,,,N,204,0
316,82215,829,10570,913,1,100,N,N,N,CP_Drtn,TT_Task,DT_FixedDUR2,RV_OK,TK_Complete,4000038002,Dust Proof Coating -Material,2296,1096,0,0,204,0,204,64,,,0,,2007-12-15 08:00,2007-12-22 17:00,2009-02-16 08:00,2009-02-15 17:00,,2008-10-02 08:00,2008-10-01 17:00,,,2007-12-15 08:00,2007-12-22 17:00,,,,,PT_Normal,,,,,w7Hr5FKIwkG5IHvQ6y5MXw,,,,N,204,0
317,82216,829,10569,913,1,100,N,N,N,CP_Drtn,TT_Task,DT_FixedDUR2,RV_OK,TK_Complete,4000038010,Epoxy Coating for Parking area & Marking -Materi,2278,928,0,0,134,0,134,64,,,0,,2007-12-07 08:00,2007-12-14 17:00,2009-01-26 08:00,2009-01-25 17:00,,2008-10-02 08:00,2008-10-01 17:00,,,2007-12-07 08:00,2007-12-14 17:00,,,,,PT_Normal,,,,,07Xurhhtd0a3108AHp++nA,,,,N,134,0
318,82217,829,10569,913,1,100,N,N,N,CP_Drtn,TT_Task,DT_FixedDUR2,RV_OK,TK_Complete,4000038012,Dust Proof Coating -Material,2278,1096,0,0,134,0,134,64,,,0,,2007-12-07 08:00,2007-12-14 17:00,2009-02-16 08:00,2009-02-15 17:00,,2008-10-02 08:00,2008-10-01 17:00,,,2007-12-07 08:00,2007-12-14 17:00,,,,,PT_Normal,,,,,mQ7LcdVi4UmwRi5q67689w,,,,N,134,0
319,82218,829,10570,913,1,100,N,N,N,CP_Drtn,TT_Task,DT_FixedDUR2,RV_OK,TK_Complete,4000040000,Duplex staircases (PC) -Material,2296,384,0,0,204,0,204,64,,,0,,2007-12-15 08:00,2007-12-22 17:00,2008-11-19 08:00,2008-11-18 17:00,,2008-10-02 08:00,2008-10-01 17:00,,,2007-12-15 08:00,2007-12-22 17:00,,,,,PT_Normal,,,,,tDk1iq7SAU6SWwMIIdbexA,,,,N,204,0
320,82219,829,10569,913,1,100,N,N,N,CP_Drtn,TT_Task,DT_FixedDUR2,RV_OK,TK_Complete,4000040010,Duplex staircases (PC) -Material,2278,384,0,0,134,0,134,64,,,0,,2007-12-07 08:00,2007-12-14 17:00,2008-11-19 08:00,2008-11-18 17:00,,2008-10-02 08:00,2008-10-01 17:00,,,2007-12-07 08:00,2007-12-14 17:00,,,,,PT_Normal,,,,,o/p/b6KtiUynosIogHBOWg,,,,N,134,0
321,82220,829,10570,913,1,100,N,N,N,CP_Drtn,TT_Task,DT_FixedDUR2,RV_OK,TK_Complete,4000042000,Signs -Material,2296,1096,0,0,204,0,204,64,,,0,,2008-01-02 08:00,2008-01-09 17:00,2009-02-16 08:00,2009-02-15 17:00,,2008-10-02 08:00,2008-10-01 17:00,,,2008-01-02 08:00,2008-01-09 17:00,,,,,PT_Normal,,,,,6o7eDDE96UqGzZFNezpw8w,,,,N,204,0
322,82221,829,10569,913,1,100,N,N,N,CP_Drtn,TT_Task,DT_FixedDUR2,RV_OK,TK_Complete,4000042010,Signs -Material,2278,1096,0,0,134,0,134,64,,,0,,2007-12-25 08:00,2008-01-01 17:00,2009-02-16 08:00,2009-02-15 17:00,,2008-10-02 08:00,2008-10-01 17:00,,,2007-12-25 08:00,2008-01-01 17:00,,,,,PT_Normal,,,,,+akWZUv7C0WYp0bfMeVskw,,,,N,134,0
323,82222,829,10570,913,1,100,N,N,N,CP_Drtn,TT_Task,DT_FixedDUR2,RV_OK,TK_Complete,4000044000,Rubber Guards -Material,2296,928,0,0,204,0,204,64,,,0,,2007-12-15 08:00,2007-12-22 17:00,2009-01-26 08:00,2009-01-25 17:00,,2008-10-02 08:00,2008-10-01 17:00,,,2007-12-15 08:00,2007-12-22 17:00,,,,,PT_Normal,,,,,iheIArFIOEmkJWAqBWKV7A,,,,N,204,0
324,82223,829,10569,913,1,100,N,N,N,CP_Drtn,TT_Task,DT_FixedDUR2,RV_OK,TK_Complete,4000044010,Rubber Guards -Material,2278,928,0,0,134,0,134,64,,,0,,2007-12-07 08:00,2007-12-14 17:00,2009-01-26 08:00,2009-01-25 17:00,,2008-10-02 08:00,2008-10-01 17:00,,,2007-12-07 08:00,2007-12-14 17:00,,,,,PT_Normal,,,,,FXqK6k4If0anADHh7Q/70Q,,,,N,134,0
325,82224,829,10570,913,1,100,N,N,N,CP_Drtn,TT_Task,DT_FixedDUR2,RV_OK,TK_Complete,4000046000,Lift works -Material,2296,552,0,0,204,0,204,64,,,0,,2008-01-04 08:00,2008-01-11 17:00,2008-12-10 08:00,2008-12-09 17:00,,2008-10-02 08:00,2008-10-01 17:00,,,2008-01-04 08:00,2008-01-11 17:00,,,,,PT_Normal,,,,,4ZHoyrOECUOONDeve+iGmA,,,,N,204,0
326,82225,829,10569,913,1,100,N,N,N,CP_Drtn,TT_Task,DT_FixedDUR2,RV_OK,TK_Complete,4000046010,Lift works -Material,2278,552,0,0,134,0,134,64,,,0,,2007-12-27 08:00,2008-01-03 17:00,2008-12-10 08:00,2008-12-09 17:00,,2008-10-02 08:00,2008-10-01 17:00,,,2007-12-27 08:00,2008-01-03 17:00,,,,,PT_Normal,,,,,WL3YLYphVUyonpP3BB6sKw,,,,N,134,0
327,82226,829,10570,913,1,100,N,N,N,CP_Drtn,TT_Task,DT_FixedDUR2,RV_OK,TK_Complete,4000048000,Refuse chute -Material,2296,648,0,0,204,0,204,64,,,0,,2008-01-01 08:00,2008-01-08 17:00,2008-12-22 08:00,2008-12-21 17:00,,2008-10-02 08:00,2008-10-01 17:00,,,2008-01-01 08:00,2008-01-08 17:00,,,,,PT_Normal,,,,,zpHIJHC+KEq5/Ih8kmBKpw,,,,N,204,0
328,82227,829,10569,913,1,100,N,N,N,CP_Drtn,TT_Task,DT_FixedDUR2,RV_OK,TK_Complete,4000048010,Refuse chute -Material,2278,648,0,0,134,0,134,64,,,0,,2007-12-24 08:00,2007-12-31 17:00,2008-12-22 08:00,2008-12-21 17:00,,2008-10-02 08:00,2008-10-01 17:00,,,2007-12-24 08:00,2007-12-31 17:00,,,,,PT_Normal,,,,,XyW0W2iQZ0qKZav/VUJ/Nw,,,,N,134,0
329,82228,829,10573,913,1,100,N,N,N,CP_Drtn,TT_Task,DT_FixedDUR2,RV_OK,TK_Complete,4000052000,Air handling units -Material,2296,1040,0,0,204,0,204,64,,,0,,2007-12-23 08:00,2007-12-30 17:00,2009-02-09 08:00,2009-02-08 17:00,,2008-10-02 08:00,2008-10-01 17:00,,,2007-12-23 08:00,2007-12-30 17:00,,,,,PT_Normal,,,,,AiAeLc2rQk6m+XNuBUE7bA,,,,N,204,0
330,82229,829,10573,913,1,100,N,N,N,CP_Drtn,TT_Task,DT_FixedDUR2,RV_OK,TK_Complete,4000052002,Fan coil/Split/ Multi Split units -Material,2296,200,0,0,204,0,204,64,,,0,,2007-12-23 08:00,2007-12-30 17:00,2008-10-27 08:00,2008-10-26 17:00,,2008-10-02 08:00,2008-10-01 17:00,,,2007-12-23 08:00,2007-12-30 17:00,,,,,PT_Normal,,,,,PeIr5UYtHkecF2OugngbyQ,,,,N,204,0
331,82230,829,10573,913,1,100,N,N,N,CP_Drtn,TT_Task,DT_FixedDUR2,RV_OK,TK_Complete,4000052003,Fans -Material,2296,1040,0,0,204,0,204,64,,,0,,2007-12-23 08:00,2007-12-30 17:00,2009-02-09 08:00,2009-02-08 17:00,,2008-10-02 08:00,2008-10-01 17:00,,,2007-12-23 08:00,2007-12-30 17:00,,,,,PT_Normal,,,,,cic+7BRRsE67W7uQIRjGOQ,,,,N,204,0
332,82231,829,10573,913,1,100,N,N,N,CP_Drtn,TT_Task,DT_FixedDUR2,RV_OK,TK_Complete,4000052005,Air Control/ Fire / Smoke Dampers -Material,2296,200,0,0,204,0,204,64,,,0,,2007-12-23 08:00,2007-12-30 17:00,2008-10-27 08:00,2008-10-26 17:00,,2008-10-02 08:00,2008-10-01 17:00,,,2007-12-23 08:00,2007-12-30 17:00,,,,,PT_Normal,,,,,RgsdicwffE2crLZIGkysgQ,,,,N,204,0
333,82232,829,10573,913,1,100,N,N,N,CP_Drtn,TT_Task,DT_FixedDUR2,RV_OK,TK_Complete,4000052006,Heat Exchangers -Material,2296,1040,0,0,204,0,204,64,,,0,,2008-01-07 08:00,2008-01-14 17:00,2009-02-09 08:00,2009-02-08 17:00,,2008-10-02 08:00,2008-10-01 17:00,,,2008-01-07 08:00,2008-01-14 17:00,,,,,PT_Normal,,,,,+jGMeLRrg0y8sknSZyuHgw,,,,N,204,0
334,82233,829,10573,913,1,100,N,N,N,CP_Drtn,TT_Task,DT_FixedDUR2,RV_OK,TK_Complete,4000052008,Chilled water pumps -Material,2296,1040,0,0,204,0,204,64,,,0,,2007-12-23 08:00,2007-12-30 17:00,2009-02-09 08:00,2009-02-08 17:00,,2008-10-02 08:00,2008-10-01 17:00,,,2007-12-23 08:00,2007-12-30 17:00,,,,,PT_Normal,,,,,mfJ5JPpgoE2JHQrAjxf3/g,,,,N,204,0
335,82234,829,10572,913,1,100,N,N,N,CP_Drtn,TT_Task,DT_FixedDUR2,RV_OK,TK_Complete,4000052010,A/C duct -Material,2297,184,0,0,134,0,134,64,,,0,,2007-12-15 08:00,2007-12-22 17:00,2008-10-25 08:00,2008-10-24 17:00,,2008-10-02 08:00,2008-10-01 17:00,,,2007-12-15 08:00,2007-12-22 17:00,,,,,PT_Normal,,,,,bBxbjIDaaUyc85rykC/QVw,,,,N,134,0
336,82235,829,10572,913,1,100,N,N,N,CP_Drtn,TT_Task,DT_FixedDUR2,RV_OK,TK_Complete,4000052012,Fan coil/Split/ Multi Split units -Material,2297,200,0,0,134,0,134,64,,,0,,2007-12-15 08:00,2007-12-22 17:00,2008-10-27 08:00,2008-10-26 17:00,,2008-10-02 08:00,2008-10-01 17:00,,,2007-12-15 08:00,2007-12-22 17:00,,,,,PT_Normal,,,,,yv5i6wAwwEavmvZUeBKRoQ,,,,N,134,0
337,82236,829,10572,913,1,100,N,N,N,CP_Drtn,TT_Task,DT_FixedDUR2,RV_OK,TK_Complete,4000052013,Air handling units -Material,2297,1040,0,0,134,0,134,64,,,0,,2007-12-15 08:00,2007-12-22 17:00,2009-02-09 08:00,2009-02-08 17:00,,2008-10-02 08:00,2008-10-01 17:00,,,2007-12-15 08:00,2007-12-22 17:00,,,,,PT_Normal,,,,,3C0gNszvPk6wwKubNACXlw,,,,N,134,0
338,82237,829,10572,913,1,100,N,N,N,CP_Drtn,TT_Task,DT_FixedDUR2,RV_OK,TK_Complete,4000052014,Fans -Material,2297,1040,0,0,134,0,134,64,,,0,,2007-12-15 08:00,2007-12-22 17:00,2009-02-09 08:00,2009-02-08 17:00,,2008-10-02 08:00,2008-10-01 17:00,,,2007-12-15 08:00,2007-12-22 17:00,,,,,PT_Normal,,,,,skShIb+sQ0mYupEAIZYmVg,,,,N,134,0
339,82238,829,10572,913,1,100,N,N,N,CP_Drtn,TT_Task,DT_FixedDUR2,RV_OK,TK_Complete,4000052015,Air Control/ Fire / Smoke Dampers -Material,2297,200,0,0,134,0,134,64,,,0,,2007-12-15 08:00,2007-12-22 17:00,2008-10-27 08:00,2008-10-26 17:00,,2008-10-02 08:00,2008-10-01 17:00,,,2007-12-15 08:00,2007-12-22 17:00,,,,,PT_Normal,,,,,DhGuO+Rnx0e0M7A4OmLK9A,,,,N,134,0
340,82239,829,10572,913,1,100,N,N,N,CP_Drtn,TT_Task,DT_FixedDUR2,RV_OK,TK_Complete,4000052016,Heat Exchangers -Material,2297,1040,0,0,134,0,134,64,,,0,,2007-12-15 08:00,2007-12-22 17:00,2009-02-09 08:00,2009-02-08 17:00,,2008-10-02 08:00,2008-10-01 17:00,,,2007-12-15 08:00,2007-12-22 17:00,,,,,PT_Normal,,,,,lxqSpGbcMkWTzY5ivI+cyA,,,,N,134,0
341,82240,829,10572,913,1,100,N,N,N,CP_Drtn,TT_Task,DT_FixedDUR2,RV_OK,TK_Complete,4000052018,Chilled water pumps -Material,2297,1040,0,0,134,0,134,64,,,0,,2007-12-15 08:00,2007-12-22 17:00,2009-02-09 08:00,2009-02-08 17:00,,2008-10-02 08:00,2008-10-01 17:00,,,2007-12-15 08:00,2007-12-22 17:00,,,,,PT_Normal,,,,,UXQNZv6sgECmXib41q0cog,,,,N,134,0
342,82241,829,10573,913,1,100,N,N,N,CP_Drtn,TT_Task,DT_FixedDUR2,RV_OK,TK_Complete,4000052050,A/C duct -Material,2296,184,0,0,204,0,204,64,,,0,,2007-12-23 08:00,2007-12-30 17:00,2008-10-25 08:00,2008-10-24 17:00,,2008-10-02 08:00,2008-10-01 17:00,,,2007-12-23 08:00,2007-12-30 17:00,,,,,PT_Normal,,,,,175QUiMUF0mvPnTex1+zTw,,,,N,204,0
343,82242,829,10573,913,1,100,N,N,N,CP_Drtn,TT_Task,DT_FixedDUR2,RV_OK,TK_Complete,4000052100,Chilled water pipes & valves -Material,2296,136,0,0,204,0,204,64,,,0,,2007-12-23 08:00,2007-12-30 17:00,2008-10-19 08:00,2008-10-18 17:00,,2008-10-02 08:00,2008-10-01 17:00,,,2007-12-23 08:00,2007-12-30 17:00,,,,,PT_Normal,,,,,V3O8+eF5rUy/24WAd61r0A,,,,N,204,0
344,82243,829,10572,913,1,100,N,N,N,CP_Drtn,TT_Task,DT_FixedDUR2,RV_OK,TK_Complete,4000052110,Chilled water pipes & valves -Material,2297,136,0,0,134,0,134,64,,,0,,2007-12-15 08:00,2007-12-22 17:00,2008-10-19 08:00,2008-10-18 17:00,,2008-10-02 08:00,2008-10-01 17:00,,,2007-12-15 08:00,2007-12-22 17:00,,,,,PT_Normal,,,,,G1XNsZTZJUqqurGK39Hs+Q,,,,N,134,0
345,82244,829,10572,913,1,100,N,N,N,CP_Drtn,TT_Task,DT_FixedDUR2,RV_OK,TK_Complete,4000052310,Grills & diffusers -Material,2297,640,0,0,134,0,134,64,,,0,,2007-12-15 08:00,2007-12-22 17:00,2008-12-21 08:00,2008-12-20 17:00,,2008-10-02 08:00,2008-10-01 17:00,,,2007-12-15 08:00,2007-12-22 17:00,,,,,PT_Normal,,,,,Uk98tPWRakyoRKNsPJpaAA,,,,N,134,0
346,82245,829,10573,913,1,100,N,N,N,CP_Drtn,TT_Task,DT_FixedDUR2,RV_OK,TK_Complete,4000052350,Grills & diffusers -Material,2296,640,0,0,204,0,204,64,,,0,,2007-12-23 08:00,2007-12-30 17:00,2008-12-21 08:00,2008-12-20 17:00,,2008-10-02 08:00,2008-10-01 17:00,,,2007-12-23 08:00,2007-12-30 17:00,,,,,PT_Normal,,,,,RMS2InLaBUi2JfjXyW4Ysg,,,,N,204,0
347,82246,829,10570,913,1,100,N,N,N,CP_Drtn,TT_Task,DT_FixedDUR2,RV_OK,TK_Complete,4000054000,Sanitary Ware & Accessories (PC) -Material,2296,376,0,0,204,0,204,64,,,0,,2007-12-23 08:00,2007-12-30 17:00,2008-11-18 08:00,2008-11-17 17:00,,2008-10-02 08:00,2008-10-01 17:00,,,2007-12-23 08:00,2007-12-30 17:00,,,,,PT_Normal,,,,,AOyEX6pUjUioiDLRdzm3Fg,,,,N,204,0
348,82247,829,10570,913,1,100,N,N,N,CP_Drtn,TT_Task,DT_FixedDUR2,RV_OK,TK_Complete,4000054002,Mirrors -Material,2296,504,0,0,204,0,204,64,,,0,,2007-12-15 08:00,2007-12-22 17:00,2008-12-04 08:00,2008-12-03 17:00,,2008-10-02 08:00,2008-10-01 17:00,,,2007-12-15 08:00,2007-12-22 17:00,,,,,PT_Normal,,,,,Ih+dDtOnxEiPj9JuxFMvFA,,,,N,204,0
349,82248,829,10573,913,1,100,N,N,N,CP_Drtn,TT_Task,DT_FixedDUR2,RV_OK,TK_Complete,4000054006,Booster Pump Set -Material,2296,920,0,0,204,0,204,64,,,0,,2008-01-07 08:00,2008-01-14 17:00,2009-01-25 08:00,2009-01-24 17:00,,2008-10-02 08:00,2008-10-01 17:00,,,2008-01-07 08:00,2008-01-14 17:00,,,,,PT_Normal,,,,,XRFPtjuB+kCCD2miSlZxkA,,,,N,204,0
350,82249,829,10573,913,1,100,N,N,N,CP_Drtn,TT_Task,DT_FixedDUR2,RV_OK,TK_Complete,4000054008,Water heaters -Material,2296,200,0,0,204,0,204,64,,,0,,2007-12-23 08:00,2007-12-30 17:00,2008-10-27 08:00,2008-10-26 17:00,,2008-10-02 08:00,2008-10-01 17:00,,,2007-12-23 08:00,2007-12-30 17:00,,,,,PT_Normal,,,,,93M9I8oeu0KXXX8uGL+RPQ,,,,N,204,0
351,82250,829,10569,913,1,100,N,N,N,CP_Drtn,TT_Task,DT_FixedDUR2,RV_OK,TK_Complete,4000054010,Sanitary Ware & Accessories (PC) -Material,2278,376,0,0,134,0,134,64,,,0,,2007-12-15 08:00,2007-12-22 17:00,2008-11-18 08:00,2008-11-17 17:00,,2008-10-02 08:00,2008-10-01 17:00,,,2007-12-15 08:00,2007-12-22 17:00,,,,,PT_Normal,,,,,Cnz7uZ5qukedxqe1NzV4aQ,,,,N,134,0
352,82251,829,10569,913,1,100,N,N,N,CP_Drtn,TT_Task,DT_FixedDUR2,RV_OK,TK_Complete,4000054012,Mirrors -Material,2278,504,0,0,134,0,134,64,,,0,,2007-12-07 08:00,2007-12-14 17:00,2008-12-04 08:00,2008-12-03 17:00,,2008-10-02 08:00,2008-10-01 17:00,,,2007-12-07 08:00,2007-12-14 17:00,,,,,PT_Normal,,,,,NKWZuTxTWUqvOX0nhgmptg,,,,N,134,0
353,82252,829,10572,913,1,100,N,N,N,CP_Drtn,TT_Task,DT_FixedDUR2,RV_OK,TK_Complete,4000054015,Water supply pipes & valves -Material,2297,200,0,0,134,0,134,64,,,0,,2007-12-15 08:00,2007-12-22 17:00,2008-10-27 08:00,2008-10-26 17:00,,2008-10-02 08:00,2008-10-01 17:00,,,2007-12-15 08:00,2007-12-22 17:00,,,,,PT_Normal,,,,,VC7UjtjXTEGC08bZdFMYHA,,,,N,134,0
354,82253,829,10572,913,1,100,N,N,N,CP_Drtn,TT_Task,DT_FixedDUR2,RV_OK,TK_Complete,4000054016,Booster Pump Set -Material,2297,920,0,0,134,0,134,64,,,0,,2007-12-15 08:00,2007-12-22 17:00,2009-01-25 08:00,2009-01-24 17:00,,2008-10-02 08:00,2008-10-01 17:00,,,2007-12-15 08:00,2007-12-22 17:00,,,,,PT_Normal,,,,,KLxJ0ZRkkEat8exlvTQVPg,,,,N,134,0
355,82254,829,10572,913,1,100,N,N,N,CP_Drtn,TT_Task,DT_FixedDUR2,RV_OK,TK_Complete,4000054018,Water heaters -Material,2297,200,0,0,134,0,134,64,,,0,,2007-12-15 08:00,2007-12-22 17:00,2008-10-27 08:00,2008-10-26 17:00,,2008-10-02 08:00,2008-10-01 17:00,,,2007-12-15 08:00,2007-12-22 17:00,,,,,PT_Normal,,,,,F0veG4mVDkGpnAX2Uz7epw,,,,N,134,0
356,82255,829,10573,913,1,100,N,N,N,CP_Drtn,TT_Task,DT_FixedDUR2,RV_OK,TK_Complete,4000054050,Water supply pipes & valves -Material,2296,200,0,0,204,0,204,64,,,0,,2007-12-23 08:00,2007-12-30 17:00,2008-10-27 08:00,2008-10-26 17:00,,2008-10-02 08:00,2008-10-01 17:00,,,2007-12-23 08:00,2007-12-30 17:00,,,,,PT_Normal,,,,,1AEOo6O7w0CpZqQfREputQ,,,,N,204,0
357,82256,829,10573,913,1,100,N,N,N,CP_Drtn,TT_Task,DT_FixedDUR2,RV_OK,TK_Complete,4000056000,Submersible pump set -Material,2296,920,0,0,204,0,204,64,,,0,,2008-01-07 08:00,2008-01-14 17:00,2009-01-25 08:00,2009-01-24 17:00,,2008-10-02 08:00,2008-10-01 17:00,,,2008-01-07 08:00,2008-01-14 17:00,,,,,PT_Normal,,,,,cb++RADZqkOYL3K5Ei2j6A,,,,N,204,0
358,82257,829,10572,913,1,100,N,N,N,CP_Drtn,TT_Task,DT_FixedDUR2,RV_OK,TK_Complete,4000056010,Drainage pipes -Material,2297,112,0,0,134,0,134,64,,,0,,2007-12-15 08:00,2007-12-22 17:00,2008-10-16 08:00,2008-10-15 17:00,,2008-10-02 08:00,2008-10-01 17:00,,,2007-12-15 08:00,2007-12-22 17:00,,,,,PT_Normal,,,,,4wjApiS4ekOafgPXOa2axw,,,,N,134,0
359,82258,829,10572,913,1,100,N,N,N,CP_Drtn,TT_Task,DT_FixedDUR2,RV_OK,TK_Complete,4000056015,Submersible pump set -Material,2297,920,0,0,134,0,134,64,,,0,,2007-12-15 08:00,2007-12-22 17:00,2009-01-25 08:00,2009-01-24 17:00,,2008-10-02 08:00,2008-10-01 17:00,,,2007-12-15 08:00,2007-12-22 17:00,,,,,PT_Normal,,,,,oMJK9La7R0y3ZZXvS6aDUw,,,,N,134,0
360,82259,829,10573,913,1,100,N,N,N,CP_Drtn,TT_Task,DT_FixedDUR2,RV_OK,TK_Complete,4000056050,Drainage pipes -Material,2296,112,0,0,204,0,204,64,,,0,,2007-12-23 08:00,2007-12-30 17:00,2008-10-16 08:00,2008-10-15 17:00,,2008-10-02 08:00,2008-10-01 17:00,,,2007-12-23 08:00,2007-12-30 17:00,,,,,PT_Normal,,,,,E9HVkcaBE0Gs3A/QwY8fsg,,,,N,204,0
361,82260,829,10573,913,1,100,N,N,N,CP_Drtn,TT_Task,DT_FixedDUR2,RV_OK,TK_Complete,4000058000,Fire fighting pump set -Material,2296,872,0,0,204,0,204,64,,,0,,2007-12-23 08:00,2007-12-30 17:00,2009-01-19 08:00,2009-01-18 17:00,,2008-10-02 08:00,2008-10-01 17:00,,,2007-12-23 08:00,2007-12-30 17:00,,,,,PT_Normal,,,,,uWxkxW1+ZEuicQ3tStK/JQ,,,,N,204,0
362,82261,829,10572,913,1,100,N,N,N,CP_Drtn,TT_Task,DT_FixedDUR2,RV_OK,TK_Complete,4000058010,Fire fighting pump set -Material,2297,872,0,0,134,0,134,64,,,0,,2007-12-15 08:00,2007-12-22 17:00,2009-01-19 08:00,2009-01-18 17:00,,2008-10-02 08:00,2008-10-01 17:00,,,2007-12-15 08:00,2007-12-22 17:00,,,,,PT_Normal,,,,,7YDtvhafqkOzWizBDYR+QQ,,,,N,134,0
363,82262,829,10572,913,1,100,N,N,N,CP_Drtn,TT_Task,DT_FixedDUR2,RV_OK,TK_Complete,4000058015,Fire fighting pipes & valves -Material,2297,200,0,0,134,0,134,64,,,0,,2007-12-15 08:00,2007-12-22 17:00,2008-10-27 08:00,2008-10-26 17:00,,2008-10-02 08:00,2008-10-01 17:00,,,2007-12-15 08:00,2007-12-22 17:00,,,,,PT_Normal,,,,,5yh/60XQfEWbS8JtW07gFQ,,,,N,134,0
364,82263,829,10573,913,1,100,N,N,N,CP_Drtn,TT_Task,DT_FixedDUR2,RV_OK,TK_Complete,4000058050,Fire fighting pipes & valves -Material,2296,200,0,0,204,0,204,64,,,0,,2007-12-23 08:00,2007-12-30 17:00,2008-10-27 08:00,2008-10-26 17:00,,2008-10-02 08:00,2008-10-01 17:00,,,2007-12-23 08:00,2007-12-30 17:00,,,,,PT_Normal,,,,,cfZzFvfmr0KzstHpLYVKlQ,,,,N,204,0
365,82264,829,10573,913,1,100,N,N,N,CP_Drtn,TT_Task,DT_FixedDUR2,RV_OK,TK_Complete,4000060000,Gas meter & gas leak detector -Material,2296,632,0,0,204,0,204,64,,,0,,2007-12-23 08:00,2007-12-30 17:00,2008-12-20 08:00,2008-12-19 17:00,,2008-10-02 08:00,2008-10-01 17:00,,,2007-12-23 08:00,2007-12-30 17:00,,,,,PT_Normal,,,,,tWQc5T5VsUWctw0tu96N9w,,,,N,204,0
366,82265,829,10572,913,1,100,N,N,N,CP_Drtn,TT_Task,DT_FixedDUR2,RV_OK,TK_Complete,4000060010,Gas meter & gas leak detector -Material,2297,632,0,0,134,0,134,64,,,0,,2007-12-15 08:00,2007-12-22 17:00,2008-12-20 08:00,2008-12-19 17:00,,2008-10-02 08:00,2008-10-01 17:00,,,2007-12-15 08:00,2007-12-22 17:00,,,,,PT_Normal,,,,,zmR5mdSxIEyWBpZn0C4QFw,,,,N,134,0
367,82266,829,10573,913,1,100,N,N,N,CP_Drtn,TT_Task,DT_FixedDUR2,RV_OK,TK_Complete,4000062000,Building Management System (BMS) -Material,2296,184,0,0,204,0,204,64,,,0,,2007-12-23 08:00,2007-12-30 17:00,2008-10-25 08:00,2008-10-24 17:00,,2008-10-02 08:00,2008-10-01 17:00,,,2007-12-23 08:00,2007-12-30 17:00,,,,,PT_Normal,,,,,SrolgjWFRE6vSeD+CbzaPw,,,,N,204,0
368,82267,829,10572,913,1,100,N,N,N,CP_Drtn,TT_Task,DT_FixedDUR2,RV_OK,TK_Complete,4000062010,Building Management System (BMS) -Material,2297,184,0,0,134,0,134,64,,,0,,2007-12-15 08:00,2007-12-22 17:00,2008-10-25 08:00,2008-10-24 17:00,,2008-10-02 08:00,2008-10-01 17:00,,,2007-12-15 08:00,2007-12-22 17:00,,,,,PT_Normal,,,,,heMIv7I4k0CLarguj+DoPg,,,,N,134,0
369,82268,829,10557,913,1,100,N,N,N,CP_Drtn,TT_Task,DT_FixedDUR2,RV_OK,TK_Complete,4000068000,Standby Generator -Material,2296,888,0,0,204,0,204,64,,,0,,2007-12-23 08:00,2007-12-30 17:00,2009-01-21 08:00,2009-01-20 17:00,,2008-10-02 08:00,2008-10-01 17:00,,,2007-12-23 08:00,2007-12-30 17:00,,,,,PT_Normal,,,,,E5YEXOS/AUG+8pdLmlhKHA,,,,N,204,0
370,82269,829,10557,913,1,100,N,N,N,CP_Drtn,TT_Task,DT_FixedDUR2,RV_OK,TK_Complete,4000068002,"MDBs, SMDBs, MCCs, VFDs, CB, ATS & Final DBs -Ma",2296,632,0,0,204,0,204,64,,,0,,2007-12-31 08:00,2008-01-07 17:00,2008-12-20 08:00,2008-12-19 17:00,,2008-10-02 08:00,2008-10-01 17:00,,,2007-12-31 08:00,2008-01-07 17:00,,,,,PT_Normal,,,,,AsRvtH0atEyCRf03YGdDqQ,,,,N,204,0
371,82270,829,10557,913,1,100,N,N,N,CP_Drtn,TT_Task,DT_FixedDUR2,RV_OK,TK_Complete,4000068004,Light Fittings -Material,2296,576,0,0,204,0,204,64,,,0,,2007-12-23 08:00,2007-12-30 17:00,2008-12-13 08:00,2008-12-12 17:00,,2008-10-02 08:00,2008-10-01 17:00,,,2007-12-23 08:00,2007-12-30 17:00,,,,,PT_Normal,,,,,dCfwbfwwz0G6JBLnyuRF8Q,,,,N,204,0
372,82271,829,10561,913,1,100,N,N,N,CP_Drtn,TT_Task,DT_FixedDUR2,RV_OK,TK_Complete,4000068010,Standby Generator -Material,2286,888,0,0,134,0,134,64,,,0,,2007-12-15 08:00,2007-12-22 17:00,2009-01-21 08:00,2009-01-20 17:00,,2008-10-02 08:00,2008-10-01 17:00,,,2007-12-15 08:00,2007-12-22 17:00,,,,,PT_Normal,,,,,khbZYHhNNUO1UI0CgFRe4Q,,,,N,134,0
373,82272,829,10561,913,1,100,N,N,N,CP_Drtn,TT_Task,DT_FixedDUR2,RV_OK,TK_Complete,4000068012,"MDBs, SMDBs, MCCs, VFDs, CB, ATS & Final DBs -Ma",2286,632,0,0,134,0,134,64,,,0,,2007-12-15 08:00,2007-12-22 17:00,2008-12-20 08:00,2008-12-19 17:00,,2008-10-02 08:00,2008-10-01 17:00,,,2007-12-15 08:00,2007-12-22 17:00,,,,,PT_Normal,,,,,DZNTyxNlDUCScsBCvobydg,,,,N,134,0
374,82273,829,10561,913,1,100,N,N,N,CP_Drtn,TT_Task,DT_FixedDUR2,RV_OK,TK_Complete,4000068014,Light Fittings -Material,2286,576,0,0,134,0,134,64,,,0,,2007-12-15 08:00,2007-12-22 17:00,2008-12-13 08:00,2008-12-12 17:00,,2008-10-02 08:00,2008-10-01 17:00,,,2007-12-15 08:00,2007-12-22 17:00,,,,,PT_Normal,,,,,0oMFItSYN0ams4x/hz99bw,,,,N,134,0
375,82274,829,10561,913,1,100,N,N,N,CP_Drtn,TT_Task,DT_FixedDUR2,RV_OK,TK_Complete,4000068015,Single core wires -Material,2286,200,0,0,134,0,134,64,,,0,,2007-12-15 08:00,2007-12-22 17:00,2008-10-27 08:00,2008-10-26 17:00,,2008-10-02 08:00,2008-10-01 17:00,,,2007-12-15 08:00,2007-12-22 17:00,,,,,PT_Normal,,,,,WFZ3xP8nJEmb/H8x1Ywg2Q,,,,N,134,0
376,82275,829,10557,913,1,100,N,N,N,CP_Drtn,TT_Task,DT_FixedDUR2,RV_OK,TK_Complete,4000068050,Single core wires -Material,2296,200,0,0,204,0,204,64,,,0,,2007-12-23 08:00,2007-12-30 17:00,2008-10-27 08:00,2008-10-26 17:00,,2008-10-02 08:00,2008-10-01 17:00,,,2007-12-23 08:00,2007-12-30 17:00,,,,,PT_Normal,,,,,xVP6d8WIwU2Irqd0MQ0KkQ,,,,N,204,0
377,82276,829,10561,913,1,100,N,N,N,CP_Drtn,TT_Task,DT_FixedDUR2,RV_OK,TK_Complete,4000068110,LV feeder cables -Material,2286,264,0,0,134,0,134,64,,,0,,2007-12-15 08:00,2007-12-22 17:00,2008-11-04 08:00,2008-11-03 17:00,,2008-10-02 08:00,2008-10-01 17:00,,,2007-12-15 08:00,2007-12-22 17:00,,,,,PT_Normal,,,,,HC69DubAFkaLI+53nQoYuQ,,,,N,134,0
378,82277,829,10557,913,1,100,N,N,N,CP_Drtn,TT_Task,DT_FixedDUR2,RV_OK,TK_Complete,4000068150,LV feeder cables -Material,2296,264,0,0,204,0,204,64,,,0,,2007-12-23 08:00,2007-12-30 17:00,2008-11-04 08:00,2008-11-03 17:00,,2008-10-02 08:00,2008-10-01 17:00,,,2007-12-23 08:00,2007-12-30 17:00,,,,,PT_Normal,,,,,EdNPMUVnMU2BeYQsRgomqg,,,,N,204,0
379,82278,829,10557,913,1,100,N,N,N,CP_Drtn,TT_Task,DT_FixedDUR2,RV_OK,TK_Complete,4000068600,Switches & sockets -Material,2296,864,0,0,204,0,204,64,,,0,,2007-12-23 08:00,2007-12-30 17:00,2009-01-18 08:00,2009-01-17 17:00,,2008-10-02 08:00,2008-10-01 17:00,,,2007-12-23 08:00,2007-12-30 17:00,,,,,PT_Normal,,,,,cc25SjHaj0G9iag3MnPFCw,,,,N,204,0
380,82279,829,10561,913,1,100,N,N,N,CP_Drtn,TT_Task,DT_FixedDUR2,RV_OK,TK_Complete,4000068610,Switches & sockets -Material,2286,864,0,0,134,0,134,64,,,0,,2007-12-15 08:00,2007-12-22 17:00,2009-01-18 08:00,2009-01-17 17:00,,2008-10-02 08:00,2008-10-01 17:00,,,2007-12-15 08:00,2007-12-22 17:00,,,,,PT_Normal,,,,,JybyABNAz0iodK+GJFEVGQ,,,,N,134,0
381,82280,829,10557,913,1,100,N,N,N,CP_Drtn,TT_Task,DT_FixedDUR2,RV_OK,TK_Complete,4000070000,Battery Supply System -Material,2296,1096,0,0,204,0,204,64,,,0,,2007-12-31 08:00,2008-01-07 17:00,2009-02-16 08:00,2009-02-15 17:00,,2008-10-02 08:00,2008-10-01 17:00,,,2007-12-31 08:00,2008-01-07 17:00,,,,,PT_Normal,,,,,dBIO+1r/dE2d7VBFcYCCVg,,,,N,204,0
382,82281,829,10561,913,1,100,N,N,N,CP_Drtn,TT_Task,DT_FixedDUR2,RV_OK,TK_Complete,4000070010,Battery Supply System -Material,2286,1096,0,0,134,0,134,64,,,0,,2007-12-15 08:00,2007-12-22 17:00,2009-02-16 08:00,2009-02-15 17:00,,2008-10-02 08:00,2008-10-01 17:00,,,2007-12-15 08:00,2007-12-22 17:00,,,,,PT_Normal,,,,,kGZ5jbKAp0aW3cwc3KHmaA,,,,N,134,0
383,82282,829,10557,913,1,100,N,N,N,CP_Drtn,TT_Task,DT_FixedDUR2,RV_OK,TK_Complete,4000072000,Audio Intercom System -Material,2296,184,0,0,204,0,204,64,,,0,,2007-12-31 08:00,2008-01-07 17:00,2008-10-25 08:00,2008-10-24 17:00,,2008-10-02 08:00,2008-10-01 17:00,,,2007-12-31 08:00,2008-01-07 17:00,,,,,PT_Normal,,,,,0xeM3ZPzYEiecYiRLK4g3Q,,,,N,204,0
384,82283,829,10557,913,1,100,N,N,N,CP_Drtn,TT_Task,DT_FixedDUR2,RV_OK,TK_Complete,4000072002,CCTV System -Material,2296,288,0,0,204,0,204,64,,,0,,2007-12-31 08:00,2008-01-07 17:00,2008-11-07 08:00,2008-11-06 17:00,,2008-10-02 08:00,2008-10-01 17:00,,,2007-12-31 08:00,2008-01-07 17:00,,,,,PT_Normal,,,,,t/jX9HJP3UeFvsB6pT8LGg,,,,N,204,0
385,82284,829,10557,913,1,100,N,N,N,CP_Drtn,TT_Task,DT_FixedDUR2,RV_OK,TK_Complete,4000072004,Gate barriers -Material,2296,1112,0,0,204,0,204,64,,,0,,2007-12-23 08:00,2007-12-30 17:00,2009-02-18 08:00,2009-02-17 17:00,,2008-10-02 08:00,2008-10-01 17:00,,,2007-12-23 08:00,2007-12-30 17:00,,,,,PT_Normal,,,,,v8fOyyKsyUCx4zVQ/2pznw,,,,N,204,0
386,82285,829,10561,913,1,100,N,N,N,CP_Drtn,TT_Task,DT_FixedDUR2,RV_OK,TK_Complete,4000072010,Audio Intercom System -Material,2286,184,0,0,134,0,134,64,,,0,,2007-12-15 08:00,2007-12-22 17:00,2008-10-25 08:00,2008-10-24 17:00,,2008-10-02 08:00,2008-10-01 17:00,,,2007-12-15 08:00,2007-12-22 17:00,,,,,PT_Normal,,,,,xfoP9W9m1EKLyCkeVg4teQ,,,,N,134,0
387,82286,829,10561,913,1,100,N,N,N,CP_Drtn,TT_Task,DT_FixedDUR2,RV_OK,TK_Complete,4000072012,CCTV System -Material,2286,288,0,0,134,0,134,64,,,0,,2007-12-15 08:00,2007-12-22 17:00,2008-11-07 08:00,2008-11-06 17:00,,2008-10-02 08:00,2008-10-01 17:00,,,2007-12-15 08:00,2007-12-22 17:00,,,,,PT_Normal,,,,,s0WmmB9KE0uGdQiu/fCQ+g,,,,N,134,0
388,82287,829,10561,913,1,100,N,N,N,CP_Drtn,TT_Task,DT_FixedDUR2,RV_OK,TK_Complete,4000072014,Gate barriers -Material,2286,1112,0,0,134,0,134,64,,,0,,2007-12-15 08:00,2007-12-22 17:00,2009-02-18 08:00,2009-02-17 17:00,,2008-10-02 08:00,2008-10-01 17:00,,,2007-12-15 08:00,2007-12-22 17:00,,,,,PT_Normal,,,,,ZIsUwuRUUEqsFZqy6PNPrw,,,,N,134,0
389,82288,829,10557,913,1,100,N,N,N,CP_Drtn,TT_Task,DT_FixedDUR2,RV_OK,TK_Complete,4000074000,Fire Alarm System -Material,2296,640,0,0,204,0,204,64,,,0,,2007-12-31 08:00,2008-01-07 17:00,2008-12-21 08:00,2008-12-20 17:00,,2008-10-02 08:00,2008-10-01 17:00,,,2007-12-31 08:00,2008-01-07 17:00,,,,,PT_Normal,,,,,jjy4+48mKEm87QWKEPJY4w,,,,N,204,0
390,82289,829,10561,913,1,100,N,N,N,CP_Drtn,TT_Task,DT_FixedDUR2,RV_OK,TK_Complete,4000074010,Fire resistant cables -Material,2286,200,0,0,134,0,134,64,,,0,,2007-12-15 08:00,2007-12-22 17:00,2008-10-27 08:00,2008-10-26 17:00,,2008-10-02 08:00,2008-10-01 17:00,,,2007-12-15 08:00,2007-12-22 17:00,,,,,PT_Normal,,,,,OPvxdESQnUyZH1zHn6vBEQ,,,,N,134,0
391,82290,829,10561,913,1,100,N,N,N,CP_Drtn,TT_Task,DT_FixedDUR2,RV_OK,TK_Complete,4000074015,Fire Alarm System -Material,2286,640,0,0,134,0,134,64,,,0,,2007-12-15 08:00,2007-12-22 17:00,2008-12-21 08:00,2008-12-20 17:00,,2008-10-02 08:00,2008-10-01 17:00,,,2007-12-15 08:00,2007-12-22 17:00,,,,,PT_Normal,,,,,1+WUAnwu/kuxwa/S36UAKg,,,,N,134,0
392,82291,829,10557,913,1,100,N,N,N,CP_Drtn,TT_Task,DT_FixedDUR2,RV_OK,TK_Complete,4000074050,Fire resistant cables -Material,2296,200,0,0,204,0,204,64,,,0,,2007-12-23 08:00,2007-12-30 17:00,2008-10-27 08:00,2008-10-26 17:00,,2008-10-02 08:00,2008-10-01 17:00,,,2007-12-23 08:00,2007-12-30 17:00,,,,,PT_Normal,,,,,Ps9aJQRVSkus6AaYAoIHlA,,,,N,204,0
393,82292,829,10561,913,1,100,N,N,N,CP_Drtn,TT_Task,DT_FixedDUR2,RV_OK,TK_Complete,4000076010,Structured cabling -Material,2286,200,0,0,134,0,134,64,,,0,,2007-12-15 08:00,2007-12-22 17:00,2008-10-27 08:00,2008-10-26 17:00,,2008-10-02 08:00,2008-10-01 17:00,,,2007-12-15 08:00,2007-12-22 17:00,,,,,PT_Normal,,,,,YEYMfcsE4UCamjLxJi7XRA,,,,N,134,0
394,82293,829,10557,913,1,100,N,N,N,CP_Drtn,TT_Task,DT_FixedDUR2,RV_OK,TK_Complete,4000076050,Structured cabling -Material,2296,200,0,0,204,0,204,64,,,0,,2007-12-23 08:00,2007-12-30 17:00,2008-10-27 08:00,2008-10-26 17:00,,2008-10-02 08:00,2008-10-01 17:00,,,2007-12-23 08:00,2007-12-30 17:00,,,,,PT_Normal,,,,,XKGSPYzc1UO+n8+qcTMl+w,,,,N,204,0
395,82294,829,10570,913,1,100,N,N,N,CP_Drtn,TT_Task,DT_FixedDUR2,RV_OK,TK_Complete,4000080000,Road Works -Material,2296,280,0,0,204,0,204,64,,,0,,2007-12-15 08:00,2007-12-22 17:00,2008-11-06 08:00,2008-11-05 17:00,,2008-10-02 08:00,2008-10-01 17:00,,,2007-12-15 08:00,2007-12-22 17:00,,,,,PT_Normal,,,,,ILqLp3CcAEmL8OB9F307Hw,,,,N,204,0
396,82295,829,10570,913,1,100,N,N,N,CP_Drtn,TT_Task,DT_FixedDUR2,RV_OK,TK_Complete,4000080002,Kerbstone -Material,2296,280,0,0,204,0,204,64,,,0,,2007-12-15 08:00,2007-12-22 17:00,2008-11-06 08:00,2008-11-05 17:00,,2008-10-02 08:00,2008-10-01 17:00,,,2007-12-15 08:00,2007-12-22 17:00,,,,,PT_Normal,,,,,McQX9MMLtEybpK0X2DxnFw,,,,N,204,0
397,82296,829,10570,913,1,100,N,N,N,CP_Drtn,TT_Task,DT_FixedDUR2,RV_OK,TK_Complete,4000080004,Interlocking tiles -Material,2296,280,0,0,204,0,204,64,,,0,,2007-12-15 08:00,2007-12-22 17:00,2008-11-06 08:00,2008-11-05 17:00,,2008-10-02 08:00,2008-10-01 17:00,,,2007-12-15 08:00,2007-12-22 17:00,,,,,PT_Normal,,,,,hvTOXrcXH0qNtAtjbUR7cw,,,,N,204,0
398,82297,829,10569,913,1,100,N,N,N,CP_Drtn,TT_Task,DT_FixedDUR2,RV_OK,TK_Complete,4000080010,Road Works -Material,2278,280,0,0,134,0,134,64,,,0,,2007-12-07 08:00,2007-12-14 17:00,2008-11-06 08:00,2008-11-05 17:00,,2008-10-02 08:00,2008-10-01 17:00,,,2007-12-07 08:00,2007-12-14 17:00,,,,,PT_Normal,,,,,ojCbCC+oZkePC0b3JwrMsA,,,,N,134,0
399,82298,829,10569,913,1,100,N,N,N,CP_Drtn,TT_Task,DT_FixedDUR2,RV_OK,TK_Complete,4000080012,Kerbstone -Material,2278,280,0,0,134,0,134,64,,,0,,2007-12-07 08:00,2007-12-14 17:00,2008-11-06 08:00,2008-11-05 17:00,,2008-10-02 08:00,2008-10-01 17:00,,,2007-12-07 08:00,2007-12-14 17:00,,,,,PT_Normal,,,,,rtGLBCMSy06Q5Yj+d+CikQ,,,,N,134,0
400,82299,829,10569,913,1,100,N,N,N,CP_Drtn,TT_Task,DT_FixedDUR2,RV_OK,TK_Complete,4000080014,Interlocking tiles -Material,2278,280,0,0,134,0,134,64,,,0,,2007-12-07 08:00,2007-12-14 17:00,2008-11-06 08:00,2008-11-05 17:00,,2008-10-02 08:00,2008-10-01 17:00,,,2007-12-07 08:00,2007-12-14 17:00,,,,,PT_Normal,,,,,/f2pW7sYHUGyG2mAHF2ijQ,,,,N,134,0
401,82300,829,10575,913,1,100,N,N,N,CP_Drtn,TT_Task,DT_FixedDUR2,RV_OK,TK_Complete,5000004000,Earth works -Method statement,2296,0,0,0,102,0,102,32,,,0,,2007-12-11 08:00,2007-12-14 17:00,2008-10-02 08:00,2008-10-01 17:00,,2008-10-02 08:00,2008-10-01 17:00,,,2007-12-11 08:00,2007-12-14 17:00,,,,,PT_Normal,,,,,HleOcVAIrEWGoi0E5o56jg,,,,N,102,0
402,82301,829,10560,913,1,100,N,N,N,CP_Drtn,TT_Task,DT_FixedDUR2,RV_OK,TK_Complete,5000004010,Earth works -Method statement,2283,0,0,0,32,0,32,32,,,0,,2007-12-07 08:00,2007-12-10 17:00,2008-10-02 08:00,2008-10-01 17:00,,2008-10-02 08:00,2008-10-01 17:00,,,2007-12-07 08:00,2007-12-10 17:00,,,,,PT_Normal,,,,,yclubvOgEEienu5l+4AaJA,,,,N,32,0
403,82302,829,10575,913,1,100,N,N,N,CP_Drtn,TT_Task,DT_FixedDUR2,RV_OK,TK_Complete,5000006000,Concrete Works - Substructure & Superstructure -,2296,0,0,0,102,0,102,32,,,0,,2007-12-19 08:00,2007-12-22 17:00,2008-10-02 08:00,2008-10-01 17:00,,2008-10-02 08:00,2008-10-01 17:00,,,2007-12-19 08:00,2007-12-22 17:00,,,,,PT_Normal,,,,,YA2yQl76V0u4GTXlJ/k8xg,,,,N,102,0
404,82303,829,10560,913,1,100,N,N,N,CP_Drtn,TT_Task,DT_FixedDUR2,RV_OK,TK_Complete,5000006010,Concrete Works - Substructure & Superstructure -,2283,0,0,0,32,0,32,32,,,0,,2007-12-15 08:00,2007-12-18 17:00,2008-10-02 08:00,2008-10-01 17:00,,2008-10-02 08:00,2008-10-01 17:00,,,2007-12-15 08:00,2007-12-18 17:00,,,,,PT_Normal,,,,,QMDE3lD5DEClFZdoXLNxRw,,,,N,32,0
405,82304,829,10575,913,1,100,N,N,N,CP_Drtn,TT_Task,DT_FixedDUR2,RV_OK,TK_Complete,5000010000,Waterproofing - Sub Structure -Method statement,2296,0,0,0,102,0,102,32,,,0,,2007-12-15 08:00,2007-12-18 17:00,2008-10-02 08:00,2008-10-01 17:00,,2008-10-02 08:00,2008-10-01 17:00,,,2007-12-15 08:00,2007-12-18 17:00,,,,,PT_Normal,,,,,FGfbzAXJwEaud1uO+LtuFg,,,,N,102,0
406,82305,829,10560,913,1,100,N,N,N,CP_Drtn,TT_Task,DT_FixedDUR2,RV_OK,TK_Complete,5000010010,Waterproofing - Sub Structure -Method statement,2283,0,0,0,32,0,32,32,,,0,,2007-12-11 08:00,2007-12-14 17:00,2008-10-02 08:00,2008-10-01 17:00,,2008-10-02 08:00,2008-10-01 17:00,,,2007-12-11 08:00,2007-12-14 17:00,,,,,PT_Normal,,,,,b8aVm1Flk02L85nefWs2+g,,,,N,32,0
407,82306,829,10575,913,1,100,N,N,N,CP_Drtn,TT_Task,DT_FixedDUR2,RV_OK,TK_Complete,5000014000,Internal Block Works -Method statement,2296,152,0,0,204,0,204,64,,,0,,2008-01-04 08:00,2008-01-11 17:00,2008-10-21 08:00,2008-10-20 17:00,,2008-10-02 08:00,2008-10-01 17:00,,,2008-01-04 08:00,2008-01-11 17:00,,,,,PT_Normal,,,,,1ZSxHVFhKkGRvHJBMJwQSA,,,,N,204,0
408,82307,829,10560,913,1,100,N,N,N,CP_Drtn,TT_Task,DT_FixedDUR2,RV_OK,TK_Complete,5000014010,Internal Block Works -Method statement,2283,48,0,0,64,0,64,64,,,0,,2007-12-27 08:00,2008-01-03 17:00,2008-10-08 08:00,2008-10-07 17:00,,2008-10-02 08:00,2008-10-01 17:00,,,2007-12-27 08:00,2008-01-03 17:00,,,,,PT_Normal,,,,,UAvuX1NCtkScFMUzoggebQ,,,,N,64,0
409,82308,829,10575,913,1,100,N,N,N,CP_Drtn,TT_Task,DT_FixedDUR2,RV_OK,TK_Complete,5000016000,Plastering Works -Method statement,2296,152,0,0,204,0,204,64,,,0,,2008-01-12 08:00,2008-01-19 17:00,2008-10-21 08:00,2008-10-20 17:00,,2008-10-02 08:00,2008-10-01 17:00,,,2008-01-12 08:00,2008-01-19 17:00,,,,,PT_Normal,,,,,DYJvtkbZAkm+dn9POPXNZQ,,,,N,204,0
410,82309,829,10560,913,1,100,N,N,N,CP_Drtn,TT_Task,DT_FixedDUR2,RV_OK,TK_Complete,5000016010,Plastering Works -Method statement,2283,48,0,0,64,0,64,64,,,0,,2008-01-04 08:00,2008-01-11 17:00,2008-10-08 08:00,2008-10-07 17:00,,2008-10-02 08:00,2008-10-01 17:00,,,2008-01-04 08:00,2008-01-11 17:00,,,,,PT_Normal,,,,,vAAsnLzvgES4muhMQqbgYw,,,,N,64,0
411,82310,829,10575,913,1,100,N,N,N,CP_Drtn,TT_Task,DT_FixedDUR2,RV_OK,TK_Complete,5000018000,Rendering Works -Method statement,2296,0,0,0,204,0,204,64,,,0,,2007-12-27 08:00,2008-01-03 17:00,2008-10-02 08:00,2008-10-01 17:00,,2008-10-02 08:00,2008-10-01 17:00,,,2007-12-27 08:00,2008-01-03 17:00,,,,,PT_Normal,,,,,8oBEJPgK9kW/HnNOueqhVw,,,,N,204,0
412,82311,829,10575,913,1,100,N,N,N,CP_Drtn,TT_Task,DT_FixedDUR2,RV_OK,TK_Complete,5000018002,Painting Works -Method statement,2296,48,0,0,204,0,204,64,,,0,,2008-01-20 08:00,2008-01-27 17:00,2008-10-08 08:00,2008-10-07 17:00,,2008-10-02 08:00,2008-10-01 17:00,,,2008-01-20 08:00,2008-01-27 17:00,,,,,PT_Normal,,,,,3Ck2Uhbd0kG/ibhymTRcZA,,,,N,204,0
413,82312,829,10560,913,1,100,N,N,N,CP_Drtn,TT_Task,DT_FixedDUR2,RV_OK,TK_Complete,5000018010,Rendering Works-Method statement,2283,0,0,0,64,0,64,64,,,0,,2007-12-19 08:00,2007-12-26 17:00,2008-10-02 08:00,2008-10-01 17:00,,2008-10-02 08:00,2008-10-01 17:00,,,2007-12-19 08:00,2007-12-26 17:00,,,,,PT_Normal,,,,,/GuTXtEBSkKZqvTJY47ihw,,,,N,64,0
414,82313,829,10560,913,1,100,N,N,N,CP_Drtn,TT_Task,DT_FixedDUR2,RV_OK,TK_Complete,5000018012,Painting Works -Method statement,2283,48,0,0,64,0,64,64,,,0,,2008-01-12 08:00,2008-01-19 17:00,2008-10-08 08:00,2008-10-07 17:00,,2008-10-02 08:00,2008-10-01 17:00,,,2008-01-12 08:00,2008-01-19 17:00,,,,,PT_Normal,,,,,T5d1taIxsEibDfcazzpdmg,,,,N,64,0
415,82314,829,10575,913,1,100,N,N,N,CP_Drtn,TT_Task,DT_FixedDUR2,RV_OK,TK_Complete,5000020000,Tiling Works -Method statement,2296,272,0,0,204,0,204,64,,,0,,2008-02-05 08:00,2008-02-12 17:00,2008-11-05 08:00,2008-11-04 17:00,,2008-10-02 08:00,2008-10-01 17:00,,,2008-02-05 08:00,2008-02-12 17:00,,,,,PT_Normal,,,,,4KMz1qubyUKEVBd3bOFLcA,,,,N,204,0
416,82315,829,10560,913,1,100,N,N,N,CP_Drtn,TT_Task,DT_FixedDUR2,RV_OK,TK_Complete,5000020010,Tiling Works -Method statement,2283,200,0,0,64,0,64,64,,,0,,2008-01-28 08:00,2008-02-04 17:00,2008-10-27 08:00,2008-10-26 17:00,,2008-10-02 08:00,2008-10-01 17:00,,,2008-01-28 08:00,2008-02-04 17:00,,,,,PT_Normal,,,,,zaptKPB310OqBvAeJyUERw,,,,N,64,0
417,82316,829,10575,913,1,100,N,N,N,CP_Drtn,TT_Task,DT_FixedDUR2,RV_OK,TK_Complete,5000022000,Wet Area Waterproofing Works -Method statement,2296,208,0,0,204,0,204,64,,,0,,2008-01-28 08:00,2008-02-04 17:00,2008-10-28 08:00,2008-10-27 17:00,,2008-10-02 08:00,2008-10-01 17:00,,,2008-01-28 08:00,2008-02-04 17:00,,,,,PT_Normal,,,,,onheq9qpAEWasf9X6bQ8mw,,,,N,204,0
418,82317,829,10575,913,1,100,N,N,N,CP_Drtn,TT_Task,DT_FixedDUR2,RV_OK,TK_Complete,5000022002,Roof Water Proofing -Method statement,2296,328,0,0,204,0,204,64,,,0,,2008-02-21 08:00,2008-02-28 17:00,2008-11-12 08:00,2008-11-11 17:00,,2008-10-02 08:00,2008-10-01 17:00,,,2008-02-21 08:00,2008-02-28 17:00,,,,,PT_Normal,,,,,JiFai09QXE+w3lRhk/IrNg,,,,N,204,0
419,82318,829,10560,913,1,100,N,N,N,CP_Drtn,TT_Task,DT_FixedDUR2,RV_OK,TK_Complete,5000022010,Wet Area Waterproofing Works -Method statement,2283,200,0,0,64,0,64,64,,,0,,2008-01-20 08:00,2008-01-27 17:00,2008-10-27 08:00,2008-10-26 17:00,,2008-10-02 08:00,2008-10-01 17:00,,,2008-01-20 08:00,2008-01-27 17:00,,,,,PT_Normal,,,,,0mKn7YgW0EiQnYGz116nmA,,,,N,64,0
420,82319,829,10560,913,1,100,N,N,N,CP_Drtn,TT_Task,DT_FixedDUR2,RV_OK,TK_Complete,5000022012,Roof Water Proofing -Method statement,2283,280,0,0,64,0,64,64,,,0,,2008-02-13 08:00,2008-02-20 17:00,2008-11-06 08:00,2008-11-05 17:00,,2008-10-02 08:00,2008-10-01 17:00,,,2008-02-13 08:00,2008-02-20 17:00,,,,,PT_Normal,,,,,dOeTkmWCsEyOBwxNw82AHQ,,,,N,64,0
421,82320,829,10575,913,1,100,N,N,N,CP_Drtn,TT_Task,DT_FixedDUR2,RV_OK,TK_Complete,5000034000,Installation of False Ceiling -Method statement,2296,200,0,0,204,0,204,64,,,0,,2008-02-13 08:00,2008-02-20 17:00,2008-10-27 08:00,2008-10-26 17:00,,2008-10-02 08:00,2008-10-01 17:00,,,2008-02-13 08:00,2008-02-20 17:00,,,,,PT_Normal,,,,,GMMrvS2r/UOiA7ziRK+23w,,,,N,204,0
422,82321,829,10560,913,1,100,N,N,N,CP_Drtn,TT_Task,DT_FixedDUR2,RV_OK,TK_Complete,5000034010,Installation of False Ceiling -Method statement,2283,200,0,0,64,0,64,64,,,0,,2008-02-05 08:00,2008-02-12 17:00,2008-10-27 08:00,2008-10-26 17:00,,2008-10-02 08:00,2008-10-01 17:00,,,2008-02-05 08:00,2008-02-12 17:00,,,,,PT_Normal,,,,,hxYzhO91E0ir4U2UNdL7pQ,,,,N,64,0
423,82322,829,10575,913,1,100,N,N,N,CP_Drtn,TT_Task,DT_FixedDUR2,RV_OK,TK_Complete,5000046000,Elevators -Method statement,2296,552,0,0,204,0,204,64,,,0,,2008-01-20 08:00,2008-01-27 17:00,2008-12-10 08:00,2008-12-09 17:00,,2008-10-02 08:00,2008-10-01 17:00,,,2008-01-20 08:00,2008-01-27 17:00,,,,,PT_Normal,,,,,kFFxN/VhVU2GN1+fpQMCHg,,,,N,204,0
424,82323,829,10560,913,1,100,N,N,N,CP_Drtn,TT_Task,DT_FixedDUR2,RV_OK,TK_Complete,5000046010,Elevators -Method statement,2283,552,0,0,64,0,64,64,,,0,,2008-01-12 08:00,2008-01-19 17:00,2008-12-10 08:00,2008-12-09 17:00,,2008-10-02 08:00,2008-10-01 17:00,,,2008-01-12 08:00,2008-01-19 17:00,,,,,PT_Normal,,,,,OtiEr+IJu0GTEN1wnMjR2Q,,,,N,64,0
425,82324,829,10552,913,1,100,N,N,N,CP_Drtn,TT_Task,DT_FixedDUR2,RV_OK,TK_Complete,5000052000,HVAC Installation -Method statement,2296,184,0,0,204,0,204,64,,,0,,2007-12-23 08:00,2007-12-30 17:00,2008-10-25 08:00,2008-10-24 17:00,,2008-10-02 08:00,2008-10-01 17:00,,,2007-12-23 08:00,2007-12-30 17:00,,,,,PT_Normal,,,,,vbNKzeYWcEKoZSml3kOFtA,,,,N,204,0
426,82325,829,10568,913,1,100,N,N,N,CP_Drtn,TT_Task,DT_FixedDUR2,RV_OK,TK_Complete,5000052010,HVAC Installation -Method statement,2283,184,0,0,64,0,64,64,,,0,,2007-12-15 08:00,2007-12-22 17:00,2008-10-25 08:00,2008-10-24 17:00,,2008-10-02 08:00,2008-10-01 17:00,,,2007-12-15 08:00,2007-12-22 17:00,,,,,PT_Normal,,,,,thMtaZiFS0ucHI7p2vwu9g,,,,N,64,0
427,82326,829,10552,913,1,100,N,N,N,CP_Drtn,TT_Task,DT_FixedDUR2,RV_OK,TK_Complete,5000054000,Water supply service -Method statement,2296,200,0,0,204,0,204,64,,,0,,2007-12-31 08:00,2008-01-07 17:00,2008-10-27 08:00,2008-10-26 17:00,,2008-10-02 08:00,2008-10-01 17:00,,,2007-12-31 08:00,2008-01-07 17:00,,,,,PT_Normal,,,,,l5TRKnOzR0OGbNuCpHUhrA,,,,N,204,0
428,82327,829,10568,913,1,100,N,N,N,CP_Drtn,TT_Task,DT_FixedDUR2,RV_OK,TK_Complete,5000054010,Water supply service -Method statement,2283,200,0,0,64,0,64,64,,,0,,2007-12-23 08:00,2007-12-30 17:00,2008-10-27 08:00,2008-10-26 17:00,,2008-10-02 08:00,2008-10-01 17:00,,,2007-12-23 08:00,2007-12-30 17:00,,,,,PT_Normal,,,,,8ujzOd5r70WkLBFzhzU7sQ,,,,N,64,0
429,82328,829,10552,913,1,100,N,N,N,CP_Drtn,TT_Task,DT_FixedDUR2,RV_OK,TK_Complete,5000056000,Drainage service -Method statement,2296,112,0,0,204,0,204,64,,,0,,2007-12-15 08:00,2007-12-22 17:00,2008-10-16 08:00,2008-10-15 17:00,,2008-10-02 08:00,2008-10-01 17:00,,,2007-12-15 08:00,2007-12-22 17:00,,,,,PT_Normal,,,,,UWkKwI83kE6jDn/mLv065A,,,,N,204,0
430,82329,829,10568,913,1,100,N,N,N,CP_Drtn,TT_Task,DT_FixedDUR2,RV_OK,TK_Complete,5000056010,Drainage service -Method statement,2283,112,0,0,64,0,64,64,,,0,,2007-12-07 08:00,2007-12-14 17:00,2008-10-16 08:00,2008-10-15 17:00,,2008-10-02 08:00,2008-10-01 17:00,,,2007-12-07 08:00,2007-12-14 17:00,,,,,PT_Normal,,,,,NrquhNpmBUOAw8g4gIfpIw,,,,N,64,0
431,82330,829,10552,913,1,100,N,N,N,CP_Drtn,TT_Task,DT_FixedDUR2,RV_OK,TK_Complete,5000058000,Fire fighting service -Method statement,2296,200,0,0,204,0,204,64,,,0,,2008-01-08 08:00,2008-01-15 17:00,2008-10-27 08:00,2008-10-26 17:00,,2008-10-02 08:00,2008-10-01 17:00,,,2008-01-08 08:00,2008-01-15 17:00,,,,,PT_Normal,,,,,FTos+vbisEOqrRjFD3mxFw,,,,N,204,0
432,82331,829,10568,913,1,100,N,N,N,CP_Drtn,TT_Task,DT_FixedDUR2,RV_OK,TK_Complete,5000058010,Fire fighting service -Method statement,2283,200,0,0,64,0,64,64,,,0,,2007-12-31 08:00,2008-01-07 17:00,2008-10-27 08:00,2008-10-26 17:00,,2008-10-02 08:00,2008-10-01 17:00,,,2007-12-31 08:00,2008-01-07 17:00,,,,,PT_Normal,,,,,p9p7/eawfkyJH+ydS9R1+g,,,,N,64,0
433,82332,829,10552,913,1,100,N,N,N,CP_Drtn,TT_Task,DT_FixedDUR2,RV_OK,TK_Complete,5000060000,LPG Services -Method statement,2296,480,0,0,204,0,204,64,,,0,,2008-01-16 08:00,2008-01-23 17:00,2008-12-01 08:00,2008-11-30 17:00,,2008-10-02 08:00,2008-10-01 17:00,,,2008-01-16 08:00,2008-01-23 17:00,,,,,PT_Normal,,,,,mr09ppdLn02k0L1pBbglVw,,,,N,204,0
434,82333,829,10568,913,1,100,N,N,N,CP_Drtn,TT_Task,DT_FixedDUR2,RV_OK,TK_Complete,5000060010,LPG Services -Method statement,2283,480,0,0,64,0,64,64,,,0,,2008-01-08 08:00,2008-01-15 17:00,2008-12-01 08:00,2008-11-30 17:00,,2008-10-02 08:00,2008-10-01 17:00,,,2008-01-08 08:00,2008-01-15 17:00,,,,,PT_Normal,,,,,rGzerQ6ROUqxVTWxf9nTjw,,,,N,64,0
435,82334,829,10567,913,1,100,N,N,N,CP_Drtn,TT_Task,DT_FixedDUR2,RV_OK,TK_Complete,5000068000,Power -Method statement,2296,200,0,0,204,0,204,64,,,0,,2007-12-23 08:00,2007-12-30 17:00,2008-10-27 08:00,2008-10-26 17:00,,2008-10-02 08:00,2008-10-01 17:00,,,2007-12-23 08:00,2007-12-30 17:00,,,,,PT_Normal,,,,,AY3ygw9eiU638l2ipRutsA,,,,N,204,0
436,82335,829,10567,913,1,100,N,N,N,CP_Drtn,TT_Task,DT_FixedDUR2,RV_OK,TK_Complete,5000068002,Lighting -Method statement,2296,0,0,0,204,0,204,64,,,0,,2007-12-15 08:00,2007-12-22 17:00,2008-10-02 08:00,2008-10-01 17:00,,2008-10-02 08:00,2008-10-01 17:00,,,2007-12-15 08:00,2007-12-22 17:00,,,,,PT_Normal,,,,,bYVonPNbqUqe7MtF6FEMlg,,,,N,204,0
437,82336,829,10553,913,1,100,N,N,N,CP_Drtn,TT_Task,DT_FixedDUR2,RV_OK,TK_Complete,5000068010,Power -Method statement,2283,184,0,0,64,0,64,64,,,0,,2007-12-15 08:00,2007-12-22 17:00,2008-10-25 08:00,2008-10-24 17:00,,2008-10-02 08:00,2008-10-01 17:00,,,2007-12-15 08:00,2007-12-22 17:00,,,,,PT_Normal,,,,,QxJbuHHzdkO2ggbo+RgziA,,,,N,64,0
438,82337,829,10553,913,1,100,N,N,N,CP_Drtn,TT_Task,DT_FixedDUR2,RV_OK,TK_Complete,5000068012,Lighting -Method statement,2283,0,0,0,64,0,64,64,,,0,,2007-12-07 08:00,2007-12-14 17:00,2008-10-02 08:00,2008-10-01 17:00,,2008-10-02 08:00,2008-10-01 17:00,,,2007-12-07 08:00,2007-12-14 17:00,,,,,PT_Normal,,,,,VsEtFX0tPEWb4Mt0DCRqHg,,,,N,64,0
439,82338,829,10567,913,1,100,N,N,N,CP_Drtn,TT_Task,DT_FixedDUR2,RV_OK,TK_Complete,5000070000,Emergency Lighting -Method statement,2296,200,0,0,204,0,204,64,,,0,,2008-01-08 08:00,2008-01-15 17:00,2008-10-27 08:00,2008-10-26 17:00,,2008-10-02 08:00,2008-10-01 17:00,,,2008-01-08 08:00,2008-01-15 17:00,,,,,PT_Normal,,,,,3Uem7asMJUW/lISTa8crFQ,,,,N,204,0
440,82339,829,10553,913,1,100,N,N,N,CP_Drtn,TT_Task,DT_FixedDUR2,RV_OK,TK_Complete,5000070010,Emergency Lighting -Method statement,2283,184,0,0,64,0,64,64,,,0,,2007-12-31 08:00,2008-01-07 17:00,2008-10-25 08:00,2008-10-24 17:00,,2008-10-02 08:00,2008-10-01 17:00,,,2007-12-31 08:00,2008-01-07 17:00,,,,,PT_Normal,,,,,nWZzpt1y70W48ajz1Ujmkg,,,,N,64,0
441,82340,829,10567,913,1,100,N,N,N,CP_Drtn,TT_Task,DT_FixedDUR2,RV_OK,TK_Complete,5000072000,Door Phone System -Method statement,2296,184,0,0,204,0,204,64,,,0,,2008-01-24 08:00,2008-01-31 17:00,2008-10-25 08:00,2008-10-24 17:00,,2008-10-02 08:00,2008-10-01 17:00,,,2008-01-24 08:00,2008-01-31 17:00,,,,,PT_Normal,,,,,qmKeKXl1zkm9jq5GZzBjkQ,,,,N,204,0
442,82341,829,10567,913,1,100,N,N,N,CP_Drtn,TT_Task,DT_FixedDUR2,RV_OK,TK_Complete,5000072002,CCTV System -Method statement,2296,288,0,0,204,0,204,64,,,0,,2008-02-09 08:00,2008-02-16 17:00,2008-11-07 08:00,2008-11-06 17:00,,2008-10-02 08:00,2008-10-01 17:00,,,2008-02-09 08:00,2008-02-16 17:00,,,,,PT_Normal,,,,,psKIgaAboEKhX6250pxg6Q,,,,N,204,0
443,82342,829,10553,913,1,100,N,N,N,CP_Drtn,TT_Task,DT_FixedDUR2,RV_OK,TK_Complete,5000072010,Door Phone System -Method statement,2283,184,0,0,64,0,64,64,,,0,,2008-01-16 08:00,2008-01-23 17:00,2008-10-25 08:00,2008-10-24 17:00,,2008-10-02 08:00,2008-10-01 17:00,,,2008-01-16 08:00,2008-01-23 17:00,,,,,PT_Normal,,,,,rgl9eHrsR0GtUxRxUtkv/w,,,,N,64,0
444,82343,829,10553,913,1,100,N,N,N,CP_Drtn,TT_Task,DT_FixedDUR2,RV_OK,TK_Complete,5000072012,CCTV System -Method statement,2283,288,0,0,64,0,64,64,,,0,,2008-02-01 08:00,2008-02-08 17:00,2008-11-07 08:00,2008-11-06 17:00,,2008-10-02 08:00,2008-10-01 17:00,,,2008-02-01 08:00,2008-02-08 17:00,,,,,PT_Normal,,,,,YrPIFvEPFE2WI5rczcL0/g,,,,N,64,0
445,82344,829,10567,913,1,100,N,N,N,CP_Drtn,TT_Task,DT_FixedDUR2,RV_OK,TK_Complete,5000074000,Fire Alarm -Method statement,2296,200,0,0,204,0,204,64,,,0,,2007-12-31 08:00,2008-01-07 17:00,2008-10-27 08:00,2008-10-26 17:00,,2008-10-02 08:00,2008-10-01 17:00,,,2007-12-31 08:00,2008-01-07 17:00,,,,,PT_Normal,,,,,hpmix9sAQEaDKCK/rb9PDA,,,,N,204,0
446,82345,829,10567,913,1,100,N,N,N,CP_Drtn,TT_Task,DT_FixedDUR2,RV_OK,TK_Complete,5000074002,Public Address system -Method statement,2296,288,0,0,204,0,204,64,,,0,,2008-02-01 08:00,2008-02-08 17:00,2008-11-07 08:00,2008-11-06 17:00,,2008-10-02 08:00,2008-10-01 17:00,,,2008-02-01 08:00,2008-02-08 17:00,,,,,PT_Normal,,,,,gz9I4TaoJUuKppCMVIzn1A,,,,N,204,0
447,82346,829,10553,913,1,100,N,N,N,CP_Drtn,TT_Task,DT_FixedDUR2,RV_OK,TK_Complete,5000074010,Fire Alarm -Method statement,2283,184,0,0,64,0,64,64,,,0,,2007-12-23 08:00,2007-12-30 17:00,2008-10-25 08:00,2008-10-24 17:00,,2008-10-02 08:00,2008-10-01 17:00,,,2007-12-23 08:00,2007-12-30 17:00,,,,,PT_Normal,,,,,KWjY6etjakaWIFnZrGJ4XQ,,,,N,64,0
448,82347,829,10553,913,1,100,N,N,N,CP_Drtn,TT_Task,DT_FixedDUR2,RV_OK,TK_Complete,5000074012,Public Address system -Method statement,2283,288,0,0,64,0,64,64,,,0,,2008-01-24 08:00,2008-01-31 17:00,2008-11-07 08:00,2008-11-06 17:00,,2008-10-02 08:00,2008-10-01 17:00,,,2008-01-24 08:00,2008-01-31 17:00,,,,,PT_Normal,,,,,nzvjz+lwp0STUKXDZYeSEQ,,,,N,64,0
449,82348,829,10567,913,1,100,N,N,N,CP_Drtn,TT_Task,DT_FixedDUR2,RV_OK,TK_Complete,5000076000,Telephone & Data -Method statement,2296,200,0,0,204,0,204,64,,,0,,2008-01-16 08:00,2008-01-23 17:00,2008-10-27 08:00,2008-10-26 17:00,,2008-10-02 08:00,2008-10-01 17:00,,,2008-01-16 08:00,2008-01-23 17:00,,,,,PT_Normal,,,,,eTpsYrrFC022NxWdeYvd0g,,,,N,204,0
450,82349,829,10553,913,1,100,N,N,N,CP_Drtn,TT_Task,DT_FixedDUR2,RV_OK,TK_Complete,5000076010,Telephone & Data -Method statement,2283,184,0,0,64,0,64,64,,,0,,2008-01-08 08:00,2008-01-15 17:00,2008-10-25 08:00,2008-10-24 17:00,,2008-10-02 08:00,2008-10-01 17:00,,,2008-01-08 08:00,2008-01-15 17:00,,,,,PT_Normal,,,,,JtFMIyNowEqRdvq6ralG1g,,,,N,64,0
451,82350,829,10575,913,1,100,N,N,N,CP_Drtn,TT_Task,DT_FixedDUR2,RV_OK,TK_Complete,5000080000,Road / Asphalt Work -Method statement,2296,280,0,0,204,0,204,64,,,0,,2008-02-29 08:00,2008-03-07 17:00,2008-11-06 08:00,2008-11-05 17:00,,2008-10-02 08:00,2008-10-01 17:00,,,2008-02-29 08:00,2008-03-07 17:00,,,,,PT_Normal,,,,,nnWrCsXXoU66C0M7HISyQA,,,,N,204,0
452,82351,829,10560,913,1,100,N,N,N,CP_Drtn,TT_Task,DT_FixedDUR2,RV_OK,TK_Complete,5000080010,Road / Asphalt Work -Method statement,2283,280,0,0,64,0,64,64,,,0,,2008-02-21 08:00,2008-02-28 17:00,2008-11-06 08:00,2008-11-05 17:00,,2008-10-02 08:00,2008-10-01 17:00,,,2008-02-21 08:00,2008-02-28 17:00,,,,,PT_Normal,,,,,0JrWAYfeSEOrY/krmMPR6w,,,,N,64,0
453,82352,829,10545,913,1,100,N,N,N,CP_Drtn,TT_Task,DT_FixedDUR2,RV_OK,TK_Complete,6000010000,Substructure Waterproofing System -Procurement,2296,0,0,0,148,0,148,48,,,0,,2007-12-23 08:00,2007-12-28 17:00,2008-10-02 08:00,2008-10-01 17:00,,2008-10-02 08:00,2008-10-01 17:00,,,2007-12-23 08:00,2007-12-28 17:00,,,,,PT_Normal,,,,,f32eQxwq/0ODkuQ1mKhCeQ,,,,N,148,0
454,82353,829,10545,913,1,100,N,N,N,CP_Drtn,TT_Task,DT_FixedDUR2,RV_OK,TK_Complete,6000018000,Internal & External Painting system -Procurement,2296,48,0,0,420,0,420,120,,,0,,2007-12-23 08:00,2008-01-06 17:00,2008-10-08 08:00,2008-10-07 17:00,,2008-10-02 08:00,2008-10-01 17:00,,,2007-12-23 08:00,2008-01-06 17:00,,,,,PT_Normal,,,,,ODv/WoEy1k6Mfp68BhApMg,,,,N,420,0
455,82354,829,10545,913,1,100,N,N,N,CP_Drtn,TT_Task,DT_FixedDUR2,RV_OK,TK_Complete,6000020000,Ceramic & Porcelain Tiles -Procurement,2296,240,0,0,1252,0,1252,352,,,0,,2008-01-08 08:00,2008-02-20 17:00,2008-11-01 08:00,2008-10-31 17:00,,2008-10-02 08:00,2008-10-01 17:00,,,2008-01-08 08:00,2008-02-20 17:00,,,,,PT_Normal,,,,,53I9L997KkGY5yyj9Y7bNA,,,,N,1252,0
456,82355,829,10545,913,1,100,N,N,N,CP_Drtn,TT_Task,DT_FixedDUR2,RV_OK,TK_Complete,6000022000,Wet Area Waterproofing system -Procurement,2296,208,0,0,420,0,420,120,,,0,,2008-01-24 08:00,2008-02-07 17:00,2008-10-28 08:00,2008-10-27 17:00,,2008-10-02 08:00,2008-10-01 17:00,,,2008-01-24 08:00,2008-02-07 17:00,,,,,PT_Normal,,,,,a7JO+fu6VEiws5tZzg6nmA,,,,N,420,0
457,82356,829,10545,913,1,100,N,N,N,CP_Drtn,TT_Task,DT_FixedDUR2,RV_OK,TK_Complete,6000022002,Roof Waterproofing System -Procurement,2296,328,0,0,420,0,420,120,,,0,,2008-01-16 08:00,2008-01-30 17:00,2008-11-12 08:00,2008-11-11 17:00,,2008-10-02 08:00,2008-10-01 17:00,,,2008-01-16 08:00,2008-01-30 17:00,,,,,PT_Normal,,,,,nTkdP40IN0qnCFUm17YS/Q,,,,N,420,0
458,82357,829,10545,913,1,100,N,N,N,CP_Drtn,TT_Task,DT_FixedDUR2,RV_OK,TK_Complete,6000022004,Water tank coating -Procurement,2296,1496,0,0,330,0,330,80,,,0,,2007-12-23 08:00,2008-01-01 17:00,2009-04-07 08:00,2009-04-06 17:00,,2008-10-02 08:00,2008-10-01 17:00,,,2007-12-23 08:00,2008-01-01 17:00,,,,,PT_Normal,,,,,SHNgG8CAgEugvwiCAyzhDA,,,,N,330,0
459,82358,829,10545,913,1,100,N,N,N,CP_Drtn,TT_Task,DT_FixedDUR2,RV_OK,TK_Complete,6000024000,Aluminum and Glazing Works -Procurement,2296,368,0,0,1252,0,1252,352,,,0,,2008-01-30 08:00,2008-03-13 17:00,2008-11-17 08:00,2008-11-16 17:00,,2008-10-02 08:00,2008-10-01 17:00,,,2008-01-30 08:00,2008-03-13 17:00,,,,,PT_Normal,,,,,NXg3pOHfZEuVQQhkgODxTw,,,,N,1252,0
460,82359,829,10545,913,1,100,N,N,N,CP_Drtn,TT_Task,DT_FixedDUR2,RV_OK,TK_Complete,6000024002,Staircase Handrails -Procurement,2296,1168,0,0,1664,0,1664,464,,,0,,2008-01-25 08:00,2008-03-22 17:00,2009-02-25 08:00,2009-02-24 17:00,,2008-10-02 08:00,2008-10-01 17:00,,,2008-01-25 08:00,2008-03-22 17:00,,,,,PT_Normal,,,,,NnZ8nE+IdkqtAo/fH3tHoQ,,,,N,1664,0
461,82360,829,10545,913,1,100,N,N,N,CP_Drtn,TT_Task,DT_FixedDUR2,RV_OK,TK_Complete,6000026000,Steel Doors -Procurement,2296,592,0,0,1664,0,1664,464,,,0,,2008-01-25 08:00,2008-03-22 17:00,2008-12-15 08:00,2008-12-14 17:00,,2008-10-02 08:00,2008-10-01 17:00,,,2008-01-25 08:00,2008-03-22 17:00,,,,,PT_Normal,,,,,peWpQGJM9k+NrL3KCcaAUw,,,,N,1664,0
462,82361,829,10545,913,1,100,N,N,N,CP_Drtn,TT_Task,DT_FixedDUR2,RV_OK,TK_Complete,6000030000,Wooden doors -Procurement,2296,320,0,0,1664,0,1664,464,,,0,,2008-01-24 08:00,2008-03-21 17:00,2008-11-11 08:00,2008-11-10 17:00,,2008-10-02 08:00,2008-10-01 17:00,,,2008-01-24 08:00,2008-03-21 17:00,,,,,PT_Normal,,,,,ZJ9zFhaMCEu76I9wmwUA3A,,,,N,1664,0
463,82362,829,10545,913,1,100,N,N,N,CP_Drtn,TT_Task,DT_FixedDUR2,RV_OK,TK_Complete,6000032000,Pantry cabinets -Procurement,2296,560,0,0,2488,0,2488,688,,,0,,2008-01-25 08:00,2008-04-19 17:00,2008-12-11 08:00,2008-12-10 17:00,,2008-10-02 08:00,2008-10-01 17:00,,,2008-01-25 08:00,2008-04-19 17:00,,,,,PT_Normal,,,,,aMKDeaQYvku3WB8ksUVGOA,,,,N,2488,0
464,82363,829,10545,913,1,100,N,N,N,CP_Drtn,TT_Task,DT_FixedDUR2,RV_OK,TK_Complete,6000032002,Wordrobes -Procurement,2296,576,0,0,2488,0,2488,688,,,0,,2008-01-25 08:00,2008-04-19 17:00,2008-12-13 08:00,2008-12-12 17:00,,2008-10-02 08:00,2008-10-01 17:00,,,2008-01-25 08:00,2008-04-19 17:00,,,,,PT_Normal,,,,,66mwG3q+u020YCy90UqC3Q,,,,N,2488,0
465,82364,829,10545,913,1,100,N,N,N,CP_Drtn,TT_Task,DT_FixedDUR2,RV_OK,TK_Complete,6000032004,Kitchen Sink -Procurement,2296,712,0,0,1664,0,1664,464,,,0,,2008-01-25 08:00,2008-03-22 17:00,2008-12-30 08:00,2008-12-29 17:00,,2008-10-02 08:00,2008-10-01 17:00,,,2008-01-25 08:00,2008-03-22 17:00,,,,,PT_Normal,,,,,5uN4BXV6FUWGXuR72NTiMA,,,,N,1664,0
466,82365,829,10545,913,1,100,N,N,N,CP_Drtn,TT_Task,DT_FixedDUR2,RV_OK,TK_Complete,6000032006,Vanity counters (PC) -Procurement,2296,416,0,0,2488,0,2488,688,,,0,,2008-01-24 08:00,2008-04-18 17:00,2008-11-23 08:00,2008-11-22 17:00,,2008-10-02 08:00,2008-10-01 17:00,,,2008-01-24 08:00,2008-04-18 17:00,,,,,PT_Normal,,,,,Pcdc1GwFWEu6r1eAmGkKiA,,,,N,2488,0
467,82366,829,10545,913,1,100,N,N,N,CP_Drtn,TT_Task,DT_FixedDUR2,RV_OK,TK_Complete,6000034000,False Ceiling Works -Procurement,2296,200,0,0,420,0,420,120,,,0,,2008-01-21 08:00,2008-02-04 17:00,2008-10-27 08:00,2008-10-26 17:00,,2008-10-02 08:00,2008-10-01 17:00,,,2008-01-21 08:00,2008-02-04 17:00,,,,,PT_Normal,,,,,Hp8TNIpREkqNyBX9VsMuRQ,,,,N,420,0
468,82367,829,10545,913,1,100,N,N,N,CP_Drtn,TT_Task,DT_FixedDUR2,RV_OK,TK_Complete,6000036000,Marble and stone Works -Procurement,2296,464,0,0,1252,0,1252,352,,,0,,2008-01-08 08:00,2008-02-20 17:00,2008-11-29 08:00,2008-11-28 17:00,,2008-10-02 08:00,2008-10-01 17:00,,,2008-01-08 08:00,2008-02-20 17:00,,,,,PT_Normal,,,,,TH1vfBKjSkuOXglvA2ng8g,,,,N,1252,0
469,82368,829,10545,913,1,100,N,N,N,CP_Drtn,TT_Task,DT_FixedDUR2,RV_OK,TK_Complete,6000038000,Epoxy Coating for Parking area & Marking -Procur,2296,928,0,0,420,0,420,120,,,0,,2007-12-23 08:00,2008-01-06 17:00,2009-01-26 08:00,2009-01-25 17:00,,2008-10-02 08:00,2008-10-01 17:00,,,2007-12-23 08:00,2008-01-06 17:00,,,,,PT_Normal,,,,,DfYA+2AJeE+2u9dHcCUpOw,,,,N,420,0
470,82369,829,10545,913,1,100,N,N,N,CP_Drtn,TT_Task,DT_FixedDUR2,RV_OK,TK_Complete,6000038002,Dust Proof Coating -Procurement,2296,1096,0,0,420,0,420,120,,,0,,2007-12-23 08:00,2008-01-06 17:00,2009-02-16 08:00,2009-02-15 17:00,,2008-10-02 08:00,2008-10-01 17:00,,,2007-12-23 08:00,2008-01-06 17:00,,,,,PT_Normal,,,,,cbnj67DZ00C1Qkoon5yOSw,,,,N,420,0
471,82370,829,10545,913,1,100,N,N,N,CP_Drtn,TT_Task,DT_FixedDUR2,RV_OK,TK_Complete,6000040000,Duplex stairs -Procurement,2296,384,0,0,2076,0,2076,576,,,0,,2007-12-31 08:00,2008-03-11 17:00,2008-11-19 08:00,2008-11-18 17:00,,2008-10-02 08:00,2008-10-01 17:00,,,2007-12-31 08:00,2008-03-11 17:00,,,,,PT_Normal,,,,,crEHUEOYmUKNPZd+C6H/Ew,,,,N,2076,0
472,82371,829,10545,913,1,100,N,N,N,CP_Drtn,TT_Task,DT_FixedDUR2,RV_OK,TK_Complete,6000042000,Signs -Procurement,2296,1096,0,0,626,0,626,176,,,0,,2008-01-26 08:00,2008-02-16 17:00,2009-02-16 08:00,2009-02-15 17:00,,2008-10-02 08:00,2008-10-01 17:00,,,2008-01-26 08:00,2008-02-16 17:00,,,,,PT_Normal,,,,,a78V3nk6s0aV6TfE4twaiw,,,,N,626,0
473,82372,829,10545,913,1,100,N,N,N,CP_Drtn,TT_Task,DT_FixedDUR2,RV_OK,TK_Complete,6000044000,Rubber Guards -Procurement,2296,928,0,0,420,0,420,120,,,0,,2007-12-23 08:00,2008-01-06 17:00,2009-01-26 08:00,2009-01-25 17:00,,2008-10-02 08:00,2008-10-01 17:00,,,2007-12-23 08:00,2008-01-06 17:00,,,,,PT_Normal,,,,,bzO0kaaaR0i7YrYcymN5Pg,,,,N,420,0
474,82373,829,10545,913,1,100,N,N,N,CP_Drtn,TT_Task,DT_FixedDUR2,RV_OK,TK_Complete,6000046000,Lift works -Procurement,2296,552,0,0,3106,0,3106,856,,,0,,2008-01-28 08:00,2008-05-13 17:00,2008-12-10 08:00,2008-12-09 17:00,,2008-10-02 08:00,2008-10-01 17:00,,,2008-01-28 08:00,2008-05-13 17:00,,,,,PT_Normal,,,,,eWr/qdnKoUWRkkAYsiERtg,,,,N,3106,0
475,82374,829,10545,913,1,100,N,N,N,CP_Drtn,TT_Task,DT_FixedDUR2,RV_OK,TK_Complete,6000048000,Refuse chute -Procurement,2296,648,0,0,1252,0,1252,352,,,0,,2008-01-18 08:00,2008-03-01 17:00,2008-12-22 08:00,2008-12-21 17:00,,2008-10-02 08:00,2008-10-01 17:00,,,2008-01-18 08:00,2008-03-01 17:00,,,,,PT_Normal,,,,,WVigpbInP0q3Q2lRFSXABQ,,,,N,1252,0
476,82375,829,10546,913,1,100,N,N,N,CP_Drtn,TT_Task,DT_FixedDUR2,RV_OK,TK_Complete,6000052000,Air Handling Units -Procurement,2296,1040,0,0,1516,0,1516,416,,,0,,2007-12-31 08:00,2008-02-20 17:00,2009-02-09 08:00,2009-02-08 17:00,,2008-10-02 08:00,2008-10-01 17:00,,,2007-12-31 08:00,2008-02-20 17:00,,,,,PT_Normal,,,,,zBWDD8Aj5UWPGanGV7+VIQ,,,,N,1516,0
477,82376,829,10546,913,1,100,N,N,N,CP_Drtn,TT_Task,DT_FixedDUR2,RV_OK,TK_Complete,6000052002,Fan Coil/Split/ Multi Split Units -Procurement,2296,200,0,0,1252,0,1252,352,,,0,,2007-12-31 08:00,2008-02-12 17:00,2008-10-27 08:00,2008-10-26 17:00,,2008-10-02 08:00,2008-10-01 17:00,,,2007-12-31 08:00,2008-02-12 17:00,,,,,PT_Normal,,,,,XXuPFRPNfU+47mFXpLV3YQ,,,,N,1252,0
478,82377,829,10546,913,1,100,N,N,N,CP_Drtn,TT_Task,DT_FixedDUR2,RV_OK,TK_Complete,6000052003,Fans -Procurement,2296,1040,0,0,1252,0,1252,352,,,0,,2007-12-31 08:00,2008-02-12 17:00,2009-02-09 08:00,2009-02-08 17:00,,2008-10-02 08:00,2008-10-01 17:00,,,2007-12-31 08:00,2008-02-12 17:00,,,,,PT_Normal,,,,,xoMaxjLl70+thZoyxuTC5g,,,,N,1252,0
479,82378,829,10546,913,1,100,N,N,N,CP_Drtn,TT_Task,DT_FixedDUR2,RV_OK,TK_Complete,6000052005,Air Control/ Fire / Smoke Dampers -Procurement,2296,200,0,0,824,0,824,224,,,0,,2007-12-31 08:00,2008-01-27 17:00,2008-10-27 08:00,2008-10-26 17:00,,2008-10-02 08:00,2008-10-01 17:00,,,2007-12-31 08:00,2008-01-27 17:00,,,,,PT_Normal,,,,,hJ1bylmAz0yytUXOSCN91w,,,,N,824,0
480,82379,829,10546,913,1,100,N,N,N,CP_Drtn,TT_Task,DT_FixedDUR2,RV_OK,TK_Complete,6000052006,Heat Exchangers -Procurement,2296,1040,0,0,1796,0,1796,496,,,0,,2008-01-15 08:00,2008-03-16 17:00,2009-02-09 08:00,2009-02-08 17:00,,2008-10-02 08:00,2008-10-01 17:00,,,2008-01-15 08:00,2008-03-16 17:00,,,,,PT_Normal,,,,,RNJA5jfNskyLqivZxBmwUw,,,,N,1796,0
481,82380,829,10546,913,1,100,N,N,N,CP_Drtn,TT_Task,DT_FixedDUR2,RV_OK,TK_Complete,6000052008,Chilled water pumps -Procurement,2296,1040,0,0,1664,0,1664,464,,,0,,2007-12-31 08:00,2008-02-26 17:00,2009-02-09 08:00,2009-02-08 17:00,,2008-10-02 08:00,2008-10-01 17:00,,,2007-12-31 08:00,2008-02-26 17:00,,,,,PT_Normal,,,,,0bbPRp3tsEWTwh0fhxvCbg,,,,N,1664,0
482,82381,829,10546,913,1,100,N,N,N,CP_Drtn,TT_Task,DT_FixedDUR2,RV_OK,TK_Complete,6000052050,A/C duct -Procurement,2296,184,0,0,420,0,420,120,,,0,,2007-12-31 08:00,2008-01-14 17:00,2008-10-25 08:00,2008-10-24 17:00,,2008-10-02 08:00,2008-10-01 17:00,,,2007-12-31 08:00,2008-01-14 17:00,,,,,PT_Normal,,,,,4BARNNCJR0mDxws8uN9Vkw,,,,N,420,0
483,82382,829,10546,913,1,100,N,N,N,CP_Drtn,TT_Task,DT_FixedDUR2,RV_OK,TK_Complete,6000052100,Chilled water pipes & valves -Procurement,2296,136,0,0,420,0,420,120,,,0,,2007-12-31 08:00,2008-01-14 17:00,2008-10-19 08:00,2008-10-18 17:00,,2008-10-02 08:00,2008-10-01 17:00,,,2007-12-31 08:00,2008-01-14 17:00,,,,,PT_Normal,,,,,rVnBAQUg3UKGRPWKHihfTw,,,,N,420,0
484,82383,829,10546,913,1,100,N,N,N,CP_Drtn,TT_Task,DT_FixedDUR2,RV_OK,TK_Complete,6000052350,Grills & diffusers -Procurement,2296,640,0,0,1252,0,1252,352,,,0,,2007-12-31 08:00,2008-02-12 17:00,2008-12-21 08:00,2008-12-20 17:00,,2008-10-02 08:00,2008-10-01 17:00,,,2007-12-31 08:00,2008-02-12 17:00,,,,,PT_Normal,,,,,EVl5hHVs5U+vGkg+RFB0aw,,,,N,1252,0
485,82384,829,10545,913,1,100,N,N,N,CP_Drtn,TT_Task,DT_FixedDUR2,RV_OK,TK_Complete,6000054000,Sanitary Ware & Accessories -Procurement,2296,488,0,0,1664,0,1664,464,,,0,,2007-12-31 08:00,2008-02-26 17:00,2008-12-02 08:00,2008-12-01 17:00,,2008-10-02 08:00,2008-10-01 17:00,,,2007-12-31 08:00,2008-02-26 17:00,,,,,PT_Normal,,,,,IWN0kavu4EGRkjYIj2BrDg,,,,N,1664,0
486,82385,829,10545,913,1,100,N,N,N,CP_Drtn,TT_Task,DT_FixedDUR2,RV_OK,TK_Complete,6000054002,Mirrors -Procurement,2296,504,0,0,420,0,420,120,,,0,,2007-12-31 08:00,2008-01-14 17:00,2008-12-04 08:00,2008-12-03 17:00,,2008-10-02 08:00,2008-10-01 17:00,,,2007-12-31 08:00,2008-01-14 17:00,,,,,PT_Normal,,,,,TODuNC/Y1kyRCLgy2XVctQ,,,,N,420,0
487,82386,829,10545,913,1,100,N,N,N,CP_Drtn,TT_Task,DT_FixedDUR2,RV_OK,TK_Complete,6000054004,Concealed Flushing Cistern -Procurement,2296,376,0,0,1664,0,1664,464,,,0,,2007-12-31 08:00,2008-02-26 17:00,2008-11-18 08:00,2008-11-17 17:00,,2008-10-02 08:00,2008-10-01 17:00,,,2007-12-31 08:00,2008-02-26 17:00,,,,,PT_Normal,,,,,MTrqInGqHk2nsLQnysQFWg,,,,N,1664,0
488,82387,829,10546,913,1,100,N,N,N,CP_Drtn,TT_Task,DT_FixedDUR2,RV_OK,TK_Complete,6000054006,Booster Pump Set -Procurement,2296,920,0,0,1664,0,1664,464,,,0,,2008-01-15 08:00,2008-03-12 17:00,2009-01-25 08:00,2009-01-24 17:00,,2008-10-02 08:00,2008-10-01 17:00,,,2008-01-15 08:00,2008-03-12 17:00,,,,,PT_Normal,,,,,YyGPAegRS0iW82kKQ2rp6Q,,,,N,1664,0
489,82388,829,10546,913,1,100,N,N,N,CP_Drtn,TT_Task,DT_FixedDUR2,RV_OK,TK_Complete,6000054008,Water heaters -Procurement,2296,200,0,0,972,0,972,272,,,0,,2007-12-31 08:00,2008-02-02 17:00,2008-10-27 08:00,2008-10-26 17:00,,2008-10-02 08:00,2008-10-01 17:00,,,2007-12-31 08:00,2008-02-02 17:00,,,,,PT_Normal,,,,,Z0exibeEgEu9lx9YnDH6FQ,,,,N,972,0
490,82389,829,10546,913,1,100,N,N,N,CP_Drtn,TT_Task,DT_FixedDUR2,RV_OK,TK_Complete,6000054050,Water supply pipes & valves -Procurement,2296,200,0,0,420,0,420,120,,,0,,2007-12-31 08:00,2008-01-14 17:00,2008-10-27 08:00,2008-10-26 17:00,,2008-10-02 08:00,2008-10-01 17:00,,,2007-12-31 08:00,2008-01-14 17:00,,,,,PT_Normal,,,,,uAzUY+rsQEStpteMQ9pjwA,,,,N,420,0
491,82390,829,10546,913,1,100,N,N,N,CP_Drtn,TT_Task,DT_FixedDUR2,RV_OK,TK_Complete,6000056000,Submersible pump set -Procurement,2296,920,0,0,1252,0,1252,352,,,0,,2008-01-15 08:00,2008-02-27 17:00,2009-01-25 08:00,2009-01-24 17:00,,2008-10-02 08:00,2008-10-01 17:00,,,2008-01-15 08:00,2008-02-27 17:00,,,,,PT_Normal,,,,,Md/QclJVxEmL0195T2AVxw,,,,N,1252,0
492,82391,829,10546,913,1,100,N,N,N,CP_Drtn,TT_Task,DT_FixedDUR2,RV_OK,TK_Complete,6000056050,Drainage pipes -Procurement,2296,112,0,0,420,0,420,120,,,0,,2007-12-31 08:00,2008-01-14 17:00,2008-10-16 08:00,2008-10-15 17:00,,2008-10-02 08:00,2008-10-01 17:00,,,2007-12-31 08:00,2008-01-14 17:00,,,,,PT_Normal,,,,,qAWIkVJEVk21D1F1T6Gl1w,,,,N,420,0
493,82392,829,10546,913,1,100,N,N,N,CP_Drtn,TT_Task,DT_FixedDUR2,RV_OK,TK_Complete,6000058000,Fire fighting pump set -Procurement,2296,872,0,0,1664,0,1664,464,,,0,,2007-12-31 08:00,2008-02-26 17:00,2009-01-19 08:00,2009-01-18 17:00,,2008-10-02 08:00,2008-10-01 17:00,,,2007-12-31 08:00,2008-02-26 17:00,,,,,PT_Normal,,,,,IrVFzmQrbkSfHvaEPoWBBA,,,,N,1664,0
494,82393,829,10546,913,1,100,N,N,N,CP_Drtn,TT_Task,DT_FixedDUR2,RV_OK,TK_Complete,6000058050,Fire fighting pipes & valves -Procurement,2296,200,0,0,420,0,420,120,,,0,,2007-12-31 08:00,2008-01-14 17:00,2008-10-27 08:00,2008-10-26 17:00,,2008-10-02 08:00,2008-10-01 17:00,,,2007-12-31 08:00,2008-01-14 17:00,,,,,PT_Normal,,,,,XTyoXwGhekmGuLFl+Sv0yg,,,,N,420,0
495,82394,829,10546,913,1,100,N,N,N,CP_Drtn,TT_Task,DT_FixedDUR2,RV_OK,TK_Complete,6000060000,Gas meter & leak detector -Procurement,2296,632,0,0,1252,0,1252,352,,,0,,2007-12-31 08:00,2008-02-12 17:00,2008-12-20 08:00,2008-12-19 17:00,,2008-10-02 08:00,2008-10-01 17:00,,,2007-12-31 08:00,2008-02-12 17:00,,,,,PT_Normal,,,,,l8xVQzn7fU+F7Ovpg4DDPQ,,,,N,1252,0
496,82395,829,10546,913,1,100,N,N,N,CP_Drtn,TT_Task,DT_FixedDUR2,RV_OK,TK_Complete,6000062000,Building Management System (BMS) -Procurement,2296,184,0,0,1664,0,1664,464,,,0,,2007-12-31 08:00,2008-02-26 17:00,2008-10-25 08:00,2008-10-24 17:00,,2008-10-02 08:00,2008-10-01 17:00,,,2007-12-31 08:00,2008-02-26 17:00,,,,,PT_Normal,,,,,XTlG++oIlUS7LBnZTVcw8w,,,,N,1664,0
497,82396,829,10549,913,1,100,N,N,N,CP_Drtn,TT_Task,DT_FixedDUR2,RV_OK,TK_Complete,6000068000,Standby Generator -Procurement,2296,888,0,0,824,0,824,224,,,0,,2007-12-31 08:00,2008-01-27 17:00,2009-01-21 08:00,2009-01-20 17:00,,2008-10-02 08:00,2008-10-01 17:00,,,2007-12-31 08:00,2008-01-27 17:00,,,,,PT_Normal,,,,,b6FYMHx2/EyiZniI2ezQJA,,,,N,824,0
498,82397,829,10549,913,1,100,N,N,N,CP_Drtn,TT_Task,DT_FixedDUR2,RV_OK,TK_Complete,6000068002,"MDBs, SMDBs, MCCs, VFDs, CB & ATS -Procurement",2296,888,0,0,1664,0,1664,464,,,0,,2008-01-08 08:00,2008-03-05 17:00,2009-01-21 08:00,2009-01-20 17:00,,2008-10-02 08:00,2008-10-01 17:00,,,2008-01-08 08:00,2008-03-05 17:00,,,,,PT_Normal,,,,,C0LT5CRceUq6thwxLTokBg,,,,N,1664,0
499,82398,829,10549,913,1,100,N,N,N,CP_Drtn,TT_Task,DT_FixedDUR2,RV_OK,TK_Complete,6000068004,Light Fittings -Procurement,2296,576,0,0,1252,0,1252,352,,,0,,2007-12-31 08:00,2008-02-12 17:00,2008-12-13 08:00,2008-12-12 17:00,,2008-10-02 08:00,2008-10-01 17:00,,,2007-12-31 08:00,2008-02-12 17:00,,,,,PT_Normal,,,,,LL25vRCFfECgX1nVuUQkyA,,,,N,1252,0
500,82399,829,10549,912,1,100,N,N,N,CP_Drtn,TT_Task,DT_FixedDUR2,RV_OK,TK_Complete,6000068005,Final Db's -Procurement,2296,536,0,0,1664,0,1664,464,,,0,,2008-01-08 08:00,2008-03-16 17:00,2008-12-20 08:00,2008-12-18 17:00,,2008-10-02 08:00,2008-10-01 17:00,,,2008-01-08 08:00,2008-03-16 17:00,,,,,PT_Normal,,,,,6QeNLFzfCUeqXDb9NfQDNA,,,,N,1664,0
501,82400,829,10549,913,1,100,N,N,N,CP_Drtn,TT_Task,DT_FixedDUR2,RV_OK,TK_Complete,6000068050,Single core wires -Procurement,2296,200,0,0,420,0,420,120,,,0,,2007-12-31 08:00,2008-01-14 17:00,2008-10-27 08:00,2008-10-26 17:00,,2008-10-02 08:00,2008-10-01 17:00,,,2007-12-31 08:00,2008-01-14 17:00,,,,,PT_Normal,,,,,rvpjWitvsEGr7B6NzuQJGg,,,,N,420,0
502,82401,829,10549,913,1,100,N,N,N,CP_Drtn,TT_Task,DT_FixedDUR2,RV_OK,TK_Complete,6000068150,LV feeder cables -Procurement,2296,264,0,0,420,0,420,120,,,0,,2007-12-31 08:00,2008-01-14 17:00,2008-11-04 08:00,2008-11-03 17:00,,2008-10-02 08:00,2008-10-01 17:00,,,2007-12-31 08:00,2008-01-14 17:00,,,,,PT_Normal,,,,,zTF9r9OUr06eCAFscT87ng,,,,N,420,0
503,82402,829,10549,913,1,100,N,N,N,CP_Drtn,TT_Task,DT_FixedDUR2,RV_OK,TK_Complete,6000068600,Switches & sockets -Procurement,2296,864,0,0,1664,0,1664,464,,,0,,2007-12-31 08:00,2008-02-26 17:00,2009-01-18 08:00,2009-01-17 17:00,,2008-10-02 08:00,2008-10-01 17:00,,,2007-12-31 08:00,2008-02-26 17:00,,,,,PT_Normal,,,,,vY/DZRhxg0eaded62ajv1g,,,,N,1664,0
504,82403,829,10549,913,1,100,N,N,N,CP_Drtn,TT_Task,DT_FixedDUR2,RV_OK,TK_Complete,6000070000,Battery Supply System -Procurement,2296,1096,0,0,1252,0,1252,352,,,0,,2008-01-08 08:00,2008-02-20 17:00,2009-02-16 08:00,2009-02-15 17:00,,2008-10-02 08:00,2008-10-01 17:00,,,2008-01-08 08:00,2008-02-20 17:00,,,,,PT_Normal,,,,,tc0ag9Dsr0ST52Lr0QYZMQ,,,,N,1252,0
505,82404,829,10549,913,1,100,N,N,N,CP_Drtn,TT_Task,DT_FixedDUR2,RV_OK,TK_Complete,6000072000,Audio Intercom System -Procurement,2296,184,0,0,1252,0,1252,352,,,0,,2008-01-08 08:00,2008-02-20 17:00,2008-10-25 08:00,2008-10-24 17:00,,2008-10-02 08:00,2008-10-01 17:00,,,2008-01-08 08:00,2008-02-20 17:00,,,,,PT_Normal,,,,,if3q1Rr8aUGh7MjzgWh7GQ,,,,N,1252,0
506,82405,829,10549,913,1,100,N,N,N,CP_Drtn,TT_Task,DT_FixedDUR2,RV_OK,TK_Complete,6000072002,CCTV System -Procurement,2296,288,0,0,824,0,824,224,,,0,,2008-01-08 08:00,2008-02-04 17:00,2008-11-07 08:00,2008-11-06 17:00,,2008-10-02 08:00,2008-10-01 17:00,,,2008-01-08 08:00,2008-02-04 17:00,,,,,PT_Normal,,,,,3M+rumd6+kuGHVv6IV3NbQ,,,,N,824,0
507,82406,829,10549,913,1,100,N,N,N,CP_Drtn,TT_Task,DT_FixedDUR2,RV_OK,TK_Complete,6000072004,Gate barriers -Procurement,2296,1112,0,0,824,0,824,224,,,0,,2007-12-31 08:00,2008-01-27 17:00,2009-02-18 08:00,2009-02-17 17:00,,2008-10-02 08:00,2008-10-01 17:00,,,2007-12-31 08:00,2008-01-27 17:00,,,,,PT_Normal,,,,,Tv53cTHJ9kCqIK0/T+n8nA,,,,N,824,0
508,82407,829,10549,913,1,100,N,N,N,CP_Drtn,TT_Task,DT_FixedDUR2,RV_OK,TK_Complete,6000074000,Fire Alarm System -Procurement,2296,640,0,0,1664,0,1664,464,,,0,,2008-01-08 08:00,2008-03-05 17:00,2008-12-21 08:00,2008-12-20 17:00,,2008-10-02 08:00,2008-10-01 17:00,,,2008-01-08 08:00,2008-03-05 17:00,,,,,PT_Normal,,,,,aGZLkRoRB0iYmw20CDIX7w,,,,N,1664,0
509,82408,829,10549,913,1,100,N,N,N,CP_Drtn,TT_Task,DT_FixedDUR2,RV_OK,TK_Complete,6000074050,Fire resistant cables -Procurement,2296,200,0,0,420,0,420,120,,,0,,2007-12-31 08:00,2008-01-14 17:00,2008-10-27 08:00,2008-10-26 17:00,,2008-10-02 08:00,2008-10-01 17:00,,,2007-12-31 08:00,2008-01-14 17:00,,,,,PT_Normal,,,,,ItlqtFLz00e7LYoGpQ6ZSw,,,,N,420,0
510,82409,829,10549,913,1,100,N,N,N,CP_Drtn,TT_Task,DT_FixedDUR2,RV_OK,TK_Complete,6000076050,Structured cabling -Procurement,2296,200,0,0,824,0,824,224,,,0,,2007-12-31 08:00,2008-01-27 17:00,2008-10-27 08:00,2008-10-26 17:00,,2008-10-02 08:00,2008-10-01 17:00,,,2007-12-31 08:00,2008-01-27 17:00,,,,,PT_Normal,,,,,yLDitaZ7CUKXAk2qDovIFg,,,,N,824,0
511,82410,829,10545,913,1,100,N,N,N,CP_Drtn,TT_Task,DT_FixedDUR2,RV_OK,TK_Complete,6000080002,Kerbstone -Procurement,2296,864,0,0,420,0,420,120,,,0,,2008-01-09 08:00,2008-01-23 17:00,2009-01-18 08:00,2009-01-17 17:00,,2008-10-02 08:00,2008-10-01 17:00,,,2008-01-09 08:00,2008-01-23 17:00,,,,,PT_Normal,,,,,E9gn169FnEekfNHD50ktWA,,,,N,420,0
512,82411,829,10545,913,1,100,N,N,N,CP_Drtn,TT_Task,DT_FixedDUR2,RV_OK,TK_Complete,6000080004,Interlocking tiles -Procurement,2296,1032,0,0,420,0,420,120,,,0,,2008-01-09 08:00,2008-01-23 17:00,2009-02-08 08:00,2009-02-07 17:00,,2008-10-02 08:00,2008-10-01 17:00,,,2008-01-09 08:00,2008-01-23 17:00,,,,,PT_Normal,,,,,InIk/BhZAEe53qK9qxXm1w,,,,N,420,0
513,82412,829,10809,912,1,0,N,N,N,CP_Drtn,TT_Task,DT_FixedDUR2,RV_OK,TK_NotStart,710BM00000,Pre-Snagging & Disnagging,2296,584,0,120,0,1170,1170,120,0,0,0,,,,2009-03-05 08:00,2009-03-22 17:00,,2008-12-10 08:00,2008-12-27 17:00,2008-12-10 08:00,2008-12-27 17:00,2008-12-10 08:00,2008-12-27 17:00,,,,,PT_Normal,,,,,7iVo+ZQhLECndB0kbjZyBw,,,,N,0,0
514,82413,829,11387,912,1,100,N,N,N,CP_Drtn,TT_Task,DT_FixedDUR2,RV_OK,TK_Complete,710BM04050,Excavation & compaction,2306,0,0,0,589722.4,0,589722.4,160,,,0,,2007-12-17 08:00,2008-01-13 17:00,2008-10-02 08:00,2008-10-01 17:00,,2008-10-02 08:00,2008-10-01 17:00,,,2007-12-17 08:00,2008-01-13 17:00,,,,,PT_Normal,,,,,TaOT/hJ830eqDeW3yCzKLA,,,,N,589722.4,0
515,82414,829,11387,912,1,100,N,N,N,CP_Drtn,TT_Task,DT_FixedDUR2,RV_OK,TK_Complete,710BM04100,Anti-termite,2306,0,0,0,105490.17,0,105490.17,72,,,0,,2008-01-14 08:00,2008-01-23 17:00,2008-10-02 08:00,2008-10-01 17:00,,2008-10-02 08:00,2008-10-01 17:00,,,2008-01-14 08:00,2008-01-23 17:00,,,,,PT_Normal,,,,,8wdz0EIPGU+BGn3j/ZFyOQ,,,,N,105490.17,0
516,82415,829,11387,912,1,100,N,N,N,CP_Drtn,TT_Task,DT_FixedDUR2,RV_OK,TK_Complete,710BM04150,Engineering filling under slab on fill,2306,0,0,0,144935.8,0,144935.8,176,,,0,,2008-03-01 08:00,2008-03-26 17:00,2008-10-02 08:00,2008-10-01 17:00,,2008-10-02 08:00,2008-10-01 17:00,,,2008-03-01 08:00,2008-03-26 17:00,,,,,PT_Normal,,,,,Ll2ovNIWBU+6tziOBGYuJQ,,,,N,144935.8,0
517,82416,829,11387,912,1,100,N,N,N,CP_Drtn,TT_Task,DT_FixedDUR2,RV_OK,TK_Complete,710BM04151,BF to external sides of the retaining walls,2306,208,0,0,32064,0,32064,120,,,0,,2008-07-08 08:00,2008-07-24 17:00,2008-11-02 08:00,2008-11-01 17:00,,2008-10-02 08:00,2008-10-01 17:00,,,2008-07-08 08:00,2008-07-24 17:00,,,,,PT_Normal,,,,,91nlmRyj0U2K7hlQBvkWlA,,,,N,32064,0
518,82417,829,11387,912,1,100,N,N,N,CP_Drtn,TT_Task,DT_FixedDUR2,RV_OK,TK_Complete,710BM04154,Backfilling under slab on grade,2306,0,0,0,48608.2,0,48608.2,120,,,0,,2008-02-28 08:00,2008-03-16 17:00,2008-10-02 08:00,2008-10-01 17:00,,2008-10-02 08:00,2008-10-01 17:00,,,2008-02-28 08:00,2008-03-16 17:00,,,,,PT_Normal,,,,,19DEI8EUb0+yjtHveN0WBA,,,,N,48608.2,0
519,82418,829,11544,912,1,100,N,N,N,CP_Drtn,TT_Task,DT_FixedDUR2,RV_OK,TK_Complete,710BM06050,Blinding under raft slab,2306,0,0,0,76790,0,76790,72,,,0,,2008-01-14 08:00,2008-01-23 17:00,2008-10-02 08:00,2008-10-01 17:00,,2008-10-02 08:00,2008-10-01 17:00,,,2008-01-14 08:00,2008-01-23 17:00,,,,,PT_Normal,,,,,tlp0D7kZAEKKjCeoJYWJ0w,,,,N,76790,0
520,82419,829,11544,912,1,100,N,N,N,CP_Drtn,TT_Task,DT_FixedDUR2,RV_OK,TK_Complete,710BM06051,Blinding under slab on fill,2306,0,0,0,69088,0,69088,128,,,0,,2008-03-12 08:00,2008-03-31 17:00,2008-10-02 08:00,2008-10-01 17:00,,2008-10-02 08:00,2008-10-01 17:00,,,2008-03-12 08:00,2008-03-31 17:00,,,,,PT_Normal,,,,,WaMn1tJ6mkqyDvBrijVDJg,,,,N,69088,0
521,82420,829,11544,912,1,100,N,N,N,CP_Drtn,TT_Task,DT_FixedDUR2,RV_OK,TK_Complete,710BM06054,Blinding under ground beams & slab on grade,2306,0,0,0,26790.14,0,26790.14,120,,,0,,2008-03-11 08:00,2008-03-29 17:00,2008-10-02 08:00,2008-10-01 17:00,,2008-10-02 08:00,2008-10-01 17:00,,,2008-03-11 08:00,2008-03-29 17:00,,,,,PT_Normal,,,,,3QjqCyBtEUyQIFa8pPn9XA,,,,N,26790.14,0
522,82421,829,11544,912,1,100,N,N,N,CP_Drtn,TT_Task,DT_FixedDUR2,RV_OK,TK_Complete,710BM06150,Construction of raft slab,2306,0,0,0,272122,0,272122,160,12257280,12257280,0,,2008-01-22 08:00,2008-02-13 17:00,2008-10-02 08:00,2008-10-01 17:00,,2008-10-02 08:00,2008-10-01 17:00,,,2008-01-22 08:00,2008-02-13 17:00,,,,,PT_Normal,,,,,agEfOLmRQkWcaT9IPSEUig,,,,N,272122,12257280
523,82422,829,11544,912,1,100,N,N,N,CP_Drtn,TT_Task,DT_FixedDUR2,RV_OK,TK_Complete,710BM06200,Neck columns & walls,2306,0,0,0,40151.5,0,40151.5,128,937064,937064,0,,2008-02-04 08:00,2008-02-21 17:00,2008-10-02 08:00,2008-10-01 17:00,,2008-10-02 08:00,2008-10-01 17:00,,,2008-02-04 08:00,2008-02-21 17:00,,,,,PT_Normal,,,,,kDKvB7CpI0u08K0EbVrV7w,,,,N,40151.5,937064
524,82423,829,11544,912,1,100,N,N,N,CP_Drtn,TT_Task,DT_FixedDUR2,RV_OK,TK_Complete,710BM06300,Construction of slab on fill,2306,0,0,0,67571.8,0,67571.8,160,2838400,2838400,0,,2008-03-13 08:00,2008-04-06 17:00,2008-10-02 08:00,2008-10-01 17:00,,2008-10-02 08:00,2008-10-01 17:00,,,2008-03-13 08:00,2008-04-06 17:00,,,,,PT_Normal,,,,,M0k/4QlxFUSXWwfijwhj2Q,,,,N,67571.8,2838400
525,82424,829,11544,912,1,100,N,N,N,CP_Drtn,TT_Task,DT_FixedDUR2,RV_OK,TK_Complete,710BM06301,Construction of slab on grade & ground beams,2306,0,0,0,25578,0,25578,120,1072000,1072000,0,,2008-04-01 08:00,2008-04-17 17:00,2008-10-02 08:00,2008-10-01 17:00,,2008-10-02 08:00,2008-10-01 17:00,,,2008-04-01 08:00,2008-04-17 17:00,,,,,PT_Normal,,,,,6IMyynUoJkq2PHY9sS/HNw,,,,N,25578,1072000
526,82425,829,11524,912,1,100,N,N,N,CP_Drtn,TT_Task,DT_FixedDUR2,RV_OK,TK_Complete,710BM08050,Block works as permanent shutters for raft slab,2306,0,0,0,8290,0,9924,120,,1634,0,,2008-01-15 08:00,2008-01-31 17:00,2008-10-02 08:00,2008-10-01 17:00,,2008-10-02 08:00,2008-10-01 17:00,,,2008-01-15 08:00,2008-01-31 17:00,,,,,PT_Normal,,,,,mmIvOFryk0iq1rCGyiPznw,,,,N,8290,1634
527,82426,829,11524,912,1,100,N,N,N,CP_Drtn,TT_Task,DT_FixedDUR2,RV_OK,TK_Complete,710BM08051,Block works as permanent shutters for GB,2306,0,0,0,5760,0,6888,120,,1128,0,,2008-03-16 08:00,2008-04-02 17:00,2008-10-02 08:00,2008-10-01 17:00,,2008-10-02 08:00,2008-10-01 17:00,,,2008-03-16 08:00,2008-04-02 17:00,,,,,PT_Normal,,,,,NE5rB3/qpk6n0kzdJyLcNQ,,,,N,5760,1128
528,82427,829,11523,912,1,100,N,N,N,CP_Drtn,TT_Task,DT_FixedDUR2,RV_OK,TK_Complete,710BM10050,W/P for raft slab,2306,0,0,0,108475.6,0,108475.6,120,,,0,,2008-01-19 08:00,2008-02-04 17:00,2008-10-02 08:00,2008-10-01 17:00,,2008-10-02 08:00,2008-10-01 17:00,,,2008-01-19 08:00,2008-02-04 17:00,,,,,PT_Normal,,,,,1gj16gT3ykiucb/qxR3I+w,,,,N,108475.6,0
529,82428,829,11523,912,1,100,N,N,N,CP_Drtn,TT_Task,DT_FixedDUR2,RV_OK,TK_Complete,710BM10051,W/P for ground beams & slab on grade,2306,0,0,0,35236.4,0,35236.4,120,,,0,,2008-03-22 08:00,2008-04-07 17:00,2008-10-02 08:00,2008-10-01 17:00,,2008-10-02 08:00,2008-10-01 17:00,,,2008-03-22 08:00,2008-04-07 17:00,,,,,PT_Normal,,,,,tjPYa5YArUugcwYwlEZcJQ,,,,N,35236.4,0
530,82429,829,11523,912,1,100,N,N,N,CP_Drtn,TT_Task,DT_FixedDUR2,RV_OK,TK_Complete,710BM10100,W/P externally for retaining walls,2306,208,0,0,75201.8,0,75201.8,120,,,0,,2008-06-21 08:00,2008-07-07 17:00,2008-11-02 08:00,2008-11-01 17:00,,2008-10-02 08:00,2008-10-01 17:00,,,2008-06-21 08:00,2008-07-07 17:00,,,,,PT_Normal,,,,,yfqGgYLlkECjOFfwM+Yjwg,,,,N,75201.8,0
531,82430,829,11523,912,1,100,N,N,N,CP_Drtn,TT_Task,DT_FixedDUR2,RV_OK,TK_Complete,710BM10150,Screed protection for W/P under raft slab,2306,0,0,0,84388.4,0,84388.4,120,,,0,,2008-01-20 08:00,2008-02-05 17:00,2008-10-02 08:00,2008-10-01 17:00,,2008-10-02 08:00,2008-10-01 17:00,,,2008-01-20 08:00,2008-02-05 17:00,,,,,PT_Normal,,,,,pwXvpUg1dk28LnPrzowKFQ,,,,N,84388.4,0
532,82431,829,11523,912,1,100,N,N,N,CP_Drtn,TT_Task,DT_FixedDUR2,RV_OK,TK_Complete,710BM10151,Screed protection for W/P of GB & SOG,2306,0,0,0,26109.8,0,26109.8,120,,,0,,2008-03-23 08:00,2008-04-08 17:00,2008-10-02 08:00,2008-10-01 17:00,,2008-10-02 08:00,2008-10-01 17:00,,,2008-03-23 08:00,2008-04-08 17:00,,,,,PT_Normal,,,,,dX1B18nu0kOJdcPCeRUVKw,,,,N,26109.8,0
533,82432,829,11714,912,1,100,N,N,N,CP_Drtn,TT_Task,DT_FixedDUR2,RV_OK,TK_Complete,710BM12050,Columns & walls up to GL,2306,0,0,0,296580.4,0,296580.4,160,8313096,8313096,0,,2008-04-09 08:00,2008-05-01 17:00,2008-10-02 08:00,2008-10-01 17:00,,2008-10-02 08:00,2008-10-01 17:00,,,2008-04-09 08:00,2008-05-01 17:00,,,,,PT_Normal,,,,,tRVybjGVVUa0j3hHBZWFXw,,,,N,296580.4,8313096
534,82433,829,11714,912,1,100,N,N,N,CP_Drtn,TT_Task,DT_FixedDUR2,RV_OK,TK_Complete,710BM12100,Retaining walls up to GL,2306,0,0,0,135612.4,0,135612.4,160,3216744,3216744,0,,2008-04-19 08:00,2008-05-11 17:00,2008-10-02 08:00,2008-10-01 17:00,,2008-10-02 08:00,2008-10-01 17:00,,,2008-04-19 08:00,2008-05-11 17:00,,,,,PT_Normal,,,,,HqIBV2njH0WzC7HFueJpmg,,,,N,135612.4,3216744
535,82434,829,11714,912,1,100,N,N,N,CP_Drtn,TT_Task,DT_FixedDUR2,RV_OK,TK_Complete,710BM12150,Ramp walls & slabs,2306,0,0,0,24486.2,0,24486.2,120,394216,394216,0,,2008-04-07 08:00,2008-04-23 17:00,2008-10-02 08:00,2008-10-01 17:00,,2008-10-02 08:00,2008-10-01 17:00,,,2008-04-07 08:00,2008-04-23 17:00,,,,,PT_Normal,,,,,kCYP6liguEqUQcJFC6yAyA,,,,N,24486.2,394216
536,82435,829,11714,912,1,100,N,N,N,CP_Drtn,TT_Task,DT_FixedDUR2,RV_OK,TK_Complete,710BM12200,Slab @ GL level,2306,0,0,0,62392,0,62392,160,2423568,2423568,0,,2008-05-17 08:00,2008-06-08 17:00,2008-10-02 08:00,2008-10-01 17:00,,2008-10-02 08:00,2008-10-01 17:00,,,2008-05-17 08:00,2008-06-08 17:00,,,,,PT_Normal,,,,,z8LMPKSYAUmRU1zqTrTFPA,,,,N,62392,2423568
537,82436,829,11714,912,1,100,N,N,N,CP_Drtn,TT_Task,DT_FixedDUR2,RV_OK,TK_Complete,710BM12210,Slab @ Landscape level,2306,0,0,0,54549.76,0,54549.76,160,2118161.12,2118161.12,0,,2008-04-30 08:00,2008-05-22 17:00,2008-10-02 08:00,2008-10-01 17:00,,2008-10-02 08:00,2008-10-01 17:00,,,2008-04-30 08:00,2008-05-22 17:00,,,,,PT_Normal,,,,,8kr5NswfxkeZFzcmJ/4uTw,,,,N,54549.76,2118161.12
538,82437,829,11714,912,1,100,N,N,N,CP_Drtn,TT_Task,DT_FixedDUR2,RV_OK,TK_Complete,710BM12250,Staircases BM to GL,2306,208,0,0,4430.2,0,4430.2,128,82312,82312,0,,2008-05-21 08:00,2008-06-08 17:00,2008-11-02 08:00,2008-11-01 17:00,,2008-10-02 08:00,2008-10-01 17:00,,,2008-05-21 08:00,2008-06-08 17:00,,,,,PT_Normal,,,,,u0ZPGg9um0udlhzMtJxYzA,,,,N,4430.2,82312
539,82438,829,11351,912,1,100,N,N,N,CP_Drtn,TT_Task,DT_FixedDUR2,RV_OK,TK_Complete,710BM14050,Block walls,2306,304,0,0,24321,0,30073.5,160,,5752.5,0,,2008-06-21 08:00,2008-07-13 17:00,2008-11-16 08:00,2008-11-15 17:00,,2008-10-02 08:00,2008-10-01 17:00,,,2008-06-21 08:00,2008-07-13 17:00,,,,,PT_Normal,,,,,Esogu0LtkE6dsUO5GPlOtw,,,,N,24321,5752.5
540,82439,829,11336,912,1,100,N,N,N,CP_Drtn,TT_Task,DT_FixedDUR2,RV_OK,TK_Complete,710BM16050,Internal plaster works,2306,304,0,0,125957.7,0,125957.7,120,,,0,,2008-07-26 08:00,2008-08-12 17:00,2008-11-16 08:00,2008-11-15 17:00,,2008-10-02 08:00,2008-10-01 17:00,,,2008-07-26 08:00,2008-08-12 17:00,,,,,PT_Normal,,,,,DLc2aXdWF0WMT+K9QgPLsw,,,,N,125957.7,0
541,82440,829,11329,912,1,100,N,N,N,CP_Drtn,TT_Task,DT_FixedDUR2,RV_OK,TK_Complete,710BM18050,Rendering works,2306,304,0,0,100525.5,0,100525.5,120,,,0,,2008-07-14 08:00,2008-07-30 17:00,2008-11-16 08:00,2008-11-15 17:00,,2008-10-02 08:00,2008-10-01 17:00,,,2008-07-14 08:00,2008-07-30 17:00,,,,,PT_Normal,,,,,WKYk8bDS5EOq2HMNTE9Ujg,,,,N,100525.5,0
542,82441,829,11329,912,1,100,N,N,N,CP_Drtn,TT_Task,DT_FixedDUR2,RV_OK,TK_Complete,710BM18100,Painting base coats,2306,304,0,0,219028.4,0,219028.4,120,,,0,,2008-08-07 08:00,2008-08-24 17:00,2008-11-16 08:00,2008-11-15 17:00,,2008-10-02 08:00,2008-10-01 17:00,,,2008-08-07 08:00,2008-08-24 17:00,,,,,PT_Normal,,,,,/ovX90BAOkKpRdigaVMlKA,,,,N,219028.4,0
543,82442,829,11329,912,1,0,N,N,N,CP_Drtn,TT_Task,DT_FixedDUR2,RV_OK,TK_NotStart,710BM18152,Painting 1st top coat for car park,2306,584,0,72,0,173002.4,173002.4,72,0,0,0,,,,2009-01-14 08:00,2009-01-24 17:00,,2008-10-21 08:00,2008-10-30 17:00,2008-10-21 08:00,2008-10-30 17:00,2008-10-21 08:00,2008-10-30 17:00,,,,,PT_Normal,,,,,NNpPjyJbGE2bSzRnboJVmA,,,,N,0,0
544,82443,829,11329,912,1,0,N,N,N,CP_Drtn,TT_Task,DT_FixedDUR2,RV_OK,TK_NotStart,710BM18153,Painting 1st top coat for lift lobies,2306,776,0,72,0,7816.4,7816.4,72,0,0,0,,,,2009-02-05 08:00,2009-02-15 17:00,,2008-10-15 08:00,2008-10-25 17:00,2008-10-15 08:00,2008-10-25 17:00,2008-10-15 08:00,2008-10-25 17:00,,,,,PT_Normal,,,,,Ktp42tuhBUSPxHOTYq4FEg,,,,N,0,0
545,82444,829,11329,912,1,0,N,N,N,CP_Drtn,TT_Task,DT_FixedDUR2,RV_OK,TK_NotStart,710BM18155,Painting 1st top coat for service rooms,2306,304,0,120,0,28402.4,28402.4,120,0,0,0,,,,2009-01-01 08:00,2009-01-18 17:00,,2008-11-18 08:00,2008-12-04 17:00,2008-11-18 08:00,2008-12-04 17:00,2008-11-18 08:00,2008-12-04 17:00,,,,,PT_Normal,,,,,QyOTeWJlLEGJmgR4HLmwGA,,,,N,0,0
546,82445,829,10809,912,1,0,N,N,N,CP_Drtn,TT_Task,DT_FixedDUR2,RV_OK,TK_NotStart,710BM18200,Painting final top coat,2306,584,584,64,0,208946.4,208946.4,64,0,0,0,,,,2009-03-23 08:00,2009-03-31 17:00,,2008-12-28 08:00,2009-01-05 17:00,2008-12-28 08:00,2009-01-05 17:00,2008-12-28 08:00,2009-01-05 17:00,,,,,PT_Normal,,,,,DhtVLCZGXUuX6QuRM5drqA,,,,N,0,0
547,82446,829,11532,912,1,0,N,N,N,CP_Drtn,TT_Task,DT_FixedDUR2,RV_OK,TK_NotStart,710BM20053,Floor tiling for lift lobbies,2306,304,0,64,0,3239.6,3239.6,64,0,0,0,,,,2008-12-07 08:00,2008-12-15 17:00,,2008-10-23 08:00,2008-11-01 17:00,2008-10-23 08:00,2008-11-01 17:00,2008-10-23 08:00,2008-11-01 17:00,,,,,PT_Normal,,,,,XkARsYsDcECywy4MZ5bijw,,,,N,0,0
548,82447,829,11525,912,1,100,N,N,N,CP_Drtn,TT_Task,DT_FixedDUR2,RV_OK,TK_Complete,710BM22100,Non toxic Epoxy Coating for water tanks,2306,1280,0,0,7390,0,7390,120,,,0,,2008-08-02 08:00,2008-08-18 17:00,2009-04-07 08:00,2009-04-06 17:00,,2008-10-02 08:00,2008-10-01 17:00,,,2008-08-02 08:00,2008-08-18 17:00,,,,,PT_Normal,,,,,fVPmJcl6bUyCcubN9nDIFA,,,,N,7390,0
549,82448,829,11518,912,1,0,N,N,N,CP_Drtn,TT_Task,DT_FixedDUR2,RV_OK,TK_NotStart,710BM26050,Steel doors,2306,304,0,120,0,2280,2280,120,0,0,0,,,,2008-12-15 08:00,2008-12-31 17:00,,2008-11-01 08:00,2008-11-17 17:00,2008-11-01 08:00,2008-11-17 17:00,2008-11-01 08:00,2008-11-17 17:00,,,,,PT_Normal,,,,,5Qezt5L1a0qrdDXU0jReaA,,,,N,0,0
550,82449,829,11304,912,1,100,N,N,N,CP_Drtn,TT_Task,DT_FixedDUR2,RV_OK,TK_Complete,710BM28100,Rugs & Access panel for water tanks,2306,1280,0,0,472,0,472,64,,,0,,2008-08-19 08:00,2008-08-27 17:00,2009-04-07 08:00,2009-04-06 17:00,,2008-10-02 08:00,2008-10-01 17:00,,,2008-08-19 08:00,2008-08-27 17:00,,,,,PT_Normal,,,,,oKCfoKWKxUi4BKGFnYwBaw,,,,N,472,0
551,82450,829,11508,912,1,26.7,N,N,N,CP_Drtn,TT_Task,DT_FixedDUR2,RV_OK,TK_Active,710BM34050,False ceiling works,2306,304,0,88,483.2,1328.8,1812,120,,,,,2008-09-28 08:00,,2008-11-16 08:00,2008-11-27 17:00,,2008-10-02 08:00,2008-10-14 17:00,2008-10-02 08:00,2008-10-14 17:00,2008-09-28 08:00,2008-10-14 17:00,,,,,PT_Normal,,,,,hLn3Q4AxR0KNS45V/Yia8A,,,,N,483.2,0
552,82451,829,11506,912,1,0,N,N,N,CP_Drtn,TT_Task,DT_FixedDUR2,RV_OK,TK_NotStart,710BM38050,Traffic coating & marking system,2306,584,0,224,0,157130,157130,224,0,0,0,,,,2009-01-26 08:00,2009-02-26 17:00,,2008-11-02 08:00,2008-12-03 17:00,2008-11-02 08:00,2008-12-03 17:00,2008-11-02 08:00,2008-12-03 17:00,,,,,PT_Normal,,,,,RCRsRd82eEaCgxp0LgKAfA,,,,N,0,0
553,82452,829,11506,912,1,0,N,N,N,CP_Drtn,TT_Task,DT_FixedDUR2,RV_OK,TK_NotStart,710BM38100,Epoxy coating system,2306,648,336,120,0,9230.2,9230.2,120,0,0,0,,,,2009-03-21 08:00,2009-04-06 17:00,,2008-12-16 08:00,2009-01-01 17:00,2008-12-16 08:00,2009-01-01 17:00,2008-12-16 08:00,2009-01-01 17:00,,,,,PT_Normal,,,,,KC0ijbkg3Eqv++sVtG4evg,,,,N,0,0
554,82453,829,11497,912,1,0,N,N,N,CP_Drtn,TT_Task,DT_FixedDUR2,RV_OK,TK_NotStart,710BM42050,Signage works,2306,1000,688,120,0,1193.8,1193.8,120,0,0,0,,,,2009-03-21 08:00,2009-04-06 17:00,,2008-10-26 08:00,2008-11-11 17:00,2008-10-26 08:00,2008-11-11 17:00,2008-10-26 08:00,2008-11-11 17:00,,,,,PT_Normal,,,,,6g0DcKX510+faLGFKFzm8g,,,,N,0,0
555,82454,829,11482,912,1,0,N,N,N,CP_Drtn,TT_Task,DT_FixedDUR2,RV_OK,TK_NotStart,710BM44100,Wheel stopers,2306,584,0,120,0,5664,5664,120,0,0,0,,,,2009-01-26 08:00,2009-02-11 17:00,,2008-11-02 08:00,2008-11-18 17:00,2008-11-02 08:00,2008-11-18 17:00,2008-11-02 08:00,2008-11-18 17:00,,,,,PT_Normal,,,,,3x1oscvxOkK9hiCcJXac7A,,,,N,0,0
556,82455,829,11482,912,1,0,N,N,N,CP_Drtn,TT_Task,DT_FixedDUR2,RV_OK,TK_NotStart,710BM44150,Wall guards for columns & ramp walls,2306,584,0,120,0,6920,6920,120,0,0,0,,,,2009-01-26 08:00,2009-02-11 17:00,,2008-11-02 08:00,2008-11-18 17:00,2008-11-02 08:00,2008-11-18 17:00,2008-11-02 08:00,2008-11-18 17:00,,,,,PT_Normal,,,,,Aw78Sh4Jv02oAH7Yu6JLoA,,,,N,0,0
557,82456,829,11482,912,1,0,N,N,N,CP_Drtn,TT_Task,DT_FixedDUR2,RV_OK,TK_NotStart,710BM44200,Speed hump,2306,664,80,120,0,296,296,120,0,0,0,,,,2009-01-26 08:00,2009-02-11 17:00,,2008-10-21 08:00,2008-11-06 17:00,2008-10-21 08:00,2008-11-06 17:00,2008-10-21 08:00,2008-11-06 17:00,,,,,PT_Normal,,,,,gPP5eK6RH0+enEA9l3p1NQ,,,,N,0,0
558,82457,829,12832,912,1,100,N,N,N,CP_Drtn,TT_Task,DT_FixedDUR2,RV_OK,TK_Complete,710BM50050,Basement underground MEP provisions,2296,0,0,0,6431.8,0,6431.8,120,,,0,,2008-03-09 08:00,2008-03-26 17:00,2008-10-02 08:00,2008-10-01 17:00,,2008-10-02 08:00,2008-10-01 17:00,,,2008-03-09 08:00,2008-03-26 17:00,,,,,PT_Normal,,,,,Jj63EUCfDkyOLghOLOFQXw,,,,N,6431.8,0
559,82458,829,12832,912,1,100,N,N,N,CP_Drtn,TT_Task,DT_FixedDUR2,RV_OK,TK_Complete,710BM50100,MEP skeleton embedded provisions,2296,0,0,0,942,0,942,128,,,0,,2008-04-09 08:00,2008-04-27 17:00,2008-10-02 08:00,2008-10-01 17:00,,2008-10-02 08:00,2008-10-01 17:00,,,2008-04-09 08:00,2008-04-27 17:00,,,,,PT_Normal,,,,,X2jfh54mIUCpI9TjKRK3ZA,,,,N,942,0
560,82459,829,12837,912,1,100,N,N,N,CP_Drtn,TT_Task,DT_FixedDUR2,RV_OK,TK_Complete,710BM52050,A/C duct works,2296,304,0,0,8139,0,8139,120,,,0,,2008-08-19 08:00,2008-09-04 17:00,2008-11-16 08:00,2008-11-15 17:00,,2008-10-02 08:00,2008-10-01 17:00,,,2008-08-19 08:00,2008-09-04 17:00,,,,,PT_Normal,,,,,qcGzjJgfjEuuAg/ckst6Og,,,,N,8139,0
561,82460,829,12837,912,1,100,N,N,N,CP_Drtn,TT_Task,DT_FixedDUR2,RV_OK,TK_Complete,710BM52100,Chilled water pipe works,2296,304,0,0,8700,0,8700,120,,,0,,2008-08-28 08:00,2008-09-14 17:00,2008-11-16 08:00,2008-11-15 17:00,,2008-10-02 08:00,2008-10-01 17:00,,,2008-08-28 08:00,2008-09-14 17:00,,,,,PT_Normal,,,,,Mos+eC5Wr0+xw6xn60zNqg,,,,N,8700,0
562,82461,829,12833,912,1,100,N,N,N,CP_Drtn,TT_Task,DT_FixedDUR2,RV_OK,TK_Complete,710BM52150,FCU/ACCU's hangging,2296,304,0,0,3556.8,0,3556.8,72,,,0,,2008-08-25 08:00,2008-09-03 17:00,2008-11-16 08:00,2008-11-15 17:00,,2008-10-02 08:00,2008-10-01 17:00,,,2008-08-25 08:00,2008-09-03 17:00,,,,,PT_Normal,,,,,knmwqU4tCEanurKoWFbvUA,,,,N,3556.8,0
563,82462,829,12833,912,1,100,N,N,N,CP_Drtn,TT_Task,DT_FixedDUR2,RV_OK,TK_Complete,710BM52300,FCU assembly & duct connections,2296,304,0,0,3556.8,0,3556.8,72,,,0,,2008-09-15 08:00,2008-09-24 17:00,2008-11-16 08:00,2008-11-15 17:00,,2008-10-02 08:00,2008-10-01 17:00,,,2008-09-15 08:00,2008-09-24 17:00,,,,,PT_Normal,,,,,vgB2Xo9DdUmjSwlbuh/3Fw,,,,N,3556.8,0
564,82463,829,12833,912,1,0,N,N,N,CP_Drtn,TT_Task,DT_FixedDUR2,RV_OK,TK_NotStart,710BM52350,Grills & diffusers,2296,736,152,72,0,4164,4164,72,0,0,0,,,,2009-01-31 08:00,2009-02-09 17:00,,2008-10-15 08:00,2008-10-25 17:00,2008-10-15 08:00,2008-10-25 17:00,2008-10-15 08:00,2008-10-25 17:00,,,,,PT_Normal,,,,,TKqMlSbZLEmgk+kz6IrVbg,,,,N,0,0
565,82464,829,12811,912,1,0,N,N,N,CP_Drtn,TT_Task,DT_FixedDUR2,RV_OK,TK_NotStart,710BM52450,Jet & exhaust fans,2296,448,144,120,0,3640,3640,120,0,0,0,,,,2009-02-09 08:00,2009-02-25 17:00,,2008-12-06 08:00,2008-12-22 17:00,2008-12-06 08:00,2008-12-22 17:00,2008-12-06 08:00,2008-12-22 17:00,,,,,PT_Normal,,,,,BdZETy8IRECEdCsbwFFzEQ,,,,N,0,0
566,82465,829,12811,912,1,0,N,N,N,CP_Drtn,TT_Task,DT_FixedDUR2,RV_OK,TK_NotStart,710BM52500,"ETS room equipments, pumps & HX",2296,448,144,120,0,8581.2,8581.2,120,0,0,0,,,,2009-02-09 08:00,2009-02-25 17:00,,2008-12-06 08:00,2008-12-22 17:00,2008-12-06 08:00,2008-12-22 17:00,2008-12-06 08:00,2008-12-22 17:00,,,,,PT_Normal,,,,,xQx6J0AHzUeZ6xsudbxB9A,,,,N,0,0
567,82466,829,12806,912,1,100,N,N,N,CP_Drtn,TT_Task,DT_FixedDUR2,RV_OK,TK_Complete,710BM54100,Water supply pipe works,2296,304,0,0,4032,0,4032,72,,,0,,2008-08-07 08:00,2008-08-17 17:00,2008-11-16 08:00,2008-11-15 17:00,,2008-10-02 08:00,2008-10-01 17:00,,,2008-08-07 08:00,2008-08-17 17:00,,,,,PT_Normal,,,,,uEdHpiIbQUm76mnEssDAfw,,,,N,4032,0
568,82467,829,12780,912,1,0,N,N,N,CP_Drtn,TT_Task,DT_FixedDUR2,RV_OK,TK_NotStart,710BM54550,Booster pump set & Hydropneumatic tank,2296,344,0,120,0,4467.2,4467.2,120,0,0,0,,,,2009-01-25 08:00,2009-02-10 17:00,,2008-12-06 08:00,2008-12-22 17:00,2008-12-06 08:00,2008-12-22 17:00,2008-12-06 08:00,2008-12-22 17:00,,,,,PT_Normal,,,,,WAMsMKTHfEOr+pwe55MVyg,,,,N,0,0
569,82468,829,12740,912,1,100,N,N,N,CP_Drtn,TT_Task,DT_FixedDUR2,RV_OK,TK_Complete,710BM56150,Over head drainage pipe works,2296,304,0,0,3090,0,3090,120,,,0,,2008-07-14 08:00,2008-07-30 17:00,2008-11-16 08:00,2008-11-15 17:00,,2008-10-02 08:00,2008-10-01 17:00,,,2008-07-14 08:00,2008-07-30 17:00,,,,,PT_Normal,,,,,+zC1almQGUujdU8UWMDM/g,,,,N,3090,0
570,82469,829,12714,912,1,0,N,N,N,CP_Drtn,TT_Task,DT_FixedDUR2,RV_OK,TK_NotStart,710BM56200,Submersible pumps,2296,344,8,120,0,2265,2265,120,0,0,0,,,,2009-01-25 08:00,2009-02-10 17:00,,2008-12-06 08:00,2008-12-22 17:00,2008-12-06 08:00,2008-12-22 17:00,2008-12-06 08:00,2008-12-22 17:00,,,,,PT_Normal,,,,,3ij9LrU0dEmQAxeKdoG/oQ,,,,N,0,0
571,82470,829,12674,912,1,100,N,N,N,CP_Drtn,TT_Task,DT_FixedDUR2,RV_OK,TK_Complete,710BM58050,Fire fighting pipe works,2296,304,0,0,4245,0,4245,120,,,0,,2008-07-14 08:00,2008-07-30 17:00,2008-11-16 08:00,2008-11-15 17:00,,2008-10-02 08:00,2008-10-01 17:00,,,2008-07-14 08:00,2008-07-30 17:00,,,,,PT_Normal,,,,,OrwvXkRA0k+9aO2t383JTg,,,,N,4245,0
572,82471,829,12648,912,1,0,N,N,N,CP_Drtn,TT_Task,DT_FixedDUR2,RV_OK,TK_NotStart,710BM58200,Fire cabinet complete,2296,1000,592,120,0,1550,1550,120,0,0,0,,,,2009-03-21 08:00,2009-04-06 17:00,,2008-10-26 08:00,2008-11-11 17:00,2008-10-26 08:00,2008-11-11 17:00,2008-10-26 08:00,2008-11-11 17:00,,,,,PT_Normal,,,,,7hY5lJuWW06d3zCgaKA3cw,,,,N,0,0
573,82472,829,12648,912,1,0,N,N,N,CP_Drtn,TT_Task,DT_FixedDUR2,RV_OK,TK_NotStart,710BM58250,Sprinkler heads,2296,448,144,120,0,1880,1880,120,0,0,0,,,,2009-02-09 08:00,2009-02-25 17:00,,2008-12-06 08:00,2008-12-22 17:00,2008-12-06 08:00,2008-12-22 17:00,2008-12-06 08:00,2008-12-22 17:00,,,,,PT_Normal,,,,,VDbey/GmpE6ZypbjfQqgAA,,,,N,0,0
574,82473,829,12648,912,1,0,N,N,N,CP_Drtn,TT_Task,DT_FixedDUR2,RV_OK,TK_NotStart,710BM58300,FM-200,2296,368,64,120,0,1770,1770,120,0,0,0,,,,2008-12-27 08:00,2009-01-12 17:00,,2008-11-03 08:00,2008-11-19 17:00,2008-11-03 08:00,2008-11-19 17:00,2008-11-03 08:00,2008-11-19 17:00,,,,,PT_Normal,,,,,WdioGJri0kinAtNwBN3IVA,,,,N,0,0
575,82474,829,12608,912,1,0,N,N,N,CP_Drtn,TT_Task,DT_FixedDUR2,RV_OK,TK_NotStart,710BM58350,Fire pump set,2296,304,0,120,0,1550,1550,120,0,0,0,,,,2009-01-19 08:00,2009-02-04 17:00,,2008-12-06 08:00,2008-12-22 17:00,2008-12-06 08:00,2008-12-22 17:00,2008-12-06 08:00,2008-12-22 17:00,,,,,PT_Normal,,,,,iKzaRIwEIky8BFMs+hJWWA,,,,N,0,0
576,82475,829,12604,912,1,100,N,N,N,CP_Drtn,TT_Task,DT_FixedDUR2,RV_OK,TK_Complete,710BM60050,LPG pipe works,2296,864,0,0,708,0,708,48,,,0,,2008-08-02 08:00,2008-08-07 17:00,2009-02-05 08:00,2009-02-04 17:00,,2008-10-02 08:00,2008-10-01 17:00,,,2008-08-02 08:00,2008-08-07 17:00,,,,,PT_Normal,,,,,ukuEUujqYU+CfgCOQ24VMQ,,,,N,708,0
577,82476,829,12601,912,1,100,N,N,N,CP_Drtn,TT_Task,DT_FixedDUR2,RV_OK,TK_Complete,710BM62050,BMS cabling,2296,304,0,0,1761.6,0,1761.6,72,,,0,,2008-09-06 08:00,2008-09-15 17:00,2008-11-16 08:00,2008-11-15 17:00,,2008-10-02 08:00,2008-10-01 17:00,,,2008-09-06 08:00,2008-09-15 17:00,,,,,PT_Normal,,,,,PmnIDGYaxkyG34Ls2dBFeQ,,,,N,1761.6,0
578,82477,829,12596,912,1,0,N,N,N,CP_Drtn,TT_Task,DT_FixedDUR2,RV_OK,TK_NotStart,710BM62100,DGC & cable termination to equipments,2296,608,0,72,0,705.6,705.6,72,0,0,0,,,,2009-03-04 08:00,2009-03-14 17:00,,2008-12-06 08:00,2008-12-15 17:00,2008-12-06 08:00,2008-12-15 17:00,2008-12-06 08:00,2008-12-15 17:00,,,,,PT_Normal,,,,,bGEDXzff30ya5nr9EVK/pQ,,,,N,0,0
579,82478,829,12596,912,1,0,N,N,N,CP_Drtn,TT_Task,DT_FixedDUR2,RV_OK,TK_NotStart,710BM62150,Main controler &  workstation equipment,2296,608,288,72,0,212.8,212.8,72,0,0,0,,,,2009-03-15 08:00,2009-03-24 17:00,,2008-12-16 08:00,2008-12-25 17:00,2008-12-16 08:00,2008-12-25 17:00,2008-12-16 08:00,2008-12-25 17:00,,,,,PT_Normal,,,,,i0BM3WxXT0ivda6W1c65bQ,,,,N,0,0
580,82479,829,12570,912,1,100,N,N,N,CP_Drtn,TT_Task,DT_FixedDUR2,RV_OK,TK_Complete,710BM66050,Chasing and installation of conduits,2296,304,0,0,3076.8,0,3076.8,120,,,0,,2008-07-14 08:00,2008-07-30 17:00,2008-11-16 08:00,2008-11-15 17:00,,2008-10-02 08:00,2008-10-01 17:00,,,2008-07-14 08:00,2008-07-30 17:00,,,,,PT_Normal,,,,,hLzqluWq1EyS4zmhxYDkbQ,,,,N,3076.8,0
581,82480,829,12570,912,1,100,N,N,N,CP_Drtn,TT_Task,DT_FixedDUR2,RV_OK,TK_Complete,710BM66100,Cable trays & trunking,2296,304,0,0,3288,0,3288,120,,,0,,2008-08-19 08:00,2008-09-04 17:00,2008-11-16 08:00,2008-11-15 17:00,,2008-10-02 08:00,2008-10-01 17:00,,,2008-08-19 08:00,2008-09-04 17:00,,,,,PT_Normal,,,,,pZzsZWdLjEuYtjksBLTwvg,,,,N,3288,0
582,82481,829,12530,912,1,100,N,N,N,CP_Drtn,TT_Task,DT_FixedDUR2,RV_OK,TK_Complete,710BM68050,Single core wiring,2296,304,0,0,4304,0,4304,80,,,0,,2008-07-14 08:00,2008-07-24 17:00,2008-11-16 08:00,2008-11-15 17:00,,2008-10-02 08:00,2008-10-01 17:00,,,2008-07-14 08:00,2008-07-24 17:00,,,,,PT_Normal,,,,,UkTPD0NHhkmTW0s3a1CjdQ,,,,N,4304,0
583,82482,829,12504,912,1,100,N,N,N,CP_Drtn,TT_Task,DT_FixedDUR2,RV_OK,TK_Complete,710BM68150,LV feeder cables,2296,304,0,0,4344,0,4344,120,,,0,,2008-09-06 08:00,2008-09-22 17:00,2008-11-16 08:00,2008-11-15 17:00,,2008-10-02 08:00,2008-10-01 17:00,,,2008-09-06 08:00,2008-09-22 17:00,,,,,PT_Normal,,,,,sC6n6N2HYk2TxJpCTFROow,,,,N,4344,0
584,82483,829,12464,912,1,0,N,N,N,CP_Drtn,TT_Task,DT_FixedDUR2,RV_OK,TK_NotStart,710BM68300,SMDB,2296,648,0,72,0,1761.6,1761.6,72,0,0,0,,,,2009-03-10 08:00,2009-03-19 17:00,,2008-12-06 08:00,2008-12-15 17:00,2008-12-06 08:00,2008-12-15 17:00,2008-12-06 08:00,2008-12-15 17:00,,,,,PT_Normal,,,,,D4yUYWpAyk+fntcW8YrtGA,,,,N,0,0
585,82484,829,12464,912,1,0,N,N,N,CP_Drtn,TT_Task,DT_FixedDUR2,RV_OK,TK_NotStart,710BM68350,Light Fittings,2296,584,0,120,0,2232,2232,120,0,0,0,,,,2008-12-28 08:00,2009-01-13 17:00,,2008-10-04 08:00,2008-10-20 17:00,2008-10-04 08:00,2008-10-20 17:00,2008-10-04 08:00,2008-10-20 17:00,,,,,PT_Normal,,,,,K8jvUGEb406G5Dy+6G9V5Q,,,,N,0,0
586,82485,829,12464,912,1,0,N,N,N,CP_Drtn,TT_Task,DT_FixedDUR2,RV_OK,TK_NotStart,710BM68400,Lighting Control Panels,2296,912,624,48,0,4272,4272,48,0,0,0,,,,2009-03-08 08:00,2009-03-14 17:00,,2008-10-26 08:00,2008-11-01 17:00,2008-10-26 08:00,2008-11-01 17:00,2008-10-26 08:00,2008-11-01 17:00,,,,,PT_Normal,,,,,lAAtsIUezUW6G/b3GpBaLQ,,,,N,0,0
587,82486,829,12464,912,1,0,N,N,N,CP_Drtn,TT_Task,DT_FixedDUR2,RV_OK,TK_NotStart,710BM68500,Isolators,2296,792,384,48,0,752,752,48,0,0,0,,,,2009-03-31 08:00,2009-04-06 17:00,,2008-12-06 08:00,2008-12-11 17:00,2008-12-06 08:00,2008-12-11 17:00,2008-12-06 08:00,2008-12-11 17:00,,,,,PT_Normal,,,,,BvWVM/bP3EimD3ycNu+VQA,,,,N,0,0
588,82487,829,12464,912,1,0,N,N,N,CP_Drtn,TT_Task,DT_FixedDUR2,RV_OK,TK_NotStart,710BM68600,Switches & sockets,2296,768,360,72,0,1761.6,1761.6,72,0,0,0,,,,2009-03-28 08:00,2009-04-06 17:00,,2008-12-06 08:00,2008-12-15 17:00,2008-12-06 08:00,2008-12-15 17:00,2008-12-06 08:00,2008-12-15 17:00,,,,,PT_Normal,,,,,q78C40HWeEeTvtk0Or3iWg,,,,N,0,0
589,82488,829,12464,912,1,53.3,N,N,N,CP_Drtn,TT_Task,DT_FixedDUR2,RV_OK,TK_Active,710BM68700,Earthing pits,2296,656,72,56,364.38,318.82,683.2,120,,,,,2008-09-23 08:00,,2009-01-06 08:00,2009-01-13 17:00,,2008-10-02 08:00,2008-10-09 17:00,2008-10-02 08:00,2008-10-09 17:00,2008-09-23 08:00,2008-10-09 17:00,,,,,PT_Normal,,,,,q8SAQbJpVUCH6+n2QE4/Nw,,,,N,364.38,0
590,82489,829,12438,912,1,100,N,N,N,CP_Drtn,TT_Task,DT_FixedDUR2,RV_OK,TK_Complete,710BM70050,Central Battery cables,2296,304,0,0,1550.4,0,1550.4,72,,,0,,2008-07-26 08:00,2008-08-05 17:00,2008-11-16 08:00,2008-11-15 17:00,,2008-10-02 08:00,2008-10-01 17:00,,,2008-07-26 08:00,2008-08-05 17:00,,,,,PT_Normal,,,,,xRN34sdJDUKkY07Otd78zQ,,,,N,1550.4,0
591,82490,829,12607,912,1,0,N,N,N,CP_Drtn,TT_Task,DT_FixedDUR2,RV_OK,TK_NotStart,710BM70100,Main Central Battery Panel,2296,600,96,64,0,908.8,908.8,64,0,0,0,,,,2009-03-03 08:00,2009-03-11 17:00,,2008-12-06 08:00,2008-12-14 17:00,2008-12-06 08:00,2008-12-14 17:00,2008-12-06 08:00,2008-12-14 17:00,,,,,PT_Normal,,,,,yaMWd7FiSUSPzeHLqcbwtQ,,,,N,0,0
592,82491,829,12607,912,1,0,N,N,N,CP_Drtn,TT_Task,DT_FixedDUR2,RV_OK,TK_NotStart,710BM70150,Emergency & exit light fittings,2296,944,440,72,0,916.8,916.8,72,0,0,0,,,,2009-03-02 08:00,2009-03-11 17:00,,2008-10-15 08:00,2008-10-25 17:00,2008-10-15 08:00,2008-10-25 17:00,2008-10-15 08:00,2008-10-25 17:00,,,,,PT_Normal,,,,,kUMPQp7230mXXt+QffXLyg,,,,N,0,0
593,82492,829,12394,912,1,100,N,N,N,CP_Drtn,TT_Task,DT_FixedDUR2,RV_OK,TK_Complete,710BM72050,CCTV system cables,2296,304,0,0,494.4,0,494.4,72,,,0,,2008-09-06 08:00,2008-09-15 17:00,2008-11-16 08:00,2008-11-15 17:00,,2008-10-02 08:00,2008-10-01 17:00,,,2008-09-06 08:00,2008-09-15 17:00,,,,,PT_Normal,,,,,akoy4d580Eyu62O4M9wcaA,,,,N,494.4,0
594,82493,829,12391,912,1,0,N,N,N,CP_Drtn,TT_Task,DT_FixedDUR2,RV_OK,TK_NotStart,710BM72100,CCTV system equipments,2296,888,352,72,0,283.2,283.2,72,0,0,0,,,,2009-03-04 08:00,2009-03-14 17:00,,2008-10-26 08:00,2008-11-04 17:00,2008-10-26 08:00,2008-11-04 17:00,2008-10-26 08:00,2008-11-04 17:00,,,,,PT_Normal,,,,,IWJ06TRGikisliZAidD8GA,,,,N,0,0
595,82494,829,12391,912,1,0,N,N,N,CP_Drtn,TT_Task,DT_FixedDUR2,RV_OK,TK_NotStart,710BM72150,Gate barriers & card readers,2296,584,0,64,0,204.8,204.8,64,0,0,0,,,,2009-02-18 08:00,2009-02-26 17:00,,2008-11-25 08:00,2008-12-03 17:00,2008-11-25 08:00,2008-12-03 17:00,2008-11-25 08:00,2008-12-03 17:00,,,,,PT_Normal,,,,,3xkKWWN8qEq9868f8TYqcw,,,,N,0,0
596,82495,829,12386,912,1,100,N,N,N,CP_Drtn,TT_Task,DT_FixedDUR2,RV_OK,TK_Complete,710BM74050,Fire alarm cables,2296,304,0,0,1057.6,0,1057.6,72,,,0,,2008-07-26 08:00,2008-08-05 17:00,2008-11-16 08:00,2008-11-15 17:00,,2008-10-02 08:00,2008-10-01 17:00,,,2008-07-26 08:00,2008-08-05 17:00,,,,,PT_Normal,,,,,ejPGIBjLL0GbtURj+rhYzg,,,,N,1057.6,0
597,82496,829,12361,912,1,0,N,N,N,CP_Drtn,TT_Task,DT_FixedDUR2,RV_OK,TK_NotStart,710BM74100,Fire alarm fittings,2296,776,472,72,0,283.2,283.2,72,0,0,0,,,,2009-02-16 08:00,2009-02-25 17:00,,2008-10-26 08:00,2008-11-04 17:00,2008-10-26 08:00,2008-11-04 17:00,2008-10-26 08:00,2008-11-04 17:00,,,,,PT_Normal,,,,,maMMAQA340OOhXejeFVxdw,,,,N,0,0
598,82497,829,12361,912,1,0,N,N,N,CP_Drtn,TT_Task,DT_FixedDUR2,RV_OK,TK_NotStart,710BM74200,MFACP @ BMS room,2296,520,216,48,0,400,400,48,0,0,0,,,,2009-02-19 08:00,2009-02-25 17:00,,2008-12-06 08:00,2008-12-11 17:00,2008-12-06 08:00,2008-12-11 17:00,2008-12-06 08:00,2008-12-11 17:00,,,,,PT_Normal,,,,,JXVOpHBnC0O4ndHzJRt86g,,,,N,0,0
599,82498,829,12321,912,1,100,N,N,N,CP_Drtn,TT_Task,DT_FixedDUR2,RV_OK,TK_Complete,710BM76050,Structured cabling,2296,304,0,0,635.2,0,635.2,72,,,0,,2008-09-06 08:00,2008-09-15 17:00,2008-11-16 08:00,2008-11-15 17:00,,2008-10-02 08:00,2008-10-01 17:00,,,2008-09-06 08:00,2008-09-15 17:00,,,,,PT_Normal,,,,,+qV33rN6jkmhhv75SpaLtQ,,,,N,635.2,0
600,82499,829,10847,912,1,0,N,N,N,CP_Drtn,TT_Task,DT_FixedDUR2,RV_OK,TK_NotStart,7111L00000,Pre-Snagging & Disnagging for duplexes,2296,40,0,120,0,420,420,120,0,0,0,,,,2009-01-05 08:00,2009-01-21 17:00,,2008-12-30 08:00,2009-01-15 17:00,2008-12-30 08:00,2009-01-15 17:00,2008-12-30 08:00,2009-01-15 17:00,,,,,PT_Normal,,,,,QErMoeENEkKx3wIju7tD8w,,,,N,0,0
601,82500,829,10847,912,1,0,N,N,N,CP_Drtn,TT_Task,DT_FixedDUR2,RV_OK,TK_NotStart,7111L00002,Pre-Snagging & Disnagging for corrid & Srv rooms,2296,256,0,64,0,214,214,64,0,0,0,,,,2009-02-25 08:00,2009-03-05 17:00,,2009-01-19 08:00,2009-01-27 17:00,2009-01-19 08:00,2009-01-27 17:00,2009-01-19 08:00,2009-01-27 17:00,,,,,PT_Normal,,,,,/hLcRvThK0y2Fwc0GHisrA,,,,N,0,0
602,82501,829,11253,912,1,100,N,N,N,CP_Drtn,TT_Task,DT_FixedDUR2,RV_OK,TK_Complete,7111L12050,Columns & walls 1L to 1U - Part 1,2306,24,0,0,3408.26,0,3408.26,32,102126.4,102126.4,0,,2008-07-07 08:00,2008-07-10 17:00,2008-10-06 08:00,2008-10-05 17:00,,2008-10-02 08:00,2008-10-01 17:00,,,2008-07-07 08:00,2008-07-10 17:00,,,,,PT_Normal,,,,,4fiXzWwl3kOiEH/pW1S6bg,,,,N,3408.26,102126.4
603,82502,829,11253,912,1,100,N,N,N,CP_Drtn,TT_Task,DT_FixedDUR2,RV_OK,TK_Complete,7111L12051,Columns & walls 1L to 1U - Part 2,2306,24,0,0,3408.26,0,3408.26,32,102126.4,102126.4,0,,2008-07-15 08:00,2008-07-19 17:00,2008-10-06 08:00,2008-10-05 17:00,,2008-10-02 08:00,2008-10-01 17:00,,,2008-07-15 08:00,2008-07-19 17:00,,,,,PT_Normal,,,,,riH9igris0quz7LXXdTcEg,,,,N,3408.26,102126.4
604,82503,829,11253,912,1,100,N,N,N,CP_Drtn,TT_Task,DT_FixedDUR2,RV_OK,TK_Complete,7111L12052,Columns & walls 1L to 1U - Middle Part,2306,24,0,0,7073.11,0,7073.11,32,212979.36,212979.36,0,,2008-07-14 08:00,2008-07-17 17:00,2008-10-06 08:00,2008-10-05 17:00,,2008-10-02 08:00,2008-10-01 17:00,,,2008-07-14 08:00,2008-07-17 17:00,,,,,PT_Normal,,,,,szUgDJxCkUKWJNC0sMr93g,,,,N,7073.11,212979.36
605,82504,829,11253,912,1,100,N,N,N,CP_Drtn,TT_Task,DT_FixedDUR2,RV_OK,TK_Complete,7111L12200,Slab @ 1U level - Part 1,2306,24,0,0,1938.1,0,1938.1,56,69809.52,69809.52,0,,2008-07-15 08:00,2008-07-22 17:00,2008-10-06 08:00,2008-10-05 17:00,,2008-10-02 08:00,2008-10-01 17:00,,,2008-07-15 08:00,2008-07-22 17:00,,,,,PT_Normal,,,,,67+zgJfxakSu4KFnpzXIEw,,,,N,1938.1,69809.52
606,82505,829,11253,912,1,100,N,N,N,CP_Drtn,TT_Task,DT_FixedDUR2,RV_OK,TK_Complete,7111L12201,Slab @ 1U level - Part 2,2306,24,0,0,1938.1,0,1938.1,56,69809.52,69809.52,0,,2008-07-23 08:00,2008-07-30 17:00,2008-10-06 08:00,2008-10-05 17:00,,2008-10-02 08:00,2008-10-01 17:00,,,2008-07-23 08:00,2008-07-30 17:00,,,,,PT_Normal,,,,,fdHYZQGiFEGnPKwO4rsuEA,,,,N,1938.1,69809.52
607,82506,829,11253,912,1,100,N,N,N,CP_Drtn,TT_Task,DT_FixedDUR2,RV_OK,TK_Complete,7111L12202,Slab @ 1U level - Middle Part,2306,24,0,0,2781.47,0,2781.47,56,101094.8,101094.8,0,,2008-07-22 08:00,2008-07-29 17:00,2008-10-06 08:00,2008-10-05 17:00,,2008-10-02 08:00,2008-10-01 17:00,,,2008-07-22 08:00,2008-07-29 17:00,,,,,PT_Normal,,,,,wn2hN3VmA0K4mGSUe3r6/g,,,,N,2781.47,101094.8
608,82507,829,11253,912,1,100,N,N,N,CP_Drtn,TT_Task,DT_FixedDUR2,RV_OK,TK_Complete,7111L12250,Staircases 1L to 1U,2306,208,0,0,991.88,0,991.88,24,18457.6,18457.6,0,,2008-08-02 08:00,2008-08-04 17:00,2008-11-02 08:00,2008-11-01 17:00,,2008-10-02 08:00,2008-10-01 17:00,,,2008-08-02 08:00,2008-08-04 17:00,,,,,PT_Normal,,,,,BExaRxbZ2E+uNq+Zz1c64w,,,,N,991.88,18457.6
609,82508,829,10927,912,1,100,N,N,N,CP_Drtn,TT_Task,DT_FixedDUR2,RV_OK,TK_Complete,7111L14050,Block works,2306,40,0,0,24323,0,30085.5,120,18440,24202.5,0,,2008-08-25 08:00,2008-09-10 17:00,2008-10-08 08:00,2008-10-07 17:00,,2008-10-02 08:00,2008-10-01 17:00,,,2008-08-25 08:00,2008-09-10 17:00,,,,,PT_Normal,,,,,XZmKlrywgU2+oUSJ1vGA0w,,,,N,24323,24202.5
610,82509,829,10947,912,1,100,N,N,N,CP_Drtn,TT_Task,DT_FixedDUR2,RV_OK,TK_Complete,7111L16050,Plaster works,2306,40,0,0,24385.9,0,24385.9,120,19032,19032,0,,2008-09-11 08:00,2008-09-28 17:00,2008-10-08 08:00,2008-10-07 17:00,,2008-10-02 08:00,2008-10-01 17:00,,,2008-09-11 08:00,2008-09-28 17:00,,,,,PT_Normal,,,,,Bx5oL8+/SUCpglnKXRimzw,,,,N,24385.9,19032
611,82510,829,10947,912,1,100,N,N,N,CP_Drtn,TT_Task,DT_FixedDUR2,RV_OK,TK_Complete,7111L16051,Plaste works behind tiles,2306,216,0,0,10136.2,0,10136.2,120,7856,7856,0,,2008-09-15 08:00,2008-10-01 17:00,2008-11-03 08:00,2008-11-02 17:00,,2008-10-02 08:00,2008-10-01 17:00,,,2008-09-15 08:00,2008-10-01 17:00,,,,,PT_Normal,,,,,jwh5XTcrZ0W55y7ZnCLa2g,,,,N,10136.2,7856
612,82511,829,10894,912,1,100,N,N,N,CP_Drtn,TT_Task,DT_FixedDUR2,RV_OK,TK_Complete,7111L18050,Rendering works,2306,40,0,0,5683,0,5683,120,5000,5000,0,,2008-09-02 08:00,2008-09-18 17:00,2008-10-08 08:00,2008-10-07 17:00,,2008-10-02 08:00,2008-10-01 17:00,,,2008-09-02 08:00,2008-09-18 17:00,,,,,PT_Normal,,,,,C7n2Or/gmkqz0wq2+BGihQ,,,,N,5683,5000
613,82512,829,10894,912,1,73.3,N,N,N,CP_Drtn,TT_Task,DT_FixedDUR2,RV_OK,TK_Active,7111L18100,Painting base coats,2306,40,0,32,19474.08,7081.52,26555.6,120,24032,17623.44,6408.56,,2008-09-20 08:00,,2008-10-08 08:00,2008-10-12 17:00,,2008-10-02 08:00,2008-10-06 17:00,2008-10-02 08:00,2008-10-06 17:00,2008-09-20 08:00,2008-10-06 17:00,,,,,PT_Normal,,,,,sg0ImwGZpU6SpiwQKMWNBg,,,,N,19474.08,17623.44
614,82513,829,10894,912,1,0,N,N,N,CP_Drtn,TT_Task,DT_FixedDUR2,RV_OK,TK_NotStart,7111L18150,Painting 1st top coat for apartments,2306,184,0,72,0,17300.2,17300.2,72,16408,0,16408,,,,2008-12-17 08:00,2008-12-27 17:00,,2008-11-20 08:00,2008-11-30 17:00,2008-11-20 08:00,2008-11-30 17:00,2008-11-20 08:00,2008-11-30 17:00,,,,,PT_Normal,,,,,erIFBO3baUSWB/DE/H0QTw,,,,N,0,0
615,82514,829,10894,912,1,0,N,N,N,CP_Drtn,TT_Task,DT_FixedDUR2,RV_OK,TK_NotStart,7111L18153,Painting 1st top coat for corridors/lobbies,2306,432,0,48,0,14370,14370,48,13640,0,13640,,,,2009-02-04 08:00,2009-02-10 17:00,,2008-12-03 08:00,2008-12-09 17:00,2008-12-03 08:00,2008-12-09 17:00,2008-12-03 08:00,2008-12-09 17:00,,,,,PT_Normal,,,,,p77AcjZbrEGmxT80je1APw,,,,N,0,0
616,82515,829,10894,912,1,0,N,N,N,CP_Drtn,TT_Task,DT_FixedDUR2,RV_OK,TK_NotStart,7111L18155,Painting 1st top coat for service rooms,2306,432,0,48,0,6364.4,6364.4,48,6016,0,6016,,,,2009-02-02 08:00,2009-02-08 17:00,,2008-12-01 08:00,2008-12-07 17:00,2008-12-01 08:00,2008-12-07 17:00,2008-12-01 08:00,2008-12-07 17:00,,,,,PT_Normal,,,,,On3rpGV2/0ylrop8phlyLw,,,,N,0,0
617,82516,829,10847,912,1,0,N,N,N,CP_Drtn,TT_Task,DT_FixedDUR2,RV_OK,TK_NotStart,7111L18200,Painting final top coat,2306,312,72,32,0,25265.8,25265.8,32,24032,0,24032,,,,2009-03-18 08:00,2009-03-22 17:00,,2009-02-01 08:00,2009-02-04 17:00,2009-02-01 08:00,2009-02-04 17:00,2009-02-01 08:00,2009-02-04 17:00,,,,,PT_Normal,,,,,eyzaHxgUBEqIHNApuQaSMA,,,,N,0,0
618,82517,829,11039,912,1,20,N,N,N,CP_Drtn,TT_Task,DT_FixedDUR2,RV_OK,TK_Active,7111L20050,Floor tiles for apartments-dry area,2306,232,8,96,1769.28,7077.12,8846.4,120,6464,1292.8,5171.2,,2008-09-29 08:00,,2008-11-05 08:00,2008-11-18 17:00,,2008-10-02 08:00,2008-10-15 17:00,2008-10-02 08:00,2008-10-15 17:00,2008-09-29 08:00,2008-10-15 17:00,,,,,PT_Normal,,,,,k09mCRNTckORxRZcF7sDcw,,,,N,1769.28,1292.8
619,82518,829,11039,912,1,0,N,N,N,CP_Drtn,TT_Task,DT_FixedDUR2,RV_OK,TK_NotStart,7111L20053,Floor tiles for corridors / lobbies,2306,176,0,48,0,4638,4638,48,3400,0,3400,,,,2008-12-14 08:00,2008-12-20 17:00,,2008-11-18 08:00,2008-11-24 17:00,2008-11-18 08:00,2008-11-24 17:00,2008-11-18 08:00,2008-11-24 17:00,,,,,PT_Normal,,,,,zmbo0rF7ik+3S+NLi7ijkg,,,,N,0,0
620,82519,829,11039,912,1,0,N,N,N,CP_Drtn,TT_Task,DT_FixedDUR2,RV_OK,TK_NotStart,7111L20070,Floor tiles for apartments-wet area,2306,40,0,120,0,3684,3684,120,2640,0,2640,,,,2008-11-17 08:00,2008-12-03 17:00,,2008-11-11 08:00,2008-11-27 17:00,2008-11-11 08:00,2008-11-27 17:00,2008-11-11 08:00,2008-11-27 17:00,,,,,PT_Normal,,,,,SMVgrLXzkkCKVbMwmFrEjg,,,,N,0,0
621,82520,829,11039,912,1,0,N,N,N,CP_Drtn,TT_Task,DT_FixedDUR2,RV_OK,TK_NotStart,7111L20110,Wall tiles for apartments-wet area,2306,96,0,120,0,9159,9159,120,6026,0,6026,,,,2008-11-25 08:00,2008-12-11 17:00,,2008-11-11 08:00,2008-11-27 17:00,2008-11-11 08:00,2008-11-27 17:00,2008-11-11 08:00,2008-11-27 17:00,,,,,PT_Normal,,,,,Z2jdpo6V5ESZA6VCBm2klQ,,,,N,0,0
622,82521,829,10931,912,1,100,N,N,N,CP_Drtn,TT_Task,DT_FixedDUR2,RV_OK,TK_Complete,7111L22150,W/P for for apartments,2306,312,0,0,4880.4,0,4880.4,120,4328,4328,0,,2008-09-11 08:00,2008-09-28 17:00,2008-11-17 08:00,2008-11-16 17:00,,2008-10-02 08:00,2008-10-01 17:00,,,2008-09-11 08:00,2008-09-28 17:00,,,,,PT_Normal,,,,,itSnxfTu60q8prnMoQPEBQ,,,,N,4880.4,4328
623,82522,829,10872,912,1,0,N,N,N,CP_Drtn,TT_Task,DT_FixedDUR2,RV_OK,TK_NotStart,7111L24050,Aluminium doors & windows,2306,280,184,120,0,1976,1976,120,464,0,464,,,,2008-11-17 08:00,2008-12-03 17:00,,2008-10-07 08:00,2008-10-23 17:00,2008-10-07 08:00,2008-10-23 17:00,2008-10-07 08:00,2008-10-23 17:00,,,,,PT_Normal,,,,,OirWZs5hoEO5LTR/aX/OjQ,,,,N,0,0
624,82523,829,10872,912,1,0,N,N,N,CP_Drtn,TT_Task,DT_FixedDUR2,RV_OK,TK_NotStart,7111L24200,Balcony handrails,2306,40,0,120,0,2710,2710,120,1480,0,1480,,,,2008-12-04 08:00,2008-12-21 17:00,,2008-11-29 08:00,2008-12-15 17:00,2008-11-29 08:00,2008-12-15 17:00,2008-11-29 08:00,2008-12-15 17:00,,,,,PT_Normal,,,,,XR+ymKNT0U2u987oX6nGdQ,,,,N,0,0
625,82524,829,10872,912,1,0,N,N,N,CP_Drtn,TT_Task,DT_FixedDUR2,RV_OK,TK_NotStart,7111L24203,Lobby handrails,2306,552,128,64,0,946,946,64,504,0,504,,,,2009-02-14 08:00,2009-02-22 17:00,,2008-11-25 08:00,2008-12-03 17:00,2008-11-25 08:00,2008-12-03 17:00,2008-11-25 08:00,2008-12-03 17:00,,,,,PT_Normal,,,,,VE0EGnb4kE+uwo1Jst5uJw,,,,N,0,0
626,82525,829,10974,912,1,0,N,N,N,CP_Drtn,TT_Task,DT_FixedDUR2,RV_OK,TK_NotStart,7111L26050,Steel doors,2306,432,0,64,0,384,384,64,64,0,64,,,,2009-01-24 08:00,2009-02-01 17:00,,2008-11-22 08:00,2008-11-30 17:00,2008-11-22 08:00,2008-11-30 17:00,2008-11-22 08:00,2008-11-30 17:00,,,,,PT_Normal,,,,,bmkq9jTtd0yfE9W1dL9UBg,,,,N,0,0
627,82526,829,10934,912,1,0,N,N,N,CP_Drtn,TT_Task,DT_FixedDUR2,RV_OK,TK_NotStart,7111L30050,Wooden doors,2306,136,16,176,0,2192,2192,176,576,0,576,,,,2008-12-01 08:00,2008-12-25 17:00,,2008-11-11 08:00,2008-12-06 17:00,2008-11-11 08:00,2008-12-06 17:00,2008-11-11 08:00,2008-12-06 17:00,,,,,PT_Normal,,,,,GRaX41nsv06ZTN2xk1UgRQ,,,,N,0,0
628,82527,829,10881,912,1,0,N,N,N,CP_Drtn,TT_Task,DT_FixedDUR2,RV_OK,TK_NotStart,7111L32050,Kitchen cabinets,2306,96,56,128,0,3104,3104,128,96,0,96,,,,2008-12-11 08:00,2008-12-29 17:00,,2008-11-27 08:00,2008-12-15 17:00,2008-11-27 08:00,2008-12-15 17:00,2008-11-27 08:00,2008-12-15 17:00,,,,,PT_Normal,,,,,tYxYijZacUiuWHsyfKbEPA,,,,N,0,0
629,82528,829,10881,912,1,0,N,N,N,CP_Drtn,TT_Task,DT_FixedDUR2,RV_OK,TK_NotStart,7111L32100,Vanity counters,2306,56,0,120,0,1880,1880,120,160,0,160,,,,2008-12-07 08:00,2008-12-23 17:00,,2008-11-29 08:00,2008-12-15 17:00,2008-11-29 08:00,2008-12-15 17:00,2008-11-29 08:00,2008-12-15 17:00,,,,,PT_Normal,,,,,CHFBtbcIe0asEWRxqbrdtQ,,,,N,0,0
630,82529,829,10881,912,1,0,N,N,N,CP_Drtn,TT_Task,DT_FixedDUR2,RV_OK,TK_NotStart,7111L32150,Wardrobes,2306,232,192,120,0,4152,4152,120,192,0,192,,,,2008-12-13 08:00,2008-12-29 17:00,,2008-11-09 08:00,2008-11-25 17:00,2008-11-09 08:00,2008-11-25 17:00,2008-11-09 08:00,2008-11-25 17:00,,,,,PT_Normal,,,,,MydFXzxls0+HBHRN7adVPg,,,,N,0,0
631,82530,829,11045,912,1,0,N,N,N,CP_Drtn,TT_Task,DT_FixedDUR2,RV_OK,TK_NotStart,7111L34050,False ceiling works for apartments-dry area,2306,176,0,160,0,1506.16,1506.16,160,897.44,0,897.44,,,,2008-11-23 08:00,2008-12-15 17:00,,2008-10-28 08:00,2008-11-19 17:00,2008-10-28 08:00,2008-11-19 17:00,2008-10-28 08:00,2008-11-19 17:00,,,,,PT_Normal,,,,,wBG+de4tpUWB93pNA2VgQg,,,,N,0,0
632,82531,829,11045,912,1,0,N,N,N,CP_Drtn,TT_Task,DT_FixedDUR2,RV_OK,TK_NotStart,7111L34053,False ceiling works for corridors/lobbies,2306,176,0,72,0,9876,9876,72,6536,0,6536,,,,2008-12-06 08:00,2008-12-15 17:00,,2008-11-10 08:00,2008-11-19 17:00,2008-11-10 08:00,2008-11-19 17:00,2008-11-10 08:00,2008-11-19 17:00,,,,,PT_Normal,,,,,0PcjU6QMj0SStBE7BPMkUg,,,,N,0,0
633,82532,829,11045,912,1,0,N,N,N,CP_Drtn,TT_Task,DT_FixedDUR2,RV_OK,TK_NotStart,7111L34070,False ceiling works for apartments-wet area,2306,40,0,160,0,709.84,709.84,160,366.56,0,366.56,,,,2008-11-03 08:00,2008-11-25 17:00,,2008-10-28 08:00,2008-11-19 17:00,2008-10-28 08:00,2008-11-19 17:00,2008-10-28 08:00,2008-11-19 17:00,,,,,PT_Normal,,,,,Wohkw+pg10WB5PCPJyiMxg,,,,N,0,0
634,82533,829,10937,912,1,0,N,N,N,CP_Drtn,TT_Task,DT_FixedDUR2,RV_OK,TK_NotStart,7111L36050,Stone finishing top,2306,136,0,64,0,484,484,64,240,0,240,,,,2008-12-17 08:00,2008-12-25 17:00,,2008-11-27 08:00,2008-12-06 17:00,2008-11-27 08:00,2008-12-06 17:00,2008-11-27 08:00,2008-12-06 17:00,,,,,PT_Normal,,,,,CpjKTIBsDEq76zTQC+WqFg,,,,N,0,0
635,82534,829,10937,912,1,0,N,N,N,CP_Drtn,TT_Task,DT_FixedDUR2,RV_OK,TK_NotStart,7111L36100,Thresholds,2306,96,0,120,0,924,924,120,536,0,536,,,,2008-12-13 08:00,2008-12-29 17:00,,2008-11-29 08:00,2008-12-15 17:00,2008-11-29 08:00,2008-12-15 17:00,2008-11-29 08:00,2008-12-15 17:00,,,,,PT_Normal,,,,,aUtCqFY67UGwEMlPteai/Q,,,,N,0,0
636,82535,829,10886,912,1,0,N,N,N,CP_Drtn,TT_Task,DT_FixedDUR2,RV_OK,TK_NotStart,7111L38100,Epoxy coating system,2306,432,176,48,0,816,816,48,640,0,640,,,,2009-02-16 08:00,2009-02-22 17:00,,2008-12-15 08:00,2008-12-21 17:00,2008-12-15 08:00,2008-12-21 17:00,2008-12-15 08:00,2008-12-21 17:00,,,,,PT_Normal,,,,,OxC0O7KKrEGLmCJr+tVTrQ,,,,N,0,0
637,82536,829,10912,912,1,0,N,N,N,CP_Drtn,TT_Task,DT_FixedDUR2,RV_OK,TK_NotStart,7111L40050,Duplex apartment stairs,2306,224,0,120,0,3816,3816,120,96,0,96,,,,2008-11-19 08:00,2008-12-06 17:00,,2008-10-18 08:00,2008-11-03 17:00,2008-10-18 08:00,2008-11-03 17:00,2008-10-18 08:00,2008-11-03 17:00,,,,,PT_Normal,,,,,0bn5lwExME22tQh18tmy2w,,,,N,0,0
638,82537,829,10912,912,1,0,N,N,N,CP_Drtn,TT_Task,DT_FixedDUR2,RV_OK,TK_NotStart,7111L40100,Wooden steps for Duplex stairs,2306,224,0,120,0,936,936,120,96,0,96,,,,2008-12-01 08:00,2008-12-17 17:00,,2008-10-29 08:00,2008-11-15 17:00,2008-10-29 08:00,2008-11-15 17:00,2008-10-29 08:00,2008-11-15 17:00,,,,,PT_Normal,,,,,TSTfW88RXECk0qbiqgKR6w,,,,N,0,0
639,82538,829,10912,912,1,0,N,N,N,CP_Drtn,TT_Task,DT_FixedDUR2,RV_OK,TK_NotStart,7111L40150,Duplex stair railings,2306,224,168,120,0,5120,5120,120,2000,0,2000,,,,2008-12-13 08:00,2008-12-29 17:00,,2008-11-10 08:00,2008-11-26 17:00,2008-11-10 08:00,2008-11-26 17:00,2008-11-10 08:00,2008-11-26 17:00,,,,,PT_Normal,,,,,oTTCumRp00WpecJGPwF+qA,,,,N,0,0
640,82539,829,10954,912,1,0,N,N,N,CP_Drtn,TT_Task,DT_FixedDUR2,RV_OK,TK_NotStart,7111L42050,Signage works,2306,464,208,48,0,153.8,153.8,48,96,0,96,,,,2009-02-16 08:00,2009-02-22 17:00,,2008-12-10 08:00,2008-12-16 17:00,2008-12-10 08:00,2008-12-16 17:00,2008-12-10 08:00,2008-12-16 17:00,,,,,PT_Normal,,,,,rEDbhOaWH0aM7l20yrz1tQ,,,,N,0,0
641,82540,829,10914,912,1,100,N,N,N,CP_Drtn,TT_Task,DT_FixedDUR2,RV_OK,TK_Complete,7111L44050,Sub-frames,2306,40,0,0,1272,0,1272,120,576,576,0,,2008-09-03 08:00,2008-09-20 17:00,2008-10-08 08:00,2008-10-07 17:00,,2008-10-02 08:00,2008-10-01 17:00,,,2008-09-03 08:00,2008-09-20 17:00,,,,,PT_Normal,,,,,JXhTCt87RU+FcVnejjWoaA,,,,N,1272,576
642,82541,829,12430,912,1,100,N,N,N,CP_Drtn,TT_Task,DT_FixedDUR2,RV_OK,TK_Complete,7111L50100,MEP skeleton embedded provisions,2296,24,0,0,512,0,512,72,,,0,,2008-07-07 08:00,2008-07-16 17:00,2008-10-06 08:00,2008-10-05 17:00,,2008-10-02 08:00,2008-10-01 17:00,,,2008-07-07 08:00,2008-07-16 17:00,,,,,PT_Normal,,,,,XApM5j3Rq0GvDiWSp30JEQ,,,,N,512,0
643,82542,829,12427,912,1,100,N,N,N,CP_Drtn,TT_Task,DT_FixedDUR2,RV_OK,TK_Complete,7111L52050,A/C duct works,2296,184,0,0,831,0,831,160,,,0,,2008-09-06 08:00,2008-09-28 17:00,2008-10-29 08:00,2008-10-28 17:00,,2008-10-02 08:00,2008-10-01 17:00,,,2008-09-06 08:00,2008-09-28 17:00,,,,,PT_Normal,,,,,LYAE5a0BnEuVKp7OD1u+6w,,,,N,831,0
644,82543,829,12427,912,1,100,N,N,N,CP_Drtn,TT_Task,DT_FixedDUR2,RV_OK,TK_Complete,7111L52100,Chilled water pipe works,2296,120,0,0,787,0,787,72,,,0,,2008-09-18 08:00,2008-09-28 17:00,2008-10-20 08:00,2008-10-19 17:00,,2008-10-02 08:00,2008-10-01 17:00,,,2008-09-18 08:00,2008-09-28 17:00,,,,,PT_Normal,,,,,zgdudOeCOk2qTsj9GdrQ5Q,,,,N,787,0
645,82544,829,12115,912,1,100,N,N,N,CP_Drtn,TT_Task,DT_FixedDUR2,RV_OK,TK_Complete,7111L52150,FCU's hanging,2296,176,0,0,935.2,0,935.2,64,,,0,,2008-09-17 08:00,2008-09-25 17:00,2008-10-28 08:00,2008-10-27 17:00,,2008-10-02 08:00,2008-10-01 17:00,,,2008-09-17 08:00,2008-09-25 17:00,,,,,PT_Normal,,,,,q+uMoNpb0EmVsFxy4p5m+Q,,,,N,935.2,0
646,82545,829,12115,912,1,0,N,N,N,CP_Drtn,TT_Task,DT_FixedDUR2,RV_OK,TK_NotStart,7111L52300,FCU's assembly & duct connections,2296,96,56,80,0,951.2,951.2,80,0,0,0,,,,2008-10-22 08:00,2008-11-02 17:00,,2008-10-08 08:00,2008-10-19 17:00,2008-10-08 08:00,2008-10-19 17:00,2008-10-08 08:00,2008-10-19 17:00,,,,,PT_Normal,,,,,13biL8uogUONejUJ5hp1Xg,,,,N,0,0
647,82546,829,12115,912,1,0,N,N,N,CP_Drtn,TT_Task,DT_FixedDUR2,RV_OK,TK_NotStart,7111L52350,Grills & diffusers,2296,584,304,120,0,912,912,120,0,0,0,,,,2009-02-05 08:00,2009-02-22 17:00,,2008-11-12 08:00,2008-11-29 17:00,2008-11-12 08:00,2008-11-29 17:00,2008-11-12 08:00,2008-11-29 17:00,,,,,PT_Normal,,,,,cECI4RQl00GLaoo14Ik7jg,,,,N,0,0
648,82547,829,12427,912,1,100,N,N,N,CP_Drtn,TT_Task,DT_FixedDUR2,RV_OK,TK_Complete,7111L52550,A/C duct risers,2296,96,0,0,1626,0,1626,64,,,0,,2008-09-23 08:00,2008-10-01 17:00,2008-10-16 08:00,2008-10-15 17:00,,2008-10-02 08:00,2008-10-01 17:00,,,2008-09-23 08:00,2008-10-01 17:00,,,,,PT_Normal,,,,,Bl4xNAjyHEOes0s9x8az+Q,,,,N,1626,0
649,82548,829,12213,912,1,100,N,N,N,CP_Drtn,TT_Task,DT_FixedDUR2,RV_OK,TK_Complete,7111L54050,Chasing & Pex pipe works,2296,184,0,0,395,0,395,120,,,0,,2008-09-06 08:00,2008-09-22 17:00,2008-10-29 08:00,2008-10-28 17:00,,2008-10-02 08:00,2008-10-01 17:00,,,2008-09-06 08:00,2008-09-22 17:00,,,,,PT_Normal,,,,,h9C4G1cQ9EGKwArvrt9zBg,,,,N,395,0
650,82549,829,12213,912,1,100,N,N,N,CP_Drtn,TT_Task,DT_FixedDUR2,RV_OK,TK_Complete,7111L54100,Over head distribution water pipe network,2296,184,0,0,8314,0,8314,64,,,0,,2008-09-17 08:00,2008-09-25 17:00,2008-10-29 08:00,2008-10-28 17:00,,2008-10-02 08:00,2008-10-01 17:00,,,2008-09-17 08:00,2008-09-25 17:00,,,,,PT_Normal,,,,,dckE9QDmzUes08lFo1nkyA,,,,N,8314,0
651,82550,829,12418,912,1,0,N,N,N,CP_Drtn,TT_Task,DT_FixedDUR2,RV_OK,TK_NotStart,7111L54150,Water meter cabinet pipe works,2296,376,192,120,0,340,340,120,0,0,0,,,,2008-12-13 08:00,2008-12-29 17:00,,2008-10-19 08:00,2008-11-04 17:00,2008-10-19 08:00,2008-11-04 17:00,2008-10-19 08:00,2008-11-04 17:00,,,,,PT_Normal,,,,,7ZY1giETd0K57ogvpR2HWA,,,,N,0,0
652,82551,829,12320,912,1,100,N,N,N,CP_Drtn,TT_Task,DT_FixedDUR2,RV_OK,TK_Complete,7111L54250,Bathtubs,2296,336,0,0,176.8,0,273.6,80,,96.8,0,,2008-09-17 08:00,2008-09-28 17:00,2008-11-20 08:00,2008-11-19 17:00,,2008-10-02 08:00,2008-10-01 17:00,,,2008-09-17 08:00,2008-09-28 17:00,,,,,PT_Normal,,,,,8R4X1fqsUESFjlwLN+t2fw,,,,N,176.8,96.8
653,82552,829,12320,912,1,100,N,N,N,CP_Drtn,TT_Task,DT_FixedDUR2,RV_OK,TK_Complete,7111L54300,Water heater,2296,176,0,0,310.4,0,310.4,64,,,0,,2008-09-23 08:00,2008-10-01 17:00,2008-10-28 08:00,2008-10-27 17:00,,2008-10-02 08:00,2008-10-01 17:00,,,2008-09-23 08:00,2008-10-01 17:00,,,,,PT_Normal,,,,,iYR+fjEHJUaEDCvQB91odg,,,,N,310.4,0
654,82553,829,12320,912,1,55.6,N,N,N,CP_Drtn,TT_Task,DT_FixedDUR2,RV_OK,TK_Active,7111L54350,Over head pipe assembly & vlave connections,2296,184,144,32,131.66,105.34,237,72,,,,,2008-09-27 08:00,,2008-10-29 08:00,2008-11-02 17:00,,2008-10-02 08:00,2008-10-06 17:00,2008-10-02 08:00,2008-10-06 17:00,2008-09-27 08:00,2008-10-06 17:00,,,,,PT_Normal,,,,,RljXjApoQEqD3U2xfALSsA,,,,N,131.66,0
655,82554,829,12418,912,1,0,N,N,N,CP_Drtn,TT_Task,DT_FixedDUR2,RV_OK,TK_NotStart,7111L54400,Sanitary fixures,2296,136,0,120,0,516,516,120,0,0,0,,,,2008-12-09 08:00,2008-12-25 17:00,,2008-11-19 08:00,2008-12-06 17:00,2008-11-19 08:00,2008-12-06 17:00,2008-11-19 08:00,2008-12-06 17:00,,,,,PT_Normal,,,,,qZDSpBWS5UqtH2pUUzuUGA,,,,N,0,0
656,82555,829,12418,912,1,0,N,N,N,CP_Drtn,TT_Task,DT_FixedDUR2,RV_OK,TK_NotStart,7111L54450,Mirrors,2296,56,0,120,0,186,186,120,0,0,0,,,,2008-12-13 08:00,2008-12-29 17:00,,2008-12-04 08:00,2008-12-21 17:00,2008-12-04 08:00,2008-12-21 17:00,2008-12-04 08:00,2008-12-21 17:00,,,,,PT_Normal,,,,,Oju9usblEE2nc+PDnUr6PQ,,,,N,0,0
657,82556,829,12320,912,1,100,N,N,N,CP_Drtn,TT_Task,DT_FixedDUR2,RV_OK,TK_Complete,7111L54500,Concealed Flushing Cistern,2296,336,0,0,146,0,212,80,,66,0,,2008-09-17 08:00,2008-09-28 17:00,2008-11-20 08:00,2008-11-19 17:00,,2008-10-02 08:00,2008-10-01 17:00,,,2008-09-17 08:00,2008-09-28 17:00,,,,,PT_Normal,,,,,uOxF5t6aDUKxY377+sYeqQ,,,,N,146,66
658,82557,829,12107,912,1,100,N,N,N,CP_Drtn,TT_Task,DT_FixedDUR2,RV_OK,TK_Complete,7111L56050,Chasing and installation of drainage pipes,2296,136,0,0,285,0,285,120,,,0,,2008-09-06 08:00,2008-09-22 17:00,2008-10-22 08:00,2008-10-21 17:00,,2008-10-02 08:00,2008-10-01 17:00,,,2008-09-06 08:00,2008-09-22 17:00,,,,,PT_Normal,,,,,MzxOa3KQWkey9KoOHNmDNQ,,,,N,285,0
659,82558,829,12107,912,1,100,N,N,N,CP_Drtn,TT_Task,DT_FixedDUR2,RV_OK,TK_Complete,7111L56100,Drainage riser pipes,2296,160,0,0,284,0,284,64,,,0,,2008-09-02 08:00,2008-09-10 17:00,2008-10-26 08:00,2008-10-25 17:00,,2008-10-02 08:00,2008-10-01 17:00,,,2008-09-02 08:00,2008-09-10 17:00,,,,,PT_Normal,,,,,2l5euM5PFUa0BJuUtBWHEA,,,,N,284,0
660,82559,829,12205,912,1,12.5,N,N,N,CP_Drtn,TT_Task,DT_FixedDUR2,RV_OK,TK_Active,7111L56150,Over head drainage pipe works,2296,160,120,56,32.2,225.4,257.6,64,,,,,2008-10-01 08:00,,2008-10-26 08:00,2008-11-02 17:00,,2008-10-02 08:00,2008-10-09 17:00,2008-10-02 08:00,2008-10-09 17:00,2008-10-01 08:00,2008-10-09 17:00,,,,,PT_Normal,,,,,5zBZtxyZgky2yXhjQm+XWA,,,,N,32.2,0
661,82560,829,12412,912,1,100,N,N,N,CP_Drtn,TT_Task,DT_FixedDUR2,RV_OK,TK_Complete,7111L58050,Fire fighting pipe works,2296,216,0,0,292,0,292,72,,,0,,2008-09-11 08:00,2008-09-21 17:00,2008-11-03 08:00,2008-11-02 17:00,,2008-10-02 08:00,2008-10-01 17:00,,,2008-09-11 08:00,2008-09-21 17:00,,,,,PT_Normal,,,,,z+HoUDnovE6rZAQy87Gnzw,,,,N,292,0
662,82561,829,12409,912,1,0,N,N,N,CP_Drtn,TT_Task,DT_FixedDUR2,RV_OK,TK_NotStart,7111L58200,Fire cabinet complete,2296,432,176,64,0,339,339,64,0,0,0,,,,2009-02-14 08:00,2009-02-22 17:00,,2008-12-13 08:00,2008-12-21 17:00,2008-12-13 08:00,2008-12-21 17:00,2008-12-13 08:00,2008-12-21 17:00,,,,,PT_Normal,,,,,iu4lMIGCmUeFTyO+E4zZ6g,,,,N,0,0
663,82562,829,12409,912,1,0,N,N,N,CP_Drtn,TT_Task,DT_FixedDUR2,RV_OK,TK_NotStart,7111L58250,Sprinkler heads,2296,528,248,120,0,450,450,120,0,0,0,,,,2009-02-05 08:00,2009-02-22 17:00,,2008-11-20 08:00,2008-12-07 17:00,2008-11-20 08:00,2008-12-07 17:00,2008-11-20 08:00,2008-12-07 17:00,,,,,PT_Normal,,,,,F8RgoWG5HUuq8t3M4haarQ,,,,N,0,0
664,82563,829,12049,912,1,0,N,N,N,CP_Drtn,TT_Task,DT_FixedDUR2,RV_OK,TK_NotStart,7111L60050,LPG piping,2296,392,0,72,0,292,292,72,0,0,0,,,,2008-12-01 08:00,2008-12-10 17:00,,2008-10-05 08:00,2008-10-14 17:00,2008-10-05 08:00,2008-10-14 17:00,2008-10-05 08:00,2008-10-14 17:00,,,,,PT_Normal,,,,,l1D0Gxp3TEysuiv0X0oeXQ,,,,N,0,0
665,82564,829,12405,912,1,0,N,N,N,CP_Drtn,TT_Task,DT_FixedDUR2,RV_OK,TK_NotStart,7111L60100,Gas meter & leak detector,2296,448,408,72,0,248,248,72,0,0,0,,,,2008-12-20 08:00,2008-12-29 17:00,,2008-10-15 08:00,2008-10-25 17:00,2008-10-15 08:00,2008-10-25 17:00,2008-10-15 08:00,2008-10-25 17:00,,,,,PT_Normal,,,,,6pwxdtp43UChO/mpDrG2fg,,,,N,0,0
666,82565,829,12094,912,1,0,N,N,N,CP_Drtn,TT_Task,DT_FixedDUR2,RV_OK,TK_NotStart,7111L62050,BMS cabling,2296,80,40,64,0,486.4,486.4,64,0,0,0,,,,2008-10-25 08:00,2008-11-02 17:00,,2008-10-13 08:00,2008-10-21 17:00,2008-10-13 08:00,2008-10-21 17:00,2008-10-13 08:00,2008-10-21 17:00,,,,,PT_Normal,,,,,fKPi+w5/MUGMOutFegXe8Q,,,,N,0,0
667,82566,829,12192,912,1,0,N,N,N,CP_Drtn,TT_Task,DT_FixedDUR2,RV_OK,TK_NotStart,7111L62100,DGC & cable termination to equipments,2296,440,8,48,0,329.6,329.6,48,0,0,0,,,,2009-02-10 08:00,2009-02-16 17:00,,2008-12-08 08:00,2008-12-14 17:00,2008-12-08 08:00,2008-12-14 17:00,2008-12-08 08:00,2008-12-14 17:00,,,,,PT_Normal,,,,,8IMsdnEbgUm666yTS7/MUg,,,,N,0,0
668,82567,829,12299,912,1,100,N,N,N,CP_Drtn,TT_Task,DT_FixedDUR2,RV_OK,TK_Complete,7111L66050,Chasing and installation of conduits,2296,40,0,0,1809.6,0,1809.6,120,,,0,,2008-09-03 08:00,2008-09-20 17:00,2008-10-08 08:00,2008-10-07 17:00,,2008-10-02 08:00,2008-10-01 17:00,,,2008-09-03 08:00,2008-09-20 17:00,,,,,PT_Normal,,,,,znSar2VD7UOstzGiparBzg,,,,N,1809.6,0
669,82568,829,12299,912,1,6.7,N,N,N,CP_Drtn,TT_Task,DT_FixedDUR2,RV_OK,TK_Active,7111L66100,Cable trays & trunking,2296,40,0,112,101.86,1426.14,1528,120,,,,,2008-10-01 08:00,,2008-10-08 08:00,2008-10-23 17:00,,2008-10-02 08:00,2008-10-18 17:00,2008-10-02 08:00,2008-10-18 17:00,2008-10-01 08:00,2008-10-18 17:00,,,,,PT_Normal,,,,,nHLP2xLw7UeeMykcv6pGlg,,,,N,101.86,0
670,82569,829,12197,912,1,100,N,N,N,CP_Drtn,TT_Task,DT_FixedDUR2,RV_OK,TK_Complete,7111L68050,Single core wiring,2296,216,0,0,1128,0,1128,72,,,0,,2008-09-06 08:00,2008-09-15 17:00,2008-11-03 08:00,2008-11-02 17:00,,2008-10-02 08:00,2008-10-01 17:00,,,2008-09-06 08:00,2008-09-15 17:00,,,,,PT_Normal,,,,,H3e3XiIc1kK5KspwryUkHQ,,,,N,1128,0
671,82570,829,12077,912,1,100,N,N,N,CP_Drtn,TT_Task,DT_FixedDUR2,RV_OK,TK_Complete,7111L68100,DB enclosure,2296,72,0,0,416,0,416,64,,,0,,2008-09-11 08:00,2008-09-20 17:00,2008-10-13 08:00,2008-10-12 17:00,,2008-10-02 08:00,2008-10-01 17:00,,,2008-09-11 08:00,2008-09-20 17:00,,,,,PT_Normal,,,,,9QKDvp4/Q0mdnsSAeQrnMw,,,,N,416,0
672,82571,829,12077,912,1,0,N,N,N,CP_Drtn,TT_Task,DT_FixedDUR2,RV_OK,TK_NotStart,7111L68150,LV feeder cables,2296,112,40,72,0,2606.4,2606.4,72,0,0,0,,,,2008-11-04 08:00,2008-11-13 17:00,,2008-10-19 08:00,2008-10-28 17:00,2008-10-19 08:00,2008-10-28 17:00,2008-10-19 08:00,2008-10-28 17:00,,,,,PT_Normal,,,,,aNJ7QrRry0W0Jlaw/VFMhg,,,,N,0,0
673,82572,829,12183,912,1,0,N,N,N,CP_Drtn,TT_Task,DT_FixedDUR2,RV_OK,TK_NotStart,7111L68250,DB-breakers assembly,2296,200,160,72,0,564.8,564.8,72,0,0,0,,,,2008-12-20 08:00,2008-12-29 17:00,,2008-11-20 08:00,2008-11-30 17:00,2008-11-20 08:00,2008-11-30 17:00,2008-11-20 08:00,2008-11-30 17:00,,,,,PT_Normal,,,,,RzB4Qt5UKUGu6gQUNSYJKg,,,,N,0,0
674,82573,829,12183,912,1,0,N,N,N,CP_Drtn,TT_Task,DT_FixedDUR2,RV_OK,TK_NotStart,7111L68300,SMDB,2296,432,0,48,0,1315.2,1315.2,48,0,0,0,,,,2009-02-09 08:00,2009-02-15 17:00,,2008-12-08 08:00,2008-12-14 17:00,2008-12-08 08:00,2008-12-14 17:00,2008-12-08 08:00,2008-12-14 17:00,,,,,PT_Normal,,,,,QGgR2IzI1EK8uV7hnq+Krg,,,,N,0,0
675,82574,829,12183,912,1,0,N,N,N,CP_Drtn,TT_Task,DT_FixedDUR2,RV_OK,TK_NotStart,7111L68350,Light Fittings,2296,208,168,120,0,1105.6,1105.6,120,0,0,0,,,,2008-12-13 08:00,2008-12-29 17:00,,2008-11-12 08:00,2008-11-29 17:00,2008-11-12 08:00,2008-11-29 17:00,2008-11-12 08:00,2008-11-29 17:00,,,,,PT_Normal,,,,,Ol16CwHL+Ue46EqbN7LsVw,,,,N,0,0
676,82575,829,12183,912,1,0,N,N,N,CP_Drtn,TT_Task,DT_FixedDUR2,RV_OK,TK_NotStart,7111L68400,Lighting Control Panels,2296,448,192,64,0,275.2,275.2,64,0,0,0,,,,2009-02-14 08:00,2009-02-22 17:00,,2008-12-10 08:00,2008-12-18 17:00,2008-12-10 08:00,2008-12-18 17:00,2008-12-10 08:00,2008-12-18 17:00,,,,,PT_Normal,,,,,DA0wqqOVEkivQvZOqVVLCw,,,,N,0,0
677,82576,829,12183,912,1,0,N,N,N,CP_Drtn,TT_Task,DT_FixedDUR2,RV_OK,TK_NotStart,7111L68600,Switches & sockets,2296,200,160,72,0,494.4,494.4,72,0,0,0,,,,2008-12-20 08:00,2008-12-29 17:00,,2008-11-20 08:00,2008-11-30 17:00,2008-11-20 08:00,2008-11-30 17:00,2008-11-20 08:00,2008-11-30 17:00,,,,,PT_Normal,,,,,86t5DDNwOk6XmAW9xsM/TQ,,,,N,0,0
678,82577,829,12390,912,1,100,N,N,N,CP_Drtn,TT_Task,DT_FixedDUR2,RV_OK,TK_Complete,7111L70050,Central Battery cables,2296,216,0,0,345.6,0,345.6,64,,,0,,2008-09-11 08:00,2008-09-20 17:00,2008-11-03 08:00,2008-11-02 17:00,,2008-10-02 08:00,2008-10-01 17:00,,,2008-09-11 08:00,2008-09-20 17:00,,,,,PT_Normal,,,,,DGZNFmVe9kyLFcj/M4Ms2A,,,,N,345.6,0
679,82578,829,12179,912,1,0,N,N,N,CP_Drtn,TT_Task,DT_FixedDUR2,RV_OK,TK_NotStart,7111L70150,Emergency & exit light fittings,2296,568,184,48,0,188.8,188.8,48,0,0,0,,,,2009-02-16 08:00,2009-02-22 17:00,,2008-11-25 08:00,2008-12-01 17:00,2008-11-25 08:00,2008-12-01 17:00,2008-11-25 08:00,2008-12-01 17:00,,,,,PT_Normal,,,,,o7loxwLrkU2h6gkXFT606Q,,,,N,0,0
680,82579,829,12091,912,1,0,N,N,N,CP_Drtn,TT_Task,DT_FixedDUR2,RV_OK,TK_NotStart,7111L72200,Intercom system cables,2296,64,24,64,0,592,592,64,0,0,0,,,,2008-10-25 08:00,2008-11-02 17:00,,2008-10-15 08:00,2008-10-23 17:00,2008-10-15 08:00,2008-10-23 17:00,2008-10-15 08:00,2008-10-23 17:00,,,,,PT_Normal,,,,,Q8W/bSbuiU+36g0daWUdSw,,,,N,0,0
681,82580,829,12284,912,1,0,N,N,N,CP_Drtn,TT_Task,DT_FixedDUR2,RV_OK,TK_NotStart,7111L72250,Intercom system equipments,2296,184,144,64,0,697.6,697.6,64,0,0,0,,,,2008-12-21 08:00,2008-12-29 17:00,,2008-11-24 08:00,2008-12-02 17:00,2008-11-24 08:00,2008-12-02 17:00,2008-11-24 08:00,2008-12-02 17:00,,,,,PT_Normal,,,,,uU6eXp0OCUey9TR/Dj+S7w,,,,N,0,0
682,82581,829,12173,912,1,100,N,N,N,CP_Drtn,TT_Task,DT_FixedDUR2,RV_OK,TK_Complete,7111L74050,Fire alarm cables,2296,216,0,0,380.8,0,380.8,64,,,0,,2008-09-11 08:00,2008-09-20 17:00,2008-11-03 08:00,2008-11-02 17:00,,2008-10-02 08:00,2008-10-01 17:00,,,2008-09-11 08:00,2008-09-20 17:00,,,,,PT_Normal,,,,,gar0EmXEE0yWK2dKWS5h3g,,,,N,380.8,0
683,82582,829,12175,912,1,0,N,N,N,CP_Drtn,TT_Task,DT_FixedDUR2,RV_OK,TK_NotStart,7111L74100,Fire alarm fittings,2296,512,232,120,0,172.8,172.8,120,0,0,0,,,,2009-02-05 08:00,2009-02-22 17:00,,2008-11-23 08:00,2008-12-09 17:00,2008-11-23 08:00,2008-12-09 17:00,2008-11-23 08:00,2008-12-09 17:00,,,,,PT_Normal,,,,,eobvTQViskuPnx3QRdUHNg,,,,N,0,0
684,82583,829,12060,912,1,0,N,N,N,CP_Drtn,TT_Task,DT_FixedDUR2,RV_OK,TK_NotStart,7111L76050,Structured cabling,2296,80,40,64,0,345.6,345.6,64,0,0,0,,,,2008-10-27 08:00,2008-11-04 17:00,,2008-10-15 08:00,2008-10-23 17:00,2008-10-15 08:00,2008-10-23 17:00,2008-10-15 08:00,2008-10-23 17:00,,,,,PT_Normal,,,,,hztRkwESaUi+M0jFJROt9A,,,,N,0,0
685,82584,829,12571,912,1,0,N,N,N,CP_Drtn,TT_Task,DT_FixedDUR2,RV_OK,TK_NotStart,7111L76100,Consolidated pionts,2296,40,0,64,0,486.4,486.4,64,0,0,0,,,,2008-11-05 08:00,2008-11-13 17:00,,2008-10-30 08:00,2008-11-08 17:00,2008-10-30 08:00,2008-11-08 17:00,2008-10-30 08:00,2008-11-08 17:00,,,,,PT_Normal,,,,,ki8Gdo9Md06Kf9p5UcPwlw,,,,N,0,0
686,82585,829,11220,912,1,100,N,N,N,CP_Drtn,TT_Task,DT_FixedDUR2,RV_OK,TK_Complete,7111U12050,Columns & walls 1U to 2L - Part 1,2306,24,0,0,3724.34,0,3724.34,32,111688.16,111688.16,0,,2008-07-23 08:00,2008-07-27 17:00,2008-10-06 08:00,2008-10-05 17:00,,2008-10-02 08:00,2008-10-01 17:00,,,2008-07-23 08:00,2008-07-27 17:00,,,,,PT_Normal,,,,,skgObpmQb0a4+TNTG2ffsg,,,,N,3724.34,111688.16
687,82586,829,11220,912,1,100,N,N,N,CP_Drtn,TT_Task,DT_FixedDUR2,RV_OK,TK_Complete,7111U12051,Columns & walls 1U to 2L - Part 2,2306,24,0,0,3724.34,0,3724.34,32,111688.16,111688.16,0,,2008-08-02 08:00,2008-08-05 17:00,2008-10-06 08:00,2008-10-05 17:00,,2008-10-02 08:00,2008-10-01 17:00,,,2008-08-02 08:00,2008-08-05 17:00,,,,,PT_Normal,,,,,/zXv72f7Aky0jK4BUvW7sw,,,,N,3724.34,111688.16
688,82587,829,11220,912,1,100,N,N,N,CP_Drtn,TT_Task,DT_FixedDUR2,RV_OK,TK_Complete,7111U12052,Columns & walls 1U to 2L - Middle Part,2306,24,0,0,8020.4,0,8020.4,32,241635.84,241635.84,0,,2008-07-30 08:00,2008-08-04 17:00,2008-10-06 08:00,2008-10-05 17:00,,2008-10-02 08:00,2008-10-01 17:00,,,2008-07-30 08:00,2008-08-04 17:00,,,,,PT_Normal,,,,,86GU4UX6TkyJqbobJHsrLA,,,,N,8020.4,241635.84
689,82588,829,11220,912,1,100,N,N,N,CP_Drtn,TT_Task,DT_FixedDUR2,RV_OK,TK_Complete,7111U12200,Slab @ 2L level - Part 1,2306,24,0,0,4376.76,0,4376.76,56,160277.68,160277.68,0,,2008-08-02 08:00,2008-08-09 17:00,2008-10-06 08:00,2008-10-05 17:00,,2008-10-02 08:00,2008-10-01 17:00,,,2008-08-02 08:00,2008-08-09 17:00,,,,,PT_Normal,,,,,d+utUcplZ0ekiPteZnI3ww,,,,N,4376.76,160277.68
690,82589,829,11220,912,1,100,N,N,N,CP_Drtn,TT_Task,DT_FixedDUR2,RV_OK,TK_Complete,7111U12201,Slab @ 2L level - Part 2,2306,24,0,0,4376.76,0,4376.76,56,160277.68,160277.68,0,,2008-08-10 08:00,2008-08-17 17:00,2008-10-06 08:00,2008-10-05 17:00,,2008-10-02 08:00,2008-10-01 17:00,,,2008-08-10 08:00,2008-08-17 17:00,,,,,PT_Normal,,,,,2IWW/mbPE02KTOmceVCJYg,,,,N,4376.76,160277.68
691,82590,829,11220,912,1,100,N,N,N,CP_Drtn,TT_Task,DT_FixedDUR2,RV_OK,TK_Complete,7111U12202,Slab @ 2L level - Middle Part,2306,24,0,0,6315.78,0,6315.78,56,232201.84,232201.84,0,,2008-08-07 08:00,2008-08-14 17:00,2008-10-06 08:00,2008-10-05 17:00,,2008-10-02 08:00,2008-10-01 17:00,,,2008-08-07 08:00,2008-08-14 17:00,,,,,PT_Normal,,,,,MdO0Mgf0f0y8gBHZEcbdgA,,,,N,6315.78,232201.84
692,82591,829,11220,912,1,100,N,N,N,CP_Drtn,TT_Task,DT_FixedDUR2,RV_OK,TK_Complete,7111U12250,Staircases 1U to 2L,2296,208,0,0,991.88,0,991.88,24,18457.6,18457.6,0,,2008-08-18 08:00,2008-08-20 17:00,2008-11-02 08:00,2008-11-01 17:00,,2008-10-02 08:00,2008-10-01 17:00,,,2008-08-18 08:00,2008-08-20 17:00,,,,,PT_Normal,,,,,JydgFZSyGUepQixT7NXyxw,,,,N,991.88,18457.6
693,82592,829,10984,912,1,100,N,N,N,CP_Drtn,TT_Task,DT_FixedDUR2,RV_OK,TK_Complete,7111U14050,Block works,2306,40,0,0,24323,0,30085.5,120,18440,24202.5,0,,2008-09-03 08:00,2008-09-20 17:00,2008-10-08 08:00,2008-10-07 17:00,,2008-10-02 08:00,2008-10-01 17:00,,,2008-09-03 08:00,2008-09-20 17:00,,,,,PT_Normal,,,,,4pZMvyP8zkWG23hU4TfEOw,,,,N,24323,24202.5
694,82593,829,10887,912,1,80,N,N,N,CP_Drtn,TT_Task,DT_FixedDUR2,RV_OK,TK_Active,7111U16050,Plaster works,2306,40,0,24,19500.64,4875.16,24375.8,120,19024,15219.2,3804.8,,2008-09-18 08:00,,2008-10-08 08:00,2008-10-11 17:00,,2008-10-02 08:00,2008-10-05 17:00,2008-10-02 08:00,2008-10-05 17:00,2008-09-18 08:00,2008-10-05 17:00,,,,,PT_Normal,,,,,PPtmGlJu5kGvGkeBatErvA,,,,N,19500.64,15219.2
695,82594,829,10887,912,1,46.7,N,N,N,CP_Drtn,TT_Task,DT_FixedDUR2,RV_OK,TK_Active,7111U16051,Plaste works behind tiles,2306,208,128,64,2531.22,2892.78,5424,120,4160,1941.36,2218.64,,2008-09-24 08:00,,2008-11-02 08:00,2008-11-10 17:00,,2008-10-02 08:00,2008-10-11 17:00,2008-10-02 08:00,2008-10-11 17:00,2008-09-24 08:00,2008-10-11 17:00,,,,,PT_Normal,,,,,GuCKxvm+vUacxqy8JMg26w,,,,N,2531.22,1941.36
696,82595,829,10986,912,1,100,N,N,N,CP_Drtn,TT_Task,DT_FixedDUR2,RV_OK,TK_Complete,7111U18050,Rendering works,2306,40,0,0,5683,0,5683,120,5000,5000,0,,2008-09-11 08:00,2008-09-28 17:00,2008-10-08 08:00,2008-10-07 17:00,,2008-10-02 08:00,2008-10-01 17:00,,,2008-09-11 08:00,2008-09-28 17:00,,,,,PT_Normal,,,,,EvN/IMZo90iO4ZUQQBZWdA,,,,N,5683,5000
697,82596,829,10986,912,1,33.3,N,N,N,CP_Drtn,TT_Task,DT_FixedDUR2,RV_OK,TK_Active,7111U18100,Paintin1 base coats,2306,40,0,80,8848.73,17697.47,26546.2,120,24024,8008,16016,,2008-09-27 08:00,,2008-10-08 08:00,2008-10-19 17:00,,2008-10-02 08:00,2008-10-13 17:00,2008-10-02 08:00,2008-10-13 17:00,2008-09-27 08:00,2008-10-13 17:00,,,,,PT_Normal,,,,,SJs4DUqwPE6kbocGp50wEQ,,,,N,8848.73,8008
698,82597,829,10986,912,1,0,N,N,N,CP_Drtn,TT_Task,DT_FixedDUR2,RV_OK,TK_NotStart,7111U18150,Painting 1st top coat for apartments,2306,184,0,72,0,17300.2,17300.2,72,16408,0,16408,,,,2008-12-20 08:00,2008-12-29 17:00,,2008-11-23 08:00,2008-12-02 17:00,2008-11-23 08:00,2008-12-02 17:00,2008-11-23 08:00,2008-12-02 17:00,,,,,PT_Normal,,,,,zPxG03zfhESGvqTB8Nqxdg,,,,N,0,0
699,82598,829,10946,912,1,0,N,N,N,CP_Drtn,TT_Task,DT_FixedDUR2,RV_OK,TK_NotStart,7111U20050,Floor tiles for apartments-dry area,2306,224,0,120,0,9570,9570,120,7000,0,7000,,,,2008-11-08 08:00,2008-11-24 17:00,,2008-10-06 08:00,2008-10-22 17:00,2008-10-06 08:00,2008-10-22 17:00,2008-10-06 08:00,2008-10-22 17:00,,,,,PT_Normal,,,,,ykcpbq6d3U2c1rcjF56hMg,,,,N,0,0
700,82599,829,10946,912,1,0,N,N,N,CP_Drtn,TT_Task,DT_FixedDUR2,RV_OK,TK_NotStart,7111U20070,Floor tiles for apartments-wet area,2306,80,0,120,0,3835.2,3835.2,120,2752,0,2752,,,,2008-11-25 08:00,2008-12-11 17:00,,2008-11-13 08:00,2008-11-30 17:00,2008-11-13 08:00,2008-11-30 17:00,2008-11-13 08:00,2008-11-30 17:00,,,,,PT_Normal,,,,,G6UG8yj5y0GVIJbSghsq/Q,,,,N,0,0
701,82600,829,10946,912,1,0,N,N,N,CP_Drtn,TT_Task,DT_FixedDUR2,RV_OK,TK_NotStart,7111U20110,Wall tiles for apartments-wet area,2306,144,0,120,0,9066,9066,120,5964,0,5964,,,,2008-12-04 08:00,2008-12-21 17:00,,2008-11-13 08:00,2008-11-30 17:00,2008-11-13 08:00,2008-11-30 17:00,2008-11-13 08:00,2008-11-30 17:00,,,,,PT_Normal,,,,,Wph6/fRceESEFX+zE2M9gA,,,,N,0,0
702,82601,829,10884,912,1,66.7,N,N,N,CP_Drtn,TT_Task,DT_FixedDUR2,RV_OK,TK_Active,7111U22150,W/P for for apartments,2306,176,0,40,1986.7,993.3,2980,120,2600,1733.36,866.64,,2008-09-21 08:00,,2008-10-28 08:00,2008-11-02 17:00,,2008-10-02 08:00,2008-10-07 17:00,2008-10-02 08:00,2008-10-07 17:00,2008-09-21 08:00,2008-10-07 17:00,,,,,PT_Normal,,,,,1bwd6ISjNECerukSHxcsfg,,,,N,1986.7,1733.36
703,82602,829,10989,912,1,0,N,N,N,CP_Drtn,TT_Task,DT_FixedDUR2,RV_OK,TK_NotStart,7111U24050,Aluminium doors & windows,2306,288,152,120,0,1208,1208,120,272,0,272,,,,2008-11-25 08:00,2008-12-11 17:00,,2008-10-14 08:00,2008-10-30 17:00,2008-10-14 08:00,2008-10-30 17:00,2008-10-14 08:00,2008-10-30 17:00,,,,,PT_Normal,,,,,aExzAo81NUC/TW00Xx/TFg,,,,N,0,0
704,82603,829,10989,912,1,0,N,N,N,CP_Drtn,TT_Task,DT_FixedDUR2,RV_OK,TK_NotStart,7111U24200,Balcony handrails,2306,40,0,120,0,2192,2192,120,1184,0,1184,,,,2008-12-13 08:00,2008-12-29 17:00,,2008-12-07 08:00,2008-12-23 17:00,2008-12-07 08:00,2008-12-23 17:00,2008-12-07 08:00,2008-12-23 17:00,,,,,PT_Normal,,,,,KwwpsKZuZEudlIhOVNSvAg,,,,N,0,0
705,82604,829,10990,912,1,0,N,N,N,CP_Drtn,TT_Task,DT_FixedDUR2,RV_OK,TK_NotStart,7111U30050,Wooden doors,2306,120,16,176,0,1520,1520,176,384,0,384,,,,2008-12-01 08:00,2008-12-25 17:00,,2008-11-13 08:00,2008-12-08 17:00,2008-11-13 08:00,2008-12-08 17:00,2008-11-13 08:00,2008-12-08 17:00,,,,,PT_Normal,,,,,udobtJ95d0WTHVZhKqIYsw,,,,N,0,0
706,82605,829,10950,912,1,0,N,N,N,CP_Drtn,TT_Task,DT_FixedDUR2,RV_OK,TK_NotStart,7111U32100,Vanity counters,2306,56,0,120,0,2232,2232,120,192,0,192,,,,2008-12-13 08:00,2008-12-29 17:00,,2008-12-04 08:00,2008-12-21 17:00,2008-12-04 08:00,2008-12-21 17:00,2008-12-04 08:00,2008-12-21 17:00,,,,,PT_Normal,,,,,WwOmS5e8uUame3pTXJdb/A,,,,N,0,0
707,82606,829,10950,912,1,0,N,N,N,CP_Drtn,TT_Task,DT_FixedDUR2,RV_OK,TK_NotStart,7111U32150,Wardrobes,2306,216,176,120,0,6168,6168,120,288,0,288,,,,2008-12-13 08:00,2008-12-29 17:00,,2008-11-11 08:00,2008-11-27 17:00,2008-11-11 08:00,2008-11-27 17:00,2008-11-11 08:00,2008-11-27 17:00,,,,,PT_Normal,,,,,/TnGJlxJukek9ckt5iTi7g,,,,N,0,0
708,82607,829,10873,912,1,0,N,N,N,CP_Drtn,TT_Task,DT_FixedDUR2,RV_OK,TK_NotStart,7111U34050,False ceiling works for apartments-dry area,2306,184,0,160,0,1525.12,1525.12,160,910.08,0,910.08,,,,2008-11-26 08:00,2008-12-18 17:00,,2008-10-30 08:00,2008-11-22 17:00,2008-10-30 08:00,2008-11-22 17:00,2008-10-30 08:00,2008-11-22 17:00,,,,,PT_Normal,,,,,Z43CKx0EmkiPNh5hkA5KAA,,,,N,0,0
709,82608,829,10873,912,1,0,N,N,N,CP_Drtn,TT_Task,DT_FixedDUR2,RV_OK,TK_NotStart,7111U34070,False ceiling works for apartments-wet area,2306,80,0,160,0,690.88,690.88,160,353.92,0,353.92,,,,2008-11-11 08:00,2008-12-03 17:00,,2008-10-30 08:00,2008-11-22 17:00,2008-10-30 08:00,2008-11-22 17:00,2008-10-30 08:00,2008-11-22 17:00,,,,,PT_Normal,,,,,0lyxWQG1x0mE+MD5w7AIQw,,,,N,0,0
710,82609,829,10952,912,1,0,N,N,N,CP_Drtn,TT_Task,DT_FixedDUR2,RV_OK,TK_NotStart,7111U36050,Stone finishin1 top,2306,136,96,64,0,344,344,64,160,0,160,,,,2008-12-21 08:00,2008-12-29 17:00,,2008-12-01 08:00,2008-12-09 17:00,2008-12-01 08:00,2008-12-09 17:00,2008-12-01 08:00,2008-12-09 17:00,,,,,PT_Normal,,,,,DsIfiulPL0affmRoFVafIA,,,,N,0,0
711,82610,829,10952,912,1,0,N,N,N,CP_Drtn,TT_Task,DT_FixedDUR2,RV_OK,TK_NotStart,7111U36100,Thresholds,2306,96,56,64,0,520,520,64,304,0,304,,,,2008-12-21 08:00,2008-12-29 17:00,,2008-12-07 08:00,2008-12-15 17:00,2008-12-07 08:00,2008-12-15 17:00,2008-12-07 08:00,2008-12-15 17:00,,,,,PT_Normal,,,,,bjuj6evlgUK4IgshWpJEiw,,,,N,0,0
712,82611,829,10953,912,1,100,N,N,N,CP_Drtn,TT_Task,DT_FixedDUR2,RV_OK,TK_Complete,7111U44050,Sub-frames,2306,40,0,0,848,0,848,80,384,384,0,,2008-09-13 08:00,2008-09-23 17:00,2008-10-08 08:00,2008-10-07 17:00,,2008-10-02 08:00,2008-10-01 17:00,,,2008-09-13 08:00,2008-09-23 17:00,,,,,PT_Normal,,,,,y0/8QzxRSk2yi2vd4ltwZA,,,,N,848,384
713,82612,829,12567,912,1,100,N,N,N,CP_Drtn,TT_Task,DT_FixedDUR2,RV_OK,TK_Complete,7111U50100,MEP skeleton embedded provisions,2296,24,0,0,512,0,512,72,,,0,,2008-07-23 08:00,2008-08-03 17:00,2008-10-06 08:00,2008-10-05 17:00,,2008-10-02 08:00,2008-10-01 17:00,,,2008-07-23 08:00,2008-08-03 17:00,,,,,PT_Normal,,,,,3t4XmGcE8UCCFdMBlq2adQ,,,,N,512,0
714,82613,829,12032,912,1,75,N,N,N,CP_Drtn,TT_Task,DT_FixedDUR2,RV_OK,TK_Active,7111U52050,A/C duct works,2296,176,88,40,623.26,207.74,831,160,,,,,2008-09-15 08:00,,2008-10-28 08:00,2008-11-02 17:00,,2008-10-02 08:00,2008-10-07 17:00,2008-10-02 08:00,2008-10-07 17:00,2008-09-15 08:00,2008-10-07 17:00,,,,,PT_Normal,,,,,opLBm+Yu+E+/UhMdWxXJrg,,,,N,623.26,0
715,82614,829,12032,912,1,44.4,N,N,N,CP_Drtn,TT_Task,DT_FixedDUR2,RV_OK,TK_Active,7111U52100,Chilled water pipe works,2296,112,24,40,349.78,437.22,787,72,,,,,2008-09-28 08:00,,2008-10-19 08:00,2008-10-23 17:00,,2008-10-02 08:00,2008-10-07 17:00,2008-10-02 08:00,2008-10-07 17:00,2008-09-28 08:00,2008-10-07 17:00,,,,,PT_Normal,,,,,p+VeAT6A70K1iVqrijQYPg,,,,N,349.78,0
716,82615,829,12356,912,1,62.5,N,N,N,CP_Drtn,TT_Task,DT_FixedDUR2,RV_OK,TK_Active,7111U52150,FCU's hanging,2296,168,80,24,584.5,350.7,935.2,64,,,,,2008-09-27 08:00,,2008-10-27 08:00,2008-10-29 17:00,,2008-10-02 08:00,2008-10-05 17:00,2008-10-02 08:00,2008-10-05 17:00,2008-09-27 08:00,2008-10-05 17:00,,,,,PT_Normal,,,,,Don+9pPAtUaFqRTt/nm5Ng,,,,N,584.5,0
717,82616,829,12356,912,1,0,N,N,N,CP_Drtn,TT_Task,DT_FixedDUR2,RV_OK,TK_NotStart,7111U52300,FCU's assembly & duct connections,2296,88,8,80,0,951.2,951.2,80,0,0,0,,,,2008-10-30 08:00,2008-11-10 17:00,,2008-10-18 08:00,2008-10-28 17:00,2008-10-18 08:00,2008-10-28 17:00,2008-10-18 08:00,2008-10-28 17:00,,,,,PT_Normal,,,,,pParpP4RoEuuqHzneHwRJw,,,,N,0,0
718,82617,829,12356,912,1,0,N,N,N,CP_Drtn,TT_Task,DT_FixedDUR2,RV_OK,TK_NotStart,7111U52350,Grills & diffusers,2296,192,152,64,0,856,856,64,0,0,0,,,,2008-12-21 08:00,2008-12-29 17:00,,2008-11-23 08:00,2008-12-01 17:00,2008-11-23 08:00,2008-12-01 17:00,2008-11-23 08:00,2008-12-01 17:00,,,,,PT_Normal,,,,,84HOTlRwyUKWKmlKChymJQ,,,,N,0,0
719,82618,829,12032,912,1,0,N,N,N,CP_Drtn,TT_Task,DT_FixedDUR2,RV_OK,TK_NotStart,7111U52550,A/C duct risers,2296,88,0,64,0,1626,1626,64,0,0,0,,,,2008-10-15 08:00,2008-10-23 17:00,,2008-10-02 08:00,2008-10-11 17:00,2008-10-02 08:00,2008-10-11 17:00,2008-10-02 08:00,2008-10-11 17:00,,,,,PT_Normal,,,,,gF0QZ6k+AUWxVJLxCfga/w,,,,N,0,0
720,82619,829,12564,912,1,100,N,N,N,CP_Drtn,TT_Task,DT_FixedDUR2,RV_OK,TK_Complete,7111U54050,Chasing & Pex pipe works,2296,208,0,0,395,0,395,120,,,0,,2008-09-15 08:00,2008-10-01 17:00,2008-11-02 08:00,2008-11-01 17:00,,2008-10-02 08:00,2008-10-01 17:00,,,2008-09-15 08:00,2008-10-01 17:00,,,,,PT_Normal,,,,,W6q9rwF2a02LCdQ+/a59eQ,,,,N,395,0
721,82620,829,12353,912,1,50,N,N,N,CP_Drtn,TT_Task,DT_FixedDUR2,RV_OK,TK_Active,7111U54250,Bathtubs,2296,328,0,40,88.4,136.8,273.6,80,,48.4,,,2008-09-27 08:00,,2008-11-19 08:00,2008-11-24 17:00,,2008-10-02 08:00,2008-10-07 17:00,2008-10-02 08:00,2008-10-07 17:00,2008-09-27 08:00,2008-10-07 17:00,,,,,PT_Normal,,,,,DK0goknJ20Sy5WwyTblTDw,,,,N,88.4,48.4
722,82621,829,12353,912,1,0,N,N,N,CP_Drtn,TT_Task,DT_FixedDUR2,RV_OK,TK_NotStart,7111U54300,Water heater,2296,168,0,64,0,310.4,310.4,64,0,0,0,,,,2008-10-27 08:00,2008-11-04 17:00,,2008-10-02 08:00,2008-10-11 17:00,2008-10-02 08:00,2008-10-11 17:00,2008-10-02 08:00,2008-10-11 17:00,,,,,PT_Normal,,,,,NBs4IfMrLUuTablD/t101g,,,,N,0,0
723,82622,829,12353,912,1,0,N,N,N,CP_Drtn,TT_Task,DT_FixedDUR2,RV_OK,TK_NotStart,7111U54350,Over head pipe assembly & vlave connections,2296,200,120,64,0,229,229,64,0,0,0,,,,2008-11-02 08:00,2008-11-10 17:00,,2008-10-04 08:00,2008-10-12 17:00,2008-10-04 08:00,2008-10-12 17:00,2008-10-04 08:00,2008-10-12 17:00,,,,,PT_Normal,,,,,h9sMAl/nXkmfMQp4bgz77g,,,,N,0,0
724,82623,829,12561,912,1,0,N,N,N,CP_Drtn,TT_Task,DT_FixedDUR2,RV_OK,TK_NotStart,7111U54400,Sanitary fixures,2296,144,8,120,0,516,516,120,0,0,0,,,,2008-12-13 08:00,2008-12-29 17:00,,2008-11-22 08:00,2008-12-08 17:00,2008-11-22 08:00,2008-12-08 17:00,2008-11-22 08:00,2008-12-08 17:00,,,,,PT_Normal,,,,,7mw4Rto5mE6wJFIxWqkjXg,,,,N,0,0
725,82624,829,12561,912,1,0,N,N,N,CP_Drtn,TT_Task,DT_FixedDUR2,RV_OK,TK_NotStart,7111U54450,Mirrors,2296,56,16,80,0,146,146,80,0,0,0,,,,2008-12-18 08:00,2008-12-29 17:00,,2008-12-10 08:00,2008-12-21 17:00,2008-12-10 08:00,2008-12-21 17:00,2008-12-10 08:00,2008-12-21 17:00,,,,,PT_Normal,,,,,nwN63FaahUCqe6uoMwkzzg,,,,N,0,0
726,82625,829,12353,912,1,50,N,N,N,CP_Drtn,TT_Task,DT_FixedDUR2,RV_OK,TK_Active,7111U54500,Concealed Flushing Cistern,2296,328,248,40,73,106,212,80,,33,,,2008-09-27 08:00,,2008-11-19 08:00,2008-11-24 17:00,,2008-10-02 08:00,2008-10-07 17:00,2008-10-02 08:00,2008-10-07 17:00,2008-09-27 08:00,2008-10-07 17:00,,,,,PT_Normal,,,,,94lRqMKmP0OdGV33WI61xw,,,,N,73,33
727,82626,829,12142,912,1,100,N,N,N,CP_Drtn,TT_Task,DT_FixedDUR2,RV_OK,TK_Complete,7111U56050,Chasing and installation of drainage pipes,2296,160,0,0,285,0,285,120,,,0,,2008-09-15 08:00,2008-10-01 17:00,2008-10-26 08:00,2008-10-25 17:00,,2008-10-02 08:00,2008-10-01 17:00,,,2008-09-15 08:00,2008-10-01 17:00,,,,,PT_Normal,,,,,kcvJmtFxikK7BhbJ1FDagw,,,,N,285,0
728,82627,829,12142,912,1,100,N,N,N,CP_Drtn,TT_Task,DT_FixedDUR2,RV_OK,TK_Complete,7111U56100,Drainage riser pipes,2296,208,0,0,284,0,284,64,,,0,,2008-09-11 08:00,2008-09-20 17:00,2008-11-02 08:00,2008-11-01 17:00,,2008-10-02 08:00,2008-10-01 17:00,,,2008-09-11 08:00,2008-09-20 17:00,,,,,PT_Normal,,,,,RkJd4UZPyECT4nvUEpWWww,,,,N,284,0
729,82628,829,12350,912,1,0,N,N,N,CP_Drtn,TT_Task,DT_FixedDUR2,RV_OK,TK_NotStart,7111U56150,Over head drainage pipe works,2296,80,0,64,0,257.6,257.6,64,0,0,0,,,,2008-11-02 08:00,2008-11-10 17:00,,2008-10-21 08:00,2008-10-29 17:00,2008-10-21 08:00,2008-10-29 17:00,2008-10-21 08:00,2008-10-29 17:00,,,,,PT_Normal,,,,,U+sjJk+Lz0SVcSLs33kEcg,,,,N,0,0
730,82629,829,12148,912,1,100,N,N,N,CP_Drtn,TT_Task,DT_FixedDUR2,RV_OK,TK_Complete,7111U58050,Fire fighting pipe works,2296,224,0,0,292,0,292,72,,,0,,2008-09-21 08:00,2008-09-30 17:00,2008-11-04 08:00,2008-11-03 17:00,,2008-10-02 08:00,2008-10-01 17:00,,,2008-09-21 08:00,2008-09-30 17:00,,,,,PT_Normal,,,,,AtH6MA/3hUOmKiM2LNq/vQ,,,,N,292,0
731,82630,829,12138,912,1,0,N,N,N,CP_Drtn,TT_Task,DT_FixedDUR2,RV_OK,TK_NotStart,7111U58250,Sprinkler heads,2296,192,152,64,0,394,394,64,0,0,0,,,,2008-12-21 08:00,2008-12-29 17:00,,2008-11-23 08:00,2008-12-01 17:00,2008-11-23 08:00,2008-12-01 17:00,2008-11-23 08:00,2008-12-01 17:00,,,,,PT_Normal,,,,,WAf5MZ03a0W2qZNYJXFgNQ,,,,N,0,0
732,82631,829,11236,912,1,100,N,N,N,CP_Drtn,TT_Task,DT_FixedDUR2,RV_OK,TK_Complete,7111U66050,Chasing and installation of conduits,2296,40,0,0,1528,0,1528,120,,,0,,2008-09-13 08:00,2008-09-29 17:00,2008-10-08 08:00,2008-10-07 17:00,,2008-10-02 08:00,2008-10-01 17:00,,,2008-09-13 08:00,2008-09-29 17:00,,,,,PT_Normal,,,,,4Dr7FYvgD0OCPuQzIHJsZg,,,,N,1528,0
733,82632,829,12346,912,1,100,N,N,N,CP_Drtn,TT_Task,DT_FixedDUR2,RV_OK,TK_Complete,7111U68050,Single core wiring,2296,240,0,0,1128,0,1128,72,,,0,,2008-09-15 08:00,2008-09-24 17:00,2008-11-06 08:00,2008-11-05 17:00,,2008-10-02 08:00,2008-10-01 17:00,,,2008-09-15 08:00,2008-09-24 17:00,,,,,PT_Normal,,,,,bFOdLwmemUqpZ6DwUqqr1w,,,,N,1128,0
734,82633,829,12554,912,1,0,N,N,N,CP_Drtn,TT_Task,DT_FixedDUR2,RV_OK,TK_NotStart,7111U68350,Light Fittings,2296,192,152,120,0,1035.2,1035.2,120,0,0,0,,,,2008-12-13 08:00,2008-12-29 17:00,,2008-11-15 08:00,2008-12-01 17:00,2008-11-15 08:00,2008-12-01 17:00,2008-11-15 08:00,2008-12-01 17:00,,,,,PT_Normal,,,,,T+5RxsmIcEaY1ebtgdnWqA,,,,N,0,0
735,82634,829,12554,912,1,0,N,N,N,CP_Drtn,TT_Task,DT_FixedDUR2,RV_OK,TK_NotStart,7111U68600,Switches & sockets,2296,184,144,72,0,494.4,494.4,72,0,0,0,,,,2008-12-20 08:00,2008-12-29 17:00,,2008-11-23 08:00,2008-12-02 17:00,2008-11-23 08:00,2008-12-02 17:00,2008-11-23 08:00,2008-12-02 17:00,,,,,PT_Normal,,,,,O7lWxgqVDEuZMNFmbPUPDg,,,,N,0,0
736,82635,829,12552,912,1,100,N,N,N,CP_Drtn,TT_Task,DT_FixedDUR2,RV_OK,TK_Complete,7111U74050,Fire alarm cables,2296,208,0,0,380.8,0,380.8,64,,,0,,2008-09-21 08:00,2008-09-29 17:00,2008-11-02 08:00,2008-11-01 17:00,,2008-10-02 08:00,2008-10-01 17:00,,,2008-09-21 08:00,2008-09-29 17:00,,,,,PT_Normal,,,,,E8SpHgQdxUmUbrgMzrafSg,,,,N,380.8,0
737,82636,829,12334,912,1,0,N,N,N,CP_Drtn,TT_Task,DT_FixedDUR2,RV_OK,TK_NotStart,7111U74100,Fire alarm fittings,2296,192,152,64,0,116.8,116.8,64,0,0,0,,,,2008-12-21 08:00,2008-12-29 17:00,,2008-11-23 08:00,2008-12-01 17:00,2008-11-23 08:00,2008-12-01 17:00,2008-11-23 08:00,2008-12-01 17:00,,,,,PT_Normal,,,,,pOF+H+FrsESd+WIxnakbyA,,,,N,0,0
738,82637,829,12332,912,1,0,N,N,N,CP_Drtn,TT_Task,DT_FixedDUR2,RV_OK,TK_NotStart,7111U76050,Structured cabling,2296,40,0,64,0,345.6,345.6,64,0,0,0,,,,2008-10-27 08:00,2008-11-04 17:00,,2008-10-21 08:00,2008-10-29 17:00,2008-10-21 08:00,2008-10-29 17:00,2008-10-21 08:00,2008-10-29 17:00,,,,,PT_Normal,,,,,FTBXGu+o6k+jmNs0+oR6uQ,,,,N,0,0
739,82638,829,10844,912,1,0,N,N,N,CP_Drtn,TT_Task,DT_FixedDUR2,RV_OK,TK_NotStart,7112L00000,Pre-Snagging & Disnagging for duplexes,2296,24,0,120,0,420,420,120,0,0,0,,,,2009-01-22 08:00,2009-02-08 17:00,,2009-01-19 08:00,2009-02-04 17:00,2009-01-19 08:00,2009-02-04 17:00,2009-01-19 08:00,2009-02-04 17:00,,,,,PT_Normal,,,,,T4cvEBg14U6beiPNfuhAMw,,,,N,0,0
740,82639,829,10844,912,1,0,N,N,N,CP_Drtn,TT_Task,DT_FixedDUR2,RV_OK,TK_NotStart,7112L00002,Pre-Snagging & Disnagging for corrid & Srv rooms,2296,184,0,64,0,214,214,64,0,0,0,,,,2009-03-07 08:00,2009-03-15 17:00,,2009-02-08 08:00,2009-02-16 17:00,2009-02-08 08:00,2009-02-16 17:00,2009-02-08 08:00,2009-02-16 17:00,,,,,PT_Normal,,,,,uRRz1KoSnUCIR3UiYVfhTg,,,,N,0,0
741,82640,829,11255,912,1,100,N,N,N,CP_Drtn,TT_Task,DT_FixedDUR2,RV_OK,TK_Complete,7112L12050,Columns & walls 2L to 2U - Part 1,2306,24,0,0,3506.92,0,3506.92,24,105352.08,105352.08,0,,2008-08-10 08:00,2008-08-12 17:00,2008-10-06 08:00,2008-10-05 17:00,,2008-10-02 08:00,2008-10-01 17:00,,,2008-08-10 08:00,2008-08-12 17:00,,,,,PT_Normal,,,,,bJCuSzBZC0uddR/njckuSw,,,,N,3506.92,105352.08
742,82641,829,11255,912,1,100,N,N,N,CP_Drtn,TT_Task,DT_FixedDUR2,RV_OK,TK_Complete,7112L12051,Columns & walls 2L to 2U - Part 2,2306,24,0,0,3506.92,0,3506.92,24,105352.08,105352.08,0,,2008-08-18 08:00,2008-08-20 17:00,2008-10-06 08:00,2008-10-05 17:00,,2008-10-02 08:00,2008-10-01 17:00,,,2008-08-18 08:00,2008-08-20 17:00,,,,,PT_Normal,,,,,cabhcxkjAkyjmG9nrFWJAg,,,,N,3506.92,105352.08
743,82642,829,11255,912,1,100,N,N,N,CP_Drtn,TT_Task,DT_FixedDUR2,RV_OK,TK_Complete,7112L12052,Columns & walls 2L to 2U - Middle Part,2306,24,0,0,7218.37,0,7218.37,24,217616.24,217616.24,0,,2008-08-16 08:00,2008-08-18 17:00,2008-10-06 08:00,2008-10-05 17:00,,2008-10-02 08:00,2008-10-01 17:00,,,2008-08-16 08:00,2008-08-18 17:00,,,,,PT_Normal,,,,,VGYReMvMXUaGGylBanGJ6w,,,,N,7218.37,217616.24
744,82643,829,11255,912,1,100,N,N,N,CP_Drtn,TT_Task,DT_FixedDUR2,RV_OK,TK_Complete,7112L12200,Slab @ 2U level - Part 1,2306,24,0,0,3872.99,0,3872.99,56,141659.52,141659.52,0,,2008-08-18 08:00,2008-08-25 17:00,2008-10-06 08:00,2008-10-05 17:00,,2008-10-02 08:00,2008-10-01 17:00,,,2008-08-18 08:00,2008-08-25 17:00,,,,,PT_Normal,,,,,OmETPcNBcUmf/Ow06eTfHg,,,,N,3872.99,141659.52
745,82644,829,11255,912,1,100,N,N,N,CP_Drtn,TT_Task,DT_FixedDUR2,RV_OK,TK_Complete,7112L12201,Slab @ 2U level - Part 2,2306,24,0,0,3865.79,0,3865.79,56,141318.64,141318.64,0,,2008-08-26 08:00,2008-09-02 17:00,2008-10-06 08:00,2008-10-05 17:00,,2008-10-02 08:00,2008-10-01 17:00,,,2008-08-26 08:00,2008-09-02 17:00,,,,,PT_Normal,,,,,cY3b/frW802KH+0TGLPRQw,,,,N,3865.79,141318.64
746,82645,829,11255,912,1,100,N,N,N,CP_Drtn,TT_Task,DT_FixedDUR2,RV_OK,TK_Complete,7112L12202,Slab @ 2U level - Middle Part,2306,24,0,0,5579.54,0,5579.54,56,204883.76,204883.76,0,,2008-08-24 08:00,2008-08-31 17:00,2008-10-06 08:00,2008-10-05 17:00,,2008-10-02 08:00,2008-10-01 17:00,,,2008-08-24 08:00,2008-08-31 17:00,,,,,PT_Normal,,,,,X/FIaBnyg0OCGWvSO6N29w,,,,N,5579.54,204883.76
747,82646,829,11255,912,1,100,N,N,N,CP_Drtn,TT_Task,DT_FixedDUR2,RV_OK,TK_Complete,7112L12250,Staircases 2L to 2U,2306,208,0,0,991.88,0,991.88,24,18457.6,18457.6,0,,2008-09-02 08:00,2008-09-04 17:00,2008-11-02 08:00,2008-11-01 17:00,,2008-10-02 08:00,2008-10-01 17:00,,,2008-09-02 08:00,2008-09-04 17:00,,,,,PT_Normal,,,,,Vhb1mjwZGEi65G9SnIXl8w,,,,N,991.88,18457.6
748,82647,829,10906,912,1,33.3,N,N,N,CP_Drtn,TT_Task,DT_FixedDUR2,RV_OK,TK_Active,7112L14050,Block works,2306,24,0,80,8107.64,20057.03,30085.5,120,18440,8067.47,12293.36,,2008-09-27 08:00,,2008-10-06 08:00,2008-10-16 17:00,,2008-10-02 08:00,2008-10-13 17:00,2008-10-02 08:00,2008-10-13 17:00,2008-09-27 08:00,2008-10-13 17:00,,,,,PT_Normal,,,,,AoOUS/oQ3kyMI02CqgReMg,,,,N,8107.64,8067.47
749,82648,829,10997,912,1,0,N,N,N,CP_Drtn,TT_Task,DT_FixedDUR2,RV_OK,TK_NotStart,7112L16050,Plaster works,2306,40,0,120,0,24385.9,24385.9,120,19032,0,19032,,,,2008-10-18 08:00,2008-11-03 17:00,,2008-10-12 08:00,2008-10-28 17:00,2008-10-12 08:00,2008-10-28 17:00,2008-10-12 08:00,2008-10-28 17:00,,,,,PT_Normal,,,,,qAa3/obeDkuHY/WCJKm6rA,,,,N,0,0
750,82649,829,10997,912,1,0,N,N,N,CP_Drtn,TT_Task,DT_FixedDUR2,RV_OK,TK_NotStart,7112L16051,Plaste works behind tiles,2306,184,160,120,0,10136.2,10136.2,120,7856,0,7856,,,,2008-11-08 08:00,2008-11-24 17:00,,2008-10-12 08:00,2008-10-28 17:00,2008-10-12 08:00,2008-10-28 17:00,2008-10-12 08:00,2008-10-28 17:00,,,,,PT_Normal,,,,,9oS8mmaoNUqrNUXu+kNdHA,,,,N,0,0
751,82650,829,10930,912,1,0,N,N,N,CP_Drtn,TT_Task,DT_FixedDUR2,RV_OK,TK_NotStart,7112L18050,Rendering works,2306,64,24,120,0,5683,5683,120,5000,0,5000,,,,2008-10-14 08:00,2008-10-30 17:00,,2008-10-05 08:00,2008-10-21 17:00,2008-10-05 08:00,2008-10-21 17:00,2008-10-05 08:00,2008-10-21 17:00,,,,,PT_Normal,,,,,/xNhZCRY6UC4RxwhM9hjsg,,,,N,0,0
752,82651,829,10930,912,1,0,N,N,N,CP_Drtn,TT_Task,DT_FixedDUR2,RV_OK,TK_NotStart,7112L18100,Painting base coats,2306,40,0,120,0,26555.6,26555.6,120,24032,0,24032,,,,2008-10-26 08:00,2008-11-11 17:00,,2008-10-20 08:00,2008-11-05 17:00,2008-10-20 08:00,2008-11-05 17:00,2008-10-20 08:00,2008-11-05 17:00,,,,,PT_Normal,,,,,PZnUgTA05EGh9GqsuL6MeA,,,,N,0,0
753,82652,829,10930,912,1,0,N,N,N,CP_Drtn,TT_Task,DT_FixedDUR2,RV_OK,TK_NotStart,7112L18150,Painting 1st top coat for apartments,2306,136,0,72,0,17300.2,17300.2,72,16408,0,16408,,,,2009-01-04 08:00,2009-01-13 17:00,,2008-12-15 08:00,2008-12-24 17:00,2008-12-15 08:00,2008-12-24 17:00,2008-12-15 08:00,2008-12-24 17:00,,,,,PT_Normal,,,,,R2eI5HlAoki2Oth4+qupLg,,,,N,0,0
754,82653,829,10930,912,1,0,N,N,N,CP_Drtn,TT_Task,DT_FixedDUR2,RV_OK,TK_NotStart,7112L18153,Painting 1st top coat for corridors/lobbies,2306,352,0,48,0,14370,14370,48,13640,0,13640,,,,2009-02-17 08:00,2009-02-23 17:00,,2008-12-28 08:00,2009-01-03 17:00,2008-12-28 08:00,2009-01-03 17:00,2008-12-28 08:00,2009-01-03 17:00,,,,,PT_Normal,,,,,wyw8xL9bwkCfcGo5ZlTvJw,,,,N,0,0
755,82654,829,10930,912,1,0,N,N,N,CP_Drtn,TT_Task,DT_FixedDUR2,RV_OK,TK_NotStart,7112L18155,Painting 1st top coat for service rooms,2306,320,0,48,0,6364.4,6364.4,48,6016,0,6016,,,,2009-02-12 08:00,2009-02-18 17:00,,2008-12-28 08:00,2009-01-03 17:00,2008-12-28 08:00,2009-01-03 17:00,2008-12-28 08:00,2009-01-03 17:00,,,,,PT_Normal,,,,,oDWzxfZgZE+tAfMVEo0CHw,,,,N,0,0
756,82655,829,10844,912,1,0,N,N,N,CP_Drtn,TT_Task,DT_FixedDUR2,RV_OK,TK_NotStart,7112L18200,Painting final top coat,2306,240,56,32,0,25265.8,25265.8,32,24032,0,24032,,,,2009-03-23 08:00,2009-03-26 17:00,,2009-02-16 08:00,2009-02-19 17:00,2009-02-16 08:00,2009-02-19 17:00,2009-02-16 08:00,2009-02-19 17:00,,,,,PT_Normal,,,,,D+A6OFgoIkGIkTtEClbGcg,,,,N,0,0
757,82656,829,10958,912,1,0,N,N,N,CP_Drtn,TT_Task,DT_FixedDUR2,RV_OK,TK_NotStart,7112L20050,Floor tiles for apartments-dry area,2306,144,24,120,0,8846.4,8846.4,120,6464,0,6464,,,,2008-11-19 08:00,2008-12-06 17:00,,2008-10-29 08:00,2008-11-15 17:00,2008-10-29 08:00,2008-11-15 17:00,2008-10-29 08:00,2008-11-15 17:00,,,,,PT_Normal,,,,,P4vOHBbP0k67DXGr7O+rag,,,,N,0,0
758,82657,829,10958,912,1,0,N,N,N,CP_Drtn,TT_Task,DT_FixedDUR2,RV_OK,TK_NotStart,7112L20053,Floor tiles for corridors / lobbies,2306,112,0,48,0,4638,4638,48,3400,0,3400,,,,2008-12-31 08:00,2009-01-06 17:00,,2008-12-15 08:00,2008-12-21 17:00,2008-12-15 08:00,2008-12-21 17:00,2008-12-15 08:00,2008-12-21 17:00,,,,,PT_Normal,,,,,MblB+phlakuIDK0iX7xcBA,,,,N,0,0
759,82658,829,10958,912,1,0,N,N,N,CP_Drtn,TT_Task,DT_FixedDUR2,RV_OK,TK_NotStart,7112L20070,Floor tiles for apartments-wet area,2306,24,0,120,0,4062,4062,120,2920,0,2920,,,,2008-12-07 08:00,2008-12-23 17:00,,2008-12-03 08:00,2008-12-20 17:00,2008-12-03 08:00,2008-12-20 17:00,2008-12-03 08:00,2008-12-20 17:00,,,,,PT_Normal,,,,,IUhRirewFUybCkzNDDf0Lw,,,,N,0,0
760,82659,829,10958,912,1,0,N,N,N,CP_Drtn,TT_Task,DT_FixedDUR2,RV_OK,TK_NotStart,7112L20110,Wall tiles for apartments-wet area,2306,48,0,120,0,9159,9159,120,6026,0,6026,,,,2008-12-13 08:00,2008-12-29 17:00,,2008-12-06 08:00,2008-12-22 17:00,2008-12-06 08:00,2008-12-22 17:00,2008-12-06 08:00,2008-12-22 17:00,,,,,PT_Normal,,,,,W6NjfraEq0S8Ej9k7wvx8g,,,,N,0,0
761,82660,829,10959,912,1,0,N,N,N,CP_Drtn,TT_Task,DT_FixedDUR2,RV_OK,TK_NotStart,7112L22150,W/P for for apartments,2306,248,0,72,0,4832.4,4832.4,72,4328,0,4328,,,,2008-11-19 08:00,2008-11-29 17:00,,2008-10-14 08:00,2008-10-23 17:00,2008-10-14 08:00,2008-10-23 17:00,2008-10-14 08:00,2008-10-23 17:00,,,,,PT_Normal,,,,,uEi9c/PzTU2bbJwWcE6I2A,,,,N,0,0
762,82661,829,10933,912,1,0,N,N,N,CP_Drtn,TT_Task,DT_FixedDUR2,RV_OK,TK_NotStart,7112L24050,Aluminium doors & windows,2306,248,144,120,0,1976,1976,120,464,0,464,,,,2008-12-13 08:00,2008-12-29 17:00,,2008-11-06 08:00,2008-11-23 17:00,2008-11-06 08:00,2008-11-23 17:00,2008-11-06 08:00,2008-11-23 17:00,,,,,PT_Normal,,,,,65AIS5qPJk656of8ArRstA,,,,N,0,0
763,82662,829,10933,912,1,0,N,N,N,CP_Drtn,TT_Task,DT_FixedDUR2,RV_OK,TK_NotStart,7112L24200,Balcony handrails,2306,64,0,120,0,2710,2710,120,1480,0,1480,,,,2008-12-30 08:00,2009-01-15 17:00,,2008-12-21 08:00,2009-01-06 17:00,2008-12-21 08:00,2009-01-06 17:00,2008-12-21 08:00,2009-01-06 17:00,,,,,PT_Normal,,,,,HkcZRSYzlkm74/FUUS63gg,,,,N,0,0
764,82663,829,10933,912,1,0,N,N,N,CP_Drtn,TT_Task,DT_FixedDUR2,RV_OK,TK_NotStart,7112L24203,Lobby handrails,2306,432,248,64,0,946,946,64,504,0,504,,,,2009-02-23 08:00,2009-03-03 17:00,,2008-12-22 08:00,2008-12-30 17:00,2008-12-22 08:00,2008-12-30 17:00,2008-12-22 08:00,2008-12-30 17:00,,,,,PT_Normal,,,,,VXM4q3NnPEeBZRKnt6FY7g,,,,N,0,0
765,82664,829,10909,912,1,0,N,N,N,CP_Drtn,TT_Task,DT_FixedDUR2,RV_OK,TK_NotStart,7112L26050,Steel doors,2306,320,0,48,0,368,368,48,64,0,64,,,,2009-02-05 08:00,2009-02-11 17:00,,2008-12-21 08:00,2008-12-27 17:00,2008-12-21 08:00,2008-12-27 17:00,2008-12-21 08:00,2008-12-27 17:00,,,,,PT_Normal,,,,,sUivQfGcekqRWZb/wejrZg,,,,N,0,0
766,82665,829,10962,912,1,0,N,N,N,CP_Drtn,TT_Task,DT_FixedDUR2,RV_OK,TK_NotStart,7112L30050,Wooden doors,2306,104,32,176,0,2192,2192,176,576,0,576,,,,2008-12-18 08:00,2009-01-12 17:00,,2008-12-03 08:00,2008-12-28 17:00,2008-12-03 08:00,2008-12-28 17:00,2008-12-03 08:00,2008-12-28 17:00,,,,,PT_Normal,,,,,6nV3FVwymUOXN//PukCNLA,,,,N,0,0
767,82666,829,10895,912,1,0,N,N,N,CP_Drtn,TT_Task,DT_FixedDUR2,RV_OK,TK_NotStart,7112L32050,Kitchen cabinets,2306,48,24,128,0,3104,3104,128,96,0,96,,,,2008-12-29 08:00,2009-01-15 17:00,,2008-12-22 08:00,2009-01-08 17:00,2008-12-22 08:00,2009-01-08 17:00,2008-12-22 08:00,2009-01-08 17:00,,,,,PT_Normal,,,,,eyuznFTlzEGLtWgd+EvaRA,,,,N,0,0
768,82667,829,10895,912,1,0,N,N,N,CP_Drtn,TT_Task,DT_FixedDUR2,RV_OK,TK_NotStart,7112L32100,Vanity counters,2306,24,0,120,0,1880,1880,120,160,0,160,,,,2008-12-24 08:00,2009-01-10 17:00,,2008-12-21 08:00,2009-01-06 17:00,2008-12-21 08:00,2009-01-06 17:00,2008-12-21 08:00,2009-01-06 17:00,,,,,PT_Normal,,,,,PThUoTBGX0CgWGU+CZb9Zw,,,,N,0,0
769,82668,829,10895,912,1,0,N,N,N,CP_Drtn,TT_Task,DT_FixedDUR2,RV_OK,TK_NotStart,7112L32150,Wardrobes,2306,184,160,120,0,4152,4152,120,192,0,192,,,,2008-12-30 08:00,2009-01-15 17:00,,2008-12-03 08:00,2008-12-20 17:00,2008-12-03 08:00,2008-12-20 17:00,2008-12-03 08:00,2008-12-20 17:00,,,,,PT_Normal,,,,,0gijDfOkY0GBMaYKeTm7Lg,,,,N,0,0
770,82669,829,10964,912,1,0,N,N,N,CP_Drtn,TT_Task,DT_FixedDUR2,RV_OK,TK_NotStart,7112L34050,False ceiling works for apartments-dry area,2306,128,0,160,0,1506.16,1506.16,160,897.44,0,897.44,,,,2008-12-10 08:00,2009-01-01 17:00,,2008-11-22 08:00,2008-12-14 17:00,2008-11-22 08:00,2008-12-14 17:00,2008-11-22 08:00,2008-12-14 17:00,,,,,PT_Normal,,,,,R8BXiS/py0yLlD2iDkngxQ,,,,N,0,0
771,82670,829,10964,912,1,0,N,N,N,CP_Drtn,TT_Task,DT_FixedDUR2,RV_OK,TK_NotStart,7112L34053,False ceiling works for corridors/lobbies,2306,112,0,72,0,9876,9876,72,6536,0,6536,,,,2008-12-23 08:00,2009-01-01 17:00,,2008-12-07 08:00,2008-12-16 17:00,2008-12-07 08:00,2008-12-16 17:00,2008-12-07 08:00,2008-12-16 17:00,,,,,PT_Normal,,,,,9K2c7n9hC0S6iVBzoNdfQA,,,,N,0,0
772,82671,829,10964,912,1,0,N,N,N,CP_Drtn,TT_Task,DT_FixedDUR2,RV_OK,TK_NotStart,7112L34070,False ceiling works for apartments-wet area,2306,24,0,160,0,709.84,709.84,160,366.56,0,366.56,,,,2008-11-25 08:00,2008-12-17 17:00,,2008-11-22 08:00,2008-12-14 17:00,2008-11-22 08:00,2008-12-14 17:00,2008-11-22 08:00,2008-12-14 17:00,,,,,PT_Normal,,,,,WZfIjVyUKkW+m+2bipa2Qw,,,,N,0,0
773,82672,829,10880,912,1,0,N,N,N,CP_Drtn,TT_Task,DT_FixedDUR2,RV_OK,TK_NotStart,7112L36050,Stone finishing top,2306,88,8,64,0,484,484,64,240,0,240,,,,2009-01-04 08:00,2009-01-12 17:00,,2008-12-22 08:00,2008-12-30 17:00,2008-12-22 08:00,2008-12-30 17:00,2008-12-22 08:00,2008-12-30 17:00,,,,,PT_Normal,,,,,P+No/BLBl0ixMqx8txfrLA,,,,N,0,0
774,82673,829,10880,912,1,0,N,N,N,CP_Drtn,TT_Task,DT_FixedDUR2,RV_OK,TK_NotStart,7112L36100,Thresholds,2306,64,8,120,0,924,924,120,536,0,536,,,,2008-12-30 08:00,2009-01-15 17:00,,2008-12-21 08:00,2009-01-06 17:00,2008-12-21 08:00,2009-01-06 17:00,2008-12-21 08:00,2009-01-06 17:00,,,,,PT_Normal,,,,,jOfJ3Wdj9kqZZc7LK1Odpw,,,,N,0,0
775,82674,829,10898,912,1,0,N,N,N,CP_Drtn,TT_Task,DT_FixedDUR2,RV_OK,TK_NotStart,7112L38100,Epoxy coating system,2306,320,136,48,0,816,816,48,640,0,640,,,,2009-02-25 08:00,2009-03-03 17:00,,2009-01-10 08:00,2009-01-15 17:00,2009-01-10 08:00,2009-01-15 17:00,2009-01-10 08:00,2009-01-15 17:00,,,,,PT_Normal,,,,,hTqoGUtYQkyyL8KMOswZ9A,,,,N,0,0
776,82675,829,10967,912,1,0,N,N,N,CP_Drtn,TT_Task,DT_FixedDUR2,RV_OK,TK_NotStart,7112L40050,Duplex apartment stairs,2306,120,0,120,0,3816,3816,120,96,0,96,,,,2008-12-07 08:00,2008-12-23 17:00,,2008-11-19 08:00,2008-12-06 17:00,2008-11-19 08:00,2008-12-06 17:00,2008-11-19 08:00,2008-12-06 17:00,,,,,PT_Normal,,,,,dFnNdchJmkC3sdRG+8C5Yg,,,,N,0,0
777,82676,829,10967,912,1,0,N,N,N,CP_Drtn,TT_Task,DT_FixedDUR2,RV_OK,TK_NotStart,7112L40100,Wooden steps for Duplex stairs,2306,120,0,120,0,936,936,120,96,0,96,,,,2008-12-18 08:00,2009-01-04 17:00,,2008-12-01 08:00,2008-12-17 17:00,2008-12-01 08:00,2008-12-17 17:00,2008-12-01 08:00,2008-12-17 17:00,,,,,PT_Normal,,,,,DSHBQrYHt0aT4viY6wUYaw,,,,N,0,0
778,82677,829,10967,912,1,0,N,N,N,CP_Drtn,TT_Task,DT_FixedDUR2,RV_OK,TK_NotStart,7112L40150,Duplex stair railings,2306,120,96,120,0,5120,5120,120,2000,0,2000,,,,2008-12-30 08:00,2009-01-15 17:00,,2008-12-13 08:00,2008-12-29 17:00,2008-12-13 08:00,2008-12-29 17:00,2008-12-13 08:00,2008-12-29 17:00,,,,,PT_Normal,,,,,QEIPlqBAu0SZ6g1Yv/FXfg,,,,N,0,0
779,82678,829,10968,912,1,0,N,N,N,CP_Drtn,TT_Task,DT_FixedDUR2,RV_OK,TK_NotStart,7112L42050,Signage works,2306,360,176,48,0,153.8,153.8,48,96,0,96,,,,2009-02-25 08:00,2009-03-03 17:00,,2009-01-04 08:00,2009-01-10 17:00,2009-01-04 08:00,2009-01-10 17:00,2009-01-04 08:00,2009-01-10 17:00,,,,,PT_Normal,,,,,1sWUiiQGrEecQwjMXsrfpA,,,,N,0,0
780,82679,829,10956,912,1,0,N,N,N,CP_Drtn,TT_Task,DT_FixedDUR2,RV_OK,TK_NotStart,7112L44050,Sub-frames,2306,40,0,120,0,1272,1272,120,576,0,576,,,,2008-10-12 08:00,2008-10-28 17:00,,2008-10-06 08:00,2008-10-22 17:00,2008-10-06 08:00,2008-10-22 17:00,2008-10-06 08:00,2008-10-22 17:00,,,,,PT_Normal,,,,,SqBxjRmSCkKuQxpTeXSYLA,,,,N,0,0
781,82680,829,12319,912,1,100,N,N,N,CP_Drtn,TT_Task,DT_FixedDUR2,RV_OK,TK_Complete,7112L50100,MEP skeleton embedded provisions,2296,24,0,0,512,0,512,72,,,0,,2008-08-10 08:00,2008-08-19 17:00,2008-10-06 08:00,2008-10-05 17:00,,2008-10-02 08:00,2008-10-01 17:00,,,2008-08-10 08:00,2008-08-19 17:00,,,,,PT_Normal,,,,,0hiuf/QWoUW2b8lMHdNqHw,,,,N,512,0
782,82681,829,12305,912,1,0,N,N,N,CP_Drtn,TT_Task,DT_FixedDUR2,RV_OK,TK_NotStart,7112L52050,A/C duct works,2296,136,112,160,0,831,831,160,0,0,0,,,,2008-10-25 08:00,2008-11-16 17:00,,2008-10-05 08:00,2008-10-27 17:00,2008-10-05 08:00,2008-10-27 17:00,2008-10-05 08:00,2008-10-27 17:00,,,,,PT_Normal,,,,,kWTh/PeCQEC1KYdUSoFbQw,,,,N,0,0
783,82682,829,12305,912,1,0,N,N,N,CP_Drtn,TT_Task,DT_FixedDUR2,RV_OK,TK_NotStart,7112L52100,Chilled water pipe works,2296,88,64,72,0,787,787,72,0,0,0,,,,2008-10-28 08:00,2008-11-06 17:00,,2008-10-15 08:00,2008-10-25 17:00,2008-10-15 08:00,2008-10-25 17:00,2008-10-15 08:00,2008-10-25 17:00,,,,,PT_Normal,,,,,alOHX5zu4EWvuFf2UMzNsg,,,,N,0,0
784,82683,829,12301,912,1,0,N,N,N,CP_Drtn,TT_Task,DT_FixedDUR2,RV_OK,TK_NotStart,7112L52150,FCU's hanging,2296,144,120,64,0,935.2,935.2,64,0,0,0,,,,2008-11-04 08:00,2008-11-12 17:00,,2008-10-14 08:00,2008-10-22 17:00,2008-10-14 08:00,2008-10-22 17:00,2008-10-14 08:00,2008-10-22 17:00,,,,,PT_Normal,,,,,HRC1cWsh102N5N2N/H7mJQ,,,,N,0,0
785,82684,829,12301,912,1,0,N,N,N,CP_Drtn,TT_Task,DT_FixedDUR2,RV_OK,TK_NotStart,7112L52300,FCU's assembly & duct connections,2296,24,0,72,0,943.2,943.2,72,0,0,0,,,,2008-11-15 08:00,2008-11-24 17:00,,2008-11-11 08:00,2008-11-20 17:00,2008-11-11 08:00,2008-11-20 17:00,2008-11-11 08:00,2008-11-20 17:00,,,,,PT_Normal,,,,,SXBQ1maQKUKaiyyTe3gLiA,,,,N,0,0
786,82685,829,12301,912,1,0,N,N,N,CP_Drtn,TT_Task,DT_FixedDUR2,RV_OK,TK_NotStart,7112L52350,Grills & diffusers,2296,424,120,80,0,872,872,80,0,0,0,,,,2009-02-15 08:00,2009-02-25 17:00,,2008-12-15 08:00,2008-12-25 17:00,2008-12-15 08:00,2008-12-25 17:00,2008-12-15 08:00,2008-12-25 17:00,,,,,PT_Normal,,,,,uBc7UpzFzEewach40cTIKQ,,,,N,0,0
787,82686,829,12305,912,1,0,N,N,N,CP_Drtn,TT_Task,DT_FixedDUR2,RV_OK,TK_NotStart,7112L52550,A/C duct risers,2296,24,0,64,0,1626,1626,64,0,0,0,,,,2008-10-29 08:00,2008-11-06 17:00,,2008-10-26 08:00,2008-11-03 17:00,2008-10-26 08:00,2008-11-03 17:00,2008-10-26 08:00,2008-11-03 17:00,,,,,PT_Normal,,,,,EHKk35PnCESYZDUYyPefFA,,,,N,0,0
788,82687,829,12298,912,1,0,N,N,N,CP_Drtn,TT_Task,DT_FixedDUR2,RV_OK,TK_NotStart,7112L54050,Chasing & Pex pipe works,2296,160,8,120,0,395,395,120,0,0,0,,,,2008-10-28 08:00,2008-11-13 17:00,,2008-10-05 08:00,2008-10-21 17:00,2008-10-05 08:00,2008-10-21 17:00,2008-10-05 08:00,2008-10-21 17:00,,,,,PT_Normal,,,,,vCqFNZenUk2bbtB6r5ZQvA,,,,N,0,0
789,82688,829,12298,912,1,0,N,N,N,CP_Drtn,TT_Task,DT_FixedDUR2,RV_OK,TK_NotStart,7112L54100,Over head distribution water pipe network,2296,96,0,64,0,8314,8314,64,0,0,0,,,,2008-11-03 08:00,2008-11-11 17:00,,2008-10-20 08:00,2008-10-28 17:00,2008-10-20 08:00,2008-10-28 17:00,2008-10-20 08:00,2008-10-28 17:00,,,,,PT_Normal,,,,,+ORqB8UnckWzzLvFb2UyGg,,,,N,0,0
790,82689,829,12099,912,1,0,N,N,N,CP_Drtn,TT_Task,DT_FixedDUR2,RV_OK,TK_NotStart,7112L54150,Water meter cabinet pipe works,2296,288,152,120,0,340,340,120,0,0,0,,,,2008-12-30 08:00,2009-01-15 17:00,,2008-11-18 08:00,2008-12-04 17:00,2008-11-18 08:00,2008-12-04 17:00,2008-11-18 08:00,2008-12-04 17:00,,,,,PT_Normal,,,,,yurj4pQD6E+q4q57VsSUtw,,,,N,0,0
791,82690,829,12502,912,1,0,N,N,N,CP_Drtn,TT_Task,DT_FixedDUR2,RV_OK,TK_NotStart,7112L54250,Bathtubs,2296,248,0,80,0,273.6,273.6,80,0,0,0,,,,2008-11-25 08:00,2008-12-06 17:00,,2008-10-20 08:00,2008-10-30 17:00,2008-10-20 08:00,2008-10-30 17:00,2008-10-20 08:00,2008-10-30 17:00,,,,,PT_Normal,,,,,PGw7R3gccEi0lELd3VVaHA,,,,N,0,0
792,82691,829,12502,912,1,0,N,N,N,CP_Drtn,TT_Task,DT_FixedDUR2,RV_OK,TK_NotStart,7112L54300,Water heater,2296,128,64,64,0,310.4,310.4,64,0,0,0,,,,2008-11-10 08:00,2008-11-18 17:00,,2008-10-22 08:00,2008-10-30 17:00,2008-10-22 08:00,2008-10-30 17:00,2008-10-22 08:00,2008-10-30 17:00,,,,,PT_Normal,,,,,DdPjdlsKBUWKYI3bVSV/nQ,,,,N,0,0
793,82692,829,12502,912,1,0,N,N,N,CP_Drtn,TT_Task,DT_FixedDUR2,RV_OK,TK_NotStart,7112L54350,Over head pipe assembly & vlave connections,2296,96,72,72,0,237,237,72,0,0,0,,,,2008-11-15 08:00,2008-11-24 17:00,,2008-11-01 08:00,2008-11-10 17:00,2008-11-01 08:00,2008-11-10 17:00,2008-11-01 08:00,2008-11-10 17:00,,,,,PT_Normal,,,,,ecqSwhFvtEe6lYgE4v+wcA,,,,N,0,0
794,82693,829,12099,912,1,0,N,N,N,CP_Drtn,TT_Task,DT_FixedDUR2,RV_OK,TK_NotStart,7112L54400,Sanitary fixures,2296,88,0,120,0,516,516,120,0,0,0,,,,2008-12-27 08:00,2009-01-12 17:00,,2008-12-14 08:00,2008-12-30 17:00,2008-12-14 08:00,2008-12-30 17:00,2008-12-14 08:00,2008-12-30 17:00,,,,,PT_Normal,,,,,FZB/GpbD6UKmDvOILA5YCQ,,,,N,0,0
795,82694,829,12099,912,1,0,N,N,N,CP_Drtn,TT_Task,DT_FixedDUR2,RV_OK,TK_NotStart,7112L54450,Mirrors,2296,24,0,120,0,186,186,120,0,0,0,,,,2008-12-30 08:00,2009-01-15 17:00,,2008-12-27 08:00,2009-01-12 17:00,2008-12-27 08:00,2009-01-12 17:00,2008-12-27 08:00,2009-01-12 17:00,,,,,PT_Normal,,,,,vGGUR2o16UiGM4jfbhZ5pg,,,,N,0,0
796,82695,829,12502,912,1,0,N,N,N,CP_Drtn,TT_Task,DT_FixedDUR2,RV_OK,TK_NotStart,7112L54500,Concealed Flushing Cistern,2296,248,224,80,0,212,212,80,0,0,0,,,,2008-11-25 08:00,2008-12-06 17:00,,2008-10-20 08:00,2008-10-30 17:00,2008-10-20 08:00,2008-10-30 17:00,2008-10-20 08:00,2008-10-30 17:00,,,,,PT_Normal,,,,,hwLZjzAeUkmiKiOyJBsoPA,,,,N,0,0
797,82696,829,12436,912,1,0,N,N,N,CP_Drtn,TT_Task,DT_FixedDUR2,RV_OK,TK_NotStart,7112L56050,Chasing and installation of drainage pipes,2296,80,0,120,0,285,285,120,0,0,0,,,,2008-10-16 08:00,2008-11-02 17:00,,2008-10-05 08:00,2008-10-21 17:00,2008-10-05 08:00,2008-10-21 17:00,2008-10-05 08:00,2008-10-21 17:00,,,,,PT_Normal,,,,,ZZCNnRPFekSkGr0bZTj5SQ,,,,N,0,0
798,82697,829,12436,912,1,0,N,N,N,CP_Drtn,TT_Task,DT_FixedDUR2,RV_OK,TK_NotStart,7112L56100,Drainage riser pipes,2296,192,72,64,0,284,284,64,0,0,0,,,,2008-11-02 08:00,2008-11-10 17:00,,2008-10-05 08:00,2008-10-13 17:00,2008-10-05 08:00,2008-10-13 17:00,2008-10-05 08:00,2008-10-13 17:00,,,,,PT_Normal,,,,,tKZGR5oe70ugZV0utCNkTQ,,,,N,0,0
799,82698,829,12074,912,1,0,N,N,N,CP_Drtn,TT_Task,DT_FixedDUR2,RV_OK,TK_NotStart,7112L56150,Over head drainage pipe works,2296,152,128,64,0,257.6,257.6,64,0,0,0,,,,2008-11-16 08:00,2008-11-24 17:00,,2008-10-25 08:00,2008-11-02 17:00,2008-10-25 08:00,2008-11-02 17:00,2008-10-25 08:00,2008-11-02 17:00,,,,,PT_Normal,,,,,j9yhCzHLd06h/XLcJ2+7gQ,,,,N,0,0
800,82699,829,12053,912,1,0,N,N,N,CP_Drtn,TT_Task,DT_FixedDUR2,RV_OK,TK_NotStart,7112L58050,Fire fighting pipe works,2296,160,136,72,0,292,292,72,0,0,0,,,,2008-11-06 08:00,2008-11-16 17:00,,2008-10-14 08:00,2008-10-23 17:00,2008-10-14 08:00,2008-10-23 17:00,2008-10-14 08:00,2008-10-23 17:00,,,,,PT_Normal,,,,,V47Xg30ZA0qrHaWEkGjdzQ,,,,N,0,0
801,82700,829,12344,912,1,0,N,N,N,CP_Drtn,TT_Task,DT_FixedDUR2,RV_OK,TK_NotStart,7112L58200,Fire cabinet complete,2296,352,168,64,0,339,339,64,0,0,0,,,,2009-02-23 08:00,2009-03-03 17:00,,2009-01-03 08:00,2009-01-11 17:00,2009-01-03 08:00,2009-01-11 17:00,2009-01-03 08:00,2009-01-11 17:00,,,,,PT_Normal,,,,,mXxZs6dNa0eCxHw83Mh5fg,,,,N,0,0
802,82701,829,12344,912,1,0,N,N,N,CP_Drtn,TT_Task,DT_FixedDUR2,RV_OK,TK_NotStart,7112L58250,Sprinkler heads,2296,384,80,120,0,450,450,120,0,0,0,,,,2009-02-09 08:00,2009-02-25 17:00,,2008-12-15 08:00,2008-12-31 17:00,2008-12-15 08:00,2008-12-31 17:00,2008-12-15 08:00,2008-12-31 17:00,,,,,PT_Normal,,,,,AvWsvJkilkW+0c2OXtyShQ,,,,N,0,0
803,82702,829,12095,912,1,0,N,N,N,CP_Drtn,TT_Task,DT_FixedDUR2,RV_OK,TK_NotStart,7112L60050,LPG piping,2296,288,0,72,0,292,292,72,0,0,0,,,,2008-12-18 08:00,2008-12-28 17:00,,2008-11-06 08:00,2008-11-16 17:00,2008-11-06 08:00,2008-11-16 17:00,2008-11-06 08:00,2008-11-16 17:00,,,,,PT_Normal,,,,,dOYCk3BIIUuG4yx7AdArUg,,,,N,0,0
804,82703,829,12022,912,1,0,N,N,N,CP_Drtn,TT_Task,DT_FixedDUR2,RV_OK,TK_NotStart,7112L60100,Gas meter & leak detector,2296,344,136,72,0,248,248,72,0,0,0,,,,2009-01-06 08:00,2009-01-15 17:00,,2008-11-17 08:00,2008-11-26 17:00,2008-11-17 08:00,2008-11-26 17:00,2008-11-17 08:00,2008-11-26 17:00,,,,,PT_Normal,,,,,0h1PQErQG0G+oYXYb8e5qA,,,,N,0,0
805,82704,829,12297,912,1,0,N,N,N,CP_Drtn,TT_Task,DT_FixedDUR2,RV_OK,TK_NotStart,7112L62050,BMS cabling,2296,80,56,48,0,470.4,470.4,48,0,0,0,,,,2008-11-18 08:00,2008-11-24 17:00,,2008-11-06 08:00,2008-11-12 17:00,2008-11-06 08:00,2008-11-12 17:00,2008-11-06 08:00,2008-11-12 17:00,,,,,PT_Normal,,,,,YicBIzXb7UqO2Y4R3/mnEA,,,,N,0,0
806,82705,829,12083,912,1,0,N,N,N,CP_Drtn,TT_Task,DT_FixedDUR2,RV_OK,TK_NotStart,7112L62100,DGC & cable termination to equipments,2296,320,0,48,0,329.6,329.6,48,0,0,0,,,,2009-02-19 08:00,2009-02-25 17:00,,2009-01-04 08:00,2009-01-10 17:00,2009-01-04 08:00,2009-01-10 17:00,2009-01-04 08:00,2009-01-10 17:00,,,,,PT_Normal,,,,,RnTCV0nvPkeaq9ibyOdS5g,,,,N,0,0
807,82706,829,12057,912,1,0,N,N,N,CP_Drtn,TT_Task,DT_FixedDUR2,RV_OK,TK_NotStart,7112L66050,Chasing and installation of conduits,2296,40,0,120,0,1809.6,1809.6,120,0,0,0,,,,2008-10-12 08:00,2008-10-28 17:00,,2008-10-06 08:00,2008-10-22 17:00,2008-10-06 08:00,2008-10-22 17:00,2008-10-06 08:00,2008-10-22 17:00,,,,,PT_Normal,,,,,H55hQJlgsE+OOMdoFNotiw,,,,N,0,0
808,82707,829,12057,912,1,0,N,N,N,CP_Drtn,TT_Task,DT_FixedDUR2,RV_OK,TK_NotStart,7112L66100,Cable trays & trunking,2296,40,0,64,0,1472,1472,64,0,0,0,,,,2008-11-06 08:00,2008-11-15 17:00,,2008-11-01 08:00,2008-11-09 17:00,2008-11-01 08:00,2008-11-09 17:00,2008-11-01 08:00,2008-11-09 17:00,,,,,PT_Normal,,,,,iUv1M8rJWUSIda0qggsY2g,,,,N,0,0
809,82708,829,12126,912,1,0,N,N,N,CP_Drtn,TT_Task,DT_FixedDUR2,RV_OK,TK_NotStart,7112L68050,Single core wiring,2296,176,152,72,0,1128,1128,72,0,0,0,,,,2008-11-03 08:00,2008-11-12 17:00,,2008-10-08 08:00,2008-10-18 17:00,2008-10-08 08:00,2008-10-18 17:00,2008-10-08 08:00,2008-10-18 17:00,,,,,PT_Normal,,,,,v8cY8Vc71UGHBZ3knMwYKw,,,,N,0,0
810,82709,829,12100,912,1,0,N,N,N,CP_Drtn,TT_Task,DT_FixedDUR2,RV_OK,TK_NotStart,7112L68100,DB enclosure,2296,56,16,64,0,416,416,64,0,0,0,,,,2008-10-22 08:00,2008-10-30 17:00,,2008-10-14 08:00,2008-10-22 17:00,2008-10-14 08:00,2008-10-22 17:00,2008-10-14 08:00,2008-10-22 17:00,,,,,PT_Normal,,,,,PHIoWfD0nEe8fEXJ4nupIg,,,,N,0,0
811,82710,829,12100,912,1,0,N,N,N,CP_Drtn,TT_Task,DT_FixedDUR2,RV_OK,TK_NotStart,7112L68150,LV feeder cables,2296,112,72,72,0,2606.4,2606.4,72,0,0,0,,,,2008-11-26 08:00,2008-12-06 17:00,,2008-11-10 08:00,2008-11-19 17:00,2008-11-10 08:00,2008-11-19 17:00,2008-11-10 08:00,2008-11-19 17:00,,,,,PT_Normal,,,,,dXN46L7qNESFIzDYeF0sXg,,,,N,0,0
812,82711,829,12119,912,1,0,N,N,N,CP_Drtn,TT_Task,DT_FixedDUR2,RV_OK,TK_NotStart,7112L68250,DB-breakers assembly,2296,152,128,72,0,564.8,564.8,72,0,0,0,,,,2009-01-06 08:00,2009-01-15 17:00,,2008-12-15 08:00,2008-12-24 17:00,2008-12-15 08:00,2008-12-24 17:00,2008-12-15 08:00,2008-12-24 17:00,,,,,PT_Normal,,,,,lOBqYk5xqUCJT8sDzL2pSA,,,,N,0,0
813,82712,829,12119,912,1,0,N,N,N,CP_Drtn,TT_Task,DT_FixedDUR2,RV_OK,TK_NotStart,7112L68300,SMDB,2296,320,0,48,0,1315.2,1315.2,48,0,0,0,,,,2009-02-18 08:00,2009-02-24 17:00,,2009-01-03 08:00,2009-01-08 17:00,2009-01-03 08:00,2009-01-08 17:00,2009-01-03 08:00,2009-01-08 17:00,,,,,PT_Normal,,,,,NXyBOINA80W9Zq/jno5K0w,,,,N,0,0
814,82713,829,12119,912,1,0,N,N,N,CP_Drtn,TT_Task,DT_FixedDUR2,RV_OK,TK_NotStart,7112L68350,Light Fittings,2296,144,120,120,0,1105.6,1105.6,120,0,0,0,,,,2008-12-30 08:00,2009-01-15 17:00,,2008-12-09 08:00,2008-12-25 17:00,2008-12-09 08:00,2008-12-25 17:00,2008-12-09 08:00,2008-12-25 17:00,,,,,PT_Normal,,,,,zWF5EE/mcUm/QTAIq1Pq3A,,,,N,0,0
815,82714,829,12119,912,1,0,N,N,N,CP_Drtn,TT_Task,DT_FixedDUR2,RV_OK,TK_NotStart,7112L68400,Lighting Control Panels,2296,352,136,64,0,275.2,275.2,64,0,0,0,,,,2009-02-23 08:00,2009-03-03 17:00,,2009-01-03 08:00,2009-01-11 17:00,2009-01-03 08:00,2009-01-11 17:00,2009-01-03 08:00,2009-01-11 17:00,,,,,PT_Normal,,,,,PlsJF6ISoEaW8+DdlN4OEw,,,,N,0,0
816,82715,829,12119,912,1,0,N,N,N,CP_Drtn,TT_Task,DT_FixedDUR2,RV_OK,TK_NotStart,7112L68600,Switches & sockets,2296,152,128,72,0,494.4,494.4,72,0,0,0,,,,2009-01-06 08:00,2009-01-15 17:00,,2008-12-15 08:00,2008-12-24 17:00,2008-12-15 08:00,2008-12-24 17:00,2008-12-15 08:00,2008-12-24 17:00,,,,,PT_Normal,,,,,0Gl7USJqnUOrB6P3ufpwWg,,,,N,0,0
817,82716,829,12786,912,1,0,N,N,N,CP_Drtn,TT_Task,DT_FixedDUR2,RV_OK,TK_NotStart,7112L70050,Central Battery cables,2296,144,120,64,0,345.6,345.6,64,0,0,0,,,,2008-11-04 08:00,2008-11-12 17:00,,2008-10-14 08:00,2008-10-22 17:00,2008-10-14 08:00,2008-10-22 17:00,2008-10-14 08:00,2008-10-22 17:00,,,,,PT_Normal,,,,,MWeQpbCMQEWlVGojSK7Bwg,,,,N,0,0
818,82717,829,12844,912,1,0,N,N,N,CP_Drtn,TT_Task,DT_FixedDUR2,RV_OK,TK_NotStart,7112L70150,Emergency & exit light fittings,2296,448,0,48,0,188.8,188.8,48,0,0,0,,,,2009-02-25 08:00,2009-03-03 17:00,,2008-12-22 08:00,2008-12-28 17:00,2008-12-22 08:00,2008-12-28 17:00,2008-12-22 08:00,2008-12-28 17:00,,,,,PT_Normal,,,,,P9eJX233l0ed0uH9rrU5NQ,,,,N,0,0
819,82718,829,12825,912,1,0,N,N,N,CP_Drtn,TT_Task,DT_FixedDUR2,RV_OK,TK_NotStart,7112L72200,Intercom system cables,2296,64,40,48,0,576,576,48,0,0,0,,,,2008-11-18 08:00,2008-11-24 17:00,,2008-11-09 08:00,2008-11-15 17:00,2008-11-09 08:00,2008-11-15 17:00,2008-11-09 08:00,2008-11-15 17:00,,,,,PT_Normal,,,,,kjbvazaRB06WZQrw3nUUcA,,,,N,0,0
820,82719,829,12842,912,1,0,N,N,N,CP_Drtn,TT_Task,DT_FixedDUR2,RV_OK,TK_NotStart,7112L72250,Intercom system equipments,2296,136,112,64,0,486.4,486.4,64,0,0,0,,,,2009-01-07 08:00,2009-01-15 17:00,,2008-12-18 08:00,2008-12-27 17:00,2008-12-18 08:00,2008-12-27 17:00,2008-12-18 08:00,2008-12-27 17:00,,,,,PT_Normal,,,,,4+zeQsnNCUG8bqQFEmEdiw,,,,N,0,0
821,82720,829,12861,912,1,0,N,N,N,CP_Drtn,TT_Task,DT_FixedDUR2,RV_OK,TK_NotStart,7112L74050,Fire alarm cables,2296,144,120,64,0,380.8,380.8,64,0,0,0,,,,2008-11-04 08:00,2008-11-12 17:00,,2008-10-14 08:00,2008-10-22 17:00,2008-10-14 08:00,2008-10-22 17:00,2008-10-14 08:00,2008-10-22 17:00,,,,,PT_Normal,,,,,cNHQGq4Oi0+UEyPAG4d3bg,,,,N,0,0
822,82721,829,12853,912,1,0,N,N,N,CP_Drtn,TT_Task,DT_FixedDUR2,RV_OK,TK_NotStart,7112L74100,Fire alarm fittings,2296,368,64,80,0,132.8,132.8,80,0,0,0,,,,2009-02-15 08:00,2009-02-25 17:00,,2008-12-23 08:00,2009-01-03 17:00,2008-12-23 08:00,2009-01-03 17:00,2008-12-23 08:00,2009-01-03 17:00,,,,,PT_Normal,,,,,mA+TPot+T06VzhXDEI9yGQ,,,,N,0,0
823,82722,829,12858,912,1,0,N,N,N,CP_Drtn,TT_Task,DT_FixedDUR2,RV_OK,TK_NotStart,7112L76050,Structured cabling,2296,80,40,64,0,345.6,345.6,64,0,0,0,,,,2008-11-18 08:00,2008-11-26 17:00,,2008-11-06 08:00,2008-11-15 17:00,2008-11-06 08:00,2008-11-15 17:00,2008-11-06 08:00,2008-11-15 17:00,,,,,PT_Normal,,,,,oWrORX3axUGN5FDD2bBJjA,,,,N,0,0
824,82723,829,12860,912,1,0,N,N,N,CP_Drtn,TT_Task,DT_FixedDUR2,RV_OK,TK_NotStart,7112L76100,Consolidated pionts,2296,40,16,64,0,486.4,486.4,64,0,0,0,,,,2008-11-27 08:00,2008-12-06 17:00,,2008-11-22 08:00,2008-11-30 17:00,2008-11-22 08:00,2008-11-30 17:00,2008-11-22 08:00,2008-11-30 17:00,,,,,PT_Normal,,,,,fMP8yaXDKkK/H/gjDKseKQ,,,,N,0,0
825,82724,829,11243,912,1,100,N,N,N,CP_Drtn,TT_Task,DT_FixedDUR2,RV_OK,TK_Complete,7112U12050,Columns & walls 2U to Roof - Part 1,2306,24,0,0,3823,0,3823,24,114913.84,114913.84,0,,2008-08-26 08:00,2008-08-28 17:00,2008-10-06 08:00,2008-10-05 17:00,,2008-10-02 08:00,2008-10-01 17:00,,,2008-08-26 08:00,2008-08-28 17:00,,,,,PT_Normal,,,,,/KqML9+9pUSbJcwOKfKp5g,,,,N,3823,114913.84
826,82725,829,11243,912,1,100,N,N,N,CP_Drtn,TT_Task,DT_FixedDUR2,RV_OK,TK_Complete,7112U12051,Columns & walls 2U to Roof - Part 2,2306,24,0,0,3823,0,3823,24,114913.84,114913.84,0,,2008-09-03 08:00,2008-09-06 17:00,2008-10-06 08:00,2008-10-05 17:00,,2008-10-02 08:00,2008-10-01 17:00,,,2008-09-03 08:00,2008-09-06 17:00,,,,,PT_Normal,,,,,3R0Nm/Ae3UyXuEgMmyVHbA,,,,N,3823,114913.84
827,82726,829,11243,912,1,100,N,N,N,CP_Drtn,TT_Task,DT_FixedDUR2,RV_OK,TK_Complete,7112U12052,Columns & walls 2U to Roof - Middle Part,2306,24,0,0,8166.64,0,8166.64,24,246301.52,246301.52,0,,2008-09-01 08:00,2008-09-03 17:00,2008-10-06 08:00,2008-10-05 17:00,,2008-10-02 08:00,2008-10-01 17:00,,,2008-09-01 08:00,2008-09-03 17:00,,,,,PT_Normal,,,,,cDZomC/FV0mPWv0E7yXNLg,,,,N,8166.64,246301.52
828,82727,829,11243,912,1,100,N,N,N,CP_Drtn,TT_Task,DT_FixedDUR2,RV_OK,TK_Complete,7112U12200,Slab @ Roof level - Part 1,2306,24,0,0,4733.44,0,4733.44,56,173509.36,173509.36,0,,2008-09-03 08:00,2008-09-10 17:00,2008-10-06 08:00,2008-10-05 17:00,,2008-10-02 08:00,2008-10-01 17:00,,,2008-09-03 08:00,2008-09-10 17:00,,,,,PT_Normal,,,,,3LMZQ7onV0GKygmvpJR4aA,,,,N,4733.44,173509.36
829,82728,829,11243,912,1,100,N,N,N,CP_Drtn,TT_Task,DT_FixedDUR2,RV_OK,TK_Complete,7112U12201,Slab @ Roof level - Part 2,2306,24,0,0,4733.44,0,4733.44,56,173509.36,173509.36,0,,2008-09-11 08:00,2008-09-18 17:00,2008-10-06 08:00,2008-10-05 17:00,,2008-10-02 08:00,2008-10-01 17:00,,,2008-09-11 08:00,2008-09-18 17:00,,,,,PT_Normal,,,,,4PwRFYk2+kWIA4H/D8qhKA,,,,N,4733.44,173509.36
830,82729,829,11243,912,1,100,N,N,N,CP_Drtn,TT_Task,DT_FixedDUR2,RV_OK,TK_Complete,7112U12202,Slab @ Roof level - Middle Part,2306,24,0,0,6554.96,0,6554.96,56,241077.52,241077.52,0,,2008-09-09 08:00,2008-09-16 17:00,2008-10-06 08:00,2008-10-05 17:00,,2008-10-02 08:00,2008-10-01 17:00,,,2008-09-09 08:00,2008-09-16 17:00,,,,,PT_Normal,,,,,4ykEgUhkO0ikA3eGmdjgbA,,,,N,6554.96,241077.52
831,82730,829,11243,912,1,100,N,N,N,CP_Drtn,TT_Task,DT_FixedDUR2,RV_OK,TK_Complete,7112U12250,Staircases 2U to Roof,2306,208,0,0,991.88,0,991.88,24,18457.6,18457.6,0,,2008-09-18 08:00,2008-09-21 17:00,2008-11-02 08:00,2008-11-01 17:00,,2008-10-02 08:00,2008-10-01 17:00,,,2008-09-18 08:00,2008-09-21 17:00,,,,,PT_Normal,,,,,ZrPgdDxRVE6SkquBEFpf6w,,,,N,991.88,18457.6
832,82731,829,10971,912,1,0,N,N,N,CP_Drtn,TT_Task,DT_FixedDUR2,RV_OK,TK_NotStart,7112U14050,Block works,2306,24,0,120,0,30085.5,30085.5,120,18440,0,18440,,,,2008-10-09 08:00,2008-10-26 17:00,,2008-10-06 08:00,2008-10-22 17:00,2008-10-06 08:00,2008-10-22 17:00,2008-10-06 08:00,2008-10-22 17:00,,,,,PT_Normal,,,,,m+oFCePUI0u7jbkzbzYNCw,,,,N,0,0
833,82732,829,10904,912,1,0,N,N,N,CP_Drtn,TT_Task,DT_FixedDUR2,RV_OK,TK_NotStart,7112U16050,Plaster works,2306,56,0,120,0,24375.8,24375.8,120,19024,0,19024,,,,2008-10-29 08:00,2008-11-15 17:00,,2008-10-21 08:00,2008-11-06 17:00,2008-10-21 08:00,2008-11-06 17:00,2008-10-21 08:00,2008-11-06 17:00,,,,,PT_Normal,,,,,9zIjOT4vEECUMXfbhGVGmA,,,,N,0,0
834,82733,829,10904,912,1,0,N,N,N,CP_Drtn,TT_Task,DT_FixedDUR2,RV_OK,TK_NotStart,7112U16051,Plaste works behind tiles,2306,144,120,120,0,5424,5424,120,4160,0,4160,,,,2008-11-17 08:00,2008-12-03 17:00,,2008-10-27 08:00,2008-11-12 17:00,2008-10-27 08:00,2008-11-12 17:00,2008-10-27 08:00,2008-11-12 17:00,,,,,PT_Normal,,,,,fPQ3iKlI3k2oE7i5E0rLrA,,,,N,0,0
835,82734,829,10905,912,1,0,N,N,N,CP_Drtn,TT_Task,DT_FixedDUR2,RV_OK,TK_NotStart,7112U18050,Rendering works,2306,80,24,120,0,5683,5683,120,5000,0,5000,,,,2008-10-26 08:00,2008-11-11 17:00,,2008-10-14 08:00,2008-10-30 17:00,2008-10-14 08:00,2008-10-30 17:00,2008-10-14 08:00,2008-10-30 17:00,,,,,PT_Normal,,,,,RWivUvjHzUWKOUkDV/CrIA,,,,N,0,0
836,82735,829,10905,912,1,0,N,N,N,CP_Drtn,TT_Task,DT_FixedDUR2,RV_OK,TK_NotStart,7112U18100,Painting base coats,2306,56,0,120,0,26546.2,26546.2,120,24024,0,24024,,,,2008-11-06 08:00,2008-11-23 17:00,,2008-10-29 08:00,2008-11-15 17:00,2008-10-29 08:00,2008-11-15 17:00,2008-10-29 08:00,2008-11-15 17:00,,,,,PT_Normal,,,,,upWUcRrQCki6E5j9Bclsqg,,,,N,0,0
837,82736,829,10905,912,1,0,N,N,N,CP_Drtn,TT_Task,DT_FixedDUR2,RV_OK,TK_NotStart,7112U18150,Painting 1st top coat for apartments,2306,96,0,72,0,17300.2,17300.2,72,16408,0,16408,,,,2009-01-07 08:00,2009-01-17 17:00,,2008-12-24 08:00,2009-01-03 17:00,2008-12-24 08:00,2009-01-03 17:00,2008-12-24 08:00,2009-01-03 17:00,,,,,PT_Normal,,,,,a+uCL2K++kyRYhehA+8Bnw,,,,N,0,0
838,82737,829,11083,912,1,0,N,N,N,CP_Drtn,TT_Task,DT_FixedDUR2,RV_OK,TK_NotStart,7112U20050,Floor tiles for apartments-dry area,2306,120,0,120,0,9570,9570,120,7000,0,7000,,,,2008-11-25 08:00,2008-12-11 17:00,,2008-11-08 08:00,2008-11-24 17:00,2008-11-08 08:00,2008-11-24 17:00,2008-11-08 08:00,2008-11-24 17:00,,,,,PT_Normal,,,,,0U1AT6wBDUy9qA6nmUAy5w,,,,N,0,0
839,82738,829,11083,912,1,0,N,N,N,CP_Drtn,TT_Task,DT_FixedDUR2,RV_OK,TK_NotStart,7112U20070,Floor tiles for apartments-wet area,2306,24,0,120,0,3835.2,3835.2,120,2752,0,2752,,,,2008-12-14 08:00,2008-12-30 17:00,,2008-12-10 08:00,2008-12-27 17:00,2008-12-10 08:00,2008-12-27 17:00,2008-12-10 08:00,2008-12-27 17:00,,,,,PT_Normal,,,,,3tz+OnqOWESDqVyDYRlxnQ,,,,N,0,0
840,82739,829,11083,912,1,0,N,N,N,CP_Drtn,TT_Task,DT_FixedDUR2,RV_OK,TK_NotStart,7112U20110,Wall tiles for apartments-wet area,2306,80,0,120,0,9066,9066,120,5964,0,5964,,,,2008-12-22 08:00,2009-01-07 17:00,,2008-12-10 08:00,2008-12-27 17:00,2008-12-10 08:00,2008-12-27 17:00,2008-12-10 08:00,2008-12-27 17:00,,,,,PT_Normal,,,,,QZ7wO6Ab60OmJEaPfct0VA,,,,N,0,0
841,82740,829,10948,912,1,0,N,N,N,CP_Drtn,TT_Task,DT_FixedDUR2,RV_OK,TK_NotStart,7112U22150,W/P for for apartments,2306,104,0,120,0,2980,2980,120,2600,0,2600,,,,2008-11-08 08:00,2008-11-24 17:00,,2008-10-23 08:00,2008-11-09 17:00,2008-10-23 08:00,2008-11-09 17:00,2008-10-23 08:00,2008-11-09 17:00,,,,,PT_Normal,,,,,kIAA1Slp1UuIJwf2yPFreA,,,,N,0,0
842,82741,829,11017,912,1,0,N,N,N,CP_Drtn,TT_Task,DT_FixedDUR2,RV_OK,TK_NotStart,7112U24050,Aluminium doors & windows,2306,144,80,120,0,1208,1208,120,272,0,272,,,,2008-12-07 08:00,2008-12-23 17:00,,2008-11-16 08:00,2008-12-02 17:00,2008-11-16 08:00,2008-12-02 17:00,2008-11-16 08:00,2008-12-02 17:00,,,,,PT_Normal,,,,,ejfTRNyEIkO777VfEUQopQ,,,,N,0,0
843,82742,829,11017,912,1,0,N,N,N,CP_Drtn,TT_Task,DT_FixedDUR2,RV_OK,TK_NotStart,7112U24200,Balcony handrails,2306,64,40,120,0,2192,2192,120,1184,0,1184,,,,2008-12-30 08:00,2009-01-15 17:00,,2008-12-21 08:00,2009-01-06 17:00,2008-12-21 08:00,2009-01-06 17:00,2008-12-21 08:00,2009-01-06 17:00,,,,,PT_Normal,,,,,Ssn2ErH+N0uNXoHq/IuEQQ,,,,N,0,0
844,82743,829,10977,912,1,0,N,N,N,CP_Drtn,TT_Task,DT_FixedDUR2,RV_OK,TK_NotStart,7112U30050,Wooden doors,2306,56,0,176,0,1520,1520,176,384,0,384,,,,2008-12-18 08:00,2009-01-12 17:00,,2008-12-10 08:00,2009-01-04 17:00,2008-12-10 08:00,2009-01-04 17:00,2008-12-10 08:00,2009-01-04 17:00,,,,,PT_Normal,,,,,UweoaTMoHkaAOQDhBs3Gzg,,,,N,0,0
845,82744,829,10978,912,1,0,N,N,N,CP_Drtn,TT_Task,DT_FixedDUR2,RV_OK,TK_NotStart,7112U32100,Vanity counters,2306,24,0,120,0,2232,2232,120,192,0,192,,,,2008-12-31 08:00,2009-01-17 17:00,,2008-12-28 08:00,2009-01-13 17:00,2008-12-28 08:00,2009-01-13 17:00,2008-12-28 08:00,2009-01-13 17:00,,,,,PT_Normal,,,,,GTiYsBI4hEaJgHtP9pEKKA,,,,N,0,0
846,82745,829,10978,912,1,0,N,N,N,CP_Drtn,TT_Task,DT_FixedDUR2,RV_OK,TK_NotStart,7112U32150,Wardrobes,2306,120,96,120,0,6168,6168,120,288,0,288,,,,2008-12-30 08:00,2009-01-15 17:00,,2008-12-13 08:00,2008-12-29 17:00,2008-12-13 08:00,2008-12-29 17:00,2008-12-13 08:00,2008-12-29 17:00,,,,,PT_Normal,,,,,8MFlk+OmfEe7b39RWK0WXA,,,,N,0,0
847,82746,829,10889,912,1,0,N,N,N,CP_Drtn,TT_Task,DT_FixedDUR2,RV_OK,TK_NotStart,7112U34050,False ceiling works for apartments-dry area,2306,96,0,128,0,1493.12,1493.12,128,910.08,0,910.08,,,,2008-12-15 08:00,2009-01-01 17:00,,2008-12-01 08:00,2008-12-18 17:00,2008-12-01 08:00,2008-12-18 17:00,2008-12-01 08:00,2008-12-18 17:00,,,,,PT_Normal,,,,,9ZgE8trL3kW0jan46Scouw,,,,N,0,0
848,82747,829,10889,912,1,0,N,N,N,CP_Drtn,TT_Task,DT_FixedDUR2,RV_OK,TK_NotStart,7112U34070,False ceiling works for apartments-wet area,2306,24,0,128,0,658.88,658.88,128,353.92,0,353.92,,,,2008-12-04 08:00,2008-12-22 17:00,,2008-12-01 08:00,2008-12-18 17:00,2008-12-01 08:00,2008-12-18 17:00,2008-12-01 08:00,2008-12-18 17:00,,,,,PT_Normal,,,,,mRahYZoQoUiQTxmtrPUHFA,,,,N,0,0
849,82748,829,11089,912,1,0,N,N,N,CP_Drtn,TT_Task,DT_FixedDUR2,RV_OK,TK_NotStart,7112U36050,Stone finishing top,2306,80,56,64,0,344,344,64,160,0,160,,,,2009-01-07 08:00,2009-01-15 17:00,,2008-12-27 08:00,2009-01-04 17:00,2008-12-27 08:00,2009-01-04 17:00,2008-12-27 08:00,2009-01-04 17:00,,,,,PT_Normal,,,,,hDOadzpwpk6L86aTY92Szg,,,,N,0,0
850,82749,829,11089,912,1,0,N,N,N,CP_Drtn,TT_Task,DT_FixedDUR2,RV_OK,TK_NotStart,7112U36100,Thresholds,2306,56,32,64,0,520,520,64,304,0,304,,,,2009-01-07 08:00,2009-01-15 17:00,,2008-12-30 08:00,2009-01-07 17:00,2008-12-30 08:00,2009-01-07 17:00,2008-12-30 08:00,2009-01-07 17:00,,,,,PT_Normal,,,,,4f5wVM3oeU2oyQ3vATOrBw,,,,N,0,0
851,82750,829,10981,912,1,0,N,N,N,CP_Drtn,TT_Task,DT_FixedDUR2,RV_OK,TK_NotStart,7112U44050,Sub-frames,2306,56,0,120,0,888,888,120,384,0,384,,,,2008-10-23 08:00,2008-11-09 17:00,,2008-10-15 08:00,2008-11-01 17:00,2008-10-15 08:00,2008-11-01 17:00,2008-10-15 08:00,2008-11-01 17:00,,,,,PT_Normal,,,,,Bz5ZCcm5J0K50sPTkj/7VQ,,,,N,0,0
852,82751,829,12854,912,1,100,N,N,N,CP_Drtn,TT_Task,DT_FixedDUR2,RV_OK,TK_Complete,7112U50100,MEP skeleton embedded provisions,2296,24,0,0,512,0,512,72,,,0,,2008-08-26 08:00,2008-09-04 17:00,2008-10-06 08:00,2008-10-05 17:00,,2008-10-02 08:00,2008-10-01 17:00,,,2008-08-26 08:00,2008-09-04 17:00,,,,,PT_Normal,,,,,P2NYzMS9/Eu0Nb+v5MH9dA,,,,N,512,0
853,82752,829,12859,912,1,0,N,N,N,CP_Drtn,TT_Task,DT_FixedDUR2,RV_OK,TK_NotStart,7112U52050,A/C duct works,2296,136,112,160,0,831,831,160,0,0,0,,,,2008-11-03 08:00,2008-11-25 17:00,,2008-10-14 08:00,2008-11-05 17:00,2008-10-14 08:00,2008-11-05 17:00,2008-10-14 08:00,2008-11-05 17:00,,,,,PT_Normal,,,,,v9ilCrPSaEScEQLcmstaHA,,,,N,0,0
854,82753,829,12859,912,1,0,N,N,N,CP_Drtn,TT_Task,DT_FixedDUR2,RV_OK,TK_NotStart,7112U52100,Chilled water pipe works,2296,88,64,72,0,787,787,72,0,0,0,,,,2008-11-06 08:00,2008-11-16 17:00,,2008-10-25 08:00,2008-11-03 17:00,2008-10-25 08:00,2008-11-03 17:00,2008-10-25 08:00,2008-11-03 17:00,,,,,PT_Normal,,,,,V4hWhcYPx0mkoBNWlek0Ew,,,,N,0,0
855,82754,829,12856,912,1,0,N,N,N,CP_Drtn,TT_Task,DT_FixedDUR2,RV_OK,TK_NotStart,7112U52150,FCU's hanging,2296,144,120,64,0,935.2,935.2,64,0,0,0,,,,2008-11-13 08:00,2008-11-22 17:00,,2008-10-23 08:00,2008-11-01 17:00,2008-10-23 08:00,2008-11-01 17:00,2008-10-23 08:00,2008-11-01 17:00,,,,,PT_Normal,,,,,sR9lYs1WBka3ikcUCIX+yA,,,,N,0,0
856,82755,829,12856,912,1,0,N,N,N,CP_Drtn,TT_Task,DT_FixedDUR2,RV_OK,TK_NotStart,7112U52300,FCU's assembly & duct connections,2296,24,0,80,0,951.2,951.2,80,0,0,0,,,,2008-11-23 08:00,2008-12-03 17:00,,2008-11-19 08:00,2008-11-30 17:00,2008-11-19 08:00,2008-11-30 17:00,2008-11-19 08:00,2008-11-30 17:00,,,,,PT_Normal,,,,,eZtuiRkexkOd0ys1tpEa5w,,,,N,0,0
857,82756,829,12856,912,1,0,N,N,N,CP_Drtn,TT_Task,DT_FixedDUR2,RV_OK,TK_NotStart,7112U52350,Grills & diffusers,2296,128,104,64,0,856,856,64,0,0,0,,,,2009-01-07 08:00,2009-01-15 17:00,,2008-12-20 08:00,2008-12-28 17:00,2008-12-20 08:00,2008-12-28 17:00,2008-12-20 08:00,2008-12-28 17:00,,,,,PT_Normal,,,,,745aP/HMjE2Er6EHWlkBRA,,,,N,0,0
858,82757,829,12859,912,1,0,N,N,N,CP_Drtn,TT_Task,DT_FixedDUR2,RV_OK,TK_NotStart,7112U52550,A/C duct risers,2296,24,0,64,0,1626,1626,64,0,0,0,,,,2008-11-08 08:00,2008-11-16 17:00,,2008-11-04 08:00,2008-11-12 17:00,2008-11-04 08:00,2008-11-12 17:00,2008-11-04 08:00,2008-11-12 17:00,,,,,PT_Normal,,,,,TqroM4cKVEqwGRYLddsM7A,,,,N,0,0
859,82758,829,12862,912,1,0,N,N,N,CP_Drtn,TT_Task,DT_FixedDUR2,RV_OK,TK_NotStart,7112U54050,Chasing & Pex pipe works,2296,152,0,120,0,395,395,120,0,0,0,,,,2008-11-05 08:00,2008-11-22 17:00,,2008-10-14 08:00,2008-10-30 17:00,2008-10-14 08:00,2008-10-30 17:00,2008-10-14 08:00,2008-10-30 17:00,,,,,PT_Normal,,,,,SoAC5HCk60muV/B9vRwdCg,,,,N,0,0
860,82759,829,12868,912,1,0,N,N,N,CP_Drtn,TT_Task,DT_FixedDUR2,RV_OK,TK_NotStart,7112U54250,Bathtubs,2296,232,0,80,0,273.6,273.6,80,0,0,0,,,,2008-12-02 08:00,2008-12-13 17:00,,2008-10-29 08:00,2008-11-09 17:00,2008-10-29 08:00,2008-11-09 17:00,2008-10-29 08:00,2008-11-09 17:00,,,,,PT_Normal,,,,,3iAjTIV6wkqLF9knA7PBCQ,,,,N,0,0
861,82760,829,12868,912,1,0,N,N,N,CP_Drtn,TT_Task,DT_FixedDUR2,RV_OK,TK_NotStart,7112U54300,Water heater,2296,128,0,64,0,310.4,310.4,64,0,0,0,,,,2008-11-19 08:00,2008-11-27 17:00,,2008-11-01 08:00,2008-11-09 17:00,2008-11-01 08:00,2008-11-09 17:00,2008-11-01 08:00,2008-11-09 17:00,,,,,PT_Normal,,,,,w767utCfp0uQRKZDdXNFFA,,,,N,0,0
862,82761,829,12868,912,1,0,N,N,N,CP_Drtn,TT_Task,DT_FixedDUR2,RV_OK,TK_NotStart,7112U54350,Over head pipe assembly & vlave connections,2296,160,136,72,0,237,237,72,0,0,0,,,,2008-11-24 08:00,2008-12-03 17:00,,2008-11-01 08:00,2008-11-10 17:00,2008-11-01 08:00,2008-11-10 17:00,2008-11-01 08:00,2008-11-10 17:00,,,,,PT_Normal,,,,,PWBrmbOVPESXQU/zdmklzQ,,,,N,0,0
863,82762,829,12864,912,1,0,N,N,N,CP_Drtn,TT_Task,DT_FixedDUR2,RV_OK,TK_NotStart,7112U54400,Sanitary fixures,2296,80,0,80,0,476,476,80,0,0,0,,,,2009-01-05 08:00,2009-01-15 17:00,,2008-12-24 08:00,2009-01-04 17:00,2008-12-24 08:00,2009-01-04 17:00,2008-12-24 08:00,2009-01-04 17:00,,,,,PT_Normal,,,,,ypHNqaJ+eE2scb8WqFinZA,,,,N,0,0
864,82763,829,12864,912,1,0,N,N,N,CP_Drtn,TT_Task,DT_FixedDUR2,RV_OK,TK_NotStart,7112U54450,Mirrors,2296,24,0,72,0,138,138,72,0,0,0,,,,2009-01-06 08:00,2009-01-15 17:00,,2009-01-03 08:00,2009-01-12 17:00,2009-01-03 08:00,2009-01-12 17:00,2009-01-03 08:00,2009-01-12 17:00,,,,,PT_Normal,,,,,BDLZMcMvOkKReTQULOq5xg,,,,N,0,0
865,82764,829,12868,912,1,0,N,N,N,CP_Drtn,TT_Task,DT_FixedDUR2,RV_OK,TK_NotStart,7112U54500,Concealed Flushing Cistern,2296,232,208,80,0,212,212,80,0,0,0,,,,2008-12-02 08:00,2008-12-13 17:00,,2008-10-29 08:00,2008-11-09 17:00,2008-10-29 08:00,2008-11-09 17:00,2008-10-29 08:00,2008-11-09 17:00,,,,,PT_Normal,,,,,t6f4xyLUmU6fzEKaDnPWtQ,,,,N,0,0
866,82765,829,12866,912,1,0,N,N,N,CP_Drtn,TT_Task,DT_FixedDUR2,RV_OK,TK_NotStart,7112U56050,Chasing and installation of drainage pipes,2296,152,0,80,0,245,245,80,0,0,0,,,,2008-11-05 08:00,2008-11-16 17:00,,2008-10-14 08:00,2008-10-25 17:00,2008-10-14 08:00,2008-10-25 17:00,2008-10-14 08:00,2008-10-25 17:00,,,,,PT_Normal,,,,,7nkMQrK80kGwWkKghtjpGA,,,,N,0,0
867,82766,829,12866,912,1,0,N,N,N,CP_Drtn,TT_Task,DT_FixedDUR2,RV_OK,TK_NotStart,7112U56100,Drainage riser pipes,2296,208,72,64,0,284,284,64,0,0,0,,,,2008-11-13 08:00,2008-11-22 17:00,,2008-10-14 08:00,2008-10-22 17:00,2008-10-14 08:00,2008-10-22 17:00,2008-10-14 08:00,2008-10-22 17:00,,,,,PT_Normal,,,,,3XOQUo2o1kiokA+xzJ3ZCQ,,,,N,0,0
868,82767,829,12867,912,1,0,N,N,N,CP_Drtn,TT_Task,DT_FixedDUR2,RV_OK,TK_NotStart,7112U56150,Over head drainage pipe works,2296,40,16,64,0,257.6,257.6,64,0,0,0,,,,2008-11-25 08:00,2008-12-03 17:00,,2008-11-19 08:00,2008-11-27 17:00,2008-11-19 08:00,2008-11-27 17:00,2008-11-19 08:00,2008-11-27 17:00,,,,,PT_Normal,,,,,d8axlCW8vkKJiAr2ph7IHQ,,,,N,0,0
869,82768,829,12869,912,1,0,N,N,N,CP_Drtn,TT_Task,DT_FixedDUR2,RV_OK,TK_NotStart,7112U58050,Fire fighting pipe works,2296,160,136,72,0,292,292,72,0,0,0,,,,2008-11-16 08:00,2008-11-25 17:00,,2008-10-23 08:00,2008-11-02 17:00,2008-10-23 08:00,2008-11-02 17:00,2008-10-23 08:00,2008-11-02 17:00,,,,,PT_Normal,,,,,INcdBmPEH0uybJ3xYexjiw,,,,N,0,0
870,82769,829,12871,912,1,0,N,N,N,CP_Drtn,TT_Task,DT_FixedDUR2,RV_OK,TK_NotStart,7112U58250,Sprinkler heads,2296,128,104,64,0,394,394,64,0,0,0,,,,2009-01-07 08:00,2009-01-15 17:00,,2008-12-20 08:00,2008-12-28 17:00,2008-12-20 08:00,2008-12-28 17:00,2008-12-20 08:00,2008-12-28 17:00,,,,,PT_Normal,,,,,320yOl9fcU+lIqgmgmsyOw,,,,N,0,0
871,82770,829,11237,912,1,0,N,N,N,CP_Drtn,TT_Task,DT_FixedDUR2,RV_OK,TK_NotStart,7112U66050,Chasing and installation of conduits,2296,56,0,120,0,1528,1528,120,0,0,0,,,,2008-10-23 08:00,2008-11-09 17:00,,2008-10-15 08:00,2008-11-01 17:00,2008-10-15 08:00,2008-11-01 17:00,2008-10-15 08:00,2008-11-01 17:00,,,,,PT_Normal,,,,,Wppp97pRhEKp4R7sgUiP9w,,,,N,0,0
872,82771,829,12855,912,1,0,N,N,N,CP_Drtn,TT_Task,DT_FixedDUR2,RV_OK,TK_NotStart,7112U68050,Single core wiring,2296,176,152,72,0,1128,1128,72,0,0,0,,,,2008-11-12 08:00,2008-11-22 17:00,,2008-10-18 08:00,2008-10-27 17:00,2008-10-18 08:00,2008-10-27 17:00,2008-10-18 08:00,2008-10-27 17:00,,,,,PT_Normal,,,,,duQiN8+FRUenZEvmqjMn4Q,,,,N,0,0
873,82772,829,12865,912,1,0,N,N,N,CP_Drtn,TT_Task,DT_FixedDUR2,RV_OK,TK_NotStart,7112U68350,Light Fittings,2296,128,104,120,0,1035.2,1035.2,120,0,0,0,,,,2008-12-30 08:00,2009-01-15 17:00,,2008-12-11 08:00,2008-12-28 17:00,2008-12-11 08:00,2008-12-28 17:00,2008-12-11 08:00,2008-12-28 17:00,,,,,PT_Normal,,,,,PWLUO85+50udLuYJPguJhg,,,,N,0,0
874,82773,829,12865,912,1,0,N,N,N,CP_Drtn,TT_Task,DT_FixedDUR2,RV_OK,TK_NotStart,7112U68600,Switches & sockets,2296,96,72,64,0,486.4,486.4,64,0,0,0,,,,2009-01-07 08:00,2009-01-15 17:00,,2008-12-24 08:00,2009-01-01 17:00,2008-12-24 08:00,2009-01-01 17:00,2008-12-24 08:00,2009-01-01 17:00,,,,,PT_Normal,,,,,rqOb4G4knUOFfCEH1RStVw,,,,N,0,0
875,82774,829,12857,912,1,0,N,N,N,CP_Drtn,TT_Task,DT_FixedDUR2,RV_OK,TK_NotStart,7112U74050,Fire alarm cables,2296,144,120,64,0,380.8,380.8,64,0,0,0,,,,2008-11-13 08:00,2008-11-22 17:00,,2008-10-23 08:00,2008-11-01 17:00,2008-10-23 08:00,2008-11-01 17:00,2008-10-23 08:00,2008-11-01 17:00,,,,,PT_Normal,,,,,Gi/J719kA0uqxFcT4X23TQ,,,,N,0,0
876,82775,829,12863,912,1,0,N,N,N,CP_Drtn,TT_Task,DT_FixedDUR2,RV_OK,TK_NotStart,7112U74100,Fire alarm fittings,2296,152,128,64,0,116.8,116.8,64,0,0,0,,,,2009-01-07 08:00,2009-01-15 17:00,,2008-12-16 08:00,2008-12-24 17:00,2008-12-16 08:00,2008-12-24 17:00,2008-12-16 08:00,2008-12-24 17:00,,,,,PT_Normal,,,,,eoj9RMdQiEy0sdzwN0q7LA,,,,N,0,0
877,82776,829,12870,912,1,0,N,N,N,CP_Drtn,TT_Task,DT_FixedDUR2,RV_OK,TK_NotStart,7112U76050,Structured cabling,2296,40,0,64,0,345.6,345.6,64,0,0,0,,,,2008-11-18 08:00,2008-11-26 17:00,,2008-11-12 08:00,2008-11-20 17:00,2008-11-12 08:00,2008-11-20 17:00,2008-11-12 08:00,2008-11-20 17:00,,,,,PT_Normal,,,,,Gz3AWou1fUmIpCOP1Ia2UA,,,,N,0,0
878,82777,829,10802,912,1,0,N,N,N,CP_Drtn,TT_Task,DT_FixedDUR2,RV_OK,TK_NotStart,7119946000,Testing & commissioning of Elevators,2296,488,184,120,0,320,320,120,0,0,0,,,,2009-03-08 08:00,2009-03-24 17:00,,2008-12-27 08:00,2009-01-12 17:00,2008-12-27 08:00,2009-01-12 17:00,2008-12-27 08:00,2009-01-12 17:00,,,,,PT_Normal,,,,,5OCeqP9H5kyHrGbLY+BAQg,,,,N,0,0
879,82778,829,10802,912,1,0,N,N,N,CP_Drtn,TT_Task,DT_FixedDUR2,RV_OK,TK_NotStart,7119952000,Testing & commissioning of A/C system,2296,304,0,200,0,1400,1400,200,0,0,0,,,,2009-02-26 08:00,2009-03-26 17:00,,2009-01-13 08:00,2009-02-10 17:00,2009-01-13 08:00,2009-02-10 17:00,2009-01-13 08:00,2009-02-10 17:00,,,,,PT_Normal,,,,,MvoUdifH8E2lThU27Oi45g,,,,N,0,0
880,82779,829,10802,912,1,0,N,N,N,CP_Drtn,TT_Task,DT_FixedDUR2,RV_OK,TK_NotStart,7119954000,Testing & commissioning of water supply system,2296,336,32,200,0,700,700,200,0,0,0,,,,2009-03-01 08:00,2009-03-29 17:00,,2009-01-11 08:00,2009-02-08 17:00,2009-01-11 08:00,2009-02-08 17:00,2009-01-11 08:00,2009-02-08 17:00,,,,,PT_Normal,,,,,hFKyEVfE1kWUXT8BVkbpUg,,,,N,0,0
881,82780,829,10802,912,1,0,N,N,N,CP_Drtn,TT_Task,DT_FixedDUR2,RV_OK,TK_NotStart,7119956000,Testing & commissioning of drainage system,2296,336,32,200,0,1000,1000,200,0,0,0,,,,2009-03-01 08:00,2009-03-29 17:00,,2009-01-11 08:00,2009-02-08 17:00,2009-01-11 08:00,2009-02-08 17:00,2009-01-11 08:00,2009-02-08 17:00,,,,,PT_Normal,,,,,rN5eCzcruUG4vmKWXw89eQ,,,,N,0,0
882,82781,829,10802,912,1,0,N,N,N,CP_Drtn,TT_Task,DT_FixedDUR2,RV_OK,TK_NotStart,7119958000,Testing & commissioning of Fire Fighting system,2296,304,0,200,0,300,300,200,0,0,0,,,,2009-02-26 08:00,2009-03-26 17:00,,2009-01-13 08:00,2009-02-10 17:00,2009-01-13 08:00,2009-02-10 17:00,2009-01-13 08:00,2009-02-10 17:00,,,,,PT_Normal,,,,,bA0mgbQtzkmEESWTWHNGog,,,,N,0,0
883,82782,829,10802,912,1,0,N,N,N,CP_Drtn,TT_Task,DT_FixedDUR2,RV_OK,TK_NotStart,7119960000,Testing & commissioning of LPG system,2296,480,480,120,0,420,420,120,0,0,0,,,,2009-03-15 08:00,2009-03-31 17:00,,2009-01-04 08:00,2009-01-20 17:00,2009-01-04 08:00,2009-01-20 17:00,2009-01-04 08:00,2009-01-20 17:00,,,,,PT_Normal,,,,,UKeKpl6yCUKQiQ5f/u7nVg,,,,N,0,0
884,82783,829,10802,912,1,0,N,N,N,CP_Drtn,TT_Task,DT_FixedDUR2,RV_OK,TK_NotStart,7119962000,Testing & commissioning of BMS system,2296,304,304,48,0,248,248,48,0,0,0,,,,2009-03-25 08:00,2009-03-31 17:00,,2009-02-09 08:00,2009-02-15 17:00,2009-02-09 08:00,2009-02-15 17:00,2009-02-09 08:00,2009-02-15 17:00,,,,,PT_Normal,,,,,ZpHK7SQu60WwuWriPjo6cQ,,,,N,0,0
885,82784,829,10802,912,0,0,N,N,N,CP_Drtn,TT_Mile,DT_FixedDUR2,RV_OK,TK_NotStart,7119968000,Power ready for testing & commissioning,2296,424,0,0,0,0,0,0,0,0,0,,,,2009-02-26 08:00,2009-02-25 17:00,,2008-12-27 08:00,2008-12-25 17:00,2008-12-27 08:00,2008-12-27 08:00,2008-12-27 08:00,2008-12-27 08:00,,,,,PT_Normal,,,,,oDv/rjllqkCZj9FLhkXR2Q,,,,N,0,0
886,82785,829,10802,912,1,0,N,N,N,CP_Drtn,TT_Task,DT_FixedDUR2,RV_OK,TK_NotStart,7119968002,Testing & commissioning of Power & Lighting,2296,288,288,120,0,820,820,120,0,0,0,,,,2009-03-15 08:00,2009-03-31 17:00,,2009-02-01 08:00,2009-02-17 17:00,2009-02-01 08:00,2009-02-17 17:00,2009-02-01 08:00,2009-02-17 17:00,,,,,PT_Normal,,,,,43LuPwQV60uVVBvsjanY4Q,,,,N,0,0
887,82786,829,10802,912,1,0,N,N,N,CP_Drtn,TT_Task,DT_FixedDUR2,RV_OK,TK_NotStart,7119970000,Testing & commissioning of Central Battery syst.,2296,504,200,120,0,420,420,120,0,0,0,,,,2009-03-12 08:00,2009-03-29 17:00,,2008-12-29 08:00,2009-01-14 17:00,2008-12-29 08:00,2009-01-14 17:00,2008-12-29 08:00,2009-01-14 17:00,,,,,PT_Normal,,,,,9sKtJdqt3EGFzWwluVfY8w,,,,N,0,0
888,82787,829,10802,912,1,0,N,N,N,CP_Drtn,TT_Task,DT_FixedDUR2,RV_OK,TK_NotStart,7119972000,Testing & commissioning of security systems,2296,536,536,120,0,320,320,120,0,0,0,,,,2009-03-15 08:00,2009-03-31 17:00,,2008-12-27 08:00,2009-01-12 17:00,2008-12-27 08:00,2009-01-12 17:00,2008-12-27 08:00,2009-01-12 17:00,,,,,PT_Normal,,,,,MY7S1zIQWESUP84y6SzOMA,,,,N,0,0
889,82788,829,10802,912,1,0,N,N,N,CP_Drtn,TT_Task,DT_FixedDUR2,RV_OK,TK_NotStart,7119974000,Testing & commissioning of Fire Alarm system,2296,304,0,200,0,600,600,200,0,0,0,,,,2009-02-26 08:00,2009-03-26 17:00,,2009-01-13 08:00,2009-02-10 17:00,2009-01-13 08:00,2009-02-10 17:00,2009-01-13 08:00,2009-02-10 17:00,,,,,PT_Normal,,,,,uPExsHutJkiDDuQDPxCq/Q,,,,N,0,0
890,82789,829,10802,912,1,0,N,N,N,CP_Drtn,TT_Task,DT_FixedDUR2,RV_OK,TK_NotStart,7119976000,Testing & commissioning of Tel & Data system,2296,416,416,120,0,320,320,120,0,0,0,,,,2009-03-15 08:00,2009-03-31 17:00,,2009-01-13 08:00,2009-01-29 17:00,2009-01-13 08:00,2009-01-29 17:00,2009-01-13 08:00,2009-01-29 17:00,,,,,PT_Normal,,,,,Fa4rHd2Yb0OLPU99CqVbog,,,,N,0,0
891,82790,829,10902,912,1,0,N,N,N,CP_Drtn,TT_Task,DT_FixedDUR2,RV_OK,TK_NotStart,711EV16100,External plaster works,2306,288,0,160,0,101092,101092,160,77640,0,77640,,,,2008-11-23 08:00,2008-12-15 17:00,,2008-10-12 08:00,2008-11-03 17:00,2008-10-12 08:00,2008-11-03 17:00,2008-10-12 08:00,2008-11-03 17:00,,,,,PT_Normal,,,,,bxXoKQrMh0yPZaRUnwn6Pw,,,,N,0,0
892,82791,829,10998,912,1,0,N,N,N,CP_Drtn,TT_Task,DT_FixedDUR2,RV_OK,TK_NotStart,711EV18100,Painting base coats,2306,288,0,160,0,85564,85564,160,77640,0,77640,,,,2008-12-16 08:00,2009-01-07 17:00,,2008-11-04 08:00,2008-11-26 17:00,2008-11-04 08:00,2008-11-26 17:00,2008-11-04 08:00,2008-11-26 17:00,,,,,PT_Normal,,,,,+zUD4O0ARE2zMzWnqPCFIA,,,,N,0,0
893,82792,829,10998,912,1,0,N,N,N,CP_Drtn,TT_Task,DT_FixedDUR2,RV_OK,TK_NotStart,711EV18150,Painting 1st top coat,2306,288,0,160,0,81682,81682,160,77640,0,77640,,,,2009-01-20 08:00,2009-02-11 17:00,,2008-12-09 08:00,2008-12-31 17:00,2008-12-09 08:00,2008-12-31 17:00,2008-12-09 08:00,2008-12-31 17:00,,,,,PT_Normal,,,,,xkbld0FskkSKngP5PH4rgA,,,,N,0,0
894,82793,829,10998,912,1,0,N,N,N,CP_Drtn,TT_Task,DT_FixedDUR2,RV_OK,TK_NotStart,711EV18200,Painting final top coat,2306,288,0,160,0,81682,81682,160,77640,0,77640,,,,2009-02-24 08:00,2009-03-18 17:00,,2009-01-13 08:00,2009-02-04 17:00,2009-01-13 08:00,2009-02-04 17:00,2009-01-13 08:00,2009-02-04 17:00,,,,,PT_Normal,,,,,iu2vZcSRJEWeWMmJRoCYmA,,,,N,0,0
895,82794,829,10999,912,1,0,N,N,N,CP_Drtn,TT_Task,DT_FixedDUR2,RV_OK,TK_NotStart,711EV28200,Pergola & canopy structures,2306,288,0,160,0,4112,4112,160,152,0,152,,,,2009-02-01 08:00,2009-02-23 17:00,,2008-12-21 08:00,2009-01-12 17:00,2008-12-21 08:00,2009-01-12 17:00,2008-12-21 08:00,2009-01-12 17:00,,,,,PT_Normal,,,,,UxHXafCsEU26NTr6t0m1cQ,,,,N,0,0
896,82795,829,10999,912,1,0,N,N,N,CP_Drtn,TT_Task,DT_FixedDUR2,RV_OK,TK_NotStart,711EV28250,Brackets for pergola & canopy structures,2306,288,0,160,0,2592,2592,160,152,0,152,,,,2009-01-08 08:00,2009-01-31 17:00,,2008-11-27 08:00,2008-12-20 17:00,2008-11-27 08:00,2008-12-20 17:00,2008-11-27 08:00,2008-12-20 17:00,,,,,PT_Normal,,,,,8m+2RN6+dE+Lg9w0jWecBA,,,,N,0,0
897,82796,829,12823,912,1,0,N,N,N,CP_Drtn,TT_Task,DT_FixedDUR2,RV_OK,TK_NotStart,711EV68350,Aviation Light Fittings,2296,288,0,72,0,402,402,72,0,0,0,,,,2009-03-04 08:00,2009-03-14 17:00,,2009-01-21 08:00,2009-01-31 17:00,2009-01-21 08:00,2009-01-31 17:00,2009-01-21 08:00,2009-01-31 17:00,,,,,PT_Normal,,,,,aFgtpeybrEq3eaMBFGQgXg,,,,N,0,0
898,82797,829,10739,912,1,0,N,N,N,CP_Drtn,TT_Task,DT_FixedDUR2,RV_OK,TK_NotStart,711GL00000,Pre-Snagging & Disnagging for lofts,2296,24,0,120,0,420,420,120,0,0,0,,,,2009-02-03 08:00,2009-02-19 17:00,,2009-01-31 08:00,2009-02-16 17:00,2009-01-31 08:00,2009-02-16 17:00,2009-01-31 08:00,2009-02-16 17:00,,,,,PT_Normal,,,,,6kfpWeOWnUOO96aUgi7X+w,,,,N,0,0
899,82798,829,10739,912,1,0,N,N,N,CP_Drtn,TT_Task,DT_FixedDUR2,RV_OK,TK_NotStart,711GL00002,Pre-Snagging & Disnagging for corrid & Srv rooms,2296,184,0,64,0,214,214,64,0,0,0,,,,2009-03-18 08:00,2009-03-26 17:00,,2009-02-19 08:00,2009-02-28 17:00,2009-02-19 08:00,2009-02-28 17:00,2009-02-19 08:00,2009-02-28 17:00,,,,,PT_Normal,,,,,1R3DhFKeG0yKdkerBf3NDw,,,,N,0,0
900,82799,829,11238,912,1,100,N,N,N,CP_Drtn,TT_Task,DT_FixedDUR2,RV_OK,TK_Complete,711GL12050,Columns & walls GL to GU - Part 1,2306,24,0,0,5264.24,0,5264.24,48,157672.56,157672.56,0,,2008-06-03 08:00,2008-06-09 17:00,2008-10-06 08:00,2008-10-05 17:00,,2008-10-02 08:00,2008-10-01 17:00,,,2008-06-03 08:00,2008-06-09 17:00,,,,,PT_Normal,,,,,PeUtOwgFTk+ZuBtEDVF9tA,,,,N,5264.24,157672.56
901,82800,829,11238,912,1,100,N,N,N,CP_Drtn,TT_Task,DT_FixedDUR2,RV_OK,TK_Complete,711GL12051,Columns & walls GL to GU - Part 2,2306,24,0,0,5264.24,0,5264.24,48,157672.56,157672.56,0,,2008-06-10 08:00,2008-06-16 17:00,2008-10-06 08:00,2008-10-05 17:00,,2008-10-02 08:00,2008-10-01 17:00,,,2008-06-10 08:00,2008-06-16 17:00,,,,,PT_Normal,,,,,UFQcpQwJWUS1xyFcUthung,,,,N,5264.24,157672.56
902,82801,829,11238,912,1,100,N,N,N,CP_Drtn,TT_Task,DT_FixedDUR2,RV_OK,TK_Complete,711GL12052,Columns & walls GL to GU - Middle Part,2306,24,0,0,8034.91,0,8034.91,48,241424.4,241424.4,0,,2008-06-09 08:00,2008-06-15 17:00,2008-10-06 08:00,2008-10-05 17:00,,2008-10-02 08:00,2008-10-01 17:00,,,2008-06-09 08:00,2008-06-15 17:00,,,,,PT_Normal,,,,,omCcxL0OZ0iCvsM9fGOJug,,,,N,8034.91,241424.4
903,82802,829,11238,912,1,100,N,N,N,CP_Drtn,TT_Task,DT_FixedDUR2,RV_OK,TK_Complete,711GL12200,Slab @ GU level - Part 1,2306,24,0,0,4104.78,0,4104.78,64,149880.72,149880.72,0,,2008-06-10 08:00,2008-06-18 17:00,2008-10-06 08:00,2008-10-05 17:00,,2008-10-02 08:00,2008-10-01 17:00,,,2008-06-10 08:00,2008-06-18 17:00,,,,,PT_Normal,,,,,dkliXoYOEUiS0ErU8THH3Q,,,,N,4104.78,149880.72
904,82803,829,11238,912,1,100,N,N,N,CP_Drtn,TT_Task,DT_FixedDUR2,RV_OK,TK_Complete,711GL12201,Slab @ GU level - Part 2,2306,24,0,0,4098.76,0,4098.76,64,149570.48,149570.48,0,,2008-06-19 08:00,2008-06-28 17:00,2008-10-06 08:00,2008-10-05 17:00,,2008-10-02 08:00,2008-10-01 17:00,,,2008-06-19 08:00,2008-06-28 17:00,,,,,PT_Normal,,,,,AhrF5CNN1EKWgdNCygkMLA,,,,N,4098.76,149570.48
905,82804,829,11238,912,1,100,N,N,N,CP_Drtn,TT_Task,DT_FixedDUR2,RV_OK,TK_Complete,711GL12202,Slab @ GU level - Middle Part,2306,24,0,0,5907.6,0,5907.6,64,216622.72,216622.72,0,,2008-06-18 08:00,2008-06-26 17:00,2008-10-06 08:00,2008-10-05 17:00,,2008-10-02 08:00,2008-10-01 17:00,,,2008-06-18 08:00,2008-06-26 17:00,,,,,PT_Normal,,,,,bIx5vjOUJ0uMOgZqnxuBew,,,,N,5907.6,216622.72
906,82805,829,11238,912,1,100,N,N,N,CP_Drtn,TT_Task,DT_FixedDUR2,RV_OK,TK_Complete,711GL12250,Staircases GL to GU,2306,208,0,0,999.88,0,999.88,32,18457.6,18457.6,0,,2008-06-29 08:00,2008-07-02 17:00,2008-11-02 08:00,2008-11-01 17:00,,2008-10-02 08:00,2008-10-01 17:00,,,2008-06-29 08:00,2008-07-02 17:00,,,,,PT_Normal,,,,,YWijlQDimUSSg3EnPdFFrw,,,,N,999.88,18457.6
907,82806,829,11468,912,1,100,N,N,N,CP_Drtn,TT_Task,DT_FixedDUR2,RV_OK,TK_Complete,711GL14050,Block works,2306,168,0,0,59160,0,66360,120,,7200,0,,2008-07-19 08:00,2008-08-05 17:00,2008-10-27 08:00,2008-10-26 17:00,,2008-10-02 08:00,2008-10-01 17:00,,,2008-07-19 08:00,2008-08-05 17:00,,,,,PT_Normal,,,,,iTrJIe0n1ka6CwZW/MhbLw,,,,N,59160,7200
908,82807,829,11467,912,1,100,N,N,N,CP_Drtn,TT_Task,DT_FixedDUR2,RV_OK,TK_Complete,711GL16050,Plaster works,2306,168,0,0,25456.4,0,25456.4,120,19872,19872,0,,2008-08-04 08:00,2008-08-20 17:00,2008-10-27 08:00,2008-10-26 17:00,,2008-10-02 08:00,2008-10-01 17:00,,,2008-08-04 08:00,2008-08-20 17:00,,,,,PT_Normal,,,,,zzCoJce080eJEpV8cT+REg,,,,N,25456.4,19872
909,82808,829,11467,912,1,100,N,N,N,CP_Drtn,TT_Task,DT_FixedDUR2,RV_OK,TK_Complete,711GL16051,Plaste works behind tiles,2306,168,0,0,9810,0,9810,120,7600,7600,0,,2008-08-12 08:00,2008-08-28 17:00,2008-10-27 08:00,2008-10-26 17:00,,2008-10-02 08:00,2008-10-01 17:00,,,2008-08-12 08:00,2008-08-28 17:00,,,,,PT_Normal,,,,,8VVmG2I0mU+K6DldhE43Hw,,,,N,9810,7600
910,82809,829,11257,912,1,100,N,N,N,CP_Drtn,TT_Task,DT_FixedDUR2,RV_OK,TK_Complete,711GL18050,Rendering works,2306,168,0,0,5700.2,0,5700.2,120,5016,5016,0,,2008-07-28 08:00,2008-08-14 17:00,2008-10-27 08:00,2008-10-26 17:00,,2008-10-02 08:00,2008-10-01 17:00,,,2008-07-28 08:00,2008-08-14 17:00,,,,,PT_Normal,,,,,Ym/ZI14efUGCBS5+5VhDNQ,,,,N,5700.2,5016
911,82810,829,11257,912,1,100,N,N,N,CP_Drtn,TT_Task,DT_FixedDUR2,RV_OK,TK_Complete,711GL18100,Painting base coats,2306,168,0,0,27496.4,0,27496.4,120,24888,24888,0,,2008-08-10 08:00,2008-08-26 17:00,2008-10-27 08:00,2008-10-26 17:00,,2008-10-02 08:00,2008-10-01 17:00,,,2008-08-10 08:00,2008-08-26 17:00,,,,,PT_Normal,,,,,qaIQDuFZ8UyUDoKl1W3byw,,,,N,27496.4,24888
912,82811,829,11257,912,1,0,N,N,N,CP_Drtn,TT_Task,DT_FixedDUR2,RV_OK,TK_NotStart,711GL18150,Painting 1st top coat for apartments,2306,624,0,72,0,17325.8,17325.8,72,16432,0,16432,,,,2009-01-15 08:00,2009-01-25 17:00,,2008-10-16 08:00,2008-10-26 17:00,2008-10-16 08:00,2008-10-26 17:00,2008-10-16 08:00,2008-10-26 17:00,,,,,PT_Normal,,,,,Fuowwv1wtU+JzOt0iqaFVQ,,,,N,0,0
913,82812,829,11257,912,1,0,N,N,N,CP_Drtn,TT_Task,DT_FixedDUR2,RV_OK,TK_NotStart,711GL18153,Painting 1st top coat for corridors/lobbies,2306,696,0,48,0,14386.4,14386.4,48,13656,0,13656,,,,2009-02-14 08:00,2009-02-19 17:00,,2008-11-04 08:00,2008-11-10 17:00,2008-11-04 08:00,2008-11-10 17:00,2008-11-04 08:00,2008-11-10 17:00,,,,,PT_Normal,,,,,6rjem8z0qkif+Vbwor/RZw,,,,N,0,0
914,82813,829,11257,912,1,0,N,N,N,CP_Drtn,TT_Task,DT_FixedDUR2,RV_OK,TK_NotStart,711GL18155,Painting 1st top coat for service rooms,2306,824,0,48,0,5508,5508,48,5200,0,5200,,,,2009-02-24 08:00,2009-03-02 17:00,,2008-10-27 08:00,2008-11-02 17:00,2008-10-27 08:00,2008-11-02 17:00,2008-10-27 08:00,2008-11-02 17:00,,,,,PT_Normal,,,,,aoWD1CLLG0W6L1+yxU2tvQ,,,,N,0,0
915,82814,829,10739,912,1,0,N,N,N,CP_Drtn,TT_Task,DT_FixedDUR2,RV_OK,TK_NotStart,711GL18200,Painting final top coat,2306,184,184,32,0,26164.2,26164.2,32,24888,0,24888,,,,2009-03-28 08:00,2009-03-31 17:00,,2009-03-01 08:00,2009-03-04 17:00,2009-03-01 08:00,2009-03-04 17:00,2009-03-01 08:00,2009-03-04 17:00,,,,,PT_Normal,,,,,pk9w0Dy+4EuGllPeRjM1wg,,,,N,0,0
916,82815,829,11217,912,1,100,N,N,N,CP_Drtn,TT_Task,DT_FixedDUR2,RV_OK,TK_Complete,711GL20050,Floor tiles for apartments-dry area,2306,288,0,0,14013.34,0,14013.34,120,10291.36,10291.36,0,,2008-08-16 08:00,2008-09-01 17:00,2008-11-13 08:00,2008-11-12 17:00,,2008-10-02 08:00,2008-10-01 17:00,,,2008-08-16 08:00,2008-09-01 17:00,,,,,PT_Normal,,,,,LXB6m9o3B0ePqbSdo4Wf7g,,,,N,14013.34,10291.36
917,82816,829,11217,912,1,0,N,N,N,CP_Drtn,TT_Task,DT_FixedDUR2,RV_OK,TK_NotStart,711GL20053,Floor tiles for corridors / lobbies,2306,376,0,48,0,4778.2,4778.2,48,3504,0,3504,,,,2008-12-08 08:00,2008-12-14 17:00,,2008-10-14 08:00,2008-10-20 17:00,2008-10-14 08:00,2008-10-20 17:00,2008-10-14 08:00,2008-10-20 17:00,,,,,PT_Normal,,,,,JIxisnhuE0+iO2dbea/v9Q,,,,N,0,0
918,82817,829,11217,912,1,0,N,N,N,CP_Drtn,TT_Task,DT_FixedDUR2,RV_OK,TK_NotStart,711GL20070,Floor tiles for apartments-wet area,2306,168,0,120,0,5682,5682,120,4120,0,4120,,,,2008-11-01 08:00,2008-11-17 17:00,,2008-10-07 08:00,2008-10-23 17:00,2008-10-07 08:00,2008-10-23 17:00,2008-10-07 08:00,2008-10-23 17:00,,,,,PT_Normal,,,,,4nHFSXKof0yA9ikBEIzZZw,,,,N,0,0
919,82818,829,11217,912,1,0,N,N,N,CP_Drtn,TT_Task,DT_FixedDUR2,RV_OK,TK_NotStart,711GL20110,Wall tiles for apartments-wet area,2306,328,0,120,0,9360,9360,120,6160,0,6160,,,,2008-11-24 08:00,2008-12-10 17:00,,2008-10-07 08:00,2008-10-23 17:00,2008-10-07 08:00,2008-10-23 17:00,2008-10-07 08:00,2008-10-23 17:00,,,,,PT_Normal,,,,,CUcHGLISKEy39MWszpLKwQ,,,,N,0,0
920,82819,829,11158,912,1,100,N,N,N,CP_Drtn,TT_Task,DT_FixedDUR2,RV_OK,TK_Complete,711GL22150,W/P for for apartments,2306,200,0,0,5144.4,0,5144.4,120,4568,4568,0,,2008-08-06 08:00,2008-08-23 17:00,2008-11-01 08:00,2008-10-30 17:00,,2008-10-02 08:00,2008-10-01 17:00,,,2008-08-06 08:00,2008-08-23 17:00,,,,,PT_Normal,,,,,YGOQ5568KE2f97TYKr5wjw,,,,N,5144.4,4568
921,82820,829,11158,912,1,0,N,N,N,CP_Drtn,TT_Task,DT_FixedDUR2,RV_OK,TK_NotStart,711GL22151,W/P for open to sky areas,2306,968,656,120,0,47103.6,47103.6,120,42712,0,42712,,,,2009-03-21 08:00,2009-04-06 17:00,,2008-10-30 08:00,2008-11-16 17:00,2008-10-30 08:00,2008-11-16 17:00,2008-10-30 08:00,2008-11-16 17:00,,,,,PT_Normal,,,,,y7BBcLf540yICH37ItINSg,,,,N,0,0
922,82821,829,11158,912,1,100,N,N,N,CP_Drtn,TT_Task,DT_FixedDUR2,RV_OK,TK_Complete,711GL22154,W/P for planter boxes,2306,856,0,0,1472,0,1472,64,1280,1280,0,,2008-09-16 08:00,2008-09-24 17:00,2009-02-04 08:00,2009-02-03 17:00,,2008-10-02 08:00,2008-10-01 17:00,,,2008-09-16 08:00,2008-09-24 17:00,,,,,PT_Normal,,,,,gHyYNXpbokSWTlYs2oQawQ,,,,N,1472,1280
923,82822,829,11118,912,1,100,N,N,N,CP_Drtn,TT_Task,DT_FixedDUR2,RV_OK,TK_Complete,711GL24050,Aluminium doors & windows,2306,320,0,0,2936,0,2936,120,704,704,0,,2008-08-27 08:00,2008-09-13 17:00,2008-11-18 08:00,2008-11-17 17:00,,2008-10-02 08:00,2008-10-01 17:00,,,2008-08-27 08:00,2008-09-13 17:00,,,,,PT_Normal,,,,,gfyS2tf8sEeYCLYCId0WVw,,,,N,2936,704
924,82823,829,11118,912,1,0,N,N,N,CP_Drtn,TT_Task,DT_FixedDUR2,RV_OK,TK_NotStart,711GL24200,Balcony handrails,2306,168,0,120,0,1520,1520,120,800,0,800,,,,2008-11-18 08:00,2008-12-04 17:00,,2008-10-25 08:00,2008-11-10 17:00,2008-10-25 08:00,2008-11-10 17:00,2008-10-25 08:00,2008-11-10 17:00,,,,,PT_Normal,,,,,NAIW5Obm0EKKYYJNPeumig,,,,N,0,0
925,82824,829,11118,912,1,0,N,N,N,CP_Drtn,TT_Task,DT_FixedDUR2,RV_OK,TK_NotStart,711GL24203,Lobby handrails,2306,736,184,64,0,946,946,64,504,0,504,,,,2009-02-05 08:00,2009-02-14 17:00,,2008-10-21 08:00,2008-10-29 17:00,2008-10-21 08:00,2008-10-29 17:00,2008-10-21 08:00,2008-10-29 17:00,,,,,PT_Normal,,,,,m9TL2HWq9UupUYuBZphh+Q,,,,N,0,0
926,82825,829,11216,912,1,0,N,N,N,CP_Drtn,TT_Task,DT_FixedDUR2,RV_OK,TK_NotStart,711GL26050,Steel doors,2306,752,0,48,0,528,528,48,96,0,96,,,,2009-02-07 08:00,2009-02-12 17:00,,2008-10-20 08:00,2008-10-26 17:00,2008-10-20 08:00,2008-10-26 17:00,2008-10-20 08:00,2008-10-26 17:00,,,,,PT_Normal,,,,,meqAGJD+DUGEv4XCMuwktA,,,,N,0,0
927,82826,829,11206,912,1,44.8,N,N,N,CP_Drtn,TT_Task,DT_FixedDUR2,RV_OK,TK_Active,711GL30050,Wooden doors,2306,288,0,256,1274.86,1569.14,2844,464,680,304.8,375.2,,2008-09-02 08:00,,2008-11-13 08:00,2008-12-20 17:00,,2008-10-02 08:00,2008-11-08 17:00,2008-10-02 08:00,2008-11-08 17:00,2008-09-02 08:00,2008-11-08 17:00,,,,,PT_Normal,,,,,OHJkZQVK+U6/i47mFpj0Qg,,,,N,1274.86,304.8
928,82827,829,10885,912,1,0,N,N,N,CP_Drtn,TT_Task,DT_FixedDUR2,RV_OK,TK_NotStart,711GL32050,Kitchen cabinets,2306,536,512,160,0,4376,4376,160,136,0,136,,,,2009-01-05 08:00,2009-01-27 17:00,,2008-10-19 08:00,2008-11-10 17:00,2008-10-19 08:00,2008-11-10 17:00,2008-10-19 08:00,2008-11-10 17:00,,,,,PT_Normal,,,,,kbiaYqT94U+NpQCb1XXlBQ,,,,N,0,0
929,82828,829,10885,912,1,0,N,N,N,CP_Drtn,TT_Task,DT_FixedDUR2,RV_OK,TK_NotStart,711GL32100,Vanity counters,2306,200,0,120,0,3112,3112,120,272,0,272,,,,2008-11-23 08:00,2008-12-09 17:00,,2008-10-25 08:00,2008-11-10 17:00,2008-10-25 08:00,2008-11-10 17:00,2008-10-25 08:00,2008-11-10 17:00,,,,,PT_Normal,,,,,0/LftpAEbEmcs0d2/uiqFQ,,,,N,0,0
930,82829,829,10885,912,1,0,N,N,N,CP_Drtn,TT_Task,DT_FixedDUR2,RV_OK,TK_NotStart,711GL32150,Wardrobes,2306,632,608,160,0,3688,3688,160,168,0,168,,,,2009-01-05 08:00,2009-01-27 17:00,,2008-10-05 08:00,2008-10-27 17:00,2008-10-05 08:00,2008-10-27 17:00,2008-10-05 08:00,2008-10-27 17:00,,,,,PT_Normal,,,,,6/vaR/C+I0KIUbYNTkrYwQ,,,,N,0,0
931,82830,829,10891,912,1,40,N,N,N,CP_Drtn,TT_Task,DT_FixedDUR2,RV_OK,TK_Active,711GL34050,False ceiling works for apartments-dry area,2306,376,0,96,602.44,903.72,1506.16,160,897.44,358.96,538.48,,2008-09-23 08:00,,2008-11-26 08:00,2008-12-09 17:00,,2008-10-02 08:00,2008-10-15 17:00,2008-10-02 08:00,2008-10-15 17:00,2008-09-23 08:00,2008-10-15 17:00,,,,,PT_Normal,,,,,LrdKS2hwBkeYSA3+56pxLQ,,,,N,602.44,358.96
932,82831,829,10891,912,1,0,N,N,N,CP_Drtn,TT_Task,DT_FixedDUR2,RV_OK,TK_NotStart,711GL34053,False ceiling works for corridors/lobbies,2306,376,0,72,0,9876,9876,72,6536,0,6536,,,,2008-11-30 08:00,2008-12-09 17:00,,2008-10-06 08:00,2008-10-15 17:00,2008-10-06 08:00,2008-10-15 17:00,2008-10-06 08:00,2008-10-15 17:00,,,,,PT_Normal,,,,,OSv7eLphuUaGLuqWV45xVQ,,,,N,0,0
933,82832,829,10891,912,1,40,N,N,N,CP_Drtn,TT_Task,DT_FixedDUR2,RV_OK,TK_Active,711GL34070,False ceiling works for apartments-wet area,2306,168,0,96,283.96,425.88,709.84,160,366.56,146.64,219.92,,2008-09-23 08:00,,2008-10-27 08:00,2008-11-09 17:00,,2008-10-02 08:00,2008-10-15 17:00,2008-10-02 08:00,2008-10-15 17:00,2008-09-23 08:00,2008-10-15 17:00,,,,,PT_Normal,,,,,KbRFp5gclUKaPUdiE8+/tw,,,,N,283.96,146.64
934,82833,829,10919,912,1,0,N,N,N,CP_Drtn,TT_Task,DT_FixedDUR2,RV_OK,TK_NotStart,711GL36050,Stone finishing top,2306,328,32,64,0,526,526,64,264,0,264,,,,2008-12-10 08:00,2008-12-18 17:00,,2008-10-23 08:00,2008-11-01 17:00,2008-10-23 08:00,2008-11-01 17:00,2008-10-23 08:00,2008-11-01 17:00,,,,,PT_Normal,,,,,Rep9FPrOMEypBsf41zLQ6A,,,,N,0,0
935,82834,829,10919,912,1,0,N,N,N,CP_Drtn,TT_Task,DT_FixedDUR2,RV_OK,TK_NotStart,711GL36100,Thresholds,2306,288,0,176,0,1016,1016,176,560,0,560,,,,2008-11-29 08:00,2008-12-23 17:00,,2008-10-18 08:00,2008-11-11 17:00,2008-10-18 08:00,2008-11-11 17:00,2008-10-18 08:00,2008-11-11 17:00,,,,,PT_Normal,,,,,iFsMUryCWk6MA9VUPMkByg,,,,N,0,0
936,82835,829,10916,912,1,0,N,N,N,CP_Drtn,TT_Task,DT_FixedDUR2,RV_OK,TK_NotStart,711GL38100,Epoxy coating system,2306,824,640,48,0,1152,1152,48,920,0,920,,,,2009-03-09 08:00,2009-03-15 17:00,,2008-11-09 08:00,2008-11-15 17:00,2008-11-09 08:00,2008-11-15 17:00,2008-11-09 08:00,2008-11-15 17:00,,,,,PT_Normal,,,,,uawR2KFMJUyBrMgy7in3TA,,,,N,0,0
937,82836,829,10921,912,1,86.7,N,N,N,CP_Drtn,TT_Task,DT_FixedDUR2,RV_OK,TK_Active,711GL40050,Duplex apartment stairs,2306,376,0,16,4641.83,714.17,5356,120,136,117.84,18.16,,2008-09-17 08:00,,2008-11-26 08:00,2008-11-27 17:00,,2008-10-02 08:00,2008-10-04 17:00,2008-10-02 08:00,2008-10-04 17:00,2008-09-17 08:00,2008-10-04 17:00,,,,,PT_Normal,,,,,uLNTB1dFXk2bWPBWWccAQw,,,,N,4641.83,117.84
938,82837,829,10921,912,1,20,N,N,N,CP_Drtn,TT_Task,DT_FixedDUR2,RV_OK,TK_Active,711GL40100,Wooden steps for Duplex staircase,2306,376,0,96,200.8,803.2,1004,120,104,20.8,83.2,,2008-09-29 08:00,,2008-11-26 08:00,2008-12-09 17:00,,2008-10-02 08:00,2008-10-15 17:00,2008-10-02 08:00,2008-10-15 17:00,2008-09-29 08:00,2008-10-15 17:00,,,,,PT_Normal,,,,,0FdjGvlp30ugTdDzQoosCw,,,,N,200.8,20.8
939,82838,829,10921,912,1,0,N,N,N,CP_Drtn,TT_Task,DT_FixedDUR2,RV_OK,TK_NotStart,711GL40150,Duplex stair railings,2306,376,152,120,0,6480,6480,120,2544,0,2544,,,,2008-12-04 08:00,2008-12-21 17:00,,2008-10-11 08:00,2008-10-27 17:00,2008-10-11 08:00,2008-10-27 17:00,2008-10-11 08:00,2008-10-27 17:00,,,,,PT_Normal,,,,,Wv6fRoORYkKEsYUQ5NXZ6A,,,,N,0,0
940,82839,829,10928,912,1,0,N,N,N,CP_Drtn,TT_Task,DT_FixedDUR2,RV_OK,TK_NotStart,711GL42050,Signage works,2306,808,624,48,0,197.8,197.8,48,136,0,136,,,,2009-03-09 08:00,2009-03-15 17:00,,2008-11-11 08:00,2008-11-17 17:00,2008-11-11 08:00,2008-11-17 17:00,2008-11-11 08:00,2008-11-17 17:00,,,,,PT_Normal,,,,,x99Yj2nua0OvB7Ud7vUmlg,,,,N,0,0
941,82840,829,10888,912,1,100,N,N,N,CP_Drtn,TT_Task,DT_FixedDUR2,RV_OK,TK_Complete,711GL44050,Sub-frames,2306,168,0,0,1480,0,1480,120,680,680,0,,2008-07-26 08:00,2008-08-12 17:00,2008-10-27 08:00,2008-10-26 17:00,,2008-10-02 08:00,2008-10-01 17:00,,,2008-07-26 08:00,2008-08-12 17:00,,,,,PT_Normal,,,,,BQ+E1D60pkiAgfNmo//teQ,,,,N,1480,680
942,82841,829,12505,912,1,100,N,N,N,CP_Drtn,TT_Task,DT_FixedDUR2,RV_OK,TK_Complete,711GL50100,MEP skeleton embedded provisions,2296,24,0,0,512,0,512,72,,,0,,2008-06-03 08:00,2008-06-12 17:00,2008-10-06 08:00,2008-10-05 17:00,,2008-10-02 08:00,2008-10-01 17:00,,,2008-06-03 08:00,2008-06-12 17:00,,,,,PT_Normal,,,,,XVGZwXp0xUaDNtoa9NklOg,,,,N,512,0
943,82842,829,12465,912,1,100,N,N,N,CP_Drtn,TT_Task,DT_FixedDUR2,RV_OK,TK_Complete,711GL52050,A/C duct works,2296,168,0,0,831,0,831,160,,,0,,2008-07-30 08:00,2008-08-23 17:00,2008-10-27 08:00,2008-10-26 17:00,,2008-10-02 08:00,2008-10-01 17:00,,,2008-07-30 08:00,2008-08-23 17:00,,,,,PT_Normal,,,,,zfpIIZTlHkK+ANKzfIBMFQ,,,,N,831,0
944,82843,829,12465,912,1,100,N,N,N,CP_Drtn,TT_Task,DT_FixedDUR2,RV_OK,TK_Complete,711GL52100,Chilled water pipe works,2296,168,0,0,787,0,787,72,,,0,,2008-08-13 08:00,2008-08-23 17:00,2008-10-27 08:00,2008-10-26 17:00,,2008-10-02 08:00,2008-10-01 17:00,,,2008-08-13 08:00,2008-08-23 17:00,,,,,PT_Normal,,,,,uMedBKP4l0WlD4C5pfFz2Q,,,,N,787,0
945,82844,829,12439,912,1,100,N,N,N,CP_Drtn,TT_Task,DT_FixedDUR2,RV_OK,TK_Complete,711GL52150,FCU's hanging,2296,168,0,0,935.2,0,935.2,64,,,0,,2008-08-12 08:00,2008-08-20 17:00,2008-10-27 08:00,2008-10-26 17:00,,2008-10-02 08:00,2008-10-01 17:00,,,2008-08-12 08:00,2008-08-20 17:00,,,,,PT_Normal,,,,,pguy4xdyvEeRH/HAAGkZ/w,,,,N,935.2,0
946,82845,829,12439,912,1,100,N,N,N,CP_Drtn,TT_Task,DT_FixedDUR2,RV_OK,TK_Complete,711GL52300,FCU's assembly & duct connections,2296,168,0,0,991.2,0,991.2,120,,,0,,2008-08-27 08:00,2008-09-13 17:00,2008-10-27 08:00,2008-10-26 17:00,,2008-10-02 08:00,2008-10-01 17:00,,,2008-08-27 08:00,2008-09-13 17:00,,,,,PT_Normal,,,,,wqD5mWYXVEKIbtayNLpjiQ,,,,N,991.2,0
947,82846,829,12439,912,1,54.5,N,N,N,CP_Drtn,TT_Task,DT_FixedDUR2,RV_OK,TK_Active,711GL52350,Grills & diffusers,2296,848,544,160,624,520,1144,352,,,,,2008-09-04 08:00,,2009-02-03 08:00,2009-02-25 17:00,,2008-10-02 08:00,2008-10-25 17:00,2008-10-02 08:00,2008-10-25 17:00,2008-09-04 08:00,2008-10-25 17:00,,,,,PT_Normal,,,,,VdKCRbIVDEWoGWUUui1ixA,,,,N,624,0
948,82847,829,12465,912,1,100,N,N,N,CP_Drtn,TT_Task,DT_FixedDUR2,RV_OK,TK_Complete,711GL52550,A/C duct risers,2296,168,0,0,1626,0,1626,64,,,0,,2008-08-18 08:00,2008-08-26 17:00,2008-10-27 08:00,2008-10-26 17:00,,2008-10-02 08:00,2008-10-01 17:00,,,2008-08-18 08:00,2008-08-26 17:00,,,,,PT_Normal,,,,,SWEtuEJKRkK88cY5mK0I+g,,,,N,1626,0
949,82848,829,12399,912,1,100,N,N,N,CP_Drtn,TT_Task,DT_FixedDUR2,RV_OK,TK_Complete,711GL54050,Chasing & Pex pipe works,2296,168,0,0,395,0,395,120,,,0,,2008-07-30 08:00,2008-08-17 17:00,2008-10-27 08:00,2008-10-26 17:00,,2008-10-02 08:00,2008-10-01 17:00,,,2008-07-30 08:00,2008-08-17 17:00,,,,,PT_Normal,,,,,RjLnyJQzHkSHXV/e0DvaAQ,,,,N,395,0
950,82849,829,12399,912,1,100,N,N,N,CP_Drtn,TT_Task,DT_FixedDUR2,RV_OK,TK_Complete,711GL54100,Over head distribution water pipe network,2296,168,0,0,8314,0,8314,64,,,0,,2008-08-13 08:00,2008-08-21 17:00,2008-10-27 08:00,2008-10-26 17:00,,2008-10-02 08:00,2008-10-01 17:00,,,2008-08-13 08:00,2008-08-21 17:00,,,,,PT_Normal,,,,,G8gloungu0OqDGXndnkQKA,,,,N,8314,0
951,82850,829,12257,912,1,100,N,N,N,CP_Drtn,TT_Task,DT_FixedDUR2,RV_OK,TK_Complete,711GL54150,Water meter cabinet pipe works,2296,840,0,0,340,0,340,120,,,0,,2008-09-10 08:00,2008-09-27 17:00,2009-02-02 08:00,2009-02-01 17:00,,2008-10-02 08:00,2008-10-01 17:00,,,2008-09-10 08:00,2008-09-27 17:00,,,,,PT_Normal,,,,,JMmya696uE+2nraKNNhQfg,,,,N,340,0
952,82851,829,12359,912,1,100,N,N,N,CP_Drtn,TT_Task,DT_FixedDUR2,RV_OK,TK_Complete,711GL54250,Bathtubs,2296,320,0,0,216.8,0,313.6,120,,96.8,0,,2008-08-12 08:00,2008-08-28 17:00,2008-11-18 08:00,2008-11-17 17:00,,2008-10-02 08:00,2008-10-01 17:00,,,2008-08-12 08:00,2008-08-28 17:00,,,,,PT_Normal,,,,,o/ZtApbmCku8hkygo5deKA,,,,N,216.8,96.8
953,82852,829,12359,912,1,100,N,N,N,CP_Drtn,TT_Task,DT_FixedDUR2,RV_OK,TK_Complete,711GL54300,Water heater,2296,168,0,0,310.4,0,310.4,64,,,0,,2008-08-18 08:00,2008-08-26 17:00,2008-10-27 08:00,2008-10-26 17:00,,2008-10-02 08:00,2008-10-01 17:00,,,2008-08-18 08:00,2008-08-26 17:00,,,,,PT_Normal,,,,,tXV5Gw/Q8E2DH1CYRqV5AQ,,,,N,310.4,0
954,82853,829,12359,912,1,100,N,N,N,CP_Drtn,TT_Task,DT_FixedDUR2,RV_OK,TK_Complete,711GL54350,Over head pipe assembly & vlave connections,2296,168,0,0,237,0,237,72,,,0,,2008-08-23 08:00,2008-09-01 17:00,2008-10-27 08:00,2008-10-26 17:00,,2008-10-02 08:00,2008-10-01 17:00,,,2008-08-23 08:00,2008-09-01 17:00,,,,,PT_Normal,,,,,otluTBB+LUucXroEaMPUxg,,,,N,237,0
955,82854,829,12257,912,1,0,N,N,N,CP_Drtn,TT_Task,DT_FixedDUR2,RV_OK,TK_NotStart,711GL54400,Sanitary fixures,2296,328,0,120,0,516,516,120,0,0,0,,,,2008-12-02 08:00,2008-12-18 17:00,,2008-10-15 08:00,2008-11-01 17:00,2008-10-15 08:00,2008-11-01 17:00,2008-10-15 08:00,2008-11-01 17:00,,,,,PT_Normal,,,,,vwdCSr+EP06PCrfbzbgnUA,,,,N,0,0
956,82855,829,12257,912,1,0,N,N,N,CP_Drtn,TT_Task,DT_FixedDUR2,RV_OK,TK_NotStart,711GL54450,Mirrors,2296,240,40,120,0,186,186,120,0,0,0,,,,2008-12-04 08:00,2008-12-21 17:00,,2008-10-30 08:00,2008-11-16 17:00,2008-10-30 08:00,2008-11-16 17:00,2008-10-30 08:00,2008-11-16 17:00,,,,,PT_Normal,,,,,SVkPkPkBCECJlyFhCQ65WQ,,,,N,0,0
957,82856,829,12359,912,1,100,N,N,N,CP_Drtn,TT_Task,DT_FixedDUR2,RV_OK,TK_Complete,711GL54500,Concealed Flushing Cistern,2296,320,0,0,186,0,252,120,,66,0,,2008-08-12 08:00,2008-08-28 17:00,2008-11-18 08:00,2008-11-17 17:00,,2008-10-02 08:00,2008-10-01 17:00,,,2008-08-12 08:00,2008-08-28 17:00,,,,,PT_Normal,,,,,oeNhIzpv2UyxAPDyBw9wxQ,,,,N,186,66
958,82857,829,12248,912,1,100,N,N,N,CP_Drtn,TT_Task,DT_FixedDUR2,RV_OK,TK_Complete,711GL56050,Chasing and installation of drainage pipes,2296,168,0,0,285,0,285,120,,,0,,2008-07-30 08:00,2008-08-17 17:00,2008-10-27 08:00,2008-10-26 17:00,,2008-10-02 08:00,2008-10-01 17:00,,,2008-07-30 08:00,2008-08-17 17:00,,,,,PT_Normal,,,,,hsOgB77ZnUW3PeMzk7eC9A,,,,N,285,0
959,82858,829,12248,912,1,100,N,N,N,CP_Drtn,TT_Task,DT_FixedDUR2,RV_OK,TK_Complete,711GL56100,Drainage riser pipes,2296,168,0,0,284,0,284,64,,,0,,2008-07-27 08:00,2008-08-05 17:00,2008-10-27 08:00,2008-10-26 17:00,,2008-10-02 08:00,2008-10-01 17:00,,,2008-07-27 08:00,2008-08-05 17:00,,,,,PT_Normal,,,,,/nDy6YesekaTiI/bLdNEbw,,,,N,284,0
960,82859,829,12338,912,1,100,N,N,N,CP_Drtn,TT_Task,DT_FixedDUR2,RV_OK,TK_Complete,711GL56150,Over head drainage pipe works,2296,168,0,0,257.6,0,257.6,64,,,0,,2008-08-30 08:00,2008-09-07 17:00,2008-10-27 08:00,2008-10-26 17:00,,2008-10-02 08:00,2008-10-01 17:00,,,2008-08-30 08:00,2008-09-07 17:00,,,,,PT_Normal,,,,,o78q+WV/RUyCkGS101tOeQ,,,,N,257.6,0
961,82860,829,12233,912,1,100,N,N,N,CP_Drtn,TT_Task,DT_FixedDUR2,RV_OK,TK_Complete,711GL58050,Fire fighting pipe works,2296,168,0,0,292,0,292,72,,,0,,2008-08-06 08:00,2008-08-16 17:00,2008-10-27 08:00,2008-10-26 17:00,,2008-10-02 08:00,2008-10-01 17:00,,,2008-08-06 08:00,2008-08-16 17:00,,,,,PT_Normal,,,,,jGr1Xq7O3ki2XUV5tNuPzA,,,,N,292,0
962,82861,829,12540,912,1,0,N,N,N,CP_Drtn,TT_Task,DT_FixedDUR2,RV_OK,TK_NotStart,711GL58200,Fire cabinet complete,2296,776,520,64,0,339,339,64,0,0,0,,,,2009-03-07 08:00,2009-03-15 17:00,,2008-11-13 08:00,2008-11-22 17:00,2008-11-13 08:00,2008-11-22 17:00,2008-11-13 08:00,2008-11-22 17:00,,,,,PT_Normal,,,,,yRbtZ24k4UuGoup5YfHMJw,,,,N,0,0
963,82862,829,12540,912,1,0,N,N,N,CP_Drtn,TT_Task,DT_FixedDUR2,RV_OK,TK_NotStart,711GL58250,Sprinkler heads,2296,792,488,120,0,450,450,120,0,0,0,,,,2009-02-09 08:00,2009-02-25 17:00,,2008-10-16 08:00,2008-11-02 17:00,2008-10-16 08:00,2008-11-02 17:00,2008-10-16 08:00,2008-11-02 17:00,,,,,PT_Normal,,,,,ZeGIVwXBi0eCDa6mNbUhTQ,,,,N,0,0
964,82863,829,12536,912,1,100,N,N,N,CP_Drtn,TT_Task,DT_FixedDUR2,RV_OK,TK_Complete,711GL60050,LPG piping,2296,648,0,0,292,0,292,72,,,0,,2008-08-30 08:00,2008-09-08 17:00,2009-01-05 08:00,2009-01-04 17:00,,2008-10-02 08:00,2008-10-01 17:00,,,2008-08-30 08:00,2008-09-08 17:00,,,,,PT_Normal,,,,,4+x4Nn5riUiu8NCkTotN0A,,,,N,292,0
965,82864,829,12323,912,1,100,N,N,N,CP_Drtn,TT_Task,DT_FixedDUR2,RV_OK,TK_Complete,711GL60100,Gas meter & leak detector,2296,896,0,0,248,0,248,72,,,0,,2008-09-09 08:00,2008-09-18 17:00,2009-02-10 08:00,2009-02-09 17:00,,2008-10-02 08:00,2008-10-01 17:00,,,2008-09-09 08:00,2008-09-18 17:00,,,,,PT_Normal,,,,,gHH1eTJ5ZEWZzscsvdaOaA,,,,N,248,0
966,82865,829,12528,912,1,100,N,N,N,CP_Drtn,TT_Task,DT_FixedDUR2,RV_OK,TK_Complete,711GL62050,BMS cabling,2296,168,0,0,486.4,0,486.4,64,,,0,,2008-09-08 08:00,2008-09-16 17:00,2008-10-27 08:00,2008-10-26 17:00,,2008-10-02 08:00,2008-10-01 17:00,,,2008-09-08 08:00,2008-09-16 17:00,,,,,PT_Normal,,,,,1FJSwzu26ECGP8TTct1CMQ,,,,N,486.4,0
967,82866,829,12098,912,1,0,N,N,N,CP_Drtn,TT_Task,DT_FixedDUR2,RV_OK,TK_NotStart,711GL62100,DGC & cable termination to equipments,2296,824,0,48,0,329.6,329.6,48,0,0,0,,,,2009-03-03 08:00,2009-03-09 17:00,,2008-11-03 08:00,2008-11-09 17:00,2008-11-03 08:00,2008-11-09 17:00,2008-11-03 08:00,2008-11-09 17:00,,,,,PT_Normal,,,,,d3/57/KoJkOx3uSTCqB7jw,,,,N,0,0
968,82867,829,12191,912,1,100,N,N,N,CP_Drtn,TT_Task,DT_FixedDUR2,RV_OK,TK_Complete,711GL66050,Chasing and installation of conduits,2296,168,0,0,2091.2,0,2091.2,120,,,0,,2008-07-28 08:00,2008-08-14 17:00,2008-10-27 08:00,2008-10-26 17:00,,2008-10-02 08:00,2008-10-01 17:00,,,2008-07-28 08:00,2008-08-14 17:00,,,,,PT_Normal,,,,,fUk5gAQSnUGlRk2Jxu4GDA,,,,N,2091.2,0
969,82868,829,12191,912,1,100,N,N,N,CP_Drtn,TT_Task,DT_FixedDUR2,RV_OK,TK_Complete,711GL66100,Cable trays & trunking,2296,168,0,0,1528,0,1528,120,,,0,,2008-08-27 08:00,2008-09-13 17:00,2008-10-27 08:00,2008-10-26 17:00,,2008-10-02 08:00,2008-10-01 17:00,,,2008-08-27 08:00,2008-09-13 17:00,,,,,PT_Normal,,,,,a29AeZa3aUmjsBj5QsPCpw,,,,N,1528,0
970,82869,829,12279,912,1,100,N,N,N,CP_Drtn,TT_Task,DT_FixedDUR2,RV_OK,TK_Complete,711GL68050,Single core wiring,2296,168,0,0,1339.2,0,1339.2,72,,,0,,2008-07-30 08:00,2008-08-10 17:00,2008-10-27 08:00,2008-10-26 17:00,,2008-10-02 08:00,2008-10-01 17:00,,,2008-07-30 08:00,2008-08-10 17:00,,,,,PT_Normal,,,,,GhjZuiXnU0eI2vJ56VuOrw,,,,N,1339.2,0
971,82870,829,12163,912,1,100,N,N,N,CP_Drtn,TT_Task,DT_FixedDUR2,RV_OK,TK_Complete,711GL68100,DB enclosure,2296,168,0,0,486.4,0,486.4,64,,,0,,2008-08-06 08:00,2008-08-14 17:00,2008-10-27 08:00,2008-10-26 17:00,,2008-10-02 08:00,2008-10-01 17:00,,,2008-08-06 08:00,2008-08-14 17:00,,,,,PT_Normal,,,,,RJqguBtIlkW3pw5i57eXpg,,,,N,486.4,0
972,82871,829,12163,912,1,100,N,N,N,CP_Drtn,TT_Task,DT_FixedDUR2,RV_OK,TK_Complete,711GL68150,LV feeder cables,2296,240,0,0,2888,0,2888,72,,,0,,2008-09-14 08:00,2008-09-23 17:00,2008-11-06 08:00,2008-11-05 17:00,,2008-10-02 08:00,2008-10-01 17:00,,,2008-09-14 08:00,2008-09-23 17:00,,,,,PT_Normal,,,,,wS3WwF8GC0Cg6DwEdjHflg,,,,N,2888,0
973,82872,829,12460,912,1,0,N,N,N,CP_Drtn,TT_Task,DT_FixedDUR2,RV_OK,TK_NotStart,711GL68250,DB-breakers assembly,2296,640,616,72,0,635.2,635.2,72,0,0,0,,,,2009-01-18 08:00,2009-01-27 17:00,,2008-10-16 08:00,2008-10-26 17:00,2008-10-16 08:00,2008-10-26 17:00,2008-10-16 08:00,2008-10-26 17:00,,,,,PT_Normal,,,,,A7xcFV/GkEaylSZBJST4LQ,,,,N,0,0
974,82873,829,12460,912,1,0,N,N,N,CP_Drtn,TT_Task,DT_FixedDUR2,RV_OK,TK_NotStart,711GL68300,SMDB,2296,824,0,48,0,1456,1456,48,0,0,0,,,,2009-03-02 08:00,2009-03-08 17:00,,2008-11-02 08:00,2008-11-08 17:00,2008-11-02 08:00,2008-11-08 17:00,2008-11-02 08:00,2008-11-08 17:00,,,,,PT_Normal,,,,,1afkpQ4AfE2z23shmIGWdQ,,,,N,0,0
975,82874,829,12460,912,1,50,N,N,N,CP_Drtn,TT_Task,DT_FixedDUR2,RV_OK,TK_Active,711GL68350,Light Fittings,2296,632,608,176,668.8,668.8,1337.6,352,,,,,2008-09-07 08:00,,2009-01-03 08:00,2009-01-27 17:00,,2008-10-02 08:00,2008-10-27 17:00,2008-10-02 08:00,2008-10-27 17:00,2008-09-07 08:00,2008-10-27 17:00,,,,,PT_Normal,,,,,tvna/S41r0OX5IHGP7aFBQ,,,,N,668.8,0
976,82875,829,12460,912,1,0,N,N,N,CP_Drtn,TT_Task,DT_FixedDUR2,RV_OK,TK_NotStart,711GL68400,Lighting Control Panels,2296,808,520,64,0,275.2,275.2,64,0,0,0,,,,2009-03-05 08:00,2009-03-14 17:00,,2008-11-08 08:00,2008-11-16 17:00,2008-11-08 08:00,2008-11-16 17:00,2008-11-08 08:00,2008-11-16 17:00,,,,,PT_Normal,,,,,KbUeqq2tY0iN7cjRn6VSRQ,,,,N,0,0
977,82876,829,12460,912,1,0,N,N,N,CP_Drtn,TT_Task,DT_FixedDUR2,RV_OK,TK_NotStart,711GL68600,Switches & sockets,2296,640,616,72,0,494.4,494.4,72,0,0,0,,,,2009-01-18 08:00,2009-01-27 17:00,,2008-10-16 08:00,2008-10-26 17:00,2008-10-16 08:00,2008-10-26 17:00,2008-10-16 08:00,2008-10-26 17:00,,,,,PT_Normal,,,,,/DJYx1KADkSukt4SEPYSFw,,,,N,0,0
978,82877,829,12235,912,1,100,N,N,N,CP_Drtn,TT_Task,DT_FixedDUR2,RV_OK,TK_Complete,711GL70050,Central Battery cables,2296,168,0,0,345.6,0,345.6,64,,,0,,2008-08-06 08:00,2008-08-14 17:00,2008-10-27 08:00,2008-10-26 17:00,,2008-10-02 08:00,2008-10-01 17:00,,,2008-08-06 08:00,2008-08-14 17:00,,,,,PT_Normal,,,,,h38KpglsW0Ch3mPZ7tvsoA,,,,N,345.6,0
979,82878,829,12230,912,1,0,N,N,N,CP_Drtn,TT_Task,DT_FixedDUR2,RV_OK,TK_NotStart,711GL70150,Emergency & exit light fittings,2296,928,424,48,0,188.8,188.8,48,0,0,0,,,,2009-03-05 08:00,2009-03-11 17:00,,2008-10-21 08:00,2008-10-27 17:00,2008-10-21 08:00,2008-10-27 17:00,2008-10-21 08:00,2008-10-27 17:00,,,,,PT_Normal,,,,,89MdpnewUUqCX3XK+v0KTg,,,,N,0,0
980,82879,829,12128,912,1,100,N,N,N,CP_Drtn,TT_Task,DT_FixedDUR2,RV_OK,TK_Complete,711GL72050,CCTV system cables,2296,248,0,0,204.8,0,204.8,64,,,0,,2008-09-14 08:00,2008-09-22 17:00,2008-11-08 08:00,2008-11-06 17:00,,2008-10-02 08:00,2008-10-01 17:00,,,2008-09-14 08:00,2008-09-22 17:00,,,,,PT_Normal,,,,,QCgPdERKJk+cgTbeoSUNMw,,,,N,204.8,0
981,82880,829,12433,912,1,0,N,N,N,CP_Drtn,TT_Task,DT_FixedDUR2,RV_OK,TK_NotStart,711GL72100,CCTV system equipments,2296,800,264,48,0,118.4,118.4,48,0,0,0,,,,2009-03-08 08:00,2009-03-14 17:00,,2008-11-11 08:00,2008-11-17 17:00,2008-11-11 08:00,2008-11-17 17:00,2008-11-11 08:00,2008-11-17 17:00,,,,,PT_Normal,,,,,k+dr2q9y+EmY7K6AdFiuDA,,,,N,0,0
982,82881,829,12128,912,1,100,N,N,N,CP_Drtn,TT_Task,DT_FixedDUR2,RV_OK,TK_Complete,711GL72200,Intercom system cables,2296,168,0,0,697.6,0,697.6,64,,,0,,2008-09-14 08:00,2008-09-22 17:00,2008-10-27 08:00,2008-10-26 17:00,,2008-10-02 08:00,2008-10-01 17:00,,,2008-09-14 08:00,2008-09-22 17:00,,,,,PT_Normal,,,,,GPHOH4/rBk6WkIXAhSwQgQ,,,,N,697.6,0
983,82882,829,12433,912,1,0,N,N,N,CP_Drtn,TT_Task,DT_FixedDUR2,RV_OK,TK_NotStart,711GL72250,Intercom system equipments,2296,624,400,64,0,908.8,908.8,64,0,0,0,,,,2009-01-19 08:00,2009-01-27 17:00,,2008-10-20 08:00,2008-10-28 17:00,2008-10-20 08:00,2008-10-28 17:00,2008-10-20 08:00,2008-10-28 17:00,,,,,PT_Normal,,,,,VlG9w+eRW0SYf4HfC7JFYg,,,,N,0,0
984,82883,829,12220,912,1,100,N,N,N,CP_Drtn,TT_Task,DT_FixedDUR2,RV_OK,TK_Complete,711GL74050,Fire alarm cables,2296,168,0,0,380.8,0,380.8,64,,,0,,2008-08-06 08:00,2008-08-14 17:00,2008-10-27 08:00,2008-10-26 17:00,,2008-10-02 08:00,2008-10-01 17:00,,,2008-08-06 08:00,2008-08-14 17:00,,,,,PT_Normal,,,,,TzXR5MbXREWPV9dOaKx1tQ,,,,N,380.8,0
985,82884,829,12048,912,1,22.7,N,N,N,CP_Drtn,TT_Task,DT_FixedDUR2,RV_OK,TK_Active,711GL74100,Fire alarm fittings,2296,736,432,272,92,312.8,404.8,352,,,,,2008-09-21 08:00,,2009-01-18 08:00,2009-02-25 17:00,,2008-10-02 08:00,2008-11-10 17:00,2008-10-02 08:00,2008-11-10 17:00,2008-09-21 08:00,2008-11-10 17:00,,,,,PT_Normal,,,,,hRheCIfxsku6tt3pZhb1mA,,,,N,92,0
986,82885,829,12048,912,1,0,N,N,N,CP_Drtn,TT_Task,DT_FixedDUR2,RV_OK,TK_NotStart,711GL74150,Fire alarm control panels,2296,696,392,48,0,188.8,188.8,48,0,0,0,,,,2009-02-19 08:00,2009-02-25 17:00,,2008-11-10 08:00,2008-11-16 17:00,2008-11-10 08:00,2008-11-16 17:00,2008-11-10 08:00,2008-11-16 17:00,,,,,PT_Normal,,,,,dvYItHzWAEabJF8JpgIVqQ,,,,N,0,0
987,82886,829,12104,912,1,100,N,N,N,CP_Drtn,TT_Task,DT_FixedDUR2,RV_OK,TK_Complete,711GL76050,Structured cabling,2296,168,0,0,345.6,0,345.6,64,,,0,,2008-09-10 08:00,2008-09-18 17:00,2008-10-27 08:00,2008-10-26 17:00,,2008-10-02 08:00,2008-10-01 17:00,,,2008-09-10 08:00,2008-09-18 17:00,,,,,PT_Normal,,,,,AG5OxU1AjkKxZdyjhFu0Aw,,,,N,345.6,0
988,82887,829,12188,912,1,75,N,N,N,CP_Drtn,TT_Task,DT_FixedDUR2,RV_OK,TK_Active,711GL76100,Consolidated pionts,2296,168,0,16,470.4,156.8,627.2,64,,,,,2008-09-25 08:00,,2008-10-27 08:00,2008-10-28 17:00,,2008-10-02 08:00,2008-10-04 17:00,2008-10-02 08:00,2008-10-04 17:00,2008-09-25 08:00,2008-10-04 17:00,,,,,PT_Normal,,,,,V+dZ90JhwUCx+RIjgFdEsQ,,,,N,470.4,0
989,82888,829,10890,912,1,0,N,N,N,CP_Drtn,TT_Task,DT_FixedDUR2,RV_OK,TK_NotStart,711GR20050,Floor tiles for garbage rooms,2306,488,0,120,0,1254,1254,120,840,0,840,,,,2009-03-09 08:00,2009-03-25 17:00,,2008-12-28 08:00,2009-01-13 17:00,2008-12-28 08:00,2009-01-13 17:00,2008-12-28 08:00,2009-01-13 17:00,,,,,PT_Normal,,,,,ED7vp7yrLkqCgQqNGdPz3g,,,,N,0,0
990,82889,829,10890,912,1,0,N,N,N,CP_Drtn,TT_Task,DT_FixedDUR2,RV_OK,TK_NotStart,711GR20100,Wall tiles for garbage rooms,2306,488,0,120,0,744,744,120,416,0,416,,,,2009-02-02 08:00,2009-02-18 17:00,,2008-11-23 08:00,2008-12-09 17:00,2008-11-23 08:00,2008-12-09 17:00,2008-11-23 08:00,2008-12-09 17:00,,,,,PT_Normal,,,,,tT+oKx3sH0KGPiRwe8k5JQ,,,,N,0,0
991,82890,829,10992,912,1,0,N,N,N,CP_Drtn,TT_Task,DT_FixedDUR2,RV_OK,TK_NotStart,711GR22150,W/P for garbage room,2306,488,0,120,0,1783.6,1783.6,120,1512,0,1512,,,,2009-02-19 08:00,2009-03-08 17:00,,2008-12-10 08:00,2008-12-27 17:00,2008-12-10 08:00,2008-12-27 17:00,2008-12-10 08:00,2008-12-27 17:00,,,,,PT_Normal,,,,,7qHGIupRoEq1QIU0Xv3/Fw,,,,N,0,0
992,82891,829,10993,912,1,0,N,N,N,CP_Drtn,TT_Task,DT_FixedDUR2,RV_OK,TK_NotStart,711GR48050,Shaft plumpness & chipping,2306,488,0,48,0,256,256,48,8,0,8,,,,2008-12-22 08:00,2008-12-28 17:00,,2008-10-12 08:00,2008-10-18 17:00,2008-10-12 08:00,2008-10-18 17:00,2008-10-12 08:00,2008-10-18 17:00,,,,,PT_Normal,,,,,MbI6zVsjYUOpdjiaw/zE1Q,,,,N,0,0
993,82892,829,10993,912,1,0,N,N,N,CP_Drtn,TT_Task,DT_FixedDUR2,RV_OK,TK_NotStart,711GR48100,Brackets,2306,488,0,120,0,268,268,120,8,0,8,,,,2008-12-29 08:00,2009-01-14 17:00,,2008-10-19 08:00,2008-11-04 17:00,2008-10-19 08:00,2008-11-04 17:00,2008-10-19 08:00,2008-11-04 17:00,,,,,PT_Normal,,,,,sfnaXkfqREC59qv+RyPCaQ,,,,N,0,0
994,82893,829,10993,912,1,0,N,N,N,CP_Drtn,TT_Task,DT_FixedDUR2,RV_OK,TK_NotStart,711GR48150,Garbage chute installation,2306,488,0,120,0,528,528,120,8,0,8,,,,2009-01-10 08:00,2009-01-26 17:00,,2008-10-30 08:00,2008-11-16 17:00,2008-10-30 08:00,2008-11-16 17:00,2008-10-30 08:00,2008-11-16 17:00,,,,,PT_Normal,,,,,RTgUdm/ckk+b2OvgLkDvuA,,,,N,0,0
995,82894,829,10993,912,1,0,N,N,N,CP_Drtn,TT_Task,DT_FixedDUR2,RV_OK,TK_NotStart,711GR48250,Hooper doors & foot bedals,2306,488,0,120,0,264,264,120,24,0,24,,,,2009-03-21 08:00,2009-04-06 17:00,,2009-01-08 08:00,2009-01-25 17:00,2009-01-08 08:00,2009-01-25 17:00,2009-01-08 08:00,2009-01-25 17:00,,,,,PT_Normal,,,,,S1zBq8Afs0KwQz5Yd6dxcQ,,,,N,0,0
996,82895,829,10993,912,1,0,N,N,N,CP_Drtn,TT_Task,DT_FixedDUR2,RV_OK,TK_NotStart,711GR48350,Compactors & trolleys,2306,488,176,48,0,120,120,48,32,0,32,,,,2009-03-31 08:00,2009-04-06 17:00,,2009-01-19 08:00,2009-01-25 17:00,2009-01-19 08:00,2009-01-25 17:00,2009-01-19 08:00,2009-01-25 17:00,,,,,PT_Normal,,,,,OMiL1V6gV0+uLNCbFbm0YA,,,,N,0,0
997,82896,829,12845,912,1,0,N,N,N,CP_Drtn,TT_Task,DT_FixedDUR2,RV_OK,TK_NotStart,711GR58050,Fire fighting provisions,2296,488,0,120,0,450,450,120,0,0,0,,,,2009-01-10 08:00,2009-01-26 17:00,,2008-10-30 08:00,2008-11-16 17:00,2008-10-30 08:00,2008-11-16 17:00,2008-10-30 08:00,2008-11-16 17:00,,,,,PT_Normal,,,,,SabNcrfNXE6oqJA5KQsH4A,,,,N,0,0
998,82897,829,11244,912,1,100,N,N,N,CP_Drtn,TT_Task,DT_FixedDUR2,RV_OK,TK_Complete,711GU12050,Columns & walls GU to 1L - Part 1,2306,24,0,0,5587.77,0,5587.77,32,167999.52,167999.52,0,,2008-06-19 08:00,2008-06-23 17:00,2008-10-06 08:00,2008-10-05 17:00,,2008-10-02 08:00,2008-10-01 17:00,,,2008-06-19 08:00,2008-06-23 17:00,,,,,PT_Normal,,,,,GZq8o79kz0+DOZGB7KbpMg,,,,N,5587.77,167999.52
999,82898,829,11244,912,1,100,N,N,N,CP_Drtn,TT_Task,DT_FixedDUR2,RV_OK,TK_Complete,711GU12051,Columns & walls GU to 1L - Part 2,2306,24,0,0,5587.77,0,5587.77,32,167999.52,167999.52,0,,2008-06-29 08:00,2008-07-02 17:00,2008-10-06 08:00,2008-10-05 17:00,,2008-10-02 08:00,2008-10-01 17:00,,,2008-06-29 08:00,2008-07-02 17:00,,,,,PT_Normal,,,,,cw0GXIY3BkaoLWQ/5yvdFQ,,,,N,5587.77,167999.52
1000,82899,829,11244,912,1,100,N,N,N,CP_Drtn,TT_Task,DT_FixedDUR2,RV_OK,TK_Complete,711GU12052,Columns & walls GU to 1L - Middle Part,2306,24,0,0,9003.34,0,9003.34,32,271281.92,271281.92,0,,2008-06-28 08:00,2008-07-01 17:00,2008-10-06 08:00,2008-10-05 17:00,,2008-10-02 08:00,2008-10-01 17:00,,,2008-06-28 08:00,2008-07-01 17:00,,,,,PT_Normal,,,,,mj6RlFm7uk2/2P5FNiw/vw,,,,N,9003.34,271281.92
1001,82900,829,11244,912,1,100,N,N,N,CP_Drtn,TT_Task,DT_FixedDUR2,RV_OK,TK_Complete,711GU12200,Slab @ 1L level - Part 1,2306,24,0,0,4957,0,4957,56,181794.24,181794.24,0,,2008-06-29 08:00,2008-07-06 17:00,2008-10-06 08:00,2008-10-05 17:00,,2008-10-02 08:00,2008-10-01 17:00,,,2008-06-29 08:00,2008-07-06 17:00,,,,,PT_Normal,,,,,DHjYnxMOf0OOJrJcMJ94cA,,,,N,4957,181794.24
1002,82901,829,11244,912,1,100,N,N,N,CP_Drtn,TT_Task,DT_FixedDUR2,RV_OK,TK_Complete,711GU12201,Slab @ 1L level - Part 2,2306,24,0,0,4957,0,4957,56,181794.24,181794.24,0,,2008-07-07 08:00,2008-07-14 17:00,2008-10-06 08:00,2008-10-05 17:00,,2008-10-02 08:00,2008-10-01 17:00,,,2008-07-07 08:00,2008-07-14 17:00,,,,,PT_Normal,,,,,ABSCiU29V0ea9zNd8l6tEA,,,,N,4957,181794.24
1003,82902,829,11244,912,1,100,N,N,N,CP_Drtn,TT_Task,DT_FixedDUR2,RV_OK,TK_Complete,711GU12202,Slab @ 1L level - Middle Part,2306,24,0,0,5868.65,0,5868.65,56,215610,215610,0,,2008-07-06 08:00,2008-07-13 17:00,2008-10-06 08:00,2008-10-05 17:00,,2008-10-02 08:00,2008-10-01 17:00,,,2008-07-06 08:00,2008-07-13 17:00,,,,,PT_Normal,,,,,A28jyDocc0yTddAyjr/ALQ,,,,N,5868.65,215610
1004,82903,829,11244,912,1,100,N,N,N,CP_Drtn,TT_Task,DT_FixedDUR2,RV_OK,TK_Complete,711GU12250,Staircases GU to 1L,2306,208,0,0,999.88,0,999.88,32,18457.6,18457.6,0,,2008-07-15 08:00,2008-07-19 17:00,2008-11-02 08:00,2008-11-01 17:00,,2008-10-02 08:00,2008-10-01 17:00,,,2008-07-15 08:00,2008-07-19 17:00,,,,,PT_Normal,,,,,JoaGeKbcKkWwYkwYrgf/jg,,,,N,999.88,18457.6
1005,82904,829,10870,912,1,100,N,N,N,CP_Drtn,TT_Task,DT_FixedDUR2,RV_OK,TK_Complete,711GU14050,Block works,2306,168,0,0,30371,0,37573.5,120,23048,30250.5,0,,2008-08-02 08:00,2008-08-18 17:00,2008-10-27 08:00,2008-10-26 17:00,,2008-10-02 08:00,2008-10-01 17:00,,,2008-08-02 08:00,2008-08-18 17:00,,,,,PT_Normal,,,,,AQOLGau78kaOoawLMBUxdA,,,,N,30371,30250.5
1006,82905,829,10877,912,1,100,N,N,N,CP_Drtn,TT_Task,DT_FixedDUR2,RV_OK,TK_Complete,711GU16050,Plaster works,2306,168,0,0,25467.5,0,25467.5,120,19880,19880,0,,2008-08-19 08:00,2008-09-04 17:00,2008-10-27 08:00,2008-10-26 17:00,,2008-10-02 08:00,2008-10-01 17:00,,,2008-08-19 08:00,2008-09-04 17:00,,,,,PT_Normal,,,,,y3ntKGdg0kaYrSSiZ+3TsQ,,,,N,25467.5,19880
1007,82906,829,10877,912,1,100,N,N,N,CP_Drtn,TT_Task,DT_FixedDUR2,RV_OK,TK_Complete,711GU16051,Plaste works behind tiles,2306,208,0,0,8004.3,0,8004.3,120,6184,6184,0,,2008-08-25 08:00,2008-09-10 17:00,2008-11-02 08:00,2008-11-01 17:00,,2008-10-02 08:00,2008-10-01 17:00,,,2008-08-25 08:00,2008-09-10 17:00,,,,,PT_Normal,,,,,4BaN8uceHEGAw9+RJxBYxQ,,,,N,8004.3,6184
1008,82907,829,10874,912,1,100,N,N,N,CP_Drtn,TT_Task,DT_FixedDUR2,RV_OK,TK_Complete,711GU18050,Rendering works,2306,168,0,0,5683,0,5683,120,5000,5000,0,,2008-08-07 08:00,2008-08-24 17:00,2008-10-27 08:00,2008-10-26 17:00,,2008-10-02 08:00,2008-10-01 17:00,,,2008-08-07 08:00,2008-08-24 17:00,,,,,PT_Normal,,,,,UTYd3CBnF0aUzKDKu0uacg,,,,N,5683,5000
1009,82908,829,10874,912,1,100,N,N,N,CP_Drtn,TT_Task,DT_FixedDUR2,RV_OK,TK_Complete,711GU18100,Painting base coats,2306,168,0,0,27488,0,27488,120,24880,24880,0,,2008-08-27 08:00,2008-09-13 17:00,2008-10-27 08:00,2008-10-26 17:00,,2008-10-02 08:00,2008-10-01 17:00,,,2008-08-27 08:00,2008-09-13 17:00,,,,,PT_Normal,,,,,edpTIVui2UC3tnuXVvbGVQ,,,,N,27488,24880
1010,82909,829,10874,912,1,0,N,N,N,CP_Drtn,TT_Task,DT_FixedDUR2,RV_OK,TK_NotStart,711GU18150,Painting 1st top coat for apartments,2306,584,0,72,0,17300.2,17300.2,72,16408,0,16408,,,,2009-01-18 08:00,2009-01-27 17:00,,2008-10-25 08:00,2008-11-03 17:00,2008-10-25 08:00,2008-11-03 17:00,2008-10-25 08:00,2008-11-03 17:00,,,,,PT_Normal,,,,,ly/l2N7X70Se3Vsb0jyGPw,,,,N,0,0
1011,82910,829,10879,912,1,100,N,N,N,CP_Drtn,TT_Task,DT_FixedDUR2,RV_OK,TK_Complete,711GU20050,Floor tiles for apartments-dry area,2306,376,0,0,8036.4,0,8036.4,120,5864,5864,0,,2008-09-06 08:00,2008-09-22 17:00,2008-11-26 08:00,2008-11-25 17:00,,2008-10-02 08:00,2008-10-01 17:00,,,2008-09-06 08:00,2008-09-22 17:00,,,,,PT_Normal,,,,,zIrsM7U2o0yXrNtnCAPMaA,,,,N,8036.4,5864
1012,82911,829,10879,912,1,0,N,N,N,CP_Drtn,TT_Task,DT_FixedDUR2,RV_OK,TK_NotStart,711GU20070,Floor tiles for apartments-wet area,2306,208,0,120,0,3014.4,3014.4,120,2144,0,2144,,,,2008-11-09 08:00,2008-11-25 17:00,,2008-10-09 08:00,2008-10-26 17:00,2008-10-09 08:00,2008-10-26 17:00,2008-10-09 08:00,2008-10-26 17:00,,,,,PT_Normal,,,,,LU+vzWniWEKB7fAyXQzSig,,,,N,0,0
1013,82912,829,10879,912,1,0,N,N,N,CP_Drtn,TT_Task,DT_FixedDUR2,RV_OK,TK_NotStart,711GU20110,Wall tiles for apartments-wet area,2306,336,40,120,0,8103.24,8103.24,120,5322.16,0,5322.16,,,,2008-11-27 08:00,2008-12-14 17:00,,2008-10-09 08:00,2008-10-26 17:00,2008-10-09 08:00,2008-10-26 17:00,2008-10-09 08:00,2008-10-26 17:00,,,,,PT_Normal,,,,,ILOypKuGoEub4s8n48wghw,,,,N,0,0
1014,82913,829,10924,912,1,100,N,N,N,CP_Drtn,TT_Task,DT_FixedDUR2,RV_OK,TK_Complete,711GU22150,W/P for for apartments,2306,256,0,0,2900.4,0,2900.4,120,2528,2528,0,,2008-08-19 08:00,2008-09-04 17:00,2008-11-09 08:00,2008-11-08 17:00,,2008-10-02 08:00,2008-10-01 17:00,,,2008-08-19 08:00,2008-09-04 17:00,,,,,PT_Normal,,,,,xj2BR359f0agvwwDKHnaXA,,,,N,2900.4,2528
1015,82914,829,11229,912,1,100,N,N,N,CP_Drtn,TT_Task,DT_FixedDUR2,RV_OK,TK_Complete,711GU24050,Aluminium doors & windows,2306,376,0,0,1656,0,1656,120,384,384,0,,2008-09-14 08:00,2008-09-30 17:00,2008-11-26 08:00,2008-11-25 17:00,,2008-10-02 08:00,2008-10-01 17:00,,,2008-09-14 08:00,2008-09-30 17:00,,,,,PT_Normal,,,,,M5uLxK8WQEaDKgzRykZlKA,,,,N,1656,384
1016,82915,829,11229,912,1,0,N,N,N,CP_Drtn,TT_Task,DT_FixedDUR2,RV_OK,TK_NotStart,711GU24200,Balcony handrails,2306,168,128,120,0,2360,2360,120,1280,0,1280,,,,2008-11-26 08:00,2008-12-13 17:00,,2008-11-02 08:00,2008-11-18 17:00,2008-11-02 08:00,2008-11-18 17:00,2008-11-02 08:00,2008-11-18 17:00,,,,,PT_Normal,,,,,v07px0wSEkSAACas++QemQ,,,,N,0,0
1017,82916,829,11230,912,1,0,N,N,N,CP_Drtn,TT_Task,DT_FixedDUR2,RV_OK,TK_NotStart,711GU30050,Wooden doors,2306,296,0,120,0,960,960,120,240,0,240,,,,2008-11-30 08:00,2008-12-16 17:00,,2008-10-18 08:00,2008-11-03 17:00,2008-10-18 08:00,2008-11-03 17:00,2008-10-18 08:00,2008-11-03 17:00,,,,,PT_Normal,,,,,fMY9RnUG5kOTPpOHIKbkCw,,,,N,0,0
1018,82917,829,11240,912,1,0,N,N,N,CP_Drtn,TT_Task,DT_FixedDUR2,RV_OK,TK_NotStart,711GU32100,Vanity counters,2306,200,0,120,0,1968,1968,120,168,0,168,,,,2008-11-29 08:00,2008-12-15 17:00,,2008-10-30 08:00,2008-11-16 17:00,2008-10-30 08:00,2008-11-16 17:00,2008-10-30 08:00,2008-11-16 17:00,,,,,PT_Normal,,,,,Qy/wjyPvKkiT8vmoLCKBnw,,,,N,0,0
1019,82918,829,11240,912,1,0,N,N,N,CP_Drtn,TT_Task,DT_FixedDUR2,RV_OK,TK_NotStart,711GU32150,Wardrobes,2306,616,592,120,0,5832,5832,120,272,0,272,,,,2009-01-11 08:00,2009-01-27 17:00,,2008-10-13 08:00,2008-10-29 17:00,2008-10-13 08:00,2008-10-29 17:00,2008-10-13 08:00,2008-10-29 17:00,,,,,PT_Normal,,,,,BD17fi58AUO0TOiVx9Uq/A,,,,N,0,0
1020,82919,829,11232,912,1,6.7,N,N,N,CP_Drtn,TT_Task,DT_FixedDUR2,RV_OK,TK_Active,711GU34050,False ceiling works for apartments-dry area,2306,400,0,112,98.98,1386.14,1485.12,120,910.08,60.64,849.44,,2008-10-01 08:00,,2008-11-30 08:00,2008-12-15 17:00,,2008-10-02 08:00,2008-10-18 17:00,2008-10-02 08:00,2008-10-18 17:00,2008-10-01 08:00,2008-10-18 17:00,,,,,PT_Normal,,,,,JR+VPzMv/UGbmWBSDAHCwA,,,,N,98.98,60.64
1021,82920,829,11232,912,1,6.7,N,N,N,CP_Drtn,TT_Task,DT_FixedDUR2,RV_OK,TK_Active,711GU34070,False ceiling works for apartments-wet area,2306,208,0,112,43.4,607.48,650.88,120,353.92,23.6,330.32,,2008-10-01 08:00,,2008-11-02 08:00,2008-11-17 17:00,,2008-10-02 08:00,2008-10-18 17:00,2008-10-02 08:00,2008-10-18 17:00,2008-10-01 08:00,2008-10-18 17:00,,,,,PT_Normal,,,,,H/2eB3NTmECBZFWLyBGwAg,,,,N,43.4,23.6
1022,82921,829,11233,912,1,0,N,N,N,CP_Drtn,TT_Task,DT_FixedDUR2,RV_OK,TK_NotStart,711GU36050,Stone finishing top,2306,296,160,64,0,316,316,64,144,0,144,,,,2008-12-14 08:00,2008-12-22 17:00,,2008-11-01 08:00,2008-11-09 17:00,2008-11-01 08:00,2008-11-09 17:00,2008-11-01 08:00,2008-11-09 17:00,,,,,PT_Normal,,,,,wjJQKneKmEqT2oyXfvTnuA,,,,N,0,0
1023,82922,829,11233,912,1,0,N,N,N,CP_Drtn,TT_Task,DT_FixedDUR2,RV_OK,TK_NotStart,711GU36100,Thresholds,2306,288,192,64,0,580,580,64,344,0,344,,,,2008-12-15 08:00,2008-12-23 17:00,,2008-11-03 08:00,2008-11-11 17:00,2008-11-03 08:00,2008-11-11 17:00,2008-11-03 08:00,2008-11-11 17:00,,,,,PT_Normal,,,,,MVXCeeMdsk6nwcP7eeiefA,,,,N,0,0
1024,82923,829,10869,912,1,100,N,N,N,CP_Drtn,TT_Task,DT_FixedDUR2,RV_OK,TK_Complete,711GU44050,Sub-frames,2306,168,0,0,600,0,600,120,240,240,0,,2008-08-11 08:00,2008-08-27 17:00,2008-10-27 08:00,2008-10-26 17:00,,2008-10-02 08:00,2008-10-01 17:00,,,2008-08-11 08:00,2008-08-27 17:00,,,,,PT_Normal,,,,,UD0xCltrr0ekPijJunLPbg,,,,N,600,240
1025,82924,829,12176,912,1,100,N,N,N,CP_Drtn,TT_Task,DT_FixedDUR2,RV_OK,TK_Complete,711GU50100,MEP skeleton embedded provisions,2296,24,0,0,512,0,512,72,,,0,,2008-06-19 08:00,2008-06-29 17:00,2008-10-06 08:00,2008-10-05 17:00,,2008-10-02 08:00,2008-10-01 17:00,,,2008-06-19 08:00,2008-06-29 17:00,,,,,PT_Normal,,,,,q1/FbFZoP0GVQDEYzl83cw,,,,N,512,0
1026,82925,829,12269,912,1,100,N,N,N,CP_Drtn,TT_Task,DT_FixedDUR2,RV_OK,TK_Complete,711GU52050,A/C duct works,2296,208,0,0,831,0,831,160,,,0,,2008-08-13 08:00,2008-09-04 17:00,2008-11-02 08:00,2008-11-01 17:00,,2008-10-02 08:00,2008-10-01 17:00,,,2008-08-13 08:00,2008-09-04 17:00,,,,,PT_Normal,,,,,ilN1PvZqfE2ub/4KVxfsvA,,,,N,831,0
1027,82926,829,12269,912,1,100,N,N,N,CP_Drtn,TT_Task,DT_FixedDUR2,RV_OK,TK_Complete,711GU52100,Chilled water pipe works,2296,208,0,0,787,0,787,72,,,0,,2008-08-26 08:00,2008-09-04 17:00,2008-11-02 08:00,2008-11-01 17:00,,2008-10-02 08:00,2008-10-01 17:00,,,2008-08-26 08:00,2008-09-04 17:00,,,,,PT_Normal,,,,,kq5kqid7hUGM6mhjH7ky7Q,,,,N,787,0
1028,82927,829,12089,912,1,100,N,N,N,CP_Drtn,TT_Task,DT_FixedDUR2,RV_OK,TK_Complete,711GU52150,FCU's hanging,2296,208,0,0,935.2,0,935.2,64,,,0,,2008-08-25 08:00,2008-09-02 17:00,2008-11-02 08:00,2008-11-01 17:00,,2008-10-02 08:00,2008-10-01 17:00,,,2008-08-25 08:00,2008-09-02 17:00,,,,,PT_Normal,,,,,q5FsPOq2RkCDRLSggNNQ0w,,,,N,935.2,0
1029,82928,829,12089,912,1,100,N,N,N,CP_Drtn,TT_Task,DT_FixedDUR2,RV_OK,TK_Complete,711GU52300,FCU's assembly & duct connections,2296,208,0,0,991.2,0,991.2,120,,,0,,2008-09-09 08:00,2008-09-25 17:00,2008-11-02 08:00,2008-11-01 17:00,,2008-10-02 08:00,2008-10-01 17:00,,,2008-09-09 08:00,2008-09-25 17:00,,,,,PT_Normal,,,,,zqOqeFOc2kmZ0+xJk20i3w,,,,N,991.2,0
1030,82929,829,12089,912,1,0,N,N,N,CP_Drtn,TT_Task,DT_FixedDUR2,RV_OK,TK_NotStart,711GU52350,Grills & diffusers,2296,632,528,64,0,856,856,64,0,0,0,,,,2009-01-19 08:00,2009-01-27 17:00,,2008-10-19 08:00,2008-10-27 17:00,2008-10-19 08:00,2008-10-27 17:00,2008-10-19 08:00,2008-10-27 17:00,,,,,PT_Normal,,,,,25l6sOR+QUOLzfu5IG/NWw,,,,N,0,0
1031,82930,829,12269,912,1,100,N,N,N,CP_Drtn,TT_Task,DT_FixedDUR2,RV_OK,TK_Complete,711GU52550,A/C duct risers,2296,208,0,0,1626,0,1626,64,,,0,,2008-08-31 08:00,2008-09-08 17:00,2008-11-02 08:00,2008-11-01 17:00,,2008-10-02 08:00,2008-10-01 17:00,,,2008-08-31 08:00,2008-09-08 17:00,,,,,PT_Normal,,,,,sCIJfnqxNEqJXOUyKq6ihw,,,,N,1626,0
1032,82931,829,12341,912,1,100,N,N,N,CP_Drtn,TT_Task,DT_FixedDUR2,RV_OK,TK_Complete,711GU54050,Chasing & Pex pipe works,2296,208,0,0,395,0,395,120,,,0,,2008-08-13 08:00,2008-08-30 17:00,2008-11-02 08:00,2008-11-01 17:00,,2008-10-02 08:00,2008-10-01 17:00,,,2008-08-13 08:00,2008-08-30 17:00,,,,,PT_Normal,,,,,cd+OA6aeQECrLrIsGJfPWw,,,,N,395,0
1033,82932,829,12345,912,1,100,N,N,N,CP_Drtn,TT_Task,DT_FixedDUR2,RV_OK,TK_Complete,711GU54250,Bathtubs,2296,376,0,0,216.8,0,313.6,120,,96.8,0,,2008-08-25 08:00,2008-09-10 17:00,2008-11-26 08:00,2008-11-25 17:00,,2008-10-02 08:00,2008-10-01 17:00,,,2008-08-25 08:00,2008-09-10 17:00,,,,,PT_Normal,,,,,q/Nn6n7sCES7/32nQkciAw,,,,N,216.8,96.8
1034,82933,829,12345,912,1,100,N,N,N,CP_Drtn,TT_Task,DT_FixedDUR2,RV_OK,TK_Complete,711GU54300,Water heater,2296,208,0,0,310.4,0,310.4,64,,,0,,2008-08-31 08:00,2008-09-08 17:00,2008-11-02 08:00,2008-11-01 17:00,,2008-10-02 08:00,2008-10-01 17:00,,,2008-08-31 08:00,2008-09-08 17:00,,,,,PT_Normal,,,,,7hHS+fh7uE2wtBKWyPJt9Q,,,,N,310.4,0
1035,82934,829,12345,912,1,100,N,N,N,CP_Drtn,TT_Task,DT_FixedDUR2,RV_OK,TK_Complete,711GU54350,Over head pipe assembly & vlave connections,2296,208,0,0,237,0,237,72,,,0,,2008-08-31 08:00,2008-09-09 17:00,2008-11-02 08:00,2008-11-01 17:00,,2008-10-02 08:00,2008-10-01 17:00,,,2008-08-31 08:00,2008-09-09 17:00,,,,,PT_Normal,,,,,M94mIYNc+kSvIWvH7PDTgw,,,,N,237,0
1036,82935,829,12543,912,1,0,N,N,N,CP_Drtn,TT_Task,DT_FixedDUR2,RV_OK,TK_NotStart,711GU54400,Sanitary fixures,2296,296,0,120,0,516,516,120,0,0,0,,,,2008-12-06 08:00,2008-12-22 17:00,,2008-10-23 08:00,2008-11-09 17:00,2008-10-23 08:00,2008-11-09 17:00,2008-10-23 08:00,2008-11-09 17:00,,,,,PT_Normal,,,,,dVSwghHZlkO0e36GFGK8oQ,,,,N,0,0
1037,82936,829,12543,912,1,0,N,N,N,CP_Drtn,TT_Task,DT_FixedDUR2,RV_OK,TK_NotStart,711GU54450,Mirrors,2296,200,144,120,0,186,186,120,0,0,0,,,,2008-12-04 08:00,2008-12-21 17:00,,2008-11-05 08:00,2008-11-22 17:00,2008-11-05 08:00,2008-11-22 17:00,2008-11-05 08:00,2008-11-22 17:00,,,,,PT_Normal,,,,,8JVS3phsxkS3QD3oPu0ZPw,,,,N,0,0
1038,82937,829,12345,912,1,100,N,N,N,CP_Drtn,TT_Task,DT_FixedDUR2,RV_OK,TK_Complete,711GU54500,Concealed Flushing Cistern,2296,376,0,0,186,0,252,120,,66,0,,2008-08-25 08:00,2008-09-10 17:00,2008-11-26 08:00,2008-11-25 17:00,,2008-10-02 08:00,2008-10-01 17:00,,,2008-08-25 08:00,2008-09-10 17:00,,,,,PT_Normal,,,,,lW8BiVTX/06U+XK3SFuTUQ,,,,N,186,66
1039,82938,829,12162,912,1,100,N,N,N,CP_Drtn,TT_Task,DT_FixedDUR2,RV_OK,TK_Complete,711GU56050,Chasing and installation of drainage pipes,2296,168,0,0,285,0,285,120,,,0,,2008-08-13 08:00,2008-08-30 17:00,2008-10-27 08:00,2008-10-26 17:00,,2008-10-02 08:00,2008-10-01 17:00,,,2008-08-13 08:00,2008-08-30 17:00,,,,,PT_Normal,,,,,F+yBkicKfU6JDKRJpkDQMQ,,,,N,285,0
1040,82939,829,12162,912,1,100,N,N,N,CP_Drtn,TT_Task,DT_FixedDUR2,RV_OK,TK_Complete,711GU56100,Drainage riser pipes,2296,168,0,0,284,0,284,64,,,0,,2008-08-10 08:00,2008-08-18 17:00,2008-10-27 08:00,2008-10-26 17:00,,2008-10-02 08:00,2008-10-01 17:00,,,2008-08-10 08:00,2008-08-18 17:00,,,,,PT_Normal,,,,,hCVCzweU30CpHUCeyLDMpw,,,,N,284,0
1041,82940,829,12226,912,1,100,N,N,N,CP_Drtn,TT_Task,DT_FixedDUR2,RV_OK,TK_Complete,711GU56150,Over head drainage pipe works,2296,208,0,0,257.6,0,257.6,64,,,0,,2008-09-22 08:00,2008-09-30 17:00,2008-11-02 08:00,2008-11-01 17:00,,2008-10-02 08:00,2008-10-01 17:00,,,2008-09-22 08:00,2008-09-30 17:00,,,,,PT_Normal,,,,,LFJc2CkfUkWkqxhryjCTPA,,,,N,257.6,0
1042,82941,829,12531,912,1,100,N,N,N,CP_Drtn,TT_Task,DT_FixedDUR2,RV_OK,TK_Complete,711GU58050,Fire fighting pipe works,2296,208,0,0,292,0,292,72,,,0,,2008-08-19 08:00,2008-08-28 17:00,2008-11-02 08:00,2008-11-01 17:00,,2008-10-02 08:00,2008-10-01 17:00,,,2008-08-19 08:00,2008-08-28 17:00,,,,,PT_Normal,,,,,sjBoKh8nNkidALs79UGAUQ,,,,N,292,0
1043,82942,829,12101,912,1,0,N,N,N,CP_Drtn,TT_Task,DT_FixedDUR2,RV_OK,TK_NotStart,711GU58250,Sprinkler heads,2296,632,528,64,0,394,394,64,0,0,0,,,,2009-01-19 08:00,2009-01-27 17:00,,2008-10-19 08:00,2008-10-27 17:00,2008-10-19 08:00,2008-10-27 17:00,2008-10-19 08:00,2008-10-27 17:00,,,,,PT_Normal,,,,,md/osyaS20WhjZFj3Qxa/Q,,,,N,0,0
1044,82943,829,12085,912,1,100,N,N,N,CP_Drtn,TT_Task,DT_FixedDUR2,RV_OK,TK_Complete,711GU66050,Chasing and installation of conduits,2296,168,0,0,1528,0,1528,120,,,0,,2008-08-11 08:00,2008-08-27 17:00,2008-10-27 08:00,2008-10-26 17:00,,2008-10-02 08:00,2008-10-01 17:00,,,2008-08-11 08:00,2008-08-27 17:00,,,,,PT_Normal,,,,,ucxk7AqboUqB5g8oghVZYA,,,,N,1528,0
1045,82944,829,12073,912,1,100,N,N,N,CP_Drtn,TT_Task,DT_FixedDUR2,RV_OK,TK_Complete,711GU68050,Single core wiring,2296,208,0,0,1339.2,0,1339.2,72,,,0,,2008-08-13 08:00,2008-08-23 17:00,2008-11-02 08:00,2008-11-01 17:00,,2008-10-02 08:00,2008-10-01 17:00,,,2008-08-13 08:00,2008-08-23 17:00,,,,,PT_Normal,,,,,cDdKuko4pkW0nW66pqfmFA,,,,N,1339.2,0
1046,82945,829,12475,912,1,0,N,N,N,CP_Drtn,TT_Task,DT_FixedDUR2,RV_OK,TK_NotStart,711GU68350,Light Fittings,2296,616,592,120,0,1035.2,1035.2,120,0,0,0,,,,2009-01-11 08:00,2009-01-27 17:00,,2008-10-13 08:00,2008-10-29 17:00,2008-10-13 08:00,2008-10-29 17:00,2008-10-13 08:00,2008-10-29 17:00,,,,,PT_Normal,,,,,qlsNOn0A3U+yQ7hYQffz9A,,,,N,0,0
1047,82946,829,12475,912,1,0,N,N,N,CP_Drtn,TT_Task,DT_FixedDUR2,RV_OK,TK_NotStart,711GU68600,Switches & sockets,2296,584,560,72,0,494.4,494.4,72,0,0,0,,,,2009-01-18 08:00,2009-01-27 17:00,,2008-10-25 08:00,2008-11-03 17:00,2008-10-25 08:00,2008-11-03 17:00,2008-10-25 08:00,2008-11-03 17:00,,,,,PT_Normal,,,,,LcwSxDxVbk6WzxZg1FtYOw,,,,N,0,0
1048,82947,829,12463,912,1,100,N,N,N,CP_Drtn,TT_Task,DT_FixedDUR2,RV_OK,TK_Complete,711GU74050,Fire alarm cables,2296,208,0,0,380.8,0,380.8,64,,,0,,2008-08-19 08:00,2008-08-27 17:00,2008-11-02 08:00,2008-11-01 17:00,,2008-10-02 08:00,2008-10-01 17:00,,,2008-08-19 08:00,2008-08-27 17:00,,,,,PT_Normal,,,,,DGspr/hD1k6WVnzkjd32gg,,,,N,380.8,0
1049,82948,829,12029,912,1,0,N,N,N,CP_Drtn,TT_Task,DT_FixedDUR2,RV_OK,TK_NotStart,711GU74100,Fire alarm fittings,2296,616,512,64,0,116.8,116.8,64,0,0,0,,,,2009-01-19 08:00,2009-01-27 17:00,,2008-10-21 08:00,2008-10-29 17:00,2008-10-21 08:00,2008-10-29 17:00,2008-10-21 08:00,2008-10-29 17:00,,,,,PT_Normal,,,,,9S0Fw4ZN/02pinmyEXqQow,,,,N,0,0
1050,82949,829,12035,912,1,100,N,N,N,CP_Drtn,TT_Task,DT_FixedDUR2,RV_OK,TK_Complete,711GU76050,Structured cabling,2296,168,0,0,345.6,0,345.6,64,,,0,,2008-09-16 08:00,2008-09-24 17:00,2008-10-27 08:00,2008-10-26 17:00,,2008-10-02 08:00,2008-10-01 17:00,,,2008-09-16 08:00,2008-09-24 17:00,,,,,PT_Normal,,,,,E8/8OFSuvkKNjemGPohJ7Q,,,,N,345.6,0
1051,82950,829,11104,912,1,46.7,N,N,N,CP_Drtn,TT_Task,DT_FixedDUR2,RV_OK,TK_Active,711PE46050,Jambs & headers,2306,528,0,64,436.78,499.22,936,120,16,7.44,8.56,,2008-09-24 08:00,,2008-12-18 08:00,2008-12-27 17:00,,2008-10-02 08:00,2008-10-11 17:00,2008-10-02 08:00,2008-10-11 17:00,2008-09-24 08:00,2008-10-11 17:00,,,,,PT_Normal,,,,,aBfSxnDd5kGFI/+Kbw4rMA,,,,N,436.78,7.44
1052,82951,829,11104,912,1,0,N,N,N,CP_Drtn,TT_Task,DT_FixedDUR2,RV_OK,TK_NotStart,711PE46100,Brackets & seperators,2306,528,0,120,0,536,536,120,16,0,16,,,,2008-12-28 08:00,2009-01-13 17:00,,2008-10-12 08:00,2008-10-28 17:00,2008-10-12 08:00,2008-10-28 17:00,2008-10-12 08:00,2008-10-28 17:00,,,,,PT_Normal,,,,,ZIGZXSLh+ESG4I758A+6rA,,,,N,0,0
1053,82952,829,11104,912,1,0,N,N,N,CP_Drtn,TT_Task,DT_FixedDUR2,RV_OK,TK_NotStart,711PE46150,Guide rails,2306,528,0,120,0,536,536,120,16,0,16,,,,2009-01-14 08:00,2009-01-31 17:00,,2008-10-29 08:00,2008-11-15 17:00,2008-10-29 08:00,2008-11-15 17:00,2008-10-29 08:00,2008-11-15 17:00,,,,,PT_Normal,,,,,cS+YjCANcEO389fcFt+66Q,,,,N,0,0
1054,82953,829,11104,912,1,0,N,N,N,CP_Drtn,TT_Task,DT_FixedDUR2,RV_OK,TK_NotStart,711PE46200,Machine room works,2306,528,0,120,0,536,536,120,16,0,16,,,,2009-01-26 08:00,2009-02-11 17:00,,2008-11-10 08:00,2008-11-26 17:00,2008-11-10 08:00,2008-11-26 17:00,2008-11-10 08:00,2008-11-26 17:00,,,,,PT_Normal,,,,,jKUuIslOukiK8oZ7cd2DRQ,,,,N,0,0
1055,82954,829,11104,912,1,0,N,N,N,CP_Drtn,TT_Task,DT_FixedDUR2,RV_OK,TK_NotStart,711PE46250,Cabin works,2306,528,0,120,0,472,472,120,0,0,0,,,,2009-02-07 08:00,2009-02-23 17:00,,2008-11-22 08:00,2008-12-08 17:00,2008-11-22 08:00,2008-12-08 17:00,2008-11-22 08:00,2008-12-08 17:00,,,,,PT_Normal,,,,,Xeq+LFBuKEuz1PJZpX9nhA,,,,N,0,0
1056,82955,829,11104,912,1,0,N,N,N,CP_Drtn,TT_Task,DT_FixedDUR2,RV_OK,TK_NotStart,711PE46300,"Ropping, hatch doors, hoistways & wirring",2306,528,40,120,0,616,616,120,16,0,16,,,,2009-02-18 08:00,2009-03-07 17:00,,2008-12-03 08:00,2008-12-20 17:00,2008-12-03 08:00,2008-12-20 17:00,2008-12-03 08:00,2008-12-20 17:00,,,,,PT_Normal,,,,,7UqLZ3xzrEehjbMjIZ+GLg,,,,N,0,0
1057,82956,829,11221,912,1,100,N,N,N,CP_Drtn,TT_Task,DT_FixedDUR2,RV_OK,TK_Complete,711RF12350,Roof Parapets,2306,216,0,0,8972.4,0,8972.4,32,99744,99744,0,,2008-09-20 08:00,2008-09-23 17:00,2008-11-03 08:00,2008-11-02 17:00,,2008-10-02 08:00,2008-10-01 17:00,,,2008-09-20 08:00,2008-09-23 17:00,,,,,PT_Normal,,,,,Ed2F6hd+D0GfEZ7Rw7VUkQ,,,,N,8972.4,99744
1058,82957,829,10983,912,1,0,N,N,N,CP_Drtn,TT_Task,DT_FixedDUR2,RV_OK,TK_NotStart,711RF22200,Roof light weight concreting & angle fillet,2306,208,0,72,0,17722,17722,72,14120,0,14120,,,,2008-11-12 08:00,2008-11-22 17:00,,2008-10-13 08:00,2008-10-22 17:00,2008-10-13 08:00,2008-10-22 17:00,2008-10-13 08:00,2008-10-22 17:00,,,,,PT_Normal,,,,,D6JSqim0BUyS4mfLs1PYBw,,,,N,0,0
1059,82958,829,10983,912,1,0,N,N,N,CP_Drtn,TT_Task,DT_FixedDUR2,RV_OK,TK_NotStart,711RF22250,Roof membrane,2306,208,0,72,0,17016,17016,72,14120,0,14120,,,,2008-11-23 08:00,2008-12-02 17:00,,2008-10-23 08:00,2008-11-02 17:00,2008-10-23 08:00,2008-11-02 17:00,2008-10-23 08:00,2008-11-02 17:00,,,,,PT_Normal,,,,,seH+n4TjjkaDR7Q7OKld/A,,,,N,0,0
1060,82959,829,10983,912,1,0,N,N,N,CP_Drtn,TT_Task,DT_FixedDUR2,RV_OK,TK_NotStart,711RF22300,Polystyrene insulation & seperation layers,2306,576,0,64,0,17008,17008,64,14120,0,14120,,,,2009-01-26 08:00,2009-02-03 17:00,,2008-11-03 08:00,2008-11-11 17:00,2008-11-03 08:00,2008-11-11 17:00,2008-11-03 08:00,2008-11-11 17:00,,,,,PT_Normal,,,,,FEYFGs8+JkSqksNUSqU1xg,,,,N,0,0
1061,82960,829,10983,912,1,0,N,N,N,CP_Drtn,TT_Task,DT_FixedDUR2,RV_OK,TK_NotStart,711RF22350,Concrete tiles,2306,576,0,80,0,16330,16330,80,13000,0,13000,,,,2009-02-07 08:00,2009-02-17 17:00,,2008-11-15 08:00,2008-11-25 17:00,2008-11-15 08:00,2008-11-25 17:00,2008-11-15 08:00,2008-11-25 17:00,,,,,PT_Normal,,,,,3zchLbpMLkuYoaLTvwJIDA,,,,N,0,0
1062,82961,829,10983,912,1,0,N,N,N,CP_Drtn,TT_Task,DT_FixedDUR2,RV_OK,TK_NotStart,711RF22400,Gravel fill,2306,856,544,48,0,1280,1280,48,1120,0,1120,,,,2009-03-31 08:00,2009-04-06 17:00,,2008-11-26 08:00,2008-12-02 17:00,2008-11-26 08:00,2008-12-02 17:00,2008-11-26 08:00,2008-12-02 17:00,,,,,PT_Normal,,,,,Wi1mcVQWo02QWgYLkdK2Eg,,,,N,0,0
1063,82962,829,10983,912,1,0,N,N,N,CP_Drtn,TT_Task,DT_FixedDUR2,RV_OK,TK_NotStart,711RF22450,Aluminium flashing,2306,840,528,64,0,3256.2,3256.2,64,2776,0,2776,,,,2009-03-29 08:00,2009-04-06 17:00,,2008-11-26 08:00,2008-12-04 17:00,2008-11-26 08:00,2008-12-04 17:00,2008-11-26 08:00,2008-12-04 17:00,,,,,PT_Normal,,,,,kWDKSaPQ3kKl/EwhrGpTLw,,,,N,0,0
1064,82963,829,11093,912,1,0,N,N,N,CP_Drtn,TT_Task,DT_FixedDUR2,RV_OK,TK_NotStart,711RF24300,Aluminium framing for roof towers,2306,840,528,64,0,768,768,64,64,0,64,,,,2009-03-29 08:00,2009-04-06 17:00,,2008-11-26 08:00,2008-12-04 17:00,2008-11-26 08:00,2008-12-04 17:00,2008-11-26 08:00,2008-12-04 17:00,,,,,PT_Normal,,,,,8uoxJcg1sUuJG1jhaZBTeA,,,,N,0,0
1065,82964,829,10876,912,1,0,N,N,N,CP_Drtn,TT_Task,DT_FixedDUR2,RV_OK,TK_NotStart,711RF44250,Roof upstands & equipement foundations,2306,208,0,64,0,3979.76,3979.76,64,608,0,608,,,,2008-11-03 08:00,2008-11-11 17:00,,2008-10-04 08:00,2008-10-12 17:00,2008-10-04 08:00,2008-10-12 17:00,2008-10-04 08:00,2008-10-12 17:00,,,,,PT_Normal,,,,,U74pWa+UQUCwyw1agt0LIg,,,,N,0,0
1066,82965,829,10876,912,1,87.5,N,N,N,CP_Drtn,TT_Task,DT_FixedDUR2,RV_OK,TK_Active,711RF44350,Roof tower concrete elements,2306,216,8,8,437.15,62.45,499.6,64,64,56,8,,2008-09-24 08:00,,2008-11-03 08:00,2008-11-03 17:00,,2008-10-02 08:00,2008-10-02 17:00,2008-10-02 08:00,2008-10-02 17:00,2008-09-24 08:00,2008-10-02 17:00,,,,,PT_Normal,,,,,cs1GXMQK70SNWnlMIny1Hg,,,,N,437.15,56
1067,82966,829,12820,912,1,0,N,N,N,CP_Drtn,TT_Task,DT_FixedDUR2,RV_OK,TK_NotStart,711RF52400,FAHU's & fans,2296,576,272,120,0,1836,1836,120,0,0,0,,,,2009-02-09 08:00,2009-02-25 17:00,,2008-11-17 08:00,2008-12-03 17:00,2008-11-17 08:00,2008-12-03 17:00,2008-11-17 08:00,2008-12-03 17:00,,,,,PT_Normal,,,,,cdaStWCqQ0Cu4bNlw6xCEg,,,,N,0,0
1068,82967,829,12819,912,1,0,N,N,N,CP_Drtn,TT_Task,DT_FixedDUR2,RV_OK,TK_NotStart,711RF68800,Lighting protection system,2296,344,56,64,0,328,328,64,0,0,0,,,,2008-12-07 08:00,2008-12-15 17:00,,2008-10-18 08:00,2008-10-26 17:00,2008-10-18 08:00,2008-10-26 17:00,2008-10-18 08:00,2008-10-26 17:00,,,,,PT_Normal,,,,,D6E/8+dpGEK8bGDbDVS5YQ,,,,N,0,0
1069,82968,829,10892,912,1,0,N,N,N,CP_Drtn,TT_Task,DT_FixedDUR2,RV_OK,TK_NotStart,711ST18150,Painting 1st top coat,2306,512,200,120,0,12972,12972,120,12240,0,12240,,,,2009-03-21 08:00,2009-04-06 17:00,,2009-01-05 08:00,2009-01-21 17:00,2009-01-05 08:00,2009-01-21 17:00,2009-01-05 08:00,2009-01-21 17:00,,,,,PT_Normal,,,,,VrgOrhTBvkGlMmOqXlUOSA,,,,N,0,0
1070,82969,829,11097,912,1,0,N,N,N,CP_Drtn,TT_Task,DT_FixedDUR2,RV_OK,TK_NotStart,711ST20050,Floor tiles for staircases,2306,512,0,120,0,1848,1848,120,1280,0,1280,,,,2009-02-02 08:00,2009-02-18 17:00,,2008-11-19 08:00,2008-12-06 17:00,2008-11-19 08:00,2008-12-06 17:00,2008-11-19 08:00,2008-12-06 17:00,,,,,PT_Normal,,,,,KWrOfauM90mDGYKJpeh0Yw,,,,N,0,0
1071,82970,829,11097,912,1,0,N,N,N,CP_Drtn,TT_Task,DT_FixedDUR2,RV_OK,TK_NotStart,711ST20150,Treads & risers,2306,512,0,120,0,4320,4320,120,2800,0,2800,,,,2009-01-10 08:00,2009-01-26 17:00,,2008-10-27 08:00,2008-11-12 17:00,2008-10-27 08:00,2008-11-12 17:00,2008-10-27 08:00,2008-11-12 17:00,,,,,PT_Normal,,,,,J4Sft3b6Z0SZSignWA05fQ,,,,N,0,0
1072,82971,829,11098,912,1,0,N,N,N,CP_Drtn,TT_Task,DT_FixedDUR2,RV_OK,TK_NotStart,711ST24350,Staircase handrail,2306,512,0,120,0,3578,3578,120,1976,0,1976,,,,2009-02-25 08:00,2009-03-14 17:00,,2008-12-13 08:00,2008-12-29 17:00,2008-12-13 08:00,2008-12-29 17:00,2008-12-13 08:00,2008-12-29 17:00,,,,,PT_Normal,,,,,b8N4xAhOPEur5qyufljFvA,,,,N,0,0
1073,82972,829,10799,912,1,0,N,N,N,CP_Drtn,TT_Task,DT_FixedDUR2,RV_OK,TK_NotStart,7121L00000,Pre-Snagging & Disnagging for duplexes,2296,40,0,120,0,420,420,120,0,0,0,,,,2009-01-17 08:00,2009-02-02 17:00,,2009-01-11 08:00,2009-01-27 17:00,2009-01-11 08:00,2009-01-27 17:00,2009-01-11 08:00,2009-01-27 17:00,,,,,PT_Normal,,,,,JCyak4/IhkWw7uYLZzInBw,,,,N,0,0
1074,82973,829,10799,912,1,0,N,N,N,CP_Drtn,TT_Task,DT_FixedDUR2,RV_OK,TK_NotStart,7121L00002,Pre-Snagging & Disnagging for corrid & Srv rooms,2296,176,0,64,0,214,214,64,0,0,0,,,,2009-02-25 08:00,2009-03-05 17:00,,2009-01-31 08:00,2009-02-08 17:00,2009-01-31 08:00,2009-02-08 17:00,2009-01-31 08:00,2009-02-08 17:00,,,,,PT_Normal,,,,,ptmBRWBjTEu9Oc+Ie8KPDQ,,,,N,0,0
1075,82974,829,11270,912,1,100,N,N,N,CP_Drtn,TT_Task,DT_FixedDUR2,RV_OK,TK_Complete,7121L12050,Columns & walls 1L to 1U - Part 1,2306,24,0,0,3408.26,0,3408.26,32,102126.4,102126.4,0,,2008-07-19 08:00,2008-07-22 17:00,2008-10-06 08:00,2008-10-05 17:00,,2008-10-02 08:00,2008-10-01 17:00,,,2008-07-19 08:00,2008-07-22 17:00,,,,,PT_Normal,,,,,LLfOoOJSHUesptV1PnhdSA,,,,N,3408.26,102126.4
1076,82975,829,11270,912,1,100,N,N,N,CP_Drtn,TT_Task,DT_FixedDUR2,RV_OK,TK_Complete,7121L12051,Columns & walls 1L to 1U - Part 2,2306,24,0,0,3408.26,0,3408.26,32,102126.4,102126.4,0,,2008-07-27 08:00,2008-07-30 17:00,2008-10-06 08:00,2008-10-05 17:00,,2008-10-02 08:00,2008-10-01 17:00,,,2008-07-27 08:00,2008-07-30 17:00,,,,,PT_Normal,,,,,izjNdjTY+USxETMC9WVuEQ,,,,N,3408.26,102126.4
1077,82976,829,11270,912,1,100,N,N,N,CP_Drtn,TT_Task,DT_FixedDUR2,RV_OK,TK_Complete,7121L12052,Columns & walls 1L to 1U - Middle Part,2306,24,0,0,7073.11,0,7073.11,32,212979.36,212979.36,0,,2008-07-26 08:00,2008-07-29 17:00,2008-10-06 08:00,2008-10-05 17:00,,2008-10-02 08:00,2008-10-01 17:00,,,2008-07-26 08:00,2008-07-29 17:00,,,,,PT_Normal,,,,,n+pmxAwHnkeiHxOI864joA,,,,N,7073.11,212979.36
1078,82977,829,11270,912,1,100,N,N,N,CP_Drtn,TT_Task,DT_FixedDUR2,RV_OK,TK_Complete,7121L12200,Slab @ 1U level - Part 1,2306,24,0,0,1938.1,0,1938.1,56,69809.52,69809.52,0,,2008-07-27 08:00,2008-08-04 17:00,2008-10-06 08:00,2008-10-05 17:00,,2008-10-02 08:00,2008-10-01 17:00,,,2008-07-27 08:00,2008-08-04 17:00,,,,,PT_Normal,,,,,0WMNoIIe5EqeqcNai5ieHA,,,,N,1938.1,69809.52
1079,82978,829,11270,912,1,100,N,N,N,CP_Drtn,TT_Task,DT_FixedDUR2,RV_OK,TK_Complete,7121L12201,Slab @ 1U level - Part 2,2306,24,0,0,1938.1,0,1938.1,56,69809.52,69809.52,0,,2008-08-05 08:00,2008-08-12 17:00,2008-10-06 08:00,2008-10-05 17:00,,2008-10-02 08:00,2008-10-01 17:00,,,2008-08-05 08:00,2008-08-12 17:00,,,,,PT_Normal,,,,,6uvsM8aToUqgg8K76MkyIg,,,,N,1938.1,69809.52
1080,82979,829,11270,912,1,100,N,N,N,CP_Drtn,TT_Task,DT_FixedDUR2,RV_OK,TK_Complete,7121L12202,Slab @ 1U level - Middle Part,2306,24,0,0,2781.47,0,2781.47,56,101094.8,101094.8,0,,2008-08-04 08:00,2008-08-11 17:00,2008-10-06 08:00,2008-10-05 17:00,,2008-10-02 08:00,2008-10-01 17:00,,,2008-08-04 08:00,2008-08-11 17:00,,,,,PT_Normal,,,,,xfdq6p/a7ESTQDhvRed6xg,,,,N,2781.47,101094.8
1081,82980,829,11270,912,1,100,N,N,N,CP_Drtn,TT_Task,DT_FixedDUR2,RV_OK,TK_Complete,7121L12250,Staircases 1L to 1U,2306,208,0,0,991.88,0,991.88,24,18457.6,18457.6,0,,2008-08-13 08:00,2008-08-16 17:00,2008-11-02 08:00,2008-11-01 17:00,,2008-10-02 08:00,2008-10-01 17:00,,,2008-08-13 08:00,2008-08-16 17:00,,,,,PT_Normal,,,,,oMeUY6SftEeI9BVXrT4WJg,,,,N,991.88,18457.6
1082,82981,829,11030,912,1,100,N,N,N,CP_Drtn,TT_Task,DT_FixedDUR2,RV_OK,TK_Complete,7121L14050,Block works,2306,40,0,0,24323,0,30085.5,120,18440,24202.5,0,,2008-09-06 08:00,2008-09-22 17:00,2008-10-08 08:00,2008-10-07 17:00,,2008-10-02 08:00,2008-10-01 17:00,,,2008-09-06 08:00,2008-09-22 17:00,,,,,PT_Normal,,,,,10tXSkCzmUqk4U2zojIrEw,,,,N,24323,24202.5
1083,82982,829,10922,912,1,53.3,N,N,N,CP_Drtn,TT_Task,DT_FixedDUR2,RV_OK,TK_Active,7121L16050,Plaster works,2306,40,0,56,13005.81,11380.09,24385.9,120,19032,10150.4,8881.6,,2008-09-23 08:00,,2008-10-08 08:00,2008-10-15 17:00,,2008-10-02 08:00,2008-10-09 17:00,2008-10-02 08:00,2008-10-09 17:00,2008-09-23 08:00,2008-10-09 17:00,,,,,PT_Normal,,,,,wcUwHuWYqkeVKSc98/PVgg,,,,N,13005.81,10150.4
1084,82983,829,10922,912,1,33.3,N,N,N,CP_Drtn,TT_Task,DT_FixedDUR2,RV_OK,TK_Active,7121L16051,Plaste works behind tiles,2306,216,176,80,3378.71,6757.49,10136.2,120,7856,2618.64,5237.36,,2008-09-27 08:00,,2008-11-03 08:00,2008-11-13 17:00,,2008-10-02 08:00,2008-10-13 17:00,2008-10-02 08:00,2008-10-13 17:00,2008-09-27 08:00,2008-10-13 17:00,,,,,PT_Normal,,,,,m2exg4VjWUKjpakkHwdkUQ,,,,N,3378.71,2618.64
1085,82984,829,10923,912,1,100,N,N,N,CP_Drtn,TT_Task,DT_FixedDUR2,RV_OK,TK_Complete,7121L18050,Rendering works,2306,40,0,0,5683,0,5683,120,5000,5000,0,,2008-09-14 08:00,2008-09-30 17:00,2008-10-08 08:00,2008-10-07 17:00,,2008-10-02 08:00,2008-10-01 17:00,,,2008-09-14 08:00,2008-09-30 17:00,,,,,PT_Normal,,,,,uFnFeXi680ycmhrCmeOXBA,,,,N,5683,5000
1086,82985,829,10923,912,1,6.7,N,N,N,CP_Drtn,TT_Task,DT_FixedDUR2,RV_OK,TK_Active,7121L18100,Painting base coats,2306,40,0,112,1770.4,24785.2,26555.6,120,24032,1602.16,22429.84,,2008-10-01 08:00,,2008-10-08 08:00,2008-10-23 17:00,,2008-10-02 08:00,2008-10-18 17:00,2008-10-02 08:00,2008-10-18 17:00,2008-10-01 08:00,2008-10-18 17:00,,,,,PT_Normal,,,,,iczvdRPpM0OV+vneRwCxeQ,,,,N,1770.4,1602.16
1087,82986,829,10923,912,1,0,N,N,N,CP_Drtn,TT_Task,DT_FixedDUR2,RV_OK,TK_NotStart,7121L18150,Painting 1st top coat for apartments,2306,184,0,72,0,17300.2,17300.2,72,16408,0,16408,,,,2008-12-29 08:00,2009-01-07 17:00,,2008-12-02 08:00,2008-12-11 17:00,2008-12-02 08:00,2008-12-11 17:00,2008-12-02 08:00,2008-12-11 17:00,,,,,PT_Normal,,,,,cU47jA5QdkujkKcebhKm2A,,,,N,0,0
1088,82987,829,10923,912,1,0,N,N,N,CP_Drtn,TT_Task,DT_FixedDUR2,RV_OK,TK_NotStart,7121L18153,Painting 1st top coat for corridors/lobbies,2306,352,0,48,0,14370,14370,48,13640,0,13640,,,,2009-02-04 08:00,2009-02-10 17:00,,2008-12-15 08:00,2008-12-21 17:00,2008-12-15 08:00,2008-12-21 17:00,2008-12-15 08:00,2008-12-21 17:00,,,,,PT_Normal,,,,,ZUADHhpYqEKjls12oubPBw,,,,N,0,0
1089,82988,829,10923,912,1,0,N,N,N,CP_Drtn,TT_Task,DT_FixedDUR2,RV_OK,TK_NotStart,7121L18155,Painting 1st top coat for service rooms,2306,352,0,48,0,6364.4,6364.4,48,6016,0,6016,,,,2009-02-02 08:00,2009-02-08 17:00,,2008-12-13 08:00,2008-12-18 17:00,2008-12-13 08:00,2008-12-18 17:00,2008-12-13 08:00,2008-12-18 17:00,,,,,PT_Normal,,,,,EI7gB1tp+U2FvEuCWw1fRw,,,,N,0,0
1090,82989,829,10799,912,1,0,N,N,N,CP_Drtn,TT_Task,DT_FixedDUR2,RV_OK,TK_NotStart,7121L18200,Painting final top coat,2306,232,72,32,0,25265.8,25265.8,32,24032,0,24032,,,,2009-03-18 08:00,2009-03-22 17:00,,2009-02-12 08:00,2009-02-16 17:00,2009-02-12 08:00,2009-02-16 17:00,2009-02-12 08:00,2009-02-16 17:00,,,,,PT_Normal,,,,,GEjEyMhqaUu4cIAGdALpFg,,,,N,0,0
1091,82990,829,11033,912,1,0,N,N,N,CP_Drtn,TT_Task,DT_FixedDUR2,RV_OK,TK_NotStart,7121L20050,Floor tiles for apartments-dry area,2306,232,8,120,0,8846.4,8846.4,120,6464,0,6464,,,,2008-11-13 08:00,2008-11-30 17:00,,2008-10-11 08:00,2008-10-27 17:00,2008-10-11 08:00,2008-10-27 17:00,2008-10-11 08:00,2008-10-27 17:00,,,,,PT_Normal,,,,,IgTZHtCY8UGkVlTw+2NfpA,,,,N,0,0
1092,82991,829,11033,912,1,0,N,N,N,CP_Drtn,TT_Task,DT_FixedDUR2,RV_OK,TK_NotStart,7121L20053,Floor tiles for corridors / lobbies,2306,176,0,48,0,4638,4638,48,3400,0,3400,,,,2008-12-25 08:00,2008-12-31 17:00,,2008-11-30 08:00,2008-12-06 17:00,2008-11-30 08:00,2008-12-06 17:00,2008-11-30 08:00,2008-12-06 17:00,,,,,PT_Normal,,,,,1Uqw/ZvoR0eh1OywFepQxA,,,,N,0,0
1093,82992,829,11033,912,1,0,N,N,N,CP_Drtn,TT_Task,DT_FixedDUR2,RV_OK,TK_NotStart,7121L20070,Floor tiles for apartments-wet area,2306,40,0,120,0,3684,3684,120,2640,0,2640,,,,2008-11-29 08:00,2008-12-15 17:00,,2008-11-23 08:00,2008-12-09 17:00,2008-11-23 08:00,2008-12-09 17:00,2008-11-23 08:00,2008-12-09 17:00,,,,,PT_Normal,,,,,/Qlf7DwRUUyvrpAOjNSjMw,,,,N,0,0
1094,82993,829,11033,912,1,0,N,N,N,CP_Drtn,TT_Task,DT_FixedDUR2,RV_OK,TK_NotStart,7121L20110,Wall tiles for apartments-wet area,2306,96,0,120,0,9159,9159,120,6026,0,6026,,,,2008-12-07 08:00,2008-12-23 17:00,,2008-11-23 08:00,2008-12-09 17:00,2008-11-23 08:00,2008-12-09 17:00,2008-11-23 08:00,2008-12-09 17:00,,,,,PT_Normal,,,,,qoaIf/6zi02XGainiiaHqQ,,,,N,0,0
1095,82994,829,10925,912,1,53.3,N,N,N,CP_Drtn,TT_Task,DT_FixedDUR2,RV_OK,TK_Active,7121L22150,W/P for for apartments,2306,336,0,56,2602.85,2277.55,4880.4,120,4328,2308.24,2019.76,,2008-09-23 08:00,,2008-11-20 08:00,2008-11-27 17:00,,2008-10-02 08:00,2008-10-09 17:00,2008-10-02 08:00,2008-10-09 17:00,2008-09-23 08:00,2008-10-09 17:00,,,,,PT_Normal,,,,,Xepmmfc4c0KsleARCVYpsA,,,,N,2602.85,2308.24
1096,82995,829,10926,912,1,0,N,N,N,CP_Drtn,TT_Task,DT_FixedDUR2,RV_OK,TK_NotStart,7121L24050,Aluminium doors & windows,2306,280,184,120,0,1976,1976,120,464,0,464,,,,2008-11-29 08:00,2008-12-15 17:00,,2008-10-19 08:00,2008-11-04 17:00,2008-10-19 08:00,2008-11-04 17:00,2008-10-19 08:00,2008-11-04 17:00,,,,,PT_Normal,,,,,SK45T1HxH02UMabCrm3Mjw,,,,N,0,0
1097,82996,829,10926,912,1,0,N,N,N,CP_Drtn,TT_Task,DT_FixedDUR2,RV_OK,TK_NotStart,7121L24200,Balcony handrails,2306,40,0,120,0,2710,2710,120,1480,0,1480,,,,2008-12-16 08:00,2009-01-01 17:00,,2008-12-10 08:00,2008-12-27 17:00,2008-12-10 08:00,2008-12-27 17:00,2008-12-10 08:00,2008-12-27 17:00,,,,,PT_Normal,,,,,9u9NgzexzkWinNQUuxw8fQ,,,,N,0,0
1098,82997,829,10926,912,1,0,N,N,N,CP_Drtn,TT_Task,DT_FixedDUR2,RV_OK,TK_NotStart,7121L24203,Lobby handrails,2306,472,128,64,0,946,946,64,504,0,504,,,,2009-02-14 08:00,2009-02-22 17:00,,2008-12-07 08:00,2008-12-15 17:00,2008-12-07 08:00,2008-12-15 17:00,2008-12-07 08:00,2008-12-15 17:00,,,,,PT_Normal,,,,,/wLp1ckbHEqTja3kGF3Gxg,,,,N,0,0
1099,82998,829,11036,912,1,0,N,N,N,CP_Drtn,TT_Task,DT_FixedDUR2,RV_OK,TK_NotStart,7121L26050,Steel doors,2306,352,0,64,0,384,384,64,64,0,64,,,,2009-01-24 08:00,2009-02-01 17:00,,2008-12-03 08:00,2008-12-11 17:00,2008-12-03 08:00,2008-12-11 17:00,2008-12-03 08:00,2008-12-11 17:00,,,,,PT_Normal,,,,,9/hcnfkKsEqDczXfXGulQg,,,,N,0,0
1100,82999,829,11037,912,1,0,N,N,N,CP_Drtn,TT_Task,DT_FixedDUR2,RV_OK,TK_NotStart,7121L30050,Wooden doors,2306,136,16,176,0,2192,2192,176,576,0,576,,,,2008-12-13 08:00,2009-01-06 17:00,,2008-11-23 08:00,2008-12-17 17:00,2008-11-23 08:00,2008-12-17 17:00,2008-11-23 08:00,2008-12-17 17:00,,,,,PT_Normal,,,,,C36yzAPaN0mLMZLPvrF3Gg,,,,N,0,0
1101,83000,829,10943,912,1,0,N,N,N,CP_Drtn,TT_Task,DT_FixedDUR2,RV_OK,TK_NotStart,7121L32050,Kitchen cabinets,2306,96,56,128,0,3104,3104,128,96,0,96,,,,2008-12-23 08:00,2009-01-10 17:00,,2008-12-09 08:00,2008-12-27 17:00,2008-12-09 08:00,2008-12-27 17:00,2008-12-09 08:00,2008-12-27 17:00,,,,,PT_Normal,,,,,PnjQZ1EYXEmDFhtFuvfiQw,,,,N,0,0
1102,83001,829,10943,912,1,0,N,N,N,CP_Drtn,TT_Task,DT_FixedDUR2,RV_OK,TK_NotStart,7121L32100,Vanity counters,2306,56,0,120,0,1880,1880,120,160,0,160,,,,2008-12-18 08:00,2009-01-04 17:00,,2008-12-10 08:00,2008-12-27 17:00,2008-12-10 08:00,2008-12-27 17:00,2008-12-10 08:00,2008-12-27 17:00,,,,,PT_Normal,,,,,GYwcPXEDyEqOc+PRFBx2Sw,,,,N,0,0
1103,83002,829,10943,912,1,0,N,N,N,CP_Drtn,TT_Task,DT_FixedDUR2,RV_OK,TK_NotStart,7121L32150,Wardrobes,2306,232,192,120,0,4152,4152,120,192,0,192,,,,2008-12-24 08:00,2009-01-10 17:00,,2008-11-20 08:00,2008-12-07 17:00,2008-11-20 08:00,2008-12-07 17:00,2008-11-20 08:00,2008-12-07 17:00,,,,,PT_Normal,,,,,yZ30XeO1FEq5rtqv9TAASw,,,,N,0,0
1104,83003,829,11148,912,1,0,N,N,N,CP_Drtn,TT_Task,DT_FixedDUR2,RV_OK,TK_NotStart,7121L34050,False ceiling works for apartments-dry area,2306,176,0,160,0,1506.16,1506.16,160,897.44,0,897.44,,,,2008-12-04 08:00,2008-12-27 17:00,,2008-11-09 08:00,2008-12-01 17:00,2008-11-09 08:00,2008-12-01 17:00,2008-11-09 08:00,2008-12-01 17:00,,,,,PT_Normal,,,,,pdNCqPF6NkCwjHOEVMPbzA,,,,N,0,0
1105,83004,829,11148,912,1,0,N,N,N,CP_Drtn,TT_Task,DT_FixedDUR2,RV_OK,TK_NotStart,7121L34053,False ceiling works for corridors/lobbies,2306,176,0,72,0,9876,9876,72,6536,0,6536,,,,2008-12-17 08:00,2008-12-27 17:00,,2008-11-22 08:00,2008-12-01 17:00,2008-11-22 08:00,2008-12-01 17:00,2008-11-22 08:00,2008-12-01 17:00,,,,,PT_Normal,,,,,mf5DIu/9Uk6uUFUhMI3wVw,,,,N,0,0
1106,83005,829,11148,912,1,0,N,N,N,CP_Drtn,TT_Task,DT_FixedDUR2,RV_OK,TK_NotStart,7121L34070,False ceiling works for apartments-wet area,2306,40,0,160,0,709.84,709.84,160,366.56,0,366.56,,,,2008-11-15 08:00,2008-12-07 17:00,,2008-11-09 08:00,2008-12-01 17:00,2008-11-09 08:00,2008-12-01 17:00,2008-11-09 08:00,2008-12-01 17:00,,,,,PT_Normal,,,,,KEv3ULdWDkK2NKQXHyKIIw,,,,N,0,0
1107,83006,829,11040,912,1,0,N,N,N,CP_Drtn,TT_Task,DT_FixedDUR2,RV_OK,TK_NotStart,7121L36050,Stone finishing top,2306,136,0,64,0,484,484,64,240,0,240,,,,2008-12-29 08:00,2009-01-06 17:00,,2008-12-09 08:00,2008-12-17 17:00,2008-12-09 08:00,2008-12-17 17:00,2008-12-09 08:00,2008-12-17 17:00,,,,,PT_Normal,,,,,8hf4+9DSmkWldsxyrltGdw,,,,N,0,0
1108,83007,829,11040,912,1,0,N,N,N,CP_Drtn,TT_Task,DT_FixedDUR2,RV_OK,TK_NotStart,7121L36100,Thresholds,2306,96,0,120,0,924,924,120,536,0,536,,,,2008-12-24 08:00,2009-01-10 17:00,,2008-12-10 08:00,2008-12-27 17:00,2008-12-10 08:00,2008-12-27 17:00,2008-12-10 08:00,2008-12-27 17:00,,,,,PT_Normal,,,,,zSFIeFH4WUW7tNVQoi6lCA,,,,N,0,0
1109,83008,829,10875,912,1,0,N,N,N,CP_Drtn,TT_Task,DT_FixedDUR2,RV_OK,TK_NotStart,7121L38100,Epoxy coating system,2306,352,176,48,0,816,816,48,640,0,640,,,,2009-02-16 08:00,2009-02-22 17:00,,2008-12-27 08:00,2009-01-01 17:00,2008-12-27 08:00,2009-01-01 17:00,2008-12-27 08:00,2009-01-01 17:00,,,,,PT_Normal,,,,,+kOGw8IrQ0ur9c6PFyzcCg,,,,N,0,0
1110,83009,829,11042,912,1,0,N,N,N,CP_Drtn,TT_Task,DT_FixedDUR2,RV_OK,TK_NotStart,7121L40050,Duplex apartment stairs,2306,224,0,120,0,3816,3816,120,96,0,96,,,,2008-12-01 08:00,2008-12-17 17:00,,2008-10-29 08:00,2008-11-15 17:00,2008-10-29 08:00,2008-11-15 17:00,2008-10-29 08:00,2008-11-15 17:00,,,,,PT_Normal,,,,,AKQoZ9qhPEKPHvKh8UhDrA,,,,N,0,0
1111,83010,829,11042,912,1,0,N,N,N,CP_Drtn,TT_Task,DT_FixedDUR2,RV_OK,TK_NotStart,7121L40100,Wooden steps for Duplex stairs,2306,224,0,120,0,936,936,120,96,0,96,,,,2008-12-13 08:00,2008-12-29 17:00,,2008-11-10 08:00,2008-11-26 17:00,2008-11-10 08:00,2008-11-26 17:00,2008-11-10 08:00,2008-11-26 17:00,,,,,PT_Normal,,,,,ej+xt/gzxUqxhbyQY68+IQ,,,,N,0,0
1112,83011,829,11042,912,1,0,N,N,N,CP_Drtn,TT_Task,DT_FixedDUR2,RV_OK,TK_NotStart,7121L40150,Duplex stair railings,2306,224,168,120,0,5120,5120,120,2000,0,2000,,,,2008-12-24 08:00,2009-01-10 17:00,,2008-11-22 08:00,2008-12-08 17:00,2008-11-22 08:00,2008-12-08 17:00,2008-11-22 08:00,2008-12-08 17:00,,,,,PT_Normal,,,,,7vJqPllscUikVTpH6xTMKw,,,,N,0,0
1113,83012,829,11043,912,1,0,N,N,N,CP_Drtn,TT_Task,DT_FixedDUR2,RV_OK,TK_NotStart,7121L42050,Signage works,2306,384,208,48,0,153.8,153.8,48,96,0,96,,,,2009-02-16 08:00,2009-02-22 17:00,,2008-12-22 08:00,2008-12-28 17:00,2008-12-22 08:00,2008-12-28 17:00,2008-12-22 08:00,2008-12-28 17:00,,,,,PT_Normal,,,,,eXa1sDoVH069/2C4mvHfkA,,,,N,0,0
1114,83013,829,10908,912,1,100,N,N,N,CP_Drtn,TT_Task,DT_FixedDUR2,RV_OK,TK_Complete,7121L44050,Sub-frames,2306,40,0,0,1272,0,1272,120,576,576,0,,2008-09-15 08:00,2008-10-01 17:00,2008-10-08 08:00,2008-10-07 17:00,,2008-10-02 08:00,2008-10-01 17:00,,,2008-09-15 08:00,2008-10-01 17:00,,,,,PT_Normal,,,,,Hw8w3/+f6E+LzoPWmBU3ng,,,,N,1272,576
1115,83014,829,12371,912,1,100,N,N,N,CP_Drtn,TT_Task,DT_FixedDUR2,RV_OK,TK_Complete,7121L50100,MEP skeleton embedded provisions,2296,24,0,0,512,0,512,72,,,0,,2008-07-19 08:00,2008-07-28 17:00,2008-10-06 08:00,2008-10-05 17:00,,2008-10-02 08:00,2008-10-01 17:00,,,2008-07-19 08:00,2008-07-28 17:00,,,,,PT_Normal,,,,,VfO3CAhp7kSBNARcBc+g/g,,,,N,512,0
1116,83015,829,12047,912,1,65,N,N,N,CP_Drtn,TT_Task,DT_FixedDUR2,RV_OK,TK_Active,7121L52050,A/C duct works,2296,184,88,56,540.16,290.84,831,160,,,,,2008-09-17 08:00,,2008-10-29 08:00,2008-11-05 17:00,,2008-10-02 08:00,2008-10-09 17:00,2008-10-02 08:00,2008-10-09 17:00,2008-09-17 08:00,2008-10-09 17:00,,,,,PT_Normal,,,,,VqRtr6Jw8EijG3VYCEE4hQ,,,,N,540.16,0
1117,83016,829,12047,912,1,22.2,N,N,N,CP_Drtn,TT_Task,DT_FixedDUR2,RV_OK,TK_Active,7121L52100,Chilled water pipe works,2296,120,24,56,174.88,612.12,787,72,,,,,2008-09-30 08:00,,2008-10-20 08:00,2008-10-27 17:00,,2008-10-02 08:00,2008-10-09 17:00,2008-10-02 08:00,2008-10-09 17:00,2008-09-30 08:00,2008-10-09 17:00,,,,,PT_Normal,,,,,tc7FTBA/xEaLULWkGSgenA,,,,N,174.88,0
1118,83017,829,12165,912,1,37.5,N,N,N,CP_Drtn,TT_Task,DT_FixedDUR2,RV_OK,TK_Active,7121L52150,FCU's hanging,2296,176,80,40,350.7,584.5,935.2,64,,,,,2008-09-29 08:00,,2008-10-28 08:00,2008-11-02 17:00,,2008-10-02 08:00,2008-10-07 17:00,2008-10-02 08:00,2008-10-07 17:00,2008-09-29 08:00,2008-10-07 17:00,,,,,PT_Normal,,,,,Eq69FSi2ukmB7rrxa/CGrw,,,,N,350.7,0
1119,83018,829,12165,912,1,0,N,N,N,CP_Drtn,TT_Task,DT_FixedDUR2,RV_OK,TK_NotStart,7121L52300,FCU's assembly & duct connections,2296,96,56,80,0,951.2,951.2,80,0,0,0,,,,2008-11-03 08:00,2008-11-13 17:00,,2008-10-20 08:00,2008-10-30 17:00,2008-10-20 08:00,2008-10-30 17:00,2008-10-20 08:00,2008-10-30 17:00,,,,,PT_Normal,,,,,tOaRdH0AKUuc8Zqzz0SQCw,,,,N,0,0
1120,83019,829,12165,912,1,0,N,N,N,CP_Drtn,TT_Task,DT_FixedDUR2,RV_OK,TK_NotStart,7121L52350,Grills & diffusers,2296,504,224,120,0,912,912,120,0,0,0,,,,2009-02-05 08:00,2009-02-22 17:00,,2008-11-24 08:00,2008-12-10 17:00,2008-11-24 08:00,2008-12-10 17:00,2008-11-24 08:00,2008-12-10 17:00,,,,,PT_Normal,,,,,zezH/NDkv06hczzEGuHEcA,,,,N,0,0
1121,83020,829,12047,912,1,0,N,N,N,CP_Drtn,TT_Task,DT_FixedDUR2,RV_OK,TK_NotStart,7121L52550,A/C duct risers,2296,96,0,64,0,1626,1626,64,0,0,0,,,,2008-10-19 08:00,2008-10-27 17:00,,2008-10-05 08:00,2008-10-13 17:00,2008-10-05 08:00,2008-10-13 17:00,2008-10-05 08:00,2008-10-13 17:00,,,,,PT_Normal,,,,,Qh48/lsKAECGD29Bg4ADxg,,,,N,0,0
1122,83021,829,12167,912,1,86.7,N,N,N,CP_Drtn,TT_Task,DT_FixedDUR2,RV_OK,TK_Active,7121L54050,Chasing & Pex pipe works,2296,208,0,16,342.34,52.66,395,120,,,,,2008-09-17 08:00,,2008-11-02 08:00,2008-11-03 17:00,,2008-10-02 08:00,2008-10-04 17:00,2008-10-02 08:00,2008-10-04 17:00,2008-09-17 08:00,2008-10-04 17:00,,,,,PT_Normal,,,,,S41Heap2f0K6/rHi/OI41A,,,,N,342.34,0
1123,83022,829,12167,912,1,37.5,N,N,N,CP_Drtn,TT_Task,DT_FixedDUR2,RV_OK,TK_Active,7121L54100,Over head distribution water pipe network,2296,184,0,40,3117.76,5196.24,8314,64,,,,,2008-09-29 08:00,,2008-10-29 08:00,2008-11-03 17:00,,2008-10-02 08:00,2008-10-07 17:00,2008-10-02 08:00,2008-10-07 17:00,2008-09-29 08:00,2008-10-07 17:00,,,,,PT_Normal,,,,,rHLWc7sinU+SHWLCGlKhvw,,,,N,3117.76,0
1124,83023,829,12169,912,1,0,N,N,N,CP_Drtn,TT_Task,DT_FixedDUR2,RV_OK,TK_NotStart,7121L54150,Water meter cabinet pipe works,2296,376,192,120,0,340,340,120,0,0,0,,,,2008-12-24 08:00,2009-01-10 17:00,,2008-10-30 08:00,2008-11-16 17:00,2008-10-30 08:00,2008-11-16 17:00,2008-10-30 08:00,2008-11-16 17:00,,,,,PT_Normal,,,,,lWjRiIQGRE2VI2LBFrt1uQ,,,,N,0,0
1125,83024,829,12168,912,1,30,N,N,N,CP_Drtn,TT_Task,DT_FixedDUR2,RV_OK,TK_Active,7121L54250,Bathtubs,2296,336,0,56,53.04,191.52,273.6,80,,29.04,,,2008-09-29 08:00,,2008-11-20 08:00,2008-11-27 17:00,,2008-10-02 08:00,2008-10-09 17:00,2008-10-02 08:00,2008-10-09 17:00,2008-09-29 08:00,2008-10-09 17:00,,,,,PT_Normal,,,,,bcQhriEMx0uno5xgdkSr9w,,,,N,53.04,29.04
1126,83025,829,12168,912,1,0,N,N,N,CP_Drtn,TT_Task,DT_FixedDUR2,RV_OK,TK_NotStart,7121L54300,Water heater,2296,176,24,64,0,310.4,310.4,64,0,0,0,,,,2008-10-30 08:00,2008-11-08 17:00,,2008-10-05 08:00,2008-10-13 17:00,2008-10-05 08:00,2008-10-13 17:00,2008-10-05 08:00,2008-10-13 17:00,,,,,PT_Normal,,,,,GjBkZOaVVUyQSFh9wy5kyg,,,,N,0,0
1127,83026,829,12168,912,1,0,N,N,N,CP_Drtn,TT_Task,DT_FixedDUR2,RV_OK,TK_NotStart,7121L54350,Over head pipe assembly & vlave connections,2296,184,144,72,0,237,237,72,0,0,0,,,,2008-11-04 08:00,2008-11-13 17:00,,2008-10-08 08:00,2008-10-18 17:00,2008-10-08 08:00,2008-10-18 17:00,2008-10-08 08:00,2008-10-18 17:00,,,,,PT_Normal,,,,,2JSdNioL0kK7VzSEXKqGMg,,,,N,0,0
1128,83027,829,12169,912,1,0,N,N,N,CP_Drtn,TT_Task,DT_FixedDUR2,RV_OK,TK_NotStart,7121L54400,Sanitary fixures,2296,136,0,120,0,516,516,120,0,0,0,,,,2008-12-21 08:00,2009-01-06 17:00,,2008-12-01 08:00,2008-12-17 17:00,2008-12-01 08:00,2008-12-17 17:00,2008-12-01 08:00,2008-12-17 17:00,,,,,PT_Normal,,,,,0HBsVV0XRk+uRxb6t3+1Kw,,,,N,0,0
1129,83028,829,12169,912,1,0,N,N,N,CP_Drtn,TT_Task,DT_FixedDUR2,RV_OK,TK_NotStart,7121L54450,Mirrors,2296,56,0,120,0,186,186,120,0,0,0,,,,2008-12-24 08:00,2009-01-10 17:00,,2008-12-16 08:00,2009-01-01 17:00,2008-12-16 08:00,2009-01-01 17:00,2008-12-16 08:00,2009-01-01 17:00,,,,,PT_Normal,,,,,D2c6PBsS7Ee/Wfc3jTctng,,,,N,0,0
1130,83029,829,12168,912,1,30,N,N,N,CP_Drtn,TT_Task,DT_FixedDUR2,RV_OK,TK_Active,7121L54500,Concealed Flushing Cistern,2296,336,296,56,43.8,148.4,212,80,,19.8,,,2008-09-29 08:00,,2008-11-20 08:00,2008-11-27 17:00,,2008-10-02 08:00,2008-10-09 17:00,2008-10-02 08:00,2008-10-09 17:00,2008-09-29 08:00,2008-10-09 17:00,,,,,PT_Normal,,,,,OeMC1avDakuL0yIHGgolHA,,,,N,43.8,19.8
1131,83030,829,12071,912,1,86.7,N,N,N,CP_Drtn,TT_Task,DT_FixedDUR2,RV_OK,TK_Active,7121L56050,Chasing and installation of drainage pipes,2296,200,0,16,247,38,285,120,,,,,2008-09-17 08:00,,2008-11-01 08:00,2008-11-02 17:00,,2008-10-02 08:00,2008-10-04 17:00,2008-10-02 08:00,2008-10-04 17:00,2008-09-17 08:00,2008-10-04 17:00,,,,,PT_Normal,,,,,dbSVMPfbek2m/mpL5DsYOg,,,,N,247,0
1132,83031,829,12071,912,1,100,N,N,N,CP_Drtn,TT_Task,DT_FixedDUR2,RV_OK,TK_Complete,7121L56100,Drainage riser pipes,2296,232,0,0,284,0,284,64,,,0,,2008-09-14 08:00,2008-09-22 17:00,2008-11-05 08:00,2008-11-04 17:00,,2008-10-02 08:00,2008-10-01 17:00,,,2008-09-14 08:00,2008-09-22 17:00,,,,,PT_Normal,,,,,IX/Cv6eEEk61aL2gb70V2Q,,,,N,284,0
1133,83032,829,12172,912,1,0,N,N,N,CP_Drtn,TT_Task,DT_FixedDUR2,RV_OK,TK_NotStart,7121L56150,Over head drainage pipe works,2296,160,120,64,0,257.6,257.6,64,0,0,0,,,,2008-11-05 08:00,2008-11-13 17:00,,2008-10-13 08:00,2008-10-21 17:00,2008-10-13 08:00,2008-10-21 17:00,2008-10-13 08:00,2008-10-21 17:00,,,,,PT_Normal,,,,,0IIzGimu8ECr4wAknA/sxA,,,,N,0,0
1134,83033,829,12174,912,1,88.9,N,N,N,CP_Drtn,TT_Task,DT_FixedDUR2,RV_OK,TK_Active,7121L58050,Fire fighting pipe works,2296,232,192,8,259.56,32.44,292,72,,,,,2008-09-23 08:00,,2008-11-05 08:00,2008-11-05 17:00,,2008-10-02 08:00,2008-10-02 17:00,2008-10-02 08:00,2008-10-02 17:00,2008-09-23 08:00,2008-10-02 17:00,,,,,PT_Normal,,,,,aItNwZcYPUKYrtbTTRBXNA,,,,N,259.56,0
1135,83034,829,12193,912,1,0,N,N,N,CP_Drtn,TT_Task,DT_FixedDUR2,RV_OK,TK_NotStart,7121L58200,Fire cabinet complete,2296,352,176,64,0,339,339,64,0,0,0,,,,2009-02-14 08:00,2009-02-22 17:00,,2008-12-24 08:00,2009-01-01 17:00,2008-12-24 08:00,2009-01-01 17:00,2008-12-24 08:00,2009-01-01 17:00,,,,,PT_Normal,,,,,tGHQhRIR1ECLm1i7K7nLwA,,,,N,0,0
1136,83035,829,12193,912,1,0,N,N,N,CP_Drtn,TT_Task,DT_FixedDUR2,RV_OK,TK_NotStart,7121L58250,Sprinkler heads,2296,448,168,120,0,450,450,120,0,0,0,,,,2009-02-05 08:00,2009-02-22 17:00,,2008-12-02 08:00,2008-12-18 17:00,2008-12-02 08:00,2008-12-18 17:00,2008-12-02 08:00,2008-12-18 17:00,,,,,PT_Normal,,,,,QXXpXo/hkUyL7Ve+TsEmzQ,,,,N,0,0
1137,83036,829,12031,912,1,0,N,N,N,CP_Drtn,TT_Task,DT_FixedDUR2,RV_OK,TK_NotStart,7121L60050,LPG piping,2296,392,0,72,0,292,292,72,0,0,0,,,,2008-12-13 08:00,2008-12-22 17:00,,2008-10-16 08:00,2008-10-26 17:00,2008-10-16 08:00,2008-10-26 17:00,2008-10-16 08:00,2008-10-26 17:00,,,,,PT_Normal,,,,,ZuptoGV7j0eqE+eGJNOrtw,,,,N,0,0
1138,83037,829,12287,912,1,0,N,N,N,CP_Drtn,TT_Task,DT_FixedDUR2,RV_OK,TK_NotStart,7121L60100,Gas meter & leak detector,2296,448,400,72,0,248,248,72,0,0,0,,,,2008-12-31 08:00,2009-01-10 17:00,,2008-10-27 08:00,2008-11-05 17:00,2008-10-27 08:00,2008-11-05 17:00,2008-10-27 08:00,2008-11-05 17:00,,,,,PT_Normal,,,,,N3zUJYEefEWGx/w8fF9vMA,,,,N,0,0
1139,83038,829,12180,912,1,0,N,N,N,CP_Drtn,TT_Task,DT_FixedDUR2,RV_OK,TK_NotStart,7121L62050,BMS cabling,2296,80,40,64,0,486.4,486.4,64,0,0,0,,,,2008-11-05 08:00,2008-11-13 17:00,,2008-10-25 08:00,2008-11-02 17:00,2008-10-25 08:00,2008-11-02 17:00,2008-10-25 08:00,2008-11-02 17:00,,,,,PT_Normal,,,,,4qolZOM/9E6tTm4EESSxCQ,,,,N,0,0
1140,83039,829,12190,912,1,0,N,N,N,CP_Drtn,TT_Task,DT_FixedDUR2,RV_OK,TK_NotStart,7121L62100,DGC & cable termination to equipments,2296,360,8,48,0,329.6,329.6,48,0,0,0,,,,2009-02-10 08:00,2009-02-16 17:00,,2008-12-20 08:00,2008-12-25 17:00,2008-12-20 08:00,2008-12-25 17:00,2008-12-20 08:00,2008-12-25 17:00,,,,,PT_Normal,,,,,CChIek6Z9UWihHHOJ1x8dw,,,,N,0,0
1141,83040,829,12034,912,1,100,N,N,N,CP_Drtn,TT_Task,DT_FixedDUR2,RV_OK,TK_Complete,7121L66050,Chasing and installation of conduits,2296,40,0,0,1809.6,0,1809.6,120,,,0,,2008-09-15 08:00,2008-10-01 17:00,2008-10-08 08:00,2008-10-07 17:00,,2008-10-02 08:00,2008-10-01 17:00,,,2008-09-15 08:00,2008-10-01 17:00,,,,,PT_Normal,,,,,mp5bvPEOL02pfqyACwMkqA,,,,N,1809.6,0
1142,83041,829,12034,912,1,0,N,N,N,CP_Drtn,TT_Task,DT_FixedDUR2,RV_OK,TK_NotStart,7121L66100,Cable trays & trunking,2296,40,0,120,0,1528,1528,120,0,0,0,,,,2008-10-19 08:00,2008-11-04 17:00,,2008-10-13 08:00,2008-10-29 17:00,2008-10-13 08:00,2008-10-29 17:00,2008-10-13 08:00,2008-10-29 17:00,,,,,PT_Normal,,,,,IL9nQBWmNkaBS4V5LtArnQ,,,,N,0,0
1143,83042,829,12021,912,1,100,N,N,N,CP_Drtn,TT_Task,DT_FixedDUR2,RV_OK,TK_Complete,7121L68050,Single core wiring,2296,248,0,0,1128,0,1128,72,,,0,,2008-09-17 08:00,2008-09-27 17:00,2008-11-08 08:00,2008-11-06 17:00,,2008-10-02 08:00,2008-10-01 17:00,,,2008-09-17 08:00,2008-09-27 17:00,,,,,PT_Normal,,,,,WfD/lhjlkk2DB0Jeh00emQ,,,,N,1128,0
1144,83043,829,12028,912,1,100,N,N,N,CP_Drtn,TT_Task,DT_FixedDUR2,RV_OK,TK_Complete,7121L68100,DB enclosure,2296,72,0,0,416,0,416,64,,,0,,2008-09-23 08:00,2008-10-01 17:00,2008-10-13 08:00,2008-10-12 17:00,,2008-10-02 08:00,2008-10-01 17:00,,,2008-09-23 08:00,2008-10-01 17:00,,,,,PT_Normal,,,,,ZuUOW0QvZUi1Gv6mNKrfiQ,,,,N,416,0
1145,83044,829,12028,912,1,0,N,N,N,CP_Drtn,TT_Task,DT_FixedDUR2,RV_OK,TK_NotStart,7121L68150,LV feeder cables,2296,112,40,72,0,2606.4,2606.4,72,0,0,0,,,,2008-11-16 08:00,2008-11-25 17:00,,2008-10-30 08:00,2008-11-09 17:00,2008-10-30 08:00,2008-11-09 17:00,2008-10-30 08:00,2008-11-09 17:00,,,,,PT_Normal,,,,,svlVYBKpNEithzIEnmvNPg,,,,N,0,0
1146,83045,829,12187,912,1,0,N,N,N,CP_Drtn,TT_Task,DT_FixedDUR2,RV_OK,TK_NotStart,7121L68250,DB-breakers assembly,2296,200,160,72,0,564.8,564.8,72,0,0,0,,,,2008-12-31 08:00,2009-01-10 17:00,,2008-12-02 08:00,2008-12-11 17:00,2008-12-02 08:00,2008-12-11 17:00,2008-12-02 08:00,2008-12-11 17:00,,,,,PT_Normal,,,,,gvMljX/fGkuT7bziJF5rvg,,,,N,0,0
1147,83046,829,12187,912,1,0,N,N,N,CP_Drtn,TT_Task,DT_FixedDUR2,RV_OK,TK_NotStart,7121L68300,SMDB,2296,352,0,48,0,1315.2,1315.2,48,0,0,0,,,,2009-02-09 08:00,2009-02-15 17:00,,2008-12-20 08:00,2008-12-25 17:00,2008-12-20 08:00,2008-12-25 17:00,2008-12-20 08:00,2008-12-25 17:00,,,,,PT_Normal,,,,,IW0hwYqXz06BnFtPrN1WAQ,,,,N,0,0
1148,83047,829,12187,912,1,0,N,N,N,CP_Drtn,TT_Task,DT_FixedDUR2,RV_OK,TK_NotStart,7121L68350,Light Fittings,2296,208,168,120,0,1105.6,1105.6,120,0,0,0,,,,2008-12-24 08:00,2009-01-10 17:00,,2008-11-24 08:00,2008-12-10 17:00,2008-11-24 08:00,2008-12-10 17:00,2008-11-24 08:00,2008-12-10 17:00,,,,,PT_Normal,,,,,PYM9xyLN60mpaBsPrOSzBg,,,,N,0,0
1149,83048,829,12187,912,1,0,N,N,N,CP_Drtn,TT_Task,DT_FixedDUR2,RV_OK,TK_NotStart,7121L68400,Lighting Control Panels,2296,368,192,64,0,275.2,275.2,64,0,0,0,,,,2009-02-14 08:00,2009-02-22 17:00,,2008-12-22 08:00,2008-12-30 17:00,2008-12-22 08:00,2008-12-30 17:00,2008-12-22 08:00,2008-12-30 17:00,,,,,PT_Normal,,,,,k0+1Svjrakuf/7GR2o1d6A,,,,N,0,0
1150,83049,829,12187,912,1,0,N,N,N,CP_Drtn,TT_Task,DT_FixedDUR2,RV_OK,TK_NotStart,7121L68600,Switches & sockets,2296,200,160,72,0,494.4,494.4,72,0,0,0,,,,2008-12-31 08:00,2009-01-10 17:00,,2008-12-02 08:00,2008-12-11 17:00,2008-12-02 08:00,2008-12-11 17:00,2008-12-02 08:00,2008-12-11 17:00,,,,,PT_Normal,,,,,MaA3qjTSsUKIg2m7UzJ3YQ,,,,N,0,0
1151,83050,829,12398,912,1,100,N,N,N,CP_Drtn,TT_Task,DT_FixedDUR2,RV_OK,TK_Complete,7121L70050,Central Battery cables,2296,216,0,0,345.6,0,345.6,64,,,0,,2008-09-23 08:00,2008-10-01 17:00,2008-11-03 08:00,2008-11-02 17:00,,2008-10-02 08:00,2008-10-01 17:00,,,2008-09-23 08:00,2008-10-01 17:00,,,,,PT_Normal,,,,,8BIuokLBD0yChiimcnJt5Q,,,,N,345.6,0
1152,83051,829,12113,912,1,0,N,N,N,CP_Drtn,TT_Task,DT_FixedDUR2,RV_OK,TK_NotStart,7121L70150,Emergency & exit light fittings,2296,488,184,48,0,188.8,188.8,48,0,0,0,,,,2009-02-16 08:00,2009-02-22 17:00,,2008-12-07 08:00,2008-12-13 17:00,2008-12-07 08:00,2008-12-13 17:00,2008-12-07 08:00,2008-12-13 17:00,,,,,PT_Normal,,,,,Phv8BU6OqEyz+i9ecWfycQ,,,,N,0,0
1153,83052,829,12092,912,1,0,N,N,N,CP_Drtn,TT_Task,DT_FixedDUR2,RV_OK,TK_NotStart,7121L72200,Intercom system cables,2296,64,24,64,0,592,592,64,0,0,0,,,,2008-11-05 08:00,2008-11-13 17:00,,2008-10-27 08:00,2008-11-04 17:00,2008-10-27 08:00,2008-11-04 17:00,2008-10-27 08:00,2008-11-04 17:00,,,,,PT_Normal,,,,,qHt48LYlsE2OaOiRln8fdQ,,,,N,0,0
1154,83053,829,12302,912,1,0,N,N,N,CP_Drtn,TT_Task,DT_FixedDUR2,RV_OK,TK_NotStart,7121L72250,Intercom system equipments,2296,184,144,64,0,697.6,697.6,64,0,0,0,,,,2009-01-01 08:00,2009-01-10 17:00,,2008-12-06 08:00,2008-12-14 17:00,2008-12-06 08:00,2008-12-14 17:00,2008-12-06 08:00,2008-12-14 17:00,,,,,PT_Normal,,,,,VP421AoZwU6QNeqBPwRHgA,,,,N,0,0
1155,83054,829,12236,912,1,100,N,N,N,CP_Drtn,TT_Task,DT_FixedDUR2,RV_OK,TK_Complete,7121L74050,Fire alarm cables,2296,216,0,0,380.8,0,380.8,64,,,0,,2008-09-23 08:00,2008-10-01 17:00,2008-11-03 08:00,2008-11-02 17:00,,2008-10-02 08:00,2008-10-01 17:00,,,2008-09-23 08:00,2008-10-01 17:00,,,,,PT_Normal,,,,,RhhNlZCOKUyZLjyNmnc3eQ,,,,N,380.8,0
1156,83055,829,12096,912,1,0,N,N,N,CP_Drtn,TT_Task,DT_FixedDUR2,RV_OK,TK_NotStart,7121L74100,Fire alarm fittings,2296,432,168,120,0,172.8,172.8,120,0,0,0,,,,2009-02-05 08:00,2009-02-22 17:00,,2008-12-04 08:00,2008-12-21 17:00,2008-12-04 08:00,2008-12-21 17:00,2008-12-04 08:00,2008-12-21 17:00,,,,,PT_Normal,,,,,rW1IDFGVV0eGpkDs7chZTg,,,,N,0,0
1157,83056,829,12050,912,1,0,N,N,N,CP_Drtn,TT_Task,DT_FixedDUR2,RV_OK,TK_NotStart,7121L76050,Structured cabling,2296,80,40,64,0,345.6,345.6,64,0,0,0,,,,2008-11-08 08:00,2008-11-16 17:00,,2008-10-27 08:00,2008-11-04 17:00,2008-10-27 08:00,2008-11-04 17:00,2008-10-27 08:00,2008-11-04 17:00,,,,,PT_Normal,,,,,zE1jRiU5Ske3Wm+oENsznA,,,,N,0,0
1158,83057,829,12140,912,1,0,N,N,N,CP_Drtn,TT_Task,DT_FixedDUR2,RV_OK,TK_NotStart,7121L76100,Consolidated pionts,2296,40,0,64,0,486.4,486.4,64,0,0,0,,,,2008-11-17 08:00,2008-11-25 17:00,,2008-11-11 08:00,2008-11-19 17:00,2008-11-11 08:00,2008-11-19 17:00,2008-11-11 08:00,2008-11-19 17:00,,,,,PT_Normal,,,,,n4oNqx6trkCH+gbA4TkPwQ,,,,N,0,0
1159,83058,829,11275,912,1,100,N,N,N,CP_Drtn,TT_Task,DT_FixedDUR2,RV_OK,TK_Complete,7121U12050,Columns & walls 1U to 2L - Part 1,2306,24,0,0,3724.34,0,3724.34,32,111688.16,111688.16,0,,2008-08-05 08:00,2008-08-09 17:00,2008-10-06 08:00,2008-10-05 17:00,,2008-10-02 08:00,2008-10-01 17:00,,,2008-08-05 08:00,2008-08-09 17:00,,,,,PT_Normal,,,,,hhs/VoyP6k2KdC0Fb9+AJg,,,,N,3724.34,111688.16
1160,83059,829,11275,912,1,100,N,N,N,CP_Drtn,TT_Task,DT_FixedDUR2,RV_OK,TK_Complete,7121U12051,Columns & walls 1U to 2L - Part 2,2306,24,0,0,3724.34,0,3724.34,32,111688.16,111688.16,0,,2008-08-13 08:00,2008-08-17 17:00,2008-10-06 08:00,2008-10-05 17:00,,2008-10-02 08:00,2008-10-01 17:00,,,2008-08-13 08:00,2008-08-17 17:00,,,,,PT_Normal,,,,,HVaL95RNP0OWpFWUeo/DlA,,,,N,3724.34,111688.16
1161,83060,829,11275,912,1,100,N,N,N,CP_Drtn,TT_Task,DT_FixedDUR2,RV_OK,TK_Complete,7121U12052,Columns & walls 1U to 2L - Middle Part,2306,24,0,0,8020.4,0,8020.4,32,241635.84,241635.84,0,,2008-08-12 08:00,2008-08-16 17:00,2008-10-06 08:00,2008-10-05 17:00,,2008-10-02 08:00,2008-10-01 17:00,,,2008-08-12 08:00,2008-08-16 17:00,,,,,PT_Normal,,,,,JZgahArWZk6Tsr9bxCajfQ,,,,N,8020.4,241635.84
1162,83061,829,11275,912,1,100,N,N,N,CP_Drtn,TT_Task,DT_FixedDUR2,RV_OK,TK_Complete,7121U12200,Slab @ 2L level - Part 1,2306,24,0,0,4376.76,0,4376.76,56,160277.68,160277.68,0,,2008-08-13 08:00,2008-08-20 17:00,2008-10-06 08:00,2008-10-05 17:00,,2008-10-02 08:00,2008-10-01 17:00,,,2008-08-13 08:00,2008-08-20 17:00,,,,,PT_Normal,,,,,k/ImvmboXkCBevTXCnsafQ,,,,N,4376.76,160277.68
1163,83062,829,11275,912,1,100,N,N,N,CP_Drtn,TT_Task,DT_FixedDUR2,RV_OK,TK_Complete,7121U12201,Slab @ 2L level - Part 2,2306,24,0,0,4376.76,0,4376.76,56,160277.68,160277.68,0,,2008-08-21 08:00,2008-08-28 17:00,2008-10-06 08:00,2008-10-05 17:00,,2008-10-02 08:00,2008-10-01 17:00,,,2008-08-21 08:00,2008-08-28 17:00,,,,,PT_Normal,,,,,dywwU5isL0Op/FDFjKnQIw,,,,N,4376.76,160277.68
1164,83063,829,11275,912,1,100,N,N,N,CP_Drtn,TT_Task,DT_FixedDUR2,RV_OK,TK_Complete,7121U12202,Slab @ 2L level - Middle Part,2306,24,0,0,6315.78,0,6315.78,56,232201.84,232201.84,0,,2008-08-19 08:00,2008-08-26 17:00,2008-10-06 08:00,2008-10-05 17:00,,2008-10-02 08:00,2008-10-01 17:00,,,2008-08-19 08:00,2008-08-26 17:00,,,,,PT_Normal,,,,,/CH6ElFiIkuzfvlbvbeHvg,,,,N,6315.78,232201.84
1165,83064,829,11275,912,1,100,N,N,N,CP_Drtn,TT_Task,DT_FixedDUR2,RV_OK,TK_Complete,7121U12250,Staircases 1U to 2L,2296,208,0,0,991.88,0,991.88,24,18457.6,18457.6,0,,2008-08-30 08:00,2008-09-01 17:00,2008-11-02 08:00,2008-11-01 17:00,,2008-10-02 08:00,2008-10-01 17:00,,,2008-08-30 08:00,2008-09-01 17:00,,,,,PT_Normal,,,,,O2GqMgMt8kS/BObpRQz4Zg,,,,N,991.88,18457.6
1166,83065,829,11046,912,1,100,N,N,N,CP_Drtn,TT_Task,DT_FixedDUR2,RV_OK,TK_Complete,7121U14050,Block works,2306,72,0,0,24323,0,30085.5,120,18440,24202.5,0,,2008-09-15 08:00,2008-10-01 17:00,2008-10-13 08:00,2008-10-12 17:00,,2008-10-02 08:00,2008-10-01 17:00,,,2008-09-15 08:00,2008-10-01 17:00,,,,,PT_Normal,,,,,ULpIF6TsrUWeMozejulLUA,,,,N,24323,24202.5
1167,83066,829,10938,912,1,13.3,N,N,N,CP_Drtn,TT_Task,DT_FixedDUR2,RV_OK,TK_Active,7121U16050,Plaster works,2306,72,0,104,3250.13,21125.67,24375.8,120,19024,2536.56,16487.44,,2008-09-30 08:00,,2008-10-13 08:00,2008-10-27 17:00,,2008-10-02 08:00,2008-10-16 17:00,2008-10-02 08:00,2008-10-16 17:00,2008-09-30 08:00,2008-10-16 17:00,,,,,PT_Normal,,,,,OAnYb1B2c0OVLH1fUJ5ZXQ,,,,N,3250.13,2536.56
1168,83067,829,10938,912,1,0,N,N,N,CP_Drtn,TT_Task,DT_FixedDUR2,RV_OK,TK_NotStart,7121U16051,Plaste works behind tiles,2306,208,128,120,0,5424,5424,120,4160,0,4160,,,,2008-11-05 08:00,2008-11-22 17:00,,2008-10-06 08:00,2008-10-22 17:00,2008-10-06 08:00,2008-10-22 17:00,2008-10-06 08:00,2008-10-22 17:00,,,,,PT_Normal,,,,,q9mptv5XqEWYLnRKJlEe8Q,,,,N,0,0
1169,83068,829,10980,912,1,53.3,N,N,N,CP_Drtn,TT_Task,DT_FixedDUR2,RV_OK,TK_Active,7121U18050,Rendering works,2306,96,24,56,3030.91,2652.09,5683,120,5000,2666.64,2333.36,,2008-09-23 08:00,,2008-10-16 08:00,2008-10-23 17:00,,2008-10-02 08:00,2008-10-09 17:00,2008-10-02 08:00,2008-10-09 17:00,2008-09-23 08:00,2008-10-09 17:00,,,,,PT_Normal,,,,,mXK6RtkHgU60FQimyuFqNw,,,,N,3030.91,2666.64
1170,83069,829,10980,912,1,0,N,N,N,CP_Drtn,TT_Task,DT_FixedDUR2,RV_OK,TK_NotStart,7121U18100,Paintin1 base coats,2306,72,0,120,0,26546.2,26546.2,120,24024,0,24024,,,,2008-10-19 08:00,2008-11-04 17:00,,2008-10-08 08:00,2008-10-25 17:00,2008-10-08 08:00,2008-10-25 17:00,2008-10-08 08:00,2008-10-25 17:00,,,,,PT_Normal,,,,,O6SoIxBEnEW3vwFnEkrmhQ,,,,N,0,0
1171,83070,829,10980,912,1,0,N,N,N,CP_Drtn,TT_Task,DT_FixedDUR2,RV_OK,TK_NotStart,7121U18150,Painting 1st top coat for apartments,2306,184,0,72,0,17300.2,17300.2,72,16408,0,16408,,,,2008-12-31 08:00,2009-01-10 17:00,,2008-12-04 08:00,2008-12-14 17:00,2008-12-04 08:00,2008-12-14 17:00,2008-12-04 08:00,2008-12-14 17:00,,,,,PT_Normal,,,,,m5LB6tCIUU6e3HIThj3xmg,,,,N,0,0
1172,83071,829,10940,912,1,0,N,N,N,CP_Drtn,TT_Task,DT_FixedDUR2,RV_OK,TK_NotStart,7121U20050,Floor tiles for apartments-dry area,2306,224,0,120,0,9570,9570,120,7000,0,7000,,,,2008-11-19 08:00,2008-12-06 17:00,,2008-10-18 08:00,2008-11-03 17:00,2008-10-18 08:00,2008-11-03 17:00,2008-10-18 08:00,2008-11-03 17:00,,,,,PT_Normal,,,,,hyF+JQNo50ST5qcc2+F0Uw,,,,N,0,0
1173,83072,829,10940,912,1,0,N,N,N,CP_Drtn,TT_Task,DT_FixedDUR2,RV_OK,TK_NotStart,7121U20070,Floor tiles for apartments-wet area,2306,80,0,120,0,3835.2,3835.2,120,2752,0,2752,,,,2008-12-07 08:00,2008-12-23 17:00,,2008-11-25 08:00,2008-12-11 17:00,2008-11-25 08:00,2008-12-11 17:00,2008-11-25 08:00,2008-12-11 17:00,,,,,PT_Normal,,,,,istQuiWyF0ynGAIZbK7LYA,,,,N,0,0
1174,83073,829,10940,912,1,0,N,N,N,CP_Drtn,TT_Task,DT_FixedDUR2,RV_OK,TK_NotStart,7121U20110,Wall tiles for apartments-wet area,2306,144,0,120,0,9066,9066,120,5964,0,5964,,,,2008-12-16 08:00,2009-01-01 17:00,,2008-11-25 08:00,2008-12-11 17:00,2008-11-25 08:00,2008-12-11 17:00,2008-11-25 08:00,2008-12-11 17:00,,,,,PT_Normal,,,,,VQKOVX1ePk6Xb9J8H1EqHQ,,,,N,0,0
1175,83074,829,10941,912,1,0,N,N,N,CP_Drtn,TT_Task,DT_FixedDUR2,RV_OK,TK_NotStart,7121U22150,W/P for for apartments,2306,176,0,120,0,2980,2980,120,2600,0,2600,,,,2008-10-28 08:00,2008-11-13 17:00,,2008-10-02 08:00,2008-10-19 17:00,2008-10-02 08:00,2008-10-19 17:00,2008-10-02 08:00,2008-10-19 17:00,,,,,PT_Normal,,,,,WwwzwsK5CkuWaUmZeAmTVw,,,,N,0,0
1176,83075,829,11051,912,1,0,N,N,N,CP_Drtn,TT_Task,DT_FixedDUR2,RV_OK,TK_NotStart,7121U24050,Aluminium doors & windows,2306,288,152,120,0,1208,1208,120,272,0,272,,,,2008-12-07 08:00,2008-12-23 17:00,,2008-10-26 08:00,2008-11-11 17:00,2008-10-26 08:00,2008-11-11 17:00,2008-10-26 08:00,2008-11-11 17:00,,,,,PT_Normal,,,,,/CF0NMfRkU+0z5PvOHww2g,,,,N,0,0
1177,83076,829,11051,912,1,0,N,N,N,CP_Drtn,TT_Task,DT_FixedDUR2,RV_OK,TK_NotStart,7121U24200,Balcony handrails,2306,40,0,120,0,2192,2192,120,1184,0,1184,,,,2008-12-24 08:00,2009-01-10 17:00,,2008-12-18 08:00,2009-01-04 17:00,2008-12-18 08:00,2009-01-04 17:00,2008-12-18 08:00,2009-01-04 17:00,,,,,PT_Normal,,,,,XU8Z2VZcq06nNJlCc+rJCg,,,,N,0,0
1178,83077,829,11052,912,1,0,N,N,N,CP_Drtn,TT_Task,DT_FixedDUR2,RV_OK,TK_NotStart,7121U30050,Wooden doors,2306,120,16,176,0,1520,1520,176,384,0,384,,,,2008-12-13 08:00,2009-01-06 17:00,,2008-11-25 08:00,2008-12-20 17:00,2008-11-25 08:00,2008-12-20 17:00,2008-11-25 08:00,2008-12-20 17:00,,,,,PT_Normal,,,,,4zOHeIJfDkO1VnKErbjXsw,,,,N,0,0
1179,83078,829,10871,912,1,0,N,N,N,CP_Drtn,TT_Task,DT_FixedDUR2,RV_OK,TK_NotStart,7121U32100,Vanity counters,2306,56,0,120,0,2232,2232,120,192,0,192,,,,2008-12-24 08:00,2009-01-10 17:00,,2008-12-16 08:00,2009-01-01 17:00,2008-12-16 08:00,2009-01-01 17:00,2008-12-16 08:00,2009-01-01 17:00,,,,,PT_Normal,,,,,nIxpwOZ94U+kQ955KBiqNA,,,,N,0,0
1180,83079,829,10871,912,1,0,N,N,N,CP_Drtn,TT_Task,DT_FixedDUR2,RV_OK,TK_NotStart,7121U32150,Wardrobes,2306,216,176,120,0,6168,6168,120,288,0,288,,,,2008-12-24 08:00,2009-01-10 17:00,,2008-11-23 08:00,2008-12-09 17:00,2008-11-23 08:00,2008-12-09 17:00,2008-11-23 08:00,2008-12-09 17:00,,,,,PT_Normal,,,,,ey8C7sb7dECEtc8ft1Q1cw,,,,N,0,0
1181,83080,829,11054,912,1,0,N,N,N,CP_Drtn,TT_Task,DT_FixedDUR2,RV_OK,TK_NotStart,7121U34050,False ceiling works for apartments-dry area,2306,184,0,160,0,1525.12,1525.12,160,910.08,0,910.08,,,,2008-12-08 08:00,2008-12-30 17:00,,2008-11-11 08:00,2008-12-03 17:00,2008-11-11 08:00,2008-12-03 17:00,2008-11-11 08:00,2008-12-03 17:00,,,,,PT_Normal,,,,,6mZ5T4Uj4EqJhcfL44N1Zw,,,,N,0,0
1182,83081,829,11054,912,1,0,N,N,N,CP_Drtn,TT_Task,DT_FixedDUR2,RV_OK,TK_NotStart,7121U34070,False ceiling works for apartments-wet area,2306,80,0,160,0,690.88,690.88,160,353.92,0,353.92,,,,2008-11-23 08:00,2008-12-15 17:00,,2008-11-11 08:00,2008-12-03 17:00,2008-11-11 08:00,2008-12-03 17:00,2008-11-11 08:00,2008-12-03 17:00,,,,,PT_Normal,,,,,1e6mGxU5R0CVMtIEMaT2jw,,,,N,0,0
1183,83082,829,11055,912,1,0,N,N,N,CP_Drtn,TT_Task,DT_FixedDUR2,RV_OK,TK_NotStart,7121U36050,Stone finishin1 top,2306,136,96,64,0,344,344,64,160,0,160,,,,2009-01-01 08:00,2009-01-10 17:00,,2008-12-13 08:00,2008-12-21 17:00,2008-12-13 08:00,2008-12-21 17:00,2008-12-13 08:00,2008-12-21 17:00,,,,,PT_Normal,,,,,OsgsfZRNH0ipvUJwOcW/Lg,,,,N,0,0
1184,83083,829,11055,912,1,0,N,N,N,CP_Drtn,TT_Task,DT_FixedDUR2,RV_OK,TK_NotStart,7121U36100,Thresholds,2306,96,56,64,0,520,520,64,304,0,304,,,,2009-01-01 08:00,2009-01-10 17:00,,2008-12-18 08:00,2008-12-27 17:00,2008-12-18 08:00,2008-12-27 17:00,2008-12-18 08:00,2008-12-27 17:00,,,,,PT_Normal,,,,,xBhYQuL2q0aniODZyEn5jA,,,,N,0,0
1185,83084,829,10988,912,1,70,N,N,N,CP_Drtn,TT_Task,DT_FixedDUR2,RV_OK,TK_Active,7121U44050,Sub-frames,2306,72,0,24,593.6,254.4,848,80,384,268.8,115.2,,2008-09-24 08:00,,2008-10-13 08:00,2008-10-15 17:00,,2008-10-02 08:00,2008-10-05 17:00,2008-10-02 08:00,2008-10-05 17:00,2008-09-24 08:00,2008-10-05 17:00,,,,,PT_Normal,,,,,ahfhzsGQ0UOtMOIRdLgmcg,,,,N,593.6,268.8
1186,83085,829,12202,912,1,100,N,N,N,CP_Drtn,TT_Task,DT_FixedDUR2,RV_OK,TK_Complete,7121U50100,MEP skeleton embedded provisions,2296,24,0,0,512,0,512,72,,,0,,2008-08-05 08:00,2008-08-14 17:00,2008-10-06 08:00,2008-10-05 17:00,,2008-10-02 08:00,2008-10-01 17:00,,,2008-08-05 08:00,2008-08-14 17:00,,,,,PT_Normal,,,,,X71QEHLTHkiRTXkG3dkKQg,,,,N,512,0
1187,83086,829,12086,912,1,25,N,N,N,CP_Drtn,TT_Task,DT_FixedDUR2,RV_OK,TK_Active,7121U52050,A/C duct works,2296,176,88,120,207.76,623.24,831,160,,,,,2008-09-27 08:00,,2008-10-28 08:00,2008-11-13 17:00,,2008-10-02 08:00,2008-10-19 17:00,2008-10-02 08:00,2008-10-19 17:00,2008-09-27 08:00,2008-10-19 17:00,,,,,PT_Normal,,,,,ct79QN7p4kODHsXZf94pOg,,,,N,207.76,0
1188,83087,829,12086,912,1,0,N,N,N,CP_Drtn,TT_Task,DT_FixedDUR2,RV_OK,TK_NotStart,7121U52100,Chilled water pipe works,2296,112,24,72,0,787,787,72,0,0,0,,,,2008-10-26 08:00,2008-11-04 17:00,,2008-10-09 08:00,2008-10-19 17:00,2008-10-09 08:00,2008-10-19 17:00,2008-10-09 08:00,2008-10-19 17:00,,,,,PT_Normal,,,,,DFcDXWsVOE2ntFfqunPjjg,,,,N,0,0
1189,83088,829,12087,912,1,0,N,N,N,CP_Drtn,TT_Task,DT_FixedDUR2,RV_OK,TK_NotStart,7121U52150,FCU's hanging,2296,168,80,64,0,935.2,935.2,64,0,0,0,,,,2008-11-02 08:00,2008-11-10 17:00,,2008-10-08 08:00,2008-10-16 17:00,2008-10-08 08:00,2008-10-16 17:00,2008-10-08 08:00,2008-10-16 17:00,,,,,PT_Normal,,,,,6poqSjYvgEWHPgBWto5oYQ,,,,N,0,0
1190,83089,829,12087,912,1,0,N,N,N,CP_Drtn,TT_Task,DT_FixedDUR2,RV_OK,TK_NotStart,7121U52300,FCU's assembly & duct connections,2296,88,8,80,0,951.2,951.2,80,0,0,0,,,,2008-11-11 08:00,2008-11-22 17:00,,2008-10-29 08:00,2008-11-09 17:00,2008-10-29 08:00,2008-11-09 17:00,2008-10-29 08:00,2008-11-09 17:00,,,,,PT_Normal,,,,,KYxgzI7aGEm86U/GHhp1mQ,,,,N,0,0
1191,83090,829,12087,912,1,0,N,N,N,CP_Drtn,TT_Task,DT_FixedDUR2,RV_OK,TK_NotStart,7121U52350,Grills & diffusers,2296,192,152,64,0,856,856,64,0,0,0,,,,2009-01-01 08:00,2009-01-10 17:00,,2008-12-04 08:00,2008-12-13 17:00,2008-12-04 08:00,2008-12-13 17:00,2008-12-04 08:00,2008-12-13 17:00,,,,,PT_Normal,,,,,KSocHHF7OkOV9jET5u6IuA,,,,N,0,0
1192,83091,829,12086,912,1,0,N,N,N,CP_Drtn,TT_Task,DT_FixedDUR2,RV_OK,TK_NotStart,7121U52550,A/C duct risers,2296,88,0,64,0,1626,1626,64,0,0,0,,,,2008-10-27 08:00,2008-11-04 17:00,,2008-10-14 08:00,2008-10-22 17:00,2008-10-14 08:00,2008-10-22 17:00,2008-10-14 08:00,2008-10-22 17:00,,,,,PT_Normal,,,,,BKohKiOfREy+kEtUCmxKlw,,,,N,0,0
1193,83092,829,12019,912,1,33.3,N,N,N,CP_Drtn,TT_Task,DT_FixedDUR2,RV_OK,TK_Active,7121U54050,Chasing & Pex pipe works,2296,208,0,80,131.66,263.34,395,120,,,,,2008-09-27 08:00,,2008-11-02 08:00,2008-11-12 17:00,,2008-10-02 08:00,2008-10-13 17:00,2008-10-02 08:00,2008-10-13 17:00,2008-09-27 08:00,2008-10-13 17:00,,,,,PT_Normal,,,,,z5OyhXgg6U+nS2oKaPbTog,,,,N,131.66,0
1194,83093,829,12108,912,1,0,N,N,N,CP_Drtn,TT_Task,DT_FixedDUR2,RV_OK,TK_NotStart,7121U54250,Bathtubs,2296,328,0,80,0,273.6,273.6,80,0,0,0,,,,2008-11-25 08:00,2008-12-06 17:00,,2008-10-08 08:00,2008-10-19 17:00,2008-10-08 08:00,2008-10-19 17:00,2008-10-08 08:00,2008-10-19 17:00,,,,,PT_Normal,,,,,kmd13vXdJ0SJp4QJYvK/WA,,,,N,0,0
1195,83094,829,12108,912,1,0,N,N,N,CP_Drtn,TT_Task,DT_FixedDUR2,RV_OK,TK_NotStart,7121U54300,Water heater,2296,168,0,64,0,310.4,310.4,64,0,0,0,,,,2008-11-08 08:00,2008-11-16 17:00,,2008-10-14 08:00,2008-10-22 17:00,2008-10-14 08:00,2008-10-22 17:00,2008-10-14 08:00,2008-10-22 17:00,,,,,PT_Normal,,,,,fXzFK8HzSUGVNNB3FPyYpQ,,,,N,0,0
1196,83095,829,12108,912,1,0,N,N,N,CP_Drtn,TT_Task,DT_FixedDUR2,RV_OK,TK_NotStart,7121U54350,Over head pipe assembly & vlave connections,2296,200,120,64,0,229,229,64,0,0,0,,,,2008-11-13 08:00,2008-11-22 17:00,,2008-10-15 08:00,2008-10-23 17:00,2008-10-15 08:00,2008-10-23 17:00,2008-10-15 08:00,2008-10-23 17:00,,,,,PT_Normal,,,,,yJA9CEi4jEiqOW33jmmrKw,,,,N,0,0
1197,83096,829,12025,912,1,0,N,N,N,CP_Drtn,TT_Task,DT_FixedDUR2,RV_OK,TK_NotStart,7121U54400,Sanitary fixures,2296,144,8,120,0,516,516,120,0,0,0,,,,2008-12-24 08:00,2009-01-10 17:00,,2008-12-03 08:00,2008-12-20 17:00,2008-12-03 08:00,2008-12-20 17:00,2008-12-03 08:00,2008-12-20 17:00,,,,,PT_Normal,,,,,S2idfGK8GUy+Ok1Tn5hgVQ,,,,N,0,0
1198,83097,829,12025,912,1,0,N,N,N,CP_Drtn,TT_Task,DT_FixedDUR2,RV_OK,TK_NotStart,7121U54450,Mirrors,2296,56,16,80,0,146,146,80,0,0,0,,,,2008-12-30 08:00,2009-01-10 17:00,,2008-12-22 08:00,2009-01-01 17:00,2008-12-22 08:00,2009-01-01 17:00,2008-12-22 08:00,2009-01-01 17:00,,,,,PT_Normal,,,,,xDJWglIR40eBRUGpOIELvw,,,,N,0,0
1199,83098,829,12108,912,1,0,N,N,N,CP_Drtn,TT_Task,DT_FixedDUR2,RV_OK,TK_NotStart,7121U54500,Concealed Flushing Cistern,2296,328,248,80,0,212,212,80,0,0,0,,,,2008-11-25 08:00,2008-12-06 17:00,,2008-10-08 08:00,2008-10-19 17:00,2008-10-08 08:00,2008-10-19 17:00,2008-10-08 08:00,2008-10-19 17:00,,,,,PT_Normal,,,,,gWfkpHrKa0WVl5yDrVYDKg,,,,N,0,0
1200,83099,829,12111,912,1,33.3,N,N,N,CP_Drtn,TT_Task,DT_FixedDUR2,RV_OK,TK_Active,7121U56050,Chasing and installation of drainage pipes,2296,160,0,80,95,190,285,120,,,,,2008-09-27 08:00,,2008-10-26 08:00,2008-11-05 17:00,,2008-10-02 08:00,2008-10-13 17:00,2008-10-02 08:00,2008-10-13 17:00,2008-09-27 08:00,2008-10-13 17:00,,,,,PT_Normal,,,,,ue7Y2r0faUutV9olqnLD+Q,,,,N,95,0
1201,83100,829,12111,912,1,100,N,N,N,CP_Drtn,TT_Task,DT_FixedDUR2,RV_OK,TK_Complete,7121U56100,Drainage riser pipes,2296,288,0,0,284,0,284,64,,,0,,2008-09-23 08:00,2008-10-01 17:00,2008-11-13 08:00,2008-11-12 17:00,,2008-10-02 08:00,2008-10-01 17:00,,,2008-09-23 08:00,2008-10-01 17:00,,,,,PT_Normal,,,,,6uXegcHtMkqp0zhlzJzLOA,,,,N,284,0
1202,83101,829,12212,912,1,0,N,N,N,CP_Drtn,TT_Task,DT_FixedDUR2,RV_OK,TK_NotStart,7121U56150,Over head drainage pipe works,2296,80,0,64,0,257.6,257.6,64,0,0,0,,,,2008-11-13 08:00,2008-11-22 17:00,,2008-11-02 08:00,2008-11-10 17:00,2008-11-02 08:00,2008-11-10 17:00,2008-11-02 08:00,2008-11-10 17:00,,,,,PT_Normal,,,,,M/hTCT4OP0es1Edr5XuiVg,,,,N,0,0
1203,83102,829,12423,912,1,0,N,N,N,CP_Drtn,TT_Task,DT_FixedDUR2,RV_OK,TK_NotStart,7121U58050,Fire fighting pipe works,2296,224,144,72,0,292,292,72,0,0,0,,,,2008-11-04 08:00,2008-11-13 17:00,,2008-10-02 08:00,2008-10-12 17:00,2008-10-02 08:00,2008-10-12 17:00,2008-10-02 08:00,2008-10-12 17:00,,,,,PT_Normal,,,,,abYfw7Qbgk64LpJQeKhQ/A,,,,N,0,0
1204,83103,829,12023,912,1,0,N,N,N,CP_Drtn,TT_Task,DT_FixedDUR2,RV_OK,TK_NotStart,7121U58250,Sprinkler heads,2296,192,152,64,0,394,394,64,0,0,0,,,,2009-01-01 08:00,2009-01-10 17:00,,2008-12-04 08:00,2008-12-13 17:00,2008-12-04 08:00,2008-12-13 17:00,2008-12-04 08:00,2008-12-13 17:00,,,,,PT_Normal,,,,,9qMZBiIFq0KRC0RUrbiw7g,,,,N,0,0
1205,83104,829,12217,912,1,46.7,N,N,N,CP_Drtn,TT_Task,DT_FixedDUR2,RV_OK,TK_Active,7121U66050,Chasing and installation of conduits,2296,72,0,64,713.06,814.94,1528,120,,,,,2008-09-24 08:00,,2008-10-13 08:00,2008-10-21 17:00,,2008-10-02 08:00,2008-10-11 17:00,2008-10-02 08:00,2008-10-11 17:00,2008-09-24 08:00,2008-10-11 17:00,,,,,PT_Normal,,,,,SeFsZaYXZEeg3iWFwXClEg,,,,N,713.06,0
1206,83105,829,12228,912,1,55.6,N,N,N,CP_Drtn,TT_Task,DT_FixedDUR2,RV_OK,TK_Active,7121U68050,Single core wiring,2296,240,160,32,626.66,501.34,1128,72,,,,,2008-09-27 08:00,,2008-11-06 08:00,2008-11-10 17:00,,2008-10-02 08:00,2008-10-06 17:00,2008-10-02 08:00,2008-10-06 17:00,2008-09-27 08:00,2008-10-06 17:00,,,,,PT_Normal,,,,,YssQ/z37/Ee549t9O/Bqng,,,,N,626.66,0
1207,83106,829,12080,912,1,0,N,N,N,CP_Drtn,TT_Task,DT_FixedDUR2,RV_OK,TK_NotStart,7121U68350,Light Fittings,2296,192,152,120,0,1035.2,1035.2,120,0,0,0,,,,2008-12-24 08:00,2009-01-10 17:00,,2008-11-26 08:00,2008-12-13 17:00,2008-11-26 08:00,2008-12-13 17:00,2008-11-26 08:00,2008-12-13 17:00,,,,,PT_Normal,,,,,bBJl2808mUOZY+TvkEkqvg,,,,N,0,0
1208,83107,829,12080,912,1,0,N,N,N,CP_Drtn,TT_Task,DT_FixedDUR2,RV_OK,TK_NotStart,7121U68600,Switches & sockets,2296,184,144,72,0,494.4,494.4,72,0,0,0,,,,2008-12-31 08:00,2009-01-10 17:00,,2008-12-04 08:00,2008-12-14 17:00,2008-12-04 08:00,2008-12-14 17:00,2008-12-04 08:00,2008-12-14 17:00,,,,,PT_Normal,,,,,e8yj0RbNWkqTuBZFiCSfUQ,,,,N,0,0
1209,83108,829,12122,912,1,0,N,N,N,CP_Drtn,TT_Task,DT_FixedDUR2,RV_OK,TK_NotStart,7121U74050,Fire alarm cables,2296,208,128,64,0,380.8,380.8,64,0,0,0,,,,2008-11-02 08:00,2008-11-10 17:00,,2008-10-02 08:00,2008-10-11 17:00,2008-10-02 08:00,2008-10-11 17:00,2008-10-02 08:00,2008-10-11 17:00,,,,,PT_Normal,,,,,mSk0lW3UXUaKlG2BYgQ15g,,,,N,0,0
1210,83109,829,12123,912,1,0,N,N,N,CP_Drtn,TT_Task,DT_FixedDUR2,RV_OK,TK_NotStart,7121U74100,Fire alarm fittings,2296,192,152,64,0,116.8,116.8,64,0,0,0,,,,2009-01-01 08:00,2009-01-10 17:00,,2008-12-04 08:00,2008-12-13 17:00,2008-12-04 08:00,2008-12-13 17:00,2008-12-04 08:00,2008-12-13 17:00,,,,,PT_Normal,,,,,a4DDLIX+IESHBMLMfEZIFg,,,,N,0,0
1211,83110,829,12134,912,1,0,N,N,N,CP_Drtn,TT_Task,DT_FixedDUR2,RV_OK,TK_NotStart,7121U76050,Structured cabling,2296,40,0,64,0,345.6,345.6,64,0,0,0,,,,2008-11-08 08:00,2008-11-16 17:00,,2008-11-02 08:00,2008-11-10 17:00,2008-11-02 08:00,2008-11-10 17:00,2008-11-02 08:00,2008-11-10 17:00,,,,,PT_Normal,,,,,h1hEVfjZz0mPlShU3ppmuQ,,,,N,0,0
1212,83111,829,10729,912,1,0,N,N,N,CP_Drtn,TT_Task,DT_FixedDUR2,RV_OK,TK_NotStart,7122L00000,Pre-Snagging & Disnagging for duplexes,2296,24,0,120,0,420,420,120,0,0,0,,,,2009-02-03 08:00,2009-02-19 17:00,,2009-01-31 08:00,2009-02-16 17:00,2009-01-31 08:00,2009-02-16 17:00,2009-01-31 08:00,2009-02-16 17:00,,,,,PT_Normal,,,,,3c+OVuEN40K9jsari7J+hA,,,,N,0,0
1213,83112,829,10729,912,1,0,N,N,N,CP_Drtn,TT_Task,DT_FixedDUR2,RV_OK,TK_NotStart,7122L00002,Pre-Snagging & Disnagging for corrid & Srv rooms,2296,104,0,64,0,214,214,64,0,0,0,,,,2009-03-07 08:00,2009-03-15 17:00,,2009-02-19 08:00,2009-02-28 17:00,2009-02-19 08:00,2009-02-28 17:00,2009-02-19 08:00,2009-02-28 17:00,,,,,PT_Normal,,,,,MqIj5HpLW0qmesIkeboaSg,,,,N,0,0
1214,83113,829,12001,912,1,100,N,N,N,CP_Drtn,TT_Task,DT_FixedDUR2,RV_OK,TK_Complete,7122L12050,Columns & walls 2L to 2U - Part 1,2306,24,0,0,3506.92,0,3506.92,24,105352.08,105352.08,0,,2008-08-21 08:00,2008-08-24 17:00,2008-10-06 08:00,2008-10-05 17:00,,2008-10-02 08:00,2008-10-01 17:00,,,2008-08-21 08:00,2008-08-24 17:00,,,,,PT_Normal,,,,,9AyMDYxWtEidJpWAibLteQ,,,,N,3506.92,105352.08
1215,83114,829,12001,912,1,100,N,N,N,CP_Drtn,TT_Task,DT_FixedDUR2,RV_OK,TK_Complete,7122L12051,Columns & walls 2L to 2U - Part 2,2306,24,0,0,3506.92,0,3506.92,24,105352.08,105352.08,0,,2008-08-30 08:00,2008-09-01 17:00,2008-10-06 08:00,2008-10-05 17:00,,2008-10-02 08:00,2008-10-01 17:00,,,2008-08-30 08:00,2008-09-01 17:00,,,,,PT_Normal,,,,,msCVLiK+EUeg37jBRe2JDg,,,,N,3506.92,105352.08
1216,83115,829,12001,912,1,100,N,N,N,CP_Drtn,TT_Task,DT_FixedDUR2,RV_OK,TK_Complete,7122L12052,Columns & walls 2L to 2U - Middle Part,2306,24,0,0,7218.37,0,7218.37,24,217616.24,217616.24,0,,2008-08-27 08:00,2008-08-30 17:00,2008-10-06 08:00,2008-10-05 17:00,,2008-10-02 08:00,2008-10-01 17:00,,,2008-08-27 08:00,2008-08-30 17:00,,,,,PT_Normal,,,,,h2LYOdkNPEG4Hn3lCI3v9A,,,,N,7218.37,217616.24
1217,83116,829,12001,912,1,100,N,N,N,CP_Drtn,TT_Task,DT_FixedDUR2,RV_OK,TK_Complete,7122L12200,Slab @ 2U level - Part 1,2306,24,0,0,3872.99,0,3872.99,56,141659.52,141659.52,0,,2008-08-30 08:00,2008-09-06 17:00,2008-10-06 08:00,2008-10-05 17:00,,2008-10-02 08:00,2008-10-01 17:00,,,2008-08-30 08:00,2008-09-06 17:00,,,,,PT_Normal,,,,,ywHWovBEFkCpW21xHrH+9A,,,,N,3872.99,141659.52
1218,83117,829,12001,912,1,100,N,N,N,CP_Drtn,TT_Task,DT_FixedDUR2,RV_OK,TK_Complete,7122L12201,Slab @ 2U level - Part 2,2306,24,0,0,3865.79,0,3865.79,56,141318.64,141318.64,0,,2008-09-07 08:00,2008-09-14 17:00,2008-10-06 08:00,2008-10-05 17:00,,2008-10-02 08:00,2008-10-01 17:00,,,2008-09-07 08:00,2008-09-14 17:00,,,,,PT_Normal,,,,,P8tGLeQqWEWotmHSbHE6gQ,,,,N,3865.79,141318.64
1219,83118,829,12001,912,1,100,N,N,N,CP_Drtn,TT_Task,DT_FixedDUR2,RV_OK,TK_Complete,7122L12202,Slab @ 2U level - Middle Part,2306,24,0,0,5579.54,0,5579.54,56,204883.76,204883.76,0,,2008-09-04 08:00,2008-09-11 17:00,2008-10-06 08:00,2008-10-05 17:00,,2008-10-02 08:00,2008-10-01 17:00,,,2008-09-04 08:00,2008-09-11 17:00,,,,,PT_Normal,,,,,9iSW7BwWIU61pUnaFExWDw,,,,N,5579.54,204883.76
1220,83119,829,12001,912,1,100,N,N,N,CP_Drtn,TT_Task,DT_FixedDUR2,RV_OK,TK_Complete,7122L12250,Staircases 2L to 2U,2306,208,0,0,991.88,0,991.88,24,18457.6,18457.6,0,,2008-09-14 08:00,2008-09-16 17:00,2008-11-02 08:00,2008-11-01 17:00,,2008-10-02 08:00,2008-10-01 17:00,,,2008-09-14 08:00,2008-09-16 17:00,,,,,PT_Normal,,,,,orKnMggjzEub+Sq2oTGDtQ,,,,N,991.88,18457.6
1221,83120,829,11099,912,1,0,N,N,N,CP_Drtn,TT_Task,DT_FixedDUR2,RV_OK,TK_NotStart,7122L14050,Block works,2306,24,0,120,0,30085.5,30085.5,120,18440,0,18440,,,,2008-10-12 08:00,2008-10-28 17:00,,2008-10-08 08:00,2008-10-25 17:00,2008-10-08 08:00,2008-10-25 17:00,2008-10-08 08:00,2008-10-25 17:00,,,,,PT_Normal,,,,,4NT0yTfnG0iQJT2BuGqzLA,,,,N,0,0
1222,83121,829,11059,912,1,0,N,N,N,CP_Drtn,TT_Task,DT_FixedDUR2,RV_OK,TK_NotStart,7122L16050,Plaster works,2306,40,0,120,0,24385.9,24385.9,120,19032,0,19032,,,,2008-10-29 08:00,2008-11-15 17:00,,2008-10-23 08:00,2008-11-09 17:00,2008-10-23 08:00,2008-11-09 17:00,2008-10-23 08:00,2008-11-09 17:00,,,,,PT_Normal,,,,,AjCIscUzak+banFyOtlxDQ,,,,N,0,0
1223,83122,829,11059,912,1,0,N,N,N,CP_Drtn,TT_Task,DT_FixedDUR2,RV_OK,TK_NotStart,7122L16051,Plaste works behind tiles,2306,184,160,120,0,10136.2,10136.2,120,7856,0,7856,,,,2008-11-19 08:00,2008-12-06 17:00,,2008-10-23 08:00,2008-11-09 17:00,2008-10-23 08:00,2008-11-09 17:00,2008-10-23 08:00,2008-11-09 17:00,,,,,PT_Normal,,,,,bESEqxniAUuGvrHebRUDmQ,,,,N,0,0
1224,83123,829,10883,912,1,0,N,N,N,CP_Drtn,TT_Task,DT_FixedDUR2,RV_OK,TK_NotStart,7122L18050,Rendering works,2306,64,24,120,0,5683,5683,120,5000,0,5000,,,,2008-10-26 08:00,2008-11-11 17:00,,2008-10-16 08:00,2008-11-02 17:00,2008-10-16 08:00,2008-11-02 17:00,2008-10-16 08:00,2008-11-02 17:00,,,,,PT_Normal,,,,,avDjUwY180u8hHhsGhv/Jw,,,,N,0,0
1225,83124,829,10883,912,1,0,N,N,N,CP_Drtn,TT_Task,DT_FixedDUR2,RV_OK,TK_NotStart,7122L18100,Painting base coats,2306,40,0,120,0,26555.6,26555.6,120,24032,0,24032,,,,2008-11-06 08:00,2008-11-23 17:00,,2008-11-01 08:00,2008-11-17 17:00,2008-11-01 08:00,2008-11-17 17:00,2008-11-01 08:00,2008-11-17 17:00,,,,,PT_Normal,,,,,BWtZ8Y/Ge0mVt/VaYjmp6A,,,,N,0,0
1226,83125,829,10883,912,1,0,N,N,N,CP_Drtn,TT_Task,DT_FixedDUR2,RV_OK,TK_NotStart,7122L18150,Painting 1st top coat for apartments,2306,136,0,72,0,17300.2,17300.2,72,16408,0,16408,,,,2009-01-15 08:00,2009-01-25 17:00,,2008-12-27 08:00,2009-01-05 17:00,2008-12-27 08:00,2009-01-05 17:00,2008-12-27 08:00,2009-01-05 17:00,,,,,PT_Normal,,,,,4x14W45SiEmRNh8mlEtqqw,,,,N,0,0
1227,83126,829,10883,912,1,0,N,N,N,CP_Drtn,TT_Task,DT_FixedDUR2,RV_OK,TK_NotStart,7122L18153,Painting 1st top coat for corridors/lobbies,2306,272,0,48,0,14370,14370,48,13640,0,13640,,,,2009-02-17 08:00,2009-02-23 17:00,,2009-01-08 08:00,2009-01-14 17:00,2009-01-08 08:00,2009-01-14 17:00,2009-01-08 08:00,2009-01-14 17:00,,,,,PT_Normal,,,,,ABTRzgVp90+ARZtHe2ovyw,,,,N,0,0
1228,83127,829,10883,912,1,0,N,N,N,CP_Drtn,TT_Task,DT_FixedDUR2,RV_OK,TK_NotStart,7122L18155,Painting 1st top coat for service rooms,2306,240,0,48,0,6364.4,6364.4,48,6016,0,6016,,,,2009-02-12 08:00,2009-02-18 17:00,,2009-01-08 08:00,2009-01-14 17:00,2009-01-08 08:00,2009-01-14 17:00,2009-01-08 08:00,2009-01-14 17:00,,,,,PT_Normal,,,,,jK4xazyzE0uiA4Ok5019yA,,,,N,0,0
1229,83128,829,10729,912,1,0,N,N,N,CP_Drtn,TT_Task,DT_FixedDUR2,RV_OK,TK_NotStart,7122L18200,Painting final top coat,2306,160,56,32,0,25265.8,25265.8,32,24032,0,24032,,,,2009-03-23 08:00,2009-03-26 17:00,,2009-02-28 08:00,2009-03-03 17:00,2009-02-28 08:00,2009-03-03 17:00,2009-02-28 08:00,2009-03-03 17:00,,,,,PT_Normal,,,,,CoSFXM9qykio1kKgPcfLRA,,,,N,0,0
1230,83129,829,11061,912,1,0,N,N,N,CP_Drtn,TT_Task,DT_FixedDUR2,RV_OK,TK_NotStart,7122L20050,Floor tiles for apartments-dry area,2306,144,24,120,0,8846.4,8846.4,120,6464,0,6464,,,,2008-12-01 08:00,2008-12-17 17:00,,2008-11-10 08:00,2008-11-26 17:00,2008-11-10 08:00,2008-11-26 17:00,2008-11-10 08:00,2008-11-26 17:00,,,,,PT_Normal,,,,,Y0fh2FAzmk6leticADpyow,,,,N,0,0
1231,83130,829,11061,912,1,0,N,N,N,CP_Drtn,TT_Task,DT_FixedDUR2,RV_OK,TK_NotStart,7122L20053,Floor tiles for corridors / lobbies,2306,112,0,48,0,4638,4638,48,3400,0,3400,,,,2009-01-12 08:00,2009-01-18 17:00,,2008-12-27 08:00,2009-01-01 17:00,2008-12-27 08:00,2009-01-01 17:00,2008-12-27 08:00,2009-01-01 17:00,,,,,PT_Normal,,,,,1HHPJDZIf0S1uqbxXasWiA,,,,N,0,0
1232,83131,829,11061,912,1,0,N,N,N,CP_Drtn,TT_Task,DT_FixedDUR2,RV_OK,TK_NotStart,7122L20070,Floor tiles for apartments-wet area,2306,24,0,120,0,4062,4062,120,2920,0,2920,,,,2008-12-18 08:00,2009-01-04 17:00,,2008-12-15 08:00,2008-12-31 17:00,2008-12-15 08:00,2008-12-31 17:00,2008-12-15 08:00,2008-12-31 17:00,,,,,PT_Normal,,,,,HvsrTBjzbkG3uD4PhwAE3w,,,,N,0,0
1233,83132,829,11061,912,1,0,N,N,N,CP_Drtn,TT_Task,DT_FixedDUR2,RV_OK,TK_NotStart,7122L20110,Wall tiles for apartments-wet area,2306,48,0,120,0,9159,9159,120,6026,0,6026,,,,2008-12-24 08:00,2009-01-10 17:00,,2008-12-17 08:00,2009-01-03 17:00,2008-12-17 08:00,2009-01-03 17:00,2008-12-17 08:00,2009-01-03 17:00,,,,,PT_Normal,,,,,WpuVKfi/oUuhUBtYt/gXww,,,,N,0,0
1234,83133,829,11062,912,1,0,N,N,N,CP_Drtn,TT_Task,DT_FixedDUR2,RV_OK,TK_NotStart,7122L22150,W/P for for apartments,2306,248,0,72,0,4832.4,4832.4,72,4328,0,4328,,,,2008-12-01 08:00,2008-12-10 17:00,,2008-10-26 08:00,2008-11-04 17:00,2008-10-26 08:00,2008-11-04 17:00,2008-10-26 08:00,2008-11-04 17:00,,,,,PT_Normal,,,,,q1fbxfbxqkejCCszcOWwWw,,,,N,0,0
1235,83134,829,10995,912,1,0,N,N,N,CP_Drtn,TT_Task,DT_FixedDUR2,RV_OK,TK_NotStart,7122L24050,Aluminium doors & windows,2306,248,144,120,0,1976,1976,120,464,0,464,,,,2008-12-24 08:00,2009-01-10 17:00,,2008-11-18 08:00,2008-12-04 17:00,2008-11-18 08:00,2008-12-04 17:00,2008-11-18 08:00,2008-12-04 17:00,,,,,PT_Normal,,,,,husumPg3GEO0HvYcCmcvXA,,,,N,0,0
1236,83135,829,10995,912,1,0,N,N,N,CP_Drtn,TT_Task,DT_FixedDUR2,RV_OK,TK_NotStart,7122L24200,Balcony handrails,2306,64,0,120,0,2710,2710,120,1480,0,1480,,,,2009-01-11 08:00,2009-01-27 17:00,,2009-01-01 08:00,2009-01-18 17:00,2009-01-01 08:00,2009-01-18 17:00,2009-01-01 08:00,2009-01-18 17:00,,,,,PT_Normal,,,,,GceSJiDMukCARU6qXF/VsA,,,,N,0,0
1237,83136,829,10995,912,1,0,N,N,N,CP_Drtn,TT_Task,DT_FixedDUR2,RV_OK,TK_NotStart,7122L24203,Lobby handrails,2306,352,248,64,0,946,946,64,504,0,504,,,,2009-02-23 08:00,2009-03-03 17:00,,2009-01-03 08:00,2009-01-11 17:00,2009-01-03 08:00,2009-01-11 17:00,2009-01-03 08:00,2009-01-11 17:00,,,,,PT_Normal,,,,,mpVd5PZOWUqKSlXyKzg2rQ,,,,N,0,0
1238,83137,829,10996,912,1,0,N,N,N,CP_Drtn,TT_Task,DT_FixedDUR2,RV_OK,TK_NotStart,7122L26050,Steel doors,2306,240,0,48,0,368,368,48,64,0,64,,,,2009-02-05 08:00,2009-02-11 17:00,,2009-01-01 08:00,2009-01-07 17:00,2009-01-01 08:00,2009-01-07 17:00,2009-01-01 08:00,2009-01-07 17:00,,,,,PT_Normal,,,,,xdZlyxk00US0SCy3pXVfEg,,,,N,0,0
1239,83138,829,11065,912,1,0,N,N,N,CP_Drtn,TT_Task,DT_FixedDUR2,RV_OK,TK_NotStart,7122L30050,Wooden doors,2306,104,32,176,0,2192,2192,176,576,0,576,,,,2008-12-30 08:00,2009-01-24 17:00,,2008-12-15 08:00,2009-01-08 17:00,2008-12-15 08:00,2009-01-08 17:00,2008-12-15 08:00,2009-01-08 17:00,,,,,PT_Normal,,,,,AX+SkL5vn0afhs9EAyhhAQ,,,,N,0,0
1240,83139,829,10957,912,1,0,N,N,N,CP_Drtn,TT_Task,DT_FixedDUR2,RV_OK,TK_NotStart,7122L32050,Kitchen cabinets,2306,48,24,128,0,3104,3104,128,96,0,96,,,,2009-01-10 08:00,2009-01-27 17:00,,2009-01-03 08:00,2009-01-20 17:00,2009-01-03 08:00,2009-01-20 17:00,2009-01-03 08:00,2009-01-20 17:00,,,,,PT_Normal,,,,,/8lO1ZtEh02sdq7op+AO5w,,,,N,0,0
1241,83140,829,10957,912,1,0,N,N,N,CP_Drtn,TT_Task,DT_FixedDUR2,RV_OK,TK_NotStart,7122L32100,Vanity counters,2306,24,0,120,0,1880,1880,120,160,0,160,,,,2009-01-05 08:00,2009-01-21 17:00,,2009-01-01 08:00,2009-01-18 17:00,2009-01-01 08:00,2009-01-18 17:00,2009-01-01 08:00,2009-01-18 17:00,,,,,PT_Normal,,,,,z18wpWQYoUOtunniEA9h/A,,,,N,0,0
1242,83141,829,10957,912,1,0,N,N,N,CP_Drtn,TT_Task,DT_FixedDUR2,RV_OK,TK_NotStart,7122L32150,Wardrobes,2306,184,160,120,0,4152,4152,120,192,0,192,,,,2009-01-11 08:00,2009-01-27 17:00,,2008-12-15 08:00,2008-12-31 17:00,2008-12-15 08:00,2008-12-31 17:00,2008-12-15 08:00,2008-12-31 17:00,,,,,PT_Normal,,,,,e9xuF70mHEmg1wqX9Ykx0w,,,,N,0,0
1243,83142,829,11067,912,1,0,N,N,N,CP_Drtn,TT_Task,DT_FixedDUR2,RV_OK,TK_NotStart,7122L34050,False ceiling works for apartments-dry area,2306,128,0,160,0,1506.16,1506.16,160,897.44,0,897.44,,,,2008-12-22 08:00,2009-01-13 17:00,,2008-12-03 08:00,2008-12-25 17:00,2008-12-03 08:00,2008-12-25 17:00,2008-12-03 08:00,2008-12-25 17:00,,,,,PT_Normal,,,,,JCG6X/CdhkytCzidw9kv1w,,,,N,0,0
1244,83143,829,11067,912,1,0,N,N,N,CP_Drtn,TT_Task,DT_FixedDUR2,RV_OK,TK_NotStart,7122L34053,False ceiling works for corridors/lobbies,2306,112,0,72,0,9876,9876,72,6536,0,6536,,,,2009-01-04 08:00,2009-01-13 17:00,,2008-12-18 08:00,2008-12-28 17:00,2008-12-18 08:00,2008-12-28 17:00,2008-12-18 08:00,2008-12-28 17:00,,,,,PT_Normal,,,,,N7ntWjgVz0eMboxu29qKpA,,,,N,0,0
1245,83144,829,11067,912,1,0,N,N,N,CP_Drtn,TT_Task,DT_FixedDUR2,RV_OK,TK_NotStart,7122L34070,False ceiling works for apartments-wet area,2306,24,0,160,0,709.84,709.84,160,366.56,0,366.56,,,,2008-12-07 08:00,2008-12-29 17:00,,2008-12-03 08:00,2008-12-25 17:00,2008-12-03 08:00,2008-12-25 17:00,2008-12-03 08:00,2008-12-25 17:00,,,,,PT_Normal,,,,,eOxqK+VlYUK20OF7RqanLQ,,,,N,0,0
1246,83145,829,11068,912,1,0,N,N,N,CP_Drtn,TT_Task,DT_FixedDUR2,RV_OK,TK_NotStart,7122L36050,Stone finishing top,2306,88,8,64,0,484,484,64,240,0,240,,,,2009-01-15 08:00,2009-01-24 17:00,,2009-01-03 08:00,2009-01-11 17:00,2009-01-03 08:00,2009-01-11 17:00,2009-01-03 08:00,2009-01-11 17:00,,,,,PT_Normal,,,,,qQbOcLV6y0+Lt91CcVG5ig,,,,N,0,0
1247,83146,829,11068,912,1,0,N,N,N,CP_Drtn,TT_Task,DT_FixedDUR2,RV_OK,TK_NotStart,7122L36100,Thresholds,2306,64,8,120,0,924,924,120,536,0,536,,,,2009-01-11 08:00,2009-01-27 17:00,,2009-01-01 08:00,2009-01-18 17:00,2009-01-01 08:00,2009-01-18 17:00,2009-01-01 08:00,2009-01-18 17:00,,,,,PT_Normal,,,,,HixtEMNUKkSoWDLNt4Mfjg,,,,N,0,0
1248,83147,829,10960,912,1,0,N,N,N,CP_Drtn,TT_Task,DT_FixedDUR2,RV_OK,TK_NotStart,7122L38100,Epoxy coating system,2306,240,136,48,0,816,816,48,640,0,640,,,,2009-02-25 08:00,2009-03-03 17:00,,2009-01-21 08:00,2009-01-27 17:00,2009-01-21 08:00,2009-01-27 17:00,2009-01-21 08:00,2009-01-27 17:00,,,,,PT_Normal,,,,,KfQTUHuwOUahfl/iiYmRAw,,,,N,0,0
1249,83148,829,10961,912,1,0,N,N,N,CP_Drtn,TT_Task,DT_FixedDUR2,RV_OK,TK_NotStart,7122L40050,Duplex apartment stairs,2306,120,0,120,0,3816,3816,120,96,0,96,,,,2008-12-18 08:00,2009-01-04 17:00,,2008-12-01 08:00,2008-12-17 17:00,2008-12-01 08:00,2008-12-17 17:00,2008-12-01 08:00,2008-12-17 17:00,,,,,PT_Normal,,,,,RySEqV2j9EGljXplsduPXQ,,,,N,0,0
1250,83149,829,10961,912,1,0,N,N,N,CP_Drtn,TT_Task,DT_FixedDUR2,RV_OK,TK_NotStart,7122L40100,Wooden steps for Duplex stairs,2306,120,0,120,0,936,936,120,96,0,96,,,,2008-12-30 08:00,2009-01-15 17:00,,2008-12-13 08:00,2008-12-29 17:00,2008-12-13 08:00,2008-12-29 17:00,2008-12-13 08:00,2008-12-29 17:00,,,,,PT_Normal,,,,,cfhXTVxWL0KRdPG76UcH/w,,,,N,0,0
1251,83150,829,10961,912,1,0,N,N,N,CP_Drtn,TT_Task,DT_FixedDUR2,RV_OK,TK_NotStart,7122L40150,Duplex stair railings,2306,120,96,120,0,5120,5120,120,2000,0,2000,,,,2009-01-11 08:00,2009-01-27 17:00,,2008-12-24 08:00,2009-01-10 17:00,2008-12-24 08:00,2009-01-10 17:00,2008-12-24 08:00,2009-01-10 17:00,,,,,PT_Normal,,,,,hpzdaIs1tkSEO047OWBIow,,,,N,0,0
1252,83151,829,11071,912,1,0,N,N,N,CP_Drtn,TT_Task,DT_FixedDUR2,RV_OK,TK_NotStart,7122L42050,Signage works,2306,280,176,48,0,153.8,153.8,48,96,0,96,,,,2009-02-25 08:00,2009-03-03 17:00,,2009-01-15 08:00,2009-01-21 17:00,2009-01-15 08:00,2009-01-21 17:00,2009-01-15 08:00,2009-01-21 17:00,,,,,PT_Normal,,,,,lsVku7LiO0CC75aksrGtjA,,,,N,0,0
1253,83152,829,10963,912,1,0,N,N,N,CP_Drtn,TT_Task,DT_FixedDUR2,RV_OK,TK_NotStart,7122L44050,Sub-frames,2306,40,0,120,0,1272,1272,120,576,0,576,,,,2008-10-23 08:00,2008-11-09 17:00,,2008-10-18 08:00,2008-11-03 17:00,2008-10-18 08:00,2008-11-03 17:00,2008-10-18 08:00,2008-11-03 17:00,,,,,PT_Normal,,,,,kPpBb5cbjEWLXcnvufi8lA,,,,N,0,0
1254,83153,829,12069,912,1,100,N,N,N,CP_Drtn,TT_Task,DT_FixedDUR2,RV_OK,TK_Complete,7122L50100,MEP skeleton embedded provisions,2296,24,0,0,512,0,512,72,,,0,,2008-08-21 08:00,2008-08-31 17:00,2008-10-06 08:00,2008-10-05 17:00,,2008-10-02 08:00,2008-10-01 17:00,,,2008-08-21 08:00,2008-08-31 17:00,,,,,PT_Normal,,,,,ZM+EzsjA1UO1iurPzf6bnA,,,,N,512,0
1255,83154,829,12062,912,1,0,N,N,N,CP_Drtn,TT_Task,DT_FixedDUR2,RV_OK,TK_NotStart,7122L52050,A/C duct works,2296,136,112,160,0,831,831,160,0,0,0,,,,2008-11-05 08:00,2008-11-27 17:00,,2008-10-16 08:00,2008-11-08 17:00,2008-10-16 08:00,2008-11-08 17:00,2008-10-16 08:00,2008-11-08 17:00,,,,,PT_Normal,,,,,6JWQUBTFVUqSw2FbnwhcvQ,,,,N,0,0
1256,83155,829,12062,912,1,0,N,N,N,CP_Drtn,TT_Task,DT_FixedDUR2,RV_OK,TK_NotStart,7122L52100,Chilled water pipe works,2296,88,64,72,0,787,787,72,0,0,0,,,,2008-11-09 08:00,2008-11-18 17:00,,2008-10-27 08:00,2008-11-05 17:00,2008-10-27 08:00,2008-11-05 17:00,2008-10-27 08:00,2008-11-05 17:00,,,,,PT_Normal,,,,,FM9hy/wZmU6+23xlw8C1dA,,,,N,0,0
1257,83156,829,12340,912,1,0,N,N,N,CP_Drtn,TT_Task,DT_FixedDUR2,RV_OK,TK_NotStart,7122L52150,FCU's hanging,2296,144,120,64,0,935.2,935.2,64,0,0,0,,,,2008-11-16 08:00,2008-11-24 17:00,,2008-10-26 08:00,2008-11-03 17:00,2008-10-26 08:00,2008-11-03 17:00,2008-10-26 08:00,2008-11-03 17:00,,,,,PT_Normal,,,,,EUb0MsHJkkmK/YFDNIxpbw,,,,N,0,0
1258,83157,829,12340,912,1,0,N,N,N,CP_Drtn,TT_Task,DT_FixedDUR2,RV_OK,TK_NotStart,7122L52300,FCU's assembly & duct connections,2296,24,0,72,0,943.2,943.2,72,0,0,0,,,,2008-11-26 08:00,2008-12-06 17:00,,2008-11-23 08:00,2008-12-02 17:00,2008-11-23 08:00,2008-12-02 17:00,2008-11-23 08:00,2008-12-02 17:00,,,,,PT_Normal,,,,,DSC9vuq/4kqJxpIsKjBtJA,,,,N,0,0
1259,83158,829,12340,912,1,0,N,N,N,CP_Drtn,TT_Task,DT_FixedDUR2,RV_OK,TK_NotStart,7122L52350,Grills & diffusers,2296,344,40,80,0,872,872,80,0,0,0,,,,2009-02-15 08:00,2009-02-25 17:00,,2008-12-27 08:00,2009-01-06 17:00,2008-12-27 08:00,2009-01-06 17:00,2008-12-27 08:00,2009-01-06 17:00,,,,,PT_Normal,,,,,DPZILyqKcUWgZl+a1WxKDA,,,,N,0,0
1260,83159,829,12062,912,1,0,N,N,N,CP_Drtn,TT_Task,DT_FixedDUR2,RV_OK,TK_NotStart,7122L52550,A/C duct risers,2296,24,0,64,0,1626,1626,64,0,0,0,,,,2008-11-10 08:00,2008-11-18 17:00,,2008-11-06 08:00,2008-11-15 17:00,2008-11-06 08:00,2008-11-15 17:00,2008-11-06 08:00,2008-11-15 17:00,,,,,PT_Normal,,,,,n16tkxWO0E2F6JdlMg/7/w,,,,N,0,0
1261,83160,829,12442,912,1,0,N,N,N,CP_Drtn,TT_Task,DT_FixedDUR2,RV_OK,TK_NotStart,7122L54050,Chasing & Pex pipe works,2296,160,8,120,0,395,395,120,0,0,0,,,,2008-11-09 08:00,2008-11-25 17:00,,2008-10-16 08:00,2008-11-02 17:00,2008-10-16 08:00,2008-11-02 17:00,2008-10-16 08:00,2008-11-02 17:00,,,,,PT_Normal,,,,,nJBv4M+O/kOI8ZTIB/4DFw,,,,N,0,0
1262,83161,829,12442,912,1,0,N,N,N,CP_Drtn,TT_Task,DT_FixedDUR2,RV_OK,TK_NotStart,7122L54100,Over head distribution water pipe network,2296,96,0,64,0,8314,8314,64,0,0,0,,,,2008-11-15 08:00,2008-11-23 17:00,,2008-11-01 08:00,2008-11-09 17:00,2008-11-01 08:00,2008-11-09 17:00,2008-11-01 08:00,2008-11-09 17:00,,,,,PT_Normal,,,,,/QBadq8uvEaidTF39MyFYg,,,,N,0,0
1263,83162,829,12068,912,1,0,N,N,N,CP_Drtn,TT_Task,DT_FixedDUR2,RV_OK,TK_NotStart,7122L54150,Water meter cabinet pipe works,2296,288,152,120,0,340,340,120,0,0,0,,,,2009-01-11 08:00,2009-01-27 17:00,,2008-11-30 08:00,2008-12-16 17:00,2008-11-30 08:00,2008-12-16 17:00,2008-11-30 08:00,2008-12-16 17:00,,,,,PT_Normal,,,,,l79n2+E4L0ejgPaxz58xow,,,,N,0,0
1264,83163,829,12075,912,1,0,N,N,N,CP_Drtn,TT_Task,DT_FixedDUR2,RV_OK,TK_NotStart,7122L54250,Bathtubs,2296,248,0,80,0,273.6,273.6,80,0,0,0,,,,2008-12-07 08:00,2008-12-17 17:00,,2008-11-01 08:00,2008-11-11 17:00,2008-11-01 08:00,2008-11-11 17:00,2008-11-01 08:00,2008-11-11 17:00,,,,,PT_Normal,,,,,rz6p9rKGtUiyPVWSGNvwuw,,,,N,0,0
1265,83164,829,12075,912,1,0,N,N,N,CP_Drtn,TT_Task,DT_FixedDUR2,RV_OK,TK_NotStart,7122L54300,Water heater,2296,128,64,64,0,310.4,310.4,64,0,0,0,,,,2008-11-22 08:00,2008-11-30 17:00,,2008-11-03 08:00,2008-11-11 17:00,2008-11-03 08:00,2008-11-11 17:00,2008-11-03 08:00,2008-11-11 17:00,,,,,PT_Normal,,,,,NbZHo0iYBkSSloN00R8INQ,,,,N,0,0
1266,83165,829,12075,912,1,0,N,N,N,CP_Drtn,TT_Task,DT_FixedDUR2,RV_OK,TK_NotStart,7122L54350,Over head pipe assembly & vlave connections,2296,96,72,72,0,237,237,72,0,0,0,,,,2008-11-26 08:00,2008-12-06 17:00,,2008-11-12 08:00,2008-11-22 17:00,2008-11-12 08:00,2008-11-22 17:00,2008-11-12 08:00,2008-11-22 17:00,,,,,PT_Normal,,,,,FuMwpVN6eUGLlabWMf7/vw,,,,N,0,0
1267,83166,829,12068,912,1,0,N,N,N,CP_Drtn,TT_Task,DT_FixedDUR2,RV_OK,TK_NotStart,7122L54400,Sanitary fixures,2296,88,0,120,0,516,516,120,0,0,0,,,,2009-01-07 08:00,2009-01-24 17:00,,2008-12-25 08:00,2009-01-11 17:00,2008-12-25 08:00,2009-01-11 17:00,2008-12-25 08:00,2009-01-11 17:00,,,,,PT_Normal,,,,,wmZ8X5vI0U29VjIY/lqj7g,,,,N,0,0
1268,83167,829,12068,912,1,0,N,N,N,CP_Drtn,TT_Task,DT_FixedDUR2,RV_OK,TK_NotStart,7122L54450,Mirrors,2296,24,0,120,0,186,186,120,0,0,0,,,,2009-01-11 08:00,2009-01-27 17:00,,2009-01-07 08:00,2009-01-24 17:00,2009-01-07 08:00,2009-01-24 17:00,2009-01-07 08:00,2009-01-24 17:00,,,,,PT_Normal,,,,,9dq/dP73lk+SuzdeWUWCbw,,,,N,0,0
1269,83168,829,12075,912,1,0,N,N,N,CP_Drtn,TT_Task,DT_FixedDUR2,RV_OK,TK_NotStart,7122L54500,Concealed Flushing Cistern,2296,248,224,80,0,212,212,80,0,0,0,,,,2008-12-07 08:00,2008-12-17 17:00,,2008-11-01 08:00,2008-11-11 17:00,2008-11-01 08:00,2008-11-11 17:00,2008-11-01 08:00,2008-11-11 17:00,,,,,PT_Normal,,,,,cA21jCJe9kGAXnsb5tJtMw,,,,N,0,0
1270,83169,829,12137,912,1,0,N,N,N,CP_Drtn,TT_Task,DT_FixedDUR2,RV_OK,TK_NotStart,7122L56050,Chasing and installation of drainage pipes,2296,80,0,120,0,285,285,120,0,0,0,,,,2008-10-28 08:00,2008-11-13 17:00,,2008-10-16 08:00,2008-11-02 17:00,2008-10-16 08:00,2008-11-02 17:00,2008-10-16 08:00,2008-11-02 17:00,,,,,PT_Normal,,,,,C0dWi6pduk6ty9gF4vE+pA,,,,N,0,0
1271,83170,829,12137,912,1,0,N,N,N,CP_Drtn,TT_Task,DT_FixedDUR2,RV_OK,TK_NotStart,7122L56100,Drainage riser pipes,2296,192,72,64,0,284,284,64,0,0,0,,,,2008-11-13 08:00,2008-11-22 17:00,,2008-10-16 08:00,2008-10-25 17:00,2008-10-16 08:00,2008-10-25 17:00,2008-10-16 08:00,2008-10-25 17:00,,,,,PT_Normal,,,,,QZh8qhSh/U+Zk5b8bWEzXg,,,,N,0,0
1272,83171,829,12058,912,1,0,N,N,N,CP_Drtn,TT_Task,DT_FixedDUR2,RV_OK,TK_NotStart,7122L56150,Over head drainage pipe works,2296,152,128,64,0,257.6,257.6,64,0,0,0,,,,2008-11-27 08:00,2008-12-06 17:00,,2008-11-05 08:00,2008-11-13 17:00,2008-11-05 08:00,2008-11-13 17:00,2008-11-05 08:00,2008-11-13 17:00,,,,,PT_Normal,,,,,eJEGAh0LYUiTu0tJHTe7rA,,,,N,0,0
1273,83172,829,12449,912,1,0,N,N,N,CP_Drtn,TT_Task,DT_FixedDUR2,RV_OK,TK_NotStart,7122L58050,Fire fighting pipe works,2296,160,136,72,0,292,292,72,0,0,0,,,,2008-11-18 08:00,2008-11-27 17:00,,2008-10-26 08:00,2008-11-04 17:00,2008-10-26 08:00,2008-11-04 17:00,2008-10-26 08:00,2008-11-04 17:00,,,,,PT_Normal,,,,,U2kKdk7eGU60vfeVLYlV3A,,,,N,0,0
1274,83173,829,12041,912,1,0,N,N,N,CP_Drtn,TT_Task,DT_FixedDUR2,RV_OK,TK_NotStart,7122L58200,Fire cabinet complete,2296,272,96,64,0,339,339,64,0,0,0,,,,2009-02-23 08:00,2009-03-03 17:00,,2009-01-14 08:00,2009-01-22 17:00,2009-01-14 08:00,2009-01-22 17:00,2009-01-14 08:00,2009-01-22 17:00,,,,,PT_Normal,,,,,8G6e+bLs1k+movlWaLg0AQ,,,,N,0,0
1275,83174,829,12041,912,1,0,N,N,N,CP_Drtn,TT_Task,DT_FixedDUR2,RV_OK,TK_NotStart,7122L58250,Sprinkler heads,2296,304,0,120,0,450,450,120,0,0,0,,,,2009-02-09 08:00,2009-02-25 17:00,,2008-12-27 08:00,2009-01-12 17:00,2008-12-27 08:00,2009-01-12 17:00,2008-12-27 08:00,2009-01-12 17:00,,,,,PT_Normal,,,,,Xc+RXzMi7U+oxpmX55CsCQ,,,,N,0,0
1276,83175,829,12452,912,1,0,N,N,N,CP_Drtn,TT_Task,DT_FixedDUR2,RV_OK,TK_NotStart,7122L60050,LPG piping,2296,288,0,72,0,292,292,72,0,0,0,,,,2008-12-30 08:00,2009-01-08 17:00,,2008-11-18 08:00,2008-11-27 17:00,2008-11-18 08:00,2008-11-27 17:00,2008-11-18 08:00,2008-11-27 17:00,,,,,PT_Normal,,,,,ZVDWOTZBgECOtDIb8bY1pA,,,,N,0,0
1277,83176,829,12044,912,1,0,N,N,N,CP_Drtn,TT_Task,DT_FixedDUR2,RV_OK,TK_NotStart,7122L60100,Gas meter & leak detector,2296,344,56,72,0,248,248,72,0,0,0,,,,2009-01-18 08:00,2009-01-27 17:00,,2008-11-29 08:00,2008-12-08 17:00,2008-11-29 08:00,2008-12-08 17:00,2008-11-29 08:00,2008-12-08 17:00,,,,,PT_Normal,,,,,gioRkU7a9kePMkqCW3txgA,,,,N,0,0
1278,83177,829,12455,912,1,0,N,N,N,CP_Drtn,TT_Task,DT_FixedDUR2,RV_OK,TK_NotStart,7122L62050,BMS cabling,2296,80,56,48,0,470.4,470.4,48,0,0,0,,,,2008-11-30 08:00,2008-12-06 17:00,,2008-11-18 08:00,2008-11-24 17:00,2008-11-18 08:00,2008-11-24 17:00,2008-11-18 08:00,2008-11-24 17:00,,,,,PT_Normal,,,,,JQvKmjsEr0ewivLOQuccxw,,,,N,0,0
1279,83178,829,12038,912,1,0,N,N,N,CP_Drtn,TT_Task,DT_FixedDUR2,RV_OK,TK_NotStart,7122L62100,DGC & cable termination to equipments,2296,240,0,48,0,329.6,329.6,48,0,0,0,,,,2009-02-19 08:00,2009-02-25 17:00,,2009-01-15 08:00,2009-01-21 17:00,2009-01-15 08:00,2009-01-21 17:00,2009-01-15 08:00,2009-01-21 17:00,,,,,PT_Normal,,,,,nW9R/1AJu0aWYrx4iW+2lw,,,,N,0,0
1280,83179,829,12040,912,1,0,N,N,N,CP_Drtn,TT_Task,DT_FixedDUR2,RV_OK,TK_NotStart,7122L66050,Chasing and installation of conduits,2296,40,0,120,0,1809.6,1809.6,120,0,0,0,,,,2008-10-23 08:00,2008-11-09 17:00,,2008-10-18 08:00,2008-11-03 17:00,2008-10-18 08:00,2008-11-03 17:00,2008-10-18 08:00,2008-11-03 17:00,,,,,PT_Normal,,,,,C2WKTPlj7EWZ4/LHS7OTvA,,,,N,0,0
1281,83180,829,12040,912,1,0,N,N,N,CP_Drtn,TT_Task,DT_FixedDUR2,RV_OK,TK_NotStart,7122L66100,Cable trays & trunking,2296,40,0,64,0,1472,1472,64,0,0,0,,,,2008-11-18 08:00,2008-11-26 17:00,,2008-11-12 08:00,2008-11-20 17:00,2008-11-12 08:00,2008-11-20 17:00,2008-11-12 08:00,2008-11-20 17:00,,,,,PT_Normal,,,,,in0GNayu5kKNX+wS2FXjFA,,,,N,0,0
1282,83181,829,12251,912,1,0,N,N,N,CP_Drtn,TT_Task,DT_FixedDUR2,RV_OK,TK_NotStart,7122L68050,Single core wiring,2296,176,152,72,0,1128,1128,72,0,0,0,,,,2008-11-15 08:00,2008-11-24 17:00,,2008-10-20 08:00,2008-10-29 17:00,2008-10-20 08:00,2008-10-29 17:00,2008-10-20 08:00,2008-10-29 17:00,,,,,PT_Normal,,,,,kDIcX/fAcU2sxtNLQk5nkw,,,,N,0,0
1283,83182,829,12026,912,1,0,N,N,N,CP_Drtn,TT_Task,DT_FixedDUR2,RV_OK,TK_NotStart,7122L68100,DB enclosure,2296,56,16,64,0,416,416,64,0,0,0,,,,2008-11-03 08:00,2008-11-11 17:00,,2008-10-26 08:00,2008-11-03 17:00,2008-10-26 08:00,2008-11-03 17:00,2008-10-26 08:00,2008-11-03 17:00,,,,,PT_Normal,,,,,42EQTl0HFEC2Nje1cbWAXg,,,,N,0,0
1284,83183,829,12026,912,1,0,N,N,N,CP_Drtn,TT_Task,DT_FixedDUR2,RV_OK,TK_NotStart,7122L68150,LV feeder cables,2296,112,72,72,0,2606.4,2606.4,72,0,0,0,,,,2008-12-08 08:00,2008-12-17 17:00,,2008-11-22 08:00,2008-12-01 17:00,2008-11-22 08:00,2008-12-01 17:00,2008-11-22 08:00,2008-12-01 17:00,,,,,PT_Normal,,,,,HWWL8uInkE+m+vGluviTmQ,,,,N,0,0
1285,83184,829,12153,912,1,0,N,N,N,CP_Drtn,TT_Task,DT_FixedDUR2,RV_OK,TK_NotStart,7122L68250,DB-breakers assembly,2296,152,128,72,0,564.8,564.8,72,0,0,0,,,,2009-01-18 08:00,2009-01-27 17:00,,2008-12-27 08:00,2009-01-05 17:00,2008-12-27 08:00,2009-01-05 17:00,2008-12-27 08:00,2009-01-05 17:00,,,,,PT_Normal,,,,,WYUWTubWdUiThFpu7M19Vw,,,,N,0,0
1286,83185,829,12153,912,1,0,N,N,N,CP_Drtn,TT_Task,DT_FixedDUR2,RV_OK,TK_NotStart,7122L68300,SMDB,2296,240,0,48,0,1315.2,1315.2,48,0,0,0,,,,2009-02-18 08:00,2009-02-24 17:00,,2009-01-14 08:00,2009-01-20 17:00,2009-01-14 08:00,2009-01-20 17:00,2009-01-14 08:00,2009-01-20 17:00,,,,,PT_Normal,,,,,zfBNd+Njb0SQnodR5TK9lg,,,,N,0,0
1287,83186,829,12153,912,1,0,N,N,N,CP_Drtn,TT_Task,DT_FixedDUR2,RV_OK,TK_NotStart,7122L68350,Light Fittings,2296,144,120,120,0,1105.6,1105.6,120,0,0,0,,,,2009-01-11 08:00,2009-01-27 17:00,,2008-12-21 08:00,2009-01-06 17:00,2008-12-21 08:00,2009-01-06 17:00,2008-12-21 08:00,2009-01-06 17:00,,,,,PT_Normal,,,,,1yHipQVyh06FMRZHwK3UWA,,,,N,0,0
1288,83187,829,12153,912,1,0,N,N,N,CP_Drtn,TT_Task,DT_FixedDUR2,RV_OK,TK_NotStart,7122L68400,Lighting Control Panels,2296,272,96,64,0,275.2,275.2,64,0,0,0,,,,2009-02-23 08:00,2009-03-03 17:00,,2009-01-14 08:00,2009-01-22 17:00,2009-01-14 08:00,2009-01-22 17:00,2009-01-14 08:00,2009-01-22 17:00,,,,,PT_Normal,,,,,M7X2k3O6DkWeBKoNV1GNMQ,,,,N,0,0
1289,83188,829,12153,912,1,0,N,N,N,CP_Drtn,TT_Task,DT_FixedDUR2,RV_OK,TK_NotStart,7122L68600,Switches & sockets,2296,152,128,72,0,494.4,494.4,72,0,0,0,,,,2009-01-18 08:00,2009-01-27 17:00,,2008-12-27 08:00,2009-01-05 17:00,2008-12-27 08:00,2009-01-05 17:00,2008-12-27 08:00,2009-01-05 17:00,,,,,PT_Normal,,,,,FyJASAxsF06acwMFAmt1RA,,,,N,0,0
1290,83189,829,12155,912,1,0,N,N,N,CP_Drtn,TT_Task,DT_FixedDUR2,RV_OK,TK_NotStart,7122L70050,Central Battery cables,2296,144,120,64,0,345.6,345.6,64,0,0,0,,,,2008-11-16 08:00,2008-11-24 17:00,,2008-10-26 08:00,2008-11-03 17:00,2008-10-26 08:00,2008-11-03 17:00,2008-10-26 08:00,2008-11-03 17:00,,,,,PT_Normal,,,,,QF68Qq03qEiPY9f0JJpsUQ,,,,N,0,0
1291,83190,829,12088,912,1,0,N,N,N,CP_Drtn,TT_Task,DT_FixedDUR2,RV_OK,TK_NotStart,7122L70150,Emergency & exit light fittings,2296,368,0,48,0,188.8,188.8,48,0,0,0,,,,2009-02-25 08:00,2009-03-03 17:00,,2009-01-03 08:00,2009-01-08 17:00,2009-01-03 08:00,2009-01-08 17:00,2009-01-03 08:00,2009-01-08 17:00,,,,,PT_Normal,,,,,jkKevouZvUyyipFtIhg3XQ,,,,N,0,0
1292,83191,829,12258,912,1,0,N,N,N,CP_Drtn,TT_Task,DT_FixedDUR2,RV_OK,TK_NotStart,7122L72200,Intercom system cables,2296,64,40,48,0,576,576,48,0,0,0,,,,2008-11-30 08:00,2008-12-06 17:00,,2008-11-20 08:00,2008-11-26 17:00,2008-11-20 08:00,2008-11-26 17:00,2008-11-20 08:00,2008-11-26 17:00,,,,,PT_Normal,,,,,teOPV1S8SU6FAXaG9WX3bQ,,,,N,0,0
1293,83192,829,12259,912,1,0,N,N,N,CP_Drtn,TT_Task,DT_FixedDUR2,RV_OK,TK_NotStart,7122L72250,Intercom system equipments,2296,136,112,64,0,486.4,486.4,64,0,0,0,,,,2009-01-19 08:00,2009-01-27 17:00,,2008-12-30 08:00,2009-01-07 17:00,2008-12-30 08:00,2009-01-07 17:00,2008-12-30 08:00,2009-01-07 17:00,,,,,PT_Normal,,,,,EdmLH2rwE02upjY+MVRBrg,,,,N,0,0
1294,83193,829,12261,912,1,0,N,N,N,CP_Drtn,TT_Task,DT_FixedDUR2,RV_OK,TK_NotStart,7122L74050,Fire alarm cables,2296,144,120,64,0,380.8,380.8,64,0,0,0,,,,2008-11-16 08:00,2008-11-24 17:00,,2008-10-26 08:00,2008-11-03 17:00,2008-10-26 08:00,2008-11-03 17:00,2008-10-26 08:00,2008-11-03 17:00,,,,,PT_Normal,,,,,dJ3X9v/V90aKX27Ye1Ih+Q,,,,N,0,0
1295,83194,829,12262,912,1,0,N,N,N,CP_Drtn,TT_Task,DT_FixedDUR2,RV_OK,TK_NotStart,7122L74100,Fire alarm fittings,2296,288,0,80,0,132.8,132.8,80,0,0,0,,,,2009-02-15 08:00,2009-02-25 17:00,,2009-01-04 08:00,2009-01-14 17:00,2009-01-04 08:00,2009-01-14 17:00,2009-01-04 08:00,2009-01-14 17:00,,,,,PT_Normal,,,,,JV+d5U6jiU+VINo5CVWc6A,,,,N,0,0
1296,83195,829,12055,912,1,0,N,N,N,CP_Drtn,TT_Task,DT_FixedDUR2,RV_OK,TK_NotStart,7122L76050,Structured cabling,2296,80,40,64,0,345.6,345.6,64,0,0,0,,,,2008-11-30 08:00,2008-12-08 17:00,,2008-11-18 08:00,2008-11-26 17:00,2008-11-18 08:00,2008-11-26 17:00,2008-11-18 08:00,2008-11-26 17:00,,,,,PT_Normal,,,,,LPFUCk5E3U2mSUN5DnsNYw,,,,N,0,0
1297,83196,829,12056,912,1,0,N,N,N,CP_Drtn,TT_Task,DT_FixedDUR2,RV_OK,TK_NotStart,7122L76100,Consolidated pionts,2296,40,16,64,0,486.4,486.4,64,0,0,0,,,,2008-12-09 08:00,2008-12-17 17:00,,2008-12-03 08:00,2008-12-11 17:00,2008-12-03 08:00,2008-12-11 17:00,2008-12-03 08:00,2008-12-11 17:00,,,,,PT_Normal,,,,,CtdJKOxWDkqqAu1Wbp5+3Q,,,,N,0,0
1298,83197,829,11561,912,1,100,N,N,N,CP_Drtn,TT_Task,DT_FixedDUR2,RV_OK,TK_Complete,7122U12050,Columns & walls 2U to Roof - Part 1,2306,24,0,0,3823,0,3823,24,114913.84,114913.84,0,,2008-09-07 08:00,2008-09-09 17:00,2008-10-06 08:00,2008-10-05 17:00,,2008-10-02 08:00,2008-10-01 17:00,,,2008-09-07 08:00,2008-09-09 17:00,,,,,PT_Normal,,,,,9B7I3VxusUimJei14ALdEQ,,,,N,3823,114913.84
1299,83198,829,11561,912,1,100,N,N,N,CP_Drtn,TT_Task,DT_FixedDUR2,RV_OK,TK_Complete,7122U12051,Columns & walls 2U to Roof - Part 2,2306,24,0,0,3823,0,3823,24,114913.84,114913.84,0,,2008-09-15 08:00,2008-09-17 17:00,2008-10-06 08:00,2008-10-05 17:00,,2008-10-02 08:00,2008-10-01 17:00,,,2008-09-15 08:00,2008-09-17 17:00,,,,,PT_Normal,,,,,sHRDummZtk2JjGRXF75jtg,,,,N,3823,114913.84
1300,83199,829,11561,912,1,100,N,N,N,CP_Drtn,TT_Task,DT_FixedDUR2,RV_OK,TK_Complete,7122U12052,Columns & walls 2U to Roof - Middle Part,2306,24,0,0,8166.64,0,8166.64,24,246301.52,246301.52,0,,2008-09-13 08:00,2008-09-15 17:00,2008-10-06 08:00,2008-10-05 17:00,,2008-10-02 08:00,2008-10-01 17:00,,,2008-09-13 08:00,2008-09-15 17:00,,,,,PT_Normal,,,,,BjkM3Hn1WE2TunEqzQBF9w,,,,N,8166.64,246301.52
1301,83200,829,11561,912,1,100,N,N,N,CP_Drtn,TT_Task,DT_FixedDUR2,RV_OK,TK_Complete,7122U12200,Slab @ Roof level - Part 1,2306,24,0,0,4733.44,0,4733.44,56,173509.36,173509.36,0,,2008-09-15 08:00,2008-09-22 17:00,2008-10-06 08:00,2008-10-05 17:00,,2008-10-02 08:00,2008-10-01 17:00,,,2008-09-15 08:00,2008-09-22 17:00,,,,,PT_Normal,,,,,vVntt4DpJU6Ke8oTUcRtkQ,,,,N,4733.44,173509.36
1302,83201,829,11561,912,1,100,N,N,N,CP_Drtn,TT_Task,DT_FixedDUR2,RV_OK,TK_Complete,7122U12201,Slab @ Roof level - Part 2,2306,24,0,0,4733.44,0,4733.44,56,173509.36,173509.36,0,,2008-09-23 08:00,2008-09-30 17:00,2008-10-06 08:00,2008-10-05 17:00,,2008-10-02 08:00,2008-10-01 17:00,,,2008-09-23 08:00,2008-09-30 17:00,,,,,PT_Normal,,,,,j/cZqIZDy0SJM6Fw7WBiew,,,,N,4733.44,173509.36
1303,83202,829,11561,912,1,100,N,N,N,CP_Drtn,TT_Task,DT_FixedDUR2,RV_OK,TK_Complete,7122U12202,Slab @ Roof level - Middle Part,2306,24,0,0,6554.96,0,6554.96,56,241077.52,241077.52,0,,2008-09-21 08:00,2008-09-28 17:00,2008-10-06 08:00,2008-10-05 17:00,,2008-10-02 08:00,2008-10-01 17:00,,,2008-09-21 08:00,2008-09-28 17:00,,,,,PT_Normal,,,,,BMnFmYdaN0a40mAZGFHMeg,,,,N,6554.96,241077.52
1304,83203,829,11561,912,1,66.7,N,N,N,CP_Drtn,TT_Task,DT_FixedDUR2,RV_OK,TK_Active,7122U12250,Staircases 2U to Roof,2306,208,0,8,661.27,330.61,991.88,24,18457.6,12305.12,6152.48,,2008-09-30 08:00,,2008-11-02 08:00,2008-11-02 17:00,,2008-10-02 08:00,2008-10-02 17:00,2008-10-02 08:00,2008-10-02 17:00,2008-09-30 08:00,2008-10-02 17:00,,,,,PT_Normal,,,,,OD0VSXjvI0aGBtj9LlfDQA,,,,N,661.27,12305.12
1305,83204,829,10965,912,1,0,N,N,N,CP_Drtn,TT_Task,DT_FixedDUR2,RV_OK,TK_NotStart,7122U14050,Block works,2306,24,0,120,0,30085.5,30085.5,120,18440,0,18440,,,,2008-10-21 08:00,2008-11-06 17:00,,2008-10-18 08:00,2008-11-03 17:00,2008-10-18 08:00,2008-11-03 17:00,2008-10-18 08:00,2008-11-03 17:00,,,,,PT_Normal,,,,,YWF/n5fpD0O2HvqLEOXyAg,,,,N,0,0
1306,83205,829,10966,912,1,0,N,N,N,CP_Drtn,TT_Task,DT_FixedDUR2,RV_OK,TK_NotStart,7122U16050,Plaster works,2306,56,0,120,0,24375.8,24375.8,120,19024,0,19024,,,,2008-11-10 08:00,2008-11-26 17:00,,2008-11-02 08:00,2008-11-18 17:00,2008-11-02 08:00,2008-11-18 17:00,2008-11-02 08:00,2008-11-18 17:00,,,,,PT_Normal,,,,,l/CyEry0PkOyGlw2Xro7sg,,,,N,0,0
1307,83206,829,10966,912,1,0,N,N,N,CP_Drtn,TT_Task,DT_FixedDUR2,RV_OK,TK_NotStart,7122U16051,Plaste works behind tiles,2306,144,120,120,0,5424,5424,120,4160,0,4160,,,,2008-11-29 08:00,2008-12-15 17:00,,2008-11-08 08:00,2008-11-24 17:00,2008-11-08 08:00,2008-11-24 17:00,2008-11-08 08:00,2008-11-24 17:00,,,,,PT_Normal,,,,,ktwo1Yy5jEq4ftfcGw9atg,,,,N,0,0
1308,83207,829,11076,912,1,0,N,N,N,CP_Drtn,TT_Task,DT_FixedDUR2,RV_OK,TK_NotStart,7122U18050,Rendering works,2306,80,24,120,0,5683,5683,120,5000,0,5000,,,,2008-11-06 08:00,2008-11-23 17:00,,2008-10-26 08:00,2008-11-11 17:00,2008-10-26 08:00,2008-11-11 17:00,2008-10-26 08:00,2008-11-11 17:00,,,,,PT_Normal,,,,,MuTCEZqUdEytKHBCcTPaIQ,,,,N,0,0
1309,83208,829,11076,912,1,0,N,N,N,CP_Drtn,TT_Task,DT_FixedDUR2,RV_OK,TK_NotStart,7122U18100,Painting base coats,2306,56,0,120,0,26546.2,26546.2,120,24024,0,24024,,,,2008-11-18 08:00,2008-12-04 17:00,,2008-11-10 08:00,2008-11-26 17:00,2008-11-10 08:00,2008-11-26 17:00,2008-11-10 08:00,2008-11-26 17:00,,,,,PT_Normal,,,,,0p0xdYzGUkq5XVOoKoOQnA,,,,N,0,0
1310,83209,829,11076,912,1,0,N,N,N,CP_Drtn,TT_Task,DT_FixedDUR2,RV_OK,TK_NotStart,7122U18150,Painting 1st top coat for apartments,2306,96,0,72,0,17300.2,17300.2,72,16408,0,16408,,,,2009-01-19 08:00,2009-01-28 17:00,,2009-01-05 08:00,2009-01-14 17:00,2009-01-05 08:00,2009-01-14 17:00,2009-01-05 08:00,2009-01-14 17:00,,,,,PT_Normal,,,,,5FviEydPOEm8ZBStI+hStw,,,,N,0,0
1311,83210,829,11077,912,1,0,N,N,N,CP_Drtn,TT_Task,DT_FixedDUR2,RV_OK,TK_NotStart,7122U20050,Floor tiles for apartments-dry area,2306,120,0,120,0,9570,9570,120,7000,0,7000,,,,2008-12-07 08:00,2008-12-23 17:00,,2008-11-19 08:00,2008-12-06 17:00,2008-11-19 08:00,2008-12-06 17:00,2008-11-19 08:00,2008-12-06 17:00,,,,,PT_Normal,,,,,/SVzfI1KGE2iuS0FSu+2Iw,,,,N,0,0
1312,83211,829,11077,912,1,0,N,N,N,CP_Drtn,TT_Task,DT_FixedDUR2,RV_OK,TK_NotStart,7122U20070,Floor tiles for apartments-wet area,2306,24,0,120,0,3835.2,3835.2,120,2752,0,2752,,,,2008-12-25 08:00,2009-01-11 17:00,,2008-12-22 08:00,2009-01-07 17:00,2008-12-22 08:00,2009-01-07 17:00,2008-12-22 08:00,2009-01-07 17:00,,,,,PT_Normal,,,,,DNdrvVXnOE+SlZwfDeLA/A,,,,N,0,0
1313,83212,829,11077,912,1,0,N,N,N,CP_Drtn,TT_Task,DT_FixedDUR2,RV_OK,TK_NotStart,7122U20110,Wall tiles for apartments-wet area,2306,80,0,120,0,9066,9066,120,5964,0,5964,,,,2009-01-03 08:00,2009-01-19 17:00,,2008-12-22 08:00,2009-01-07 17:00,2008-12-22 08:00,2009-01-07 17:00,2008-12-22 08:00,2009-01-07 17:00,,,,,PT_Normal,,,,,2TuxHucSMUizowmOckoPKw,,,,N,0,0
1314,83213,829,10901,912,1,0,N,N,N,CP_Drtn,TT_Task,DT_FixedDUR2,RV_OK,TK_NotStart,7122U22150,W/P for for apartments,2306,104,0,120,0,2980,2980,120,2600,0,2600,,,,2008-11-19 08:00,2008-12-06 17:00,,2008-11-04 08:00,2008-11-20 17:00,2008-11-04 08:00,2008-11-20 17:00,2008-11-04 08:00,2008-11-20 17:00,,,,,PT_Normal,,,,,ctCPIn1oIUWcKGE/8PCuqQ,,,,N,0,0
1315,83214,829,11188,912,1,0,N,N,N,CP_Drtn,TT_Task,DT_FixedDUR2,RV_OK,TK_NotStart,7122U24050,Aluminium doors & windows,2306,144,80,120,0,1208,1208,120,272,0,272,,,,2008-12-18 08:00,2009-01-04 17:00,,2008-11-27 08:00,2008-12-14 17:00,2008-11-27 08:00,2008-12-14 17:00,2008-11-27 08:00,2008-12-14 17:00,,,,,PT_Normal,,,,,ESM7BQDOk0qoSmUeEmnmJA,,,,N,0,0
1316,83215,829,11188,912,1,0,N,N,N,CP_Drtn,TT_Task,DT_FixedDUR2,RV_OK,TK_NotStart,7122U24200,Balcony handrails,2306,64,40,120,0,2192,2192,120,1184,0,1184,,,,2009-01-11 08:00,2009-01-27 17:00,,2009-01-01 08:00,2009-01-18 17:00,2009-01-01 08:00,2009-01-18 17:00,2009-01-01 08:00,2009-01-18 17:00,,,,,PT_Normal,,,,,DnjVWuDKIkqZkDihYjXYPw,,,,N,0,0
1317,83216,829,11080,912,1,0,N,N,N,CP_Drtn,TT_Task,DT_FixedDUR2,RV_OK,TK_NotStart,7122U30050,Wooden doors,2306,56,0,176,0,1520,1520,176,384,0,384,,,,2008-12-30 08:00,2009-01-24 17:00,,2008-12-22 08:00,2009-01-15 17:00,2008-12-22 08:00,2009-01-15 17:00,2008-12-22 08:00,2009-01-15 17:00,,,,,PT_Normal,,,,,0FNS0h86Z0e/GCUvaAG2hw,,,,N,0,0
1318,83217,829,10972,912,1,0,N,N,N,CP_Drtn,TT_Task,DT_FixedDUR2,RV_OK,TK_NotStart,7122U32100,Vanity counters,2306,24,0,120,0,2232,2232,120,192,0,192,,,,2009-01-12 08:00,2009-01-28 17:00,,2009-01-08 08:00,2009-01-25 17:00,2009-01-08 08:00,2009-01-25 17:00,2009-01-08 08:00,2009-01-25 17:00,,,,,PT_Normal,,,,,EP61NbiXHUyyvq7WyFhTpw,,,,N,0,0
1319,83218,829,10972,912,1,0,N,N,N,CP_Drtn,TT_Task,DT_FixedDUR2,RV_OK,TK_NotStart,7122U32150,Wardrobes,2306,120,96,120,0,6168,6168,120,288,0,288,,,,2009-01-11 08:00,2009-01-27 17:00,,2008-12-24 08:00,2009-01-10 17:00,2008-12-24 08:00,2009-01-10 17:00,2008-12-24 08:00,2009-01-10 17:00,,,,,PT_Normal,,,,,eyjeXw7kNESN0KcfV192wA,,,,N,0,0
1320,83219,829,10973,912,1,0,N,N,N,CP_Drtn,TT_Task,DT_FixedDUR2,RV_OK,TK_NotStart,7122U34050,False ceiling works for apartments-dry area,2306,96,0,128,0,1493.12,1493.12,128,910.08,0,910.08,,,,2008-12-27 08:00,2009-01-13 17:00,,2008-12-13 08:00,2008-12-30 17:00,2008-12-13 08:00,2008-12-30 17:00,2008-12-13 08:00,2008-12-30 17:00,,,,,PT_Normal,,,,,eX2mtiHgvkWWmWMU3gVLeg,,,,N,0,0
1321,83220,829,10973,912,1,0,N,N,N,CP_Drtn,TT_Task,DT_FixedDUR2,RV_OK,TK_NotStart,7122U34070,False ceiling works for apartments-wet area,2306,24,0,128,0,658.88,658.88,128,353.92,0,353.92,,,,2008-12-16 08:00,2009-01-03 17:00,,2008-12-13 08:00,2008-12-30 17:00,2008-12-13 08:00,2008-12-30 17:00,2008-12-13 08:00,2008-12-30 17:00,,,,,PT_Normal,,,,,eEQw/pkmHk6wDA1qrKlBcQ,,,,N,0,0
1322,83221,829,11192,912,1,0,N,N,N,CP_Drtn,TT_Task,DT_FixedDUR2,RV_OK,TK_NotStart,7122U36050,Stone finishing top,2306,80,56,64,0,344,344,64,160,0,160,,,,2009-01-19 08:00,2009-01-27 17:00,,2009-01-07 08:00,2009-01-15 17:00,2009-01-07 08:00,2009-01-15 17:00,2009-01-07 08:00,2009-01-15 17:00,,,,,PT_Normal,,,,,MORs/mLB70Gc1Av14Wpu0A,,,,N,0,0
1323,83222,829,11192,912,1,0,N,N,N,CP_Drtn,TT_Task,DT_FixedDUR2,RV_OK,TK_NotStart,7122U36100,Thresholds,2306,56,32,64,0,520,520,64,304,0,304,,,,2009-01-19 08:00,2009-01-27 17:00,,2009-01-11 08:00,2009-01-19 17:00,2009-01-11 08:00,2009-01-19 17:00,2009-01-11 08:00,2009-01-19 17:00,,,,,PT_Normal,,,,,FCpenZLTo0aKzEhvpML90A,,,,N,0,0
1324,83223,829,10975,912,1,0,N,N,N,CP_Drtn,TT_Task,DT_FixedDUR2,RV_OK,TK_NotStart,7122U44050,Sub-frames,2306,56,0,120,0,888,888,120,384,0,384,,,,2008-11-04 08:00,2008-11-20 17:00,,2008-10-27 08:00,2008-11-12 17:00,2008-10-27 08:00,2008-11-12 17:00,2008-10-27 08:00,2008-11-12 17:00,,,,,PT_Normal,,,,,RItjQwClS0aHcCm6qTcrwQ,,,,N,0,0
1325,83224,829,12268,912,1,100,N,N,N,CP_Drtn,TT_Task,DT_FixedDUR2,RV_OK,TK_Complete,7122U50100,MEP skeleton embedded provisions,2296,24,0,0,512,0,512,72,,,0,,2008-09-07 08:00,2008-09-16 17:00,2008-10-06 08:00,2008-10-05 17:00,,2008-10-02 08:00,2008-10-01 17:00,,,2008-09-07 08:00,2008-09-16 17:00,,,,,PT_Normal,,,,,tMi6lnEk80mG5R7fleFxiw,,,,N,512,0
1326,83225,829,12102,912,1,0,N,N,N,CP_Drtn,TT_Task,DT_FixedDUR2,RV_OK,TK_NotStart,7122U52050,A/C duct works,2296,136,112,160,0,831,831,160,0,0,0,,,,2008-11-15 08:00,2008-12-07 17:00,,2008-10-26 08:00,2008-11-17 17:00,2008-10-26 08:00,2008-11-17 17:00,2008-10-26 08:00,2008-11-17 17:00,,,,,PT_Normal,,,,,sFU2Kz5k5EmI5UBlMYSo+w,,,,N,0,0
1327,83226,829,12102,912,1,0,N,N,N,CP_Drtn,TT_Task,DT_FixedDUR2,RV_OK,TK_NotStart,7122U52100,Chilled water pipe works,2296,88,64,72,0,787,787,72,0,0,0,,,,2008-11-18 08:00,2008-11-27 17:00,,2008-11-05 08:00,2008-11-15 17:00,2008-11-05 08:00,2008-11-15 17:00,2008-11-05 08:00,2008-11-15 17:00,,,,,PT_Normal,,,,,CYxV8hCZokaKSHFFj7i+cg,,,,N,0,0
1328,83227,829,12171,912,1,0,N,N,N,CP_Drtn,TT_Task,DT_FixedDUR2,RV_OK,TK_NotStart,7122U52150,FCU's hanging,2296,144,120,64,0,935.2,935.2,64,0,0,0,,,,2008-11-25 08:00,2008-12-03 17:00,,2008-11-04 08:00,2008-11-12 17:00,2008-11-04 08:00,2008-11-12 17:00,2008-11-04 08:00,2008-11-12 17:00,,,,,PT_Normal,,,,,9Kr3XRFDv0qr9A4/9+nzNw,,,,N,0,0
1329,83228,829,12171,912,1,0,N,N,N,CP_Drtn,TT_Task,DT_FixedDUR2,RV_OK,TK_NotStart,7122U52300,FCU's assembly & duct connections,2296,24,0,80,0,951.2,951.2,80,0,0,0,,,,2008-12-04 08:00,2008-12-15 17:00,,2008-12-01 08:00,2008-12-11 17:00,2008-12-01 08:00,2008-12-11 17:00,2008-12-01 08:00,2008-12-11 17:00,,,,,PT_Normal,,,,,uxFUmiexAUOjGWswbsHrpQ,,,,N,0,0
1330,83229,829,12171,912,1,0,N,N,N,CP_Drtn,TT_Task,DT_FixedDUR2,RV_OK,TK_NotStart,7122U52350,Grills & diffusers,2296,128,24,64,0,856,856,64,0,0,0,,,,2009-01-19 08:00,2009-01-27 17:00,,2008-12-31 08:00,2009-01-08 17:00,2008-12-31 08:00,2009-01-08 17:00,2008-12-31 08:00,2009-01-08 17:00,,,,,PT_Normal,,,,,g9htObZo4USzJl6XA7Ixfw,,,,N,0,0
1331,83230,829,12102,912,1,0,N,N,N,CP_Drtn,TT_Task,DT_FixedDUR2,RV_OK,TK_NotStart,7122U52550,A/C duct risers,2296,24,0,64,0,1626,1626,64,0,0,0,,,,2008-11-19 08:00,2008-11-27 17:00,,2008-11-16 08:00,2008-11-24 17:00,2008-11-16 08:00,2008-11-24 17:00,2008-11-16 08:00,2008-11-24 17:00,,,,,PT_Normal,,,,,dvZeJ+E+QUiEJzajHFQ2XA,,,,N,0,0
1332,83231,829,12105,912,1,0,N,N,N,CP_Drtn,TT_Task,DT_FixedDUR2,RV_OK,TK_NotStart,7122U54050,Chasing & Pex pipe works,2296,152,0,120,0,395,395,120,0,0,0,,,,2008-11-17 08:00,2008-12-03 17:00,,2008-10-26 08:00,2008-11-11 17:00,2008-10-26 08:00,2008-11-11 17:00,2008-10-26 08:00,2008-11-11 17:00,,,,,PT_Normal,,,,,jbny+yvquUyD122qcPIqGw,,,,N,0,0
1333,83232,829,12106,912,1,0,N,N,N,CP_Drtn,TT_Task,DT_FixedDUR2,RV_OK,TK_NotStart,7122U54250,Bathtubs,2296,232,0,80,0,273.6,273.6,80,0,0,0,,,,2008-12-14 08:00,2008-12-24 17:00,,2008-11-10 08:00,2008-11-20 17:00,2008-11-10 08:00,2008-11-20 17:00,2008-11-10 08:00,2008-11-20 17:00,,,,,PT_Normal,,,,,OswcWN1VK0WB9OBRNAvbow,,,,N,0,0
1334,83233,829,12106,912,1,0,N,N,N,CP_Drtn,TT_Task,DT_FixedDUR2,RV_OK,TK_NotStart,7122U54300,Water heater,2296,128,0,64,0,310.4,310.4,64,0,0,0,,,,2008-12-01 08:00,2008-12-09 17:00,,2008-11-12 08:00,2008-11-20 17:00,2008-11-12 08:00,2008-11-20 17:00,2008-11-12 08:00,2008-11-20 17:00,,,,,PT_Normal,,,,,buffmaxS5E6aJK/g2NoJMg,,,,N,0,0
1335,83234,829,12106,912,1,0,N,N,N,CP_Drtn,TT_Task,DT_FixedDUR2,RV_OK,TK_NotStart,7122U54350,Over head pipe assembly & vlave connections,2296,160,136,72,0,237,237,72,0,0,0,,,,2008-12-06 08:00,2008-12-15 17:00,,2008-11-12 08:00,2008-11-22 17:00,2008-11-12 08:00,2008-11-22 17:00,2008-11-12 08:00,2008-11-22 17:00,,,,,PT_Normal,,,,,+hV2/1ofVky8G5RJTv1ldw,,,,N,0,0
1336,83235,829,12275,912,1,0,N,N,N,CP_Drtn,TT_Task,DT_FixedDUR2,RV_OK,TK_NotStart,7122U54400,Sanitary fixures,2296,80,0,80,0,476,476,80,0,0,0,,,,2009-01-17 08:00,2009-01-27 17:00,,2009-01-05 08:00,2009-01-15 17:00,2009-01-05 08:00,2009-01-15 17:00,2009-01-05 08:00,2009-01-15 17:00,,,,,PT_Normal,,,,,hUzkyfi8OkCzjMHP95ClMA,,,,N,0,0
1337,83236,829,12275,912,1,0,N,N,N,CP_Drtn,TT_Task,DT_FixedDUR2,RV_OK,TK_NotStart,7122U54450,Mirrors,2296,24,0,72,0,138,138,72,0,0,0,,,,2009-01-18 08:00,2009-01-27 17:00,,2009-01-14 08:00,2009-01-24 17:00,2009-01-14 08:00,2009-01-24 17:00,2009-01-14 08:00,2009-01-24 17:00,,,,,PT_Normal,,,,,FbHmB/g+iUqFSMip/paSFw,,,,N,0,0
1338,83237,829,12106,912,1,0,N,N,N,CP_Drtn,TT_Task,DT_FixedDUR2,RV_OK,TK_NotStart,7122U54500,Concealed Flushing Cistern,2296,232,208,80,0,212,212,80,0,0,0,,,,2008-12-14 08:00,2008-12-24 17:00,,2008-11-10 08:00,2008-11-20 17:00,2008-11-10 08:00,2008-11-20 17:00,2008-11-10 08:00,2008-11-20 17:00,,,,,PT_Normal,,,,,bc/jHGHbvkuNZ+/tbte8HQ,,,,N,0,0
1339,83238,829,12277,912,1,0,N,N,N,CP_Drtn,TT_Task,DT_FixedDUR2,RV_OK,TK_NotStart,7122U56050,Chasing and installation of drainage pipes,2296,152,0,80,0,245,245,80,0,0,0,,,,2008-11-17 08:00,2008-11-27 17:00,,2008-10-26 08:00,2008-11-05 17:00,2008-10-26 08:00,2008-11-05 17:00,2008-10-26 08:00,2008-11-05 17:00,,,,,PT_Normal,,,,,lhbacI8kWEe4W+JAHGgy2w,,,,N,0,0
1340,83239,829,12277,912,1,0,N,N,N,CP_Drtn,TT_Task,DT_FixedDUR2,RV_OK,TK_NotStart,7122U56100,Drainage riser pipes,2296,208,72,64,0,284,284,64,0,0,0,,,,2008-11-25 08:00,2008-12-03 17:00,,2008-10-26 08:00,2008-11-03 17:00,2008-10-26 08:00,2008-11-03 17:00,2008-10-26 08:00,2008-11-03 17:00,,,,,PT_Normal,,,,,kYUNUfM3f0KA0pEHfrYmzw,,,,N,0,0
1341,83240,829,12278,912,1,0,N,N,N,CP_Drtn,TT_Task,DT_FixedDUR2,RV_OK,TK_NotStart,7122U56150,Over head drainage pipe works,2296,40,16,64,0,257.6,257.6,64,0,0,0,,,,2008-12-07 08:00,2008-12-15 17:00,,2008-12-01 08:00,2008-12-09 17:00,2008-12-01 08:00,2008-12-09 17:00,2008-12-01 08:00,2008-12-09 17:00,,,,,PT_Normal,,,,,OSrad+KqA0mPpspEmaGPRg,,,,N,0,0
1342,83241,829,12489,912,1,0,N,N,N,CP_Drtn,TT_Task,DT_FixedDUR2,RV_OK,TK_NotStart,7122U58050,Fire fighting pipe works,2296,160,136,72,0,292,292,72,0,0,0,,,,2008-11-27 08:00,2008-12-07 17:00,,2008-11-04 08:00,2008-11-13 17:00,2008-11-04 08:00,2008-11-13 17:00,2008-11-04 08:00,2008-11-13 17:00,,,,,PT_Normal,,,,,4hAMwhmmK0eGcnAJ2LY5KA,,,,N,0,0
1343,83242,829,12081,912,1,0,N,N,N,CP_Drtn,TT_Task,DT_FixedDUR2,RV_OK,TK_NotStart,7122U58250,Sprinkler heads,2296,128,24,64,0,394,394,64,0,0,0,,,,2009-01-19 08:00,2009-01-27 17:00,,2008-12-31 08:00,2009-01-08 17:00,2008-12-31 08:00,2009-01-08 17:00,2008-12-31 08:00,2009-01-08 17:00,,,,,PT_Normal,,,,,y1MxMiW4dEK765KwaT9yLg,,,,N,0,0
1344,83243,829,12283,912,1,0,N,N,N,CP_Drtn,TT_Task,DT_FixedDUR2,RV_OK,TK_NotStart,7122U66050,Chasing and installation of conduits,2296,56,0,120,0,1528,1528,120,0,0,0,,,,2008-11-04 08:00,2008-11-20 17:00,,2008-10-27 08:00,2008-11-12 17:00,2008-10-27 08:00,2008-11-12 17:00,2008-10-27 08:00,2008-11-12 17:00,,,,,PT_Normal,,,,,oarYIhfrR0KA0lhcBea8fg,,,,N,0,0
1345,83244,829,12199,912,1,0,N,N,N,CP_Drtn,TT_Task,DT_FixedDUR2,RV_OK,TK_NotStart,7122U68050,Single core wiring,2296,176,152,72,0,1128,1128,72,0,0,0,,,,2008-11-24 08:00,2008-12-03 17:00,,2008-10-29 08:00,2008-11-08 17:00,2008-10-29 08:00,2008-11-08 17:00,2008-10-29 08:00,2008-11-08 17:00,,,,,PT_Normal,,,,,Fq3VxK8Q7kSbrmKv1XjbqQ,,,,N,0,0
1346,83245,829,12118,912,1,0,N,N,N,CP_Drtn,TT_Task,DT_FixedDUR2,RV_OK,TK_NotStart,7122U68350,Light Fittings,2296,128,104,120,0,1035.2,1035.2,120,0,0,0,,,,2009-01-11 08:00,2009-01-27 17:00,,2008-12-23 08:00,2009-01-08 17:00,2008-12-23 08:00,2009-01-08 17:00,2008-12-23 08:00,2009-01-08 17:00,,,,,PT_Normal,,,,,r0DCI3xq/k26xcg/hWENTA,,,,N,0,0
1347,83246,829,12118,912,1,0,N,N,N,CP_Drtn,TT_Task,DT_FixedDUR2,RV_OK,TK_NotStart,7122U68600,Switches & sockets,2296,96,72,64,0,486.4,486.4,64,0,0,0,,,,2009-01-19 08:00,2009-01-27 17:00,,2009-01-05 08:00,2009-01-13 17:00,2009-01-05 08:00,2009-01-13 17:00,2009-01-05 08:00,2009-01-13 17:00,,,,,PT_Normal,,,,,MqAaWLJujUm1TtzOCqye2w,,,,N,0,0
1348,83247,829,12079,912,1,0,N,N,N,CP_Drtn,TT_Task,DT_FixedDUR2,RV_OK,TK_NotStart,7122U74050,Fire alarm cables,2296,144,120,64,0,380.8,380.8,64,0,0,0,,,,2008-11-25 08:00,2008-12-03 17:00,,2008-11-04 08:00,2008-11-12 17:00,2008-11-04 08:00,2008-11-12 17:00,2008-11-04 08:00,2008-11-12 17:00,,,,,PT_Normal,,,,,YDjmorZE6Ey8yh8g8VCAUA,,,,N,0,0
1349,83248,829,12189,912,1,0,N,N,N,CP_Drtn,TT_Task,DT_FixedDUR2,RV_OK,TK_NotStart,7122U74100,Fire alarm fittings,2296,152,64,64,0,116.8,116.8,64,0,0,0,,,,2009-01-19 08:00,2009-01-27 17:00,,2008-12-28 08:00,2009-01-05 17:00,2008-12-28 08:00,2009-01-05 17:00,2008-12-28 08:00,2009-01-05 17:00,,,,,PT_Normal,,,,,F0xk6XZOa0if5RF/S5ZaqA,,,,N,0,0
1350,83249,829,12064,912,1,0,N,N,N,CP_Drtn,TT_Task,DT_FixedDUR2,RV_OK,TK_NotStart,7122U76050,Structured cabling,2296,40,0,64,0,345.6,345.6,64,0,0,0,,,,2008-11-30 08:00,2008-12-08 17:00,,2008-11-24 08:00,2008-12-02 17:00,2008-11-24 08:00,2008-12-02 17:00,2008-11-24 08:00,2008-12-02 17:00,,,,,PT_Normal,,,,,zKWB7JiTY0KhA5n3orgbjg,,,,N,0,0
1351,83250,829,10796,912,1,0,N,N,N,CP_Drtn,TT_Task,DT_FixedDUR2,RV_OK,TK_NotStart,7129946000,Testing & commissioning of Elevators,2296,448,160,120,0,320,320,120,0,0,0,,,,2009-03-08 08:00,2009-03-24 17:00,,2009-01-01 08:00,2009-01-18 17:00,2009-01-01 08:00,2009-01-18 17:00,2009-01-01 08:00,2009-01-18 17:00,,,,,PT_Normal,,,,,RvqcsLn230+BfoBv2En+lA,,,,N,0,0
1352,83251,829,10796,912,1,0,N,N,N,CP_Drtn,TT_Task,DT_FixedDUR2,RV_OK,TK_NotStart,7129952000,Testing & commissioning of A/C system,2296,304,16,200,0,1400,1400,200,0,0,0,,,,2009-02-26 08:00,2009-03-26 17:00,,2009-01-13 08:00,2009-02-10 17:00,2009-01-13 08:00,2009-02-10 17:00,2009-01-13 08:00,2009-02-10 17:00,,,,,PT_Normal,,,,,Bny528SMoEGxjoci5C1hoA,,,,N,0,0
1353,83252,829,10796,912,1,0,N,N,N,CP_Drtn,TT_Task,DT_FixedDUR2,RV_OK,TK_NotStart,7129954000,Testing & commissioning of water supply system,2296,296,8,200,0,700,700,200,0,0,0,,,,2009-03-01 08:00,2009-03-29 17:00,,2009-01-17 08:00,2009-02-14 17:00,2009-01-17 08:00,2009-02-14 17:00,2009-01-17 08:00,2009-02-14 17:00,,,,,PT_Normal,,,,,xWmdmJu/+UqJL1wseUmniA,,,,N,0,0
1354,83253,829,10796,912,1,0,N,N,N,CP_Drtn,TT_Task,DT_FixedDUR2,RV_OK,TK_NotStart,7129956000,Testing & commissioning of drainage system,2296,296,8,200,0,1000,1000,200,0,0,0,,,,2009-03-01 08:00,2009-03-29 17:00,,2009-01-17 08:00,2009-02-14 17:00,2009-01-17 08:00,2009-02-14 17:00,2009-01-17 08:00,2009-02-14 17:00,,,,,PT_Normal,,,,,NYI6hQTuGkuMa8v4PSJRLg,,,,N,0,0
1355,83254,829,10796,912,1,0,N,N,N,CP_Drtn,TT_Task,DT_FixedDUR2,RV_OK,TK_NotStart,7129958000,Testing & commissioning of Fire Fighting system,2296,304,16,200,0,300,300,200,0,0,0,,,,2009-02-26 08:00,2009-03-26 17:00,,2009-01-13 08:00,2009-02-10 17:00,2009-01-13 08:00,2009-02-10 17:00,2009-01-13 08:00,2009-02-10 17:00,,,,,PT_Normal,,,,,TOpcnNH1WkmNfXFCW8PCgg,,,,N,0,0
1356,83255,829,10796,912,1,0,N,N,N,CP_Drtn,TT_Task,DT_FixedDUR2,RV_OK,TK_NotStart,7129960000,Testing & commissioning of LPG system,2296,480,480,120,0,420,420,120,0,0,0,,,,2009-03-15 08:00,2009-03-31 17:00,,2009-01-04 08:00,2009-01-20 17:00,2009-01-04 08:00,2009-01-20 17:00,2009-01-04 08:00,2009-01-20 17:00,,,,,PT_Normal,,,,,/p7vqNgoLEe16GArQvXHBw,,,,N,0,0
1357,83256,829,10796,912,1,0,N,N,N,CP_Drtn,TT_Task,DT_FixedDUR2,RV_OK,TK_NotStart,7129962000,Testing & commissioning of BMS system,2296,288,288,48,0,248,248,48,0,0,0,,,,2009-03-25 08:00,2009-03-31 17:00,,2009-02-11 08:00,2009-02-17 17:00,2009-02-11 08:00,2009-02-17 17:00,2009-02-11 08:00,2009-02-17 17:00,,,,,PT_Normal,,,,,GdVxvGIRe0OPTM+jtOOoDQ,,,,N,0,0
1358,83257,829,10796,912,0,0,N,N,N,CP_Drtn,TT_Mile,DT_FixedDUR2,RV_OK,TK_NotStart,7129968000,Power ready for testing & commissioning,2296,424,0,0,0,0,0,0,0,0,0,,,,2009-02-26 08:00,2009-02-25 17:00,,2008-12-27 08:00,2008-12-25 17:00,2008-12-27 08:00,2008-12-27 08:00,2008-12-27 08:00,2008-12-27 08:00,,,,,PT_Normal,,,,,CJLYZhUIR0WfFblueRdq3Q,,,,N,0,0
1359,83258,829,10796,912,1,0,N,N,N,CP_Drtn,TT_Task,DT_FixedDUR2,RV_OK,TK_NotStart,7129968002,Testing & commissioning of Power & Lighting,2296,144,144,120,0,820,820,120,0,0,0,,,,2009-03-15 08:00,2009-03-31 17:00,,2009-02-22 08:00,2009-03-10 17:00,2009-02-22 08:00,2009-03-10 17:00,2009-02-22 08:00,2009-03-10 17:00,,,,,PT_Normal,,,,,XXxJf1JDnkC7FlnuRDbiwg,,,,N,0,0
1360,83259,829,10796,912,1,0,N,N,N,CP_Drtn,TT_Task,DT_FixedDUR2,RV_OK,TK_NotStart,7129970000,Testing & commissioning of Central Battery syst.,2296,424,136,120,0,420,420,120,0,0,0,,,,2009-03-12 08:00,2009-03-29 17:00,,2009-01-10 08:00,2009-01-26 17:00,2009-01-10 08:00,2009-01-26 17:00,2009-01-10 08:00,2009-01-26 17:00,,,,,PT_Normal,,,,,I0K8wt0/jUegffWuelkQdA,,,,N,0,0
1361,83260,829,10796,912,1,0,N,N,N,CP_Drtn,TT_Task,DT_FixedDUR2,RV_OK,TK_NotStart,7129972000,Testing & commissioning of security systems,2296,608,608,48,0,248,248,48,0,0,0,,,,2009-03-25 08:00,2009-03-31 17:00,,2008-12-27 08:00,2009-01-01 17:00,2008-12-27 08:00,2009-01-01 17:00,2008-12-27 08:00,2009-01-01 17:00,,,,,PT_Normal,,,,,c0X8jHb4iEuYOTQ65SYkNw,,,,N,0,0
1362,83261,829,10796,912,1,0,N,N,N,CP_Drtn,TT_Task,DT_FixedDUR2,RV_OK,TK_NotStart,7129974000,Testing & commissioning of Fire Alarm system,2296,288,0,200,0,600,600,200,0,0,0,,,,2009-02-26 08:00,2009-03-26 17:00,,2009-01-15 08:00,2009-02-12 17:00,2009-01-15 08:00,2009-02-12 17:00,2009-01-15 08:00,2009-02-12 17:00,,,,,PT_Normal,,,,,qfG4pismMU+re94SshfWtQ,,,,N,0,0
1363,83262,829,10796,912,1,0,N,N,N,CP_Drtn,TT_Task,DT_FixedDUR2,RV_OK,TK_NotStart,7129976000,Testing & commissioning of Tel & Data system,2296,416,416,120,0,320,320,120,0,0,0,,,,2009-03-15 08:00,2009-03-31 17:00,,2009-01-13 08:00,2009-01-29 17:00,2009-01-13 08:00,2009-01-29 17:00,2009-01-13 08:00,2009-01-29 17:00,,,,,PT_Normal,,,,,V0znxOALXkK9dUkdE5mfRw,,,,N,0,0
1364,83263,829,10882,912,1,0,N,N,N,CP_Drtn,TT_Task,DT_FixedDUR2,RV_OK,TK_NotStart,712EV16100,External plaster works,2306,144,0,160,0,101092,101092,160,77640,0,77640,,,,2008-11-17 08:00,2008-12-09 17:00,,2008-10-27 08:00,2008-11-18 17:00,2008-10-27 08:00,2008-11-18 17:00,2008-10-27 08:00,2008-11-18 17:00,,,,,PT_Normal,,,,,J20bWdo+qk2xuQOF1w6ifg,,,,N,0,0
1365,83264,829,11101,912,1,0,N,N,N,CP_Drtn,TT_Task,DT_FixedDUR2,RV_OK,TK_NotStart,712EV18100,Painting base coats,2306,144,0,160,0,85564,85564,160,77640,0,77640,,,,2008-12-10 08:00,2009-01-01 17:00,,2008-11-19 08:00,2008-12-11 17:00,2008-11-19 08:00,2008-12-11 17:00,2008-11-19 08:00,2008-12-11 17:00,,,,,PT_Normal,,,,,jrBVinQyjUuflpUoM0HQpg,,,,N,0,0
1366,83265,829,11101,912,1,0,N,N,N,CP_Drtn,TT_Task,DT_FixedDUR2,RV_OK,TK_NotStart,712EV18150,Painting 1st top coat,2306,144,0,160,0,81682,81682,160,77640,0,77640,,,,2009-01-14 08:00,2009-02-05 17:00,,2008-12-24 08:00,2009-01-15 17:00,2008-12-24 08:00,2009-01-15 17:00,2008-12-24 08:00,2009-01-15 17:00,,,,,PT_Normal,,,,,JlFQLshjmkWdbm1SmWapxQ,,,,N,0,0
1367,83266,829,11101,912,1,0,N,N,N,CP_Drtn,TT_Task,DT_FixedDUR2,RV_OK,TK_NotStart,712EV18200,Painting final top coat,2306,144,0,160,0,81682,81682,160,77640,0,77640,,,,2009-02-18 08:00,2009-03-12 17:00,,2009-01-28 08:00,2009-02-19 17:00,2009-01-28 08:00,2009-02-19 17:00,2009-01-28 08:00,2009-02-19 17:00,,,,,PT_Normal,,,,,R+pLSlfLR0a8tcH8Jmypgw,,,,N,0,0
1368,83267,829,11102,912,1,0,N,N,N,CP_Drtn,TT_Task,DT_FixedDUR2,RV_OK,TK_NotStart,712EV28200,Pergola & canopy structures,2306,144,0,160,0,4112,4112,160,152,0,152,,,,2009-01-26 08:00,2009-02-17 17:00,,2009-01-05 08:00,2009-01-27 17:00,2009-01-05 08:00,2009-01-27 17:00,2009-01-05 08:00,2009-01-27 17:00,,,,,PT_Normal,,,,,ruPf2HvlvUaEMSgl/W3ojA,,,,N,0,0
1369,83268,829,11102,912,1,0,N,N,N,CP_Drtn,TT_Task,DT_FixedDUR2,RV_OK,TK_NotStart,712EV28250,Brackets for pergola & canopy structures,2306,144,0,160,0,2592,2592,160,152,0,152,,,,2009-01-03 08:00,2009-01-25 17:00,,2008-12-13 08:00,2009-01-04 17:00,2008-12-13 08:00,2009-01-04 17:00,2008-12-13 08:00,2009-01-04 17:00,,,,,PT_Normal,,,,,F0yy6g4kBUaCSoWILojh7A,,,,N,0,0
1370,83269,829,12511,912,1,0,N,N,N,CP_Drtn,TT_Task,DT_FixedDUR2,RV_OK,TK_NotStart,712EV68350,Aviation Light Fittings,2296,144,0,72,0,402,402,72,0,0,0,,,,2009-02-26 08:00,2009-03-08 17:00,,2009-02-05 08:00,2009-02-15 17:00,2009-02-05 08:00,2009-02-15 17:00,2009-02-05 08:00,2009-02-15 17:00,,,,,PT_Normal,,,,,xU/7LP/OWkeWk1KYKtQmLA,,,,N,0,0
1371,83270,829,10841,912,1,0,N,N,N,CP_Drtn,TT_Task,DT_FixedDUR2,RV_OK,TK_NotStart,712GL00000,Pre-Snagging & Disnagging for lofts,2296,24,0,120,0,420,420,120,0,0,0,,,,2009-02-15 08:00,2009-03-03 17:00,,2009-02-11 08:00,2009-02-28 17:00,2009-02-11 08:00,2009-02-28 17:00,2009-02-11 08:00,2009-02-28 17:00,,,,,PT_Normal,,,,,fH/PTxB1q0ek9UXcDQxwLw,,,,N,0,0
1372,83271,829,10841,912,1,0,N,N,N,CP_Drtn,TT_Task,DT_FixedDUR2,RV_OK,TK_NotStart,712GL00002,Pre-Snagging & Disnagging for corrid & Srv rooms,2296,104,0,64,0,214,214,64,0,0,0,,,,2009-03-18 08:00,2009-03-26 17:00,,2009-03-03 08:00,2009-03-11 17:00,2009-03-03 08:00,2009-03-11 17:00,2009-03-03 08:00,2009-03-11 17:00,,,,,PT_Normal,,,,,lfXlmoPEi0eHD+FgqcUGZA,,,,N,0,0
1373,83272,829,11248,912,1,100,N,N,N,CP_Drtn,TT_Task,DT_FixedDUR2,RV_OK,TK_Complete,712GL12050,Columns & walls GL to GU - Part 1,2306,24,0,0,5264.24,0,5264.24,48,157672.56,157672.56,0,,2008-06-15 08:00,2008-06-21 17:00,2008-10-06 08:00,2008-10-05 17:00,,2008-10-02 08:00,2008-10-01 17:00,,,2008-06-15 08:00,2008-06-21 17:00,,,,,PT_Normal,,,,,d6l5NpMick+0GtAFoM3iBA,,,,N,5264.24,157672.56
1374,83273,829,11248,912,1,100,N,N,N,CP_Drtn,TT_Task,DT_FixedDUR2,RV_OK,TK_Complete,712GL12051,Columns & walls GL to GU - Part 2,2306,24,0,0,5264.24,0,5264.24,48,157672.56,157672.56,0,,2008-06-22 08:00,2008-06-28 17:00,2008-10-06 08:00,2008-10-05 17:00,,2008-10-02 08:00,2008-10-01 17:00,,,2008-06-22 08:00,2008-06-28 17:00,,,,,PT_Normal,,,,,Kf2n63TbYEaNXr4VVS0PBw,,,,N,5264.24,157672.56
1375,83274,829,11248,912,1,100,N,N,N,CP_Drtn,TT_Task,DT_FixedDUR2,RV_OK,TK_Complete,712GL12052,Columns & walls GL to GU - Middle Part,2306,24,0,0,8034.91,0,8034.91,48,241424.4,241424.4,0,,2008-06-21 08:00,2008-06-26 17:00,2008-10-06 08:00,2008-10-05 17:00,,2008-10-02 08:00,2008-10-01 17:00,,,2008-06-21 08:00,2008-06-26 17:00,,,,,PT_Normal,,,,,DWZ16+d/UEuN50wn401emw,,,,N,8034.91,241424.4
1376,83275,829,11248,912,1,100,N,N,N,CP_Drtn,TT_Task,DT_FixedDUR2,RV_OK,TK_Complete,712GL12200,Slab @ GU level - Part 1,2306,24,0,0,4104.78,0,4104.78,64,149880.72,149880.72,0,,2008-06-22 08:00,2008-06-30 17:00,2008-10-06 08:00,2008-10-05 17:00,,2008-10-02 08:00,2008-10-01 17:00,,,2008-06-22 08:00,2008-06-30 17:00,,,,,PT_Normal,,,,,QfV8RjoNA0CmhEjzOmY+pw,,,,N,4104.78,149880.72
1377,83276,829,11248,912,1,100,N,N,N,CP_Drtn,TT_Task,DT_FixedDUR2,RV_OK,TK_Complete,712GL12201,Slab @ GU level - Part 2,2306,24,0,0,4098.76,0,4098.76,64,149570.48,149570.48,0,,2008-07-01 08:00,2008-07-09 17:00,2008-10-06 08:00,2008-10-05 17:00,,2008-10-02 08:00,2008-10-01 17:00,,,2008-07-01 08:00,2008-07-09 17:00,,,,,PT_Normal,,,,,HDEpva8V6kaIkjkTZutXBg,,,,N,4098.76,149570.48
1378,83277,829,11248,912,1,100,N,N,N,CP_Drtn,TT_Task,DT_FixedDUR2,RV_OK,TK_Complete,712GL12202,Slab @ GU level - Middle Part,2306,24,0,0,5907.6,0,5907.6,64,216622.72,216622.72,0,,2008-06-30 08:00,2008-07-08 17:00,2008-10-06 08:00,2008-10-05 17:00,,2008-10-02 08:00,2008-10-01 17:00,,,2008-06-30 08:00,2008-07-08 17:00,,,,,PT_Normal,,,,,4IOGafEUakGk6O39Q5MExA,,,,N,5907.6,216622.72
1379,83278,829,11248,912,1,100,N,N,N,CP_Drtn,TT_Task,DT_FixedDUR2,RV_OK,TK_Complete,712GL12250,Staircases GL to GU,2306,208,0,0,999.88,0,999.88,32,18457.6,18457.6,0,,2008-07-10 08:00,2008-07-14 17:00,2008-11-02 08:00,2008-11-01 17:00,,2008-10-02 08:00,2008-10-01 17:00,,,2008-07-10 08:00,2008-07-14 17:00,,,,,PT_Normal,,,,,b7UxBl8dFU+HeMyVsoNK/Q,,,,N,999.88,18457.6
1380,83279,829,10907,912,1,100,N,N,N,CP_Drtn,TT_Task,DT_FixedDUR2,RV_OK,TK_Complete,712GL14050,Block works,2306,168,0,0,59160,0,66360,120,23040,30240,0,,2008-07-30 08:00,2008-08-17 17:00,2008-10-27 08:00,2008-10-26 17:00,,2008-10-02 08:00,2008-10-01 17:00,,,2008-07-30 08:00,2008-08-17 17:00,,,,,PT_Normal,,,,,IeHLQwuBsUqr7X9Xz9ggqQ,,,,N,59160,30240
1381,83280,829,10935,912,1,100,N,N,N,CP_Drtn,TT_Task,DT_FixedDUR2,RV_OK,TK_Complete,712GL16050,Plaster works,2306,168,0,0,25456.4,0,25456.4,120,19872,19872,0,,2008-08-16 08:00,2008-09-01 17:00,2008-10-27 08:00,2008-10-26 17:00,,2008-10-02 08:00,2008-10-01 17:00,,,2008-08-16 08:00,2008-09-01 17:00,,,,,PT_Normal,,,,,w2nrQx8PhUGIxnNttexG4w,,,,N,25456.4,19872
1382,83281,829,10935,912,1,100,N,N,N,CP_Drtn,TT_Task,DT_FixedDUR2,RV_OK,TK_Complete,712GL16051,Plaste works behind tiles,2306,184,0,0,9810,0,9810,120,7600,7600,0,,2008-08-24 08:00,2008-09-09 17:00,2008-10-29 08:00,2008-10-28 17:00,,2008-10-02 08:00,2008-10-01 17:00,,,2008-08-24 08:00,2008-09-09 17:00,,,,,PT_Normal,,,,,eHYr2KP5lkmw4RMwYd1N7w,,,,N,9810,7600
1383,83282,829,10936,912,1,100,N,N,N,CP_Drtn,TT_Task,DT_FixedDUR2,RV_OK,TK_Complete,712GL18050,Rendering works,2306,168,0,0,5700.2,0,5700.2,120,5016,5016,0,,2008-08-10 08:00,2008-08-26 17:00,2008-10-27 08:00,2008-10-26 17:00,,2008-10-02 08:00,2008-10-01 17:00,,,2008-08-10 08:00,2008-08-26 17:00,,,,,PT_Normal,,,,,Su2TLHOMjUSsRi5UeO5eMg,,,,N,5700.2,5016
1384,83283,829,10936,912,1,100,N,N,N,CP_Drtn,TT_Task,DT_FixedDUR2,RV_OK,TK_Complete,712GL18100,Painting base coats,2306,168,0,0,27496.4,0,27496.4,120,24888,24888,0,,2008-08-21 08:00,2008-09-07 17:00,2008-10-27 08:00,2008-10-26 17:00,,2008-10-02 08:00,2008-10-01 17:00,,,2008-08-21 08:00,2008-09-07 17:00,,,,,PT_Normal,,,,,G+w7HHixjUS5P0/6TjbDTg,,,,N,27496.4,24888
1385,83284,829,10936,912,1,0,N,N,N,CP_Drtn,TT_Task,DT_FixedDUR2,RV_OK,TK_NotStart,712GL18150,Painting 1st top coat for apartments,2306,624,0,72,0,17325.8,17325.8,72,16432,0,16432,,,,2009-01-27 08:00,2009-02-05 17:00,,2008-10-28 08:00,2008-11-06 17:00,2008-10-28 08:00,2008-11-06 17:00,2008-10-28 08:00,2008-11-06 17:00,,,,,PT_Normal,,,,,ZeBZcQBIkUiLHRG4TsXkwA,,,,N,0,0
1386,83285,829,10936,912,1,0,N,N,N,CP_Drtn,TT_Task,DT_FixedDUR2,RV_OK,TK_NotStart,712GL18153,Painting 1st top coat for corridors/lobbies,2306,616,0,48,0,14386.4,14386.4,48,13656,0,13656,,,,2009-02-14 08:00,2009-02-19 17:00,,2008-11-16 08:00,2008-11-22 17:00,2008-11-16 08:00,2008-11-22 17:00,2008-11-16 08:00,2008-11-22 17:00,,,,,PT_Normal,,,,,/WoCOlNQekGNnGXWA5afsg,,,,N,0,0
1387,83286,829,10936,912,1,0,N,N,N,CP_Drtn,TT_Task,DT_FixedDUR2,RV_OK,TK_NotStart,712GL18155,Painting 1st top coat for service rooms,2306,744,0,48,0,5508,5508,48,5200,0,5200,,,,2009-02-24 08:00,2009-03-02 17:00,,2008-11-08 08:00,2008-11-13 17:00,2008-11-08 08:00,2008-11-13 17:00,2008-11-08 08:00,2008-11-13 17:00,,,,,PT_Normal,,,,,v2owsolvJE6CtnvKmwv1Dg,,,,N,0,0
1388,83287,829,10841,912,1,0,N,N,N,CP_Drtn,TT_Task,DT_FixedDUR2,RV_OK,TK_NotStart,712GL18200,Painting final top coat,2306,104,104,32,0,26164.2,26164.2,32,24888,0,24888,,,,2009-03-28 08:00,2009-03-31 17:00,,2009-03-12 08:00,2009-03-16 17:00,2009-03-12 08:00,2009-03-16 17:00,2009-03-12 08:00,2009-03-16 17:00,,,,,PT_Normal,,,,,Mb2QRJyYrUCMTerI10TO/g,,,,N,0,0
1389,83288,829,10910,912,1,100,N,N,N,CP_Drtn,TT_Task,DT_FixedDUR2,RV_OK,TK_Complete,712GL20050,Floor tiles for apartments-dry area,2306,288,0,0,14013.34,0,14013.34,120,10291.36,10291.36,0,,2008-08-27 08:00,2008-09-13 17:00,2008-11-13 08:00,2008-11-12 17:00,,2008-10-02 08:00,2008-10-01 17:00,,,2008-08-27 08:00,2008-09-13 17:00,,,,,PT_Normal,,,,,pqG/wpeT0k2NdF6DZyG5kA,,,,N,14013.34,10291.36
1390,83289,829,10910,912,1,0,N,N,N,CP_Drtn,TT_Task,DT_FixedDUR2,RV_OK,TK_NotStart,712GL20053,Floor tiles for corridors / lobbies,2306,376,0,48,0,4778.2,4778.2,48,3504,0,3504,,,,2008-12-20 08:00,2008-12-25 17:00,,2008-10-26 08:00,2008-11-01 17:00,2008-10-26 08:00,2008-11-01 17:00,2008-10-26 08:00,2008-11-01 17:00,,,,,PT_Normal,,,,,O4XNJ93IiU2uQTPfaLjuLQ,,,,N,0,0
1391,83290,829,10910,912,1,0,N,N,N,CP_Drtn,TT_Task,DT_FixedDUR2,RV_OK,TK_NotStart,712GL20070,Floor tiles for apartments-wet area,2306,168,0,120,0,5682,5682,120,4120,0,4120,,,,2008-11-12 08:00,2008-11-29 17:00,,2008-10-19 08:00,2008-11-04 17:00,2008-10-19 08:00,2008-11-04 17:00,2008-10-19 08:00,2008-11-04 17:00,,,,,PT_Normal,,,,,9aHcHciMNk+AN73Qcnz9vA,,,,N,0,0
1392,83291,829,10910,912,1,0,N,N,N,CP_Drtn,TT_Task,DT_FixedDUR2,RV_OK,TK_NotStart,712GL20110,Wall tiles for apartments-wet area,2306,328,0,120,0,9360,9360,120,6160,0,6160,,,,2008-12-06 08:00,2008-12-22 17:00,,2008-10-19 08:00,2008-11-04 17:00,2008-10-19 08:00,2008-11-04 17:00,2008-10-19 08:00,2008-11-04 17:00,,,,,PT_Normal,,,,,mbSCaA2jlEKpq2ubD2Zwcw,,,,N,0,0
1393,83292,829,10897,912,1,100,N,N,N,CP_Drtn,TT_Task,DT_FixedDUR2,RV_OK,TK_Complete,712GL22150,W/P for for apartments,2306,280,0,0,5144.4,0,5144.4,120,4568,4568,0,,2008-08-18 08:00,2008-09-03 17:00,2008-11-12 08:00,2008-11-11 17:00,,2008-10-02 08:00,2008-10-01 17:00,,,2008-08-18 08:00,2008-09-03 17:00,,,,,PT_Normal,,,,,Vf6mfL7SkEqywaQEh3CLsw,,,,N,5144.4,4568
1394,83293,829,10897,912,1,0,N,N,N,CP_Drtn,TT_Task,DT_FixedDUR2,RV_OK,TK_NotStart,712GL22151,W/P for open to sky areas,2306,888,576,120,0,47103.6,47103.6,120,42712,0,42712,,,,2009-03-21 08:00,2009-04-06 17:00,,2008-11-11 08:00,2008-11-27 17:00,2008-11-11 08:00,2008-11-27 17:00,2008-11-11 08:00,2008-11-27 17:00,,,,,PT_Normal,,,,,cPLe33m//U+jDRNzWuxptQ,,,,N,0,0
1395,83294,829,10897,912,1,50,N,N,N,CP_Drtn,TT_Task,DT_FixedDUR2,RV_OK,TK_Active,712GL22154,W/P for planter boxes,2306,856,0,32,736,736,1472,64,1280,640,640,,2008-09-28 08:00,,2009-02-04 08:00,2009-02-08 17:00,,2008-10-02 08:00,2008-10-06 17:00,2008-10-02 08:00,2008-10-06 17:00,2008-09-28 08:00,2008-10-06 17:00,,,,,PT_Normal,,,,,LJsMYVeb206l6K6+notlsw,,,,N,736,640
1396,83295,829,10939,912,1,100,N,N,N,CP_Drtn,TT_Task,DT_FixedDUR2,RV_OK,TK_Complete,712GL24050,Aluminium doors & windows,2306,400,0,0,2936,0,2936,120,704,704,0,,2008-09-08 08:00,2008-09-24 17:00,2008-11-30 08:00,2008-11-29 17:00,,2008-10-02 08:00,2008-10-01 17:00,,,2008-09-08 08:00,2008-09-24 17:00,,,,,PT_Normal,,,,,JDsRNHBWc0u/ZagFgfsGvg,,,,N,2936,704
1397,83296,829,10939,912,1,0,N,N,N,CP_Drtn,TT_Task,DT_FixedDUR2,RV_OK,TK_NotStart,712GL24200,Balcony handrails,2306,168,0,120,0,1520,1520,120,800,0,800,,,,2008-11-30 08:00,2008-12-16 17:00,,2008-11-05 08:00,2008-11-22 17:00,2008-11-05 08:00,2008-11-22 17:00,2008-11-05 08:00,2008-11-22 17:00,,,,,PT_Normal,,,,,jRsVHCVREUy1FZyrOvW/rA,,,,N,0,0
1398,83297,829,10939,912,1,0,N,N,N,CP_Drtn,TT_Task,DT_FixedDUR2,RV_OK,TK_NotStart,712GL24203,Lobby handrails,2306,656,184,64,0,946,946,64,504,0,504,,,,2009-02-05 08:00,2009-02-14 17:00,,2008-11-02 08:00,2008-11-10 17:00,2008-11-02 08:00,2008-11-10 17:00,2008-11-02 08:00,2008-11-10 17:00,,,,,PT_Normal,,,,,nlUCc9RycEuZ2fzlVi5sBA,,,,N,0,0
1399,83298,829,10913,912,1,0,N,N,N,CP_Drtn,TT_Task,DT_FixedDUR2,RV_OK,TK_NotStart,712GL26050,Steel doors,2306,672,0,48,0,528,528,48,96,0,96,,,,2009-02-07 08:00,2009-02-12 17:00,,2008-11-01 08:00,2008-11-06 17:00,2008-11-01 08:00,2008-11-06 17:00,2008-11-01 08:00,2008-11-06 17:00,,,,,PT_Normal,,,,,lnQQnKpdp0SZsM7ryaOjww,,,,N,0,0
1400,83299,829,10900,912,1,27.6,N,N,N,CP_Drtn,TT_Task,DT_FixedDUR2,RV_OK,TK_Active,712GL30050,Wooden doors,2306,288,0,336,784.56,2059.44,2844,464,680,187.6,492.4,,2008-09-14 08:00,,2008-11-13 08:00,2008-12-31 17:00,,2008-10-02 08:00,2008-11-19 17:00,2008-10-02 08:00,2008-11-19 17:00,2008-09-14 08:00,2008-11-19 17:00,,,,,PT_Normal,,,,,5BoGNjwTZk+hgyufd+F7jw,,,,N,784.56,187.6
1401,83300,829,10942,912,1,0,N,N,N,CP_Drtn,TT_Task,DT_FixedDUR2,RV_OK,TK_NotStart,712GL32050,Kitchen cabinets,2306,536,512,160,0,4376,4376,160,136,0,136,,,,2009-01-17 08:00,2009-02-08 17:00,,2008-10-30 08:00,2008-11-22 17:00,2008-10-30 08:00,2008-11-22 17:00,2008-10-30 08:00,2008-11-22 17:00,,,,,PT_Normal,,,,,dsu5ALZAfEy+oTTPePUA7Q,,,,N,0,0
1402,83301,829,10942,912,1,0,N,N,N,CP_Drtn,TT_Task,DT_FixedDUR2,RV_OK,TK_NotStart,712GL32100,Vanity counters,2306,200,0,120,0,3112,3112,120,272,0,272,,,,2008-12-04 08:00,2008-12-21 17:00,,2008-11-05 08:00,2008-11-22 17:00,2008-11-05 08:00,2008-11-22 17:00,2008-11-05 08:00,2008-11-22 17:00,,,,,PT_Normal,,,,,x7182KVeR063FwPt//Woow,,,,N,0,0
1403,83302,829,10942,912,1,0,N,N,N,CP_Drtn,TT_Task,DT_FixedDUR2,RV_OK,TK_NotStart,712GL32150,Wardrobes,2306,632,608,160,0,3688,3688,160,168,0,168,,,,2009-01-17 08:00,2009-02-08 17:00,,2008-10-16 08:00,2008-11-08 17:00,2008-10-16 08:00,2008-11-08 17:00,2008-10-16 08:00,2008-11-08 17:00,,,,,PT_Normal,,,,,EJvwwyq7yUmWHRqeS0uL8Q,,,,N,0,0
1404,83303,829,11011,912,1,0,N,N,N,CP_Drtn,TT_Task,DT_FixedDUR2,RV_OK,TK_NotStart,712GL34050,False ceiling works for apartments-dry area,2306,376,0,160,0,1506.16,1506.16,160,897.44,0,897.44,,,,2008-11-29 08:00,2008-12-21 17:00,,2008-10-05 08:00,2008-10-27 17:00,2008-10-05 08:00,2008-10-27 17:00,2008-10-05 08:00,2008-10-27 17:00,,,,,PT_Normal,,,,,CXjN8lWrB0+su9uIEdRQfw,,,,N,0,0
1405,83304,829,11011,912,1,0,N,N,N,CP_Drtn,TT_Task,DT_FixedDUR2,RV_OK,TK_NotStart,712GL34053,False ceiling works for corridors/lobbies,2306,376,0,72,0,9876,9876,72,6536,0,6536,,,,2008-12-11 08:00,2008-12-21 17:00,,2008-10-18 08:00,2008-10-27 17:00,2008-10-18 08:00,2008-10-27 17:00,2008-10-18 08:00,2008-10-27 17:00,,,,,PT_Normal,,,,,9KPEKAcUtUSs0i0ibGGQNg,,,,N,0,0
1406,83305,829,11011,912,1,0,N,N,N,CP_Drtn,TT_Task,DT_FixedDUR2,RV_OK,TK_NotStart,712GL34070,False ceiling works for apartments-wet area,2306,168,0,160,0,709.84,709.84,160,366.56,0,366.56,,,,2008-10-29 08:00,2008-11-20 17:00,,2008-10-05 08:00,2008-10-27 17:00,2008-10-05 08:00,2008-10-27 17:00,2008-10-05 08:00,2008-10-27 17:00,,,,,PT_Normal,,,,,6zowmvhKd0mjbT7K3QFlTA,,,,N,0,0
1407,83306,829,11012,912,1,0,N,N,N,CP_Drtn,TT_Task,DT_FixedDUR2,RV_OK,TK_NotStart,712GL36050,Stone finishing top,2306,328,32,64,0,526,526,64,264,0,264,,,,2008-12-22 08:00,2008-12-30 17:00,,2008-11-04 08:00,2008-11-12 17:00,2008-11-04 08:00,2008-11-12 17:00,2008-11-04 08:00,2008-11-12 17:00,,,,,PT_Normal,,,,,TxspyYLBPkKthjUp+bsbDw,,,,N,0,0
1408,83307,829,11012,912,1,0,N,N,N,CP_Drtn,TT_Task,DT_FixedDUR2,RV_OK,TK_NotStart,712GL36100,Thresholds,2306,288,0,176,0,1016,1016,176,560,0,560,,,,2008-12-10 08:00,2009-01-04 17:00,,2008-10-29 08:00,2008-11-23 17:00,2008-10-29 08:00,2008-11-23 17:00,2008-10-29 08:00,2008-11-23 17:00,,,,,PT_Normal,,,,,mMdCBtXs+k21lekczG0CLQ,,,,N,0,0
1409,83308,829,10896,912,1,0,N,N,N,CP_Drtn,TT_Task,DT_FixedDUR2,RV_OK,TK_NotStart,712GL38100,Epoxy coating system,2306,744,584,48,0,1152,1152,48,920,0,920,,,,2009-03-09 08:00,2009-03-15 17:00,,2008-11-20 08:00,2008-11-26 17:00,2008-11-20 08:00,2008-11-26 17:00,2008-11-20 08:00,2008-11-26 17:00,,,,,PT_Normal,,,,,VXLhAqWzXEaCJHfHwrzqvw,,,,N,0,0
1410,83309,829,11014,912,1,20,N,N,N,CP_Drtn,TT_Task,DT_FixedDUR2,RV_OK,TK_Active,712GL40050,Duplex apartment stairs,2306,376,0,96,1071.2,4284.8,5356,120,136,27.2,108.8,,2008-09-29 08:00,,2008-11-26 08:00,2008-12-09 17:00,,2008-10-02 08:00,2008-10-15 17:00,2008-10-02 08:00,2008-10-15 17:00,2008-09-29 08:00,2008-10-15 17:00,,,,,PT_Normal,,,,,Hcs7MiIraUG2Pzxwhy/NBw,,,,N,1071.2,27.2
1411,83310,829,11014,912,1,0,N,N,N,CP_Drtn,TT_Task,DT_FixedDUR2,RV_OK,TK_NotStart,712GL40100,Wooden steps for Duplex staircase,2306,376,0,120,0,1004,1004,120,104,0,104,,,,2008-12-04 08:00,2008-12-21 17:00,,2008-10-11 08:00,2008-10-27 17:00,2008-10-11 08:00,2008-10-27 17:00,2008-10-11 08:00,2008-10-27 17:00,,,,,PT_Normal,,,,,sjVBhiyJsUifJyNC76CbLQ,,,,N,0,0
1412,83311,829,11014,912,1,0,N,N,N,CP_Drtn,TT_Task,DT_FixedDUR2,RV_OK,TK_NotStart,712GL40150,Duplex stair railings,2306,376,152,120,0,6480,6480,120,2544,0,2544,,,,2008-12-16 08:00,2009-01-01 17:00,,2008-10-22 08:00,2008-11-08 17:00,2008-10-22 08:00,2008-11-08 17:00,2008-10-22 08:00,2008-11-08 17:00,,,,,PT_Normal,,,,,VtHPVByFmkG5frRywJqQqg,,,,N,0,0
1413,83312,829,11015,912,1,0,N,N,N,CP_Drtn,TT_Task,DT_FixedDUR2,RV_OK,TK_NotStart,712GL42050,Signage works,2306,728,568,48,0,197.8,197.8,48,136,0,136,,,,2009-03-09 08:00,2009-03-15 17:00,,2008-11-23 08:00,2008-11-29 17:00,2008-11-23 08:00,2008-11-29 17:00,2008-11-23 08:00,2008-11-29 17:00,,,,,PT_Normal,,,,,haISIRVnGkCn+5hz1j1aTw,,,,N,0,0
1414,83313,829,11016,912,1,100,N,N,N,CP_Drtn,TT_Task,DT_FixedDUR2,RV_OK,TK_Complete,712GL44050,Sub-frames,2306,168,0,0,1480,0,1480,120,680,680,0,,2008-08-07 08:00,2008-08-24 17:00,2008-10-27 08:00,2008-10-26 17:00,,2008-10-02 08:00,2008-10-01 17:00,,,2008-08-07 08:00,2008-08-24 17:00,,,,,PT_Normal,,,,,rZkCJ6SvEka/7lCioWIcDA,,,,N,1480,680
1415,83314,829,12846,912,1,100,N,N,N,CP_Drtn,TT_Task,DT_FixedDUR2,RV_OK,TK_Complete,712GL50100,MEP skeleton embedded provisions,2296,24,0,0,512,0,512,72,,,0,,2008-06-15 08:00,2008-06-24 17:00,2008-10-06 08:00,2008-10-05 17:00,,2008-10-02 08:00,2008-10-01 17:00,,,2008-06-15 08:00,2008-06-24 17:00,,,,,PT_Normal,,,,,sbJai3atDUqg5JLtfUVIGg,,,,N,512,0
1416,83315,829,12848,912,1,100,N,N,N,CP_Drtn,TT_Task,DT_FixedDUR2,RV_OK,TK_Complete,712GL52050,A/C duct works,2296,184,0,0,831,0,831,160,,,0,,2008-08-12 08:00,2008-09-03 17:00,2008-10-29 08:00,2008-10-28 17:00,,2008-10-02 08:00,2008-10-01 17:00,,,2008-08-12 08:00,2008-09-03 17:00,,,,,PT_Normal,,,,,Gx+XEVx6yEi20Fuz5XXUhw,,,,N,831,0
1417,83316,829,12848,912,1,100,N,N,N,CP_Drtn,TT_Task,DT_FixedDUR2,RV_OK,TK_Complete,712GL52100,Chilled water pipe works,2296,184,0,0,787,0,787,72,,,0,,2008-08-25 08:00,2008-09-03 17:00,2008-10-29 08:00,2008-10-28 17:00,,2008-10-02 08:00,2008-10-01 17:00,,,2008-08-25 08:00,2008-09-03 17:00,,,,,PT_Normal,,,,,N4cXJu/KdE2MaImj7gXRfQ,,,,N,787,0
1418,83317,829,12849,912,1,100,N,N,N,CP_Drtn,TT_Task,DT_FixedDUR2,RV_OK,TK_Complete,712GL52150,FCU's hanging,2296,184,0,0,935.2,0,935.2,64,,,0,,2008-08-24 08:00,2008-09-01 17:00,2008-10-29 08:00,2008-10-28 17:00,,2008-10-02 08:00,2008-10-01 17:00,,,2008-08-24 08:00,2008-09-01 17:00,,,,,PT_Normal,,,,,vXwypcMUdUm+FofDez8kng,,,,N,935.2,0
1419,83318,829,12849,912,1,100,N,N,N,CP_Drtn,TT_Task,DT_FixedDUR2,RV_OK,TK_Complete,712GL52300,FCU's assembly & duct connections,2296,184,0,0,991.2,0,991.2,120,,,0,,2008-09-08 08:00,2008-09-24 17:00,2008-10-29 08:00,2008-10-28 17:00,,2008-10-02 08:00,2008-10-01 17:00,,,2008-09-08 08:00,2008-09-24 17:00,,,,,PT_Normal,,,,,PPY9P1voLECofzbUrtSLjA,,,,N,991.2,0
1420,83319,829,12849,912,1,31.8,N,N,N,CP_Drtn,TT_Task,DT_FixedDUR2,RV_OK,TK_Active,712GL52350,Grills & diffusers,2296,768,464,240,364,780,1144,352,,,,,2008-09-16 08:00,,2009-01-22 08:00,2009-02-25 17:00,,2008-10-02 08:00,2008-11-05 17:00,2008-10-02 08:00,2008-11-05 17:00,2008-09-16 08:00,2008-11-05 17:00,,,,,PT_Normal,,,,,XR2AiWChdEW1+xjmvLr87g,,,,N,364,0
1421,83320,829,12848,912,1,100,N,N,N,CP_Drtn,TT_Task,DT_FixedDUR2,RV_OK,TK_Complete,712GL52550,A/C duct risers,2296,184,0,0,1626,0,1626,64,,,0,,2008-08-30 08:00,2008-09-07 17:00,2008-10-29 08:00,2008-10-28 17:00,,2008-10-02 08:00,2008-10-01 17:00,,,2008-08-30 08:00,2008-09-07 17:00,,,,,PT_Normal,,,,,24ckO9LsiE+Vk6Y5G33k3A,,,,N,1626,0
1422,83321,829,12851,912,1,100,N,N,N,CP_Drtn,TT_Task,DT_FixedDUR2,RV_OK,TK_Complete,712GL54050,Chasing & Pex pipe works,2296,184,0,0,395,0,395,120,,,0,,2008-08-12 08:00,2008-08-28 17:00,2008-10-29 08:00,2008-10-28 17:00,,2008-10-02 08:00,2008-10-01 17:00,,,2008-08-12 08:00,2008-08-28 17:00,,,,,PT_Normal,,,,,5URyc06Q8Ee2sltA4cmiiA,,,,N,395,0
1423,83322,829,12851,912,1,100,N,N,N,CP_Drtn,TT_Task,DT_FixedDUR2,RV_OK,TK_Complete,712GL54100,Over head distribution water pipe network,2296,184,0,0,8314,0,8314,64,,,0,,2008-08-25 08:00,2008-09-02 17:00,2008-10-29 08:00,2008-10-28 17:00,,2008-10-02 08:00,2008-10-01 17:00,,,2008-08-25 08:00,2008-09-02 17:00,,,,,PT_Normal,,,,,B4DM+lSZVEKWX1QEIP36zA,,,,N,8314,0
1424,83323,829,12818,912,1,73.3,N,N,N,CP_Drtn,TT_Task,DT_FixedDUR2,RV_OK,TK_Active,712GL54150,Water meter cabinet pipe works,2296,856,272,32,249.34,90.66,340,120,,,,,2008-09-20 08:00,,2009-02-04 08:00,2009-02-08 17:00,,2008-10-02 08:00,2008-10-06 17:00,2008-10-02 08:00,2008-10-06 17:00,2008-09-20 08:00,2008-10-06 17:00,,,,,PT_Normal,,,,,JGHhhsvXTkK35/3HuPlBLQ,,,,N,249.34,0
1425,83324,829,12852,912,1,100,N,N,N,CP_Drtn,TT_Task,DT_FixedDUR2,RV_OK,TK_Complete,712GL54250,Bathtubs,2296,400,0,0,216.8,0,313.6,120,,96.8,0,,2008-08-24 08:00,2008-09-09 17:00,2008-11-30 08:00,2008-11-29 17:00,,2008-10-02 08:00,2008-10-01 17:00,,,2008-08-24 08:00,2008-09-09 17:00,,,,,PT_Normal,,,,,LyFdbJxY/U6dIWn64Kq/KQ,,,,N,216.8,96.8
1426,83325,829,12852,912,1,100,N,N,N,CP_Drtn,TT_Task,DT_FixedDUR2,RV_OK,TK_Complete,712GL54300,Water heater,2296,184,0,0,310.4,0,310.4,64,,,0,,2008-08-30 08:00,2008-09-07 17:00,2008-10-29 08:00,2008-10-28 17:00,,2008-10-02 08:00,2008-10-01 17:00,,,2008-08-30 08:00,2008-09-07 17:00,,,,,PT_Normal,,,,,XpzcedD68kOHd3vrpx/oUg,,,,N,310.4,0
1427,83326,829,12852,912,1,100,N,N,N,CP_Drtn,TT_Task,DT_FixedDUR2,RV_OK,TK_Complete,712GL54350,Over head pipe assembly & vlave connections,2296,184,0,0,237,0,237,72,,,0,,2008-09-03 08:00,2008-09-13 17:00,2008-10-29 08:00,2008-10-28 17:00,,2008-10-02 08:00,2008-10-01 17:00,,,2008-09-03 08:00,2008-09-13 17:00,,,,,PT_Normal,,,,,blVZ3cyU0062yPRaYLC4qA,,,,N,237,0
1428,83327,829,12818,912,1,0,N,N,N,CP_Drtn,TT_Task,DT_FixedDUR2,RV_OK,TK_NotStart,712GL54400,Sanitary fixures,2296,328,0,120,0,516,516,120,0,0,0,,,,2008-12-14 08:00,2008-12-30 17:00,,2008-10-27 08:00,2008-11-12 17:00,2008-10-27 08:00,2008-11-12 17:00,2008-10-27 08:00,2008-11-12 17:00,,,,,PT_Normal,,,,,jHd3ji92HECAnj8c3jB99Q,,,,N,0,0
1429,83328,829,12818,912,1,0,N,N,N,CP_Drtn,TT_Task,DT_FixedDUR2,RV_OK,TK_NotStart,712GL54450,Mirrors,2296,240,40,120,0,186,186,120,0,0,0,,,,2008-12-16 08:00,2009-01-01 17:00,,2008-11-11 08:00,2008-11-27 17:00,2008-11-11 08:00,2008-11-27 17:00,2008-11-11 08:00,2008-11-27 17:00,,,,,PT_Normal,,,,,j4I5o0gRUEmA0p6k0WG+DQ,,,,N,0,0
1430,83329,829,12852,912,1,100,N,N,N,CP_Drtn,TT_Task,DT_FixedDUR2,RV_OK,TK_Complete,712GL54500,Concealed Flushing Cistern,2296,400,0,0,186,0,252,120,,66,0,,2008-08-24 08:00,2008-09-09 17:00,2008-11-30 08:00,2008-11-29 17:00,,2008-10-02 08:00,2008-10-01 17:00,,,2008-08-24 08:00,2008-09-09 17:00,,,,,PT_Normal,,,,,3sLwycwDskiecMFWZJME3A,,,,N,186,66
1431,83330,829,12821,912,1,100,N,N,N,CP_Drtn,TT_Task,DT_FixedDUR2,RV_OK,TK_Complete,712GL56050,Chasing and installation of drainage pipes,2296,184,0,0,285,0,285,120,,,0,,2008-08-12 08:00,2008-08-28 17:00,2008-10-29 08:00,2008-10-28 17:00,,2008-10-02 08:00,2008-10-01 17:00,,,2008-08-12 08:00,2008-08-28 17:00,,,,,PT_Normal,,,,,kP8zqQuz+U+9VKODishTIw,,,,N,285,0
1432,83331,829,12821,912,1,100,N,N,N,CP_Drtn,TT_Task,DT_FixedDUR2,RV_OK,TK_Complete,712GL56100,Drainage riser pipes,2296,184,0,0,284,0,284,64,,,0,,2008-08-09 08:00,2008-08-17 17:00,2008-10-29 08:00,2008-10-28 17:00,,2008-10-02 08:00,2008-10-01 17:00,,,2008-08-09 08:00,2008-08-17 17:00,,,,,PT_Normal,,,,,H7uNq77pB0+aFQIWCXfvVA,,,,N,284,0
1433,83332,829,12831,912,1,100,N,N,N,CP_Drtn,TT_Task,DT_FixedDUR2,RV_OK,TK_Complete,712GL56150,Over head drainage pipe works,2296,184,0,0,257.6,0,257.6,64,,,0,,2008-09-10 08:00,2008-09-18 17:00,2008-10-29 08:00,2008-10-28 17:00,,2008-10-02 08:00,2008-10-01 17:00,,,2008-09-10 08:00,2008-09-18 17:00,,,,,PT_Normal,,,,,c04fwjNFUkuvfxRv1khzFg,,,,N,257.6,0
1434,83333,829,12828,912,1,100,N,N,N,CP_Drtn,TT_Task,DT_FixedDUR2,RV_OK,TK_Complete,712GL58050,Fire fighting pipe works,2296,184,0,0,292,0,292,72,,,0,,2008-08-18 08:00,2008-08-27 17:00,2008-10-29 08:00,2008-10-28 17:00,,2008-10-02 08:00,2008-10-01 17:00,,,2008-08-18 08:00,2008-08-27 17:00,,,,,PT_Normal,,,,,clMEaHzDtEecRP+46KwDoA,,,,N,292,0
1435,83334,829,12850,912,1,0,N,N,N,CP_Drtn,TT_Task,DT_FixedDUR2,RV_OK,TK_NotStart,712GL58200,Fire cabinet complete,2296,696,440,64,0,339,339,64,0,0,0,,,,2009-03-07 08:00,2009-03-15 17:00,,2008-11-25 08:00,2008-12-03 17:00,2008-11-25 08:00,2008-12-03 17:00,2008-11-25 08:00,2008-12-03 17:00,,,,,PT_Normal,,,,,/kR4PFFfjUydTObGGWhWyg,,,,N,0,0
1436,83335,829,12850,912,1,0,N,N,N,CP_Drtn,TT_Task,DT_FixedDUR2,RV_OK,TK_NotStart,712GL58250,Sprinkler heads,2296,712,408,120,0,450,450,120,0,0,0,,,,2009-02-09 08:00,2009-02-25 17:00,,2008-10-28 08:00,2008-11-13 17:00,2008-10-28 08:00,2008-11-13 17:00,2008-10-28 08:00,2008-11-13 17:00,,,,,PT_Normal,,,,,+rlXjHmNjkixUxLWZlFEHA,,,,N,0,0
1437,83336,829,12847,912,1,100,N,N,N,CP_Drtn,TT_Task,DT_FixedDUR2,RV_OK,TK_Complete,712GL60050,LPG piping,2296,728,0,0,292,0,292,72,,,0,,2008-09-10 08:00,2008-09-20 17:00,2009-01-17 08:00,2009-01-15 17:00,,2008-10-02 08:00,2008-10-01 17:00,,,2008-09-10 08:00,2008-09-20 17:00,,,,,PT_Normal,,,,,olgdvbDGi0SzxQ1td/c1gQ,,,,N,292,0
1438,83337,829,12496,912,1,100,N,N,N,CP_Drtn,TT_Task,DT_FixedDUR2,RV_OK,TK_Complete,712GL60100,Gas meter & leak detector,2296,896,0,0,248,0,248,72,,,0,,2008-09-21 08:00,2008-09-30 17:00,2009-02-10 08:00,2009-02-09 17:00,,2008-10-02 08:00,2008-10-01 17:00,,,2008-09-21 08:00,2008-09-30 17:00,,,,,PT_Normal,,,,,5gzu71f0DkWF2fe0GYHQdg,,,,N,248,0
1439,83338,829,12793,912,1,100,N,N,N,CP_Drtn,TT_Task,DT_FixedDUR2,RV_OK,TK_Complete,712GL62050,BMS cabling,2296,184,0,0,486.4,0,486.4,64,,,0,,2008-09-20 08:00,2008-09-28 17:00,2008-10-29 08:00,2008-10-28 17:00,,2008-10-02 08:00,2008-10-01 17:00,,,2008-09-20 08:00,2008-09-28 17:00,,,,,PT_Normal,,,,,St5348e4qUOwqgbr/DXClQ,,,,N,486.4,0
1440,83339,829,12024,912,1,0,N,N,N,CP_Drtn,TT_Task,DT_FixedDUR2,RV_OK,TK_NotStart,712GL62100,DGC & cable termination to equipments,2296,744,0,48,0,329.6,329.6,48,0,0,0,,,,2009-03-03 08:00,2009-03-09 17:00,,2008-11-15 08:00,2008-11-20 17:00,2008-11-15 08:00,2008-11-20 17:00,2008-11-15 08:00,2008-11-20 17:00,,,,,PT_Normal,,,,,lKG1GZxcrUqBNAlLcf5V5g,,,,N,0,0
1441,83340,829,12809,912,1,100,N,N,N,CP_Drtn,TT_Task,DT_FixedDUR2,RV_OK,TK_Complete,712GL66050,Chasing and installation of conduits,2296,168,0,0,2091.2,0,2091.2,120,,,0,,2008-08-10 08:00,2008-08-26 17:00,2008-10-27 08:00,2008-10-26 17:00,,2008-10-02 08:00,2008-10-01 17:00,,,2008-08-10 08:00,2008-08-26 17:00,,,,,PT_Normal,,,,,+JeJmhgL0Ui+tNBBy8mg3w,,,,N,2091.2,0
1442,83341,829,12809,912,1,100,N,N,N,CP_Drtn,TT_Task,DT_FixedDUR2,RV_OK,TK_Complete,712GL66100,Cable trays & trunking,2296,168,0,0,1528,0,1528,120,,,0,,2008-09-08 08:00,2008-09-24 17:00,2008-10-27 08:00,2008-10-26 17:00,,2008-10-02 08:00,2008-10-01 17:00,,,2008-09-08 08:00,2008-09-24 17:00,,,,,PT_Normal,,,,,7WWdShUJTkqbdsg0ezDlTg,,,,N,1528,0
1443,83342,829,12349,912,1,100,N,N,N,CP_Drtn,TT_Task,DT_FixedDUR2,RV_OK,TK_Complete,712GL68050,Single core wiring,2296,184,0,0,1339.2,0,1339.2,72,,,0,,2008-08-12 08:00,2008-08-21 17:00,2008-10-29 08:00,2008-10-28 17:00,,2008-10-02 08:00,2008-10-01 17:00,,,2008-08-12 08:00,2008-08-21 17:00,,,,,PT_Normal,,,,,cniiDhXZ60WgS1Mp1T4EpQ,,,,N,1339.2,0
1444,83343,829,12078,912,1,100,N,N,N,CP_Drtn,TT_Task,DT_FixedDUR2,RV_OK,TK_Complete,712GL68100,DB enclosure,2296,168,0,0,486.4,0,486.4,64,,,0,,2008-08-18 08:00,2008-08-26 17:00,2008-10-27 08:00,2008-10-26 17:00,,2008-10-02 08:00,2008-10-01 17:00,,,2008-08-18 08:00,2008-08-26 17:00,,,,,PT_Normal,,,,,r5p6p/ruRUea4a9v9faONg,,,,N,486.4,0
1445,83344,829,12078,912,1,66.7,N,N,N,CP_Drtn,TT_Task,DT_FixedDUR2,RV_OK,TK_Active,712GL68150,LV feeder cables,2296,240,40,24,1925.34,962.66,2888,72,,,,,2008-09-25 08:00,,2008-11-06 08:00,2008-11-09 17:00,,2008-10-02 08:00,2008-10-05 17:00,2008-10-02 08:00,2008-10-05 17:00,2008-09-25 08:00,2008-10-05 17:00,,,,,PT_Normal,,,,,yt9RKEtoF0ujpDt+Mhosdg,,,,N,1925.34,0
1446,83345,829,12801,912,1,0,N,N,N,CP_Drtn,TT_Task,DT_FixedDUR2,RV_OK,TK_NotStart,712GL68250,DB-breakers assembly,2296,640,616,72,0,635.2,635.2,72,0,0,0,,,,2009-01-29 08:00,2009-02-08 17:00,,2008-10-28 08:00,2008-11-06 17:00,2008-10-28 08:00,2008-11-06 17:00,2008-10-28 08:00,2008-11-06 17:00,,,,,PT_Normal,,,,,td84boeFoUCfgpOHXNr7aw,,,,N,0,0
1447,83346,829,12801,912,1,0,N,N,N,CP_Drtn,TT_Task,DT_FixedDUR2,RV_OK,TK_NotStart,712GL68300,SMDB,2296,744,0,48,0,1456,1456,48,0,0,0,,,,2009-03-02 08:00,2009-03-08 17:00,,2008-11-13 08:00,2008-11-19 17:00,2008-11-13 08:00,2008-11-19 17:00,2008-11-13 08:00,2008-11-19 17:00,,,,,PT_Normal,,,,,fSNbuRLyiUO0RX379vF4lA,,,,N,0,0
1448,83347,829,12801,912,1,27.3,N,N,N,CP_Drtn,TT_Task,DT_FixedDUR2,RV_OK,TK_Active,712GL68350,Light Fittings,2296,632,608,256,364.8,972.8,1337.6,352,,,,,2008-09-18 08:00,,2009-01-03 08:00,2009-02-08 17:00,,2008-10-02 08:00,2008-11-08 17:00,2008-10-02 08:00,2008-11-08 17:00,2008-09-18 08:00,2008-11-08 17:00,,,,,PT_Normal,,,,,CcL+MCq9Jka6uV2rbltGAQ,,,,N,364.8,0
1449,83348,829,12801,912,1,0,N,N,N,CP_Drtn,TT_Task,DT_FixedDUR2,RV_OK,TK_NotStart,712GL68400,Lighting Control Panels,2296,728,480,64,0,275.2,275.2,64,0,0,0,,,,2009-03-05 08:00,2009-03-14 17:00,,2008-11-19 08:00,2008-11-27 17:00,2008-11-19 08:00,2008-11-27 17:00,2008-11-19 08:00,2008-11-27 17:00,,,,,PT_Normal,,,,,6CXtjW/5iEG5q37vx/z8ew,,,,N,0,0
1450,83349,829,12801,912,1,0,N,N,N,CP_Drtn,TT_Task,DT_FixedDUR2,RV_OK,TK_NotStart,712GL68600,Switches & sockets,2296,640,616,72,0,494.4,494.4,72,0,0,0,,,,2009-01-29 08:00,2009-02-08 17:00,,2008-10-28 08:00,2008-11-06 17:00,2008-10-28 08:00,2008-11-06 17:00,2008-10-28 08:00,2008-11-06 17:00,,,,,PT_Normal,,,,,8w1yQLfKOESpAXtN+OAwWg,,,,N,0,0
1451,83350,829,12814,912,1,100,N,N,N,CP_Drtn,TT_Task,DT_FixedDUR2,RV_OK,TK_Complete,712GL70050,Central Battery cables,2296,184,0,0,345.6,0,345.6,64,,,0,,2008-08-18 08:00,2008-08-26 17:00,2008-10-29 08:00,2008-10-28 17:00,,2008-10-02 08:00,2008-10-01 17:00,,,2008-08-18 08:00,2008-08-26 17:00,,,,,PT_Normal,,,,,edmumvIPGU6XLCCwifyB4g,,,,N,345.6,0
1452,83351,829,12815,912,1,0,N,N,N,CP_Drtn,TT_Task,DT_FixedDUR2,RV_OK,TK_NotStart,712GL70150,Emergency & exit light fittings,2296,848,424,48,0,188.8,188.8,48,0,0,0,,,,2009-03-05 08:00,2009-03-11 17:00,,2008-11-02 08:00,2008-11-08 17:00,2008-11-02 08:00,2008-11-08 17:00,2008-11-02 08:00,2008-11-08 17:00,,,,,PT_Normal,,,,,1TZyBo6Jnke1rgO/d+FU3g,,,,N,0,0
1453,83352,829,12817,912,1,75,N,N,N,CP_Drtn,TT_Task,DT_FixedDUR2,RV_OK,TK_Active,712GL72050,CCTV system cables,2296,248,80,16,153.6,51.2,204.8,64,,,,,2008-09-25 08:00,,2008-11-08 08:00,2008-11-09 17:00,,2008-10-02 08:00,2008-10-04 17:00,2008-10-02 08:00,2008-10-04 17:00,2008-09-25 08:00,2008-10-04 17:00,,,,,PT_Normal,,,,,ly/z2exD8EGWsqeqJ4d43Q,,,,N,153.6,0
1454,83353,829,12812,912,1,0,N,N,N,CP_Drtn,TT_Task,DT_FixedDUR2,RV_OK,TK_NotStart,712GL72100,CCTV system equipments,2296,728,184,48,0,118.4,118.4,48,0,0,0,,,,2009-03-09 08:00,2009-03-15 17:00,,2008-11-23 08:00,2008-11-29 17:00,2008-11-23 08:00,2008-11-29 17:00,2008-11-23 08:00,2008-11-29 17:00,,,,,PT_Normal,,,,,X5Jml62i0UC+7N/Mw+omTg,,,,N,0,0
1455,83354,829,12817,912,1,75,N,N,N,CP_Drtn,TT_Task,DT_FixedDUR2,RV_OK,TK_Active,712GL72200,Intercom system cables,2296,168,0,16,523.2,174.4,697.6,64,,,,,2008-09-25 08:00,,2008-10-27 08:00,2008-10-28 17:00,,2008-10-02 08:00,2008-10-04 17:00,2008-10-02 08:00,2008-10-04 17:00,2008-09-25 08:00,2008-10-04 17:00,,,,,PT_Normal,,,,,10mD0Lh4L0CPOlXDXdPChQ,,,,N,523.2,0
1456,83355,829,12812,912,1,0,N,N,N,CP_Drtn,TT_Task,DT_FixedDUR2,RV_OK,TK_NotStart,712GL72250,Intercom system equipments,2296,624,320,64,0,908.8,908.8,64,0,0,0,,,,2009-01-31 08:00,2009-02-08 17:00,,2008-11-01 08:00,2008-11-09 17:00,2008-11-01 08:00,2008-11-09 17:00,2008-11-01 08:00,2008-11-09 17:00,,,,,PT_Normal,,,,,zlR05poOnUqpoYV97d5G1g,,,,N,0,0
1457,83356,829,12036,912,1,100,N,N,N,CP_Drtn,TT_Task,DT_FixedDUR2,RV_OK,TK_Complete,712GL74050,Fire alarm cables,2296,184,0,0,380.8,0,380.8,64,,,0,,2008-08-18 08:00,2008-08-26 17:00,2008-10-29 08:00,2008-10-28 17:00,,2008-10-02 08:00,2008-10-01 17:00,,,2008-08-18 08:00,2008-08-26 17:00,,,,,PT_Normal,,,,,H2sDcVtY1E673sasq7Gyrw,,,,N,380.8,0
1458,83357,829,12796,912,1,0,N,N,N,CP_Drtn,TT_Task,DT_FixedDUR2,RV_OK,TK_NotStart,712GL74100,Fire alarm fittings,2296,656,368,352,0,404.8,404.8,352,0,0,0,,,,2009-01-06 08:00,2009-02-25 17:00,,2008-10-02 08:00,2008-11-22 17:00,2008-10-02 08:00,2008-11-22 17:00,2008-10-02 08:00,2008-11-22 17:00,,,,,PT_Normal,,,,,8Xyj/ObdN0ervcNlrZBYDA,,,,N,0,0
1459,83358,829,12796,912,1,0,N,N,N,CP_Drtn,TT_Task,DT_FixedDUR2,RV_OK,TK_NotStart,712GL74150,Fire alarm control panels,2296,616,328,48,0,188.8,188.8,48,0,0,0,,,,2009-02-19 08:00,2009-02-25 17:00,,2008-11-22 08:00,2008-11-27 17:00,2008-11-22 08:00,2008-11-27 17:00,2008-11-22 08:00,2008-11-27 17:00,,,,,PT_Normal,,,,,dWoIm2rAn0aG/Bhfn4etOw,,,,N,0,0
1460,83359,829,12798,912,1,100,N,N,N,CP_Drtn,TT_Task,DT_FixedDUR2,RV_OK,TK_Complete,712GL76050,Structured cabling,2296,200,0,0,345.6,0,345.6,64,,,0,,2008-09-22 08:00,2008-09-30 17:00,2008-11-01 08:00,2008-10-30 17:00,,2008-10-02 08:00,2008-10-01 17:00,,,2008-09-22 08:00,2008-09-30 17:00,,,,,PT_Normal,,,,,EodPS0hux06K8vOw0LKP0Q,,,,N,345.6,0
1461,83360,829,12785,912,1,0,N,N,N,CP_Drtn,TT_Task,DT_FixedDUR2,RV_OK,TK_NotStart,712GL76100,Consolidated pionts,2296,168,0,64,0,627.2,627.2,64,0,0,0,,,,2008-11-01 08:00,2008-11-09 17:00,,2008-10-07 08:00,2008-10-15 17:00,2008-10-07 08:00,2008-10-15 17:00,2008-10-07 08:00,2008-10-15 17:00,,,,,PT_Normal,,,,,Wpq1x6dEwEG9GiwKrLzh7g,,,,N,0,0
1462,83361,829,10985,912,1,0,N,N,N,CP_Drtn,TT_Task,DT_FixedDUR2,RV_OK,TK_NotStart,712GR20050,Floor tiles for garbage rooms,2306,408,0,120,0,1254,1254,120,840,0,840,,,,2009-03-09 08:00,2009-03-25 17:00,,2009-01-08 08:00,2009-01-25 17:00,2009-01-08 08:00,2009-01-25 17:00,2009-01-08 08:00,2009-01-25 17:00,,,,,PT_Normal,,,,,IwDY/ttZJU2HU/inKiXOGA,,,,N,0,0
1463,83362,829,10985,912,1,0,N,N,N,CP_Drtn,TT_Task,DT_FixedDUR2,RV_OK,TK_NotStart,712GR20100,Wall tiles for garbage rooms,2306,408,0,120,0,744,744,120,416,0,416,,,,2009-02-02 08:00,2009-02-18 17:00,,2008-12-04 08:00,2008-12-21 17:00,2008-12-04 08:00,2008-12-21 17:00,2008-12-04 08:00,2008-12-21 17:00,,,,,PT_Normal,,,,,ErD25lEog02n7WECekJQzw,,,,N,0,0
1464,83363,829,11095,912,1,0,N,N,N,CP_Drtn,TT_Task,DT_FixedDUR2,RV_OK,TK_NotStart,712GR22150,W/P for garbage room,2306,408,0,120,0,1783.6,1783.6,120,1512,0,1512,,,,2009-02-19 08:00,2009-03-08 17:00,,2008-12-22 08:00,2009-01-07 17:00,2008-12-22 08:00,2009-01-07 17:00,2008-12-22 08:00,2009-01-07 17:00,,,,,PT_Normal,,,,,SGgCC5RZ10ixQu1fA3pwqw,,,,N,0,0
1465,83364,829,10878,912,1,0,N,N,N,CP_Drtn,TT_Task,DT_FixedDUR2,RV_OK,TK_NotStart,712GR48050,Shaft plumpness & chipping,2306,408,0,48,0,256,256,48,8,0,8,,,,2008-12-22 08:00,2008-12-28 17:00,,2008-10-23 08:00,2008-10-29 17:00,2008-10-23 08:00,2008-10-29 17:00,2008-10-23 08:00,2008-10-29 17:00,,,,,PT_Normal,,,,,WEtdWAqiPkeVe2kxw8lNrA,,,,N,0,0
1466,83365,829,10878,912,1,0,N,N,N,CP_Drtn,TT_Task,DT_FixedDUR2,RV_OK,TK_NotStart,712GR48100,Brackets,2306,408,0,120,0,268,268,120,8,0,8,,,,2008-12-29 08:00,2009-01-14 17:00,,2008-10-30 08:00,2008-11-16 17:00,2008-10-30 08:00,2008-11-16 17:00,2008-10-30 08:00,2008-11-16 17:00,,,,,PT_Normal,,,,,D7PV4TqVS06OiaszL0tlhA,,,,N,0,0
1467,83366,829,10878,912,1,0,N,N,N,CP_Drtn,TT_Task,DT_FixedDUR2,RV_OK,TK_NotStart,712GR48150,Garbage chute installation,2306,408,0,120,0,528,528,120,8,0,8,,,,2009-01-10 08:00,2009-01-26 17:00,,2008-11-11 08:00,2008-11-27 17:00,2008-11-11 08:00,2008-11-27 17:00,2008-11-11 08:00,2008-11-27 17:00,,,,,PT_Normal,,,,,1RtFmseqz0aN454L7hJuEQ,,,,N,0,0
1468,83367,829,10878,912,1,0,N,N,N,CP_Drtn,TT_Task,DT_FixedDUR2,RV_OK,TK_NotStart,712GR48250,Hooper doors & foot bedals,2306,408,0,120,0,264,264,120,24,0,24,,,,2009-03-21 08:00,2009-04-06 17:00,,2009-01-20 08:00,2009-02-05 17:00,2009-01-20 08:00,2009-02-05 17:00,2009-01-20 08:00,2009-02-05 17:00,,,,,PT_Normal,,,,,ATuk83ivyUe0M0VGIWODbA,,,,N,0,0
1469,83368,829,10878,912,1,0,N,N,N,CP_Drtn,TT_Task,DT_FixedDUR2,RV_OK,TK_NotStart,712GR48350,Compactors & trolleys,2306,408,96,48,0,120,120,48,32,0,32,,,,2009-03-31 08:00,2009-04-06 17:00,,2009-01-31 08:00,2009-02-05 17:00,2009-01-31 08:00,2009-02-05 17:00,2009-01-31 08:00,2009-02-05 17:00,,,,,PT_Normal,,,,,VbtWl1fYsk+enZso8DHLYQ,,,,N,0,0
1470,83369,829,12508,912,1,0,N,N,N,CP_Drtn,TT_Task,DT_FixedDUR2,RV_OK,TK_NotStart,712GR58050,Fire fighting provisions,2296,408,0,120,0,450,450,120,0,0,0,,,,2009-01-10 08:00,2009-01-26 17:00,,2008-11-11 08:00,2008-11-27 17:00,2008-11-11 08:00,2008-11-27 17:00,2008-11-11 08:00,2008-11-27 17:00,,,,,PT_Normal,,,,,8qVaDjzHb0qqvpmCAUtUoA,,,,N,0,0
1471,83370,829,11226,912,1,100,N,N,N,CP_Drtn,TT_Task,DT_FixedDUR2,RV_OK,TK_Complete,712GU12050,Columns & walls GU to 1L - Part 1,2306,24,0,0,5587.77,0,5587.77,32,167999.52,167999.52,0,,2008-07-01 08:00,2008-07-05 17:00,2008-10-06 08:00,2008-10-05 17:00,,2008-10-02 08:00,2008-10-01 17:00,,,2008-07-01 08:00,2008-07-05 17:00,,,,,PT_Normal,,,,,XwVivlNKLk2vBICUIhq1ow,,,,N,5587.77,167999.52
1472,83371,829,11226,912,1,100,N,N,N,CP_Drtn,TT_Task,DT_FixedDUR2,RV_OK,TK_Complete,712GU12051,Columns & walls GU to 1L - Part 2,2306,24,0,0,5587.77,0,5587.77,32,167999.52,167999.52,0,,2008-07-10 08:00,2008-07-14 17:00,2008-10-06 08:00,2008-10-05 17:00,,2008-10-02 08:00,2008-10-01 17:00,,,2008-07-10 08:00,2008-07-14 17:00,,,,,PT_Normal,,,,,eJ4TKA5Xvk6Qmkb7XTPZKQ,,,,N,5587.77,167999.52
1473,83372,829,11226,912,1,100,N,N,N,CP_Drtn,TT_Task,DT_FixedDUR2,RV_OK,TK_Complete,712GU12052,Columns & walls GU to 1L - Middle Part,2306,24,0,0,9003.34,0,9003.34,32,271281.92,271281.92,0,,2008-07-09 08:00,2008-07-13 17:00,2008-10-06 08:00,2008-10-05 17:00,,2008-10-02 08:00,2008-10-01 17:00,,,2008-07-09 08:00,2008-07-13 17:00,,,,,PT_Normal,,,,,RWTpcwKvkEaorm7cPDuuuA,,,,N,9003.34,271281.92
1474,83373,829,11226,912,1,100,N,N,N,CP_Drtn,TT_Task,DT_FixedDUR2,RV_OK,TK_Complete,712GU12200,Slab @ 1L level - Part 1,2306,24,0,0,4957,0,4957,56,181794.24,181794.24,0,,2008-07-10 08:00,2008-07-17 17:00,2008-10-06 08:00,2008-10-05 17:00,,2008-10-02 08:00,2008-10-01 17:00,,,2008-07-10 08:00,2008-07-17 17:00,,,,,PT_Normal,,,,,UzwsBzEVm0CVbrFSJynjiw,,,,N,4957,181794.24
1475,83374,829,11226,912,1,100,N,N,N,CP_Drtn,TT_Task,DT_FixedDUR2,RV_OK,TK_Complete,712GU12201,Slab @ 1L level - Part 2,2306,24,0,0,4957,0,4957,56,181794.24,181794.24,0,,2008-07-19 08:00,2008-07-26 17:00,2008-10-06 08:00,2008-10-05 17:00,,2008-10-02 08:00,2008-10-01 17:00,,,2008-07-19 08:00,2008-07-26 17:00,,,,,PT_Normal,,,,,wZSUyWUnTk+CwUF6XGRnag,,,,N,4957,181794.24
1476,83375,829,11226,912,1,100,N,N,N,CP_Drtn,TT_Task,DT_FixedDUR2,RV_OK,TK_Complete,712GU12202,Slab @ 1L level - Middle Part,2306,24,0,0,5868.65,0,5868.65,56,215610,215610,0,,2008-07-17 08:00,2008-07-24 17:00,2008-10-06 08:00,2008-10-05 17:00,,2008-10-02 08:00,2008-10-01 17:00,,,2008-07-17 08:00,2008-07-24 17:00,,,,,PT_Normal,,,,,eVnGo9OaEE6GuLRtLRdi1A,,,,N,5868.65,215610
1477,83376,829,11226,912,1,100,N,N,N,CP_Drtn,TT_Task,DT_FixedDUR2,RV_OK,TK_Complete,712GU12250,Staircases GU to 1L,2306,208,0,0,999.88,0,999.88,32,18457.6,18457.6,0,,2008-07-27 08:00,2008-07-30 17:00,2008-11-02 08:00,2008-11-01 17:00,,2008-10-02 08:00,2008-10-01 17:00,,,2008-07-27 08:00,2008-07-30 17:00,,,,,PT_Normal,,,,,VDd8pxRIs0GfDur8VcJn7g,,,,N,999.88,18457.6
1478,83377,829,11018,912,1,100,N,N,N,CP_Drtn,TT_Task,DT_FixedDUR2,RV_OK,TK_Complete,712GU14050,Block works,2306,168,0,0,30371,0,37573.5,120,23048,30250.5,0,,2008-08-13 08:00,2008-08-30 17:00,2008-10-27 08:00,2008-10-26 17:00,,2008-10-02 08:00,2008-10-01 17:00,,,2008-08-13 08:00,2008-08-30 17:00,,,,,PT_Normal,,,,,gA3BNqzrE0m2iWiuq0D/LQ,,,,N,30371,30250.5
1479,83378,829,11019,912,1,100,N,N,N,CP_Drtn,TT_Task,DT_FixedDUR2,RV_OK,TK_Complete,712GU16050,Plaster works,2306,168,0,0,25467.5,0,25467.5,120,19880,19880,0,,2008-08-31 08:00,2008-09-16 17:00,2008-10-27 08:00,2008-10-26 17:00,,2008-10-02 08:00,2008-10-01 17:00,,,2008-08-31 08:00,2008-09-16 17:00,,,,,PT_Normal,,,,,sv3s0RwWmEqdrF8Wds3JZA,,,,N,25467.5,19880
1480,83379,829,11019,912,1,100,N,N,N,CP_Drtn,TT_Task,DT_FixedDUR2,RV_OK,TK_Complete,712GU16051,Plaste works behind tiles,2306,280,0,0,8004.3,0,8004.3,120,6184,6184,0,,2008-09-06 08:00,2008-09-22 17:00,2008-11-12 08:00,2008-11-11 17:00,,2008-10-02 08:00,2008-10-01 17:00,,,2008-09-06 08:00,2008-09-22 17:00,,,,,PT_Normal,,,,,LC/vFrCagUW6sEn6mR7HfQ,,,,N,8004.3,6184
1481,83380,829,10903,912,1,100,N,N,N,CP_Drtn,TT_Task,DT_FixedDUR2,RV_OK,TK_Complete,712GU18050,Rendering works,2306,168,0,0,5683,0,5683,120,5000,5000,0,,2008-08-19 08:00,2008-09-04 17:00,2008-10-27 08:00,2008-10-26 17:00,,2008-10-02 08:00,2008-10-01 17:00,,,2008-08-19 08:00,2008-09-04 17:00,,,,,PT_Normal,,,,,xKr08pXnoUGDEILDq7mcrw,,,,N,5683,5000
1482,83381,829,10903,912,1,100,N,N,N,CP_Drtn,TT_Task,DT_FixedDUR2,RV_OK,TK_Complete,712GU18100,Painting base coats,2306,168,0,0,27488,0,27488,120,24880,24880,0,,2008-09-08 08:00,2008-09-24 17:00,2008-10-27 08:00,2008-10-26 17:00,,2008-10-02 08:00,2008-10-01 17:00,,,2008-09-08 08:00,2008-09-24 17:00,,,,,PT_Normal,,,,,/Z/N3q8I2UOcVaKU3IQ4cQ,,,,N,27488,24880
1483,83382,829,10903,912,1,0,N,N,N,CP_Drtn,TT_Task,DT_FixedDUR2,RV_OK,TK_NotStart,712GU18150,Painting 1st top coat for apartments,2306,584,0,72,0,17300.2,17300.2,72,16408,0,16408,,,,2009-01-29 08:00,2009-02-08 17:00,,2008-11-05 08:00,2008-11-15 17:00,2008-11-05 08:00,2008-11-15 17:00,2008-11-05 08:00,2008-11-15 17:00,,,,,PT_Normal,,,,,/rDU1VjD5E6YcCiSdRXVGg,,,,N,0,0
1484,83383,829,11021,912,1,86.7,N,N,N,CP_Drtn,TT_Task,DT_FixedDUR2,RV_OK,TK_Active,712GU20050,Floor tiles for apartments-dry area,2306,376,0,16,6964.9,1071.5,8036.4,120,5864,5082.16,781.84,,2008-09-17 08:00,,2008-11-26 08:00,2008-11-27 17:00,,2008-10-02 08:00,2008-10-04 17:00,2008-10-02 08:00,2008-10-04 17:00,2008-09-17 08:00,2008-10-04 17:00,,,,,PT_Normal,,,,,4LaMwDLq5U2VVlYDw7br1A,,,,N,6964.9,5082.16
1485,83384,829,11021,912,1,0,N,N,N,CP_Drtn,TT_Task,DT_FixedDUR2,RV_OK,TK_NotStart,712GU20070,Floor tiles for apartments-wet area,2306,208,0,120,0,3014.4,3014.4,120,2144,0,2144,,,,2008-11-20 08:00,2008-12-07 17:00,,2008-10-21 08:00,2008-11-06 17:00,2008-10-21 08:00,2008-11-06 17:00,2008-10-21 08:00,2008-11-06 17:00,,,,,PT_Normal,,,,,9E/A8DeSKE6VBLL84UyALg,,,,N,0,0
1486,83385,829,11021,912,1,0,N,N,N,CP_Drtn,TT_Task,DT_FixedDUR2,RV_OK,TK_NotStart,712GU20110,Wall tiles for apartments-wet area,2306,336,40,120,0,8103.24,8103.24,120,5322.16,0,5322.16,,,,2008-12-09 08:00,2008-12-25 17:00,,2008-10-21 08:00,2008-11-06 17:00,2008-10-21 08:00,2008-11-06 17:00,2008-10-21 08:00,2008-11-06 17:00,,,,,PT_Normal,,,,,T4bKbqZkuU6dootvddRyZA,,,,N,0,0
1487,83386,829,11022,912,1,100,N,N,N,CP_Drtn,TT_Task,DT_FixedDUR2,RV_OK,TK_Complete,712GU22150,W/P for for apartments,2306,288,0,0,2900.4,0,2900.4,120,2528,2528,0,,2008-08-31 08:00,2008-09-16 17:00,2008-11-13 08:00,2008-11-12 17:00,,2008-10-02 08:00,2008-10-01 17:00,,,2008-08-31 08:00,2008-09-16 17:00,,,,,PT_Normal,,,,,2u536xOMPEKJoPoh53sYmg,,,,N,2900.4,2528
1488,83387,829,10955,912,1,40,N,N,N,CP_Drtn,TT_Task,DT_FixedDUR2,RV_OK,TK_Active,712GU24050,Aluminium doors & windows,2306,384,160,72,662.4,993.6,1656,120,384,153.6,230.4,,2008-09-25 08:00,,2008-11-27 08:00,2008-12-07 17:00,,2008-10-02 08:00,2008-10-12 17:00,2008-10-02 08:00,2008-10-12 17:00,2008-09-25 08:00,2008-10-12 17:00,,,,,PT_Normal,,,,,P3es1cMA7UOTFsosyvpGOA,,,,N,662.4,153.6
1489,83388,829,10955,912,1,0,N,N,N,CP_Drtn,TT_Task,DT_FixedDUR2,RV_OK,TK_NotStart,712GU24200,Balcony handrails,2306,168,128,120,0,2360,2360,120,1280,0,1280,,,,2008-12-08 08:00,2008-12-24 17:00,,2008-11-13 08:00,2008-11-30 17:00,2008-11-13 08:00,2008-11-30 17:00,2008-11-13 08:00,2008-11-30 17:00,,,,,PT_Normal,,,,,NI/AbxxNPEiTwSwMQYVtLQ,,,,N,0,0
1490,83389,829,11024,912,1,0,N,N,N,CP_Drtn,TT_Task,DT_FixedDUR2,RV_OK,TK_NotStart,712GU30050,Wooden doors,2306,296,0,120,0,960,960,120,240,0,240,,,,2008-12-11 08:00,2008-12-28 17:00,,2008-10-29 08:00,2008-11-15 17:00,2008-10-29 08:00,2008-11-15 17:00,2008-10-29 08:00,2008-11-15 17:00,,,,,PT_Normal,,,,,UjPkeL16TkG3w4SAxlskqQ,,,,N,0,0
1491,83390,829,11025,912,1,0,N,N,N,CP_Drtn,TT_Task,DT_FixedDUR2,RV_OK,TK_NotStart,712GU32100,Vanity counters,2306,200,0,120,0,1968,1968,120,168,0,168,,,,2008-12-10 08:00,2008-12-27 17:00,,2008-11-11 08:00,2008-11-27 17:00,2008-11-11 08:00,2008-11-27 17:00,2008-11-11 08:00,2008-11-27 17:00,,,,,PT_Normal,,,,,RCX1i8BRkUuqphN/HDdx1A,,,,N,0,0
1492,83391,829,11025,912,1,0,N,N,N,CP_Drtn,TT_Task,DT_FixedDUR2,RV_OK,TK_NotStart,712GU32150,Wardrobes,2306,616,592,120,0,5832,5832,120,272,0,272,,,,2009-01-22 08:00,2009-02-08 17:00,,2008-10-25 08:00,2008-11-10 17:00,2008-10-25 08:00,2008-11-10 17:00,2008-10-25 08:00,2008-11-10 17:00,,,,,PT_Normal,,,,,nCWYOW9BzkiFXH/ewlEL0w,,,,N,0,0
1493,83392,829,10917,912,1,0,N,N,N,CP_Drtn,TT_Task,DT_FixedDUR2,RV_OK,TK_NotStart,712GU34050,False ceiling works for apartments-dry area,2306,408,0,120,0,1485.12,1485.12,120,910.08,0,910.08,,,,2008-12-11 08:00,2008-12-28 17:00,,2008-10-13 08:00,2008-10-29 17:00,2008-10-13 08:00,2008-10-29 17:00,2008-10-13 08:00,2008-10-29 17:00,,,,,PT_Normal,,,,,8YufG873gEiSQe2+lDz8dA,,,,N,0,0
1494,83393,829,10917,912,1,0,N,N,N,CP_Drtn,TT_Task,DT_FixedDUR2,RV_OK,TK_NotStart,712GU34070,False ceiling works for apartments-wet area,2306,208,0,120,0,650.88,650.88,120,353.92,0,353.92,,,,2008-11-12 08:00,2008-11-29 17:00,,2008-10-13 08:00,2008-10-29 17:00,2008-10-13 08:00,2008-10-29 17:00,2008-10-13 08:00,2008-10-29 17:00,,,,,PT_Normal,,,,,K1bsKTvEpEWlVCw4xgoaag,,,,N,0,0
1495,83394,829,10918,912,1,0,N,N,N,CP_Drtn,TT_Task,DT_FixedDUR2,RV_OK,TK_NotStart,712GU36050,Stone finishing top,2306,296,160,64,0,316,316,64,144,0,144,,,,2008-12-25 08:00,2009-01-03 17:00,,2008-11-12 08:00,2008-11-20 17:00,2008-11-12 08:00,2008-11-20 17:00,2008-11-12 08:00,2008-11-20 17:00,,,,,PT_Normal,,,,,2qU/OWRRZEmrVl+ANlg0cQ,,,,N,0,0
1496,83395,829,10918,912,1,0,N,N,N,CP_Drtn,TT_Task,DT_FixedDUR2,RV_OK,TK_NotStart,712GU36100,Thresholds,2306,288,192,64,0,580,580,64,344,0,344,,,,2008-12-27 08:00,2009-01-04 17:00,,2008-11-15 08:00,2008-11-23 17:00,2008-11-15 08:00,2008-11-23 17:00,2008-11-15 08:00,2008-11-23 17:00,,,,,PT_Normal,,,,,ymv8pgzijEG3NQdvdPs0fQ,,,,N,0,0
1497,83396,829,11028,912,1,100,N,N,N,CP_Drtn,TT_Task,DT_FixedDUR2,RV_OK,TK_Complete,712GU44050,Sub-frames,2306,168,0,0,600,0,600,120,240,240,0,,2008-08-23 08:00,2008-09-08 17:00,2008-10-27 08:00,2008-10-26 17:00,,2008-10-02 08:00,2008-10-01 17:00,,,2008-08-23 08:00,2008-09-08 17:00,,,,,PT_Normal,,,,,4b6Lf/oPI0GBPEyPNWYtvg,,,,N,600,240
1498,83397,829,12045,912,1,100,N,N,N,CP_Drtn,TT_Task,DT_FixedDUR2,RV_OK,TK_Complete,712GU50100,MEP skeleton embedded provisions,2296,24,0,0,512,0,512,72,,,0,,2008-07-01 08:00,2008-07-10 17:00,2008-10-06 08:00,2008-10-05 17:00,,2008-10-02 08:00,2008-10-01 17:00,,,2008-07-01 08:00,2008-07-10 17:00,,,,,PT_Normal,,,,,dEIUTegY6kGzjzs8yarpTQ,,,,N,512,0
1499,83398,829,12790,912,1,100,N,N,N,CP_Drtn,TT_Task,DT_FixedDUR2,RV_OK,TK_Complete,712GU52050,A/C duct works,2296,280,0,0,831,0,831,160,,,0,,2008-08-25 08:00,2008-09-16 17:00,2008-11-12 08:00,2008-11-11 17:00,,2008-10-02 08:00,2008-10-01 17:00,,,2008-08-25 08:00,2008-09-16 17:00,,,,,PT_Normal,,,,,5qvbc9ThhkKsX97YOj9/jw,,,,N,831,0
1500,83399,829,12790,912,1,100,N,N,N,CP_Drtn,TT_Task,DT_FixedDUR2,RV_OK,TK_Complete,712GU52100,Chilled water pipe works,2296,264,0,0,787,0,787,72,,,0,,2008-09-07 08:00,2008-09-16 17:00,2008-11-10 08:00,2008-11-09 17:00,,2008-10-02 08:00,2008-10-01 17:00,,,2008-09-07 08:00,2008-09-16 17:00,,,,,PT_Normal,,,,,WTU9p3N8jkKLPfKXjAVcsA,,,,N,787,0
1501,83400,829,12816,912,1,100,N,N,N,CP_Drtn,TT_Task,DT_FixedDUR2,RV_OK,TK_Complete,712GU52150,FCU's hanging,2296,280,0,0,935.2,0,935.2,64,,,0,,2008-09-06 08:00,2008-09-14 17:00,2008-11-12 08:00,2008-11-11 17:00,,2008-10-02 08:00,2008-10-01 17:00,,,2008-09-06 08:00,2008-09-14 17:00,,,,,PT_Normal,,,,,ugOTBPMVFUqjQ03i/oFHCw,,,,N,935.2,0
1502,83401,829,12816,912,1,66.7,N,N,N,CP_Drtn,TT_Task,DT_FixedDUR2,RV_OK,TK_Active,712GU52300,FCU's assembly & duct connections,2296,240,24,40,660.8,330.4,991.2,120,,,,,2008-09-21 08:00,,2008-11-06 08:00,2008-11-11 17:00,,2008-10-02 08:00,2008-10-07 17:00,2008-10-02 08:00,2008-10-07 17:00,2008-09-21 08:00,2008-10-07 17:00,,,,,PT_Normal,,,,,PxNxeoRvaEWQ7ku27Ytv8w,,,,N,660.8,0
1503,83402,829,12816,912,1,0,N,N,N,CP_Drtn,TT_Task,DT_FixedDUR2,RV_OK,TK_NotStart,712GU52350,Grills & diffusers,2296,632,448,64,0,856,856,64,0,0,0,,,,2009-01-31 08:00,2009-02-08 17:00,,2008-10-30 08:00,2008-11-08 17:00,2008-10-30 08:00,2008-11-08 17:00,2008-10-30 08:00,2008-11-08 17:00,,,,,PT_Normal,,,,,IGIBndFyjESneNGJHM9YeA,,,,N,0,0
1504,83403,829,12790,912,1,100,N,N,N,CP_Drtn,TT_Task,DT_FixedDUR2,RV_OK,TK_Complete,712GU52550,A/C duct risers,2296,240,0,0,1626,0,1626,64,,,0,,2008-09-11 08:00,2008-09-20 17:00,2008-11-06 08:00,2008-11-05 17:00,,2008-10-02 08:00,2008-10-01 17:00,,,2008-09-11 08:00,2008-09-20 17:00,,,,,PT_Normal,,,,,b8v3V+RmAkm3Ct8iMRyJgA,,,,N,1626,0
1505,83404,829,12141,912,1,100,N,N,N,CP_Drtn,TT_Task,DT_FixedDUR2,RV_OK,TK_Complete,712GU54050,Chasing & Pex pipe works,2296,280,0,0,395,0,395,120,,,0,,2008-08-25 08:00,2008-09-10 17:00,2008-11-12 08:00,2008-11-11 17:00,,2008-10-02 08:00,2008-10-01 17:00,,,2008-08-25 08:00,2008-09-10 17:00,,,,,PT_Normal,,,,,upWl5EEnakayIEVpduc19g,,,,N,395,0
1506,83405,829,12051,912,1,100,N,N,N,CP_Drtn,TT_Task,DT_FixedDUR2,RV_OK,TK_Complete,712GU54250,Bathtubs,2296,400,0,0,216.8,0,313.6,120,,96.8,0,,2008-09-06 08:00,2008-09-22 17:00,2008-11-30 08:00,2008-11-29 17:00,,2008-10-02 08:00,2008-10-01 17:00,,,2008-09-06 08:00,2008-09-22 17:00,,,,,PT_Normal,,,,,KWtdIWhy70mdUO0sEqzclw,,,,N,216.8,96.8
1507,83406,829,12051,912,1,100,N,N,N,CP_Drtn,TT_Task,DT_FixedDUR2,RV_OK,TK_Complete,712GU54300,Water heater,2296,280,0,0,310.4,0,310.4,64,,,0,,2008-09-11 08:00,2008-09-20 17:00,2008-11-12 08:00,2008-11-11 17:00,,2008-10-02 08:00,2008-10-01 17:00,,,2008-09-11 08:00,2008-09-20 17:00,,,,,PT_Normal,,,,,i516EweWvUG/q5dGZ+MHLw,,,,N,310.4,0
1508,83407,829,12051,912,1,100,N,N,N,CP_Drtn,TT_Task,DT_FixedDUR2,RV_OK,TK_Complete,712GU54350,Over head pipe assembly & vlave connections,2296,280,0,0,237,0,237,72,,,0,,2008-09-11 08:00,2008-09-21 17:00,2008-11-12 08:00,2008-11-11 17:00,,2008-10-02 08:00,2008-10-01 17:00,,,2008-09-11 08:00,2008-09-21 17:00,,,,,PT_Normal,,,,,nYUSQog5O06aZ0uzy0fVaQ,,,,N,237,0
1509,83408,829,12143,912,1,0,N,N,N,CP_Drtn,TT_Task,DT_FixedDUR2,RV_OK,TK_NotStart,712GU54400,Sanitary fixures,2296,296,0,120,0,516,516,120,0,0,0,,,,2008-12-17 08:00,2009-01-03 17:00,,2008-11-04 08:00,2008-11-20 17:00,2008-11-04 08:00,2008-11-20 17:00,2008-11-04 08:00,2008-11-20 17:00,,,,,PT_Normal,,,,,yhFUVX9OxkaZeiZ90zih4w,,,,N,0,0
1510,83409,829,12143,912,1,0,N,N,N,CP_Drtn,TT_Task,DT_FixedDUR2,RV_OK,TK_NotStart,712GU54450,Mirrors,2296,200,144,120,0,186,186,120,0,0,0,,,,2008-12-16 08:00,2009-01-01 17:00,,2008-11-17 08:00,2008-12-03 17:00,2008-11-17 08:00,2008-12-03 17:00,2008-11-17 08:00,2008-12-03 17:00,,,,,PT_Normal,,,,,N2xGVzS2AEatwMuR9J5Tow,,,,N,0,0
1511,83410,829,12051,912,1,100,N,N,N,CP_Drtn,TT_Task,DT_FixedDUR2,RV_OK,TK_Complete,712GU54500,Concealed Flushing Cistern,2296,400,0,0,186,0,252,120,,66,0,,2008-09-06 08:00,2008-09-22 17:00,2008-11-30 08:00,2008-11-29 17:00,,2008-10-02 08:00,2008-10-01 17:00,,,2008-09-06 08:00,2008-09-22 17:00,,,,,PT_Normal,,,,,p7iSFSmaRUaz+BxiwXffyg,,,,N,186,66
1512,83411,829,12145,912,1,100,N,N,N,CP_Drtn,TT_Task,DT_FixedDUR2,RV_OK,TK_Complete,712GU56050,Chasing and installation of drainage pipes,2296,184,0,0,285,0,285,120,,,0,,2008-08-25 08:00,2008-09-10 17:00,2008-10-29 08:00,2008-10-28 17:00,,2008-10-02 08:00,2008-10-01 17:00,,,2008-08-25 08:00,2008-09-10 17:00,,,,,PT_Normal,,,,,XrpIL3irbEqiVchF3Cao5w,,,,N,285,0
1513,83412,829,12145,912,1,100,N,N,N,CP_Drtn,TT_Task,DT_FixedDUR2,RV_OK,TK_Complete,712GU56100,Drainage riser pipes,2296,184,0,0,284,0,284,64,,,0,,2008-08-21 08:00,2008-08-30 17:00,2008-10-29 08:00,2008-10-28 17:00,,2008-10-02 08:00,2008-10-01 17:00,,,2008-08-21 08:00,2008-08-30 17:00,,,,,PT_Normal,,,,,Pjf4OCQt/U63/oIy6u7Q0w,,,,N,284,0
1514,83413,829,12146,912,1,0,N,N,N,CP_Drtn,TT_Task,DT_FixedDUR2,RV_OK,TK_NotStart,712GU56150,Over head drainage pipe works,2296,208,0,64,0,257.6,257.6,64,0,0,0,,,,2008-11-03 08:00,2008-11-11 17:00,,2008-10-04 08:00,2008-10-12 17:00,2008-10-04 08:00,2008-10-12 17:00,2008-10-04 08:00,2008-10-12 17:00,,,,,PT_Normal,,,,,/VwfTFRlHEiybEvOBhYHyw,,,,N,0,0
1515,83414,829,12066,912,1,100,N,N,N,CP_Drtn,TT_Task,DT_FixedDUR2,RV_OK,TK_Complete,712GU58050,Fire fighting pipe works,2296,280,0,0,292,0,292,72,,,0,,2008-08-31 08:00,2008-09-09 17:00,2008-11-12 08:00,2008-11-11 17:00,,2008-10-02 08:00,2008-10-01 17:00,,,2008-08-31 08:00,2008-09-09 17:00,,,,,PT_Normal,,,,,EmEIMP4eFkOrEf2vOAulew,,,,N,292,0
1516,83415,829,12149,912,1,0,N,N,N,CP_Drtn,TT_Task,DT_FixedDUR2,RV_OK,TK_NotStart,712GU58250,Sprinkler heads,2296,632,448,64,0,394,394,64,0,0,0,,,,2009-01-31 08:00,2009-02-08 17:00,,2008-10-30 08:00,2008-11-08 17:00,2008-10-30 08:00,2008-11-08 17:00,2008-10-30 08:00,2008-11-08 17:00,,,,,PT_Normal,,,,,vgojqWwbtUad11+IcOXCeg,,,,N,0,0
1517,83416,829,12151,912,1,100,N,N,N,CP_Drtn,TT_Task,DT_FixedDUR2,RV_OK,TK_Complete,712GU66050,Chasing and installation of conduits,2296,168,0,0,1528,0,1528,120,,,0,,2008-08-23 08:00,2008-09-08 17:00,2008-10-27 08:00,2008-10-26 17:00,,2008-10-02 08:00,2008-10-01 17:00,,,2008-08-23 08:00,2008-09-08 17:00,,,,,PT_Normal,,,,,U9bruqZypUuUGYkezuTK8Q,,,,N,1528,0
1518,83417,829,12362,912,1,100,N,N,N,CP_Drtn,TT_Task,DT_FixedDUR2,RV_OK,TK_Complete,712GU68050,Single core wiring,2296,280,0,0,1339.2,0,1339.2,72,,,0,,2008-08-25 08:00,2008-09-03 17:00,2008-11-12 08:00,2008-11-11 17:00,,2008-10-02 08:00,2008-10-01 17:00,,,2008-08-25 08:00,2008-09-03 17:00,,,,,PT_Normal,,,,,HSLVnjJQKEqCgahMVTI9VA,,,,N,1339.2,0
1519,83418,829,12054,912,1,0,N,N,N,CP_Drtn,TT_Task,DT_FixedDUR2,RV_OK,TK_NotStart,712GU68350,Light Fittings,2296,616,592,120,0,1035.2,1035.2,120,0,0,0,,,,2009-01-22 08:00,2009-02-08 17:00,,2008-10-25 08:00,2008-11-10 17:00,2008-10-25 08:00,2008-11-10 17:00,2008-10-25 08:00,2008-11-10 17:00,,,,,PT_Normal,,,,,ChY65yr14k6RVs4Jl+JdiA,,,,N,0,0
1520,83419,829,12054,912,1,0,N,N,N,CP_Drtn,TT_Task,DT_FixedDUR2,RV_OK,TK_NotStart,712GU68600,Switches & sockets,2296,584,560,72,0,494.4,494.4,72,0,0,0,,,,2009-01-29 08:00,2009-02-08 17:00,,2008-11-05 08:00,2008-11-15 17:00,2008-11-05 08:00,2008-11-15 17:00,2008-11-05 08:00,2008-11-15 17:00,,,,,PT_Normal,,,,,jxl2I7hF5E69badNhZVVvQ,,,,N,0,0
1521,83420,829,12156,912,1,100,N,N,N,CP_Drtn,TT_Task,DT_FixedDUR2,RV_OK,TK_Complete,712GU74050,Fire alarm cables,2296,280,0,0,380.8,0,380.8,64,,,0,,2008-08-31 08:00,2008-09-08 17:00,2008-11-12 08:00,2008-11-11 17:00,,2008-10-02 08:00,2008-10-01 17:00,,,2008-08-31 08:00,2008-09-08 17:00,,,,,PT_Normal,,,,,b+DquxWMwU2OXSPwG2uTlA,,,,N,380.8,0
1522,83421,829,12037,912,1,0,N,N,N,CP_Drtn,TT_Task,DT_FixedDUR2,RV_OK,TK_NotStart,712GU74100,Fire alarm fittings,2296,616,448,64,0,116.8,116.8,64,0,0,0,,,,2009-01-31 08:00,2009-02-08 17:00,,2008-11-02 08:00,2008-11-10 17:00,2008-11-02 08:00,2008-11-10 17:00,2008-11-02 08:00,2008-11-10 17:00,,,,,PT_Normal,,,,,M3XXgx8hpUeM1r2hYXGOQg,,,,N,0,0
1523,83422,829,12059,912,1,50,N,N,N,CP_Drtn,TT_Task,DT_FixedDUR2,RV_OK,TK_Active,712GU76050,Structured cabling,2296,168,0,32,172.8,172.8,345.6,64,,,,,2008-09-28 08:00,,2008-10-27 08:00,2008-10-30 17:00,,2008-10-02 08:00,2008-10-06 17:00,2008-10-02 08:00,2008-10-06 17:00,2008-09-28 08:00,2008-10-06 17:00,,,,,PT_Normal,,,,,Z7oFbV222U2rPo0XmQh51g,,,,N,172.8,0
1524,83423,829,11207,912,1,0,N,N,N,CP_Drtn,TT_Task,DT_FixedDUR2,RV_OK,TK_NotStart,712PE46050,Jambs & headers,2306,448,0,120,0,936,936,120,16,0,16,,,,2008-12-10 08:00,2008-12-27 17:00,,2008-10-06 08:00,2008-10-22 17:00,2008-10-06 08:00,2008-10-22 17:00,2008-10-06 08:00,2008-10-22 17:00,,,,,PT_Normal,,,,,xtufQ6LeW0ajlLTFj6afZw,,,,N,0,0
1525,83424,829,11207,912,1,0,N,N,N,CP_Drtn,TT_Task,DT_FixedDUR2,RV_OK,TK_NotStart,712PE46100,Brackets & seperators,2306,448,0,120,0,536,536,120,16,0,16,,,,2008-12-28 08:00,2009-01-13 17:00,,2008-10-23 08:00,2008-11-09 17:00,2008-10-23 08:00,2008-11-09 17:00,2008-10-23 08:00,2008-11-09 17:00,,,,,PT_Normal,,,,,l4yIxgS+QE+aAm4diutllA,,,,N,0,0
1526,83425,829,11207,912,1,0,N,N,N,CP_Drtn,TT_Task,DT_FixedDUR2,RV_OK,TK_NotStart,712PE46150,Guide rails,2306,448,0,120,0,536,536,120,16,0,16,,,,2009-01-14 08:00,2009-01-31 17:00,,2008-11-10 08:00,2008-11-26 17:00,2008-11-10 08:00,2008-11-26 17:00,2008-11-10 08:00,2008-11-26 17:00,,,,,PT_Normal,,,,,jQPMjXdvpkiJe/9UzCySPw,,,,N,0,0
1527,83426,829,11207,912,1,0,N,N,N,CP_Drtn,TT_Task,DT_FixedDUR2,RV_OK,TK_NotStart,712PE46200,Machine room works,2306,448,0,120,0,536,536,120,16,0,16,,,,2009-01-26 08:00,2009-02-11 17:00,,2008-11-22 08:00,2008-12-08 17:00,2008-11-22 08:00,2008-12-08 17:00,2008-11-22 08:00,2008-12-08 17:00,,,,,PT_Normal,,,,,CRgq9tEi1UuNHhhBwHmcNA,,,,N,0,0
1528,83427,829,11207,912,1,0,N,N,N,CP_Drtn,TT_Task,DT_FixedDUR2,RV_OK,TK_NotStart,712PE46250,Cabin works,2306,448,0,120,0,472,472,120,0,0,0,,,,2009-02-07 08:00,2009-02-23 17:00,,2008-12-03 08:00,2008-12-20 17:00,2008-12-03 08:00,2008-12-20 17:00,2008-12-03 08:00,2008-12-20 17:00,,,,,PT_Normal,,,,,TZC9umxut0CeRhn/jP80HA,,,,N,0,0
1529,83428,829,11207,912,1,0,N,N,N,CP_Drtn,TT_Task,DT_FixedDUR2,RV_OK,TK_NotStart,712PE46300,"Ropping, hatch doors, hoistways & wirring",2306,448,0,120,0,616,616,120,16,0,16,,,,2009-02-18 08:00,2009-03-07 17:00,,2008-12-15 08:00,2008-12-31 17:00,2008-12-15 08:00,2008-12-31 17:00,2008-12-15 08:00,2008-12-31 17:00,,,,,PT_Normal,,,,,L9vtN0efLU+GyEBD8OoW/Q,,,,N,0,0
1530,83429,829,11898,912,1,25,N,N,N,CP_Drtn,TT_Task,DT_FixedDUR2,RV_OK,TK_Active,712RF12350,Roof Parapets,2306,144,0,24,2243.1,6729.3,8972.4,32,99744,24936,74808,,2008-10-01 08:00,,2008-10-23 08:00,2008-10-26 17:00,,2008-10-02 08:00,2008-10-05 17:00,2008-10-02 08:00,2008-10-05 17:00,2008-10-01 08:00,2008-10-05 17:00,,,,,PT_Normal,,,,,NE3nNb0MmE2JhPa0qlFXdA,,,,N,2243.1,24936
1531,83430,829,11086,912,1,0,N,N,N,CP_Drtn,TT_Task,DT_FixedDUR2,RV_OK,TK_NotStart,712RF22200,Roof light weight concreting & angle fillet,2306,208,0,72,0,17722,17722,72,14120,0,14120,,,,2008-11-24 08:00,2008-12-03 17:00,,2008-10-25 08:00,2008-11-03 17:00,2008-10-25 08:00,2008-11-03 17:00,2008-10-25 08:00,2008-11-03 17:00,,,,,PT_Normal,,,,,vegjky128Uq0kCzYN+9uQA,,,,N,0,0
1532,83431,829,11086,912,1,0,N,N,N,CP_Drtn,TT_Task,DT_FixedDUR2,RV_OK,TK_NotStart,712RF22250,Roof membrane,2306,208,0,72,0,17016,17016,72,14120,0,14120,,,,2008-12-04 08:00,2008-12-14 17:00,,2008-11-04 08:00,2008-11-13 17:00,2008-11-04 08:00,2008-11-13 17:00,2008-11-04 08:00,2008-11-13 17:00,,,,,PT_Normal,,,,,ylRC6sHovki3r3pgzbYCow,,,,N,0,0
1533,83432,829,11086,912,1,0,N,N,N,CP_Drtn,TT_Task,DT_FixedDUR2,RV_OK,TK_NotStart,712RF22300,Polystyrene insulation & seperation layers,2306,496,0,64,0,17008,17008,64,14120,0,14120,,,,2009-01-26 08:00,2009-02-03 17:00,,2008-11-15 08:00,2008-11-23 17:00,2008-11-15 08:00,2008-11-23 17:00,2008-11-15 08:00,2008-11-23 17:00,,,,,PT_Normal,,,,,JRYHpsqGpUWFkkIgb2M6sA,,,,N,0,0
1534,83433,829,11086,912,1,0,N,N,N,CP_Drtn,TT_Task,DT_FixedDUR2,RV_OK,TK_NotStart,712RF22350,Concrete tiles,2306,496,0,80,0,16330,16330,80,13000,0,13000,,,,2009-02-07 08:00,2009-02-17 17:00,,2008-11-26 08:00,2008-12-07 17:00,2008-11-26 08:00,2008-12-07 17:00,2008-11-26 08:00,2008-12-07 17:00,,,,,PT_Normal,,,,,1zUL6AfqqEOhiOCqMGtjkQ,,,,N,0,0
1535,83434,829,11086,912,1,0,N,N,N,CP_Drtn,TT_Task,DT_FixedDUR2,RV_OK,TK_NotStart,712RF22400,Gravel fill,2306,776,464,48,0,1280,1280,48,1120,0,1120,,,,2009-03-31 08:00,2009-04-06 17:00,,2008-12-08 08:00,2008-12-14 17:00,2008-12-08 08:00,2008-12-14 17:00,2008-12-08 08:00,2008-12-14 17:00,,,,,PT_Normal,,,,,EqqrKIkJHkKWSsZ94BB/3A,,,,N,0,0
1536,83435,829,11086,912,1,0,N,N,N,CP_Drtn,TT_Task,DT_FixedDUR2,RV_OK,TK_NotStart,712RF22450,Aluminium flashing,2306,760,448,64,0,3256.2,3256.2,64,2776,0,2776,,,,2009-03-29 08:00,2009-04-06 17:00,,2008-12-08 08:00,2008-12-16 17:00,2008-12-08 08:00,2008-12-16 17:00,2008-12-08 08:00,2008-12-16 17:00,,,,,PT_Normal,,,,,2LWp3n/NLkWffr8vIdkt3A,,,,N,0,0
1537,83436,829,11087,912,1,0,N,N,N,CP_Drtn,TT_Task,DT_FixedDUR2,RV_OK,TK_NotStart,712RF24300,Aluminium framing for roof towers,2306,760,448,64,0,768,768,64,64,0,64,,,,2009-03-29 08:00,2009-04-06 17:00,,2008-12-08 08:00,2008-12-16 17:00,2008-12-08 08:00,2008-12-16 17:00,2008-12-08 08:00,2008-12-16 17:00,,,,,PT_Normal,,,,,UgnUuRtfMkewYwWOa0MTuw,,,,N,0,0
1538,83437,829,10979,912,1,0,N,N,N,CP_Drtn,TT_Task,DT_FixedDUR2,RV_OK,TK_NotStart,712RF44250,Roof upstands & equipement foundations,2306,208,0,64,0,3979.76,3979.76,64,608,0,608,,,,2008-11-15 08:00,2008-11-23 17:00,,2008-10-15 08:00,2008-10-23 17:00,2008-10-15 08:00,2008-10-23 17:00,2008-10-15 08:00,2008-10-23 17:00,,,,,PT_Normal,,,,,LFOCjCRROkykp6RlKnzR0g,,,,N,0,0
1539,83438,829,10979,912,1,0,N,N,N,CP_Drtn,TT_Task,DT_FixedDUR2,RV_OK,TK_NotStart,712RF44350,Roof tower concrete elements,2306,272,64,64,0,499.6,499.6,64,64,0,64,,,,2008-11-15 08:00,2008-11-23 17:00,,2008-10-06 08:00,2008-10-14 17:00,2008-10-06 08:00,2008-10-14 17:00,2008-10-06 08:00,2008-10-14 17:00,,,,,PT_Normal,,,,,D2iQR2wpq02FIWYMX9cU0Q,,,,N,0,0
1540,83439,829,12117,912,1,0,N,N,N,CP_Drtn,TT_Task,DT_FixedDUR2,RV_OK,TK_NotStart,712RF52400,FAHU's & fans,2296,496,192,120,0,1836,1836,120,0,0,0,,,,2009-02-09 08:00,2009-02-25 17:00,,2008-11-29 08:00,2008-12-15 17:00,2008-11-29 08:00,2008-12-15 17:00,2008-11-29 08:00,2008-12-15 17:00,,,,,PT_Normal,,,,,mgkabX42XEe2rGfrfKbU8A,,,,N,0,0
1541,83440,829,12296,912,1,0,N,N,N,CP_Drtn,TT_Task,DT_FixedDUR2,RV_OK,TK_NotStart,712RF68800,Lighting protection system,2296,224,80,64,0,328,328,64,0,0,0,,,,2008-12-01 08:00,2008-12-09 17:00,,2008-10-29 08:00,2008-11-06 17:00,2008-10-29 08:00,2008-11-06 17:00,2008-10-29 08:00,2008-11-06 17:00,,,,,PT_Normal,,,,,yxkiI2XflkmlUIu+jR7KHg,,,,N,0,0
1542,83441,829,11090,912,1,0,N,N,N,CP_Drtn,TT_Task,DT_FixedDUR2,RV_OK,TK_NotStart,712ST18150,Painting 1st top coat,2306,432,120,120,0,12972,12972,120,12240,0,12240,,,,2009-03-21 08:00,2009-04-06 17:00,,2009-01-17 08:00,2009-02-02 17:00,2009-01-17 08:00,2009-02-02 17:00,2009-01-17 08:00,2009-02-02 17:00,,,,,PT_Normal,,,,,5r39eEHvukSZyZ2pm7CqFw,,,,N,0,0
1543,83442,829,10982,912,1,0,N,N,N,CP_Drtn,TT_Task,DT_FixedDUR2,RV_OK,TK_NotStart,712ST20050,Floor tiles for staircases,2306,432,0,120,0,1848,1848,120,1280,0,1280,,,,2009-02-02 08:00,2009-02-18 17:00,,2008-12-01 08:00,2008-12-17 17:00,2008-12-01 08:00,2008-12-17 17:00,2008-12-01 08:00,2008-12-17 17:00,,,,,PT_Normal,,,,,EBKz8/mqQEu6CJBFgIu/2w,,,,N,0,0
1544,83443,829,10982,912,1,0,N,N,N,CP_Drtn,TT_Task,DT_FixedDUR2,RV_OK,TK_NotStart,712ST20150,Treads & risers,2306,432,0,120,0,4320,4320,120,2800,0,2800,,,,2009-01-10 08:00,2009-01-26 17:00,,2008-11-08 08:00,2008-11-24 17:00,2008-11-08 08:00,2008-11-24 17:00,2008-11-08 08:00,2008-11-24 17:00,,,,,PT_Normal,,,,,EiGd1EFVcU6AWBmZzl2akA,,,,N,0,0
1545,83444,829,11092,912,1,0,N,N,N,CP_Drtn,TT_Task,DT_FixedDUR2,RV_OK,TK_NotStart,712ST24350,Staircase handrail,2306,432,0,120,0,3578,3578,120,1976,0,1976,,,,2009-02-25 08:00,2009-03-14 17:00,,2008-12-24 08:00,2009-01-10 17:00,2008-12-24 08:00,2009-01-10 17:00,2008-12-24 08:00,2009-01-10 17:00,,,,,PT_Normal,,,,,toa/9UfBIU2mpwDLPgW1hQ,,,,N,0,0
1546,83445,829,10793,912,1,0,N,N,N,CP_Drtn,TT_Task,DT_FixedDUR2,RV_OK,TK_NotStart,7131L00000,Pre-Snagging & Disnagging for duplexes,2296,0,0,120,0,420,420,120,0,0,0,,,,2009-01-28 08:00,2009-02-14 17:00,,2009-01-28 08:00,2009-02-14 17:00,2009-01-28 08:00,2009-02-14 17:00,2009-01-28 08:00,2009-02-14 17:00,,,,,PT_Normal,,,,,d4oDfbOvCUCUT/13NahXRw,,,,N,0,0
1547,83446,829,10793,912,1,0,N,N,N,CP_Drtn,TT_Task,DT_FixedDUR2,RV_OK,TK_NotStart,7131L00002,Pre-Snagging & Disnagging for corrid & Srv rooms,2296,56,0,64,0,214,214,64,0,0,0,,,,2009-02-25 08:00,2009-03-05 17:00,,2009-02-17 08:00,2009-02-25 17:00,2009-02-17 08:00,2009-02-25 17:00,2009-02-17 08:00,2009-02-25 17:00,,,,,PT_Normal,,,,,TRQX6ygEU02z4xLK53/Mxg,,,,N,0,0
1548,83447,829,11810,912,1,100,N,N,N,CP_Drtn,TT_Task,DT_FixedDUR2,RV_OK,TK_Complete,7131L12050,Columns & walls 1L to 1U - Part 1,2306,0,0,0,3408.26,0,3408.26,32,102126.4,102126.4,0,,2008-08-03 08:00,2008-08-06 17:00,2008-10-02 08:00,2008-10-01 17:00,,2008-10-02 08:00,2008-10-01 17:00,,,2008-08-03 08:00,2008-08-06 17:00,,,,,PT_Normal,,,,,TC7fmpxJG0yNfv3hE+Aj3Q,,,,N,3408.26,102126.4
1549,83448,829,11810,912,1,100,N,N,N,CP_Drtn,TT_Task,DT_FixedDUR2,RV_OK,TK_Complete,7131L12051,Columns & walls 1L to 1U - Part 2,2306,0,0,0,3408.26,0,3408.26,32,102126.4,102126.4,0,,2008-08-11 08:00,2008-08-14 17:00,2008-10-02 08:00,2008-10-01 17:00,,2008-10-02 08:00,2008-10-01 17:00,,,2008-08-11 08:00,2008-08-14 17:00,,,,,PT_Normal,,,,,OabTG9xMYUeHx8ZNjfWkNQ,,,,N,3408.26,102126.4
1550,83449,829,11810,912,1,100,N,N,N,CP_Drtn,TT_Task,DT_FixedDUR2,RV_OK,TK_Complete,7131L12052,Columns & walls 1L to 1U - Middle Part,2306,0,0,0,7073.11,0,7073.11,32,212979.36,212979.36,0,,2008-08-10 08:00,2008-08-13 17:00,2008-10-02 08:00,2008-10-01 17:00,,2008-10-02 08:00,2008-10-01 17:00,,,2008-08-10 08:00,2008-08-13 17:00,,,,,PT_Normal,,,,,s+A6NCpQb0aiszC0qAV23A,,,,N,7073.11,212979.36
1551,83450,829,11810,912,1,100,N,N,N,CP_Drtn,TT_Task,DT_FixedDUR2,RV_OK,TK_Complete,7131L12200,Slab @ 1U level - Part 1,2306,0,0,0,1938.1,0,1938.1,56,69809.52,69809.52,0,,2008-08-11 08:00,2008-08-18 17:00,2008-10-02 08:00,2008-10-01 17:00,,2008-10-02 08:00,2008-10-01 17:00,,,2008-08-11 08:00,2008-08-18 17:00,,,,,PT_Normal,,,,,rkpTt4xuXUa2afKC/gudJg,,,,N,1938.1,69809.52
1552,83451,829,11810,912,1,100,N,N,N,CP_Drtn,TT_Task,DT_FixedDUR2,RV_OK,TK_Complete,7131L12201,Slab @ 1U level - Part 2,2306,0,0,0,1938.1,0,1938.1,56,69809.52,69809.52,0,,2008-08-19 08:00,2008-08-26 17:00,2008-10-02 08:00,2008-10-01 17:00,,2008-10-02 08:00,2008-10-01 17:00,,,2008-08-19 08:00,2008-08-26 17:00,,,,,PT_Normal,,,,,KubKw8uFsUGZ/3VBOc2Hfw,,,,N,1938.1,69809.52
1553,83452,829,11810,912,1,100,N,N,N,CP_Drtn,TT_Task,DT_FixedDUR2,RV_OK,TK_Complete,7131L12202,Slab @ 1U level - Middle Part,2306,0,0,0,2781.47,0,2781.47,56,101094.8,101094.8,0,,2008-08-18 08:00,2008-08-25 17:00,2008-10-02 08:00,2008-10-01 17:00,,2008-10-02 08:00,2008-10-01 17:00,,,2008-08-18 08:00,2008-08-25 17:00,,,,,PT_Normal,,,,,wczi1h6Oa0GklAXHzdkq0Q,,,,N,2781.47,101094.8
1554,83453,829,11810,912,1,100,N,N,N,CP_Drtn,TT_Task,DT_FixedDUR2,RV_OK,TK_Complete,7131L12250,Staircases 1L to 1U,2306,288,0,0,991.88,0,991.88,24,18457.6,18457.6,0,,2008-08-27 08:00,2008-08-30 17:00,2008-11-13 08:00,2008-11-12 17:00,,2008-10-02 08:00,2008-10-01 17:00,,,2008-08-27 08:00,2008-08-30 17:00,,,,,PT_Normal,,,,,0XvCXdE/y0mf7ioSx+clbw,,,,N,991.88,18457.6
1555,83454,829,11133,912,1,73.3,N,N,N,CP_Drtn,TT_Task,DT_FixedDUR2,RV_OK,TK_Active,7131L14050,Block works,2306,0,0,32,17836.84,8022.83,30085.5,120,18440,17748.47,4917.36,,2008-09-20 08:00,,2008-10-02 08:00,2008-10-06 17:00,,2008-10-02 08:00,2008-10-06 17:00,2008-10-02 08:00,2008-10-06 17:00,2008-09-20 08:00,2008-10-06 17:00,,,,,PT_Normal,,,,,aErbsM0oqEuUSVK8GSDifA,,,,N,17836.84,17748.47
1556,83455,829,11134,912,1,0,N,N,N,CP_Drtn,TT_Task,DT_FixedDUR2,RV_OK,TK_NotStart,7131L16050,Plaster works,2306,0,0,120,0,24385.9,24385.9,120,19032,0,19032,,,,2008-10-11 08:00,2008-10-27 17:00,,2008-10-11 08:00,2008-10-27 17:00,2008-10-11 08:00,2008-10-27 17:00,2008-10-11 08:00,2008-10-27 17:00,,,,,PT_Normal,,,,,Ysx2svDtkUaM2zn7tzphLA,,,,N,0,0
1557,83456,829,11134,912,1,0,N,N,N,CP_Drtn,TT_Task,DT_FixedDUR2,RV_OK,TK_NotStart,7131L16051,Plaste works behind tiles,2306,200,200,120,0,10136.2,10136.2,120,7856,0,7856,,,,2008-11-09 08:00,2008-11-25 17:00,,2008-10-11 08:00,2008-10-27 17:00,2008-10-11 08:00,2008-10-27 17:00,2008-10-11 08:00,2008-10-27 17:00,,,,,PT_Normal,,,,,flzLe0tXg0iJin7KoadcIg,,,,N,0,0
1558,83457,829,11026,912,1,26.7,N,N,N,CP_Drtn,TT_Task,DT_FixedDUR2,RV_OK,TK_Active,7131L18050,Rendering works,2306,64,64,88,1515.49,4167.51,5683,120,5000,1333.36,3666.64,,2008-09-28 08:00,,2008-10-12 08:00,2008-10-23 17:00,,2008-10-02 08:00,2008-10-14 17:00,2008-10-02 08:00,2008-10-14 17:00,2008-09-28 08:00,2008-10-14 17:00,,,,,PT_Normal,,,,,dTmBHZNnuke174ctARD13g,,,,N,1515.49,1333.36
1559,83458,829,11026,912,1,0,N,N,N,CP_Drtn,TT_Task,DT_FixedDUR2,RV_OK,TK_NotStart,7131L18100,Painting base coats,2306,0,0,120,0,26555.6,26555.6,120,24032,0,24032,,,,2008-10-19 08:00,2008-11-04 17:00,,2008-10-19 08:00,2008-11-04 17:00,2008-10-19 08:00,2008-11-04 17:00,2008-10-19 08:00,2008-11-04 17:00,,,,,PT_Normal,,,,,6yGe0G0IvUWL8pJ16YSDKg,,,,N,0,0
1560,83459,829,11026,912,1,0,N,N,N,CP_Drtn,TT_Task,DT_FixedDUR2,RV_OK,TK_NotStart,7131L18150,Painting 1st top coat for apartments,2306,144,0,72,0,17300.2,17300.2,72,16408,0,16408,,,,2009-01-10 08:00,2009-01-19 17:00,,2008-12-20 08:00,2008-12-29 17:00,2008-12-20 08:00,2008-12-29 17:00,2008-12-20 08:00,2008-12-29 17:00,,,,,PT_Normal,,,,,ydZiEOm1RkKOxgwFiMENEg,,,,N,0,0
1561,83460,829,11026,912,1,0,N,N,N,CP_Drtn,TT_Task,DT_FixedDUR2,RV_OK,TK_NotStart,7131L18153,Painting 1st top coat for corridors/lobbies,2306,248,0,48,0,14370,14370,48,13640,0,13640,,,,2009-02-04 08:00,2009-02-10 17:00,,2008-12-30 08:00,2009-01-05 17:00,2008-12-30 08:00,2009-01-05 17:00,2008-12-30 08:00,2009-01-05 17:00,,,,,PT_Normal,,,,,PXm5tZ+q10aS8Rglxnbt3Q,,,,N,0,0
1562,83461,829,11026,912,1,0,N,N,N,CP_Drtn,TT_Task,DT_FixedDUR2,RV_OK,TK_NotStart,7131L18155,Painting 1st top coat for service rooms,2306,232,0,48,0,6364.4,6364.4,48,6016,0,6016,,,,2009-02-02 08:00,2009-02-08 17:00,,2008-12-30 08:00,2009-01-05 17:00,2008-12-30 08:00,2009-01-05 17:00,2008-12-30 08:00,2009-01-05 17:00,,,,,PT_Normal,,,,,05gmXnJpg0aH6Ygdfsrpmw,,,,N,0,0
1563,83462,829,10793,912,1,0,N,N,N,CP_Drtn,TT_Task,DT_FixedDUR2,RV_OK,TK_NotStart,7131L18200,Painting final top coat,2306,112,56,32,0,25265.8,25265.8,32,24032,0,24032,,,,2009-03-18 08:00,2009-03-22 17:00,,2009-03-02 08:00,2009-03-05 17:00,2009-03-02 08:00,2009-03-05 17:00,2009-03-02 08:00,2009-03-05 17:00,,,,,PT_Normal,,,,,usCcK/fvd0u0LNi89N90gQ,,,,N,0,0
1564,83463,829,11027,912,1,0,N,N,N,CP_Drtn,TT_Task,DT_FixedDUR2,RV_OK,TK_NotStart,7131L20050,Floor tiles for apartments-dry area,2306,192,0,120,0,8846.4,8846.4,120,6464,0,6464,,,,2008-11-25 08:00,2008-12-11 17:00,,2008-10-28 08:00,2008-11-13 17:00,2008-10-28 08:00,2008-11-13 17:00,2008-10-28 08:00,2008-11-13 17:00,,,,,PT_Normal,,,,,wRom/LPvwkCWqq+4wfNGJQ,,,,N,0,0
1565,83464,829,11027,912,1,0,N,N,N,CP_Drtn,TT_Task,DT_FixedDUR2,RV_OK,TK_NotStart,7131L20053,Floor tiles for corridors / lobbies,2306,136,0,48,0,4638,4638,48,3400,0,3400,,,,2009-01-06 08:00,2009-01-12 17:00,,2008-12-17 08:00,2008-12-23 17:00,2008-12-17 08:00,2008-12-23 17:00,2008-12-17 08:00,2008-12-23 17:00,,,,,PT_Normal,,,,,LXYuAI1UJkG6EWWMBJYpRg,,,,N,0,0
1566,83465,829,11027,912,1,0,N,N,N,CP_Drtn,TT_Task,DT_FixedDUR2,RV_OK,TK_NotStart,7131L20070,Floor tiles for apartments-wet area,2306,0,0,120,0,3684,3684,120,2640,0,2640,,,,2008-12-10 08:00,2008-12-27 17:00,,2008-12-10 08:00,2008-12-27 17:00,2008-12-10 08:00,2008-12-27 17:00,2008-12-10 08:00,2008-12-27 17:00,,,,,PT_Normal,,,,,J7hiM3qxA0mJ/cEjbKaTpw,,,,N,0,0
1567,83466,829,11027,912,1,0,N,N,N,CP_Drtn,TT_Task,DT_FixedDUR2,RV_OK,TK_NotStart,7131L20110,Wall tiles for apartments-wet area,2306,56,0,120,0,9159,9159,120,6026,0,6026,,,,2008-12-18 08:00,2009-01-04 17:00,,2008-12-10 08:00,2008-12-27 17:00,2008-12-10 08:00,2008-12-27 17:00,2008-12-10 08:00,2008-12-27 17:00,,,,,PT_Normal,,,,,6d9t47rB4EuzZtFFE0O3oA,,,,N,0,0
1568,83467,829,11137,912,1,53.3,N,N,N,CP_Drtn,TT_Task,DT_FixedDUR2,RV_OK,TK_Active,7131L22150,W/P for for apartments,2306,416,0,56,2602.85,2277.55,4880.4,120,4328,2308.24,2019.76,,2008-09-23 08:00,,2008-12-02 08:00,2008-12-09 17:00,,2008-10-02 08:00,2008-10-09 17:00,2008-10-02 08:00,2008-10-09 17:00,2008-09-23 08:00,2008-10-09 17:00,,,,,PT_Normal,,,,,R2ogh+JOwUCD0rjd9cwcZQ,,,,N,2602.85,2308.24
1569,83468,829,10920,912,1,0,N,N,N,CP_Drtn,TT_Task,DT_FixedDUR2,RV_OK,TK_NotStart,7131L24050,Aluminium doors & windows,2306,240,184,120,0,1976,1976,120,464,0,464,,,,2008-12-10 08:00,2008-12-27 17:00,,2008-11-05 08:00,2008-11-22 17:00,2008-11-05 08:00,2008-11-22 17:00,2008-11-05 08:00,2008-11-22 17:00,,,,,PT_Normal,,,,,Tw1j7yEN9U2oLbQhnHr9Sg,,,,N,0,0
1570,83469,829,10920,912,1,0,N,N,N,CP_Drtn,TT_Task,DT_FixedDUR2,RV_OK,TK_NotStart,7131L24200,Balcony handrails,2306,0,0,120,0,2710,2710,120,1480,0,1480,,,,2008-12-28 08:00,2009-01-13 17:00,,2008-12-28 08:00,2009-01-13 17:00,2008-12-28 08:00,2009-01-13 17:00,2008-12-28 08:00,2009-01-13 17:00,,,,,PT_Normal,,,,,dgggDDEjZ0ik6V0cUdfr6g,,,,N,0,0
1571,83470,829,10920,912,1,0,N,N,N,CP_Drtn,TT_Task,DT_FixedDUR2,RV_OK,TK_NotStart,7131L24203,Lobby handrails,2306,352,104,64,0,946,946,64,504,0,504,,,,2009-02-14 08:00,2009-02-22 17:00,,2008-12-24 08:00,2009-01-01 17:00,2008-12-24 08:00,2009-01-01 17:00,2008-12-24 08:00,2009-01-01 17:00,,,,,PT_Normal,,,,,laczBvonb0KMurHYH5JpVA,,,,N,0,0
1572,83471,829,11139,912,1,0,N,N,N,CP_Drtn,TT_Task,DT_FixedDUR2,RV_OK,TK_NotStart,7131L26050,Steel doors,2306,232,0,64,0,384,384,64,64,0,64,,,,2009-01-24 08:00,2009-02-01 17:00,,2008-12-21 08:00,2008-12-29 17:00,2008-12-21 08:00,2008-12-29 17:00,2008-12-21 08:00,2008-12-29 17:00,,,,,PT_Normal,,,,,ejR3myWuTEO8TAifftxz6g,,,,N,0,0
1573,83472,829,11031,912,1,0,N,N,N,CP_Drtn,TT_Task,DT_FixedDUR2,RV_OK,TK_NotStart,7131L30050,Wooden doors,2306,96,16,176,0,2192,2192,176,576,0,576,,,,2008-12-24 08:00,2009-01-18 17:00,,2008-12-10 08:00,2009-01-04 17:00,2008-12-10 08:00,2009-01-04 17:00,2008-12-10 08:00,2009-01-04 17:00,,,,,PT_Normal,,,,,LNrz9ijKG0CBzw+ZJpLy7g,,,,N,0,0
1574,83473,829,11032,912,1,0,N,N,N,CP_Drtn,TT_Task,DT_FixedDUR2,RV_OK,TK_NotStart,7131L32050,Kitchen cabinets,2306,56,56,128,0,3104,3104,128,96,0,96,,,,2009-01-04 08:00,2009-01-21 17:00,,2008-12-27 08:00,2009-01-13 17:00,2008-12-27 08:00,2009-01-13 17:00,2008-12-27 08:00,2009-01-13 17:00,,,,,PT_Normal,,,,,m/f7Rd1CjUePeiAPRtFPtQ,,,,N,0,0
1575,83474,829,11032,912,1,0,N,N,N,CP_Drtn,TT_Task,DT_FixedDUR2,RV_OK,TK_NotStart,7131L32100,Vanity counters,2306,16,0,120,0,1880,1880,120,160,0,160,,,,2008-12-30 08:00,2009-01-15 17:00,,2008-12-28 08:00,2009-01-13 17:00,2008-12-28 08:00,2009-01-13 17:00,2008-12-28 08:00,2009-01-13 17:00,,,,,PT_Normal,,,,,MzhFy5S/0Ue87VSdy9hVYQ,,,,N,0,0
1576,83475,829,11032,912,1,0,N,N,N,CP_Drtn,TT_Task,DT_FixedDUR2,RV_OK,TK_NotStart,7131L32150,Wardrobes,2306,192,192,120,0,4152,4152,120,192,0,192,,,,2009-01-05 08:00,2009-01-21 17:00,,2008-12-08 08:00,2008-12-24 17:00,2008-12-08 08:00,2008-12-24 17:00,2008-12-08 08:00,2008-12-24 17:00,,,,,PT_Normal,,,,,PXWQxV51gEST0q+j5FbmGQ,,,,N,0,0
1577,83476,829,11142,912,1,0,N,N,N,CP_Drtn,TT_Task,DT_FixedDUR2,RV_OK,TK_NotStart,7131L34050,False ceiling works for apartments-dry area,2306,136,0,160,0,1506.16,1506.16,160,897.44,0,897.44,,,,2008-12-16 08:00,2009-01-07 17:00,,2008-11-26 08:00,2008-12-18 17:00,2008-11-26 08:00,2008-12-18 17:00,2008-11-26 08:00,2008-12-18 17:00,,,,,PT_Normal,,,,,guZeDM4A+Eiv93oJIzVXgg,,,,N,0,0
1578,83477,829,11142,912,1,0,N,N,N,CP_Drtn,TT_Task,DT_FixedDUR2,RV_OK,TK_NotStart,7131L34053,False ceiling works for corridors/lobbies,2306,136,0,72,0,9876,9876,72,6536,0,6536,,,,2008-12-29 08:00,2009-01-07 17:00,,2008-12-09 08:00,2008-12-18 17:00,2008-12-09 08:00,2008-12-18 17:00,2008-12-09 08:00,2008-12-18 17:00,,,,,PT_Normal,,,,,/sw0A+3LAEmCFPrFJKeI+A,,,,N,0,0
1579,83478,829,11142,912,1,0,N,N,N,CP_Drtn,TT_Task,DT_FixedDUR2,RV_OK,TK_NotStart,7131L34070,False ceiling works for apartments-wet area,2306,0,0,160,0,709.84,709.84,160,366.56,0,366.56,,,,2008-11-26 08:00,2008-12-18 17:00,,2008-11-26 08:00,2008-12-18 17:00,2008-11-26 08:00,2008-12-18 17:00,2008-11-26 08:00,2008-12-18 17:00,,,,,PT_Normal,,,,,4l3laeSRhke94DsvEWr+uw,,,,N,0,0
1580,83479,829,11034,912,1,0,N,N,N,CP_Drtn,TT_Task,DT_FixedDUR2,RV_OK,TK_NotStart,7131L36050,Stone finishing top,2306,96,0,64,0,484,484,64,240,0,240,,,,2009-01-10 08:00,2009-01-18 17:00,,2008-12-27 08:00,2009-01-04 17:00,2008-12-27 08:00,2009-01-04 17:00,2008-12-27 08:00,2009-01-04 17:00,,,,,PT_Normal,,,,,oeueI9Rgzk+2HtHhWbxHXg,,,,N,0,0
1581,83480,829,11034,912,1,0,N,N,N,CP_Drtn,TT_Task,DT_FixedDUR2,RV_OK,TK_NotStart,7131L36100,Thresholds,2306,56,0,120,0,924,924,120,536,0,536,,,,2009-01-05 08:00,2009-01-21 17:00,,2008-12-28 08:00,2009-01-13 17:00,2008-12-28 08:00,2009-01-13 17:00,2008-12-28 08:00,2009-01-13 17:00,,,,,PT_Normal,,,,,zg8gveztlU+oK1K21MMr6Q,,,,N,0,0
1582,83481,829,11035,912,1,0,N,N,N,CP_Drtn,TT_Task,DT_FixedDUR2,RV_OK,TK_NotStart,7131L38100,Epoxy coating system,2306,232,176,48,0,816,816,48,640,0,640,,,,2009-02-16 08:00,2009-02-22 17:00,,2009-01-13 08:00,2009-01-19 17:00,2009-01-13 08:00,2009-01-19 17:00,2009-01-13 08:00,2009-01-19 17:00,,,,,PT_Normal,,,,,IfmEnaw7U0KEYnT3eD8Txw,,,,N,0,0
1583,83482,829,11145,912,1,0,N,N,N,CP_Drtn,TT_Task,DT_FixedDUR2,RV_OK,TK_NotStart,7131L40050,Duplex apartment stairs,2306,192,0,120,0,3816,3816,120,96,0,96,,,,2008-12-13 08:00,2008-12-29 17:00,,2008-11-15 08:00,2008-12-01 17:00,2008-11-15 08:00,2008-12-01 17:00,2008-11-15 08:00,2008-12-01 17:00,,,,,PT_Normal,,,,,thvf0yTB2UOIyVk5jZbcUA,,,,N,0,0
1584,83483,829,11145,912,1,0,N,N,N,CP_Drtn,TT_Task,DT_FixedDUR2,RV_OK,TK_NotStart,7131L40100,Wooden steps for Duplex stairs,2306,192,0,120,0,936,936,120,96,0,96,,,,2008-12-24 08:00,2009-01-10 17:00,,2008-11-26 08:00,2008-12-13 17:00,2008-11-26 08:00,2008-12-13 17:00,2008-11-26 08:00,2008-12-13 17:00,,,,,PT_Normal,,,,,bGOK65lp6kK/pww43TdjTg,,,,N,0,0
1585,83484,829,11145,912,1,0,N,N,N,CP_Drtn,TT_Task,DT_FixedDUR2,RV_OK,TK_NotStart,7131L40150,Duplex stair railings,2306,192,128,120,0,5120,5120,120,2000,0,2000,,,,2009-01-05 08:00,2009-01-21 17:00,,2008-12-08 08:00,2008-12-24 17:00,2008-12-08 08:00,2008-12-24 17:00,2008-12-08 08:00,2008-12-24 17:00,,,,,PT_Normal,,,,,kigQanxpqk6BIC9SEJOwGw,,,,N,0,0
1586,83485,829,11146,912,1,0,N,N,N,CP_Drtn,TT_Task,DT_FixedDUR2,RV_OK,TK_NotStart,7131L42050,Signage works,2306,280,224,48,0,153.8,153.8,48,96,0,96,,,,2009-02-16 08:00,2009-02-22 17:00,,2009-01-06 08:00,2009-01-12 17:00,2009-01-06 08:00,2009-01-12 17:00,2009-01-06 08:00,2009-01-12 17:00,,,,,PT_Normal,,,,,oUJubkppA0KHFAt3UT35rA,,,,N,0,0
1587,83486,829,10970,912,1,20,N,N,N,CP_Drtn,TT_Task,DT_FixedDUR2,RV_OK,TK_Active,7131L44050,Sub-frames,2306,0,0,96,254.4,1017.6,1272,120,576,115.2,460.8,,2008-09-29 08:00,,2008-10-02 08:00,2008-10-15 17:00,,2008-10-02 08:00,2008-10-15 17:00,2008-10-02 08:00,2008-10-15 17:00,2008-09-29 08:00,2008-10-15 17:00,,,,,PT_Normal,,,,,RDeqfRhrm0GunN/Etbou0Q,,,,N,254.4,115.2
1588,83487,829,12272,912,1,100,N,N,N,CP_Drtn,TT_Task,DT_FixedDUR2,RV_OK,TK_Complete,7131L50100,MEP skeleton embedded provisions,2296,0,0,0,512,0,512,72,,,0,,2008-08-03 08:00,2008-08-12 17:00,2008-10-02 08:00,2008-10-01 17:00,,2008-10-02 08:00,2008-10-01 17:00,,,2008-08-03 08:00,2008-08-12 17:00,,,,,PT_Normal,,,,,8yKDMnNS/ECd4tGCCDPbMA,,,,N,512,0
1589,83488,829,12374,912,1,5,N,N,N,CP_Drtn,TT_Task,DT_FixedDUR2,RV_OK,TK_Active,7131L52050,A/C duct works,2296,168,88,152,41.56,789.44,831,160,,,,,2008-10-01 08:00,,2008-10-27 08:00,2008-11-17 17:00,,2008-10-02 08:00,2008-10-23 17:00,2008-10-02 08:00,2008-10-23 17:00,2008-10-01 08:00,2008-10-23 17:00,,,,,PT_Normal,,,,,j/ebbZS1zkevvKOSLoglNg,,,,N,41.56,0
1590,83489,829,12374,912,1,0,N,N,N,CP_Drtn,TT_Task,DT_FixedDUR2,RV_OK,TK_NotStart,7131L52100,Chilled water pipe works,2296,104,24,72,0,787,787,72,0,0,0,,,,2008-10-29 08:00,2008-11-08 17:00,,2008-10-14 08:00,2008-10-23 17:00,2008-10-14 08:00,2008-10-23 17:00,2008-10-14 08:00,2008-10-23 17:00,,,,,PT_Normal,,,,,JwXZGoMsikyG7sMNDq+JVA,,,,N,0,0
1591,83490,829,12184,912,1,0,N,N,N,CP_Drtn,TT_Task,DT_FixedDUR2,RV_OK,TK_NotStart,7131L52150,FCU's hanging,2296,160,80,64,0,935.2,935.2,64,0,0,0,,,,2008-11-05 08:00,2008-11-13 17:00,,2008-10-13 08:00,2008-10-21 17:00,2008-10-13 08:00,2008-10-21 17:00,2008-10-13 08:00,2008-10-21 17:00,,,,,PT_Normal,,,,,nKT6T2s8H0WRgWJJfmZIZg,,,,N,0,0
1592,83491,829,12184,912,1,0,N,N,N,CP_Drtn,TT_Task,DT_FixedDUR2,RV_OK,TK_NotStart,7131L52300,FCU's assembly & duct connections,2296,80,80,80,0,951.2,951.2,80,0,0,0,,,,2008-11-15 08:00,2008-11-25 17:00,,2008-11-03 08:00,2008-11-13 17:00,2008-11-03 08:00,2008-11-13 17:00,2008-11-03 08:00,2008-11-13 17:00,,,,,PT_Normal,,,,,TEoPnACIWkK/fYBQcCUZYw,,,,N,0,0
1593,83492,829,12184,912,1,0,N,N,N,CP_Drtn,TT_Task,DT_FixedDUR2,RV_OK,TK_NotStart,7131L52350,Grills & diffusers,2296,384,160,120,0,912,912,120,0,0,0,,,,2009-02-05 08:00,2009-02-22 17:00,,2008-12-11 08:00,2008-12-28 17:00,2008-12-11 08:00,2008-12-28 17:00,2008-12-11 08:00,2008-12-28 17:00,,,,,PT_Normal,,,,,vfRSEdWmB0CH+nQTqz6SIA,,,,N,0,0
1594,83493,829,12374,912,1,0,N,N,N,CP_Drtn,TT_Task,DT_FixedDUR2,RV_OK,TK_NotStart,7131L52550,A/C duct risers,2296,80,0,64,0,1626,1626,64,0,0,0,,,,2008-10-30 08:00,2008-11-08 17:00,,2008-10-19 08:00,2008-10-27 17:00,2008-10-19 08:00,2008-10-27 17:00,2008-10-19 08:00,2008-10-27 17:00,,,,,PT_Normal,,,,,Ss39cbWlaEqBIzhWCZDHVg,,,,N,0,0
1595,83494,829,12377,912,1,6.7,N,N,N,CP_Drtn,TT_Task,DT_FixedDUR2,RV_OK,TK_Active,7131L54050,Chasing & Pex pipe works,2296,192,0,112,26.34,368.66,395,120,,,,,2008-10-01 08:00,,2008-10-30 08:00,2008-11-15 17:00,,2008-10-02 08:00,2008-10-18 17:00,2008-10-02 08:00,2008-10-18 17:00,2008-10-01 08:00,2008-10-18 17:00,,,,,PT_Normal,,,,,DDXe0XwAaEW7/fXMjF7pZA,,,,N,26.34,0
1596,83495,829,12377,912,1,0,N,N,N,CP_Drtn,TT_Task,DT_FixedDUR2,RV_OK,TK_NotStart,7131L54100,Over head distribution water pipe network,2296,168,0,64,0,8314,8314,64,0,0,0,,,,2008-11-06 08:00,2008-11-15 17:00,,2008-10-13 08:00,2008-10-21 17:00,2008-10-13 08:00,2008-10-21 17:00,2008-10-13 08:00,2008-10-21 17:00,,,,,PT_Normal,,,,,KWtRNqXgm0eobvRLUwseYQ,,,,N,0,0
1597,83496,829,12170,912,1,0,N,N,N,CP_Drtn,TT_Task,DT_FixedDUR2,RV_OK,TK_NotStart,7131L54150,Water meter cabinet pipe works,2296,336,176,120,0,340,340,120,0,0,0,,,,2009-01-05 08:00,2009-01-21 17:00,,2008-11-17 08:00,2008-12-03 17:00,2008-11-17 08:00,2008-12-03 17:00,2008-11-17 08:00,2008-12-03 17:00,,,,,PT_Normal,,,,,Ko9BtU7nL02meBy3wRWHhQ,,,,N,0,0
1598,83497,829,12378,912,1,30,N,N,N,CP_Drtn,TT_Task,DT_FixedDUR2,RV_OK,TK_Active,7131L54250,Bathtubs,2296,416,0,56,53.04,191.52,273.6,80,,29.04,,,2008-09-29 08:00,,2008-12-02 08:00,2008-12-09 17:00,,2008-10-02 08:00,2008-10-09 17:00,2008-10-02 08:00,2008-10-09 17:00,2008-09-29 08:00,2008-10-09 17:00,,,,,PT_Normal,,,,,5z0nnQS7kkW/epNiRDmX3g,,,,N,53.04,29.04
1599,83498,829,12378,912,1,0,N,N,N,CP_Drtn,TT_Task,DT_FixedDUR2,RV_OK,TK_NotStart,7131L54300,Water heater,2296,160,24,64,0,310.4,310.4,64,0,0,0,,,,2008-11-11 08:00,2008-11-19 17:00,,2008-10-19 08:00,2008-10-27 17:00,2008-10-19 08:00,2008-10-27 17:00,2008-10-19 08:00,2008-10-27 17:00,,,,,PT_Normal,,,,,zv2zrqTFq0ObmGgl9jVpRg,,,,N,0,0
1600,83499,829,12378,912,1,0,N,N,N,CP_Drtn,TT_Task,DT_FixedDUR2,RV_OK,TK_NotStart,7131L54350,Over head pipe assembly & vlave connections,2296,168,168,72,0,237,237,72,0,0,0,,,,2008-11-16 08:00,2008-11-25 17:00,,2008-10-22 08:00,2008-11-01 17:00,2008-10-22 08:00,2008-11-01 17:00,2008-10-22 08:00,2008-11-01 17:00,,,,,PT_Normal,,,,,sLfBijZ5Y0e3s6BWNkMQzg,,,,N,0,0
1601,83500,829,12170,912,1,0,N,N,N,CP_Drtn,TT_Task,DT_FixedDUR2,RV_OK,TK_NotStart,7131L54400,Sanitary fixures,2296,96,0,120,0,516,516,120,0,0,0,,,,2009-01-01 08:00,2009-01-18 17:00,,2008-12-18 08:00,2009-01-04 17:00,2008-12-18 08:00,2009-01-04 17:00,2008-12-18 08:00,2009-01-04 17:00,,,,,PT_Normal,,,,,DvLB5mUHekWXQ9QAQ17bPw,,,,N,0,0
1602,83501,829,12170,912,1,0,N,N,N,CP_Drtn,TT_Task,DT_FixedDUR2,RV_OK,TK_NotStart,7131L54450,Mirrors,2296,16,0,120,0,186,186,120,0,0,0,,,,2009-01-05 08:00,2009-01-21 17:00,,2009-01-03 08:00,2009-01-19 17:00,2009-01-03 08:00,2009-01-19 17:00,2009-01-03 08:00,2009-01-19 17:00,,,,,PT_Normal,,,,,cg64asmefUSyf8LRrrVGyg,,,,N,0,0
1603,83502,829,12378,912,1,30,N,N,N,CP_Drtn,TT_Task,DT_FixedDUR2,RV_OK,TK_Active,7131L54500,Concealed Flushing Cistern,2296,416,416,56,43.8,148.4,212,80,,19.8,,,2008-09-29 08:00,,2008-12-02 08:00,2008-12-09 17:00,,2008-10-02 08:00,2008-10-09 17:00,2008-10-02 08:00,2008-10-09 17:00,2008-09-29 08:00,2008-10-09 17:00,,,,,PT_Normal,,,,,e9wl3Tc7CEqJ2CRflcm9uQ,,,,N,43.8,19.8
1604,83503,829,12381,912,1,6.7,N,N,N,CP_Drtn,TT_Task,DT_FixedDUR2,RV_OK,TK_Active,7131L56050,Chasing and installation of drainage pipes,2296,184,0,112,19,266,285,120,,,,,2008-10-01 08:00,,2008-10-29 08:00,2008-11-13 17:00,,2008-10-02 08:00,2008-10-18 17:00,2008-10-02 08:00,2008-10-18 17:00,2008-10-01 08:00,2008-10-18 17:00,,,,,PT_Normal,,,,,LndUkMSw90Cp5KKrh+wn4Q,,,,N,19,0
1605,83504,829,12381,912,1,50,N,N,N,CP_Drtn,TT_Task,DT_FixedDUR2,RV_OK,TK_Active,7131L56100,Drainage riser pipes,2296,280,136,32,142,142,284,64,,,,,2008-09-28 08:00,,2008-11-12 08:00,2008-11-16 17:00,,2008-10-02 08:00,2008-10-06 17:00,2008-10-02 08:00,2008-10-06 17:00,2008-09-28 08:00,2008-10-06 17:00,,,,,PT_Normal,,,,,AggQaIEN7E+DPrO26j0K8w,,,,N,142,0
1606,83505,829,12046,912,1,0,N,N,N,CP_Drtn,TT_Task,DT_FixedDUR2,RV_OK,TK_NotStart,7131L56150,Over head drainage pipe works,2296,144,144,64,0,257.6,257.6,64,0,0,0,,,,2008-11-17 08:00,2008-11-25 17:00,,2008-10-27 08:00,2008-11-04 17:00,2008-10-27 08:00,2008-11-04 17:00,2008-10-27 08:00,2008-11-04 17:00,,,,,PT_Normal,,,,,JodesujCmk2GovysRoAtxQ,,,,N,0,0
1607,83506,829,12293,912,1,0,N,N,N,CP_Drtn,TT_Task,DT_FixedDUR2,RV_OK,TK_NotStart,7131L58050,Fire fighting pipe works,2296,216,216,72,0,292,292,72,0,0,0,,,,2008-11-08 08:00,2008-11-17 17:00,,2008-10-07 08:00,2008-10-16 17:00,2008-10-07 08:00,2008-10-16 17:00,2008-10-07 08:00,2008-10-16 17:00,,,,,PT_Normal,,,,,ZBnUA7Wte0mNS0qFecPsVA,,,,N,0,0
1608,83507,829,12090,912,1,0,N,N,N,CP_Drtn,TT_Task,DT_FixedDUR2,RV_OK,TK_NotStart,7131L58200,Fire cabinet complete,2296,248,136,64,0,339,339,64,0,0,0,,,,2009-02-14 08:00,2009-02-22 17:00,,2009-01-08 08:00,2009-01-17 17:00,2009-01-08 08:00,2009-01-17 17:00,2009-01-08 08:00,2009-01-17 17:00,,,,,PT_Normal,,,,,CGs6iq8qv0WbrSo/hEg67Q,,,,N,0,0
1609,83508,829,12090,912,1,0,N,N,N,CP_Drtn,TT_Task,DT_FixedDUR2,RV_OK,TK_NotStart,7131L58250,Sprinkler heads,2296,328,144,120,0,450,450,120,0,0,0,,,,2009-02-05 08:00,2009-02-22 17:00,,2008-12-20 08:00,2009-01-05 17:00,2008-12-20 08:00,2009-01-05 17:00,2008-12-20 08:00,2009-01-05 17:00,,,,,PT_Normal,,,,,RI8tEm3cEEmhMzsQCXKWbA,,,,N,0,0
1610,83509,829,12387,912,1,0,N,N,N,CP_Drtn,TT_Task,DT_FixedDUR2,RV_OK,TK_NotStart,7131L60050,LPG piping,2296,376,0,72,0,292,292,72,0,0,0,,,,2008-12-24 08:00,2009-01-03 17:00,,2008-10-30 08:00,2008-11-09 17:00,2008-10-30 08:00,2008-11-09 17:00,2008-10-30 08:00,2008-11-09 17:00,,,,,PT_Normal,,,,,HNDO64Yj8kCu3+aFEa7HZw,,,,N,0,0
1611,83510,829,12030,912,1,0,N,N,N,CP_Drtn,TT_Task,DT_FixedDUR2,RV_OK,TK_NotStart,7131L60100,Gas meter & leak detector,2296,432,304,72,0,248,248,72,0,0,0,,,,2009-01-12 08:00,2009-01-21 17:00,,2008-11-10 08:00,2008-11-19 17:00,2008-11-10 08:00,2008-11-19 17:00,2008-11-10 08:00,2008-11-19 17:00,,,,,PT_Normal,,,,,VxRTqyTL1EeYqkUyEBvb5g,,,,N,0,0
1612,83511,829,12290,912,1,0,N,N,N,CP_Drtn,TT_Task,DT_FixedDUR2,RV_OK,TK_NotStart,7131L62050,BMS cabling,2296,40,40,64,0,486.4,486.4,64,0,0,0,,,,2008-11-17 08:00,2008-11-25 17:00,,2008-11-11 08:00,2008-11-19 17:00,2008-11-11 08:00,2008-11-19 17:00,2008-11-11 08:00,2008-11-19 17:00,,,,,PT_Normal,,,,,NlTFjrGOgEWWqrXXzzLhQQ,,,,N,0,0
1613,83512,829,12082,912,1,0,N,N,N,CP_Drtn,TT_Task,DT_FixedDUR2,RV_OK,TK_NotStart,7131L62100,DGC & cable termination to equipments,2296,240,8,48,0,329.6,329.6,48,0,0,0,,,,2009-02-10 08:00,2009-02-16 17:00,,2009-01-06 08:00,2009-01-12 17:00,2009-01-06 08:00,2009-01-12 17:00,2009-01-06 08:00,2009-01-12 17:00,,,,,PT_Normal,,,,,OPPLo5Ur5UqIe9Xhj+KP/A,,,,N,0,0
1614,83513,829,12393,912,1,20,N,N,N,CP_Drtn,TT_Task,DT_FixedDUR2,RV_OK,TK_Active,7131L66050,Chasing and installation of conduits,2296,0,0,96,361.92,1447.68,1809.6,120,,,,,2008-09-29 08:00,,2008-10-02 08:00,2008-10-15 17:00,,2008-10-02 08:00,2008-10-15 17:00,2008-10-02 08:00,2008-10-15 17:00,2008-09-29 08:00,2008-10-15 17:00,,,,,PT_Normal,,,,,wBRJtmampkCmWDoTqmeSlw,,,,N,361.92,0
1615,83514,829,12393,912,1,0,N,N,N,CP_Drtn,TT_Task,DT_FixedDUR2,RV_OK,TK_NotStart,7131L66100,Cable trays & trunking,2296,0,0,120,0,1528,1528,120,0,0,0,,,,2008-10-30 08:00,2008-11-16 17:00,,2008-10-30 08:00,2008-11-16 17:00,2008-10-30 08:00,2008-11-16 17:00,2008-10-30 08:00,2008-11-16 17:00,,,,,PT_Normal,,,,,uj1jz+0bVEiorir7BbOjAg,,,,N,0,0
1616,83515,829,12186,912,1,11.1,N,N,N,CP_Drtn,TT_Task,DT_FixedDUR2,RV_OK,TK_Active,7131L68050,Single core wiring,2296,232,232,64,125.34,1002.66,1128,72,,,,,2008-10-01 08:00,,2008-11-05 08:00,2008-11-13 17:00,,2008-10-02 08:00,2008-10-11 17:00,2008-10-02 08:00,2008-10-11 17:00,2008-10-01 08:00,2008-10-11 17:00,,,,,PT_Normal,,,,,kZRThhXXcke2+n7EfnD2Ig,,,,N,125.34,0
1617,83516,829,12396,912,1,0,N,N,N,CP_Drtn,TT_Task,DT_FixedDUR2,RV_OK,TK_NotStart,7131L68100,DB enclosure,2296,56,56,64,0,416,416,64,0,0,0,,,,2008-10-15 08:00,2008-10-23 17:00,,2008-10-07 08:00,2008-10-15 17:00,2008-10-07 08:00,2008-10-15 17:00,2008-10-07 08:00,2008-10-15 17:00,,,,,PT_Normal,,,,,LaMGtRsUIkmOjwAgY2Lm6A,,,,N,0,0
1618,83517,829,12396,912,1,0,N,N,N,CP_Drtn,TT_Task,DT_FixedDUR2,RV_OK,TK_NotStart,7131L68150,LV feeder cables,2296,72,40,72,0,2606.4,2606.4,72,0,0,0,,,,2008-11-27 08:00,2008-12-07 17:00,,2008-11-17 08:00,2008-11-26 17:00,2008-11-17 08:00,2008-11-26 17:00,2008-11-17 08:00,2008-11-26 17:00,,,,,PT_Normal,,,,,6Oo9XMvgP0qiC6J9hHE+sA,,,,N,0,0
1619,83518,829,12097,912,1,0,N,N,N,CP_Drtn,TT_Task,DT_FixedDUR2,RV_OK,TK_NotStart,7131L68250,DB-breakers assembly,2296,160,160,72,0,564.8,564.8,72,0,0,0,,,,2009-01-12 08:00,2009-01-21 17:00,,2008-12-20 08:00,2008-12-29 17:00,2008-12-20 08:00,2008-12-29 17:00,2008-12-20 08:00,2008-12-29 17:00,,,,,PT_Normal,,,,,8+e/X08yCUCkgQ+mV/6/kA,,,,N,0,0
1620,83519,829,12097,912,1,0,N,N,N,CP_Drtn,TT_Task,DT_FixedDUR2,RV_OK,TK_NotStart,7131L68300,SMDB,2296,232,0,48,0,1315.2,1315.2,48,0,0,0,,,,2009-02-09 08:00,2009-02-15 17:00,,2009-01-06 08:00,2009-01-12 17:00,2009-01-06 08:00,2009-01-12 17:00,2009-01-06 08:00,2009-01-12 17:00,,,,,PT_Normal,,,,,t03FWXHtwUC0N8uFDp55kg,,,,N,0,0
1621,83520,829,12097,912,1,0,N,N,N,CP_Drtn,TT_Task,DT_FixedDUR2,RV_OK,TK_NotStart,7131L68350,Light Fittings,2296,168,168,120,0,1105.6,1105.6,120,0,0,0,,,,2009-01-05 08:00,2009-01-21 17:00,,2008-12-11 08:00,2008-12-28 17:00,2008-12-11 08:00,2008-12-28 17:00,2008-12-11 08:00,2008-12-28 17:00,,,,,PT_Normal,,,,,btTkt2/Cn06z88JPRtgjPA,,,,N,0,0
1622,83521,829,12097,912,1,0,N,N,N,CP_Drtn,TT_Task,DT_FixedDUR2,RV_OK,TK_NotStart,7131L68400,Lighting Control Panels,2296,264,152,64,0,275.2,275.2,64,0,0,0,,,,2009-02-14 08:00,2009-02-22 17:00,,2009-01-06 08:00,2009-01-14 17:00,2009-01-06 08:00,2009-01-14 17:00,2009-01-06 08:00,2009-01-14 17:00,,,,,PT_Normal,,,,,iGgNz9PJokmfRwWPJ7aFiw,,,,N,0,0
1623,83522,829,12097,912,1,0,N,N,N,CP_Drtn,TT_Task,DT_FixedDUR2,RV_OK,TK_NotStart,7131L68600,Switches & sockets,2296,160,160,72,0,494.4,494.4,72,0,0,0,,,,2009-01-12 08:00,2009-01-21 17:00,,2008-12-20 08:00,2008-12-29 17:00,2008-12-20 08:00,2008-12-29 17:00,2008-12-20 08:00,2008-12-29 17:00,,,,,PT_Normal,,,,,sfmxTdjNgEG1jz9CLAitCw,,,,N,0,0
1624,83523,829,12131,912,1,0,N,N,N,CP_Drtn,TT_Task,DT_FixedDUR2,RV_OK,TK_NotStart,7131L70050,Central Battery cables,2296,200,200,64,0,345.6,345.6,64,0,0,0,,,,2008-11-05 08:00,2008-11-13 17:00,,2008-10-07 08:00,2008-10-15 17:00,2008-10-07 08:00,2008-10-15 17:00,2008-10-07 08:00,2008-10-15 17:00,,,,,PT_Normal,,,,,qHPZddnRuEWtHnOUld2LbA,,,,N,0,0
1625,83524,829,12400,912,1,0,N,N,N,CP_Drtn,TT_Task,DT_FixedDUR2,RV_OK,TK_NotStart,7131L70150,Emergency & exit light fittings,2296,368,160,48,0,188.8,188.8,48,0,0,0,,,,2009-02-16 08:00,2009-02-22 17:00,,2008-12-24 08:00,2008-12-30 17:00,2008-12-24 08:00,2008-12-30 17:00,2008-12-24 08:00,2008-12-30 17:00,,,,,PT_Normal,,,,,WChBezNmgE+0JqJ9FN4B7w,,,,N,0,0
1626,83525,829,12402,912,1,0,N,N,N,CP_Drtn,TT_Task,DT_FixedDUR2,RV_OK,TK_NotStart,7131L72200,Intercom system cables,2296,24,24,64,0,592,592,64,0,0,0,,,,2008-11-17 08:00,2008-11-25 17:00,,2008-11-13 08:00,2008-11-22 17:00,2008-11-13 08:00,2008-11-22 17:00,2008-11-13 08:00,2008-11-22 17:00,,,,,PT_Normal,,,,,sMg+c+WcPkOrVLEukx9ICg,,,,N,0,0
1627,83526,829,12103,912,1,0,N,N,N,CP_Drtn,TT_Task,DT_FixedDUR2,RV_OK,TK_NotStart,7131L72250,Intercom system equipments,2296,144,144,64,0,697.6,697.6,64,0,0,0,,,,2009-01-13 08:00,2009-01-21 17:00,,2008-12-23 08:00,2008-12-31 17:00,2008-12-23 08:00,2008-12-31 17:00,2008-12-23 08:00,2008-12-31 17:00,,,,,PT_Normal,,,,,HViuYOUU80+PKIb6b3438w,,,,N,0,0
1628,83527,829,12196,912,1,0,N,N,N,CP_Drtn,TT_Task,DT_FixedDUR2,RV_OK,TK_NotStart,7131L74050,Fire alarm cables,2296,200,200,64,0,380.8,380.8,64,0,0,0,,,,2008-11-05 08:00,2008-11-13 17:00,,2008-10-07 08:00,2008-10-15 17:00,2008-10-07 08:00,2008-10-15 17:00,2008-10-07 08:00,2008-10-15 17:00,,,,,PT_Normal,,,,,lQnAH4J+kUK2Z+6e5yOe1A,,,,N,0,0
1629,83528,829,12206,912,1,0,N,N,N,CP_Drtn,TT_Task,DT_FixedDUR2,RV_OK,TK_NotStart,7131L74100,Fire alarm fittings,2296,328,160,120,0,172.8,172.8,120,0,0,0,,,,2009-02-05 08:00,2009-02-22 17:00,,2008-12-20 08:00,2009-01-05 17:00,2008-12-20 08:00,2009-01-05 17:00,2008-12-20 08:00,2009-01-05 17:00,,,,,PT_Normal,,,,,9xprpkmCV02EBRhdmnl7Tg,,,,N,0,0
1630,83529,829,12240,912,1,0,N,N,N,CP_Drtn,TT_Task,DT_FixedDUR2,RV_OK,TK_NotStart,7131L76050,Structured cabling,2296,40,40,64,0,345.6,345.6,64,0,0,0,,,,2008-11-19 08:00,2008-11-27 17:00,,2008-11-13 08:00,2008-11-22 17:00,2008-11-13 08:00,2008-11-22 17:00,2008-11-13 08:00,2008-11-22 17:00,,,,,PT_Normal,,,,,+D0rkOSGC0CgkT7TZf2JpA,,,,N,0,0
1631,83530,829,12200,912,1,0,N,N,N,CP_Drtn,TT_Task,DT_FixedDUR2,RV_OK,TK_NotStart,7131L76100,Consolidated pionts,2296,0,0,64,0,486.4,486.4,64,0,0,0,,,,2008-11-29 08:00,2008-12-07 17:00,,2008-11-29 08:00,2008-12-07 17:00,2008-11-29 08:00,2008-12-07 17:00,2008-11-29 08:00,2008-12-07 17:00,,,,,PT_Normal,,,,,sXwGtja+HEi7UuBy7bw2OQ,,,,N,0,0
1632,83531,829,11607,912,1,100,N,N,N,CP_Drtn,TT_Task,DT_FixedDUR2,RV_OK,TK_Complete,7131U12050,Columns & walls 1U to 2L - Part 1,2306,0,0,0,3724.34,0,3724.34,32,111688.16,111688.16,0,,2008-08-19 08:00,2008-08-23 17:00,2008-10-02 08:00,2008-10-01 17:00,,2008-10-02 08:00,2008-10-01 17:00,,,2008-08-19 08:00,2008-08-23 17:00,,,,,PT_Normal,,,,,E+BgUtQwt0q4+SrtUu0agA,,,,N,3724.34,111688.16
1633,83532,829,11607,912,1,100,N,N,N,CP_Drtn,TT_Task,DT_FixedDUR2,RV_OK,TK_Complete,7131U12051,Columns & walls 1U to 2L - Part 2,2306,0,0,0,3724.34,0,3724.34,32,111688.16,111688.16,0,,2008-08-27 08:00,2008-08-31 17:00,2008-10-02 08:00,2008-10-01 17:00,,2008-10-02 08:00,2008-10-01 17:00,,,2008-08-27 08:00,2008-08-31 17:00,,,,,PT_Normal,,,,,jLk9B+tsDEyV3VQdJ1FFng,,,,N,3724.34,111688.16
1634,83533,829,11607,912,1,100,N,N,N,CP_Drtn,TT_Task,DT_FixedDUR2,RV_OK,TK_Complete,7131U12052,Columns & walls 1U to 2L - Middle Part,2306,0,0,0,8020.4,0,8020.4,32,241635.84,241635.84,0,,2008-08-26 08:00,2008-08-30 17:00,2008-10-02 08:00,2008-10-01 17:00,,2008-10-02 08:00,2008-10-01 17:00,,,2008-08-26 08:00,2008-08-30 17:00,,,,,PT_Normal,,,,,W+05OTofiUGD1WyyW4jDzw,,,,N,8020.4,241635.84
1635,83534,829,11607,912,1,100,N,N,N,CP_Drtn,TT_Task,DT_FixedDUR2,RV_OK,TK_Complete,7131U12200,Slab @ 2L level - Part 1,2306,0,0,0,4376.76,0,4376.76,56,160277.68,160277.68,0,,2008-08-27 08:00,2008-09-03 17:00,2008-10-02 08:00,2008-10-01 17:00,,2008-10-02 08:00,2008-10-01 17:00,,,2008-08-27 08:00,2008-09-03 17:00,,,,,PT_Normal,,,,,qIEeQ0PD60+A6Y7xwmW8yQ,,,,N,4376.76,160277.68
1636,83535,829,11607,912,1,100,N,N,N,CP_Drtn,TT_Task,DT_FixedDUR2,RV_OK,TK_Complete,7131U12201,Slab @ 2L level - Part 2,2306,0,0,0,4376.76,0,4376.76,56,160277.68,160277.68,0,,2008-09-04 08:00,2008-09-11 17:00,2008-10-02 08:00,2008-10-01 17:00,,2008-10-02 08:00,2008-10-01 17:00,,,2008-09-04 08:00,2008-09-11 17:00,,,,,PT_Normal,,,,,VYQlAc/WTEOf1Qg14hKprQ,,,,N,4376.76,160277.68
1637,83536,829,11607,912,1,100,N,N,N,CP_Drtn,TT_Task,DT_FixedDUR2,RV_OK,TK_Complete,7131U12202,Slab @ 2L level - Middle Part,2306,0,0,0,6315.78,0,6315.78,56,232201.84,232201.84,0,,2008-09-02 08:00,2008-09-09 17:00,2008-10-02 08:00,2008-10-01 17:00,,2008-10-02 08:00,2008-10-01 17:00,,,2008-09-02 08:00,2008-09-09 17:00,,,,,PT_Normal,,,,,BymxtH9AzUyqXmKovmDUjw,,,,N,6315.78,232201.84
1638,83537,829,11607,912,1,100,N,N,N,CP_Drtn,TT_Task,DT_FixedDUR2,RV_OK,TK_Complete,7131U12250,Staircases 1U to 2L,2296,288,0,0,991.88,0,991.88,24,18457.6,18457.6,0,,2008-09-13 08:00,2008-09-15 17:00,2008-11-13 08:00,2008-11-12 17:00,,2008-10-02 08:00,2008-10-01 17:00,,,2008-09-13 08:00,2008-09-15 17:00,,,,,PT_Normal,,,,,FHnnjxmSdEiZvNm9ysLjNg,,,,N,991.88,18457.6
1639,83538,829,11149,912,1,20,N,N,N,CP_Drtn,TT_Task,DT_FixedDUR2,RV_OK,TK_Active,7131U14050,Block works,2306,56,0,96,4864.6,24068.4,30085.5,120,18440,4840.5,14752,,2008-09-29 08:00,,2008-10-11 08:00,2008-10-23 17:00,,2008-10-02 08:00,2008-10-15 17:00,2008-10-02 08:00,2008-10-15 17:00,2008-09-29 08:00,2008-10-15 17:00,,,,,PT_Normal,,,,,28aUbn9zl0iK0OsFWR0ajQ,,,,N,4864.6,4840.5
1640,83539,829,10932,912,1,0,N,N,N,CP_Drtn,TT_Task,DT_FixedDUR2,RV_OK,TK_NotStart,7131U16050,Plaster works,2306,56,0,120,0,24375.8,24375.8,120,19024,0,19024,,,,2008-10-22 08:00,2008-11-08 17:00,,2008-10-14 08:00,2008-10-30 17:00,2008-10-14 08:00,2008-10-30 17:00,2008-10-14 08:00,2008-10-30 17:00,,,,,PT_Normal,,,,,j3VyJXge2Ey8LG9E7JdAEg,,,,N,0,0
1641,83540,829,10932,912,1,0,N,N,N,CP_Drtn,TT_Task,DT_FixedDUR2,RV_OK,TK_NotStart,7131U16051,Plaste works behind tiles,2306,192,128,120,0,5424,5424,120,4160,0,4160,,,,2008-11-17 08:00,2008-12-03 17:00,,2008-10-20 08:00,2008-11-05 17:00,2008-10-20 08:00,2008-11-05 17:00,2008-10-20 08:00,2008-11-05 17:00,,,,,PT_Normal,,,,,9++i2gR4jU2sK7dhI4PrrQ,,,,N,0,0
1642,83541,829,11151,912,1,0,N,N,N,CP_Drtn,TT_Task,DT_FixedDUR2,RV_OK,TK_NotStart,7131U18050,Rendering works,2306,80,24,120,0,5683,5683,120,5000,0,5000,,,,2008-10-19 08:00,2008-11-04 17:00,,2008-10-07 08:00,2008-10-23 17:00,2008-10-07 08:00,2008-10-23 17:00,2008-10-07 08:00,2008-10-23 17:00,,,,,PT_Normal,,,,,EgfDrlU6cUGNU7sQOuT02g,,,,N,0,0
1643,83542,829,11151,912,1,0,N,N,N,CP_Drtn,TT_Task,DT_FixedDUR2,RV_OK,TK_NotStart,7131U18100,Paintin1 base coats,2306,56,0,120,0,26546.2,26546.2,120,24024,0,24024,,,,2008-10-30 08:00,2008-11-16 17:00,,2008-10-22 08:00,2008-11-08 17:00,2008-10-22 08:00,2008-11-08 17:00,2008-10-22 08:00,2008-11-08 17:00,,,,,PT_Normal,,,,,uhB4qVDhaE6C9/vlzf3UmA,,,,N,0,0
1644,83543,829,11151,912,1,0,N,N,N,CP_Drtn,TT_Task,DT_FixedDUR2,RV_OK,TK_NotStart,7131U18150,Painting 1st top coat for apartments,2306,168,0,72,0,17300.2,17300.2,72,16408,0,16408,,,,2009-01-12 08:00,2009-01-21 17:00,,2008-12-18 08:00,2008-12-28 17:00,2008-12-18 08:00,2008-12-28 17:00,2008-12-18 08:00,2008-12-28 17:00,,,,,PT_Normal,,,,,EZUDcrSHBkGFvD86RZoSpA,,,,N,0,0
1645,83544,829,11152,912,1,0,N,N,N,CP_Drtn,TT_Task,DT_FixedDUR2,RV_OK,TK_NotStart,7131U20050,Floor tiles for apartments-dry area,2306,208,16,120,0,9570,9570,120,7000,0,7000,,,,2008-12-01 08:00,2008-12-17 17:00,,2008-11-01 08:00,2008-11-17 17:00,2008-11-01 08:00,2008-11-17 17:00,2008-11-01 08:00,2008-11-17 17:00,,,,,PT_Normal,,,,,L6I46edBEUmkpWxbn8DPNQ,,,,N,0,0
1646,83545,829,11152,912,1,0,N,N,N,CP_Drtn,TT_Task,DT_FixedDUR2,RV_OK,TK_NotStart,7131U20070,Floor tiles for apartments-wet area,2306,64,0,120,0,3835.2,3835.2,120,2752,0,2752,,,,2008-12-18 08:00,2009-01-04 17:00,,2008-12-09 08:00,2008-12-25 17:00,2008-12-09 08:00,2008-12-25 17:00,2008-12-09 08:00,2008-12-25 17:00,,,,,PT_Normal,,,,,bIStJlhLX0+a+uVaSkFjMQ,,,,N,0,0
1647,83546,829,11152,912,1,0,N,N,N,CP_Drtn,TT_Task,DT_FixedDUR2,RV_OK,TK_NotStart,7131U20110,Wall tiles for apartments-wet area,2306,128,0,120,0,9066,9066,120,5964,0,5964,,,,2008-12-28 08:00,2009-01-13 17:00,,2008-12-09 08:00,2008-12-25 17:00,2008-12-09 08:00,2008-12-25 17:00,2008-12-09 08:00,2008-12-25 17:00,,,,,PT_Normal,,,,,wK4AnNB4R0uEcrvAa8Bgeg,,,,N,0,0
1648,83547,829,10976,912,1,0,N,N,N,CP_Drtn,TT_Task,DT_FixedDUR2,RV_OK,TK_NotStart,7131U22150,W/P for for apartments,2306,160,0,120,0,2980,2980,120,2600,0,2600,,,,2008-11-09 08:00,2008-11-25 17:00,,2008-10-16 08:00,2008-11-02 17:00,2008-10-16 08:00,2008-11-02 17:00,2008-10-16 08:00,2008-11-02 17:00,,,,,PT_Normal,,,,,TmbyQTv57UC1pEbLDLJwMw,,,,N,0,0
1649,83548,829,11154,912,1,0,N,N,N,CP_Drtn,TT_Task,DT_FixedDUR2,RV_OK,TK_NotStart,7131U24050,Aluminium doors & windows,2306,272,152,120,0,1208,1208,120,272,0,272,,,,2008-12-18 08:00,2009-01-04 17:00,,2008-11-09 08:00,2008-11-25 17:00,2008-11-09 08:00,2008-11-25 17:00,2008-11-09 08:00,2008-11-25 17:00,,,,,PT_Normal,,,,,vqIaU/RJ40uQjJ9UqIyBpw,,,,N,0,0
1650,83549,829,11154,912,1,0,N,N,N,CP_Drtn,TT_Task,DT_FixedDUR2,RV_OK,TK_NotStart,7131U24200,Balcony handrails,2306,0,0,120,0,2192,2192,120,1184,0,1184,,,,2009-01-05 08:00,2009-01-21 17:00,,2009-01-05 08:00,2009-01-21 17:00,2009-01-05 08:00,2009-01-21 17:00,2009-01-05 08:00,2009-01-21 17:00,,,,,PT_Normal,,,,,3EqqmIT6jka1X2LiEnM6XA,,,,N,0,0
1651,83550,829,11155,912,1,0,N,N,N,CP_Drtn,TT_Task,DT_FixedDUR2,RV_OK,TK_NotStart,7131U30050,Wooden doors,2306,104,16,176,0,1520,1520,176,384,0,384,,,,2008-12-24 08:00,2009-01-18 17:00,,2008-12-09 08:00,2009-01-03 17:00,2008-12-09 08:00,2009-01-03 17:00,2008-12-09 08:00,2009-01-03 17:00,,,,,PT_Normal,,,,,5dGX3XoyaECxKZgZ8/TtIw,,,,N,0,0
1652,83551,829,11047,912,1,0,N,N,N,CP_Drtn,TT_Task,DT_FixedDUR2,RV_OK,TK_NotStart,7131U32100,Vanity counters,2306,16,0,120,0,2232,2232,120,192,0,192,,,,2009-01-05 08:00,2009-01-21 17:00,,2009-01-03 08:00,2009-01-19 17:00,2009-01-03 08:00,2009-01-19 17:00,2009-01-03 08:00,2009-01-19 17:00,,,,,PT_Normal,,,,,ZsQsmcoxiUaaNe0Slkip2A,,,,N,0,0
1653,83552,829,11047,912,1,0,N,N,N,CP_Drtn,TT_Task,DT_FixedDUR2,RV_OK,TK_NotStart,7131U32150,Wardrobes,2306,200,200,120,0,6168,6168,120,288,0,288,,,,2009-01-05 08:00,2009-01-21 17:00,,2008-12-07 08:00,2008-12-23 17:00,2008-12-07 08:00,2008-12-23 17:00,2008-12-07 08:00,2008-12-23 17:00,,,,,PT_Normal,,,,,Dg8nKilxSkKAsJhdFQmKSw,,,,N,0,0
1654,83553,829,11048,912,1,0,N,N,N,CP_Drtn,TT_Task,DT_FixedDUR2,RV_OK,TK_NotStart,7131U34050,False ceiling works for apartments-dry area,2306,168,0,160,0,1525.12,1525.12,160,910.08,0,910.08,,,,2008-12-20 08:00,2009-01-11 17:00,,2008-11-25 08:00,2008-12-17 17:00,2008-11-25 08:00,2008-12-17 17:00,2008-11-25 08:00,2008-12-17 17:00,,,,,PT_Normal,,,,,6P03q7QZk0Wez3aRxf7eTg,,,,N,0,0
1655,83554,829,11048,912,1,0,N,N,N,CP_Drtn,TT_Task,DT_FixedDUR2,RV_OK,TK_NotStart,7131U34070,False ceiling works for apartments-wet area,2306,64,0,160,0,690.88,690.88,160,353.92,0,353.92,,,,2008-12-04 08:00,2008-12-27 17:00,,2008-11-25 08:00,2008-12-17 17:00,2008-11-25 08:00,2008-12-17 17:00,2008-11-25 08:00,2008-12-17 17:00,,,,,PT_Normal,,,,,2181+nfq20eUfrH7LSIpQw,,,,N,0,0
1656,83555,829,11049,912,1,0,N,N,N,CP_Drtn,TT_Task,DT_FixedDUR2,RV_OK,TK_NotStart,7131U36050,Stone finishin1 top,2306,96,96,64,0,344,344,64,160,0,160,,,,2009-01-13 08:00,2009-01-21 17:00,,2008-12-30 08:00,2009-01-07 17:00,2008-12-30 08:00,2009-01-07 17:00,2008-12-30 08:00,2009-01-07 17:00,,,,,PT_Normal,,,,,s3KROcNw0UyyGlEOZOJHYQ,,,,N,0,0
1657,83556,829,11049,912,1,0,N,N,N,CP_Drtn,TT_Task,DT_FixedDUR2,RV_OK,TK_NotStart,7131U36100,Thresholds,2306,56,56,64,0,520,520,64,304,0,304,,,,2009-01-13 08:00,2009-01-21 17:00,,2009-01-05 08:00,2009-01-13 17:00,2009-01-05 08:00,2009-01-13 17:00,2009-01-05 08:00,2009-01-13 17:00,,,,,PT_Normal,,,,,XtciGUqI/0a6oURhHO5pnQ,,,,N,0,0
1658,83557,829,11050,912,1,0,N,N,N,CP_Drtn,TT_Task,DT_FixedDUR2,RV_OK,TK_NotStart,7131U44050,Sub-frames,2306,56,0,80,0,848,848,80,384,0,384,,,,2008-10-16 08:00,2008-10-27 17:00,,2008-10-08 08:00,2008-10-19 17:00,2008-10-08 08:00,2008-10-19 17:00,2008-10-08 08:00,2008-10-19 17:00,,,,,PT_Normal,,,,,/wga8c1gYUyYWCsbBpOLrw,,,,N,0,0
1659,83558,829,12312,912,1,100,N,N,N,CP_Drtn,TT_Task,DT_FixedDUR2,RV_OK,TK_Complete,7131U50100,MEP skeleton embedded provisions,2296,0,0,0,512,0,512,72,,,0,,2008-08-19 08:00,2008-08-28 17:00,2008-10-02 08:00,2008-10-01 17:00,,2008-10-02 08:00,2008-10-01 17:00,,,2008-08-19 08:00,2008-08-28 17:00,,,,,PT_Normal,,,,,YAGytcMan0Crc0LaiN+7CQ,,,,N,512,0
1660,83559,829,12214,912,1,0,N,N,N,CP_Drtn,TT_Task,DT_FixedDUR2,RV_OK,TK_NotStart,7131U52050,A/C duct works,2296,160,88,160,0,831,831,160,0,0,0,,,,2008-11-03 08:00,2008-11-25 17:00,,2008-10-11 08:00,2008-11-02 17:00,2008-10-11 08:00,2008-11-02 17:00,2008-10-11 08:00,2008-11-02 17:00,,,,,PT_Normal,,,,,p0WHe4sFQ0uaqfXam0dEEw,,,,N,0,0
1661,83560,829,12214,912,1,0,N,N,N,CP_Drtn,TT_Task,DT_FixedDUR2,RV_OK,TK_NotStart,7131U52100,Chilled water pipe works,2296,96,24,72,0,787,787,72,0,0,0,,,,2008-11-06 08:00,2008-11-16 17:00,,2008-10-23 08:00,2008-11-02 17:00,2008-10-23 08:00,2008-11-02 17:00,2008-10-23 08:00,2008-11-02 17:00,,,,,PT_Normal,,,,,dyUXqG6vQkOKOpWIxB+nUA,,,,N,0,0
1662,83561,829,12415,912,1,0,N,N,N,CP_Drtn,TT_Task,DT_FixedDUR2,RV_OK,TK_NotStart,7131U52150,FCU's hanging,2296,152,80,64,0,935.2,935.2,64,0,0,0,,,,2008-11-13 08:00,2008-11-22 17:00,,2008-10-22 08:00,2008-10-30 17:00,2008-10-22 08:00,2008-10-30 17:00,2008-10-22 08:00,2008-10-30 17:00,,,,,PT_Normal,,,,,5JG8F8XT1UeFhxGqf+C6sA,,,,N,0,0
1663,83562,829,12415,912,1,0,N,N,N,CP_Drtn,TT_Task,DT_FixedDUR2,RV_OK,TK_NotStart,7131U52300,FCU's assembly & duct connections,2296,72,8,80,0,951.2,951.2,80,0,0,0,,,,2008-11-23 08:00,2008-12-03 17:00,,2008-11-12 08:00,2008-11-23 17:00,2008-11-12 08:00,2008-11-23 17:00,2008-11-12 08:00,2008-11-23 17:00,,,,,PT_Normal,,,,,X4FGiR+aGEOHdb6VjHkqww,,,,N,0,0
1664,83563,829,12415,912,1,0,N,N,N,CP_Drtn,TT_Task,DT_FixedDUR2,RV_OK,TK_NotStart,7131U52350,Grills & diffusers,2296,176,168,64,0,856,856,64,0,0,0,,,,2009-01-13 08:00,2009-01-21 17:00,,2008-12-18 08:00,2008-12-27 17:00,2008-12-18 08:00,2008-12-27 17:00,2008-12-18 08:00,2008-12-27 17:00,,,,,PT_Normal,,,,,DsrlSIQgh0yql0piF5sFiw,,,,N,0,0
1665,83564,829,12214,912,1,0,N,N,N,CP_Drtn,TT_Task,DT_FixedDUR2,RV_OK,TK_NotStart,7131U52550,A/C duct risers,2296,72,0,64,0,1626,1626,64,0,0,0,,,,2008-11-08 08:00,2008-11-16 17:00,,2008-10-28 08:00,2008-11-05 17:00,2008-10-28 08:00,2008-11-05 17:00,2008-10-28 08:00,2008-11-05 17:00,,,,,PT_Normal,,,,,g/DKsmNxLUmJrTXT6MkqNg,,,,N,0,0
1666,83565,829,12208,912,1,0,N,N,N,CP_Drtn,TT_Task,DT_FixedDUR2,RV_OK,TK_NotStart,7131U54050,Chasing & Pex pipe works,2296,192,0,120,0,395,395,120,0,0,0,,,,2008-11-08 08:00,2008-11-24 17:00,,2008-10-11 08:00,2008-10-27 17:00,2008-10-11 08:00,2008-10-27 17:00,2008-10-11 08:00,2008-10-27 17:00,,,,,PT_Normal,,,,,C2mVagavBkWzXgeJryVZ7g,,,,N,0,0
1667,83566,829,12209,912,1,0,N,N,N,CP_Drtn,TT_Task,DT_FixedDUR2,RV_OK,TK_NotStart,7131U54250,Bathtubs,2296,312,0,80,0,273.6,273.6,80,0,0,0,,,,2008-12-07 08:00,2008-12-17 17:00,,2008-10-22 08:00,2008-11-02 17:00,2008-10-22 08:00,2008-11-02 17:00,2008-10-22 08:00,2008-11-02 17:00,,,,,PT_Normal,,,,,XEbqnaknH0GbQfQJKLO9xQ,,,,N,0,0
1668,83567,829,12209,912,1,0,N,N,N,CP_Drtn,TT_Task,DT_FixedDUR2,RV_OK,TK_NotStart,7131U54300,Water heater,2296,152,0,64,0,310.4,310.4,64,0,0,0,,,,2008-11-19 08:00,2008-11-27 17:00,,2008-10-28 08:00,2008-11-05 17:00,2008-10-28 08:00,2008-11-05 17:00,2008-10-28 08:00,2008-11-05 17:00,,,,,PT_Normal,,,,,rm+g6g79KkKKOqPWY/z9lQ,,,,N,0,0
1669,83568,829,12209,912,1,0,N,N,N,CP_Drtn,TT_Task,DT_FixedDUR2,RV_OK,TK_NotStart,7131U54350,Over head pipe assembly & vlave connections,2296,184,120,64,0,229,229,64,0,0,0,,,,2008-11-25 08:00,2008-12-03 17:00,,2008-10-29 08:00,2008-11-06 17:00,2008-10-29 08:00,2008-11-06 17:00,2008-10-29 08:00,2008-11-06 17:00,,,,,PT_Normal,,,,,1ilqiRgJtEOdnHhTA8ySwA,,,,N,0,0
1670,83569,829,12039,912,1,0,N,N,N,CP_Drtn,TT_Task,DT_FixedDUR2,RV_OK,TK_NotStart,7131U54400,Sanitary fixures,2296,128,32,120,0,516,516,120,0,0,0,,,,2009-01-05 08:00,2009-01-21 17:00,,2008-12-17 08:00,2009-01-03 17:00,2008-12-17 08:00,2009-01-03 17:00,2008-12-17 08:00,2009-01-03 17:00,,,,,PT_Normal,,,,,meg8uH3TA0+mO6vbrizSiA,,,,N,0,0
1671,83570,829,12039,912,1,0,N,N,N,CP_Drtn,TT_Task,DT_FixedDUR2,RV_OK,TK_NotStart,7131U54450,Mirrors,2296,16,16,80,0,146,146,80,0,0,0,,,,2009-01-11 08:00,2009-01-21 17:00,,2009-01-08 08:00,2009-01-19 17:00,2009-01-08 08:00,2009-01-19 17:00,2009-01-08 08:00,2009-01-19 17:00,,,,,PT_Normal,,,,,nkr9nKPgvEyaD5WOf9016g,,,,N,0,0
1672,83571,829,12209,912,1,0,N,N,N,CP_Drtn,TT_Task,DT_FixedDUR2,RV_OK,TK_NotStart,7131U54500,Concealed Flushing Cistern,2296,312,248,80,0,212,212,80,0,0,0,,,,2008-12-07 08:00,2008-12-17 17:00,,2008-10-22 08:00,2008-11-02 17:00,2008-10-22 08:00,2008-11-02 17:00,2008-10-22 08:00,2008-11-02 17:00,,,,,PT_Normal,,,,,N8+c8e5FbU2ZYmxMXXHuKA,,,,N,0,0
1673,83572,829,12421,912,1,0,N,N,N,CP_Drtn,TT_Task,DT_FixedDUR2,RV_OK,TK_NotStart,7131U56050,Chasing and installation of drainage pipes,2296,144,0,120,0,285,285,120,0,0,0,,,,2008-11-01 08:00,2008-11-17 17:00,,2008-10-11 08:00,2008-10-27 17:00,2008-10-11 08:00,2008-10-27 17:00,2008-10-11 08:00,2008-10-27 17:00,,,,,PT_Normal,,,,,BR6SGeUEk0C6aHRldE0/tA,,,,N,0,0
1674,83573,829,12421,912,1,0,N,N,N,CP_Drtn,TT_Task,DT_FixedDUR2,RV_OK,TK_NotStart,7131U56100,Drainage riser pipes,2296,272,136,64,0,284,284,64,0,0,0,,,,2008-11-16 08:00,2008-11-24 17:00,,2008-10-07 08:00,2008-10-15 17:00,2008-10-07 08:00,2008-10-15 17:00,2008-10-07 08:00,2008-10-15 17:00,,,,,PT_Normal,,,,,uhLnIu3R9ECbyDff2F+TNg,,,,N,0,0
1675,83574,829,12154,912,1,0,N,N,N,CP_Drtn,TT_Task,DT_FixedDUR2,RV_OK,TK_NotStart,7131U56150,Over head drainage pipe works,2296,64,0,64,0,257.6,257.6,64,0,0,0,,,,2008-11-25 08:00,2008-12-03 17:00,,2008-11-16 08:00,2008-11-24 17:00,2008-11-16 08:00,2008-11-24 17:00,2008-11-16 08:00,2008-11-24 17:00,,,,,PT_Normal,,,,,iEtkrXVlb0+7IMpJuf6SSw,,,,N,0,0
1676,83575,829,12124,912,1,0,N,N,N,CP_Drtn,TT_Task,DT_FixedDUR2,RV_OK,TK_NotStart,7131U58050,Fire fighting pipe works,2296,208,144,72,0,292,292,72,0,0,0,,,,2008-11-16 08:00,2008-11-25 17:00,,2008-10-16 08:00,2008-10-26 17:00,2008-10-16 08:00,2008-10-26 17:00,2008-10-16 08:00,2008-10-26 17:00,,,,,PT_Normal,,,,,FL14Bx90mUK625JzARZhNw,,,,N,0,0
1677,83576,829,12043,912,1,0,N,N,N,CP_Drtn,TT_Task,DT_FixedDUR2,RV_OK,TK_NotStart,7131U58250,Sprinkler heads,2296,176,176,64,0,394,394,64,0,0,0,,,,2009-01-13 08:00,2009-01-21 17:00,,2008-12-18 08:00,2008-12-27 17:00,2008-12-18 08:00,2008-12-27 17:00,2008-12-18 08:00,2008-12-27 17:00,,,,,PT_Normal,,,,,n/avIfAbeEqJc+rzdlpH+A,,,,N,0,0
1678,83577,829,12218,912,1,0,N,N,N,CP_Drtn,TT_Task,DT_FixedDUR2,RV_OK,TK_NotStart,7131U66050,Chasing and installation of conduits,2296,56,0,120,0,1528,1528,120,0,0,0,,,,2008-10-16 08:00,2008-11-02 17:00,,2008-10-08 08:00,2008-10-25 17:00,2008-10-08 08:00,2008-10-25 17:00,2008-10-08 08:00,2008-10-25 17:00,,,,,PT_Normal,,,,,lmY+0FuLIUajGxvg70ROeQ,,,,N,0,0
1679,83578,829,12052,912,1,0,N,N,N,CP_Drtn,TT_Task,DT_FixedDUR2,RV_OK,TK_NotStart,7131U68050,Single core wiring,2296,224,160,72,0,1128,1128,72,0,0,0,,,,2008-11-12 08:00,2008-11-22 17:00,,2008-10-11 08:00,2008-10-20 17:00,2008-10-11 08:00,2008-10-20 17:00,2008-10-11 08:00,2008-10-20 17:00,,,,,PT_Normal,,,,,5zib5Vok7UKpdZ+pjcQU4Q,,,,N,0,0
1680,83579,829,12221,912,1,0,N,N,N,CP_Drtn,TT_Task,DT_FixedDUR2,RV_OK,TK_NotStart,7131U68350,Light Fittings,2296,176,176,120,0,1035.2,1035.2,120,0,0,0,,,,2009-01-05 08:00,2009-01-21 17:00,,2008-12-10 08:00,2008-12-27 17:00,2008-12-10 08:00,2008-12-27 17:00,2008-12-10 08:00,2008-12-27 17:00,,,,,PT_Normal,,,,,K7yAe3V4gUGb6kFNJ2b37A,,,,N,0,0
1681,83580,829,12221,912,1,0,N,N,N,CP_Drtn,TT_Task,DT_FixedDUR2,RV_OK,TK_NotStart,7131U68600,Switches & sockets,2296,168,168,72,0,494.4,494.4,72,0,0,0,,,,2009-01-12 08:00,2009-01-21 17:00,,2008-12-18 08:00,2008-12-28 17:00,2008-12-18 08:00,2008-12-28 17:00,2008-12-18 08:00,2008-12-28 17:00,,,,,PT_Normal,,,,,ZaSZYCzaIEuDMs5GT6zYXA,,,,N,0,0
1682,83581,829,12223,912,1,0,N,N,N,CP_Drtn,TT_Task,DT_FixedDUR2,RV_OK,TK_NotStart,7131U74050,Fire alarm cables,2296,192,128,64,0,380.8,380.8,64,0,0,0,,,,2008-11-13 08:00,2008-11-22 17:00,,2008-10-16 08:00,2008-10-25 17:00,2008-10-16 08:00,2008-10-25 17:00,2008-10-16 08:00,2008-10-25 17:00,,,,,PT_Normal,,,,,3dtWQtYxhUicuKOoa9hNxw,,,,N,0,0
1683,83582,829,12224,912,1,0,N,N,N,CP_Drtn,TT_Task,DT_FixedDUR2,RV_OK,TK_NotStart,7131U74100,Fire alarm fittings,2296,176,176,64,0,116.8,116.8,64,0,0,0,,,,2009-01-13 08:00,2009-01-21 17:00,,2008-12-18 08:00,2008-12-27 17:00,2008-12-18 08:00,2008-12-27 17:00,2008-12-18 08:00,2008-12-27 17:00,,,,,PT_Normal,,,,,BEwr71RT0EOHwhwTLpCDzg,,,,N,0,0
1684,83583,829,12335,912,1,0,N,N,N,CP_Drtn,TT_Task,DT_FixedDUR2,RV_OK,TK_NotStart,7131U76050,Structured cabling,2296,0,0,64,0,345.6,345.6,64,0,0,0,,,,2008-11-19 08:00,2008-11-27 17:00,,2008-11-19 08:00,2008-11-27 17:00,2008-11-19 08:00,2008-11-27 17:00,2008-11-19 08:00,2008-11-27 17:00,,,,,PT_Normal,,,,,be0nkC90HUiFY2erWRlEAA,,,,N,0,0
1685,83584,829,10860,912,1,0,N,N,N,CP_Drtn,TT_Task,DT_FixedDUR2,RV_OK,TK_NotStart,7132L00000,Pre-Snagging & Disnagging for duplexes,2296,0,0,120,0,420,420,120,0,0,0,,,,2009-02-15 08:00,2009-03-03 17:00,,2009-02-15 08:00,2009-03-03 17:00,2009-02-15 08:00,2009-03-03 17:00,2009-02-15 08:00,2009-03-03 17:00,,,,,PT_Normal,,,,,VaQic/FpCUafIsMNvx3wKQ,,,,N,0,0
1686,83585,829,10860,912,1,0,N,N,N,CP_Drtn,TT_Task,DT_FixedDUR2,RV_OK,TK_NotStart,7132L00002,Pre-Snagging & Disnagging for corrid & Srv rooms,2296,0,0,64,0,214,214,64,0,0,0,,,,2009-03-07 08:00,2009-03-15 17:00,,2009-03-07 08:00,2009-03-15 17:00,2009-03-07 08:00,2009-03-15 17:00,2009-03-07 08:00,2009-03-15 17:00,,,,,PT_Normal,,,,,e0LTNNq7ukCBTBVOsuoUag,,,,N,0,0
1687,83586,829,11713,912,1,100,N,N,N,CP_Drtn,TT_Task,DT_FixedDUR2,RV_OK,TK_Complete,7132L12050,Columns & walls 2L to 2U - Part 1,2306,8,0,0,3506.92,0,3506.92,24,105352.08,105352.08,0,,2008-09-04 08:00,2008-09-07 17:00,2008-10-04 08:00,2008-10-02 17:00,,2008-10-02 08:00,2008-10-01 17:00,,,2008-09-04 08:00,2008-09-07 17:00,,,,,PT_Normal,,,,,tLmBix2krUCH5R+mhXdLVg,,,,N,3506.92,105352.08
1688,83587,829,11713,912,1,100,N,N,N,CP_Drtn,TT_Task,DT_FixedDUR2,RV_OK,TK_Complete,7132L12051,Columns & walls 2L to 2U - Part 2,2306,8,0,0,3506.92,0,3506.92,24,105352.08,105352.08,0,,2008-09-13 08:00,2008-09-15 17:00,2008-10-04 08:00,2008-10-02 17:00,,2008-10-02 08:00,2008-10-01 17:00,,,2008-09-13 08:00,2008-09-15 17:00,,,,,PT_Normal,,,,,NOdicxBJtU+x+gdxi3o67A,,,,N,3506.92,105352.08
1689,83588,829,11713,912,1,100,N,N,N,CP_Drtn,TT_Task,DT_FixedDUR2,RV_OK,TK_Complete,7132L12052,Columns & walls 2L to 2U - Middle Part,2306,8,0,0,7218.37,0,7218.37,24,217616.24,217616.24,0,,2008-09-10 08:00,2008-09-13 17:00,2008-10-04 08:00,2008-10-02 17:00,,2008-10-02 08:00,2008-10-01 17:00,,,2008-09-10 08:00,2008-09-13 17:00,,,,,PT_Normal,,,,,RanL+eh1NU6462ZcOijvHw,,,,N,7218.37,217616.24
1690,83589,829,11713,912,1,100,N,N,N,CP_Drtn,TT_Task,DT_FixedDUR2,RV_OK,TK_Complete,7132L12200,Slab @ 2U level - Part 1,2306,8,0,0,3872.99,0,3872.99,56,141659.52,141659.52,0,,2008-09-13 08:00,2008-09-20 17:00,2008-10-04 08:00,2008-10-02 17:00,,2008-10-02 08:00,2008-10-01 17:00,,,2008-09-13 08:00,2008-09-20 17:00,,,,,PT_Normal,,,,,XNG2eMkfJEebGk1gfQGdGA,,,,N,3872.99,141659.52
1691,83590,829,11713,912,1,100,N,N,N,CP_Drtn,TT_Task,DT_FixedDUR2,RV_OK,TK_Complete,7132L12201,Slab @ 2U level - Part 2,2306,8,0,0,3865.79,0,3865.79,56,141318.64,141318.64,0,,2008-09-21 08:00,2008-09-28 17:00,2008-10-04 08:00,2008-10-02 17:00,,2008-10-02 08:00,2008-10-01 17:00,,,2008-09-21 08:00,2008-09-28 17:00,,,,,PT_Normal,,,,,++AXa2IROEe5foPPtePuPA,,,,N,3865.79,141318.64
1692,83591,829,11713,912,1,100,N,N,N,CP_Drtn,TT_Task,DT_FixedDUR2,RV_OK,TK_Complete,7132L12202,Slab @ 2U level - Middle Part,2306,8,0,0,5579.54,0,5579.54,56,204883.76,204883.76,0,,2008-09-18 08:00,2008-09-25 17:00,2008-10-04 08:00,2008-10-02 17:00,,2008-10-02 08:00,2008-10-01 17:00,,,2008-09-18 08:00,2008-09-25 17:00,,,,,PT_Normal,,,,,TA+P3rhpY0WcsQaInrCcOg,,,,N,5579.54,204883.76
1693,83592,829,11713,912,1,100,N,N,N,CP_Drtn,TT_Task,DT_FixedDUR2,RV_OK,TK_Complete,7132L12250,Staircases 2L to 2U,2306,288,0,0,991.88,0,991.88,24,18457.6,18457.6,0,,2008-09-28 08:00,2008-09-30 17:00,2008-11-13 08:00,2008-11-12 17:00,,2008-10-02 08:00,2008-10-01 17:00,,,2008-09-28 08:00,2008-09-30 17:00,,,,,PT_Normal,,,,,wGBwOhMohkmS78V4GD/Imw,,,,N,991.88,18457.6
1694,83593,829,11161,912,1,0,N,N,N,CP_Drtn,TT_Task,DT_FixedDUR2,RV_OK,TK_NotStart,7132L14050,Block works,2306,8,0,120,0,30085.5,30085.5,120,18440,0,18440,,,,2008-10-23 08:00,2008-11-09 17:00,,2008-10-22 08:00,2008-11-08 17:00,2008-10-22 08:00,2008-11-08 17:00,2008-10-22 08:00,2008-11-08 17:00,,,,,PT_Normal,,,,,nRZVSCZCJkm7hxUdMJUUAQ,,,,N,0,0
1695,83594,829,10944,912,1,0,N,N,N,CP_Drtn,TT_Task,DT_FixedDUR2,RV_OK,TK_NotStart,7132L16050,Plaster works,2306,24,0,120,0,24385.9,24385.9,120,19032,0,19032,,,,2008-11-10 08:00,2008-11-26 17:00,,2008-11-06 08:00,2008-11-23 17:00,2008-11-06 08:00,2008-11-23 17:00,2008-11-06 08:00,2008-11-23 17:00,,,,,PT_Normal,,,,,Wbef3ZBfmkC3GLvU0SJvTQ,,,,N,0,0
1696,83595,829,10944,912,1,0,N,N,N,CP_Drtn,TT_Task,DT_FixedDUR2,RV_OK,TK_NotStart,7132L16051,Plaste works behind tiles,2306,168,160,120,0,10136.2,10136.2,120,7856,0,7856,,,,2008-12-01 08:00,2008-12-17 17:00,,2008-11-06 08:00,2008-11-23 17:00,2008-11-06 08:00,2008-11-23 17:00,2008-11-06 08:00,2008-11-23 17:00,,,,,PT_Normal,,,,,U1P1t0BkpUiibRLUdUZwmA,,,,N,0,0
1697,83596,829,11163,912,1,0,N,N,N,CP_Drtn,TT_Task,DT_FixedDUR2,RV_OK,TK_NotStart,7132L18050,Rendering works,2306,48,24,120,0,5683,5683,120,5000,0,5000,,,,2008-11-06 08:00,2008-11-23 17:00,,2008-10-30 08:00,2008-11-16 17:00,2008-10-30 08:00,2008-11-16 17:00,2008-10-30 08:00,2008-11-16 17:00,,,,,PT_Normal,,,,,QotjYE2xQEeBQ4bT+1YYcg,,,,N,0,0
1698,83597,829,11163,912,1,0,N,N,N,CP_Drtn,TT_Task,DT_FixedDUR2,RV_OK,TK_NotStart,7132L18100,Painting base coats,2306,24,0,120,0,26555.6,26555.6,120,24032,0,24032,,,,2008-11-18 08:00,2008-12-04 17:00,,2008-11-15 08:00,2008-12-01 17:00,2008-11-15 08:00,2008-12-01 17:00,2008-11-15 08:00,2008-12-01 17:00,,,,,PT_Normal,,,,,wAVmBI830UGCiqCyh5lYvQ,,,,N,0,0
1699,83598,829,11163,912,1,0,N,N,N,CP_Drtn,TT_Task,DT_FixedDUR2,RV_OK,TK_NotStart,7132L18150,Painting 1st top coat for apartments,2306,120,0,72,0,17300.2,17300.2,72,16408,0,16408,,,,2009-01-27 08:00,2009-02-05 17:00,,2009-01-10 08:00,2009-01-19 17:00,2009-01-10 08:00,2009-01-19 17:00,2009-01-10 08:00,2009-01-19 17:00,,,,,PT_Normal,,,,,S48shNDpE0m3DD8KXGE9bw,,,,N,0,0
1700,83599,829,11163,912,1,0,N,N,N,CP_Drtn,TT_Task,DT_FixedDUR2,RV_OK,TK_NotStart,7132L18153,Painting 1st top coat for corridors/lobbies,2306,176,0,48,0,14370,14370,48,13640,0,13640,,,,2009-02-17 08:00,2009-02-23 17:00,,2009-01-22 08:00,2009-01-28 17:00,2009-01-22 08:00,2009-01-28 17:00,2009-01-22 08:00,2009-01-28 17:00,,,,,PT_Normal,,,,,PhW8OTfhnkCGWBe7Yxj8BQ,,,,N,0,0
1701,83600,829,11163,912,1,0,N,N,N,CP_Drtn,TT_Task,DT_FixedDUR2,RV_OK,TK_NotStart,7132L18155,Painting 1st top coat for service rooms,2306,152,0,48,0,6364.4,6364.4,48,6016,0,6016,,,,2009-02-12 08:00,2009-02-18 17:00,,2009-01-21 08:00,2009-01-27 17:00,2009-01-21 08:00,2009-01-27 17:00,2009-01-21 08:00,2009-01-27 17:00,,,,,PT_Normal,,,,,1KKCZQEM80iBldSMUYU1fA,,,,N,0,0
1702,83601,829,10860,912,1,0,N,N,N,CP_Drtn,TT_Task,DT_FixedDUR2,RV_OK,TK_NotStart,7132L18200,Painting final top coat,2306,56,56,32,0,25265.8,25265.8,32,24032,0,24032,,,,2009-03-23 08:00,2009-03-26 17:00,,2009-03-15 08:00,2009-03-18 17:00,2009-03-15 08:00,2009-03-18 17:00,2009-03-15 08:00,2009-03-18 17:00,,,,,PT_Normal,,,,,WttMXMsQQ0K35/F7IHDAeg,,,,N,0,0
1703,83602,829,11164,912,1,0,N,N,N,CP_Drtn,TT_Task,DT_FixedDUR2,RV_OK,TK_NotStart,7132L20050,Floor tiles for apartments-dry area,2306,136,8,120,0,8846.4,8846.4,120,6464,0,6464,,,,2008-12-13 08:00,2008-12-29 17:00,,2008-11-23 08:00,2008-12-09 17:00,2008-11-23 08:00,2008-12-09 17:00,2008-11-23 08:00,2008-12-09 17:00,,,,,PT_Normal,,,,,k7I+OB1wzUOFIE5R0mythg,,,,N,0,0
1704,83603,829,11164,912,1,0,N,N,N,CP_Drtn,TT_Task,DT_FixedDUR2,RV_OK,TK_NotStart,7132L20053,Floor tiles for corridors / lobbies,2306,96,0,48,0,4638,4638,48,3400,0,3400,,,,2009-01-24 08:00,2009-01-29 17:00,,2009-01-10 08:00,2009-01-15 17:00,2009-01-10 08:00,2009-01-15 17:00,2009-01-10 08:00,2009-01-15 17:00,,,,,PT_Normal,,,,,/rfj8OFz50qtDxmY9EfH3A,,,,N,0,0
1705,83604,829,11164,912,1,0,N,N,N,CP_Drtn,TT_Task,DT_FixedDUR2,RV_OK,TK_NotStart,7132L20070,Floor tiles for apartments-wet area,2306,8,0,120,0,4062,4062,120,2920,0,2920,,,,2008-12-30 08:00,2009-01-15 17:00,,2008-12-29 08:00,2009-01-14 17:00,2008-12-29 08:00,2009-01-14 17:00,2008-12-29 08:00,2009-01-14 17:00,,,,,PT_Normal,,,,,OKe90N3LYUKuRcdyi/USWw,,,,N,0,0
1706,83605,829,11164,912,1,0,N,N,N,CP_Drtn,TT_Task,DT_FixedDUR2,RV_OK,TK_NotStart,7132L20110,Wall tiles for apartments-wet area,2306,32,0,120,0,9159,9159,120,6026,0,6026,,,,2009-01-05 08:00,2009-01-21 17:00,,2008-12-31 08:00,2009-01-17 17:00,2008-12-31 08:00,2009-01-17 17:00,2008-12-31 08:00,2009-01-17 17:00,,,,,PT_Normal,,,,,0MhofbddB0+xXQv3W80law,,,,N,0,0
1707,83606,829,11056,912,1,0,N,N,N,CP_Drtn,TT_Task,DT_FixedDUR2,RV_OK,TK_NotStart,7132L22150,W/P for for apartments,2306,232,0,72,0,4832.4,4832.4,72,4328,0,4328,,,,2008-12-13 08:00,2008-12-22 17:00,,2008-11-09 08:00,2008-11-18 17:00,2008-11-09 08:00,2008-11-18 17:00,2008-11-09 08:00,2008-11-18 17:00,,,,,PT_Normal,,,,,iC+dE37UjkWlnBv6JugZVg,,,,N,0,0
1708,83607,829,11057,912,1,0,N,N,N,CP_Drtn,TT_Task,DT_FixedDUR2,RV_OK,TK_NotStart,7132L24050,Aluminium doors & windows,2306,232,64,120,0,1976,1976,120,464,0,464,,,,2009-01-05 08:00,2009-01-21 17:00,,2008-12-02 08:00,2008-12-18 17:00,2008-12-02 08:00,2008-12-18 17:00,2008-12-02 08:00,2008-12-18 17:00,,,,,PT_Normal,,,,,2RSMeQDJLkCdl7two5yNXw,,,,N,0,0
1709,83608,829,11057,912,1,0,N,N,N,CP_Drtn,TT_Task,DT_FixedDUR2,RV_OK,TK_NotStart,7132L24200,Balcony handrails,2306,48,0,120,0,2710,2710,120,1480,0,1480,,,,2009-01-22 08:00,2009-02-08 17:00,,2009-01-15 08:00,2009-02-01 17:00,2009-01-15 08:00,2009-02-01 17:00,2009-01-15 08:00,2009-02-01 17:00,,,,,PT_Normal,,,,,5LI77CjwWUapI9kAihuKXA,,,,N,0,0
1710,83609,829,11057,912,1,0,N,N,N,CP_Drtn,TT_Task,DT_FixedDUR2,RV_OK,TK_NotStart,7132L24203,Lobby handrails,2306,256,176,64,0,946,946,64,504,0,504,,,,2009-02-23 08:00,2009-03-03 17:00,,2009-01-17 08:00,2009-01-25 17:00,2009-01-17 08:00,2009-01-25 17:00,2009-01-17 08:00,2009-01-25 17:00,,,,,PT_Normal,,,,,vo87aZN+CU2KQOFrx61puQ,,,,N,0,0
1711,83610,829,11167,912,1,0,N,N,N,CP_Drtn,TT_Task,DT_FixedDUR2,RV_OK,TK_NotStart,7132L26050,Steel doors,2306,152,0,48,0,368,368,48,64,0,64,,,,2009-02-05 08:00,2009-02-11 17:00,,2009-01-14 08:00,2009-01-20 17:00,2009-01-14 08:00,2009-01-20 17:00,2009-01-14 08:00,2009-01-20 17:00,,,,,PT_Normal,,,,,Bc1GyZA3xk6LxQAS9IDDAw,,,,N,0,0
1712,83611,829,11168,912,1,0,N,N,N,CP_Drtn,TT_Task,DT_FixedDUR2,RV_OK,TK_NotStart,7132L30050,Wooden doors,2306,88,32,176,0,2192,2192,176,576,0,576,,,,2009-01-11 08:00,2009-02-04 17:00,,2008-12-29 08:00,2009-01-22 17:00,2008-12-29 08:00,2009-01-22 17:00,2008-12-29 08:00,2009-01-22 17:00,,,,,PT_Normal,,,,,3yBJXIxMbUyCmnmrBVk0jw,,,,N,0,0
1713,83612,829,10951,912,1,0,N,N,N,CP_Drtn,TT_Task,DT_FixedDUR2,RV_OK,TK_NotStart,7132L32050,Kitchen cabinets,2306,32,32,128,0,3104,3104,128,96,0,96,,,,2009-01-21 08:00,2009-02-08 17:00,,2009-01-17 08:00,2009-02-03 17:00,2009-01-17 08:00,2009-02-03 17:00,2009-01-17 08:00,2009-02-03 17:00,,,,,PT_Normal,,,,,xxH5wNMnvk6R7e6ginJdYA,,,,N,0,0
1714,83613,829,10951,912,1,0,N,N,N,CP_Drtn,TT_Task,DT_FixedDUR2,RV_OK,TK_NotStart,7132L32100,Vanity counters,2306,8,0,120,0,1880,1880,120,160,0,160,,,,2009-01-17 08:00,2009-02-02 17:00,,2009-01-15 08:00,2009-02-01 17:00,2009-01-15 08:00,2009-02-01 17:00,2009-01-15 08:00,2009-02-01 17:00,,,,,PT_Normal,,,,,2UeQF0B4xEmlRG0nSqtT5Q,,,,N,0,0
1715,83614,829,10951,912,1,0,N,N,N,CP_Drtn,TT_Task,DT_FixedDUR2,RV_OK,TK_NotStart,7132L32150,Wardrobes,2306,168,168,120,0,4152,4152,120,192,0,192,,,,2009-01-22 08:00,2009-02-08 17:00,,2008-12-29 08:00,2009-01-14 17:00,2008-12-29 08:00,2009-01-14 17:00,2008-12-29 08:00,2009-01-14 17:00,,,,,PT_Normal,,,,,qV3E04aG+US0Bp6FDzjYnw,,,,N,0,0
1716,83615,829,11170,912,1,0,N,N,N,CP_Drtn,TT_Task,DT_FixedDUR2,RV_OK,TK_NotStart,7132L34050,False ceiling works for apartments-dry area,2306,112,0,160,0,1506.16,1506.16,160,897.44,0,897.44,,,,2009-01-03 08:00,2009-01-25 17:00,,2008-12-17 08:00,2009-01-08 17:00,2008-12-17 08:00,2009-01-08 17:00,2008-12-17 08:00,2009-01-08 17:00,,,,,PT_Normal,,,,,UUSUzzR4JU+NJ/CfpcqjCQ,,,,N,0,0
1717,83616,829,11170,912,1,0,N,N,N,CP_Drtn,TT_Task,DT_FixedDUR2,RV_OK,TK_NotStart,7132L34053,False ceiling works for corridors/lobbies,2306,96,0,72,0,9876,9876,72,6536,0,6536,,,,2009-01-15 08:00,2009-01-25 17:00,,2009-01-01 08:00,2009-01-11 17:00,2009-01-01 08:00,2009-01-11 17:00,2009-01-01 08:00,2009-01-11 17:00,,,,,PT_Normal,,,,,Dn469+2cUEKGgPFIpgbD9g,,,,N,0,0
1718,83617,829,11170,912,1,0,N,N,N,CP_Drtn,TT_Task,DT_FixedDUR2,RV_OK,TK_NotStart,7132L34070,False ceiling works for apartments-wet area,2306,8,0,160,0,709.84,709.84,160,366.56,0,366.56,,,,2008-12-18 08:00,2009-01-10 17:00,,2008-12-17 08:00,2009-01-08 17:00,2008-12-17 08:00,2009-01-08 17:00,2008-12-17 08:00,2009-01-08 17:00,,,,,PT_Normal,,,,,0QKr1+A8kk+MCC0XKBs0XA,,,,N,0,0
1719,83618,829,11171,912,1,0,N,N,N,CP_Drtn,TT_Task,DT_FixedDUR2,RV_OK,TK_NotStart,7132L36050,Stone finishing top,2306,72,0,64,0,484,484,64,240,0,240,,,,2009-01-27 08:00,2009-02-04 17:00,,2009-01-17 08:00,2009-01-25 17:00,2009-01-17 08:00,2009-01-25 17:00,2009-01-17 08:00,2009-01-25 17:00,,,,,PT_Normal,,,,,pg2sKTzvf0KHfpQN6swYiA,,,,N,0,0
1720,83619,829,11171,912,1,0,N,N,N,CP_Drtn,TT_Task,DT_FixedDUR2,RV_OK,TK_NotStart,7132L36100,Thresholds,2306,48,0,120,0,924,924,120,536,0,536,,,,2009-01-22 08:00,2009-02-08 17:00,,2009-01-15 08:00,2009-02-01 17:00,2009-01-15 08:00,2009-02-01 17:00,2009-01-15 08:00,2009-02-01 17:00,,,,,PT_Normal,,,,,Ov/SFbo6cUCvheaelZHlEg,,,,N,0,0
1721,83620,829,11063,912,1,0,N,N,N,CP_Drtn,TT_Task,DT_FixedDUR2,RV_OK,TK_NotStart,7132L38100,Epoxy coating system,2306,152,72,48,0,816,816,48,640,0,640,,,,2009-02-25 08:00,2009-03-03 17:00,,2009-02-03 08:00,2009-02-09 17:00,2009-02-03 08:00,2009-02-09 17:00,2009-02-03 08:00,2009-02-09 17:00,,,,,PT_Normal,,,,,b+J0Bw5UyEa3FwYX7pMxzA,,,,N,0,0
1722,83621,829,11064,912,1,0,N,N,N,CP_Drtn,TT_Task,DT_FixedDUR2,RV_OK,TK_NotStart,7132L40050,Duplex apartment stairs,2306,128,0,120,0,3816,3816,120,96,0,96,,,,2008-12-30 08:00,2009-01-15 17:00,,2008-12-11 08:00,2008-12-28 17:00,2008-12-11 08:00,2008-12-28 17:00,2008-12-11 08:00,2008-12-28 17:00,,,,,PT_Normal,,,,,znuLKuN8NEKcrhBTNfr77g,,,,N,0,0
1723,83622,829,11064,912,1,0,N,N,N,CP_Drtn,TT_Task,DT_FixedDUR2,RV_OK,TK_NotStart,7132L40100,Wooden steps for Duplex stairs,2306,128,0,120,0,936,936,120,96,0,96,,,,2009-01-11 08:00,2009-01-27 17:00,,2008-12-23 08:00,2009-01-08 17:00,2008-12-23 08:00,2009-01-08 17:00,2008-12-23 08:00,2009-01-08 17:00,,,,,PT_Normal,,,,,Jws5vsLwfk+ugEjoP4H8UA,,,,N,0,0
1724,83623,829,11064,912,1,0,N,N,N,CP_Drtn,TT_Task,DT_FixedDUR2,RV_OK,TK_NotStart,7132L40150,Duplex stair railings,2306,128,128,120,0,5120,5120,120,2000,0,2000,,,,2009-01-22 08:00,2009-02-08 17:00,,2009-01-04 08:00,2009-01-20 17:00,2009-01-04 08:00,2009-01-20 17:00,2009-01-04 08:00,2009-01-20 17:00,,,,,PT_Normal,,,,,8WEyCIq2GkCIwbg5uuGEsQ,,,,N,0,0
1725,83624,829,11174,912,1,0,N,N,N,CP_Drtn,TT_Task,DT_FixedDUR2,RV_OK,TK_NotStart,7132L42050,Signage works,2306,184,104,48,0,153.8,153.8,48,96,0,96,,,,2009-02-25 08:00,2009-03-03 17:00,,2009-01-29 08:00,2009-02-04 17:00,2009-01-29 08:00,2009-02-04 17:00,2009-01-29 08:00,2009-02-04 17:00,,,,,PT_Normal,,,,,dI73GbvXPk+FlHVnXq+FBw,,,,N,0,0
1726,83625,829,11066,912,1,0,N,N,N,CP_Drtn,TT_Task,DT_FixedDUR2,RV_OK,TK_NotStart,7132L44050,Sub-frames,2306,24,0,120,0,1272,1272,120,576,0,576,,,,2008-11-04 08:00,2008-11-20 17:00,,2008-11-01 08:00,2008-11-17 17:00,2008-11-01 08:00,2008-11-17 17:00,2008-11-01 08:00,2008-11-17 17:00,,,,,PT_Normal,,,,,8dVFuonxwUyGaxJqGaOZCA,,,,N,0,0
1727,83626,829,12129,912,1,100,N,N,N,CP_Drtn,TT_Task,DT_FixedDUR2,RV_OK,TK_Complete,7132L50100,MEP skeleton embedded provisions,2296,8,0,0,512,0,512,72,,,0,,2008-09-04 08:00,2008-09-14 17:00,2008-10-04 08:00,2008-10-02 17:00,,2008-10-02 08:00,2008-10-01 17:00,,,2008-09-04 08:00,2008-09-14 17:00,,,,,PT_Normal,,,,,/ebVwd+C10WRY7kBEWbEng,,,,N,512,0
1728,83627,829,12440,912,1,0,N,N,N,CP_Drtn,TT_Task,DT_FixedDUR2,RV_OK,TK_NotStart,7132L52050,A/C duct works,2296,120,112,160,0,831,831,160,0,0,0,,,,2008-11-17 08:00,2008-12-09 17:00,,2008-10-30 08:00,2008-11-22 17:00,2008-10-30 08:00,2008-11-22 17:00,2008-10-30 08:00,2008-11-22 17:00,,,,,PT_Normal,,,,,i3rtDaZmE0yxtH0rw/fcWA,,,,N,0,0
1729,83628,829,12440,912,1,0,N,N,N,CP_Drtn,TT_Task,DT_FixedDUR2,RV_OK,TK_NotStart,7132L52100,Chilled water pipe works,2296,72,64,72,0,787,787,72,0,0,0,,,,2008-11-20 08:00,2008-11-30 17:00,,2008-11-10 08:00,2008-11-19 17:00,2008-11-10 08:00,2008-11-19 17:00,2008-11-10 08:00,2008-11-19 17:00,,,,,PT_Normal,,,,,5AuVe8vtEESygzP/ABMSYg,,,,N,0,0
1730,83629,829,12232,912,1,0,N,N,N,CP_Drtn,TT_Task,DT_FixedDUR2,RV_OK,TK_NotStart,7132L52150,FCU's hanging,2296,128,120,64,0,935.2,935.2,64,0,0,0,,,,2008-11-27 08:00,2008-12-06 17:00,,2008-11-09 08:00,2008-11-17 17:00,2008-11-09 08:00,2008-11-17 17:00,2008-11-09 08:00,2008-11-17 17:00,,,,,PT_Normal,,,,,9/Mu2XkvIE6ZANudYcvhzg,,,,N,0,0
1731,83630,829,12232,912,1,0,N,N,N,CP_Drtn,TT_Task,DT_FixedDUR2,RV_OK,TK_NotStart,7132L52300,FCU's assembly & duct connections,2296,8,0,72,0,943.2,943.2,72,0,0,0,,,,2008-12-08 08:00,2008-12-17 17:00,,2008-12-07 08:00,2008-12-16 17:00,2008-12-07 08:00,2008-12-16 17:00,2008-12-07 08:00,2008-12-16 17:00,,,,,PT_Normal,,,,,GSJk0abmqkOmayctxhWkCg,,,,N,0,0
1732,83631,829,12232,912,1,0,N,N,N,CP_Drtn,TT_Task,DT_FixedDUR2,RV_OK,TK_NotStart,7132L52350,Grills & diffusers,2296,248,0,80,0,872,872,80,0,0,0,,,,2009-02-15 08:00,2009-02-25 17:00,,2009-01-10 08:00,2009-01-20 17:00,2009-01-10 08:00,2009-01-20 17:00,2009-01-10 08:00,2009-01-20 17:00,,,,,PT_Normal,,,,,UgF49PKyf0isIjDOZ1ELLg,,,,N,0,0
1733,83632,829,12440,912,1,0,N,N,N,CP_Drtn,TT_Task,DT_FixedDUR2,RV_OK,TK_NotStart,7132L52550,A/C duct risers,2296,8,0,64,0,1626,1626,64,0,0,0,,,,2008-11-22 08:00,2008-11-30 17:00,,2008-11-20 08:00,2008-11-29 17:00,2008-11-20 08:00,2008-11-29 17:00,2008-11-20 08:00,2008-11-29 17:00,,,,,PT_Normal,,,,,BwiGbJTmkEG1TZAnbzsv9A,,,,N,0,0
1734,83633,829,12243,912,1,0,N,N,N,CP_Drtn,TT_Task,DT_FixedDUR2,RV_OK,TK_NotStart,7132L54050,Chasing & Pex pipe works,2296,144,8,120,0,395,395,120,0,0,0,,,,2008-11-20 08:00,2008-12-07 17:00,,2008-10-30 08:00,2008-11-16 17:00,2008-10-30 08:00,2008-11-16 17:00,2008-10-30 08:00,2008-11-16 17:00,,,,,PT_Normal,,,,,kfxvOSWDckScYQFH6EQWiQ,,,,N,0,0
1735,83634,829,12243,912,1,0,N,N,N,CP_Drtn,TT_Task,DT_FixedDUR2,RV_OK,TK_NotStart,7132L54100,Over head distribution water pipe network,2296,80,0,64,0,8314,8314,64,0,0,0,,,,2008-11-26 08:00,2008-12-04 17:00,,2008-11-15 08:00,2008-11-23 17:00,2008-11-15 08:00,2008-11-23 17:00,2008-11-15 08:00,2008-11-23 17:00,,,,,PT_Normal,,,,,IDRUzLjsqkWpo3TgRFu33A,,,,N,0,0
1736,83635,829,12445,912,1,0,N,N,N,CP_Drtn,TT_Task,DT_FixedDUR2,RV_OK,TK_NotStart,7132L54150,Water meter cabinet pipe works,2296,272,152,120,0,340,340,120,0,0,0,,,,2009-01-22 08:00,2009-02-08 17:00,,2008-12-14 08:00,2008-12-30 17:00,2008-12-14 08:00,2008-12-30 17:00,2008-12-14 08:00,2008-12-30 17:00,,,,,PT_Normal,,,,,fHyAp+Icq02TU0RPHFSFMw,,,,N,0,0
1737,83636,829,12135,912,1,0,N,N,N,CP_Drtn,TT_Task,DT_FixedDUR2,RV_OK,TK_NotStart,7132L54250,Bathtubs,2296,232,0,80,0,273.6,273.6,80,0,0,0,,,,2008-12-18 08:00,2008-12-29 17:00,,2008-11-15 08:00,2008-11-25 17:00,2008-11-15 08:00,2008-11-25 17:00,2008-11-15 08:00,2008-11-25 17:00,,,,,PT_Normal,,,,,MMmUDbfUpEievpHAd559vQ,,,,N,0,0
1738,83637,829,12135,912,1,0,N,N,N,CP_Drtn,TT_Task,DT_FixedDUR2,RV_OK,TK_NotStart,7132L54300,Water heater,2296,112,64,64,0,310.4,310.4,64,0,0,0,,,,2008-12-03 08:00,2008-12-11 17:00,,2008-11-17 08:00,2008-11-25 17:00,2008-11-17 08:00,2008-11-25 17:00,2008-11-17 08:00,2008-11-25 17:00,,,,,PT_Normal,,,,,49Ih+wkElUuC4K6MUp9pmg,,,,N,0,0
1739,83638,829,12135,912,1,0,N,N,N,CP_Drtn,TT_Task,DT_FixedDUR2,RV_OK,TK_NotStart,7132L54350,Over head pipe assembly & vlave connections,2296,80,72,72,0,237,237,72,0,0,0,,,,2008-12-08 08:00,2008-12-17 17:00,,2008-11-26 08:00,2008-12-06 17:00,2008-11-26 08:00,2008-12-06 17:00,2008-11-26 08:00,2008-12-06 17:00,,,,,PT_Normal,,,,,MZHwTSxvik6Fi2SBjvy6IA,,,,N,0,0
1740,83639,829,12445,912,1,0,N,N,N,CP_Drtn,TT_Task,DT_FixedDUR2,RV_OK,TK_NotStart,7132L54400,Sanitary fixures,2296,72,0,120,0,516,516,120,0,0,0,,,,2009-01-19 08:00,2009-02-04 17:00,,2009-01-08 08:00,2009-01-25 17:00,2009-01-08 08:00,2009-01-25 17:00,2009-01-08 08:00,2009-01-25 17:00,,,,,PT_Normal,,,,,qvkpAVDeY0CK7JOYbdZz6A,,,,N,0,0
1741,83640,829,12445,912,1,0,N,N,N,CP_Drtn,TT_Task,DT_FixedDUR2,RV_OK,TK_NotStart,7132L54450,Mirrors,2296,8,0,120,0,186,186,120,0,0,0,,,,2009-01-22 08:00,2009-02-08 17:00,,2009-01-21 08:00,2009-02-07 17:00,2009-01-21 08:00,2009-02-07 17:00,2009-01-21 08:00,2009-02-07 17:00,,,,,PT_Normal,,,,,QeoE//gyBUKS6S9Ihjylrw,,,,N,0,0
1742,83641,829,12135,912,1,0,N,N,N,CP_Drtn,TT_Task,DT_FixedDUR2,RV_OK,TK_NotStart,7132L54500,Concealed Flushing Cistern,2296,232,224,80,0,212,212,80,0,0,0,,,,2008-12-18 08:00,2008-12-29 17:00,,2008-11-15 08:00,2008-11-25 17:00,2008-11-15 08:00,2008-11-25 17:00,2008-11-15 08:00,2008-11-25 17:00,,,,,PT_Normal,,,,,y+TOVE1HW0CkIGMuoj6BtQ,,,,N,0,0
1743,83642,829,12020,912,1,0,N,N,N,CP_Drtn,TT_Task,DT_FixedDUR2,RV_OK,TK_NotStart,7132L56050,Chasing and installation of drainage pipes,2296,64,0,120,0,285,285,120,0,0,0,,,,2008-11-09 08:00,2008-11-25 17:00,,2008-10-30 08:00,2008-11-16 17:00,2008-10-30 08:00,2008-11-16 17:00,2008-10-30 08:00,2008-11-16 17:00,,,,,PT_Normal,,,,,uT5nCgklyU6fZWJEJE0M7g,,,,N,0,0
1744,83643,829,12020,912,1,0,N,N,N,CP_Drtn,TT_Task,DT_FixedDUR2,RV_OK,TK_NotStart,7132L56100,Drainage riser pipes,2296,176,72,64,0,284,284,64,0,0,0,,,,2008-11-25 08:00,2008-12-03 17:00,,2008-10-30 08:00,2008-11-08 17:00,2008-10-30 08:00,2008-11-08 17:00,2008-10-30 08:00,2008-11-08 17:00,,,,,PT_Normal,,,,,D49bABY2HE+SIk7MPsyTMQ,,,,N,0,0
1745,83644,829,12239,912,1,0,N,N,N,CP_Drtn,TT_Task,DT_FixedDUR2,RV_OK,TK_NotStart,7132L56150,Over head drainage pipe works,2296,136,128,64,0,257.6,257.6,64,0,0,0,,,,2008-12-09 08:00,2008-12-17 17:00,,2008-11-19 08:00,2008-11-27 17:00,2008-11-19 08:00,2008-11-27 17:00,2008-11-19 08:00,2008-11-27 17:00,,,,,PT_Normal,,,,,jNQ8t2dSY0yeKAWxwDCHKA,,,,N,0,0
1746,83645,829,12042,912,1,0,N,N,N,CP_Drtn,TT_Task,DT_FixedDUR2,RV_OK,TK_NotStart,7132L58050,Fire fighting pipe works,2296,144,136,72,0,292,292,72,0,0,0,,,,2008-11-30 08:00,2008-12-09 17:00,,2008-11-09 08:00,2008-11-18 17:00,2008-11-09 08:00,2008-11-18 17:00,2008-11-09 08:00,2008-11-18 17:00,,,,,PT_Normal,,,,,RrirAd6q9EOQAndXpA6jdQ,,,,N,0,0
1747,83646,829,12242,912,1,0,N,N,N,CP_Drtn,TT_Task,DT_FixedDUR2,RV_OK,TK_NotStart,7132L58200,Fire cabinet complete,2296,176,0,64,0,339,339,64,0,0,0,,,,2009-02-23 08:00,2009-03-03 17:00,,2009-01-28 08:00,2009-02-05 17:00,2009-01-28 08:00,2009-02-05 17:00,2009-01-28 08:00,2009-02-05 17:00,,,,,PT_Normal,,,,,mvwZHLwLX0ODH67Mex1ODg,,,,N,0,0
1748,83647,829,12242,912,1,0,N,N,N,CP_Drtn,TT_Task,DT_FixedDUR2,RV_OK,TK_NotStart,7132L58250,Sprinkler heads,2296,208,0,120,0,450,450,120,0,0,0,,,,2009-02-09 08:00,2009-02-25 17:00,,2009-01-10 08:00,2009-01-26 17:00,2009-01-10 08:00,2009-01-26 17:00,2009-01-10 08:00,2009-01-26 17:00,,,,,PT_Normal,,,,,0ElXZjSoYE6/rW92rJlZhA,,,,N,0,0
1749,83648,829,12158,912,1,0,N,N,N,CP_Drtn,TT_Task,DT_FixedDUR2,RV_OK,TK_NotStart,7132L60050,LPG piping,2296,312,0,72,0,292,292,72,0,0,0,,,,2009-01-11 08:00,2009-01-20 17:00,,2008-11-26 08:00,2008-12-06 17:00,2008-11-26 08:00,2008-12-06 17:00,2008-11-26 08:00,2008-12-06 17:00,,,,,PT_Normal,,,,,581cczUxgEmWYI+sbUbVOA,,,,N,0,0
1750,83649,829,12245,912,1,0,N,N,N,CP_Drtn,TT_Task,DT_FixedDUR2,RV_OK,TK_NotStart,7132L60100,Gas meter & leak detector,2296,344,0,72,0,248,248,72,0,0,0,,,,2009-01-26 08:00,2009-02-04 17:00,,2008-12-07 08:00,2008-12-16 17:00,2008-12-07 08:00,2008-12-16 17:00,2008-12-07 08:00,2008-12-16 17:00,,,,,PT_Normal,,,,,61MSue/O20uqXZh0I/ixFw,,,,N,0,0
1751,83650,829,12247,912,1,0,N,N,N,CP_Drtn,TT_Task,DT_FixedDUR2,RV_OK,TK_NotStart,7132L62050,BMS cabling,2296,64,56,48,0,470.4,470.4,48,0,0,0,,,,2008-12-11 08:00,2008-12-17 17:00,,2008-12-02 08:00,2008-12-08 17:00,2008-12-02 08:00,2008-12-08 17:00,2008-12-02 08:00,2008-12-08 17:00,,,,,PT_Normal,,,,,gkzEhAMkCUenJdAbtUBbuA,,,,N,0,0
1752,83651,829,12457,912,1,0,N,N,N,CP_Drtn,TT_Task,DT_FixedDUR2,RV_OK,TK_NotStart,7132L62100,DGC & cable termination to equipments,2296,152,0,48,0,329.6,329.6,48,0,0,0,,,,2009-02-19 08:00,2009-02-25 17:00,,2009-01-28 08:00,2009-02-03 17:00,2009-01-28 08:00,2009-02-03 17:00,2009-01-28 08:00,2009-02-03 17:00,,,,,PT_Normal,,,,,jg1cHgaPLk+Izdojc9cBJw,,,,N,0,0
1753,83652,829,12250,912,1,0,N,N,N,CP_Drtn,TT_Task,DT_FixedDUR2,RV_OK,TK_NotStart,7132L66050,Chasing and installation of conduits,2296,24,0,120,0,1809.6,1809.6,120,0,0,0,,,,2008-11-04 08:00,2008-11-20 17:00,,2008-11-01 08:00,2008-11-17 17:00,2008-11-01 08:00,2008-11-17 17:00,2008-11-01 08:00,2008-11-17 17:00,,,,,PT_Normal,,,,,j0OzlCB6s0em/t3XwXd56Q,,,,N,0,0
1754,83653,829,12250,912,1,0,N,N,N,CP_Drtn,TT_Task,DT_FixedDUR2,RV_OK,TK_NotStart,7132L66100,Cable trays & trunking,2296,24,0,64,0,1472,1472,64,0,0,0,,,,2008-11-30 08:00,2008-12-08 17:00,,2008-11-26 08:00,2008-12-04 17:00,2008-11-26 08:00,2008-12-04 17:00,2008-11-26 08:00,2008-12-04 17:00,,,,,PT_Normal,,,,,URWCjl9fuE2bOs65Wegz6Q,,,,N,0,0
1755,83654,829,12084,912,1,0,N,N,N,CP_Drtn,TT_Task,DT_FixedDUR2,RV_OK,TK_NotStart,7132L68050,Single core wiring,2296,160,152,72,0,1128,1128,72,0,0,0,,,,2008-11-26 08:00,2008-12-06 17:00,,2008-11-03 08:00,2008-11-12 17:00,2008-11-03 08:00,2008-11-12 17:00,2008-11-03 08:00,2008-11-12 17:00,,,,,PT_Normal,,,,,YDtkVBS6c0SxRm+RsuKBdg,,,,N,0,0
1756,83655,829,12253,912,1,0,N,N,N,CP_Drtn,TT_Task,DT_FixedDUR2,RV_OK,TK_NotStart,7132L68100,DB enclosure,2296,72,48,64,0,416,416,64,0,0,0,,,,2008-11-19 08:00,2008-11-27 17:00,,2008-11-09 08:00,2008-11-17 17:00,2008-11-09 08:00,2008-11-17 17:00,2008-11-09 08:00,2008-11-17 17:00,,,,,PT_Normal,,,,,ld2wtppvXkenWrpCWMvtFw,,,,N,0,0
1757,83656,829,12253,912,1,0,N,N,N,CP_Drtn,TT_Task,DT_FixedDUR2,RV_OK,TK_NotStart,7132L68150,LV feeder cables,2296,96,72,72,0,2606.4,2606.4,72,0,0,0,,,,2008-12-20 08:00,2008-12-29 17:00,,2008-12-06 08:00,2008-12-15 17:00,2008-12-06 08:00,2008-12-15 17:00,2008-12-06 08:00,2008-12-15 17:00,,,,,PT_Normal,,,,,1PjEsZaLMU+xGaAoh/0wLg,,,,N,0,0
1758,83657,829,12254,912,1,0,N,N,N,CP_Drtn,TT_Task,DT_FixedDUR2,RV_OK,TK_NotStart,7132L68250,DB-breakers assembly,2296,136,120,72,0,564.8,564.8,72,0,0,0,,,,2009-01-29 08:00,2009-02-08 17:00,,2009-01-10 08:00,2009-01-19 17:00,2009-01-10 08:00,2009-01-19 17:00,2009-01-10 08:00,2009-01-19 17:00,,,,,PT_Normal,,,,,ImjndXC/qEWesw220nIOpQ,,,,N,0,0
1759,83658,829,12254,912,1,0,N,N,N,CP_Drtn,TT_Task,DT_FixedDUR2,RV_OK,TK_NotStart,7132L68300,SMDB,2296,152,0,48,0,1315.2,1315.2,48,0,0,0,,,,2009-02-18 08:00,2009-02-24 17:00,,2009-01-27 08:00,2009-02-02 17:00,2009-01-27 08:00,2009-02-02 17:00,2009-01-27 08:00,2009-02-02 17:00,,,,,PT_Normal,,,,,ancVpzQY9EaLHrKCwZrirw,,,,N,0,0
1760,83659,829,12254,912,1,0,N,N,N,CP_Drtn,TT_Task,DT_FixedDUR2,RV_OK,TK_NotStart,7132L68350,Light Fittings,2296,128,112,120,0,1105.6,1105.6,120,0,0,0,,,,2009-01-22 08:00,2009-02-08 17:00,,2009-01-04 08:00,2009-01-20 17:00,2009-01-04 08:00,2009-01-20 17:00,2009-01-04 08:00,2009-01-20 17:00,,,,,PT_Normal,,,,,DJkMQHNAcEyfWy7GoJnwig,,,,N,0,0
1761,83660,829,12254,912,1,0,N,N,N,CP_Drtn,TT_Task,DT_FixedDUR2,RV_OK,TK_NotStart,7132L68400,Lighting Control Panels,2296,176,0,64,0,275.2,275.2,64,0,0,0,,,,2009-02-23 08:00,2009-03-03 17:00,,2009-01-28 08:00,2009-02-05 17:00,2009-01-28 08:00,2009-02-05 17:00,2009-01-28 08:00,2009-02-05 17:00,,,,,PT_Normal,,,,,IB0qHw8F6kWcHoaTrt8/dw,,,,N,0,0
1762,83661,829,12254,912,1,0,N,N,N,CP_Drtn,TT_Task,DT_FixedDUR2,RV_OK,TK_NotStart,7132L68600,Switches & sockets,2296,136,120,72,0,494.4,494.4,72,0,0,0,,,,2009-01-29 08:00,2009-02-08 17:00,,2009-01-10 08:00,2009-01-19 17:00,2009-01-10 08:00,2009-01-19 17:00,2009-01-10 08:00,2009-01-19 17:00,,,,,PT_Normal,,,,,Q8u831eInkahzxlDqXgPyg,,,,N,0,0
1763,83662,829,12256,912,1,0,N,N,N,CP_Drtn,TT_Task,DT_FixedDUR2,RV_OK,TK_NotStart,7132L70050,Central Battery cables,2296,128,120,64,0,345.6,345.6,64,0,0,0,,,,2008-11-27 08:00,2008-12-06 17:00,,2008-11-09 08:00,2008-11-17 17:00,2008-11-09 08:00,2008-11-17 17:00,2008-11-09 08:00,2008-11-17 17:00,,,,,PT_Normal,,,,,dKrYebVakEekJT/jWp4eCg,,,,N,0,0
1764,83663,829,12466,912,1,0,N,N,N,CP_Drtn,TT_Task,DT_FixedDUR2,RV_OK,TK_NotStart,7132L70150,Emergency & exit light fittings,2296,272,0,48,0,188.8,188.8,48,0,0,0,,,,2009-02-25 08:00,2009-03-03 17:00,,2009-01-17 08:00,2009-01-22 17:00,2009-01-17 08:00,2009-01-22 17:00,2009-01-17 08:00,2009-01-22 17:00,,,,,PT_Normal,,,,,JgYcpM9KlE6uWMB5uUHAPA,,,,N,0,0
1765,83664,829,12468,912,1,0,N,N,N,CP_Drtn,TT_Task,DT_FixedDUR2,RV_OK,TK_NotStart,7132L72200,Intercom system cables,2296,48,40,48,0,576,576,48,0,0,0,,,,2008-12-11 08:00,2008-12-17 17:00,,2008-12-04 08:00,2008-12-10 17:00,2008-12-04 08:00,2008-12-10 17:00,2008-12-04 08:00,2008-12-10 17:00,,,,,PT_Normal,,,,,RzwgS9h4vEKjAaqBpSbNyw,,,,N,0,0
1766,83665,829,12160,912,1,0,N,N,N,CP_Drtn,TT_Task,DT_FixedDUR2,RV_OK,TK_NotStart,7132L72250,Intercom system equipments,2296,120,104,64,0,486.4,486.4,64,0,0,0,,,,2009-01-31 08:00,2009-02-08 17:00,,2009-01-13 08:00,2009-01-21 17:00,2009-01-13 08:00,2009-01-21 17:00,2009-01-13 08:00,2009-01-21 17:00,,,,,PT_Normal,,,,,pbYYkiXw+EGi4WZvAJcQvA,,,,N,0,0
1767,83666,829,12471,912,1,0,N,N,N,CP_Drtn,TT_Task,DT_FixedDUR2,RV_OK,TK_NotStart,7132L74050,Fire alarm cables,2296,128,120,64,0,380.8,380.8,64,0,0,0,,,,2008-11-27 08:00,2008-12-06 17:00,,2008-11-09 08:00,2008-11-17 17:00,2008-11-09 08:00,2008-11-17 17:00,2008-11-09 08:00,2008-11-17 17:00,,,,,PT_Normal,,,,,stRPFwQUiEedJTzZjQxAqg,,,,N,0,0
1768,83667,829,12063,912,1,0,N,N,N,CP_Drtn,TT_Task,DT_FixedDUR2,RV_OK,TK_NotStart,7132L74100,Fire alarm fittings,2296,192,0,80,0,132.8,132.8,80,0,0,0,,,,2009-02-15 08:00,2009-02-25 17:00,,2009-01-18 08:00,2009-01-28 17:00,2009-01-18 08:00,2009-01-28 17:00,2009-01-18 08:00,2009-01-28 17:00,,,,,PT_Normal,,,,,QzQIQkkmsEqtQFtHO6jMhw,,,,N,0,0
1769,83668,829,12265,912,1,0,N,N,N,CP_Drtn,TT_Task,DT_FixedDUR2,RV_OK,TK_NotStart,7132L76050,Structured cabling,2296,64,40,64,0,345.6,345.6,64,0,0,0,,,,2008-12-11 08:00,2008-12-20 17:00,,2008-12-02 08:00,2008-12-10 17:00,2008-12-02 08:00,2008-12-10 17:00,2008-12-02 08:00,2008-12-10 17:00,,,,,PT_Normal,,,,,UDyIlJBONUi4KYk9JI6O6A,,,,N,0,0
1770,83669,829,12266,912,1,0,N,N,N,CP_Drtn,TT_Task,DT_FixedDUR2,RV_OK,TK_NotStart,7132L76100,Consolidated pionts,2296,24,0,64,0,486.4,486.4,64,0,0,0,,,,2008-12-21 08:00,2008-12-29 17:00,,2008-12-17 08:00,2008-12-25 17:00,2008-12-17 08:00,2008-12-25 17:00,2008-12-17 08:00,2008-12-25 17:00,,,,,PT_Normal,,,,,OCtoTZAky0GHhc5yOu7FIA,,,,N,0,0
1771,83670,829,11610,912,1,100,N,N,N,CP_Drtn,TT_Task,DT_FixedDUR2,RV_OK,TK_Complete,7132U12050,Columns & walls 2U to Roof - Part 1,2306,32,0,0,3823,0,3823,24,114913.84,114913.84,0,,2008-09-21 08:00,2008-09-23 17:00,2008-10-07 08:00,2008-10-06 17:00,,2008-10-02 08:00,2008-10-01 17:00,,,2008-09-21 08:00,2008-09-23 17:00,,,,,PT_Normal,,,,,Ueqj7GDnLUyOhp0nidTUhg,,,,N,3823,114913.84
1772,83671,829,11610,912,1,100,N,N,N,CP_Drtn,TT_Task,DT_FixedDUR2,RV_OK,TK_Complete,7132U12051,Columns & walls 2U to Roof - Part 2,2306,32,0,0,3823,0,3823,24,114913.84,114913.84,0,,2008-09-29 08:00,2008-10-01 17:00,2008-10-07 08:00,2008-10-06 17:00,,2008-10-02 08:00,2008-10-01 17:00,,,2008-09-29 08:00,2008-10-01 17:00,,,,,PT_Normal,,,,,eS8Xhi81Tk63e0pEBk2LPg,,,,N,3823,114913.84
1773,83672,829,11610,912,1,100,N,N,N,CP_Drtn,TT_Task,DT_FixedDUR2,RV_OK,TK_Complete,7132U12052,Columns & walls 2U to Roof - Middle Part,2306,48,0,0,8166.64,0,8166.64,24,246301.52,246301.52,0,,2008-09-27 08:00,2008-09-29 17:00,2008-10-09 08:00,2008-10-08 17:00,,2008-10-02 08:00,2008-10-01 17:00,,,2008-09-27 08:00,2008-09-29 17:00,,,,,PT_Normal,,,,,YJTDo2DV/UmdJBScoicIwA,,,,N,8166.64,246301.52
1774,83673,829,11610,912,1,42.9,N,N,N,CP_Drtn,TT_Task,DT_FixedDUR2,RV_OK,TK_Active,7132U12200,Slab @ Roof level - Part 1,2306,8,0,32,2028.65,2704.79,4733.44,56,173509.36,74361.2,99148.16,,2008-09-29 08:00,,2008-10-04 08:00,2008-10-07 17:00,,2008-10-02 08:00,2008-10-06 17:00,2008-10-02 08:00,2008-10-06 17:00,2008-09-29 08:00,2008-10-06 17:00,,,,,PT_Normal,,,,,seK85VRMjkSeKpFc/nL+JA,,,,N,2028.65,74361.2
1775,83674,829,11610,912,1,0,N,N,N,CP_Drtn,TT_Task,DT_FixedDUR2,RV_OK,TK_NotStart,7132U12201,Slab @ Roof level - Part 2,2306,8,0,56,0,4733.44,4733.44,56,173509.36,0,173509.36,,,,2008-10-08 08:00,2008-10-15 17:00,,2008-10-07 08:00,2008-10-14 17:00,2008-10-07 08:00,2008-10-14 17:00,2008-10-07 08:00,2008-10-14 17:00,,,,,PT_Normal,,,,,gcsxbyZuK0yKFVTYcWpnxg,,,,N,0,0
1776,83675,829,11610,912,1,0,N,N,N,CP_Drtn,TT_Task,DT_FixedDUR2,RV_OK,TK_NotStart,7132U12202,Slab @ Roof level - Middle Part,2306,24,16,56,0,6554.96,6554.96,56,241077.52,0,241077.52,,,,2008-10-08 08:00,2008-10-15 17:00,,2008-10-05 08:00,2008-10-12 17:00,2008-10-05 08:00,2008-10-12 17:00,2008-10-05 08:00,2008-10-12 17:00,,,,,PT_Normal,,,,,F6BTw1fKv026p2JsCXuRHA,,,,N,0,0
1777,83676,829,11610,912,1,0,N,N,N,CP_Drtn,TT_Task,DT_FixedDUR2,RV_OK,TK_NotStart,7132U12250,Staircases 2U to Roof,2306,208,0,24,0,991.88,991.88,24,18457.6,0,18457.6,,,,2008-11-13 08:00,2008-11-16 17:00,,2008-10-14 08:00,2008-10-16 17:00,2008-10-14 08:00,2008-10-16 17:00,2008-10-14 08:00,2008-10-16 17:00,,,,,PT_Normal,,,,,crctSa12FUS4XQ402YAygw,,,,N,0,0
1778,83677,829,11177,912,1,0,N,N,N,CP_Drtn,TT_Task,DT_FixedDUR2,RV_OK,TK_NotStart,7132U14050,Block works,2306,24,0,120,0,30085.5,30085.5,120,18440,0,18440,,,,2008-11-04 08:00,2008-11-20 17:00,,2008-11-01 08:00,2008-11-17 17:00,2008-11-01 08:00,2008-11-17 17:00,2008-11-01 08:00,2008-11-17 17:00,,,,,PT_Normal,,,,,V/z0PYwFWUmsbejoUcXhCw,,,,N,0,0
1779,83678,829,11069,912,1,0,N,N,N,CP_Drtn,TT_Task,DT_FixedDUR2,RV_OK,TK_NotStart,7132U16050,Plaster works,2306,40,0,120,0,24375.8,24375.8,120,19024,0,19024,,,,2008-11-22 08:00,2008-12-08 17:00,,2008-11-16 08:00,2008-12-02 17:00,2008-11-16 08:00,2008-12-02 17:00,2008-11-16 08:00,2008-12-02 17:00,,,,,PT_Normal,,,,,khf5Iy5wSEKVwfqaK+qDfg,,,,N,0,0
1780,83679,829,11069,912,1,0,N,N,N,CP_Drtn,TT_Task,DT_FixedDUR2,RV_OK,TK_NotStart,7132U16051,Plaste works behind tiles,2306,144,120,120,0,5424,5424,120,4160,0,4160,,,,2008-12-13 08:00,2008-12-29 17:00,,2008-11-22 08:00,2008-12-08 17:00,2008-11-22 08:00,2008-12-08 17:00,2008-11-22 08:00,2008-12-08 17:00,,,,,PT_Normal,,,,,Vvh703hT5k+8jcnBRYGhqg,,,,N,0,0
1781,83680,829,11070,912,1,0,N,N,N,CP_Drtn,TT_Task,DT_FixedDUR2,RV_OK,TK_NotStart,7132U18050,Rendering works,2306,64,24,120,0,5683,5683,120,5000,0,5000,,,,2008-11-18 08:00,2008-12-04 17:00,,2008-11-09 08:00,2008-11-25 17:00,2008-11-09 08:00,2008-11-25 17:00,2008-11-09 08:00,2008-11-25 17:00,,,,,PT_Normal,,,,,TDT6mXyEakiDRMfCaghEdg,,,,N,0,0
1782,83681,829,11070,912,1,0,N,N,N,CP_Drtn,TT_Task,DT_FixedDUR2,RV_OK,TK_NotStart,7132U18100,Painting base coats,2306,40,0,120,0,26546.2,26546.2,120,24024,0,24024,,,,2008-11-30 08:00,2008-12-16 17:00,,2008-11-24 08:00,2008-12-10 17:00,2008-11-24 08:00,2008-12-10 17:00,2008-11-24 08:00,2008-12-10 17:00,,,,,PT_Normal,,,,,d9NZuA+tgU2bqKXwd2gy0w,,,,N,0,0
1783,83682,829,11070,912,1,0,N,N,N,CP_Drtn,TT_Task,DT_FixedDUR2,RV_OK,TK_NotStart,7132U18150,Painting 1st top coat for apartments,2306,80,0,72,0,17300.2,17300.2,72,16408,0,16408,,,,2009-01-31 08:00,2009-02-09 17:00,,2009-01-19 08:00,2009-01-28 17:00,2009-01-19 08:00,2009-01-28 17:00,2009-01-19 08:00,2009-01-28 17:00,,,,,PT_Normal,,,,,8phhrigS6Ee/z2Gv9SkTjA,,,,N,0,0
1784,83683,829,11180,912,1,0,N,N,N,CP_Drtn,TT_Task,DT_FixedDUR2,RV_OK,TK_NotStart,7132U20050,Floor tiles for apartments-dry area,2306,128,0,120,0,9570,9570,120,7000,0,7000,,,,2008-12-22 08:00,2009-01-07 17:00,,2008-12-03 08:00,2008-12-20 17:00,2008-12-03 08:00,2008-12-20 17:00,2008-12-03 08:00,2008-12-20 17:00,,,,,PT_Normal,,,,,+qMIBf76lkWchAacKb9VjQ,,,,N,0,0
1785,83684,829,11180,912,1,0,N,N,N,CP_Drtn,TT_Task,DT_FixedDUR2,RV_OK,TK_NotStart,7132U20070,Floor tiles for apartments-wet area,2306,24,0,120,0,3835.2,3835.2,120,2752,0,2752,,,,2009-01-06 08:00,2009-01-22 17:00,,2009-01-03 08:00,2009-01-19 17:00,2009-01-03 08:00,2009-01-19 17:00,2009-01-03 08:00,2009-01-19 17:00,,,,,PT_Normal,,,,,O35bfCdjwkWBDma8a0Ep/Q,,,,N,0,0
1786,83685,829,11180,912,1,0,N,N,N,CP_Drtn,TT_Task,DT_FixedDUR2,RV_OK,TK_NotStart,7132U20110,Wall tiles for apartments-wet area,2306,96,0,120,0,9066,9066,120,5964,0,5964,,,,2009-01-18 08:00,2009-02-03 17:00,,2009-01-04 08:00,2009-01-20 17:00,2009-01-04 08:00,2009-01-20 17:00,2009-01-04 08:00,2009-01-20 17:00,,,,,PT_Normal,,,,,+idBxIRqikW3Z67RQtqSDA,,,,N,0,0
1787,83686,829,11072,912,1,0,N,N,N,CP_Drtn,TT_Task,DT_FixedDUR2,RV_OK,TK_NotStart,7132U22150,W/P for for apartments,2306,88,0,120,0,2980,2980,120,2600,0,2600,,,,2008-12-01 08:00,2008-12-17 17:00,,2008-11-18 08:00,2008-12-04 17:00,2008-11-18 08:00,2008-12-04 17:00,2008-11-18 08:00,2008-12-04 17:00,,,,,PT_Normal,,,,,DkkTEPjCkUyVSJBrwqonVA,,,,N,0,0
1788,83687,829,11073,912,1,0,N,N,N,CP_Drtn,TT_Task,DT_FixedDUR2,RV_OK,TK_NotStart,7132U24050,Aluminium doors & windows,2306,128,0,120,0,1208,1208,120,272,0,272,,,,2008-12-30 08:00,2009-01-15 17:00,,2008-12-11 08:00,2008-12-28 17:00,2008-12-11 08:00,2008-12-28 17:00,2008-12-11 08:00,2008-12-28 17:00,,,,,PT_Normal,,,,,F/TD7a0rsU2/SUZ1w7qAEg,,,,N,0,0
1789,83688,829,11073,912,1,0,N,N,N,CP_Drtn,TT_Task,DT_FixedDUR2,RV_OK,TK_NotStart,7132U24200,Balcony handrails,2306,48,48,120,0,2192,2192,120,1184,0,1184,,,,2009-01-22 08:00,2009-02-08 17:00,,2009-01-15 08:00,2009-02-01 17:00,2009-01-15 08:00,2009-02-01 17:00,2009-01-15 08:00,2009-02-01 17:00,,,,,PT_Normal,,,,,8v3k3rZyGk+G3lzSPmDo5g,,,,N,0,0
1790,83689,829,11074,912,1,0,N,N,N,CP_Drtn,TT_Task,DT_FixedDUR2,RV_OK,TK_NotStart,7132U30050,Wooden doors,2306,56,8,176,0,1520,1520,176,384,0,384,,,,2009-01-11 08:00,2009-02-04 17:00,,2009-01-03 08:00,2009-01-27 17:00,2009-01-03 08:00,2009-01-27 17:00,2009-01-03 08:00,2009-01-27 17:00,,,,,PT_Normal,,,,,Ge8JFoee7kmIewUGq80vyA,,,,N,0,0
1791,83690,829,11075,912,1,0,N,N,N,CP_Drtn,TT_Task,DT_FixedDUR2,RV_OK,TK_NotStart,7132U32100,Vanity counters,2306,16,8,120,0,2232,2232,120,192,0,192,,,,2009-01-24 08:00,2009-02-09 17:00,,2009-01-21 08:00,2009-02-07 17:00,2009-01-21 08:00,2009-02-07 17:00,2009-01-21 08:00,2009-02-07 17:00,,,,,PT_Normal,,,,,bqZ/9BXt8kiVw9iMKF453w,,,,N,0,0
1792,83691,829,11075,912,1,0,N,N,N,CP_Drtn,TT_Task,DT_FixedDUR2,RV_OK,TK_NotStart,7132U32150,Wardrobes,2306,104,104,120,0,6168,6168,120,288,0,288,,,,2009-01-22 08:00,2009-02-08 17:00,,2009-01-07 08:00,2009-01-24 17:00,2009-01-07 08:00,2009-01-24 17:00,2009-01-07 08:00,2009-01-24 17:00,,,,,PT_Normal,,,,,0gwDrqb/hEa8u0wVJwGt6w,,,,N,0,0
1793,83692,829,11185,912,1,0,N,N,N,CP_Drtn,TT_Task,DT_FixedDUR2,RV_OK,TK_NotStart,7132U34050,False ceiling works for apartments-dry area,2306,80,0,128,0,1493.12,1493.12,128,910.08,0,910.08,,,,2009-01-07 08:00,2009-01-25 17:00,,2008-12-27 08:00,2009-01-13 17:00,2008-12-27 08:00,2009-01-13 17:00,2008-12-27 08:00,2009-01-13 17:00,,,,,PT_Normal,,,,,rFmu+i7u80yIWB8hlPWT4g,,,,N,0,0
1794,83693,829,11185,912,1,0,N,N,N,CP_Drtn,TT_Task,DT_FixedDUR2,RV_OK,TK_NotStart,7132U34070,False ceiling works for apartments-wet area,2306,24,0,128,0,658.88,658.88,128,353.92,0,353.92,,,,2008-12-30 08:00,2009-01-17 17:00,,2008-12-27 08:00,2009-01-13 17:00,2008-12-27 08:00,2009-01-13 17:00,2008-12-27 08:00,2009-01-13 17:00,,,,,PT_Normal,,,,,YkZJRdpWeUu48EZgw9KbEQ,,,,N,0,0
1795,83694,829,11186,912,1,0,N,N,N,CP_Drtn,TT_Task,DT_FixedDUR2,RV_OK,TK_NotStart,7132U36050,Stone finishing top,2306,72,72,64,0,344,344,64,160,0,160,,,,2009-01-31 08:00,2009-02-08 17:00,,2009-01-20 08:00,2009-01-28 17:00,2009-01-20 08:00,2009-01-28 17:00,2009-01-20 08:00,2009-01-28 17:00,,,,,PT_Normal,,,,,3OnRNZGHsketIa17XLKEXw,,,,N,0,0
1796,83695,829,11186,912,1,0,N,N,N,CP_Drtn,TT_Task,DT_FixedDUR2,RV_OK,TK_NotStart,7132U36100,Thresholds,2306,48,48,64,0,520,520,64,304,0,304,,,,2009-01-31 08:00,2009-02-08 17:00,,2009-01-24 08:00,2009-02-01 17:00,2009-01-24 08:00,2009-02-01 17:00,2009-01-24 08:00,2009-02-01 17:00,,,,,PT_Normal,,,,,7HIATS95pEmiZeoG6xAzJA,,,,N,0,0
1797,83696,829,10969,912,1,0,N,N,N,CP_Drtn,TT_Task,DT_FixedDUR2,RV_OK,TK_NotStart,7132U44050,Sub-frames,2306,40,0,120,0,888,888,120,384,0,384,,,,2008-11-16 08:00,2008-12-02 17:00,,2008-11-10 08:00,2008-11-26 17:00,2008-11-10 08:00,2008-11-26 17:00,2008-11-10 08:00,2008-11-26 17:00,,,,,PT_Normal,,,,,GXbHuA3mJUOYDrIN2yEgpw,,,,N,0,0
1798,83697,829,12478,912,1,100,N,N,N,CP_Drtn,TT_Task,DT_FixedDUR2,RV_OK,TK_Complete,7132U50100,MEP skeleton embedded provisions,2296,96,0,0,512,0,512,72,,,0,,2008-09-21 08:00,2008-09-30 17:00,2008-10-16 08:00,2008-10-15 17:00,,2008-10-02 08:00,2008-10-01 17:00,,,2008-09-21 08:00,2008-09-30 17:00,,,,,PT_Normal,,,,,9CIpGuuk/EKEzp1MtG3bog,,,,N,512,0
1799,83698,829,12271,912,1,0,N,N,N,CP_Drtn,TT_Task,DT_FixedDUR2,RV_OK,TK_NotStart,7132U52050,A/C duct works,2296,136,112,160,0,831,831,160,0,0,0,,,,2008-11-29 08:00,2008-12-21 17:00,,2008-11-09 08:00,2008-12-01 17:00,2008-11-09 08:00,2008-12-01 17:00,2008-11-09 08:00,2008-12-01 17:00,,,,,PT_Normal,,,,,fpT/6mXmHkKMc6OGvhhveg,,,,N,0,0
1800,83699,829,12271,912,1,0,N,N,N,CP_Drtn,TT_Task,DT_FixedDUR2,RV_OK,TK_NotStart,7132U52100,Chilled water pipe works,2296,88,64,72,0,787,787,72,0,0,0,,,,2008-12-02 08:00,2008-12-11 17:00,,2008-11-19 08:00,2008-11-29 17:00,2008-11-19 08:00,2008-11-29 17:00,2008-11-19 08:00,2008-11-29 17:00,,,,,PT_Normal,,,,,AzfNqi/LPUa+7tz/7QzPWQ,,,,N,0,0
1801,83700,829,12481,912,1,0,N,N,N,CP_Drtn,TT_Task,DT_FixedDUR2,RV_OK,TK_NotStart,7132U52150,FCU's hanging,2296,144,120,64,0,935.2,935.2,64,0,0,0,,,,2008-12-09 08:00,2008-12-17 17:00,,2008-11-18 08:00,2008-11-26 17:00,2008-11-18 08:00,2008-11-26 17:00,2008-11-18 08:00,2008-11-26 17:00,,,,,PT_Normal,,,,,C34DsoJwEU+rsAOzG1JAAg,,,,N,0,0
1802,83701,829,12481,912,1,0,N,N,N,CP_Drtn,TT_Task,DT_FixedDUR2,RV_OK,TK_NotStart,7132U52300,FCU's assembly & duct connections,2296,24,0,80,0,951.2,951.2,80,0,0,0,,,,2008-12-18 08:00,2008-12-29 17:00,,2008-12-15 08:00,2008-12-25 17:00,2008-12-15 08:00,2008-12-25 17:00,2008-12-15 08:00,2008-12-25 17:00,,,,,PT_Normal,,,,,v4oJlcekXkmP3t9Bw5YOfg,,,,N,0,0
1803,83702,829,12481,912,1,0,N,N,N,CP_Drtn,TT_Task,DT_FixedDUR2,RV_OK,TK_NotStart,7132U52350,Grills & diffusers,2296,128,0,64,0,856,856,64,0,0,0,,,,2009-01-31 08:00,2009-02-08 17:00,,2009-01-12 08:00,2009-01-20 17:00,2009-01-12 08:00,2009-01-20 17:00,2009-01-12 08:00,2009-01-20 17:00,,,,,PT_Normal,,,,,2pgUuK4psUSoJ5FC7TlemQ,,,,N,0,0
1804,83703,829,12271,912,1,0,N,N,N,CP_Drtn,TT_Task,DT_FixedDUR2,RV_OK,TK_NotStart,7132U52550,A/C duct risers,2296,24,0,64,0,1626,1626,64,0,0,0,,,,2008-12-03 08:00,2008-12-11 17:00,,2008-11-30 08:00,2008-12-08 17:00,2008-11-30 08:00,2008-12-08 17:00,2008-11-30 08:00,2008-12-08 17:00,,,,,PT_Normal,,,,,rCF5ywDf/U6531cL9DXxnA,,,,N,0,0
1805,83704,829,12274,912,1,0,N,N,N,CP_Drtn,TT_Task,DT_FixedDUR2,RV_OK,TK_NotStart,7132U54050,Chasing & Pex pipe works,2296,112,0,120,0,395,395,120,0,0,0,,,,2008-11-25 08:00,2008-12-11 17:00,,2008-11-09 08:00,2008-11-25 17:00,2008-11-09 08:00,2008-11-25 17:00,2008-11-09 08:00,2008-11-25 17:00,,,,,PT_Normal,,,,,A9f7R9jgJUGt3XAMkXGg6Q,,,,N,0,0
1806,83705,829,12484,912,1,0,N,N,N,CP_Drtn,TT_Task,DT_FixedDUR2,RV_OK,TK_NotStart,7132U54250,Bathtubs,2296,216,0,80,0,273.6,273.6,80,0,0,0,,,,2008-12-25 08:00,2009-01-05 17:00,,2008-11-24 08:00,2008-12-04 17:00,2008-11-24 08:00,2008-12-04 17:00,2008-11-24 08:00,2008-12-04 17:00,,,,,PT_Normal,,,,,9AM2vobj6kmjULrfQHRQDw,,,,N,0,0
1807,83706,829,12484,912,1,0,N,N,N,CP_Drtn,TT_Task,DT_FixedDUR2,RV_OK,TK_NotStart,7132U54300,Water heater,2296,160,48,64,0,310.4,310.4,64,0,0,0,,,,2008-12-20 08:00,2008-12-28 17:00,,2008-11-26 08:00,2008-12-04 17:00,2008-11-26 08:00,2008-12-04 17:00,2008-11-26 08:00,2008-12-04 17:00,,,,,PT_Normal,,,,,myL8nEAD0Umo5LO9VDo+Qw,,,,N,0,0
1808,83707,829,12484,912,1,0,N,N,N,CP_Drtn,TT_Task,DT_FixedDUR2,RV_OK,TK_NotStart,7132U54350,Over head pipe assembly & vlave connections,2296,112,64,72,0,237,237,72,0,0,0,,,,2008-12-20 08:00,2008-12-29 17:00,,2008-12-03 08:00,2008-12-13 17:00,2008-12-03 08:00,2008-12-13 17:00,2008-12-03 08:00,2008-12-13 17:00,,,,,PT_Normal,,,,,XnqskunMy0+buG9UaNnxgQ,,,,N,0,0
1809,83708,829,12067,912,1,0,N,N,N,CP_Drtn,TT_Task,DT_FixedDUR2,RV_OK,TK_NotStart,7132U54400,Sanitary fixures,2296,96,0,80,0,476,476,80,0,0,0,,,,2009-01-28 08:00,2009-02-08 17:00,,2009-01-14 08:00,2009-01-25 17:00,2009-01-14 08:00,2009-01-25 17:00,2009-01-14 08:00,2009-01-25 17:00,,,,,PT_Normal,,,,,UL/F/USeLEi/XnzoCJQ8Mg,,,,N,0,0
1810,83709,829,12067,912,1,0,N,N,N,CP_Drtn,TT_Task,DT_FixedDUR2,RV_OK,TK_NotStart,7132U54450,Mirrors,2296,8,8,72,0,138,138,72,0,0,0,,,,2009-01-29 08:00,2009-02-08 17:00,,2009-01-28 08:00,2009-02-07 17:00,2009-01-28 08:00,2009-02-07 17:00,2009-01-28 08:00,2009-02-07 17:00,,,,,PT_Normal,,,,,yb/MrUr25kaAn9ThAoJcjQ,,,,N,0,0
1811,83710,829,12484,912,1,0,N,N,N,CP_Drtn,TT_Task,DT_FixedDUR2,RV_OK,TK_NotStart,7132U54500,Concealed Flushing Cistern,2296,216,192,80,0,212,212,80,0,0,0,,,,2008-12-25 08:00,2009-01-05 17:00,,2008-11-24 08:00,2008-12-04 17:00,2008-11-24 08:00,2008-12-04 17:00,2008-11-24 08:00,2008-12-04 17:00,,,,,PT_Normal,,,,,PPLDDGoO702Uw4TWk73Adw,,,,N,0,0
1812,83711,829,12487,912,1,0,N,N,N,CP_Drtn,TT_Task,DT_FixedDUR2,RV_OK,TK_NotStart,7132U56050,Chasing and installation of drainage pipes,2296,136,0,80,0,245,245,80,0,0,0,,,,2008-11-29 08:00,2008-12-09 17:00,,2008-11-09 08:00,2008-11-19 17:00,2008-11-09 08:00,2008-11-19 17:00,2008-11-09 08:00,2008-11-19 17:00,,,,,PT_Normal,,,,,gAqBNVaQiUGiFmZIkyG+wg,,,,N,0,0
1813,83712,829,12487,912,1,0,N,N,N,CP_Drtn,TT_Task,DT_FixedDUR2,RV_OK,TK_NotStart,7132U56100,Drainage riser pipes,2296,208,72,64,0,284,284,64,0,0,0,,,,2008-12-09 08:00,2008-12-17 17:00,,2008-11-09 08:00,2008-11-17 17:00,2008-11-09 08:00,2008-11-17 17:00,2008-11-09 08:00,2008-11-17 17:00,,,,,PT_Normal,,,,,v3T7+O7LkEiW938JT7jCmg,,,,N,0,0
1814,83713,829,12070,912,1,0,N,N,N,CP_Drtn,TT_Task,DT_FixedDUR2,RV_OK,TK_NotStart,7132U56150,Over head drainage pipe works,2296,40,0,64,0,257.6,257.6,64,0,0,0,,,,2008-12-21 08:00,2008-12-29 17:00,,2008-12-15 08:00,2008-12-23 17:00,2008-12-15 08:00,2008-12-23 17:00,2008-12-15 08:00,2008-12-23 17:00,,,,,PT_Normal,,,,,DYX2ZqCs1UOZ7pYODhU+cg,,,,N,0,0
1815,83714,829,12181,912,1,0,N,N,N,CP_Drtn,TT_Task,DT_FixedDUR2,RV_OK,TK_NotStart,7132U58050,Fire fighting pipe works,2296,216,144,72,0,292,292,72,0,0,0,,,,2008-12-20 08:00,2008-12-29 17:00,,2008-11-18 08:00,2008-11-27 17:00,2008-11-18 08:00,2008-11-27 17:00,2008-11-18 08:00,2008-11-27 17:00,,,,,PT_Normal,,,,,hoov94LvDkOPLKHZBzBKWQ,,,,N,0,0
1816,83715,829,12033,912,1,0,N,N,N,CP_Drtn,TT_Task,DT_FixedDUR2,RV_OK,TK_NotStart,7132U58250,Sprinkler heads,2296,120,32,64,0,394,394,64,0,0,0,,,,2009-01-31 08:00,2009-02-08 17:00,,2009-01-13 08:00,2009-01-21 17:00,2009-01-13 08:00,2009-01-21 17:00,2009-01-13 08:00,2009-01-21 17:00,,,,,PT_Normal,,,,,eCwhZiAhM029EKgnlAaE5Q,,,,N,0,0
1817,83716,829,12493,912,1,0,N,N,N,CP_Drtn,TT_Task,DT_FixedDUR2,RV_OK,TK_NotStart,7132U66050,Chasing and installation of conduits,2296,40,0,120,0,1528,1528,120,0,0,0,,,,2008-11-16 08:00,2008-12-02 17:00,,2008-11-10 08:00,2008-11-26 17:00,2008-11-10 08:00,2008-11-26 17:00,2008-11-10 08:00,2008-11-26 17:00,,,,,PT_Normal,,,,,wvDpOlgqNEmatx3lcFTOJA,,,,N,0,0
1818,83717,829,12286,912,1,0,N,N,N,CP_Drtn,TT_Task,DT_FixedDUR2,RV_OK,TK_NotStart,7132U68050,Single core wiring,2296,176,152,72,0,1128,1128,72,0,0,0,,,,2008-12-08 08:00,2008-12-17 17:00,,2008-11-12 08:00,2008-11-22 17:00,2008-11-12 08:00,2008-11-22 17:00,2008-11-12 08:00,2008-11-22 17:00,,,,,PT_Normal,,,,,bWbAIOcBnUug1QhcGGZGug,,,,N,0,0
1819,83718,829,12788,912,1,0,N,N,N,CP_Drtn,TT_Task,DT_FixedDUR2,RV_OK,TK_NotStart,7132U68350,Light Fittings,2296,112,96,120,0,1035.2,1035.2,120,0,0,0,,,,2009-01-22 08:00,2009-02-08 17:00,,2009-01-06 08:00,2009-01-22 17:00,2009-01-06 08:00,2009-01-22 17:00,2009-01-06 08:00,2009-01-22 17:00,,,,,PT_Normal,,,,,SCgZsU+U20W7Rm+VRLblAw,,,,N,0,0
1820,83719,829,12788,912,1,0,N,N,N,CP_Drtn,TT_Task,DT_FixedDUR2,RV_OK,TK_NotStart,7132U68600,Switches & sockets,2296,80,64,64,0,486.4,486.4,64,0,0,0,,,,2009-01-31 08:00,2009-02-08 17:00,,2009-01-19 08:00,2009-01-27 17:00,2009-01-19 08:00,2009-01-27 17:00,2009-01-19 08:00,2009-01-27 17:00,,,,,PT_Normal,,,,,hzfYdPInqE6E9oxamukbaQ,,,,N,0,0
1821,83720,829,12289,912,1,0,N,N,N,CP_Drtn,TT_Task,DT_FixedDUR2,RV_OK,TK_NotStart,7132U74050,Fire alarm cables,2296,144,120,64,0,380.8,380.8,64,0,0,0,,,,2008-12-09 08:00,2008-12-17 17:00,,2008-11-18 08:00,2008-11-26 17:00,2008-11-18 08:00,2008-11-26 17:00,2008-11-18 08:00,2008-11-26 17:00,,,,,PT_Normal,,,,,vU+bBT2/Q0W/4xdGGXHE+w,,,,N,0,0
1822,83721,829,12499,912,1,0,N,N,N,CP_Drtn,TT_Task,DT_FixedDUR2,RV_OK,TK_NotStart,7132U74100,Fire alarm fittings,2296,136,64,64,0,116.8,116.8,64,0,0,0,,,,2009-01-31 08:00,2009-02-08 17:00,,2009-01-11 08:00,2009-01-19 17:00,2009-01-11 08:00,2009-01-19 17:00,2009-01-11 08:00,2009-01-19 17:00,,,,,PT_Normal,,,,,30DIjVKZNEO7f5NukbrY/w,,,,N,0,0
1823,83722,829,12292,912,1,0,N,N,N,CP_Drtn,TT_Task,DT_FixedDUR2,RV_OK,TK_NotStart,7132U76050,Structured cabling,2296,24,0,64,0,345.6,345.6,64,0,0,0,,,,2008-12-11 08:00,2008-12-20 17:00,,2008-12-08 08:00,2008-12-16 17:00,2008-12-08 08:00,2008-12-16 17:00,2008-12-08 08:00,2008-12-16 17:00,,,,,PT_Normal,,,,,UtpwluVcO0OIZYi7lVhTKw,,,,N,0,0
1824,83723,829,10722,912,1,0,N,N,N,CP_Drtn,TT_Task,DT_FixedDUR2,RV_OK,TK_NotStart,7139946000,Testing & commissioning of Elevators,2296,352,160,120,0,320,320,120,0,0,0,,,,2009-03-08 08:00,2009-03-24 17:00,,2009-01-15 08:00,2009-02-01 17:00,2009-01-15 08:00,2009-02-01 17:00,2009-01-15 08:00,2009-02-01 17:00,,,,,PT_Normal,,,,,xDABbidwM0iy2ULw4CR1NQ,,,,N,0,0
1825,83724,829,10722,912,1,0,N,N,N,CP_Drtn,TT_Task,DT_FixedDUR2,RV_OK,TK_NotStart,7139952000,Testing & commissioning of A/C system,2296,248,56,200,0,1400,1400,200,0,0,0,,,,2009-02-26 08:00,2009-03-26 17:00,,2009-01-21 08:00,2009-02-18 17:00,2009-01-21 08:00,2009-02-18 17:00,2009-01-21 08:00,2009-02-18 17:00,,,,,PT_Normal,,,,,RaX0zsGR6kCCsAfJs13BwQ,,,,N,0,0
1826,83725,829,10722,912,1,0,N,N,N,CP_Drtn,TT_Task,DT_FixedDUR2,RV_OK,TK_NotStart,7139954000,Testing & commissioning of water supply system,2296,232,40,200,0,700,700,200,0,0,0,,,,2009-03-01 08:00,2009-03-29 17:00,,2009-01-26 08:00,2009-02-23 17:00,2009-01-26 08:00,2009-02-23 17:00,2009-01-26 08:00,2009-02-23 17:00,,,,,PT_Normal,,,,,919ZOLQxeEmxN6u/u8CKNw,,,,N,0,0
1827,83726,829,10722,912,1,0,N,N,N,CP_Drtn,TT_Task,DT_FixedDUR2,RV_OK,TK_NotStart,7139956000,Testing & commissioning of drainage system,2296,232,40,200,0,1000,1000,200,0,0,0,,,,2009-03-01 08:00,2009-03-29 17:00,,2009-01-26 08:00,2009-02-23 17:00,2009-01-26 08:00,2009-02-23 17:00,2009-01-26 08:00,2009-02-23 17:00,,,,,PT_Normal,,,,,gzcoWDVAFk+q73UiwYjzjg,,,,N,0,0
1828,83727,829,10722,912,1,0,N,N,N,CP_Drtn,TT_Task,DT_FixedDUR2,RV_OK,TK_NotStart,7139958000,Testing & commissioning of Fire Fighting system,2296,208,16,200,0,300,300,200,0,0,0,,,,2009-02-26 08:00,2009-03-26 17:00,,2009-01-27 08:00,2009-02-24 17:00,2009-01-27 08:00,2009-02-24 17:00,2009-01-27 08:00,2009-02-24 17:00,,,,,PT_Normal,,,,,ITp2zzpqoE69j+rWDChQLQ,,,,N,0,0
1829,83728,829,10722,912,1,0,N,N,N,CP_Drtn,TT_Task,DT_FixedDUR2,RV_OK,TK_NotStart,7139960000,Testing & commissioning of LPG system,2296,480,480,120,0,420,420,120,0,0,0,,,,2009-03-15 08:00,2009-03-31 17:00,,2009-01-04 08:00,2009-01-20 17:00,2009-01-04 08:00,2009-01-20 17:00,2009-01-04 08:00,2009-01-20 17:00,,,,,PT_Normal,,,,,DDDPblRQ5EiNunE/PTCisQ,,,,N,0,0
1830,83729,829,10722,912,1,0,N,N,N,CP_Drtn,TT_Task,DT_FixedDUR2,RV_OK,TK_NotStart,7139962000,Testing & commissioning of BMS system,2296,192,192,48,0,248,248,48,0,0,0,,,,2009-03-25 08:00,2009-03-31 17:00,,2009-02-25 08:00,2009-03-03 17:00,2009-02-25 08:00,2009-03-03 17:00,2009-02-25 08:00,2009-03-03 17:00,,,,,PT_Normal,,,,,1aRS0S2KqUmGAyyz87WzEA,,,,N,0,0
1831,83730,829,10722,912,0,0,N,N,N,CP_Drtn,TT_Mile,DT_FixedDUR2,RV_OK,TK_NotStart,7139968000,Power ready for testing & commissioning,2296,424,0,0,0,0,0,0,0,0,0,,,,2009-02-26 08:00,2009-02-25 17:00,,2008-12-27 08:00,2008-12-25 17:00,2008-12-27 08:00,2008-12-27 08:00,2008-12-27 08:00,2008-12-27 08:00,,,,,PT_Normal,,,,,X5b52y6xJUy2i3NBTjbUIQ,,,,N,0,0
1832,83731,829,10722,912,1,0,N,N,N,CP_Drtn,TT_Task,DT_FixedDUR2,RV_OK,TK_NotStart,7139968002,Testing & commissioning of Power & Lighting,2296,112,112,120,0,820,820,120,0,0,0,,,,2009-03-15 08:00,2009-03-31 17:00,,2009-02-26 08:00,2009-03-15 17:00,2009-02-26 08:00,2009-03-15 17:00,2009-02-26 08:00,2009-03-15 17:00,,,,,PT_Normal,,,,,vAZ9A0bXWk2AAT51Q4rWMg,,,,N,0,0
1833,83732,829,10722,912,1,0,N,N,N,CP_Drtn,TT_Task,DT_FixedDUR2,RV_OK,TK_NotStart,7139970000,Testing & commissioning of Central Battery syst.,2296,328,136,120,0,420,420,120,0,0,0,,,,2009-03-12 08:00,2009-03-29 17:00,,2009-01-24 08:00,2009-02-09 17:00,2009-01-24 08:00,2009-02-09 17:00,2009-01-24 08:00,2009-02-09 17:00,,,,,PT_Normal,,,,,SQH6clxxvUiYOuugvx8iwg,,,,N,0,0
1834,83733,829,10722,912,1,0,N,N,N,CP_Drtn,TT_Task,DT_FixedDUR2,RV_OK,TK_NotStart,7139972000,Testing & commissioning of security systems,2296,608,608,48,0,248,248,48,0,0,0,,,,2009-03-25 08:00,2009-03-31 17:00,,2008-12-27 08:00,2009-01-01 17:00,2008-12-27 08:00,2009-01-01 17:00,2008-12-27 08:00,2009-01-01 17:00,,,,,PT_Normal,,,,,+hJ2Fy1wNk6/MndLRohg1w,,,,N,0,0
1835,83734,829,10722,912,1,0,N,N,N,CP_Drtn,TT_Task,DT_FixedDUR2,RV_OK,TK_NotStart,7139974000,Testing & commissioning of Fire Alarm system,2296,192,0,200,0,600,600,200,0,0,0,,,,2009-02-26 08:00,2009-03-26 17:00,,2009-01-29 08:00,2009-02-26 17:00,2009-01-29 08:00,2009-02-26 17:00,2009-01-29 08:00,2009-02-26 17:00,,,,,PT_Normal,,,,,TgWHMbMkU0WvWcfhrFesbg,,,,N,0,0
1836,83735,829,10722,912,1,0,N,N,N,CP_Drtn,TT_Task,DT_FixedDUR2,RV_OK,TK_NotStart,7139976000,Testing & commissioning of Tel & Data system,2296,416,416,120,0,320,320,120,0,0,0,,,,2009-03-15 08:00,2009-03-31 17:00,,2009-01-13 08:00,2009-01-29 17:00,2009-01-13 08:00,2009-01-29 17:00,2009-01-13 08:00,2009-01-29 17:00,,,,,PT_Normal,,,,,zpm/ALuYTkmYlUhA2Nh8cw,,,,N,0,0
1837,83736,829,11094,912,1,0,N,N,N,CP_Drtn,TT_Task,DT_FixedDUR2,RV_OK,TK_NotStart,713EV16100,External plaster works,2306,112,0,160,0,101092,101092,160,77640,0,77640,,,,2008-11-23 08:00,2008-12-15 17:00,,2008-11-06 08:00,2008-11-29 17:00,2008-11-06 08:00,2008-11-29 17:00,2008-11-06 08:00,2008-11-29 17:00,,,,,PT_Normal,,,,,MrjI+QbTN0OvLXCEb1r7Fw,,,,N,0,0
1838,83737,829,11204,912,1,0,N,N,N,CP_Drtn,TT_Task,DT_FixedDUR2,RV_OK,TK_NotStart,713EV18100,Painting base coats,2306,112,0,160,0,85564,85564,160,77640,0,77640,,,,2008-12-16 08:00,2009-01-07 17:00,,2008-11-30 08:00,2008-12-22 17:00,2008-11-30 08:00,2008-12-22 17:00,2008-11-30 08:00,2008-12-22 17:00,,,,,PT_Normal,,,,,RWzGymKEZ0eTRj7xh7eB9w,,,,N,0,0
1839,83738,829,11204,912,1,0,N,N,N,CP_Drtn,TT_Task,DT_FixedDUR2,RV_OK,TK_NotStart,713EV18150,Painting 1st top coat,2306,112,0,160,0,81682,81682,160,77640,0,77640,,,,2009-01-20 08:00,2009-02-11 17:00,,2009-01-04 08:00,2009-01-26 17:00,2009-01-04 08:00,2009-01-26 17:00,2009-01-04 08:00,2009-01-26 17:00,,,,,PT_Normal,,,,,JKLgQ9LOI0eRNBDp9WELGg,,,,N,0,0
1840,83739,829,11204,912,1,0,N,N,N,CP_Drtn,TT_Task,DT_FixedDUR2,RV_OK,TK_NotStart,713EV18200,Painting final top coat,2306,112,0,160,0,81682,81682,160,77640,0,77640,,,,2009-02-24 08:00,2009-03-18 17:00,,2009-02-08 08:00,2009-03-02 17:00,2009-02-08 08:00,2009-03-02 17:00,2009-02-08 08:00,2009-03-02 17:00,,,,,PT_Normal,,,,,E4WVUuQAxUSzXA0nDKAC9Q,,,,N,0,0
1841,83740,829,10987,912,1,0,N,N,N,CP_Drtn,TT_Task,DT_FixedDUR2,RV_OK,TK_NotStart,713EV28200,Pergola & canopy structures,2306,112,0,160,0,4112,4112,160,152,0,152,,,,2009-02-01 08:00,2009-02-23 17:00,,2009-01-15 08:00,2009-02-07 17:00,2009-01-15 08:00,2009-02-07 17:00,2009-01-15 08:00,2009-02-07 17:00,,,,,PT_Normal,,,,,SQeUq0yRDkyD3F0YM+KLlw,,,,N,0,0
1842,83741,829,10987,912,1,0,N,N,N,CP_Drtn,TT_Task,DT_FixedDUR2,RV_OK,TK_NotStart,713EV28250,Brackets for pergola & canopy structures,2306,112,0,160,0,2592,2592,160,152,0,152,,,,2009-01-08 08:00,2009-01-31 17:00,,2008-12-23 08:00,2009-01-14 17:00,2008-12-23 08:00,2009-01-14 17:00,2008-12-23 08:00,2009-01-14 17:00,,,,,PT_Normal,,,,,x+9obwE3GEqWwsHuMRnvvA,,,,N,0,0
1843,83742,829,12203,912,1,0,N,N,N,CP_Drtn,TT_Task,DT_FixedDUR2,RV_OK,TK_NotStart,713EV68350,Aviation Light Fittings,2296,112,0,72,0,402,402,72,0,0,0,,,,2009-03-04 08:00,2009-03-14 17:00,,2009-02-16 08:00,2009-02-25 17:00,2009-02-16 08:00,2009-02-25 17:00,2009-02-16 08:00,2009-02-25 17:00,,,,,PT_Normal,,,,,TEdwhV1Ql0Wx0UTXKWuGHQ,,,,N,0,0
1844,83743,829,10795,912,1,0,N,N,N,CP_Drtn,TT_Task,DT_FixedDUR2,RV_OK,TK_NotStart,713GL00000,Pre-Snagging & Disnagging for lofts,2296,0,0,120,0,420,420,120,0,0,0,,,,2009-02-26 08:00,2009-03-15 17:00,,2009-02-26 08:00,2009-03-15 17:00,2009-02-26 08:00,2009-03-15 17:00,2009-02-26 08:00,2009-03-15 17:00,,,,,PT_Normal,,,,,+KW1dboiu0Kk2Zl2NLa/zw,,,,N,0,0
1845,83744,829,10795,912,1,0,N,N,N,CP_Drtn,TT_Task,DT_FixedDUR2,RV_OK,TK_NotStart,713GL00002,Pre-Snagging & Disnagging for corrid & Srv rooms,2296,0,0,64,0,214,214,64,0,0,0,,,,2009-03-18 08:00,2009-03-26 17:00,,2009-03-18 08:00,2009-03-26 17:00,2009-03-18 08:00,2009-03-26 17:00,2009-03-18 08:00,2009-03-26 17:00,,,,,PT_Normal,,,,,F7FNMRQ2OU+9FjYrurwyoA,,,,N,0,0
1846,83745,829,11522,912,1,100,N,N,N,CP_Drtn,TT_Task,DT_FixedDUR2,RV_OK,TK_Complete,713GL12050,Columns & walls GL to GU - Part 1,2306,0,0,0,5264.24,0,5264.24,48,157672.56,157672.56,0,,2008-06-29 08:00,2008-07-05 17:00,2008-10-02 08:00,2008-10-01 17:00,,2008-10-02 08:00,2008-10-01 17:00,,,2008-06-29 08:00,2008-07-05 17:00,,,,,PT_Normal,,,,,Q8bDOazIHU+AL0VhDpjuqQ,,,,N,5264.24,157672.56
1847,83746,829,11522,912,1,100,N,N,N,CP_Drtn,TT_Task,DT_FixedDUR2,RV_OK,TK_Complete,713GL12051,Columns & walls GL to GU - Part 2,2306,0,0,0,5264.24,0,5264.24,48,157672.56,157672.56,0,,2008-07-06 08:00,2008-07-12 17:00,2008-10-02 08:00,2008-10-01 17:00,,2008-10-02 08:00,2008-10-01 17:00,,,2008-07-06 08:00,2008-07-12 17:00,,,,,PT_Normal,,,,,tKorxnbAREGTiCN570uhRg,,,,N,5264.24,157672.56
1848,83747,829,11522,912,1,100,N,N,N,CP_Drtn,TT_Task,DT_FixedDUR2,RV_OK,TK_Complete,713GL12052,Columns & walls GL to GU - Middle Part,2306,0,0,0,8034.91,0,8034.91,48,241424.4,241424.4,0,,2008-07-05 08:00,2008-07-10 17:00,2008-10-02 08:00,2008-10-01 17:00,,2008-10-02 08:00,2008-10-01 17:00,,,2008-07-05 08:00,2008-07-10 17:00,,,,,PT_Normal,,,,,oOX5xICKnkiMduT48emD8w,,,,N,8034.91,241424.4
1849,83748,829,11522,912,1,100,N,N,N,CP_Drtn,TT_Task,DT_FixedDUR2,RV_OK,TK_Complete,713GL12200,Slab @ GU level - Part 1,2306,0,0,0,4104.78,0,4104.78,64,149880.72,149880.72,0,,2008-07-06 08:00,2008-07-14 17:00,2008-10-02 08:00,2008-10-01 17:00,,2008-10-02 08:00,2008-10-01 17:00,,,2008-07-06 08:00,2008-07-14 17:00,,,,,PT_Normal,,,,,YJdjxM3x1U6P57v/LTD2Fw,,,,N,4104.78,149880.72
1850,83749,829,11522,912,1,100,N,N,N,CP_Drtn,TT_Task,DT_FixedDUR2,RV_OK,TK_Complete,713GL12201,Slab @ GU level - Part 2,2306,0,0,0,4098.76,0,4098.76,64,149570.48,149570.48,0,,2008-07-15 08:00,2008-07-23 17:00,2008-10-02 08:00,2008-10-01 17:00,,2008-10-02 08:00,2008-10-01 17:00,,,2008-07-15 08:00,2008-07-23 17:00,,,,,PT_Normal,,,,,mPi6nSFNZEehtvAkcihaIA,,,,N,4098.76,149570.48
1851,83750,829,11522,912,1,100,N,N,N,CP_Drtn,TT_Task,DT_FixedDUR2,RV_OK,TK_Complete,713GL12202,Slab @ GU level - Middle Part,2306,0,0,0,5907.6,0,5907.6,64,216622.72,216622.72,0,,2008-07-14 08:00,2008-07-22 17:00,2008-10-02 08:00,2008-10-01 17:00,,2008-10-02 08:00,2008-10-01 17:00,,,2008-07-14 08:00,2008-07-22 17:00,,,,,PT_Normal,,,,,Ov4YV01/ZUeDnCaNIz+y7w,,,,N,5907.6,216622.72
1852,83751,829,11522,912,1,100,N,N,N,CP_Drtn,TT_Task,DT_FixedDUR2,RV_OK,TK_Complete,713GL12250,Staircases GL to GU,2306,288,0,0,999.88,0,999.88,32,18457.6,18457.6,0,,2008-07-24 08:00,2008-07-28 17:00,2008-11-13 08:00,2008-11-12 17:00,,2008-10-02 08:00,2008-10-01 17:00,,,2008-07-24 08:00,2008-07-28 17:00,,,,,PT_Normal,,,,,dLMU2cn4fEexwa0xTtscXg,,,,N,999.88,18457.6
1853,83752,829,11105,912,1,100,N,N,N,CP_Drtn,TT_Task,DT_FixedDUR2,RV_OK,TK_Complete,713GL14050,Block works,2306,128,0,0,59160,0,66360,120,,7200,0,,2008-08-14 08:00,2008-08-31 17:00,2008-10-21 08:00,2008-10-20 17:00,,2008-10-02 08:00,2008-10-01 17:00,,,2008-08-14 08:00,2008-08-31 17:00,,,,,PT_Normal,,,,,o9CJhxwg20iQ5t48O6b3Wg,,,,N,59160,7200
1854,83753,829,10929,912,1,100,N,N,N,CP_Drtn,TT_Task,DT_FixedDUR2,RV_OK,TK_Complete,713GL16050,Plaster works,2306,128,0,0,25456.4,0,25456.4,120,19872,19872,0,,2008-08-30 08:00,2008-09-15 17:00,2008-10-21 08:00,2008-10-20 17:00,,2008-10-02 08:00,2008-10-01 17:00,,,2008-08-30 08:00,2008-09-15 17:00,,,,,PT_Normal,,,,,Fv3o4HVxGEm6LzahCqzUig,,,,N,25456.4,19872
1855,83754,829,10929,912,1,100,N,N,N,CP_Drtn,TT_Task,DT_FixedDUR2,RV_OK,TK_Complete,713GL16051,Plaste works behind tiles,2306,264,0,0,9810,0,9810,120,7600,7600,0,,2008-09-07 08:00,2008-09-23 17:00,2008-11-10 08:00,2008-11-09 17:00,,2008-10-02 08:00,2008-10-01 17:00,,,2008-09-07 08:00,2008-09-23 17:00,,,,,PT_Normal,,,,,XHKQQ9JyO06H/iVMGNChkA,,,,N,9810,7600
1856,83755,829,11107,912,1,100,N,N,N,CP_Drtn,TT_Task,DT_FixedDUR2,RV_OK,TK_Complete,713GL18050,Rendering works,2306,128,0,0,5700.2,0,5700.2,120,5016,5016,0,,2008-08-24 08:00,2008-09-09 17:00,2008-10-21 08:00,2008-10-20 17:00,,2008-10-02 08:00,2008-10-01 17:00,,,2008-08-24 08:00,2008-09-09 17:00,,,,,PT_Normal,,,,,BgJ104QCQ0Gfn3oD0VPo2g,,,,N,5700.2,5016
1857,83756,829,11107,912,1,100,N,N,N,CP_Drtn,TT_Task,DT_FixedDUR2,RV_OK,TK_Complete,713GL18100,Painting base coats,2306,128,0,0,27496.4,0,27496.4,120,24888,24888,0,,2008-09-04 08:00,2008-09-21 17:00,2008-10-21 08:00,2008-10-20 17:00,,2008-10-02 08:00,2008-10-01 17:00,,,2008-09-04 08:00,2008-09-21 17:00,,,,,PT_Normal,,,,,A0LdagUHBkudUs8gB92obA,,,,N,27496.4,24888
1858,83757,829,11107,912,1,0,N,N,N,CP_Drtn,TT_Task,DT_FixedDUR2,RV_OK,TK_NotStart,713GL18150,Painting 1st top coat for apartments,2306,584,0,72,0,17325.8,17325.8,72,16432,0,16432,,,,2009-02-08 08:00,2009-02-17 17:00,,2008-11-15 08:00,2008-11-24 17:00,2008-11-15 08:00,2008-11-24 17:00,2008-11-15 08:00,2008-11-24 17:00,,,,,PT_Normal,,,,,d50DphRw+E6YtE5pKCC0Tw,,,,N,0,0
1859,83758,829,11107,912,1,0,N,N,N,CP_Drtn,TT_Task,DT_FixedDUR2,RV_OK,TK_NotStart,713GL18153,Painting 1st top coat for corridors/lobbies,2306,560,0,48,0,14386.4,14386.4,48,13656,0,13656,,,,2009-02-19 08:00,2009-02-25 17:00,,2008-11-30 08:00,2008-12-06 17:00,2008-11-30 08:00,2008-12-06 17:00,2008-11-30 08:00,2008-12-06 17:00,,,,,PT_Normal,,,,,AS49Lvo7bE2gTFvWvGNpsg,,,,N,0,0
1860,83759,829,11107,912,1,0,N,N,N,CP_Drtn,TT_Task,DT_FixedDUR2,RV_OK,TK_NotStart,713GL18155,Painting 1st top coat for service rooms,2306,624,0,48,0,5508,5508,48,5200,0,5200,,,,2009-02-24 08:00,2009-03-02 17:00,,2008-11-25 08:00,2008-12-01 17:00,2008-11-25 08:00,2008-12-01 17:00,2008-11-25 08:00,2008-12-01 17:00,,,,,PT_Normal,,,,,K6NT9Ho6xEKKajiye81sEw,,,,N,0,0
1861,83760,829,10795,912,1,0,N,N,N,CP_Drtn,TT_Task,DT_FixedDUR2,RV_OK,TK_NotStart,713GL18200,Painting final top coat,2306,0,0,32,0,26164.2,26164.2,32,24888,0,24888,,,,2009-03-28 08:00,2009-03-31 17:00,,2009-03-28 08:00,2009-03-31 17:00,2009-03-28 08:00,2009-03-31 17:00,2009-03-28 08:00,2009-03-31 17:00,,,,,PT_Normal,,,,,4kjozwaQS0qhVTm+INZCeQ,,,,N,0,0
1862,83761,829,11108,912,1,100,N,N,N,CP_Drtn,TT_Task,DT_FixedDUR2,RV_OK,TK_Complete,713GL20050,Floor tiles for apartments-dry area,2306,272,0,0,14013.34,0,14013.34,120,10291.36,10291.36,0,,2008-09-10 08:00,2008-09-27 17:00,2008-11-11 08:00,2008-11-10 17:00,,2008-10-02 08:00,2008-10-01 17:00,,,2008-09-10 08:00,2008-09-27 17:00,,,,,PT_Normal,,,,,OmdCi8c+CUWUcBrTI7L+/A,,,,N,14013.34,10291.36
1863,83762,829,11108,912,1,0,N,N,N,CP_Drtn,TT_Task,DT_FixedDUR2,RV_OK,TK_NotStart,713GL20053,Floor tiles for corridors / lobbies,2306,336,0,48,0,4778.2,4778.2,48,3504,0,3504,,,,2008-12-31 08:00,2009-01-06 17:00,,2008-11-12 08:00,2008-11-18 17:00,2008-11-12 08:00,2008-11-18 17:00,2008-11-12 08:00,2008-11-18 17:00,,,,,PT_Normal,,,,,2jUgElcMLUuCDDjBMJuayQ,,,,N,0,0
1864,83763,829,11108,912,1,0,N,N,N,CP_Drtn,TT_Task,DT_FixedDUR2,RV_OK,TK_NotStart,713GL20070,Floor tiles for apartments-wet area,2306,128,0,120,0,5682,5682,120,4120,0,4120,,,,2008-11-24 08:00,2008-12-10 17:00,,2008-11-05 08:00,2008-11-22 17:00,2008-11-05 08:00,2008-11-22 17:00,2008-11-05 08:00,2008-11-22 17:00,,,,,PT_Normal,,,,,HboaikHRmUuzh+qkFEtmmA,,,,N,0,0
1865,83764,829,11108,912,1,0,N,N,N,CP_Drtn,TT_Task,DT_FixedDUR2,RV_OK,TK_NotStart,713GL20110,Wall tiles for apartments-wet area,2306,288,0,120,0,9360,9360,120,6160,0,6160,,,,2008-12-17 08:00,2009-01-03 17:00,,2008-11-05 08:00,2008-11-22 17:00,2008-11-05 08:00,2008-11-22 17:00,2008-11-05 08:00,2008-11-22 17:00,,,,,PT_Normal,,,,,Vr4G36MpWUSzWOaI5/lghQ,,,,N,0,0
1866,83765,829,11000,912,1,100,N,N,N,CP_Drtn,TT_Task,DT_FixedDUR2,RV_OK,TK_Complete,713GL22150,W/P for for apartments,2306,360,0,0,5144.4,0,5144.4,120,4568,4568,0,,2008-09-01 08:00,2008-09-17 17:00,2008-11-24 08:00,2008-11-23 17:00,,2008-10-02 08:00,2008-10-01 17:00,,,2008-09-01 08:00,2008-09-17 17:00,,,,,PT_Normal,,,,,Gvi86vyfLkySHJz9LLx5mw,,,,N,5144.4,4568
1867,83766,829,11000,912,1,0,N,N,N,CP_Drtn,TT_Task,DT_FixedDUR2,RV_OK,TK_NotStart,713GL22151,W/P for open to sky areas,2306,792,480,120,0,47103.6,47103.6,120,42712,0,42712,,,,2009-03-21 08:00,2009-04-06 17:00,,2008-11-25 08:00,2008-12-11 17:00,2008-11-25 08:00,2008-12-11 17:00,2008-11-25 08:00,2008-12-11 17:00,,,,,PT_Normal,,,,,3Zmaebj5o0WDqwRRgaaAzQ,,,,N,0,0
1868,83767,829,11000,912,1,0,N,N,N,CP_Drtn,TT_Task,DT_FixedDUR2,RV_OK,TK_NotStart,713GL22154,W/P for planter boxes,2306,792,0,64,0,1472,1472,64,1280,0,1280,,,,2009-02-04 08:00,2009-02-12 17:00,,2008-10-12 08:00,2008-10-20 17:00,2008-10-12 08:00,2008-10-20 17:00,2008-10-12 08:00,2008-10-20 17:00,,,,,PT_Normal,,,,,0zbJ6nvN5kGZZjMVLy0OxA,,,,N,0,0
1869,83768,829,11001,912,1,60,N,N,N,CP_Drtn,TT_Task,DT_FixedDUR2,RV_OK,TK_Active,713GL24050,Aluminium doors & windows,2306,432,248,48,1761.6,1174.4,2936,120,704,422.4,281.6,,2008-09-22 08:00,,2008-12-04 08:00,2008-12-10 17:00,,2008-10-02 08:00,2008-10-08 17:00,2008-10-02 08:00,2008-10-08 17:00,2008-09-22 08:00,2008-10-08 17:00,,,,,PT_Normal,,,,,GHdPFZwhOU69zPPLpB0ieQ,,,,N,1761.6,422.4
1870,83769,829,11001,912,1,0,N,N,N,CP_Drtn,TT_Task,DT_FixedDUR2,RV_OK,TK_NotStart,713GL24200,Balcony handrails,2306,128,0,120,0,1520,1520,120,800,0,800,,,,2008-12-11 08:00,2008-12-28 17:00,,2008-11-23 08:00,2008-12-09 17:00,2008-11-23 08:00,2008-12-09 17:00,2008-11-23 08:00,2008-12-09 17:00,,,,,PT_Normal,,,,,r+GgA/ZHnEescucrtmFyTg,,,,N,0,0
1871,83770,829,11001,912,1,0,N,N,N,CP_Drtn,TT_Task,DT_FixedDUR2,RV_OK,TK_NotStart,713GL24203,Lobby handrails,2306,536,184,64,0,946,946,64,504,0,504,,,,2009-02-05 08:00,2009-02-14 17:00,,2008-11-19 08:00,2008-11-27 17:00,2008-11-19 08:00,2008-11-27 17:00,2008-11-19 08:00,2008-11-27 17:00,,,,,PT_Normal,,,,,DazkMaa130yVTq5K3Ajd3A,,,,N,0,0
1872,83771,829,10893,912,1,0,N,N,N,CP_Drtn,TT_Task,DT_FixedDUR2,RV_OK,TK_NotStart,713GL26050,Steel doors,2306,624,0,48,0,528,528,48,96,0,96,,,,2009-02-17 08:00,2009-02-23 17:00,,2008-11-18 08:00,2008-11-24 17:00,2008-11-18 08:00,2008-11-24 17:00,2008-11-18 08:00,2008-11-24 17:00,,,,,PT_Normal,,,,,peaX/emoi0SA99zoBR6SuA,,,,N,0,0
1873,83772,829,11003,912,1,6.9,N,N,N,CP_Drtn,TT_Task,DT_FixedDUR2,RV_OK,TK_Active,713GL30050,Wooden doors,2306,272,16,432,196.12,2647.88,2844,464,680,46.88,633.12,,2008-09-28 08:00,,2008-11-11 08:00,2009-01-12 17:00,,2008-10-02 08:00,2008-12-03 17:00,2008-10-02 08:00,2008-12-03 17:00,2008-09-28 08:00,2008-12-03 17:00,,,,,PT_Normal,,,,,dDicwk56+02a3544WfqDew,,,,N,196.12,46.88
1874,83773,829,11004,912,1,0,N,N,N,CP_Drtn,TT_Task,DT_FixedDUR2,RV_OK,TK_NotStart,713GL32050,Kitchen cabinets,2306,496,496,160,0,4376,4376,160,136,0,136,,,,2009-01-28 08:00,2009-02-19 17:00,,2008-11-17 08:00,2008-12-09 17:00,2008-11-17 08:00,2008-12-09 17:00,2008-11-17 08:00,2008-12-09 17:00,,,,,PT_Normal,,,,,XwKYVILsskqmXTSQwOKeRg,,,,N,0,0
1875,83774,829,11004,912,1,0,N,N,N,CP_Drtn,TT_Task,DT_FixedDUR2,RV_OK,TK_NotStart,713GL32100,Vanity counters,2306,160,0,120,0,3112,3112,120,272,0,272,,,,2008-12-16 08:00,2009-01-01 17:00,,2008-11-23 08:00,2008-12-09 17:00,2008-11-23 08:00,2008-12-09 17:00,2008-11-23 08:00,2008-12-09 17:00,,,,,PT_Normal,,,,,Vw4A0PZzJkGNlLyeK146rw,,,,N,0,0
1876,83775,829,11004,912,1,0,N,N,N,CP_Drtn,TT_Task,DT_FixedDUR2,RV_OK,TK_NotStart,713GL32150,Wardrobes,2306,592,592,160,0,3688,3688,160,168,0,168,,,,2009-01-28 08:00,2009-02-19 17:00,,2008-11-03 08:00,2008-11-25 17:00,2008-11-03 08:00,2008-11-25 17:00,2008-11-03 08:00,2008-11-25 17:00,,,,,PT_Normal,,,,,pOj1tSlxxEChOvpWFneO2g,,,,N,0,0
1877,83776,829,10915,912,1,0,N,N,N,CP_Drtn,TT_Task,DT_FixedDUR2,RV_OK,TK_NotStart,713GL34050,False ceiling works for apartments-dry area,2306,336,0,160,0,1506.16,1506.16,160,897.44,0,897.44,,,,2008-12-10 08:00,2009-01-01 17:00,,2008-10-22 08:00,2008-11-13 17:00,2008-10-22 08:00,2008-11-13 17:00,2008-10-22 08:00,2008-11-13 17:00,,,,,PT_Normal,,,,,b4JrSVfixUuzo8AsVemvyQ,,,,N,0,0
1878,83777,829,10915,912,1,0,N,N,N,CP_Drtn,TT_Task,DT_FixedDUR2,RV_OK,TK_NotStart,713GL34053,False ceiling works for corridors/lobbies,2306,336,0,72,0,9876,9876,72,6536,0,6536,,,,2008-12-23 08:00,2009-01-01 17:00,,2008-11-04 08:00,2008-11-13 17:00,2008-11-04 08:00,2008-11-13 17:00,2008-11-04 08:00,2008-11-13 17:00,,,,,PT_Normal,,,,,sKl7kVhr0U+LDX8QjHJswA,,,,N,0,0
1879,83778,829,10915,912,1,0,N,N,N,CP_Drtn,TT_Task,DT_FixedDUR2,RV_OK,TK_NotStart,713GL34070,False ceiling works for apartments-wet area,2306,128,0,160,0,709.84,709.84,160,366.56,0,366.56,,,,2008-11-10 08:00,2008-12-02 17:00,,2008-10-22 08:00,2008-11-13 17:00,2008-10-22 08:00,2008-11-13 17:00,2008-10-22 08:00,2008-11-13 17:00,,,,,PT_Normal,,,,,T+VJr+1tWkyZrOX1Mq0X6A,,,,N,0,0
1880,83779,829,11006,912,1,0,N,N,N,CP_Drtn,TT_Task,DT_FixedDUR2,RV_OK,TK_NotStart,713GL36050,Stone finishing top,2306,288,8,64,0,526,526,64,264,0,264,,,,2009-01-03 08:00,2009-01-11 17:00,,2008-11-22 08:00,2008-11-30 17:00,2008-11-22 08:00,2008-11-30 17:00,2008-11-22 08:00,2008-11-30 17:00,,,,,PT_Normal,,,,,vdztqp7ikEWFLwu5UvcHFw,,,,N,0,0
1881,83780,829,11006,912,1,0,N,N,N,CP_Drtn,TT_Task,DT_FixedDUR2,RV_OK,TK_NotStart,713GL36100,Thresholds,2306,256,0,176,0,1016,1016,176,560,0,560,,,,2008-12-22 08:00,2009-01-15 17:00,,2008-11-15 08:00,2008-12-09 17:00,2008-11-15 08:00,2008-12-09 17:00,2008-11-15 08:00,2008-12-09 17:00,,,,,PT_Normal,,,,,/xIZaM7b2k6PROD26ZyQMQ,,,,N,0,0
1882,83781,829,11007,912,1,0,N,N,N,CP_Drtn,TT_Task,DT_FixedDUR2,RV_OK,TK_NotStart,713GL38100,Epoxy coating system,2306,624,464,48,0,1152,1152,48,920,0,920,,,,2009-03-09 08:00,2009-03-15 17:00,,2008-12-08 08:00,2008-12-14 17:00,2008-12-08 08:00,2008-12-14 17:00,2008-12-08 08:00,2008-12-14 17:00,,,,,PT_Normal,,,,,rTqwAk7MCUaIc6lqv50wrA,,,,N,0,0
1883,83782,829,10899,912,1,0,N,N,N,CP_Drtn,TT_Task,DT_FixedDUR2,RV_OK,TK_NotStart,713GL40050,Duplex apartment stairs,2306,336,0,120,0,5356,5356,120,136,0,136,,,,2008-12-04 08:00,2008-12-21 17:00,,2008-10-16 08:00,2008-11-02 17:00,2008-10-16 08:00,2008-11-02 17:00,2008-10-16 08:00,2008-11-02 17:00,,,,,PT_Normal,,,,,g3t5p/qKG0eY9QhukshXyQ,,,,N,0,0
1884,83783,829,10899,912,1,0,N,N,N,CP_Drtn,TT_Task,DT_FixedDUR2,RV_OK,TK_NotStart,713GL40100,Wooden steps for Duplex staircase,2306,336,0,120,0,1004,1004,120,104,0,104,,,,2008-12-16 08:00,2009-01-01 17:00,,2008-10-28 08:00,2008-11-13 17:00,2008-10-28 08:00,2008-11-13 17:00,2008-10-28 08:00,2008-11-13 17:00,,,,,PT_Normal,,,,,zgpChFB0SEaL10VydIL5gg,,,,N,0,0
1885,83784,829,10899,912,1,0,N,N,N,CP_Drtn,TT_Task,DT_FixedDUR2,RV_OK,TK_NotStart,713GL40150,Duplex stair railings,2306,336,144,120,0,6480,6480,120,2544,0,2544,,,,2008-12-28 08:00,2009-01-13 17:00,,2008-11-09 08:00,2008-11-25 17:00,2008-11-09 08:00,2008-11-25 17:00,2008-11-09 08:00,2008-11-25 17:00,,,,,PT_Normal,,,,,Eng/FnBIdkyRsrCJUbQFZA,,,,N,0,0
1886,83785,829,11009,912,1,0,N,N,N,CP_Drtn,TT_Task,DT_FixedDUR2,RV_OK,TK_NotStart,713GL42050,Signage works,2306,632,472,48,0,197.8,197.8,48,136,0,136,,,,2009-03-09 08:00,2009-03-15 17:00,,2008-12-07 08:00,2008-12-13 17:00,2008-12-07 08:00,2008-12-13 17:00,2008-12-07 08:00,2008-12-13 17:00,,,,,PT_Normal,,,,,44U7WH2HL02TpuPiBMAyKA,,,,N,0,0
1887,83786,829,11010,912,1,100,N,N,N,CP_Drtn,TT_Task,DT_FixedDUR2,RV_OK,TK_Complete,713GL44050,Sub-frames,2306,128,0,0,1480,0,1480,120,680,680,0,,2008-08-21 08:00,2008-09-07 17:00,2008-10-21 08:00,2008-10-20 17:00,,2008-10-02 08:00,2008-10-01 17:00,,,2008-08-21 08:00,2008-09-07 17:00,,,,,PT_Normal,,,,,g4HK9KxvJEC1Y2xRwaCJoQ,,,,N,1480,680
1888,83787,829,12515,912,1,100,N,N,N,CP_Drtn,TT_Task,DT_FixedDUR2,RV_OK,TK_Complete,713GL50100,MEP skeleton embedded provisions,2296,0,0,0,512,0,512,72,,,0,,2008-06-29 08:00,2008-07-08 17:00,2008-10-02 08:00,2008-10-01 17:00,,2008-10-02 08:00,2008-10-01 17:00,,,2008-06-29 08:00,2008-07-08 17:00,,,,,PT_Normal,,,,,msfCYLiBLUywr6d43IlO3A,,,,N,512,0
1889,83788,829,12308,912,1,100,N,N,N,CP_Drtn,TT_Task,DT_FixedDUR2,RV_OK,TK_Complete,713GL52050,A/C duct works,2296,264,0,0,831,0,831,160,,,0,,2008-08-26 08:00,2008-09-17 17:00,2008-11-10 08:00,2008-11-09 17:00,,2008-10-02 08:00,2008-10-01 17:00,,,2008-08-26 08:00,2008-09-17 17:00,,,,,PT_Normal,,,,,XHo7lqSMIUCgVut9s/Eg5g,,,,N,831,0
1890,83789,829,12308,912,1,100,N,N,N,CP_Drtn,TT_Task,DT_FixedDUR2,RV_OK,TK_Complete,713GL52100,Chilled water pipe works,2296,240,0,0,787,0,787,72,,,0,,2008-09-08 08:00,2008-09-17 17:00,2008-11-06 08:00,2008-11-05 17:00,,2008-10-02 08:00,2008-10-01 17:00,,,2008-09-08 08:00,2008-09-17 17:00,,,,,PT_Normal,,,,,qHZdIOEck0KtyTGt53XeUg,,,,N,787,0
1891,83790,829,12309,912,1,100,N,N,N,CP_Drtn,TT_Task,DT_FixedDUR2,RV_OK,TK_Complete,713GL52150,FCU's hanging,2296,264,0,0,935.2,0,935.2,64,,,0,,2008-09-07 08:00,2008-09-15 17:00,2008-11-10 08:00,2008-11-09 17:00,,2008-10-02 08:00,2008-10-01 17:00,,,2008-09-07 08:00,2008-09-15 17:00,,,,,PT_Normal,,,,,OC1UgZOQ3kiXXE91ixaobg,,,,N,935.2,0
1892,83791,829,12309,912,1,60,N,N,N,CP_Drtn,TT_Task,DT_FixedDUR2,RV_OK,TK_Active,713GL52300,FCU's assembly & duct connections,2296,216,88,48,594.72,396.48,991.2,120,,,,,2008-09-22 08:00,,2008-11-03 08:00,2008-11-09 17:00,,2008-10-02 08:00,2008-10-08 17:00,2008-10-02 08:00,2008-10-08 17:00,2008-09-22 08:00,2008-10-08 17:00,,,,,PT_Normal,,,,,Jf6EsEVrD0ah3UC70OTASQ,,,,N,594.72,0
1893,83792,829,12309,912,1,0,N,N,N,CP_Drtn,TT_Task,DT_FixedDUR2,RV_OK,TK_NotStart,713GL52350,Grills & diffusers,2296,648,400,352,0,1144,1144,352,0,0,0,,,,2009-01-06 08:00,2009-02-25 17:00,,2008-10-04 08:00,2008-11-23 17:00,2008-10-04 08:00,2008-11-23 17:00,2008-10-04 08:00,2008-11-23 17:00,,,,,PT_Normal,,,,,syPjKIy3MEWsRxIW9TlziA,,,,N,0,0
1894,83793,829,12308,912,1,100,N,N,N,CP_Drtn,TT_Task,DT_FixedDUR2,RV_OK,TK_Complete,713GL52550,A/C duct risers,2296,216,0,0,1626,0,1626,64,,,0,,2008-09-13 08:00,2008-09-21 17:00,2008-11-03 08:00,2008-11-02 17:00,,2008-10-02 08:00,2008-10-01 17:00,,,2008-09-13 08:00,2008-09-21 17:00,,,,,PT_Normal,,,,,HJUYIqESYk6yAEB8c5QXfA,,,,N,1626,0
1895,83794,829,12211,912,1,100,N,N,N,CP_Drtn,TT_Task,DT_FixedDUR2,RV_OK,TK_Complete,713GL54050,Chasing & Pex pipe works,2296,264,0,0,395,0,395,120,,,0,,2008-08-26 08:00,2008-09-11 17:00,2008-11-10 08:00,2008-11-09 17:00,,2008-10-02 08:00,2008-10-01 17:00,,,2008-08-26 08:00,2008-09-11 17:00,,,,,PT_Normal,,,,,3zru5hVnWEGntpnFC8E4uw,,,,N,395,0
1896,83795,829,12211,912,1,100,N,N,N,CP_Drtn,TT_Task,DT_FixedDUR2,RV_OK,TK_Complete,713GL54100,Over head distribution water pipe network,2296,264,0,0,8314,0,8314,64,,,0,,2008-09-08 08:00,2008-09-16 17:00,2008-11-10 08:00,2008-11-09 17:00,,2008-10-02 08:00,2008-10-01 17:00,,,2008-09-08 08:00,2008-09-16 17:00,,,,,PT_Normal,,,,,kaztF7aWnki6+uUTV6ZS0Q,,,,N,8314,0
1897,83796,829,12313,912,1,0,N,N,N,CP_Drtn,TT_Task,DT_FixedDUR2,RV_OK,TK_NotStart,713GL54150,Water meter cabinet pipe works,2296,832,272,120,0,340,340,120,0,0,0,,,,2009-02-02 08:00,2009-02-18 17:00,,2008-10-04 08:00,2008-10-20 17:00,2008-10-04 08:00,2008-10-20 17:00,2008-10-04 08:00,2008-10-20 17:00,,,,,PT_Normal,,,,,1NT7IFmqwkyJ23OCPgHByw,,,,N,0,0
1898,83797,829,12521,912,1,100,N,N,N,CP_Drtn,TT_Task,DT_FixedDUR2,RV_OK,TK_Complete,713GL54250,Bathtubs,2296,416,0,0,216.8,0,313.6,120,,96.8,0,,2008-09-07 08:00,2008-09-23 17:00,2008-12-02 08:00,2008-12-01 17:00,,2008-10-02 08:00,2008-10-01 17:00,,,2008-09-07 08:00,2008-09-23 17:00,,,,,PT_Normal,,,,,VDlBQfxI5kCA1upYS6qfzw,,,,N,216.8,96.8
1899,83798,829,12521,912,1,100,N,N,N,CP_Drtn,TT_Task,DT_FixedDUR2,RV_OK,TK_Complete,713GL54300,Water heater,2296,264,0,0,310.4,0,310.4,64,,,0,,2008-09-13 08:00,2008-09-21 17:00,2008-11-10 08:00,2008-11-09 17:00,,2008-10-02 08:00,2008-10-01 17:00,,,2008-09-13 08:00,2008-09-21 17:00,,,,,PT_Normal,,,,,j1Vv8PDbdkOGe0fFoaUPrw,,,,N,310.4,0
1900,83799,829,12521,912,1,100,N,N,N,CP_Drtn,TT_Task,DT_FixedDUR2,RV_OK,TK_Complete,713GL54350,Over head pipe assembly & vlave connections,2296,264,0,0,237,0,237,72,,,0,,2008-09-17 08:00,2008-09-27 17:00,2008-11-10 08:00,2008-11-09 17:00,,2008-10-02 08:00,2008-10-01 17:00,,,2008-09-17 08:00,2008-09-27 17:00,,,,,PT_Normal,,,,,319WIhfjBkWajbN7XwoOQg,,,,N,237,0
1901,83800,829,12313,912,1,0,N,N,N,CP_Drtn,TT_Task,DT_FixedDUR2,RV_OK,TK_NotStart,713GL54400,Sanitary fixures,2296,288,0,120,0,516,516,120,0,0,0,,,,2008-12-25 08:00,2009-01-11 17:00,,2008-11-13 08:00,2008-11-30 17:00,2008-11-13 08:00,2008-11-30 17:00,2008-11-13 08:00,2008-11-30 17:00,,,,,PT_Normal,,,,,OtYw3KPC2UyyHq2omlhuKw,,,,N,0,0
1902,83801,829,12313,912,1,0,N,N,N,CP_Drtn,TT_Task,DT_FixedDUR2,RV_OK,TK_NotStart,713GL54450,Mirrors,2296,200,40,120,0,186,186,120,0,0,0,,,,2008-12-28 08:00,2009-01-13 17:00,,2008-11-29 08:00,2008-12-15 17:00,2008-11-29 08:00,2008-12-15 17:00,2008-11-29 08:00,2008-12-15 17:00,,,,,PT_Normal,,,,,i4kKPqIHQEOlUwmfTAG6rQ,,,,N,0,0
1903,83802,829,12521,912,1,100,N,N,N,CP_Drtn,TT_Task,DT_FixedDUR2,RV_OK,TK_Complete,713GL54500,Concealed Flushing Cistern,2296,416,0,0,186,0,252,120,,66,0,,2008-09-07 08:00,2008-09-23 17:00,2008-12-02 08:00,2008-12-01 17:00,,2008-10-02 08:00,2008-10-01 17:00,,,2008-09-07 08:00,2008-09-23 17:00,,,,,PT_Normal,,,,,7I/rvYVwdk+R7RDMdDrdqQ,,,,N,186,66
1904,83803,829,12215,912,1,100,N,N,N,CP_Drtn,TT_Task,DT_FixedDUR2,RV_OK,TK_Complete,713GL56050,Chasing and installation of drainage pipes,2296,216,0,0,285,0,285,120,,,0,,2008-08-26 08:00,2008-09-11 17:00,2008-11-03 08:00,2008-11-02 17:00,,2008-10-02 08:00,2008-10-01 17:00,,,2008-08-26 08:00,2008-09-11 17:00,,,,,PT_Normal,,,,,SnXve89s4UODjThU5d0HyA,,,,N,285,0
1905,83804,829,12215,912,1,100,N,N,N,CP_Drtn,TT_Task,DT_FixedDUR2,RV_OK,TK_Complete,713GL56100,Drainage riser pipes,2296,256,0,0,284,0,284,64,,,0,,2008-08-23 08:00,2008-08-31 17:00,2008-11-09 08:00,2008-11-08 17:00,,2008-10-02 08:00,2008-10-01 17:00,,,2008-08-23 08:00,2008-08-31 17:00,,,,,PT_Normal,,,,,L/kakkWubkSrOiaHWZ3SWg,,,,N,284,0
1906,83805,829,12316,912,1,87.5,N,N,N,CP_Drtn,TT_Task,DT_FixedDUR2,RV_OK,TK_Active,713GL56150,Over head drainage pipe works,2296,256,128,8,225.4,32.2,257.6,64,,,,,2008-09-24 08:00,,2008-11-09 08:00,2008-11-09 17:00,,2008-10-02 08:00,2008-10-02 17:00,2008-10-02 08:00,2008-10-02 17:00,2008-09-24 08:00,2008-10-02 17:00,,,,,PT_Normal,,,,,pk+qsGr7aEOzT3m6SpoBXA,,,,N,225.4,0
1907,83806,829,12109,912,1,100,N,N,N,CP_Drtn,TT_Task,DT_FixedDUR2,RV_OK,TK_Complete,713GL58050,Fire fighting pipe works,2296,264,0,0,292,0,292,72,,,0,,2008-09-01 08:00,2008-09-10 17:00,2008-11-10 08:00,2008-11-09 17:00,,2008-10-02 08:00,2008-10-01 17:00,,,2008-09-01 08:00,2008-09-10 17:00,,,,,PT_Normal,,,,,pGHsvEf8TU6XNwgtkjGQiw,,,,N,292,0
1908,83807,829,12110,912,1,0,N,N,N,CP_Drtn,TT_Task,DT_FixedDUR2,RV_OK,TK_NotStart,713GL58200,Fire cabinet complete,2296,600,344,64,0,339,339,64,0,0,0,,,,2009-03-07 08:00,2009-03-15 17:00,,2008-12-09 08:00,2008-12-17 17:00,2008-12-09 08:00,2008-12-17 17:00,2008-12-09 08:00,2008-12-17 17:00,,,,,PT_Normal,,,,,aYEimP1PjUqw/LyaV5EJvg,,,,N,0,0
1909,83808,829,12110,912,1,0,N,N,N,CP_Drtn,TT_Task,DT_FixedDUR2,RV_OK,TK_NotStart,713GL58250,Sprinkler heads,2296,592,384,120,0,450,450,120,0,0,0,,,,2009-02-09 08:00,2009-02-25 17:00,,2008-11-15 08:00,2008-12-01 17:00,2008-11-15 08:00,2008-12-01 17:00,2008-11-15 08:00,2008-12-01 17:00,,,,,PT_Normal,,,,,RQoTY6gSGkG6ZyPADbsOTA,,,,N,0,0
1910,83809,829,12072,912,1,77.8,N,N,N,CP_Drtn,TT_Task,DT_FixedDUR2,RV_OK,TK_Active,713GL60050,LPG piping,2296,792,0,16,227.12,64.88,292,72,,,,,2008-09-24 08:00,,2009-01-26 08:00,2009-01-27 17:00,,2008-10-02 08:00,2008-10-04 17:00,2008-10-02 08:00,2008-10-04 17:00,2008-09-24 08:00,2008-10-04 17:00,,,,,PT_Normal,,,,,cHbwuLwTRkqEdW5dejEDuQ,,,,N,227.12,0
1911,83810,829,12322,912,1,0,N,N,N,CP_Drtn,TT_Task,DT_FixedDUR2,RV_OK,TK_NotStart,713GL60100,Gas meter & leak detector,2296,880,552,72,0,248,248,72,0,0,0,,,,2009-02-10 08:00,2009-02-19 17:00,,2008-10-05 08:00,2008-10-14 17:00,2008-10-05 08:00,2008-10-14 17:00,2008-10-05 08:00,2008-10-14 17:00,,,,,PT_Normal,,,,,W9mXYoRsQ0mnIL2HcdqJDg,,,,N,0,0
1912,83811,829,12533,912,1,0,N,N,N,CP_Drtn,TT_Task,DT_FixedDUR2,RV_OK,TK_NotStart,713GL62050,BMS cabling,2296,168,40,64,0,486.4,486.4,64,0,0,0,,,,2008-11-01 08:00,2008-11-09 17:00,,2008-10-07 08:00,2008-10-15 17:00,2008-10-07 08:00,2008-10-15 17:00,2008-10-07 08:00,2008-10-15 17:00,,,,,PT_Normal,,,,,nCLPJ0PlrkOb0fh0p25uug,,,,N,0,0
1913,83812,829,12116,912,1,0,N,N,N,CP_Drtn,TT_Task,DT_FixedDUR2,RV_OK,TK_NotStart,713GL62100,DGC & cable termination to equipments,2296,624,0,48,0,329.6,329.6,48,0,0,0,,,,2009-03-03 08:00,2009-03-09 17:00,,2008-12-02 08:00,2008-12-08 17:00,2008-12-02 08:00,2008-12-08 17:00,2008-12-02 08:00,2008-12-08 17:00,,,,,PT_Normal,,,,,aMph86yuh0Gntcxl/iEIlA,,,,N,0,0
1914,83813,829,12227,912,1,100,N,N,N,CP_Drtn,TT_Task,DT_FixedDUR2,RV_OK,TK_Complete,713GL66050,Chasing and installation of conduits,2296,128,0,0,2091.2,0,2091.2,120,,,0,,2008-08-24 08:00,2008-09-09 17:00,2008-10-21 08:00,2008-10-20 17:00,,2008-10-02 08:00,2008-10-01 17:00,,,2008-08-24 08:00,2008-09-09 17:00,,,,,PT_Normal,,,,,+BoHgqJcZE2Ea+1DZYrEMA,,,,N,2091.2,0
1915,83814,829,12227,912,1,40,N,N,N,CP_Drtn,TT_Task,DT_FixedDUR2,RV_OK,TK_Active,713GL66100,Cable trays & trunking,2296,128,0,72,611.2,916.8,1528,120,,,,,2008-09-25 08:00,,2008-10-21 08:00,2008-10-30 17:00,,2008-10-02 08:00,2008-10-12 17:00,2008-10-02 08:00,2008-10-12 17:00,2008-09-25 08:00,2008-10-12 17:00,,,,,PT_Normal,,,,,jAIJkHQmMEqowdiPWZzH/A,,,,N,611.2,0
1916,83815,829,12120,912,1,100,N,N,N,CP_Drtn,TT_Task,DT_FixedDUR2,RV_OK,TK_Complete,713GL68050,Single core wiring,2296,264,0,0,1339.2,0,1339.2,72,,,0,,2008-08-26 08:00,2008-09-04 17:00,2008-11-10 08:00,2008-11-09 17:00,,2008-10-02 08:00,2008-10-01 17:00,,,2008-08-26 08:00,2008-09-04 17:00,,,,,PT_Normal,,,,,FO/yXt+800iZGXA7/wT9mQ,,,,N,1339.2,0
1917,83816,829,12139,912,1,100,N,N,N,CP_Drtn,TT_Task,DT_FixedDUR2,RV_OK,TK_Complete,713GL68100,DB enclosure,2296,128,0,0,486.4,0,486.4,64,,,0,,2008-09-01 08:00,2008-09-09 17:00,2008-10-21 08:00,2008-10-20 17:00,,2008-10-02 08:00,2008-10-01 17:00,,,2008-09-01 08:00,2008-09-09 17:00,,,,,PT_Normal,,,,,jTTsZaQBGkS+X+YaiSxBhg,,,,N,486.4,0
1918,83817,829,12139,912,1,0,N,N,N,CP_Drtn,TT_Task,DT_FixedDUR2,RV_OK,TK_NotStart,713GL68150,LV feeder cables,2296,200,40,72,0,2888,2888,72,0,0,0,,,,2008-11-11 08:00,2008-11-20 17:00,,2008-10-13 08:00,2008-10-22 17:00,2008-10-13 08:00,2008-10-22 17:00,2008-10-13 08:00,2008-10-22 17:00,,,,,PT_Normal,,,,,omtYD//GtUuZGlyH3snofw,,,,N,0,0
1919,83818,829,12231,912,1,0,N,N,N,CP_Drtn,TT_Task,DT_FixedDUR2,RV_OK,TK_NotStart,713GL68250,DB-breakers assembly,2296,600,504,72,0,635.2,635.2,72,0,0,0,,,,2009-02-10 08:00,2009-02-19 17:00,,2008-11-15 08:00,2008-11-24 17:00,2008-11-15 08:00,2008-11-24 17:00,2008-11-15 08:00,2008-11-24 17:00,,,,,PT_Normal,,,,,4oZrLAuHvUivghaELCdkpg,,,,N,0,0
1920,83819,829,12231,912,1,0,N,N,N,CP_Drtn,TT_Task,DT_FixedDUR2,RV_OK,TK_NotStart,713GL68300,SMDB,2296,624,0,48,0,1456,1456,48,0,0,0,,,,2009-03-02 08:00,2009-03-08 17:00,,2008-12-01 08:00,2008-12-07 17:00,2008-12-01 08:00,2008-12-07 17:00,2008-12-01 08:00,2008-12-07 17:00,,,,,PT_Normal,,,,,pNpv5J5yuk6l9De4uvPscg,,,,N,0,0
1921,83820,829,12231,912,1,0,N,N,N,CP_Drtn,TT_Task,DT_FixedDUR2,RV_OK,TK_NotStart,713GL68350,Light Fittings,2296,592,496,352,0,1337.6,1337.6,352,0,0,0,,,,2008-12-31 08:00,2009-02-19 17:00,,2008-10-06 08:00,2008-11-25 17:00,2008-10-06 08:00,2008-11-25 17:00,2008-10-06 08:00,2008-11-25 17:00,,,,,PT_Normal,,,,,K/jlxnHe+06B55YvfKe6rw,,,,N,0,0
1922,83821,829,12231,912,1,0,N,N,N,CP_Drtn,TT_Task,DT_FixedDUR2,RV_OK,TK_NotStart,713GL68400,Lighting Control Panels,2296,632,384,64,0,275.2,275.2,64,0,0,0,,,,2009-03-05 08:00,2009-03-14 17:00,,2008-12-03 08:00,2008-12-11 17:00,2008-12-03 08:00,2008-12-11 17:00,2008-12-03 08:00,2008-12-11 17:00,,,,,PT_Normal,,,,,wZkJHtzAmUmb0H8ch4ecYA,,,,N,0,0
1923,83822,829,12231,912,1,0,N,N,N,CP_Drtn,TT_Task,DT_FixedDUR2,RV_OK,TK_NotStart,713GL68600,Switches & sockets,2296,600,504,72,0,494.4,494.4,72,0,0,0,,,,2009-02-10 08:00,2009-02-19 17:00,,2008-11-15 08:00,2008-11-24 17:00,2008-11-15 08:00,2008-11-24 17:00,2008-11-15 08:00,2008-11-24 17:00,,,,,PT_Normal,,,,,3UyAo7Da5U28ZCK1m6lSRg,,,,N,0,0
1924,83823,829,12065,912,1,100,N,N,N,CP_Drtn,TT_Task,DT_FixedDUR2,RV_OK,TK_Complete,713GL70050,Central Battery cables,2296,264,0,0,345.6,0,345.6,64,,,0,,2008-09-01 08:00,2008-09-09 17:00,2008-11-10 08:00,2008-11-09 17:00,,2008-10-02 08:00,2008-10-01 17:00,,,2008-09-01 08:00,2008-09-09 17:00,,,,,PT_Normal,,,,,PxDQJiDkPESobpYnqRDaNw,,,,N,345.6,0
1925,83824,829,12125,912,1,0,N,N,N,CP_Drtn,TT_Task,DT_FixedDUR2,RV_OK,TK_NotStart,713GL70150,Emergency & exit light fittings,2296,728,400,48,0,188.8,188.8,48,0,0,0,,,,2009-03-05 08:00,2009-03-11 17:00,,2008-11-19 08:00,2008-11-25 17:00,2008-11-19 08:00,2008-11-25 17:00,2008-11-19 08:00,2008-11-25 17:00,,,,,PT_Normal,,,,,xH2MKeC+qUmivwL/Y3ixAg,,,,N,0,0
1926,83825,829,12136,912,1,0,N,N,N,CP_Drtn,TT_Task,DT_FixedDUR2,RV_OK,TK_NotStart,713GL72050,CCTV system cables,2296,208,80,64,0,204.8,204.8,64,0,0,0,,,,2008-11-12 08:00,2008-11-20 17:00,,2008-10-13 08:00,2008-10-21 17:00,2008-10-13 08:00,2008-10-21 17:00,2008-10-13 08:00,2008-10-21 17:00,,,,,PT_Normal,,,,,rKM6RD8OokCR0UF2DJEERQ,,,,N,0,0
1927,83826,829,12546,912,1,0,N,N,N,CP_Drtn,TT_Task,DT_FixedDUR2,RV_OK,TK_NotStart,713GL72100,CCTV system equipments,2296,632,88,48,0,118.4,118.4,48,0,0,0,,,,2009-03-09 08:00,2009-03-15 17:00,,2008-12-07 08:00,2008-12-13 17:00,2008-12-07 08:00,2008-12-13 17:00,2008-12-07 08:00,2008-12-13 17:00,,,,,PT_Normal,,,,,HjHel0hvoEKypRsZretQzg,,,,N,0,0
1928,83827,829,12136,912,1,0,N,N,N,CP_Drtn,TT_Task,DT_FixedDUR2,RV_OK,TK_NotStart,713GL72200,Intercom system cables,2296,128,0,64,0,697.6,697.6,64,0,0,0,,,,2008-11-01 08:00,2008-11-09 17:00,,2008-10-13 08:00,2008-10-21 17:00,2008-10-13 08:00,2008-10-21 17:00,2008-10-13 08:00,2008-10-21 17:00,,,,,PT_Normal,,,,,tgitNtV0c0+Vjmp+ER7byQ,,,,N,0,0
1929,83828,829,12546,912,1,0,N,N,N,CP_Drtn,TT_Task,DT_FixedDUR2,RV_OK,TK_NotStart,713GL72250,Intercom system equipments,2296,584,200,64,0,908.8,908.8,64,0,0,0,,,,2009-02-11 08:00,2009-02-19 17:00,,2008-11-18 08:00,2008-11-26 17:00,2008-11-18 08:00,2008-11-26 17:00,2008-11-18 08:00,2008-11-26 17:00,,,,,PT_Normal,,,,,AC1tu33LHUywJkbtwuyJ7g,,,,N,0,0
1930,83829,829,12130,912,1,100,N,N,N,CP_Drtn,TT_Task,DT_FixedDUR2,RV_OK,TK_Complete,713GL74050,Fire alarm cables,2296,264,0,0,380.8,0,380.8,64,,,0,,2008-09-01 08:00,2008-09-09 17:00,2008-11-10 08:00,2008-11-09 17:00,,2008-10-02 08:00,2008-10-01 17:00,,,2008-09-01 08:00,2008-09-09 17:00,,,,,PT_Normal,,,,,w63WhiER6UiLUNoWa3E/hg,,,,N,380.8,0
1931,83830,829,12549,912,1,0,N,N,N,CP_Drtn,TT_Task,DT_FixedDUR2,RV_OK,TK_NotStart,713GL74100,Fire alarm fittings,2296,560,368,352,0,404.8,404.8,352,0,0,0,,,,2009-01-06 08:00,2009-02-25 17:00,,2008-10-16 08:00,2008-12-06 17:00,2008-10-16 08:00,2008-12-06 17:00,2008-10-16 08:00,2008-12-06 17:00,,,,,PT_Normal,,,,,B+/dUVeJ/UWY6wkCk8mdbg,,,,N,0,0
1932,83831,829,12549,912,1,0,N,N,N,CP_Drtn,TT_Task,DT_FixedDUR2,RV_OK,TK_NotStart,713GL74150,Fire alarm control panels,2296,560,368,48,0,188.8,188.8,48,0,0,0,,,,2009-02-19 08:00,2009-02-25 17:00,,2008-11-30 08:00,2008-12-06 17:00,2008-11-30 08:00,2008-12-06 17:00,2008-11-30 08:00,2008-12-06 17:00,,,,,PT_Normal,,,,,izXldixg10+tPGuEE+cDMQ,,,,N,0,0
1933,83832,829,12133,912,1,0,N,N,N,CP_Drtn,TT_Task,DT_FixedDUR2,RV_OK,TK_NotStart,713GL76050,Structured cabling,2296,168,40,64,0,345.6,345.6,64,0,0,0,,,,2008-11-03 08:00,2008-11-11 17:00,,2008-10-09 08:00,2008-10-18 17:00,2008-10-09 08:00,2008-10-18 17:00,2008-10-09 08:00,2008-10-18 17:00,,,,,PT_Normal,,,,,exfZnHVBs0uzOWw7Kdc9aQ,,,,N,0,0
1934,83833,829,12343,912,1,0,N,N,N,CP_Drtn,TT_Task,DT_FixedDUR2,RV_OK,TK_NotStart,713GL76100,Consolidated pionts,2296,128,0,64,0,627.2,627.2,64,0,0,0,,,,2008-11-12 08:00,2008-11-20 17:00,,2008-10-25 08:00,2008-11-02 17:00,2008-10-25 08:00,2008-11-02 17:00,2008-10-25 08:00,2008-11-02 17:00,,,,,PT_Normal,,,,,ZLxYkWmCPUCZ90govGipOw,,,,N,0,0
1935,83834,829,11088,912,1,0,N,N,N,CP_Drtn,TT_Task,DT_FixedDUR2,RV_OK,TK_NotStart,713GR20050,Floor tiles for garbage rooms,2306,312,0,120,0,1254,1254,120,840,0,840,,,,2009-03-09 08:00,2009-03-25 17:00,,2009-01-22 08:00,2009-02-08 17:00,2009-01-22 08:00,2009-02-08 17:00,2009-01-22 08:00,2009-02-08 17:00,,,,,PT_Normal,,,,,QzM26z6va0aXrfO+hJgoZg,,,,N,0,0
1936,83835,829,11088,912,1,0,N,N,N,CP_Drtn,TT_Task,DT_FixedDUR2,RV_OK,TK_NotStart,713GR20100,Wall tiles for garbage rooms,2306,312,0,120,0,744,744,120,416,0,416,,,,2009-02-02 08:00,2009-02-18 17:00,,2008-12-18 08:00,2009-01-04 17:00,2008-12-18 08:00,2009-01-04 17:00,2008-12-18 08:00,2009-01-04 17:00,,,,,PT_Normal,,,,,eXwnBqxxr0yEN443ZtYTOg,,,,N,0,0
1937,83836,829,11198,912,1,0,N,N,N,CP_Drtn,TT_Task,DT_FixedDUR2,RV_OK,TK_NotStart,713GR22150,W/P for garbage room,2306,312,0,120,0,1783.6,1783.6,120,1512,0,1512,,,,2009-02-19 08:00,2009-03-08 17:00,,2009-01-05 08:00,2009-01-21 17:00,2009-01-05 08:00,2009-01-21 17:00,2009-01-05 08:00,2009-01-21 17:00,,,,,PT_Normal,,,,,PC4RZ7sONE+yIhemqmdLjA,,,,N,0,0
1938,83837,829,11199,912,1,0,N,N,N,CP_Drtn,TT_Task,DT_FixedDUR2,RV_OK,TK_NotStart,713GR48050,Shaft plumpness & chipping,2306,312,0,48,0,256,256,48,8,0,8,,,,2008-12-22 08:00,2008-12-28 17:00,,2008-11-06 08:00,2008-11-12 17:00,2008-11-06 08:00,2008-11-12 17:00,2008-11-06 08:00,2008-11-12 17:00,,,,,PT_Normal,,,,,Wujj2xoREUqH4M8mIIi+Ig,,,,N,0,0
1939,83838,829,11199,912,1,0,N,N,N,CP_Drtn,TT_Task,DT_FixedDUR2,RV_OK,TK_NotStart,713GR48100,Brackets,2306,312,0,120,0,268,268,120,8,0,8,,,,2008-12-29 08:00,2009-01-14 17:00,,2008-11-13 08:00,2008-11-30 17:00,2008-11-13 08:00,2008-11-30 17:00,2008-11-13 08:00,2008-11-30 17:00,,,,,PT_Normal,,,,,+ZuoIg9g+UiAsNAu/gDF9g,,,,N,0,0
1940,83839,829,11199,912,1,0,N,N,N,CP_Drtn,TT_Task,DT_FixedDUR2,RV_OK,TK_NotStart,713GR48150,Garbage chute installation,2306,312,0,120,0,528,528,120,8,0,8,,,,2009-01-10 08:00,2009-01-26 17:00,,2008-11-25 08:00,2008-12-11 17:00,2008-11-25 08:00,2008-12-11 17:00,2008-11-25 08:00,2008-12-11 17:00,,,,,PT_Normal,,,,,b6CAWUdsy0KJNW9ClrdmYg,,,,N,0,0
1941,83840,829,11199,912,1,0,N,N,N,CP_Drtn,TT_Task,DT_FixedDUR2,RV_OK,TK_NotStart,713GR48250,Hooper doors & foot bedals,2306,312,0,120,0,264,264,120,24,0,24,,,,2009-03-21 08:00,2009-04-06 17:00,,2009-02-03 08:00,2009-02-19 17:00,2009-02-03 08:00,2009-02-19 17:00,2009-02-03 08:00,2009-02-19 17:00,,,,,PT_Normal,,,,,dZ6z/8+xKkyvcqHxVeOQHw,,,,N,0,0
1942,83841,829,11199,912,1,0,N,N,N,CP_Drtn,TT_Task,DT_FixedDUR2,RV_OK,TK_NotStart,713GR48350,Compactors & trolleys,2306,312,0,48,0,120,120,48,32,0,32,,,,2009-03-31 08:00,2009-04-06 17:00,,2009-02-14 08:00,2009-02-19 17:00,2009-02-14 08:00,2009-02-19 17:00,2009-02-14 08:00,2009-02-19 17:00,,,,,PT_Normal,,,,,xkmAslDx6k2O2eRDKMBwyA,,,,N,0,0
1943,83842,829,12132,912,1,0,N,N,N,CP_Drtn,TT_Task,DT_FixedDUR2,RV_OK,TK_NotStart,713GR58050,Fire fighting provisions,2296,312,0,120,0,450,450,120,0,0,0,,,,2009-01-10 08:00,2009-01-26 17:00,,2008-11-25 08:00,2008-12-11 17:00,2008-11-25 08:00,2008-12-11 17:00,2008-11-25 08:00,2008-12-11 17:00,,,,,PT_Normal,,,,,tTE998oEbkGbrhsGX/L/aw,,,,N,0,0
1944,83843,829,11611,912,1,100,N,N,N,CP_Drtn,TT_Task,DT_FixedDUR2,RV_OK,TK_Complete,713GU12050,Columns & walls GU to 1L - Part 1,2306,0,0,0,5587.77,0,5587.77,32,167999.52,167999.52,0,,2008-07-15 08:00,2008-07-19 17:00,2008-10-02 08:00,2008-10-01 17:00,,2008-10-02 08:00,2008-10-01 17:00,,,2008-07-15 08:00,2008-07-19 17:00,,,,,PT_Normal,,,,,xo3pYy7UR0Odh3/UumctVw,,,,N,5587.77,167999.52
1945,83844,829,11611,912,1,100,N,N,N,CP_Drtn,TT_Task,DT_FixedDUR2,RV_OK,TK_Complete,713GU12051,Columns & walls GU to 1L - Part 2,2306,0,0,0,5587.77,0,5587.77,32,167999.52,167999.52,0,,2008-07-24 08:00,2008-07-28 17:00,2008-10-02 08:00,2008-10-01 17:00,,2008-10-02 08:00,2008-10-01 17:00,,,2008-07-24 08:00,2008-07-28 17:00,,,,,PT_Normal,,,,,Nte8TiZzVUWzF3ydb4QiCA,,,,N,5587.77,167999.52
1946,83845,829,11611,912,1,100,N,N,N,CP_Drtn,TT_Task,DT_FixedDUR2,RV_OK,TK_Complete,713GU12052,Columns & walls GU to 1L - Middle Part,2306,0,0,0,9003.34,0,9003.34,32,271281.92,271281.92,0,,2008-07-23 08:00,2008-07-27 17:00,2008-10-02 08:00,2008-10-01 17:00,,2008-10-02 08:00,2008-10-01 17:00,,,2008-07-23 08:00,2008-07-27 17:00,,,,,PT_Normal,,,,,kgfWV3d8ck6CNtltyf0gdg,,,,N,9003.34,271281.92
1947,83846,829,11611,912,1,100,N,N,N,CP_Drtn,TT_Task,DT_FixedDUR2,RV_OK,TK_Complete,713GU12200,Slab @ 1L level - Part 1,2306,0,0,0,4957,0,4957,56,181794.24,181794.24,0,,2008-07-24 08:00,2008-08-02 17:00,2008-10-02 08:00,2008-10-01 17:00,,2008-10-02 08:00,2008-10-01 17:00,,,2008-07-24 08:00,2008-08-02 17:00,,,,,PT_Normal,,,,,2WecutoqA0iYyYNGa2lKAA,,,,N,4957,181794.24
1948,83847,829,11611,912,1,100,N,N,N,CP_Drtn,TT_Task,DT_FixedDUR2,RV_OK,TK_Complete,713GU12201,Slab @ 1L level - Part 2,2306,0,0,0,4957,0,4957,56,181794.24,181794.24,0,,2008-08-03 08:00,2008-08-10 17:00,2008-10-02 08:00,2008-10-01 17:00,,2008-10-02 08:00,2008-10-01 17:00,,,2008-08-03 08:00,2008-08-10 17:00,,,,,PT_Normal,,,,,wqgI8MzFl0aMtiE/r4c1FQ,,,,N,4957,181794.24
1949,83848,829,11611,912,1,100,N,N,N,CP_Drtn,TT_Task,DT_FixedDUR2,RV_OK,TK_Complete,713GU12202,Slab @ 1L level - Middle Part,2306,0,0,0,5868.65,0,5868.65,56,215610,215610,0,,2008-08-02 08:00,2008-08-09 17:00,2008-10-02 08:00,2008-10-01 17:00,,2008-10-02 08:00,2008-10-01 17:00,,,2008-08-02 08:00,2008-08-09 17:00,,,,,PT_Normal,,,,,KR+AbjDoFUSGpPm6Ik7sxw,,,,N,5868.65,215610
1950,83849,829,11611,912,1,100,N,N,N,CP_Drtn,TT_Task,DT_FixedDUR2,RV_OK,TK_Complete,713GU12250,Staircases GU to 1L,2306,288,0,0,999.88,0,999.88,32,18457.6,18457.6,0,,2008-08-11 08:00,2008-08-14 17:00,2008-11-13 08:00,2008-11-12 17:00,,2008-10-02 08:00,2008-10-01 17:00,,,2008-08-11 08:00,2008-08-14 17:00,,,,,PT_Normal,,,,,Qpvr8mvhnEOl92NsuiEweQ,,,,N,999.88,18457.6
1951,83850,829,11121,912,1,100,N,N,N,CP_Drtn,TT_Task,DT_FixedDUR2,RV_OK,TK_Complete,713GU14050,Block works,2306,128,0,0,30371,0,37573.5,120,23048,30250.5,0,,2008-08-27 08:00,2008-09-13 17:00,2008-10-21 08:00,2008-10-20 17:00,,2008-10-02 08:00,2008-10-01 17:00,,,2008-08-27 08:00,2008-09-13 17:00,,,,,PT_Normal,,,,,/YJoFYhEjkmM0CD+TsFoBA,,,,N,30371,30250.5
1952,83851,829,10945,912,1,86.7,N,N,N,CP_Drtn,TT_Task,DT_FixedDUR2,RV_OK,TK_Active,713GU16050,Plaster works,2306,128,0,16,22071.86,3395.64,25467.5,120,19880,17229.36,2650.64,,2008-09-17 08:00,,2008-10-21 08:00,2008-10-22 17:00,,2008-10-02 08:00,2008-10-04 17:00,2008-10-02 08:00,2008-10-04 17:00,2008-09-17 08:00,2008-10-04 17:00,,,,,PT_Normal,,,,,9ZzD22ztpkG4oAMDOltMRg,,,,N,22071.86,17229.36
1953,83852,829,10945,912,1,73.3,N,N,N,CP_Drtn,TT_Task,DT_FixedDUR2,RV_OK,TK_Active,713GU16051,Plaste works behind tiles,2306,328,136,32,5869.84,2134.46,8004.3,120,6184,4534.96,1649.04,,2008-09-20 08:00,,2008-11-19 08:00,2008-11-23 17:00,,2008-10-02 08:00,2008-10-06 17:00,2008-10-02 08:00,2008-10-06 17:00,2008-09-20 08:00,2008-10-06 17:00,,,,,PT_Normal,,,,,uIuqxBPOmka+6sU7sFGyqw,,,,N,5869.84,4534.96
1954,83853,829,11123,912,1,100,N,N,N,CP_Drtn,TT_Task,DT_FixedDUR2,RV_OK,TK_Complete,713GU18050,Rendering works,2306,128,0,0,5683,0,5683,120,5000,5000,0,,2008-09-02 08:00,2008-09-18 17:00,2008-10-21 08:00,2008-10-20 17:00,,2008-10-02 08:00,2008-10-01 17:00,,,2008-09-02 08:00,2008-09-18 17:00,,,,,PT_Normal,,,,,gUAeXqxfhUCCsKQm2OpWhA,,,,N,5683,5000
1955,83854,829,11123,912,1,40,N,N,N,CP_Drtn,TT_Task,DT_FixedDUR2,RV_OK,TK_Active,713GU18100,Painting base coats,2306,128,0,72,10995.2,16492.8,27488,120,24880,9952,14928,,2008-09-25 08:00,,2008-10-21 08:00,2008-10-30 17:00,,2008-10-02 08:00,2008-10-12 17:00,2008-10-02 08:00,2008-10-12 17:00,2008-09-25 08:00,2008-10-12 17:00,,,,,PT_Normal,,,,,4Whv2qRmIUiHmc6fjKg5og,,,,N,10995.2,9952
1956,83855,829,11123,912,1,0,N,N,N,CP_Drtn,TT_Task,DT_FixedDUR2,RV_OK,TK_NotStart,713GU18150,Painting 1st top coat for apartments,2306,560,0,72,0,17300.2,17300.2,72,16408,0,16408,,,,2009-02-09 08:00,2009-02-18 17:00,,2008-11-19 08:00,2008-11-29 17:00,2008-11-19 08:00,2008-11-29 17:00,2008-11-19 08:00,2008-11-29 17:00,,,,,PT_Normal,,,,,Qh77UIHkxEeSLz2I9y495A,,,,N,0,0
1957,83856,829,11124,912,1,0,N,N,N,CP_Drtn,TT_Task,DT_FixedDUR2,RV_OK,TK_NotStart,713GU20050,Floor tiles for apartments-dry area,2306,336,0,120,0,8036.4,8036.4,120,5864,0,5864,,,,2008-11-23 08:00,2008-12-09 17:00,,2008-10-05 08:00,2008-10-21 17:00,2008-10-05 08:00,2008-10-21 17:00,2008-10-05 08:00,2008-10-21 17:00,,,,,PT_Normal,,,,,Wk+nKP34i0O3CRhaUyYpqA,,,,N,0,0
1958,83857,829,11124,912,1,0,N,N,N,CP_Drtn,TT_Task,DT_FixedDUR2,RV_OK,TK_NotStart,713GU20070,Floor tiles for apartments-wet area,2306,192,0,120,0,3014.4,3014.4,120,2144,0,2144,,,,2008-12-02 08:00,2008-12-18 17:00,,2008-11-04 08:00,2008-11-20 17:00,2008-11-04 08:00,2008-11-20 17:00,2008-11-04 08:00,2008-11-20 17:00,,,,,PT_Normal,,,,,iPY5GXUb9kKqTVrDcOF8qQ,,,,N,0,0
1959,83858,829,11124,912,1,0,N,N,N,CP_Drtn,TT_Task,DT_FixedDUR2,RV_OK,TK_NotStart,713GU20110,Wall tiles for apartments-wet area,2306,320,40,120,0,8103.24,8103.24,120,5322.16,0,5322.16,,,,2008-12-21 08:00,2009-01-06 17:00,,2008-11-04 08:00,2008-11-20 17:00,2008-11-04 08:00,2008-11-20 17:00,2008-11-04 08:00,2008-11-20 17:00,,,,,PT_Normal,,,,,pdInGo7A106kemjostSaRg,,,,N,0,0
1960,83859,829,11125,912,1,100,N,N,N,CP_Drtn,TT_Task,DT_FixedDUR2,RV_OK,TK_Complete,713GU22150,W/P for for apartments,2306,272,0,0,2900.4,0,2900.4,120,2528,2528,0,,2008-09-14 08:00,2008-09-30 17:00,2008-11-11 08:00,2008-11-10 17:00,,2008-10-02 08:00,2008-10-01 17:00,,,2008-09-14 08:00,2008-09-30 17:00,,,,,PT_Normal,,,,,n9z2qTxX5kmuW2WRApLgOg,,,,N,2900.4,2528
1961,83860,829,10949,912,1,0,N,N,N,CP_Drtn,TT_Task,DT_FixedDUR2,RV_OK,TK_NotStart,713GU24050,Aluminium doors & windows,2306,344,136,120,0,1656,1656,120,384,0,384,,,,2008-12-02 08:00,2008-12-18 17:00,,2008-10-13 08:00,2008-10-29 17:00,2008-10-13 08:00,2008-10-29 17:00,2008-10-13 08:00,2008-10-29 17:00,,,,,PT_Normal,,,,,4Kp/gFuIM0S4bMj6KR1/Xg,,,,N,0,0
1962,83861,829,10949,912,1,0,N,N,N,CP_Drtn,TT_Task,DT_FixedDUR2,RV_OK,TK_NotStart,713GU24200,Balcony handrails,2306,128,128,120,0,2360,2360,120,1280,0,1280,,,,2008-12-20 08:00,2009-01-05 17:00,,2008-12-01 08:00,2008-12-17 17:00,2008-12-01 08:00,2008-12-17 17:00,2008-12-01 08:00,2008-12-17 17:00,,,,,PT_Normal,,,,,YuhAzun3eE6h13zc6jrZXA,,,,N,0,0
1963,83862,829,11127,912,1,0,N,N,N,CP_Drtn,TT_Task,DT_FixedDUR2,RV_OK,TK_NotStart,713GU30050,Wooden doors,2306,280,0,120,0,960,960,120,240,0,240,,,,2008-12-23 08:00,2009-01-08 17:00,,2008-11-12 08:00,2008-11-29 17:00,2008-11-12 08:00,2008-11-29 17:00,2008-11-12 08:00,2008-11-29 17:00,,,,,PT_Normal,,,,,FNmyvOVC/kqCJUlHm3KnEA,,,,N,0,0
1964,83863,829,11128,912,1,0,N,N,N,CP_Drtn,TT_Task,DT_FixedDUR2,RV_OK,TK_NotStart,713GU32100,Vanity counters,2306,160,0,120,0,1968,1968,120,168,0,168,,,,2008-12-22 08:00,2009-01-07 17:00,,2008-11-29 08:00,2008-12-15 17:00,2008-11-29 08:00,2008-12-15 17:00,2008-11-29 08:00,2008-12-15 17:00,,,,,PT_Normal,,,,,qbOb+fk1PUa+gB7xGqR9Ag,,,,N,0,0
1965,83864,829,11128,912,1,0,N,N,N,CP_Drtn,TT_Task,DT_FixedDUR2,RV_OK,TK_NotStart,713GU32150,Wardrobes,2306,600,600,120,0,5832,5832,120,272,0,272,,,,2009-02-03 08:00,2009-02-19 17:00,,2008-11-08 08:00,2008-11-24 17:00,2008-11-08 08:00,2008-11-24 17:00,2008-11-08 08:00,2008-11-24 17:00,,,,,PT_Normal,,,,,/eimhuCYzEO9ue2GHUHkDQ,,,,N,0,0
1966,83865,829,10911,912,1,0,N,N,N,CP_Drtn,TT_Task,DT_FixedDUR2,RV_OK,TK_NotStart,713GU34050,False ceiling works for apartments-dry area,2306,392,0,120,0,1485.12,1485.12,120,910.08,0,910.08,,,,2008-12-23 08:00,2009-01-08 17:00,,2008-10-27 08:00,2008-11-12 17:00,2008-10-27 08:00,2008-11-12 17:00,2008-10-27 08:00,2008-11-12 17:00,,,,,PT_Normal,,,,,Le6xn/AP2kOiVN8nqZ8fcQ,,,,N,0,0
1967,83866,829,10911,912,1,0,N,N,N,CP_Drtn,TT_Task,DT_FixedDUR2,RV_OK,TK_NotStart,713GU34070,False ceiling works for apartments-wet area,2306,192,0,120,0,650.88,650.88,120,353.92,0,353.92,,,,2008-11-24 08:00,2008-12-10 17:00,,2008-10-27 08:00,2008-11-12 17:00,2008-10-27 08:00,2008-11-12 17:00,2008-10-27 08:00,2008-11-12 17:00,,,,,PT_Normal,,,,,1W7ogEy+C0GX0VPQ1OfKKQ,,,,N,0,0
1968,83867,829,11130,912,1,0,N,N,N,CP_Drtn,TT_Task,DT_FixedDUR2,RV_OK,TK_NotStart,713GU36050,Stone finishing top,2306,280,184,64,0,316,316,64,144,0,144,,,,2009-01-06 08:00,2009-01-14 17:00,,2008-11-26 08:00,2008-12-04 17:00,2008-11-26 08:00,2008-12-04 17:00,2008-11-26 08:00,2008-12-04 17:00,,,,,PT_Normal,,,,,xMThgVIXBUmgWHtt59b0bw,,,,N,0,0
1969,83868,829,11130,912,1,0,N,N,N,CP_Drtn,TT_Task,DT_FixedDUR2,RV_OK,TK_NotStart,713GU36100,Thresholds,2306,256,200,64,0,580,580,64,344,0,344,,,,2009-01-07 08:00,2009-01-15 17:00,,2008-12-01 08:00,2008-12-09 17:00,2008-12-01 08:00,2008-12-09 17:00,2008-12-01 08:00,2008-12-09 17:00,,,,,PT_Normal,,,,,gaLCqJzndkeRCli1iqgiiA,,,,N,0,0
1970,83869,829,11131,912,1,100,N,N,N,CP_Drtn,TT_Task,DT_FixedDUR2,RV_OK,TK_Complete,713GU44050,Sub-frames,2306,128,0,0,600,0,600,120,240,240,0,,2008-09-06 08:00,2008-09-22 17:00,2008-10-21 08:00,2008-10-20 17:00,,2008-10-02 08:00,2008-10-01 17:00,,,2008-09-06 08:00,2008-09-22 17:00,,,,,PT_Normal,,,,,G7VFbzQqPUax6IskTS0wJw,,,,N,600,240
1971,83870,829,12246,912,1,100,N,N,N,CP_Drtn,TT_Task,DT_FixedDUR2,RV_OK,TK_Complete,713GU50100,MEP skeleton embedded provisions,2296,0,0,0,512,0,512,72,,,0,,2008-07-15 08:00,2008-07-24 17:00,2008-10-02 08:00,2008-10-01 17:00,,2008-10-02 08:00,2008-10-01 17:00,,,2008-07-15 08:00,2008-07-24 17:00,,,,,PT_Normal,,,,,FDzDW0LSQk2YNMuSgJReeA,,,,N,512,0
1972,83871,829,12027,912,1,100,N,N,N,CP_Drtn,TT_Task,DT_FixedDUR2,RV_OK,TK_Complete,713GU52050,A/C duct works,2296,312,0,0,831,0,831,160,,,0,,2008-09-08 08:00,2008-09-30 17:00,2008-11-17 08:00,2008-11-16 17:00,,2008-10-02 08:00,2008-10-01 17:00,,,2008-09-08 08:00,2008-09-30 17:00,,,,,PT_Normal,,,,,rEO4hNZfBkur4ku/1QZZDA,,,,N,831,0
1973,83872,829,12027,912,1,100,N,N,N,CP_Drtn,TT_Task,DT_FixedDUR2,RV_OK,TK_Complete,713GU52100,Chilled water pipe works,2296,248,0,0,787,0,787,72,,,0,,2008-09-21 08:00,2008-09-30 17:00,2008-11-08 08:00,2008-11-06 17:00,,2008-10-02 08:00,2008-10-01 17:00,,,2008-09-21 08:00,2008-09-30 17:00,,,,,PT_Normal,,,,,/ij18xr/kU2KoBAewrhOGQ,,,,N,787,0
1974,83873,829,12558,912,1,100,N,N,N,CP_Drtn,TT_Task,DT_FixedDUR2,RV_OK,TK_Complete,713GU52150,FCU's hanging,2296,304,0,0,935.2,0,935.2,64,,,0,,2008-09-20 08:00,2008-09-28 17:00,2008-11-16 08:00,2008-11-15 17:00,,2008-10-02 08:00,2008-10-01 17:00,,,2008-09-20 08:00,2008-09-28 17:00,,,,,PT_Normal,,,,,5C+sZL9SwE26P2s56clX9A,,,,N,935.2,0
1975,83874,829,12558,912,1,0,N,N,N,CP_Drtn,TT_Task,DT_FixedDUR2,RV_OK,TK_NotStart,713GU52300,FCU's assembly & duct connections,2296,224,32,120,0,991.2,991.2,120,0,0,0,,,,2008-11-06 08:00,2008-11-23 17:00,,2008-10-05 08:00,2008-10-21 17:00,2008-10-05 08:00,2008-10-21 17:00,2008-10-05 08:00,2008-10-21 17:00,,,,,PT_Normal,,,,,EeE7WRO5B0GmBmGyLdd1cw,,,,N,0,0
1976,83875,829,12558,912,1,0,N,N,N,CP_Drtn,TT_Task,DT_FixedDUR2,RV_OK,TK_NotStart,713GU52350,Grills & diffusers,2296,616,408,64,0,856,856,64,0,0,0,,,,2009-02-11 08:00,2009-02-19 17:00,,2008-11-13 08:00,2008-11-22 17:00,2008-11-13 08:00,2008-11-22 17:00,2008-11-13 08:00,2008-11-22 17:00,,,,,PT_Normal,,,,,hLj3FX5dTUuH+uT8pWoQzg,,,,N,0,0
1977,83876,829,12027,912,1,75,N,N,N,CP_Drtn,TT_Task,DT_FixedDUR2,RV_OK,TK_Active,713GU52550,A/C duct risers,2296,224,0,16,1219.5,406.5,1626,64,,,,,2008-09-25 08:00,,2008-11-04 08:00,2008-11-05 17:00,,2008-10-02 08:00,2008-10-04 17:00,2008-10-02 08:00,2008-10-04 17:00,2008-09-25 08:00,2008-10-04 17:00,,,,,PT_Normal,,,,,CUFmAAViZEuQpFrycw1oDg,,,,N,1219.5,0
1978,83877,829,12061,912,1,100,N,N,N,CP_Drtn,TT_Task,DT_FixedDUR2,RV_OK,TK_Complete,713GU54050,Chasing & Pex pipe works,2296,328,0,0,395,0,395,120,,,0,,2008-09-08 08:00,2008-09-24 17:00,2008-11-19 08:00,2008-11-18 17:00,,2008-10-02 08:00,2008-10-01 17:00,,,2008-09-08 08:00,2008-09-24 17:00,,,,,PT_Normal,,,,,PgOlE5F07k+cpsGcNqWw+g,,,,N,395,0
1979,83878,829,12352,912,1,73.3,N,N,N,CP_Drtn,TT_Task,DT_FixedDUR2,RV_OK,TK_Active,713GU54250,Bathtubs,2296,384,0,32,158.99,83.62,313.6,120,,70.99,,,2008-09-20 08:00,,2008-11-27 08:00,2008-12-01 17:00,,2008-10-02 08:00,2008-10-06 17:00,2008-10-02 08:00,2008-10-06 17:00,2008-09-20 08:00,2008-10-06 17:00,,,,,PT_Normal,,,,,c4DE8VHqmEWuYm7DPIS+lg,,,,N,158.99,70.99
1980,83879,829,12352,912,1,75,N,N,N,CP_Drtn,TT_Task,DT_FixedDUR2,RV_OK,TK_Active,713GU54300,Water heater,2296,304,0,16,232.8,77.6,310.4,64,,,,,2008-09-25 08:00,,2008-11-16 08:00,2008-11-17 17:00,,2008-10-02 08:00,2008-10-04 17:00,2008-10-02 08:00,2008-10-04 17:00,2008-09-25 08:00,2008-10-04 17:00,,,,,PT_Normal,,,,,8BuBczdsSE2gsjDSLtc2bQ,,,,N,232.8,0
1981,83880,829,12352,912,1,66.7,N,N,N,CP_Drtn,TT_Task,DT_FixedDUR2,RV_OK,TK_Active,713GU54350,Over head pipe assembly & vlave connections,2296,336,144,24,158,79,237,72,,,,,2008-09-25 08:00,,2008-11-20 08:00,2008-11-23 17:00,,2008-10-02 08:00,2008-10-05 17:00,2008-10-02 08:00,2008-10-05 17:00,2008-09-25 08:00,2008-10-05 17:00,,,,,PT_Normal,,,,,vmTZt3+eA021vBm13euaew,,,,N,158,0
1982,83881,829,12144,912,1,0,N,N,N,CP_Drtn,TT_Task,DT_FixedDUR2,RV_OK,TK_NotStart,713GU54400,Sanitary fixures,2296,280,0,120,0,516,516,120,0,0,0,,,,2008-12-29 08:00,2009-01-14 17:00,,2008-11-18 08:00,2008-12-04 17:00,2008-11-18 08:00,2008-12-04 17:00,2008-11-18 08:00,2008-12-04 17:00,,,,,PT_Normal,,,,,xmrvkv68UkSeQz/VysaDcg,,,,N,0,0
1983,83882,829,12144,912,1,0,N,N,N,CP_Drtn,TT_Task,DT_FixedDUR2,RV_OK,TK_NotStart,713GU54450,Mirrors,2296,160,144,120,0,186,186,120,0,0,0,,,,2008-12-28 08:00,2009-01-13 17:00,,2008-12-04 08:00,2008-12-21 17:00,2008-12-04 08:00,2008-12-21 17:00,2008-12-04 08:00,2008-12-21 17:00,,,,,PT_Normal,,,,,437NfWf4SUm3u1CnJEtXfA,,,,N,0,0
1984,83883,829,12352,912,1,73.3,N,N,N,CP_Drtn,TT_Task,DT_FixedDUR2,RV_OK,TK_Active,713GU54500,Concealed Flushing Cistern,2296,384,192,32,136.4,67.2,252,120,,48.4,,,2008-09-20 08:00,,2008-11-27 08:00,2008-12-01 17:00,,2008-10-02 08:00,2008-10-06 17:00,2008-10-02 08:00,2008-10-06 17:00,2008-09-20 08:00,2008-10-06 17:00,,,,,PT_Normal,,,,,Ec/Yr4ttEE6u8jZ7/FyFbg,,,,N,136.4,48.4
1985,83884,829,12355,912,1,100,N,N,N,CP_Drtn,TT_Task,DT_FixedDUR2,RV_OK,TK_Complete,713GU56050,Chasing and installation of drainage pipes,2296,240,0,0,285,0,285,120,,,0,,2008-09-08 08:00,2008-09-24 17:00,2008-11-06 08:00,2008-11-05 17:00,,2008-10-02 08:00,2008-10-01 17:00,,,2008-09-08 08:00,2008-09-24 17:00,,,,,PT_Normal,,,,,TRvO6FdMZEy3G7zDeafeHQ,,,,N,285,0
1986,83885,829,12355,912,1,100,N,N,N,CP_Drtn,TT_Task,DT_FixedDUR2,RV_OK,TK_Complete,713GU56100,Drainage riser pipes,2296,264,0,0,284,0,284,64,,,0,,2008-09-04 08:00,2008-09-13 17:00,2008-11-10 08:00,2008-11-09 17:00,,2008-10-02 08:00,2008-10-01 17:00,,,2008-09-04 08:00,2008-09-13 17:00,,,,,PT_Normal,,,,,QlG4XYC2UEmetkDo77zUOQ,,,,N,284,0
1987,83886,829,12147,912,1,0,N,N,N,CP_Drtn,TT_Task,DT_FixedDUR2,RV_OK,TK_NotStart,713GU56150,Over head drainage pipe works,2296,192,0,64,0,257.6,257.6,64,0,0,0,,,,2008-11-15 08:00,2008-11-23 17:00,,2008-10-18 08:00,2008-10-26 17:00,2008-10-18 08:00,2008-10-26 17:00,2008-10-18 08:00,2008-10-26 17:00,,,,,PT_Normal,,,,,unNxG309pEW4JAAjt95lsw,,,,N,0,0
1988,83887,829,12358,912,1,100,N,N,N,CP_Drtn,TT_Task,DT_FixedDUR2,RV_OK,TK_Complete,713GU58050,Fire fighting pipe works,2296,360,0,0,292,0,292,72,,,0,,2008-09-14 08:00,2008-09-23 17:00,2008-11-24 08:00,2008-11-23 17:00,,2008-10-02 08:00,2008-10-01 17:00,,,2008-09-14 08:00,2008-09-23 17:00,,,,,PT_Normal,,,,,trxt+rAbD0Gp+VrUqwyb1A,,,,N,292,0
1989,83888,829,12150,912,1,0,N,N,N,CP_Drtn,TT_Task,DT_FixedDUR2,RV_OK,TK_NotStart,713GU58250,Sprinkler heads,2296,616,448,64,0,394,394,64,0,0,0,,,,2009-02-11 08:00,2009-02-19 17:00,,2008-11-13 08:00,2008-11-22 17:00,2008-11-13 08:00,2008-11-22 17:00,2008-11-13 08:00,2008-11-22 17:00,,,,,PT_Normal,,,,,i0WWJnwCdE2AByuIEu9D3g,,,,N,0,0
1990,83889,829,12093,912,1,100,N,N,N,CP_Drtn,TT_Task,DT_FixedDUR2,RV_OK,TK_Complete,713GU66050,Chasing and installation of conduits,2296,128,0,0,1528,0,1528,120,,,0,,2008-09-06 08:00,2008-09-22 17:00,2008-10-21 08:00,2008-10-20 17:00,,2008-10-02 08:00,2008-10-01 17:00,,,2008-09-06 08:00,2008-09-22 17:00,,,,,PT_Normal,,,,,5EFuq4SQDki0+w1OhzNYfA,,,,N,1528,0
1991,83890,829,12195,912,1,100,N,N,N,CP_Drtn,TT_Task,DT_FixedDUR2,RV_OK,TK_Complete,713GU68050,Single core wiring,2296,360,0,0,1339.2,0,1339.2,72,,,0,,2008-09-08 08:00,2008-09-17 17:00,2008-11-24 08:00,2008-11-23 17:00,,2008-10-02 08:00,2008-10-01 17:00,,,2008-09-08 08:00,2008-09-17 17:00,,,,,PT_Normal,,,,,aam+RSeglEifP1+C9ufoTA,,,,N,1339.2,0
1992,83891,829,12364,912,1,0,N,N,N,CP_Drtn,TT_Task,DT_FixedDUR2,RV_OK,TK_NotStart,713GU68350,Light Fittings,2296,600,600,120,0,1035.2,1035.2,120,0,0,0,,,,2009-02-03 08:00,2009-02-19 17:00,,2008-11-08 08:00,2008-11-24 17:00,2008-11-08 08:00,2008-11-24 17:00,2008-11-08 08:00,2008-11-24 17:00,,,,,PT_Normal,,,,,fgfJAi6QQECmTDbUqxNtqQ,,,,N,0,0
1993,83892,829,12364,912,1,0,N,N,N,CP_Drtn,TT_Task,DT_FixedDUR2,RV_OK,TK_NotStart,713GU68600,Switches & sockets,2296,568,568,72,0,494.4,494.4,72,0,0,0,,,,2009-02-10 08:00,2009-02-19 17:00,,2008-11-19 08:00,2008-11-29 17:00,2008-11-19 08:00,2008-11-29 17:00,2008-11-19 08:00,2008-11-29 17:00,,,,,PT_Normal,,,,,vYiqiHZ8BEWxdambxczMPw,,,,N,0,0
1994,83893,829,12157,912,1,100,N,N,N,CP_Drtn,TT_Task,DT_FixedDUR2,RV_OK,TK_Complete,713GU74050,Fire alarm cables,2296,344,0,0,380.8,0,380.8,64,,,0,,2008-09-14 08:00,2008-09-22 17:00,2008-11-22 08:00,2008-11-20 17:00,,2008-10-02 08:00,2008-10-01 17:00,,,2008-09-14 08:00,2008-09-22 17:00,,,,,PT_Normal,,,,,znE+edzScEmACue2cs8PNg,,,,N,380.8,0
1995,83894,829,12367,912,1,0,N,N,N,CP_Drtn,TT_Task,DT_FixedDUR2,RV_OK,TK_NotStart,713GU74100,Fire alarm fittings,2296,600,448,64,0,116.8,116.8,64,0,0,0,,,,2009-02-11 08:00,2009-02-19 17:00,,2008-11-16 08:00,2008-11-24 17:00,2008-11-16 08:00,2008-11-24 17:00,2008-11-16 08:00,2008-11-24 17:00,,,,,PT_Normal,,,,,i9ZHN/0CHkqdBRrTsJ4uFQ,,,,N,0,0
1996,83895,829,12178,912,1,0,N,N,N,CP_Drtn,TT_Task,DT_FixedDUR2,RV_OK,TK_NotStart,713GU76050,Structured cabling,2296,128,0,64,0,345.6,345.6,64,0,0,0,,,,2008-11-03 08:00,2008-11-11 17:00,,2008-10-15 08:00,2008-10-23 17:00,2008-10-15 08:00,2008-10-23 17:00,2008-10-15 08:00,2008-10-23 17:00,,,,,PT_Normal,,,,,ih3kERH3XEmGxHPa1H/jgA,,,,N,0,0
1997,83896,829,11201,912,1,0,N,N,N,CP_Drtn,TT_Task,DT_FixedDUR2,RV_OK,TK_NotStart,713PE46050,Jambs & headers,2306,352,0,120,0,936,936,120,16,0,16,,,,2008-12-10 08:00,2008-12-27 17:00,,2008-10-20 08:00,2008-11-05 17:00,2008-10-20 08:00,2008-11-05 17:00,2008-10-20 08:00,2008-11-05 17:00,,,,,PT_Normal,,,,,4SqRjpwppkOJiYKq0WH/iQ,,,,N,0,0
1998,83897,829,11201,912,1,0,N,N,N,CP_Drtn,TT_Task,DT_FixedDUR2,RV_OK,TK_NotStart,713PE46100,Brackets & seperators,2306,352,0,120,0,536,536,120,16,0,16,,,,2008-12-28 08:00,2009-01-13 17:00,,2008-11-06 08:00,2008-11-23 17:00,2008-11-06 08:00,2008-11-23 17:00,2008-11-06 08:00,2008-11-23 17:00,,,,,PT_Normal,,,,,Ay83NYdbT0aUtN1tW+p65A,,,,N,0,0
1999,83898,829,11201,912,1,0,N,N,N,CP_Drtn,TT_Task,DT_FixedDUR2,RV_OK,TK_NotStart,713PE46150,Guide rails,2306,352,0,120,0,536,536,120,16,0,16,,,,2009-01-14 08:00,2009-01-31 17:00,,2008-11-24 08:00,2008-12-10 17:00,2008-11-24 08:00,2008-12-10 17:00,2008-11-24 08:00,2008-12-10 17:00,,,,,PT_Normal,,,,,ugFT0UTqBUGXvZVnUTYUcA,,,,N,0,0
2000,83899,829,11201,912,1,0,N,N,N,CP_Drtn,TT_Task,DT_FixedDUR2,RV_OK,TK_NotStart,713PE46200,Machine room works,2306,352,0,120,0,536,536,120,16,0,16,,,,2009-01-26 08:00,2009-02-11 17:00,,2008-12-06 08:00,2008-12-22 17:00,2008-12-06 08:00,2008-12-22 17:00,2008-12-06 08:00,2008-12-22 17:00,,,,,PT_Normal,,,,,YEKP+4WQ6kCSF66QFy7h0g,,,,N,0,0
2001,83900,829,11201,912,1,0,N,N,N,CP_Drtn,TT_Task,DT_FixedDUR2,RV_OK,TK_NotStart,713PE46250,Cabin works,2306,352,0,120,0,472,472,120,0,0,0,,,,2009-02-07 08:00,2009-02-23 17:00,,2008-12-17 08:00,2009-01-03 17:00,2008-12-17 08:00,2009-01-03 17:00,2008-12-17 08:00,2009-01-03 17:00,,,,,PT_Normal,,,,,RDhttAOkTkS7LthkcMoo0g,,,,N,0,0
2002,83901,829,11201,912,1,0,N,N,N,CP_Drtn,TT_Task,DT_FixedDUR2,RV_OK,TK_NotStart,713PE46300,"Ropping, hatch doors, hoistways & wirring",2306,352,0,120,0,616,616,120,16,0,16,,,,2009-02-18 08:00,2009-03-07 17:00,,2008-12-29 08:00,2009-01-14 17:00,2008-12-29 08:00,2009-01-14 17:00,2008-12-29 08:00,2009-01-14 17:00,,,,,PT_Normal,,,,,hMxD/IKzGkaVPYF1a5J/Hg,,,,N,0,0
2003,83902,829,11597,912,1,0,N,N,N,CP_Drtn,TT_Task,DT_FixedDUR2,RV_OK,TK_NotStart,713RF12350,Roof Parapets,2306,112,0,32,0,8972.4,8972.4,32,99744,0,99744,,,,2008-11-01 08:00,2008-11-04 17:00,,2008-10-15 08:00,2008-10-19 17:00,2008-10-15 08:00,2008-10-19 17:00,2008-10-15 08:00,2008-10-19 17:00,,,,,PT_Normal,,,,,04Nx/xkm+UGfmb5+GR8OGw,,,,N,0,0
2004,83903,829,11189,912,1,0,N,N,N,CP_Drtn,TT_Task,DT_FixedDUR2,RV_OK,TK_NotStart,713RF22200,Roof light weight concreting & angle fillet,2306,208,0,72,0,17722,17722,72,14120,0,14120,,,,2008-12-08 08:00,2008-12-17 17:00,,2008-11-08 08:00,2008-11-17 17:00,2008-11-08 08:00,2008-11-17 17:00,2008-11-08 08:00,2008-11-17 17:00,,,,,PT_Normal,,,,,GAXkbrUJsE64qPhvv10ZOQ,,,,N,0,0
2005,83904,829,11189,912,1,0,N,N,N,CP_Drtn,TT_Task,DT_FixedDUR2,RV_OK,TK_NotStart,713RF22250,Roof membrane,2306,208,0,72,0,17016,17016,72,14120,0,14120,,,,2008-12-18 08:00,2008-12-28 17:00,,2008-11-18 08:00,2008-11-27 17:00,2008-11-18 08:00,2008-11-27 17:00,2008-11-18 08:00,2008-11-27 17:00,,,,,PT_Normal,,,,,s/QNipdtVU6qoBKpYrGfKA,,,,N,0,0
2006,83905,829,11189,912,1,0,N,N,N,CP_Drtn,TT_Task,DT_FixedDUR2,RV_OK,TK_NotStart,713RF22300,Polystyrene insulation & seperation layers,2306,432,0,64,0,17008,17008,64,14120,0,14120,,,,2009-01-31 08:00,2009-02-08 17:00,,2008-11-29 08:00,2008-12-07 17:00,2008-11-29 08:00,2008-12-07 17:00,2008-11-29 08:00,2008-12-07 17:00,,,,,PT_Normal,,,,,VqfC0Ipje0a1j5VJLd9Fqw,,,,N,0,0
2007,83906,829,11189,912,1,0,N,N,N,CP_Drtn,TT_Task,DT_FixedDUR2,RV_OK,TK_NotStart,713RF22350,Concrete tiles,2306,432,0,80,0,16330,16330,80,13000,0,13000,,,,2009-02-08 08:00,2009-02-18 17:00,,2008-12-07 08:00,2008-12-17 17:00,2008-12-07 08:00,2008-12-17 17:00,2008-12-07 08:00,2008-12-17 17:00,,,,,PT_Normal,,,,,mcemyaBuOE6tW7ykk08npw,,,,N,0,0
2008,83907,829,11189,912,1,0,N,N,N,CP_Drtn,TT_Task,DT_FixedDUR2,RV_OK,TK_NotStart,713RF22400,Gravel fill,2306,704,392,48,0,1280,1280,48,1120,0,1120,,,,2009-03-31 08:00,2009-04-06 17:00,,2008-12-18 08:00,2008-12-24 17:00,2008-12-18 08:00,2008-12-24 17:00,2008-12-18 08:00,2008-12-24 17:00,,,,,PT_Normal,,,,,nl3wJBYYA0mrgj38eb9Mew,,,,N,0,0
2009,83908,829,11189,912,1,0,N,N,N,CP_Drtn,TT_Task,DT_FixedDUR2,RV_OK,TK_NotStart,713RF22450,Aluminium flashing,2306,688,376,64,0,3256.2,3256.2,64,2776,0,2776,,,,2009-03-29 08:00,2009-04-06 17:00,,2008-12-18 08:00,2008-12-27 17:00,2008-12-18 08:00,2008-12-27 17:00,2008-12-18 08:00,2008-12-27 17:00,,,,,PT_Normal,,,,,S4xkwPOZIk2d+w5DiFQhRQ,,,,N,0,0
2010,83909,829,11081,912,1,0,N,N,N,CP_Drtn,TT_Task,DT_FixedDUR2,RV_OK,TK_NotStart,713RF24300,Aluminium framing for roof towers,2306,688,376,64,0,768,768,64,64,0,64,,,,2009-03-29 08:00,2009-04-06 17:00,,2008-12-18 08:00,2008-12-27 17:00,2008-12-18 08:00,2008-12-27 17:00,2008-12-18 08:00,2008-12-27 17:00,,,,,PT_Normal,,,,,qbPuNIPq6kaE+cEm4III6w,,,,N,0,0
2011,83910,829,11082,912,1,0,N,N,N,CP_Drtn,TT_Task,DT_FixedDUR2,RV_OK,TK_NotStart,713RF44250,Roof upstands & equipement foundations,2306,208,0,64,0,3979.76,3979.76,64,608,0,608,,,,2008-11-29 08:00,2008-12-07 17:00,,2008-10-29 08:00,2008-11-06 17:00,2008-10-29 08:00,2008-11-06 17:00,2008-10-29 08:00,2008-11-06 17:00,,,,,PT_Normal,,,,,OwWjLHOPXEefrHUl+lLf8Q,,,,N,0,0
2012,83911,829,11082,912,1,0,N,N,N,CP_Drtn,TT_Task,DT_FixedDUR2,RV_OK,TK_NotStart,713RF44350,Roof tower concrete elements,2306,272,64,64,0,499.6,499.6,64,64,0,64,,,,2008-11-29 08:00,2008-12-07 17:00,,2008-10-20 08:00,2008-10-28 17:00,2008-10-20 08:00,2008-10-28 17:00,2008-10-20 08:00,2008-10-28 17:00,,,,,PT_Normal,,,,,OBM8Mclyq0iIvgTNJYTYXA,,,,N,0,0
2013,83912,829,12127,912,1,0,N,N,N,CP_Drtn,TT_Task,DT_FixedDUR2,RV_OK,TK_NotStart,713RF52400,FAHU's & fans,2296,432,184,120,0,1836,1836,120,0,0,0,,,,2009-02-09 08:00,2009-02-25 17:00,,2008-12-08 08:00,2008-12-24 17:00,2008-12-08 08:00,2008-12-24 17:00,2008-12-08 08:00,2008-12-24 17:00,,,,,PT_Normal,,,,,nf3tuMoJlE6ivhZHY8FAPQ,,,,N,0,0
2014,83913,829,12506,912,1,0,N,N,N,CP_Drtn,TT_Task,DT_FixedDUR2,RV_OK,TK_NotStart,713RF68800,Lighting protection system,2296,168,56,64,0,328,328,64,0,0,0,,,,2008-12-07 08:00,2008-12-15 17:00,,2008-11-12 08:00,2008-11-20 17:00,2008-11-12 08:00,2008-11-20 17:00,2008-11-12 08:00,2008-11-20 17:00,,,,,PT_Normal,,,,,k3p68g4nlEGALem4/QHxfg,,,,N,0,0
2015,83914,829,11084,912,1,0,N,N,N,CP_Drtn,TT_Task,DT_FixedDUR2,RV_OK,TK_NotStart,713ST18150,Painting 1st top coat,2306,336,24,120,0,12972,12972,120,12240,0,12240,,,,2009-03-21 08:00,2009-04-06 17:00,,2009-01-31 08:00,2009-02-16 17:00,2009-01-31 08:00,2009-02-16 17:00,2009-01-31 08:00,2009-02-16 17:00,,,,,PT_Normal,,,,,4uZnJF3BdU6QRghQLbQ20w,,,,N,0,0
2016,83915,829,11085,912,1,0,N,N,N,CP_Drtn,TT_Task,DT_FixedDUR2,RV_OK,TK_NotStart,713ST20050,Floor tiles for staircases,2306,336,0,120,0,1848,1848,120,1280,0,1280,,,,2009-02-02 08:00,2009-02-18 17:00,,2008-12-15 08:00,2008-12-31 17:00,2008-12-15 08:00,2008-12-31 17:00,2008-12-15 08:00,2008-12-31 17:00,,,,,PT_Normal,,,,,IzLQiW7xDEeG3Ev8/ZwMvg,,,,N,0,0
2017,83916,829,11085,912,1,0,N,N,N,CP_Drtn,TT_Task,DT_FixedDUR2,RV_OK,TK_NotStart,713ST20150,Treads & risers,2306,336,0,120,0,4320,4320,120,2800,0,2800,,,,2009-01-10 08:00,2009-01-26 17:00,,2008-11-22 08:00,2008-12-08 17:00,2008-11-22 08:00,2008-12-08 17:00,2008-11-22 08:00,2008-12-08 17:00,,,,,PT_Normal,,,,,QNMyn+dLHEyq20kTm95Mkg,,,,N,0,0
2018,83917,829,11195,912,1,0,N,N,N,CP_Drtn,TT_Task,DT_FixedDUR2,RV_OK,TK_NotStart,713ST24350,Staircase handrail,2306,336,0,120,0,3578,3578,120,1976,0,1976,,,,2009-02-25 08:00,2009-03-14 17:00,,2009-01-07 08:00,2009-01-24 17:00,2009-01-07 08:00,2009-01-24 17:00,2009-01-07 08:00,2009-01-24 17:00,,,,,PT_Normal,,,,,u2Z/g1UevEabZcW8Afn2uQ,,,,N,0,0
2019,83918,829,11708,912,1,0,N,N,N,CP_Drtn,TT_Task,DT_FixedDUR2,RV_OK,TK_NotStart,7150080050,Earth works to makeup levels,2306,216,8,120,0,54405,54405,120,39480,0,39480,,,,2008-12-13 08:00,2008-12-29 17:00,,2008-11-11 08:00,2008-11-27 17:00,2008-11-11 08:00,2008-11-27 17:00,2008-11-11 08:00,2008-11-27 17:00,,,,,PT_Normal,,,,,dPaKezCpuk+RNDdPqSRjsg,,,,N,0,0
2020,83919,829,11708,912,1,0,N,N,N,CP_Drtn,TT_Task,DT_FixedDUR2,RV_OK,TK_NotStart,7150080100,Sub base,2306,208,0,120,0,6420,6420,120,4200,0,4200,,,,2008-12-29 08:00,2009-01-14 17:00,,2008-11-29 08:00,2008-12-15 17:00,2008-11-29 08:00,2008-12-15 17:00,2008-11-29 08:00,2008-12-15 17:00,,,,,PT_Normal,,,,,HN0mCyqTDUOj/vruGkSjHA,,,,N,0,0
2021,83920,829,11708,912,1,0,N,N,N,CP_Drtn,TT_Task,DT_FixedDUR2,RV_OK,TK_NotStart,7150080150,Sub grade,2306,208,0,120,0,3060,3060,120,1960,0,1960,,,,2009-01-10 08:00,2009-01-26 17:00,,2008-12-10 08:00,2008-12-27 17:00,2008-12-10 08:00,2008-12-27 17:00,2008-12-10 08:00,2008-12-27 17:00,,,,,PT_Normal,,,,,h7SxFbyRuES4HIV1BiK2+A,,,,N,0,0
2022,83921,829,11708,912,1,0,N,N,N,CP_Drtn,TT_Task,DT_FixedDUR2,RV_OK,TK_NotStart,7150080200,Kerbs,2306,208,0,120,0,13815,13815,120,9960,0,9960,,,,2009-01-18 08:00,2009-02-03 17:00,,2008-12-18 08:00,2009-01-04 17:00,2008-12-18 08:00,2009-01-04 17:00,2008-12-18 08:00,2009-01-04 17:00,,,,,PT_Normal,,,,,8AFxPvA2V02g0D731td+mg,,,,N,0,0
2023,83922,829,11708,912,1,0,N,N,N,CP_Drtn,TT_Task,DT_FixedDUR2,RV_OK,TK_NotStart,7150080250,Paving,2306,272,0,120,0,43345,43345,120,36400,0,36400,,,,2009-02-08 08:00,2009-02-24 17:00,,2008-12-30 08:00,2009-01-15 17:00,2008-12-30 08:00,2009-01-15 17:00,2008-12-30 08:00,2009-01-15 17:00,,,,,PT_Normal,,,,,VcukUI1Y4kGUN+kE7bWxUg,,,,N,0,0
2024,83923,829,11708,912,1,0,N,N,N,CP_Drtn,TT_Task,DT_FixedDUR2,RV_OK,TK_NotStart,7150080300,Jogging path surface finish including bed.,2306,272,64,120,0,4740,4740,120,3360,0,3360,,,,2009-03-03 08:00,2009-03-19 17:00,,2009-01-22 08:00,2009-02-08 17:00,2009-01-22 08:00,2009-02-08 17:00,2009-01-22 08:00,2009-02-08 17:00,,,,,PT_Normal,,,,,yV082AgldkGEPxUXdXQ8hA,,,,N,0,0
2025,83924,829,11708,912,1,0,N,N,N,CP_Drtn,TT_Task,DT_FixedDUR2,RV_OK,TK_NotStart,7150080350,Bituminous wearing course,2306,208,0,120,0,10915,10915,120,10160,0,10160,,,,2009-02-04 08:00,2009-02-21 17:00,,2009-01-05 08:00,2009-01-21 17:00,2009-01-05 08:00,2009-01-21 17:00,2009-01-05 08:00,2009-01-21 17:00,,,,,PT_Normal,,,,,REp9rWW8JUqWEDjuVByc+g,,,,N,0,0
2026,83925,829,11708,912,1,0,N,N,N,CP_Drtn,TT_Task,DT_FixedDUR2,RV_OK,TK_NotStart,7150080400,Bituminous binder course,2306,208,0,120,0,10915,10915,120,10160,0,10160,,,,2009-02-22 08:00,2009-03-10 17:00,,2009-01-22 08:00,2009-02-08 17:00,2009-01-22 08:00,2009-02-08 17:00,2009-01-22 08:00,2009-02-08 17:00,,,,,PT_Normal,,,,,t+NRQpt8W0+3bzloVmwpNA,,,,N,0,0
2027,83926,829,11708,912,1,0,N,N,N,CP_Drtn,TT_Task,DT_FixedDUR2,RV_OK,TK_NotStart,7150080450,Road marking,2306,208,0,72,0,10359,10359,72,10160,0,10160,,,,2009-03-10 08:00,2009-03-19 17:00,,2009-02-08 08:00,2009-02-17 17:00,2009-02-08 08:00,2009-02-17 17:00,2009-02-08 08:00,2009-02-17 17:00,,,,,PT_Normal,,,,,8/RTDURf9ku5KA8R2bgaIA,,,,N,0,0
2028,83927,829,11500,912,1,0,N,N,N,CP_Drtn,TT_Task,DT_FixedDUR2,RV_OK,TK_NotStart,7150082050,Excavation for external retaining walls,2306,208,0,72,0,222391,222391,72,187216,0,187216,,,,2008-11-15 08:00,2008-11-24 17:00,,2008-10-15 08:00,2008-10-25 17:00,2008-10-15 08:00,2008-10-25 17:00,2008-10-15 08:00,2008-10-25 17:00,,,,,PT_Normal,,,,,PCa/wl+TPUGDpc1JxceLaQ,,,,N,0,0
2029,83928,829,11500,912,1,0,N,N,N,CP_Drtn,TT_Task,DT_FixedDUR2,RV_OK,TK_NotStart,7150082100,Blinding under external retaining walls,2306,208,0,48,0,846,846,48,760,0,760,,,,2008-11-22 08:00,2008-11-27 17:00,,2008-10-22 08:00,2008-10-28 17:00,2008-10-22 08:00,2008-10-28 17:00,2008-10-22 08:00,2008-10-28 17:00,,,,,PT_Normal,,,,,+ZrO7rgvcU2B89Mrfn0SwQ,,,,N,0,0
2030,83929,829,11500,912,1,0,N,N,N,CP_Drtn,TT_Task,DT_FixedDUR2,RV_OK,TK_NotStart,7150082150,W/P for blinding of external retaining walls,2306,208,0,48,0,13756,13756,48,11920,0,11920,,,,2008-11-27 08:00,2008-12-03 17:00,,2008-10-28 08:00,2008-11-03 17:00,2008-10-28 08:00,2008-11-03 17:00,2008-10-28 08:00,2008-11-03 17:00,,,,,PT_Normal,,,,,/tN9GyGSTEGi28hwIFMOYw,,,,N,0,0
2031,83930,829,11500,912,1,0,N,N,N,CP_Drtn,TT_Task,DT_FixedDUR2,RV_OK,TK_NotStart,7150082200,Construction of external retaining walls,2306,208,0,120,0,24312,24312,120,5040,0,5040,,,,2008-12-02 08:00,2008-12-18 17:00,,2008-11-02 08:00,2008-11-18 17:00,2008-11-02 08:00,2008-11-18 17:00,2008-11-02 08:00,2008-11-18 17:00,,,,,PT_Normal,,,,,xMoRNiDOIU+I4Zg+BWuOdA,,,,N,0,0
2032,83931,829,11500,912,1,0,N,N,N,CP_Drtn,TT_Task,DT_FixedDUR2,RV_OK,TK_NotStart,7150082250,W/P for embedded parts of retaining walls,2306,208,0,72,0,18992,18992,72,17200,0,17200,,,,2008-12-18 08:00,2008-12-28 17:00,,2008-11-18 08:00,2008-11-27 17:00,2008-11-18 08:00,2008-11-27 17:00,2008-11-18 08:00,2008-11-27 17:00,,,,,PT_Normal,,,,,9Lc4N2oG8kaN/LG1JNwt9g,,,,N,0,0
2033,83932,829,11500,912,1,0,N,N,N,CP_Drtn,TT_Task,DT_FixedDUR2,RV_OK,TK_NotStart,7150082300,Back filling for external retaining walls,2306,208,0,72,0,239674,239674,72,174256,0,174256,,,,2008-12-27 08:00,2009-01-05 17:00,,2008-11-26 08:00,2008-12-06 17:00,2008-11-26 08:00,2008-12-06 17:00,2008-11-26 08:00,2008-12-06 17:00,,,,,PT_Normal,,,,,9ApjkuRcZEyMUxt5Lq22HA,,,,N,0,0
2034,83933,829,11501,912,1,0,N,N,N,CP_Drtn,TT_Task,DT_FixedDUR2,RV_OK,TK_NotStart,7150084050,Excavation for external drainage network,2306,232,0,120,0,1220,1220,120,880,0,880,,,,2008-11-06 08:00,2008-11-23 17:00,,2008-10-04 08:00,2008-10-20 17:00,2008-10-04 08:00,2008-10-20 17:00,2008-10-04 08:00,2008-10-20 17:00,,,,,PT_Normal,,,,,7q6pgpZVikCyC5+u+SnDyg,,,,N,0,0
2035,83934,829,11501,912,1,0,N,N,N,CP_Drtn,TT_Task,DT_FixedDUR2,RV_OK,TK_NotStart,7150084100,Construction of R.C.C.drainage trench,2306,272,0,120,0,1260,1260,120,240,0,240,,,,2008-11-26 08:00,2008-12-13 17:00,,2008-10-18 08:00,2008-11-03 17:00,2008-10-18 08:00,2008-11-03 17:00,2008-10-18 08:00,2008-11-03 17:00,,,,,PT_Normal,,,,,F9hIYvDBDUSrjZeegvgTxA,,,,N,0,0
2036,83935,829,11501,912,1,0,N,N,N,CP_Drtn,TT_Task,DT_FixedDUR2,RV_OK,TK_NotStart,7150084150,Construction of Manholes,2306,232,0,120,0,354,354,120,24,0,24,,,,2008-11-20 08:00,2008-12-07 17:00,,2008-10-18 08:00,2008-11-03 17:00,2008-10-18 08:00,2008-11-03 17:00,2008-10-18 08:00,2008-11-03 17:00,,,,,PT_Normal,,,,,i/0XcSGdfk+n8aZ/fVSpSQ,,,,N,0,0
2037,83936,829,11501,912,1,0,N,N,N,CP_Drtn,TT_Task,DT_FixedDUR2,RV_OK,TK_NotStart,7150084170,Water proofing for manholes,2306,232,0,120,0,204,204,120,24,0,24,,,,2008-12-08 08:00,2008-12-24 17:00,,2008-11-04 08:00,2008-11-20 17:00,2008-11-04 08:00,2008-11-20 17:00,2008-11-04 08:00,2008-11-20 17:00,,,,,PT_Normal,,,,,qwOrePU+YUCvlJRUuH+CiA,,,,N,0,0
2038,83937,829,11501,912,1,0,N,N,N,CP_Drtn,TT_Task,DT_FixedDUR2,RV_OK,TK_NotStart,7150084200,External drainage pipe works,2306,272,40,120,0,920,920,120,0,0,0,,,,2008-12-08 08:00,2008-12-24 17:00,,2008-10-29 08:00,2008-11-15 17:00,2008-10-29 08:00,2008-11-15 17:00,2008-10-29 08:00,2008-11-15 17:00,,,,,PT_Normal,,,,,bXjzRsKCHE2ZHnluKinZZw,,,,N,0,0
2039,83938,829,11501,912,1,0,N,N,N,CP_Drtn,TT_Task,DT_FixedDUR2,RV_OK,TK_NotStart,7150084250,Back filling over external drainage pipes,2306,232,24,120,0,1330,1330,120,880,0,880,,,,2008-12-20 08:00,2009-01-05 17:00,,2008-11-16 08:00,2008-12-02 17:00,2008-11-16 08:00,2008-12-02 17:00,2008-11-16 08:00,2008-12-02 17:00,,,,,PT_Normal,,,,,7Qvg0LS4b0Wi1LvDXqzObA,,,,N,0,0
2040,83939,829,11711,912,1,0,N,N,N,CP_Drtn,TT_Task,DT_FixedDUR2,RV_OK,TK_NotStart,7150085050,Excavation for external fire fighting network,2306,304,0,120,0,1220,1220,120,880,0,880,,,,2008-12-10 08:00,2008-12-27 17:00,,2008-10-27 08:00,2008-11-12 17:00,2008-10-27 08:00,2008-11-12 17:00,2008-10-27 08:00,2008-11-12 17:00,,,,,PT_Normal,,,,,DcOgLiD4S0uF5a7NaPKgyg,,,,N,0,0
2041,83940,829,11711,912,1,0,N,N,N,CP_Drtn,TT_Task,DT_FixedDUR2,RV_OK,TK_NotStart,7150085100,Fire hydrants,2296,304,0,72,0,372,372,72,0,0,0,,,,2009-02-10 08:00,2009-02-19 17:00,,2008-12-28 08:00,2009-01-06 17:00,2008-12-28 08:00,2009-01-06 17:00,2008-12-28 08:00,2009-01-06 17:00,,,,,PT_Normal,,,,,xO7orbtuJEesZ8grl7vdGg,,,,N,0,0
2042,83941,829,11711,912,1,0,N,N,N,CP_Drtn,TT_Task,DT_FixedDUR2,RV_OK,TK_NotStart,7150085150,Construction of valve chambers,2306,304,0,120,0,354,354,120,24,0,24,,,,2008-12-24 08:00,2009-01-10 17:00,,2008-11-10 08:00,2008-11-26 17:00,2008-11-10 08:00,2008-11-26 17:00,2008-11-10 08:00,2008-11-26 17:00,,,,,PT_Normal,,,,,DOmfSLvEX0+fwquilGwxRw,,,,N,0,0
2043,83942,829,11711,912,1,0,N,N,N,CP_Drtn,TT_Task,DT_FixedDUR2,RV_OK,TK_NotStart,7150085170,Water proofing for chambers,2306,304,0,120,0,204,204,120,24,0,24,,,,2009-01-11 08:00,2009-01-27 17:00,,2008-11-27 08:00,2008-12-14 17:00,2008-11-27 08:00,2008-12-14 17:00,2008-11-27 08:00,2008-12-14 17:00,,,,,PT_Normal,,,,,YVXYM6J80UOCGtjnCnAL0g,,,,N,0,0
2044,83943,829,11711,912,1,0,N,N,N,CP_Drtn,TT_Task,DT_FixedDUR2,RV_OK,TK_NotStart,7150085200,External fire fighting pipe works,2306,344,40,120,0,920,920,120,0,0,0,,,,2009-01-11 08:00,2009-01-27 17:00,,2008-11-22 08:00,2008-12-08 17:00,2008-11-22 08:00,2008-12-08 17:00,2008-11-22 08:00,2008-12-08 17:00,,,,,PT_Normal,,,,,GYCDjYG2s0C8kjWIBjWScw,,,,N,0,0
2045,83944,829,11711,912,1,0,N,N,N,CP_Drtn,TT_Task,DT_FixedDUR2,RV_OK,TK_NotStart,7150085250,Back filling over external fire fighting pipes,2306,304,0,120,0,1330,1330,120,880,0,880,,,,2009-01-22 08:00,2009-02-08 17:00,,2008-12-09 08:00,2008-12-25 17:00,2008-12-09 08:00,2008-12-25 17:00,2008-12-09 08:00,2008-12-25 17:00,,,,,PT_Normal,,,,,m7H5tz4OJkq1rV4tvowuqw,,,,N,0,0
2046,83945,829,11503,912,1,100,N,N,N,CP_Drtn,TT_Task,DT_FixedDUR2,RV_OK,TK_Complete,7150086000,Landscaping work,2283,1160,0,0,856,0,856,856,,,0,,2007-12-08 08:00,2008-04-15 17:00,2009-03-21 08:00,2009-03-19 17:00,,2008-10-02 08:00,2008-10-01 17:00,,,2007-12-08 08:00,2008-04-15 17:00,,,,,PT_Normal,,,,,Ao2O1W3LIUq6H8LaSUvIew,,,,N,856,0
2047,83946,829,11504,913,1,0,N,N,N,CP_Drtn,TT_Task,DT_FixedDUR2,RV_OK,TK_NotStart,7150090002,Potable water house connection & tie in,2296,400,8,32,0,332,332,32,0,0,0,,,,2009-02-25 08:00,2009-02-28 17:00,,2009-01-06 08:00,2009-01-09 17:00,2009-01-06 08:00,2009-01-09 17:00,2009-01-06 08:00,2009-01-09 17:00,,,,,PT_Normal,,,,,RhVD7eh1lk2Th/LFn+rrFg,,,,N,0,0
2048,83947,829,11504,913,1,0,N,N,N,CP_Drtn,TT_Task,DT_FixedDUR2,RV_OK,TK_NotStart,7150090004,Delivery & commissioning of Transforemers,2296,496,8,80,0,480,480,80,0,0,0,,,,2009-02-16 08:00,2009-02-25 17:00,,2008-12-16 08:00,2008-12-25 17:00,2008-12-16 08:00,2008-12-25 17:00,2008-12-16 08:00,2008-12-25 17:00,,,,,PT_Normal,,,,,yKaS/PZSIE6JpRBz4YOA0g,,,,N,0,0
2049,83948,829,11504,913,1,0,N,N,N,CP_Drtn,TT_Task,DT_FixedDUR2,RV_OK,TK_NotStart,7150090006,Telecom house connection & tie in,2296,488,0,32,0,232,232,32,0,0,0,,,,2009-03-11 08:00,2009-03-14 17:00,,2009-01-09 08:00,2009-01-12 17:00,2009-01-09 08:00,2009-01-12 17:00,2009-01-09 08:00,2009-01-12 17:00,,,,,PT_Normal,,,,,DZ1Jdw8q3UCXU5lUkLA2sg,,,,N,0,0
2050,83949,829,11504,913,1,0,N,N,N,CP_Drtn,TT_Task,DT_FixedDUR2,RV_OK,TK_NotStart,7150090008,LPG house connection & tie in,2296,560,0,32,0,232,232,32,0,0,0,,,,2009-03-11 08:00,2009-03-14 17:00,,2008-12-31 08:00,2009-01-03 17:00,2008-12-31 08:00,2009-01-03 17:00,2008-12-31 08:00,2009-01-03 17:00,,,,,PT_Normal,,,,,kM0sVHBVdkWyK1grayTPDA,,,,N,0,0
2051,83950,829,11504,913,1,0,N,N,N,CP_Drtn,TT_Task,DT_FixedDUR2,RV_OK,TK_NotStart,7150090010,Chilled water house connection & tie in,2296,352,0,32,0,432,432,32,0,0,0,,,,2009-02-22 08:00,2009-02-25 17:00,,2009-01-09 08:00,2009-01-12 17:00,2009-01-09 08:00,2009-01-12 17:00,2009-01-09 08:00,2009-01-12 17:00,,,,,PT_Normal,,,,,FuhOwOWQh0qzu8Sk1MICHQ,,,,N,0,0
2052,83951,829,11504,913,1,0,N,N,N,CP_Drtn,TT_Task,DT_FixedDUR2,RV_OK,TK_NotStart,7150090012,Drainage house connection & tie in,2296,392,0,32,0,632,632,32,0,0,0,,,,2009-02-25 08:00,2009-02-28 17:00,,2009-01-07 08:00,2009-01-10 17:00,2009-01-07 08:00,2009-01-10 17:00,2009-01-07 08:00,2009-01-10 17:00,,,,,PT_Normal,,,,,TrPVzsFt90COiWk4UUvy2g,,,,N,0,0
2053,83952,829,11504,912,1,0,N,N,N,CP_Drtn,TT_Task,DT_FixedDUR2,RV_OK,TK_NotStart,7150090018,Fire Fighting house connection & tie in,2283,304,0,32,0,32,32,32,0,0,0,,,,2009-02-22 08:00,2009-02-25 17:00,,2009-01-08 08:00,2009-01-12 17:00,2009-01-08 08:00,2009-01-12 17:00,2009-01-08 08:00,2009-01-12 17:00,,,,,PT_Normal,,,,,c5AhDLwx3ESKYMzBJWKvBw,,,,N,0,0
2054,83953,829,11504,912,1,0,N,N,N,CP_Drtn,TT_Task,DT_FixedDUR2,RV_OK,TK_NotStart,7150090028,Fire Alarm house connection & tie in,2283,304,0,32,0,32,32,32,0,0,0,,,,2009-02-22 08:00,2009-02-25 17:00,,2009-01-08 08:00,2009-01-12 17:00,2009-01-08 08:00,2009-01-12 17:00,2009-01-08 08:00,2009-01-12 17:00,,,,,PT_Normal,,,,,b/Q8r+N67ECZSFN6sCAPqw,,,,N,0,0
2055,83954,829,11008,912,1,100,N,N,N,CP_Drtn,TT_Task,DT_FixedDUR2,RV_OK,TK_Complete,71S0004050,Excavation & compaction,2296,296,0,0,2196.8,0,2196.8,32,2112,2112,0,,2008-07-26 08:00,2008-07-29 17:00,2008-11-15 08:00,2008-11-13 17:00,,2008-10-02 08:00,2008-10-01 17:00,,,2008-07-26 08:00,2008-07-29 17:00,,,,,PT_Normal,,,,,qZplTbfYgE+RGojxDWC1SQ,,,,N,2196.8,2112
2056,83955,829,11008,912,1,100,N,N,N,CP_Drtn,TT_Task,DT_FixedDUR2,RV_OK,TK_Complete,71S0004150,Engineering fill,2296,296,0,0,1644.02,0,1644.02,48,1520,1520,0,,2008-08-23 08:00,2008-08-28 17:00,2008-11-15 08:00,2008-11-13 17:00,,2008-10-02 08:00,2008-10-01 17:00,,,2008-08-23 08:00,2008-08-28 17:00,,,,,PT_Normal,,,,,50qAcKkSfECdHuCNKjTFTQ,,,,N,1644.02,1520
2057,83956,829,11008,912,1,100,N,N,N,CP_Drtn,TT_Task,DT_FixedDUR2,RV_OK,TK_Complete,71S0004151,Back filling arround SS,2296,296,0,0,2719.2,0,2719.2,48,2544,2544,0,,2008-09-25 08:00,2008-10-01 17:00,2008-11-15 08:00,2008-11-13 17:00,,2008-10-02 08:00,2008-10-01 17:00,,,2008-09-25 08:00,2008-10-01 17:00,,,,,PT_Normal,,,,,UNVCASnZW0KLKB9vidwHnQ,,,,N,2719.2,2544
2058,83957,829,11575,912,1,100,N,N,N,CP_Drtn,TT_Task,DT_FixedDUR2,RV_OK,TK_Complete,71S0006050,Blinding under raft slab,2296,296,0,0,4711,0,4711,8,4528,4528,0,,2008-07-30 08:00,2008-07-30 17:00,2008-11-15 08:00,2008-11-13 17:00,,2008-10-02 08:00,2008-10-01 17:00,,,2008-07-30 08:00,2008-07-30 17:00,,,,,PT_Normal,,,,,+YnXDroaMUm1Y6jD9DDwww,,,,N,4711,4528
2059,83958,829,11575,912,1,100,N,N,N,CP_Drtn,TT_Task,DT_FixedDUR2,RV_OK,TK_Complete,71S0006051,Blinding under slab on fill,2296,296,0,0,1753,0,1753,8,1680,1680,0,,2008-08-30 08:00,2008-08-30 17:00,2008-11-15 08:00,2008-11-13 17:00,,2008-10-02 08:00,2008-10-01 17:00,,,2008-08-30 08:00,2008-08-30 17:00,,,,,PT_Normal,,,,,sCZ+6tc5Kk+paffYPhqWyg,,,,N,1753,1680
2060,83959,829,11575,912,1,100,N,N,N,CP_Drtn,TT_Task,DT_FixedDUR2,RV_OK,TK_Complete,71S0006150,Construction of raft slab,2296,296,0,0,2130,0,2130,56,124936,124936,0,,2008-08-10 08:00,2008-08-17 17:00,2008-11-15 08:00,2008-11-13 17:00,,2008-10-02 08:00,2008-10-01 17:00,,,2008-08-10 08:00,2008-08-17 17:00,,,,,PT_Normal,,,,,yusZ+DyTOEiSVuVSGVWfbA,,,,N,2130,124936
2061,83960,829,11575,912,1,100,N,N,N,CP_Drtn,TT_Task,DT_FixedDUR2,RV_OK,TK_Complete,71S0006200,Neck columns & walls,2296,296,0,0,2580,0,2580,32,56332,56332,0,,2008-08-18 08:00,2008-08-21 17:00,2008-11-15 08:00,2008-11-13 17:00,,2008-10-02 08:00,2008-10-01 17:00,,,2008-08-18 08:00,2008-08-21 17:00,,,,,PT_Normal,,,,,L7cBia8nr06mDGzecDsysw,,,,N,2580,56332
2062,83961,829,11575,912,1,100,N,N,N,CP_Drtn,TT_Task,DT_FixedDUR2,RV_OK,TK_Complete,71S0006300,Slab on fill,2296,296,0,0,828,0,828,48,45024,45024,0,,2008-08-31 08:00,2008-09-06 17:00,2008-11-15 08:00,2008-11-13 17:00,,2008-10-02 08:00,2008-10-01 17:00,,,2008-08-31 08:00,2008-09-06 17:00,,,,,PT_Normal,,,,,G+qpmiZtzEGE3IsigdW3cA,,,,N,828,45024
2063,83962,829,11239,912,1,100,N,N,N,CP_Drtn,TT_Task,DT_FixedDUR2,RV_OK,TK_Complete,71S0008050,Block works as permanent shutters for raft slab,2296,296,0,0,394,0,394,24,296,296,0,,2008-08-02 08:00,2008-08-04 17:00,2008-11-15 08:00,2008-11-13 17:00,,2008-10-02 08:00,2008-10-01 17:00,,,2008-08-02 08:00,2008-08-04 17:00,,,,,PT_Normal,,,,,7ZGje0bno0Cm8OlWRrU2IQ,,,,N,394,296
2064,83963,829,11260,912,1,100,N,N,N,CP_Drtn,TT_Task,DT_FixedDUR2,RV_OK,TK_Complete,71S0010050,W/P for raft slab,2296,296,0,0,5458,0,5458,24,4528,4528,0,,2008-08-05 08:00,2008-08-07 17:00,2008-11-15 08:00,2008-11-13 17:00,,2008-10-02 08:00,2008-10-01 17:00,,,2008-08-05 08:00,2008-08-07 17:00,,,,,PT_Normal,,,,,kOHKs1pCu0SAhO7Ee9kbzQ,,,,N,5458,4528
2065,83964,829,11260,912,1,100,N,N,N,CP_Drtn,TT_Task,DT_FixedDUR2,RV_OK,TK_Complete,71S0010100,W/P externally for SS,2296,296,0,0,2822,0,2822,24,2544,2544,0,,2008-09-22 08:00,2008-09-24 17:00,2008-11-15 08:00,2008-11-13 17:00,,2008-10-02 08:00,2008-10-01 17:00,,,2008-09-22 08:00,2008-09-24 17:00,,,,,PT_Normal,,,,,T2vr73qAm0+evfRHUGFeug,,,,N,2822,2544
2066,83965,829,11260,912,1,100,N,N,N,CP_Drtn,TT_Task,DT_FixedDUR2,RV_OK,TK_Complete,71S0010150,Screed protection for W/P of raft slab,2296,296,0,0,4460,0,4460,8,4240,4240,0,,2008-08-09 08:00,2008-08-09 17:00,2008-11-15 08:00,2008-11-13 17:00,,2008-10-02 08:00,2008-10-01 17:00,,,2008-08-09 08:00,2008-08-09 17:00,,,,,PT_Normal,,,,,ibDJ7WaDbEK3kcLaloOcjg,,,,N,4460,4240
2067,83966,829,11384,912,1,100,N,N,N,CP_Drtn,TT_Task,DT_FixedDUR2,RV_OK,TK_Complete,71S0012050,Columns,2296,296,0,0,1030,0,1030,24,28196,28196,0,,2008-09-07 08:00,2008-09-09 17:00,2008-11-15 08:00,2008-11-13 17:00,,2008-10-02 08:00,2008-10-01 17:00,,,2008-09-07 08:00,2008-09-09 17:00,,,,,PT_Normal,,,,,gDaHZVqkika9pRTsp2PAhw,,,,N,1030,28196
2068,83967,829,11384,912,1,100,N,N,N,CP_Drtn,TT_Task,DT_FixedDUR2,RV_OK,TK_Complete,71S0012200,Slab @ substation roof level,2296,296,0,0,3661,0,3661,56,93224,93224,0,,2008-09-10 08:00,2008-09-17 17:00,2008-11-15 08:00,2008-11-13 17:00,,2008-10-02 08:00,2008-10-01 17:00,,,2008-09-10 08:00,2008-09-17 17:00,,,,,PT_Normal,,,,,ys/w8Wp070S/iZJaG1JwAA,,,,N,3661,93224
2069,83968,829,11384,912,1,100,N,N,N,CP_Drtn,TT_Task,DT_FixedDUR2,RV_OK,TK_Complete,71S0012350,Parapet,2296,296,0,0,448,0,448,24,8604,8604,0,,2008-09-18 08:00,2008-09-21 17:00,2008-11-15 08:00,2008-11-13 17:00,,2008-10-02 08:00,2008-10-01 17:00,,,2008-09-18 08:00,2008-09-21 17:00,,,,,PT_Normal,,,,,t+TWDTWKaUuR2whyKTIQPA,,,,N,448,8604
2070,83969,829,11208,912,1,0,N,N,N,CP_Drtn,TT_Task,DT_FixedDUR2,RV_OK,TK_NotStart,71S0014050,Block walls,2296,568,0,48,0,2484,2484,48,6496,0,6496,,,,2008-12-27 08:00,2009-01-01 17:00,,2008-10-05 08:00,2008-10-11 17:00,2008-10-05 08:00,2008-10-11 17:00,2008-10-05 08:00,2008-10-11 17:00,,,,,PT_Normal,,,,,L7LKi0YiTU681r9RnyHPTQ,,,,N,0,0
2071,83970,829,10991,912,1,0,N,N,N,CP_Drtn,TT_Task,DT_FixedDUR2,RV_OK,TK_NotStart,71S0016050,Internal plaster works,2296,568,0,32,0,5665,5665,32,4952,0,4952,,,,2009-01-05 08:00,2009-01-08 17:00,,2008-10-14 08:00,2008-10-18 17:00,2008-10-14 08:00,2008-10-18 17:00,2008-10-14 08:00,2008-10-18 17:00,,,,,PT_Normal,,,,,EHFMuCh4xUegNwPJZ5RIZw,,,,N,0,0
2072,83971,829,11210,912,1,0,N,N,N,CP_Drtn,TT_Task,DT_FixedDUR2,RV_OK,TK_NotStart,71S0018100,Painting base coats,2296,568,0,32,0,6404,6404,32,5792,0,5792,,,,2009-01-10 08:00,2009-01-13 17:00,,2008-10-19 08:00,2008-10-22 17:00,2008-10-19 08:00,2008-10-22 17:00,2008-10-19 08:00,2008-10-22 17:00,,,,,PT_Normal,,,,,+gSQxNJT4EKAFRMX5tMzkw,,,,N,0,0
2073,83972,829,11210,912,1,0,N,N,N,CP_Drtn,TT_Task,DT_FixedDUR2,RV_OK,TK_NotStart,71S0018150,Painting 1st top coat,2296,568,0,32,0,6114,6114,32,5792,0,5792,,,,2009-01-19 08:00,2009-01-22 17:00,,2008-10-28 08:00,2008-11-01 17:00,2008-10-28 08:00,2008-11-01 17:00,2008-10-28 08:00,2008-11-01 17:00,,,,,PT_Normal,,,,,S91gWpYLJ0qPDfeEY47TLA,,,,N,0,0
2074,83973,829,11210,912,1,0,N,N,N,CP_Drtn,TT_Task,DT_FixedDUR2,RV_OK,TK_NotStart,71S0018200,Painting final coat,2296,584,0,32,0,6114,6114,32,5792,0,5792,,,,2009-01-26 08:00,2009-01-29 17:00,,2008-11-02 08:00,2008-11-05 17:00,2008-11-02 08:00,2008-11-05 17:00,2008-11-02 08:00,2008-11-05 17:00,,,,,PT_Normal,,,,,fBch5ZwBtECGuiavoua+kQ,,,,N,0,0
2075,83974,829,11211,912,1,0,N,N,N,CP_Drtn,TT_Task,DT_FixedDUR2,RV_OK,TK_NotStart,71S0022200,Roof light weight concreting & angle fillet,2296,952,0,48,0,2408,2408,48,1888,0,1888,,,,2009-03-03 08:00,2009-03-09 17:00,,2008-10-15 08:00,2008-10-21 17:00,2008-10-15 08:00,2008-10-21 17:00,2008-10-15 08:00,2008-10-21 17:00,,,,,PT_Normal,,,,,p+xlP52AME2sm0VGOeJSiw,,,,N,0,0
2076,83975,829,11211,912,1,0,N,N,N,CP_Drtn,TT_Task,DT_FixedDUR2,RV_OK,TK_NotStart,71S0022250,Roof membrane,2296,952,0,48,0,2314,2314,48,1888,0,1888,,,,2009-03-10 08:00,2009-03-16 17:00,,2008-10-22 08:00,2008-10-28 17:00,2008-10-22 08:00,2008-10-28 17:00,2008-10-22 08:00,2008-10-28 17:00,,,,,PT_Normal,,,,,3UT/ax/AEUKMvr6/sjUh0g,,,,N,0,0
2077,83976,829,11211,912,1,0,N,N,N,CP_Drtn,TT_Task,DT_FixedDUR2,RV_OK,TK_NotStart,71S0022300,Polystyrene insulation & seperation layers,2296,952,0,48,0,2314,2314,48,1888,0,1888,,,,2009-03-17 08:00,2009-03-23 17:00,,2008-10-29 08:00,2008-11-04 17:00,2008-10-29 08:00,2008-11-04 17:00,2008-10-29 08:00,2008-11-04 17:00,,,,,PT_Normal,,,,,i2hA8hgrwE2ZSF/EdGRSZw,,,,N,0,0
2078,83977,829,11211,912,1,0,N,N,N,CP_Drtn,TT_Task,DT_FixedDUR2,RV_OK,TK_NotStart,71S0022400,Gravel fill,2296,952,0,48,0,2124,2124,48,1888,0,1888,,,,2009-03-24 08:00,2009-03-30 17:00,,2008-11-05 08:00,2008-11-11 17:00,2008-11-05 08:00,2008-11-11 17:00,2008-11-05 08:00,2008-11-11 17:00,,,,,PT_Normal,,,,,LbTKv+/xl0WIvzUqpojMjg,,,,N,0,0
2079,83978,829,11211,912,1,0,N,N,N,CP_Drtn,TT_Task,DT_FixedDUR2,RV_OK,TK_NotStart,71S0022450,Aluminium flashing,2296,952,640,48,0,636,636,48,512,0,512,,,,2009-03-31 08:00,2009-04-06 17:00,,2008-11-12 08:00,2008-11-18 17:00,2008-11-12 08:00,2008-11-18 17:00,2008-11-12 08:00,2008-11-18 17:00,,,,,PT_Normal,,,,,OdnH3cIajEWWxiEXNcpCHA,,,,N,0,0
2080,83979,829,10994,912,1,0,N,N,N,CP_Drtn,TT_Task,DT_FixedDUR2,RV_OK,TK_NotStart,71S0024100,Louvers,2296,568,0,32,0,144,144,32,32,0,32,,,,2009-01-14 08:00,2009-01-18 17:00,,2008-10-23 08:00,2008-10-27 17:00,2008-10-23 08:00,2008-10-27 17:00,2008-10-23 08:00,2008-10-27 17:00,,,,,PT_Normal,,,,,LYWC77OBq0ectQjmvvHmxA,,,,N,0,0
2081,83980,829,11213,912,1,0,N,N,N,CP_Drtn,TT_Task,DT_FixedDUR2,RV_OK,TK_NotStart,71S0026050,Steel doors & ironmongery,2306,576,0,24,0,56,56,24,32,0,32,,,,2009-01-15 08:00,2009-01-18 17:00,,2008-10-23 08:00,2008-10-26 17:00,2008-10-23 08:00,2008-10-26 17:00,2008-10-23 08:00,2008-10-26 17:00,,,,,PT_Normal,,,,,6x2tA1njWUuvFfJandh2/Q,,,,N,0,0
2082,83981,829,11214,912,1,0,N,N,N,CP_Drtn,TT_Task,DT_FixedDUR2,RV_OK,TK_NotStart,71S0028300,Chequer plate,2296,576,0,24,0,62,62,24,8,0,8,,,,2009-01-19 08:00,2009-01-21 17:00,,2008-10-27 08:00,2008-10-29 17:00,2008-10-27 08:00,2008-10-29 17:00,2008-10-27 08:00,2008-10-29 17:00,,,,,PT_Normal,,,,,RreRDV90DEu4TeFvrncKTw,,,,N,0,0
2083,83982,829,11038,913,1,0,N,N,N,CP_Drtn,TT_Task,DT_FixedDUR2,RV_OK,TK_NotStart,71S0038100,Epoxy coating,2296,1184,816,32,0,2634,2634,32,2168,0,2168,,,,2009-04-03 08:00,2009-04-06 17:00,,2008-11-06 08:00,2008-11-09 17:00,2008-11-06 08:00,2008-11-09 17:00,2008-11-06 08:00,2008-11-09 17:00,,,,,PT_Normal,,,,,KwmNJiUhUUunvsTHG3iBIg,,,,N,0,0
2084,83983,829,12121,912,1,100,N,N,N,CP_Drtn,TT_Task,DT_FixedDUR2,RV_OK,TK_Complete,71S0050050,MEP structure embedded provisions,2296,296,0,0,112,0,112,24,,,0,,2008-09-09 08:00,2008-09-11 17:00,2008-11-15 08:00,2008-11-13 17:00,,2008-10-02 08:00,2008-10-01 17:00,,,2008-09-09 08:00,2008-09-11 17:00,,,,,PT_Normal,,,,,t3oF5p1pIkaZVw0g87StVA,,,,N,112,0
2085,83984,829,12518,912,1,0,N,N,N,CP_Drtn,TT_Task,DT_FixedDUR2,RV_OK,TK_NotStart,71S0052150,FCU/ACCU's installation,2296,568,0,48,0,268,268,48,0,0,0,,,,2009-01-12 08:00,2009-01-18 17:00,,2008-10-21 08:00,2008-10-27 17:00,2008-10-21 08:00,2008-10-27 17:00,2008-10-21 08:00,2008-10-27 17:00,,,,,PT_Normal,,,,,HXeFzwP5Kkam2A0wV+PO0g,,,,N,0,0
2086,83985,829,12311,912,1,0,N,N,N,CP_Drtn,TT_Task,DT_FixedDUR2,RV_OK,TK_NotStart,71S0066050,Chasing and installation of conduits,2296,568,0,48,0,708,708,48,0,0,0,,,,2009-01-01 08:00,2009-01-07 17:00,,2008-10-11 08:00,2008-10-16 17:00,2008-10-11 08:00,2008-10-16 17:00,2008-10-11 08:00,2008-10-16 17:00,,,,,PT_Normal,,,,,GrW73dSZ4UmDAg2ZgAWGpQ,,,,N,0,0
2087,83986,829,12522,912,1,0,N,N,N,CP_Drtn,TT_Task,DT_FixedDUR2,RV_OK,TK_NotStart,71S0068050,Single core wiring,2296,800,48,48,0,114,114,48,0,0,0,,,,2009-02-12 08:00,2009-02-18 17:00,,2008-10-19 08:00,2008-10-25 17:00,2008-10-19 08:00,2008-10-25 17:00,2008-10-19 08:00,2008-10-25 17:00,,,,,PT_Normal,,,,,briK1uD5TUGXSKrjKAzMjQ,,,,N,0,0
2088,83987,829,12314,912,1,0,N,N,N,CP_Drtn,TT_Task,DT_FixedDUR2,RV_OK,TK_NotStart,71S0068200,LV panels & capacitor bank,2296,576,0,56,0,1156,1156,56,0,0,0,,,,2009-01-22 08:00,2009-01-29 17:00,,2008-10-30 08:00,2008-11-06 17:00,2008-10-30 08:00,2008-11-06 17:00,2008-10-30 08:00,2008-11-06 17:00,,,,,PT_Normal,,,,,uTvU0pmkEUifCqqB4CKd5g,,,,N,0,0
2089,83988,829,12314,912,1,0,N,N,N,CP_Drtn,TT_Task,DT_FixedDUR2,RV_OK,TK_NotStart,71S0068250,DB assembly,2296,752,328,48,0,114,114,48,0,0,0,,,,2009-02-19 08:00,2009-02-25 17:00,,2008-11-02 08:00,2008-11-08 17:00,2008-11-02 08:00,2008-11-08 17:00,2008-11-02 08:00,2008-11-08 17:00,,,,,PT_Normal,,,,,uGY3RwMD2U20DZHWgNXlpg,,,,N,0,0
2090,83989,829,12314,912,1,0,N,N,N,CP_Drtn,TT_Task,DT_FixedDUR2,RV_OK,TK_NotStart,71S0068350,Light fittings,2296,864,576,48,0,92,92,48,0,0,0,,,,2009-03-08 08:00,2009-03-14 17:00,,2008-11-02 08:00,2008-11-08 17:00,2008-11-02 08:00,2008-11-08 17:00,2008-11-02 08:00,2008-11-08 17:00,,,,,PT_Normal,,,,,BUFWlT3Y9kW0iJyIsBEFsg,,,,N,0,0
2091,83990,829,12314,912,1,0,N,N,N,CP_Drtn,TT_Task,DT_FixedDUR2,RV_OK,TK_NotStart,71S0068450,"Generators, ATS panels & Fuel tanks",2296,576,152,56,0,900.8,900.8,56,0,0,0,,,,2009-01-22 08:00,2009-01-29 17:00,,2008-10-30 08:00,2008-11-06 17:00,2008-10-30 08:00,2008-11-06 17:00,2008-10-30 08:00,2008-11-06 17:00,,,,,PT_Normal,,,,,HeHUlaC7Okm/mBvreEQqmQ,,,,N,0,0
2092,83991,829,12314,912,1,0,N,N,N,CP_Drtn,TT_Task,DT_FixedDUR2,RV_OK,TK_NotStart,71S0068600,Switches & sockets,2296,864,576,48,0,70,70,48,0,0,0,,,,2009-03-08 08:00,2009-03-14 17:00,,2008-11-02 08:00,2008-11-08 17:00,2008-11-02 08:00,2008-11-08 17:00,2008-11-02 08:00,2008-11-08 17:00,,,,,PT_Normal,,,,,rvKT60MHb0i6aLFhjmlF4Q,,,,N,0,0
2093,83992,829,12525,912,1,0,N,N,N,CP_Drtn,TT_Task,DT_FixedDUR2,RV_OK,TK_NotStart,71S0074050,Fire alarm cable,2296,616,48,48,0,136,136,48,0,0,0,,,,2009-01-17 08:00,2009-01-22 17:00,,2008-10-19 08:00,2008-10-25 17:00,2008-10-19 08:00,2008-10-25 17:00,2008-10-19 08:00,2008-10-25 17:00,,,,,PT_Normal,,,,,ZOSEJj6JkUupvL1093+DFQ,,,,N,0,0
2094,83993,829,12317,912,1,0,N,N,N,CP_Drtn,TT_Task,DT_FixedDUR2,RV_OK,TK_NotStart,71S0074100,Fire alarm fittings,2296,568,144,48,0,81,81,48,0,0,0,,,,2009-01-24 08:00,2009-01-29 17:00,,2008-11-02 08:00,2008-11-08 17:00,2008-11-02 08:00,2008-11-08 17:00,2008-11-02 08:00,2008-11-08 17:00,,,,,PT_Normal,,,,,EeSD4gJS0U2LMWxc/b3i8g,,,,N,0,0
2095,83994,829,11245,912,1,100,N,N,N,CP_Drtn,TT_Task,DT_FixedDUR2,RV_OK,TK_Complete,71X0004050,Excavation & compaction,2296,208,0,0,2212.8,0,2212.8,48,2112,2112,0,,2008-07-26 08:00,2008-08-02 17:00,2008-11-02 08:00,2008-11-01 17:00,,2008-10-02 08:00,2008-10-01 17:00,,,2008-07-26 08:00,2008-08-02 17:00,,,,,PT_Normal,,,,,Vtg+rVUkIkS1L7kdBNzNcw,,,,N,2212.8,2112
2096,83995,829,11245,912,1,100,N,N,N,CP_Drtn,TT_Task,DT_FixedDUR2,RV_OK,TK_Complete,71X0004150,Engineering fill,2296,208,0,0,1660.02,0,1660.02,64,1520,1520,0,,2008-08-30 08:00,2008-09-07 17:00,2008-11-02 08:00,2008-11-01 17:00,,2008-10-02 08:00,2008-10-01 17:00,,,2008-08-30 08:00,2008-09-07 17:00,,,,,PT_Normal,,,,,FP2rll8rkEuzmvro9/t+1g,,,,N,1660.02,1520
2097,83996,829,11245,912,1,0,N,N,N,CP_Drtn,TT_Task,DT_FixedDUR2,RV_OK,TK_NotStart,71X0004151,Back filling arround SS,2296,208,0,64,0,2735.2,2735.2,64,2544,0,2544,,,,2008-11-05 08:00,2008-11-13 17:00,,2008-10-06 08:00,2008-10-14 17:00,2008-10-06 08:00,2008-10-14 17:00,2008-10-06 08:00,2008-10-14 17:00,,,,,PT_Normal,,,,,hvN9rBiWIEux3EtJ/XQdng,,,,N,0,0
2098,83997,829,11246,912,1,100,N,N,N,CP_Drtn,TT_Task,DT_FixedDUR2,RV_OK,TK_Complete,71X0006050,Blinding under raft slab,2296,208,0,0,4719,0,4719,16,4528,4528,0,,2008-08-03 08:00,2008-08-04 17:00,2008-11-02 08:00,2008-11-01 17:00,,2008-10-02 08:00,2008-10-01 17:00,,,2008-08-03 08:00,2008-08-04 17:00,,,,,PT_Normal,,,,,iAlMOFIEk0G1sEinNF5pDQ,,,,N,4719,4528
2099,83998,829,11246,912,1,100,N,N,N,CP_Drtn,TT_Task,DT_FixedDUR2,RV_OK,TK_Complete,71X0006051,Blinding under slab on fill,2296,208,0,0,1761,0,1761,16,1680,1680,0,,2008-09-08 08:00,2008-09-09 17:00,2008-11-02 08:00,2008-11-01 17:00,,2008-10-02 08:00,2008-10-01 17:00,,,2008-09-08 08:00,2008-09-09 17:00,,,,,PT_Normal,,,,,kVcjm2s/fkeH7XTrNviZMw,,,,N,1761,1680
2100,83999,829,11246,912,1,100,N,N,N,CP_Drtn,TT_Task,DT_FixedDUR2,RV_OK,TK_Complete,71X0006150,Construction of raft slab,2296,208,0,0,2130,0,2130,56,124936,124936,0,,2008-08-17 08:00,2008-08-24 17:00,2008-11-02 08:00,2008-11-01 17:00,,2008-10-02 08:00,2008-10-01 17:00,,,2008-08-17 08:00,2008-08-24 17:00,,,,,PT_Normal,,,,,21qaEJXdZkOWhSEC0+gnmw,,,,N,2130,124936
2101,84000,829,11246,912,1,100,N,N,N,CP_Drtn,TT_Task,DT_FixedDUR2,RV_OK,TK_Complete,71X0006200,Neck columns & walls,2296,208,0,0,2580,0,2580,32,56332,56332,0,,2008-08-25 08:00,2008-08-28 17:00,2008-11-02 08:00,2008-11-01 17:00,,2008-10-02 08:00,2008-10-01 17:00,,,2008-08-25 08:00,2008-08-28 17:00,,,,,PT_Normal,,,,,DNIrCtxv1EO+reZKENNalg,,,,N,2580,56332
2102,84001,829,11246,912,1,100,N,N,N,CP_Drtn,TT_Task,DT_FixedDUR2,RV_OK,TK_Complete,71X0006300,Slab on fill,2296,208,0,0,828,0,828,48,45024,45024,0,,2008-09-10 08:00,2008-09-16 17:00,2008-11-02 08:00,2008-11-01 17:00,,2008-10-02 08:00,2008-10-01 17:00,,,2008-09-10 08:00,2008-09-16 17:00,,,,,PT_Normal,,,,,aKksM6p/sU+wyZsPzK5bbA,,,,N,828,45024
2103,84002,829,11223,912,1,100,N,N,N,CP_Drtn,TT_Task,DT_FixedDUR2,RV_OK,TK_Complete,71X0008050,Block works as permanent shutters for raft slab,2296,208,0,0,402,0,402,32,296,296,0,,2008-08-05 08:00,2008-08-09 17:00,2008-11-02 08:00,2008-11-01 17:00,,2008-10-02 08:00,2008-10-01 17:00,,,2008-08-05 08:00,2008-08-09 17:00,,,,,PT_Normal,,,,,4tfqmRKJIUOTfEiVC6klWA,,,,N,402,296
2104,84003,829,11235,912,1,100,N,N,N,CP_Drtn,TT_Task,DT_FixedDUR2,RV_OK,TK_Complete,71X0010050,W/P for raft slab,2296,208,0,0,5466,0,5466,32,4528,4528,0,,2008-08-10 08:00,2008-08-13 17:00,2008-11-02 08:00,2008-11-01 17:00,,2008-10-02 08:00,2008-10-01 17:00,,,2008-08-10 08:00,2008-08-13 17:00,,,,,PT_Normal,,,,,jJWdLCzUpkqL2DDfK2JOog,,,,N,5466,4528
2105,84004,829,11235,912,1,0,N,N,N,CP_Drtn,TT_Task,DT_FixedDUR2,RV_OK,TK_NotStart,71X0010100,W/P externally for SS,2296,208,0,24,0,2822,2822,24,2544,0,2544,,,,2008-11-02 08:00,2008-11-04 17:00,,2008-10-02 08:00,2008-10-05 17:00,2008-10-02 08:00,2008-10-05 17:00,2008-10-02 08:00,2008-10-05 17:00,,,,,PT_Normal,,,,,AV5eM/Upz0KP8/qRvVLhmg,,,,N,0,0
2106,84005,829,11235,912,1,100,N,N,N,CP_Drtn,TT_Task,DT_FixedDUR2,RV_OK,TK_Complete,71X0010150,Screed protection for W/P of raft slab,2296,208,0,0,4468,0,4468,16,4240,4240,0,,2008-08-14 08:00,2008-08-16 17:00,2008-11-02 08:00,2008-11-01 17:00,,2008-10-02 08:00,2008-10-01 17:00,,,2008-08-14 08:00,2008-08-16 17:00,,,,,PT_Normal,,,,,TfFjtQDMn0a2YKKv6WxFAg,,,,N,4468,4240
2107,84006,829,11590,912,1,100,N,N,N,CP_Drtn,TT_Task,DT_FixedDUR2,RV_OK,TK_Complete,71X0012050,Columns,2296,208,0,0,1030,0,1030,24,28196,28196,0,,2008-09-17 08:00,2008-09-20 17:00,2008-11-02 08:00,2008-11-01 17:00,,2008-10-02 08:00,2008-10-01 17:00,,,2008-09-17 08:00,2008-09-20 17:00,,,,,PT_Normal,,,,,IGYZ7dZGVkin0Ne4iikDew,,,,N,1030,28196
2108,84007,829,11590,912,1,100,N,N,N,CP_Drtn,TT_Task,DT_FixedDUR2,RV_OK,TK_Complete,71X0012200,Slab @ substation roof level,2296,208,0,0,3661,0,3661,56,93224,93224,0,,2008-09-21 08:00,2008-09-28 17:00,2008-11-02 08:00,2008-11-01 17:00,,2008-10-02 08:00,2008-10-01 17:00,,,2008-09-21 08:00,2008-09-28 17:00,,,,,PT_Normal,,,,,lvJnHQzp3USfRpR9LMQ2kQ,,,,N,3661,93224
2109,84008,829,11590,912,1,100,N,N,N,CP_Drtn,TT_Task,DT_FixedDUR2,RV_OK,TK_Complete,71X0012350,Parapet,2296,208,0,0,448,0,448,24,8604,8604,0,,2008-09-29 08:00,2008-10-01 17:00,2008-11-02 08:00,2008-11-01 17:00,,2008-10-02 08:00,2008-10-01 17:00,,,2008-09-29 08:00,2008-10-01 17:00,,,,,PT_Normal,,,,,6qDj1YhIkk2JnKfTZjfiyw,,,,N,448,8604
2110,84009,829,11109,912,1,0,N,N,N,CP_Drtn,TT_Task,DT_FixedDUR2,RV_OK,TK_NotStart,71X0014050,Block walls,2296,424,0,48,0,2484,2484,48,6496,0,6496,,,,2008-12-16 08:00,2008-12-22 17:00,,2008-10-15 08:00,2008-10-21 17:00,2008-10-15 08:00,2008-10-21 17:00,2008-10-15 08:00,2008-10-21 17:00,,,,,PT_Normal,,,,,tjBuWkTHiEa3qIdNK3K1Xw,,,,N,0,0
2111,84010,829,11110,912,1,0,N,N,N,CP_Drtn,TT_Task,DT_FixedDUR2,RV_OK,TK_NotStart,71X0016050,Internal plaster works,2296,424,0,48,0,5681,5681,48,4952,0,4952,,,,2008-12-29 08:00,2009-01-04 17:00,,2008-10-28 08:00,2008-11-03 17:00,2008-10-28 08:00,2008-11-03 17:00,2008-10-28 08:00,2008-11-03 17:00,,,,,PT_Normal,,,,,DH0+2vC0nU2axoLvEdempQ,,,,N,0,0
2112,84011,829,11002,912,1,0,N,N,N,CP_Drtn,TT_Task,DT_FixedDUR2,RV_OK,TK_NotStart,71X0018100,Painting base coats,2296,424,0,48,0,6420,6420,48,5792,0,5792,,,,2009-01-05 08:00,2009-01-11 17:00,,2008-11-04 08:00,2008-11-10 17:00,2008-11-04 08:00,2008-11-10 17:00,2008-11-04 08:00,2008-11-10 17:00,,,,,PT_Normal,,,,,ysgBXEra7k6RMD3m+dDIIw,,,,N,0,0
2113,84012,829,11002,912,1,0,N,N,N,CP_Drtn,TT_Task,DT_FixedDUR2,RV_OK,TK_NotStart,71X0018150,Painting 1st top coat,2296,424,0,32,0,6114,6114,32,5792,0,5792,,,,2009-01-19 08:00,2009-01-22 17:00,,2008-11-18 08:00,2008-11-22 17:00,2008-11-18 08:00,2008-11-22 17:00,2008-11-18 08:00,2008-11-22 17:00,,,,,PT_Normal,,,,,of50/5siSk2J1kOlFoDfaQ,,,,N,0,0
2114,84013,829,11002,912,1,0,N,N,N,CP_Drtn,TT_Task,DT_FixedDUR2,RV_OK,TK_NotStart,71X0018200,Painting final coat,2296,440,0,32,0,6114,6114,32,5792,0,5792,,,,2009-01-26 08:00,2009-01-29 17:00,,2008-11-23 08:00,2008-11-26 17:00,2008-11-23 08:00,2008-11-26 17:00,2008-11-23 08:00,2008-11-26 17:00,,,,,PT_Normal,,,,,1kV8m8xrKUy6NFzMxCs4iA,,,,N,0,0
2115,84014,829,11112,912,1,0,N,N,N,CP_Drtn,TT_Task,DT_FixedDUR2,RV_OK,TK_NotStart,71X0022200,Roof light weight concreting & angle fillet,2296,880,0,48,0,2408,2408,48,1888,0,1888,,,,2009-03-03 08:00,2009-03-09 17:00,,2008-10-26 08:00,2008-11-01 17:00,2008-10-26 08:00,2008-11-01 17:00,2008-10-26 08:00,2008-11-01 17:00,,,,,PT_Normal,,,,,DdaGfA0eekGtk52I73Uc9w,,,,N,0,0
2116,84015,829,11112,912,1,0,N,N,N,CP_Drtn,TT_Task,DT_FixedDUR2,RV_OK,TK_NotStart,71X0022250,Roof membrane,2296,880,0,48,0,2314,2314,48,1888,0,1888,,,,2009-03-10 08:00,2009-03-16 17:00,,2008-11-02 08:00,2008-11-08 17:00,2008-11-02 08:00,2008-11-08 17:00,2008-11-02 08:00,2008-11-08 17:00,,,,,PT_Normal,,,,,DedecQB0BECMg3gUOXA3Yw,,,,N,0,0
2117,84016,829,11112,912,1,0,N,N,N,CP_Drtn,TT_Task,DT_FixedDUR2,RV_OK,TK_NotStart,71X0022300,Polystyrene insulation & seperation layers,2296,880,0,48,0,2314,2314,48,1888,0,1888,,,,2009-03-17 08:00,2009-03-23 17:00,,2008-11-09 08:00,2008-11-15 17:00,2008-11-09 08:00,2008-11-15 17:00,2008-11-09 08:00,2008-11-15 17:00,,,,,PT_Normal,,,,,rngjnMItrkSYDDnrqdUO9w,,,,N,0,0
2118,84017,829,11112,912,1,0,N,N,N,CP_Drtn,TT_Task,DT_FixedDUR2,RV_OK,TK_NotStart,71X0022400,Gravel fill,2296,880,0,48,0,2124,2124,48,1888,0,1888,,,,2009-03-24 08:00,2009-03-30 17:00,,2008-11-16 08:00,2008-11-22 17:00,2008-11-16 08:00,2008-11-22 17:00,2008-11-16 08:00,2008-11-22 17:00,,,,,PT_Normal,,,,,5az0ZAC2xUa4B8b406pgBw,,,,N,0,0
2119,84018,829,11112,912,1,0,N,N,N,CP_Drtn,TT_Task,DT_FixedDUR2,RV_OK,TK_NotStart,71X0022450,Aluminium flashing,2296,880,568,48,0,636,636,48,512,0,512,,,,2009-03-31 08:00,2009-04-06 17:00,,2008-11-23 08:00,2008-11-29 17:00,2008-11-23 08:00,2008-11-29 17:00,2008-11-23 08:00,2008-11-29 17:00,,,,,PT_Normal,,,,,2yomFrCJ4E+qqCkCxv7RGA,,,,N,0,0
2120,84019,829,11113,912,1,0,N,N,N,CP_Drtn,TT_Task,DT_FixedDUR2,RV_OK,TK_NotStart,71X0024100,Louvers,2296,424,0,48,0,160,160,48,32,0,32,,,,2009-01-12 08:00,2009-01-18 17:00,,2008-11-11 08:00,2008-11-17 17:00,2008-11-11 08:00,2008-11-17 17:00,2008-11-11 08:00,2008-11-17 17:00,,,,,PT_Normal,,,,,rmMuz61G0kWgyYN2FTcQfg,,,,N,0,0
2121,84020,829,11005,912,1,0,N,N,N,CP_Drtn,TT_Task,DT_FixedDUR2,RV_OK,TK_NotStart,71X0026050,Steel doors & ironmongery,2306,424,0,32,0,64,64,32,32,0,32,,,,2009-01-12 08:00,2009-01-15 17:00,,2008-11-11 08:00,2008-11-15 17:00,2008-11-11 08:00,2008-11-15 17:00,2008-11-11 08:00,2008-11-15 17:00,,,,,PT_Normal,,,,,tsbqv1IQ/UWFpZ2GSUn5rA,,,,N,0,0
2122,84021,829,11115,912,1,0,N,N,N,CP_Drtn,TT_Task,DT_FixedDUR2,RV_OK,TK_NotStart,71X0028300,Chequer plate,2296,424,0,32,0,70,70,32,8,0,8,,,,2009-01-17 08:00,2009-01-20 17:00,,2008-11-16 08:00,2008-11-19 17:00,2008-11-16 08:00,2008-11-19 17:00,2008-11-16 08:00,2008-11-19 17:00,,,,,PT_Normal,,,,,oZOGsCd/rE6gzRB2El4NTw,,,,N,0,0
2123,84022,829,11116,913,1,0,N,N,N,CP_Drtn,TT_Task,DT_FixedDUR2,RV_OK,TK_NotStart,71X0038100,Epoxy coating,2296,1016,648,32,0,2634,2634,32,2168,0,2168,,,,2009-04-03 08:00,2009-04-06 17:00,,2008-11-27 08:00,2008-11-30 17:00,2008-11-27 08:00,2008-11-30 17:00,2008-11-27 08:00,2008-11-30 17:00,,,,,PT_Normal,,,,,q7ezsCqu806eTNTqMmO8pw,,,,N,0,0
2124,84023,829,12112,912,1,100,N,N,N,CP_Drtn,TT_Task,DT_FixedDUR2,RV_OK,TK_Complete,71X0050050,MEP structure embedded provisions,2296,208,0,0,112,0,112,24,,,0,,2008-09-20 08:00,2008-09-22 17:00,2008-11-02 08:00,2008-11-01 17:00,,2008-10-02 08:00,2008-10-01 17:00,,,2008-09-20 08:00,2008-09-22 17:00,,,,,PT_Normal,,,,,oVC3InSCsk6R+xgfNmT0/Q,,,,N,112,0
2125,84024,829,12114,912,1,0,N,N,N,CP_Drtn,TT_Task,DT_FixedDUR2,RV_OK,TK_NotStart,71X0052150,FCU/ACCU's installation,2296,432,8,48,0,268,268,48,0,0,0,,,,2009-01-12 08:00,2009-01-18 17:00,,2008-11-10 08:00,2008-11-16 17:00,2008-11-10 08:00,2008-11-16 17:00,2008-11-10 08:00,2008-11-16 17:00,,,,,PT_Normal,,,,,zoHHX5N4ZkWgsX7Os2eqNg,,,,N,0,0
2126,84025,829,12325,912,1,0,N,N,N,CP_Drtn,TT_Task,DT_FixedDUR2,RV_OK,TK_NotStart,71X0066050,Chasing and installation of conduits,2296,424,0,48,0,708,708,48,0,0,0,,,,2008-12-22 08:00,2008-12-28 17:00,,2008-10-21 08:00,2008-10-27 17:00,2008-10-21 08:00,2008-10-27 17:00,2008-10-21 08:00,2008-10-27 17:00,,,,,PT_Normal,,,,,q7zLN+/p6k6VAlTLboF9xA,,,,N,0,0
2127,84026,829,12327,912,1,0,N,N,N,CP_Drtn,TT_Task,DT_FixedDUR2,RV_OK,TK_NotStart,71X0068050,Single core wiring,2296,688,80,48,0,114,114,48,0,0,0,,,,2009-02-12 08:00,2009-02-18 17:00,,2008-11-04 08:00,2008-11-10 17:00,2008-11-04 08:00,2008-11-10 17:00,2008-11-04 08:00,2008-11-10 17:00,,,,,PT_Normal,,,,,HEF3/LBbOESwA+JoAc/gnA,,,,N,0,0
2128,84027,829,12328,912,1,0,N,N,N,CP_Drtn,TT_Task,DT_FixedDUR2,RV_OK,TK_NotStart,71X0068200,LV panels & capacitor bank,2296,424,0,64,0,1164,1164,64,0,0,0,,,,2009-01-21 08:00,2009-01-29 17:00,,2008-11-20 08:00,2008-11-29 17:00,2008-11-20 08:00,2008-11-29 17:00,2008-11-20 08:00,2008-11-29 17:00,,,,,PT_Normal,,,,,RlZhZDq9Vkquie28aubhIQ,,,,N,0,0
2129,84028,829,12328,912,1,0,N,N,N,CP_Drtn,TT_Task,DT_FixedDUR2,RV_OK,TK_NotStart,71X0068250,DB assembly,2296,608,184,48,0,114,114,48,0,0,0,,,,2009-02-19 08:00,2009-02-25 17:00,,2008-11-23 08:00,2008-11-29 17:00,2008-11-23 08:00,2008-11-29 17:00,2008-11-23 08:00,2008-11-29 17:00,,,,,PT_Normal,,,,,kT49IseFykGJFBOYC/WGpQ,,,,N,0,0
2130,84029,829,12328,912,1,0,N,N,N,CP_Drtn,TT_Task,DT_FixedDUR2,RV_OK,TK_NotStart,71X0068350,Light fittings,2296,720,432,48,0,92,92,48,0,0,0,,,,2009-03-08 08:00,2009-03-14 17:00,,2008-11-23 08:00,2008-11-29 17:00,2008-11-23 08:00,2008-11-29 17:00,2008-11-23 08:00,2008-11-29 17:00,,,,,PT_Normal,,,,,tz7ASn+qM06/Pg+iqoyZXw,,,,N,0,0
2131,84030,829,12328,912,1,0,N,N,N,CP_Drtn,TT_Task,DT_FixedDUR2,RV_OK,TK_NotStart,71X0068450,"Generators, ATS panels & Fuel tanks",2296,424,0,64,0,908.8,908.8,64,0,0,0,,,,2009-01-21 08:00,2009-01-29 17:00,,2008-11-20 08:00,2008-11-29 17:00,2008-11-20 08:00,2008-11-29 17:00,2008-11-20 08:00,2008-11-29 17:00,,,,,PT_Normal,,,,,M3P8ACCaFEOlqeM+hiwEUA,,,,N,0,0
2132,84031,829,12328,912,1,0,N,N,N,CP_Drtn,TT_Task,DT_FixedDUR2,RV_OK,TK_NotStart,71X0068600,Switches & sockets,2296,720,432,48,0,70,70,48,0,0,0,,,,2009-03-08 08:00,2009-03-14 17:00,,2008-11-23 08:00,2008-11-29 17:00,2008-11-23 08:00,2008-11-29 17:00,2008-11-23 08:00,2008-11-29 17:00,,,,,PT_Normal,,,,,/UC/9cDGXEurrtU5oUT1Aw,,,,N,0,0
2133,84032,829,12076,912,1,0,N,N,N,CP_Drtn,TT_Task,DT_FixedDUR2,RV_OK,TK_NotStart,71X0074050,Fire alarm cable,2296,504,80,48,0,136,136,48,0,0,0,,,,2009-01-17 08:00,2009-01-22 17:00,,2008-11-04 08:00,2008-11-10 17:00,2008-11-04 08:00,2008-11-10 17:00,2008-11-04 08:00,2008-11-10 17:00,,,,,PT_Normal,,,,,9vItNGt8OU6i2aWSJQmvPg,,,,N,0,0
2134,84033,829,12331,912,1,0,N,N,N,CP_Drtn,TT_Task,DT_FixedDUR2,RV_OK,TK_NotStart,71X0074100,Fire alarm fittings,2296,424,0,48,0,81,81,48,0,0,0,,,,2009-01-24 08:00,2009-01-29 17:00,,2008-11-23 08:00,2008-11-29 17:00,2008-11-23 08:00,2008-11-29 17:00,2008-11-23 08:00,2008-11-29 17:00,,,,,PT_Normal,,,,,+TA8GR7+vEC2HHjADzeNrA,,,,N,0,0
2135,84034,829,10667,912,1,0,N,N,N,CP_Drtn,TT_Task,DT_FixedDUR2,RV_OK,TK_NotStart,720BM00000,Pre-Snagging & Disnagging,2296,584,0,120,0,1170,1170,120,0,0,0,,,,2009-03-05 08:00,2009-03-22 17:00,,2008-12-10 08:00,2008-12-27 17:00,2008-12-10 08:00,2008-12-27 17:00,2008-12-10 08:00,2008-12-27 17:00,,,,,PT_Normal,,,,,WZKdQw6kKkm1+6CJ8q6dTg,,,,N,0,0
2136,84035,829,11318,912,1,100,N,N,N,CP_Drtn,TT_Task,DT_FixedDUR2,RV_OK,TK_Complete,720BM04050,Excavation & compaction,2306,0,0,0,589722.4,0,589722.4,160,,,0,,2007-12-17 08:00,2008-01-13 17:00,2008-10-02 08:00,2008-10-01 17:00,,2008-10-02 08:00,2008-10-01 17:00,,,2007-12-17 08:00,2008-01-13 17:00,,,,,PT_Normal,,,,,gFMcRqYhfEmIznhubIPVIQ,,,,N,589722.4,0
2137,84036,829,11318,912,1,100,N,N,N,CP_Drtn,TT_Task,DT_FixedDUR2,RV_OK,TK_Complete,720BM04100,Anti-termite,2306,0,0,0,105490.17,0,105490.17,72,,,0,,2008-01-14 08:00,2008-01-23 17:00,2008-10-02 08:00,2008-10-01 17:00,,2008-10-02 08:00,2008-10-01 17:00,,,2008-01-14 08:00,2008-01-23 17:00,,,,,PT_Normal,,,,,jaJA+sUFU0mQcz/X3uxJWg,,,,N,105490.17,0
2138,84037,829,11318,912,1,100,N,N,N,CP_Drtn,TT_Task,DT_FixedDUR2,RV_OK,TK_Complete,720BM04150,Engineering filling under slab on fill,2306,0,0,0,144935.8,0,144935.8,176,,,0,,2008-03-01 08:00,2008-03-26 17:00,2008-10-02 08:00,2008-10-01 17:00,,2008-10-02 08:00,2008-10-01 17:00,,,2008-03-01 08:00,2008-03-26 17:00,,,,,PT_Normal,,,,,uNUj5UITf06vqsqe8Iff6g,,,,N,144935.8,0
2139,84038,829,11318,912,1,100,N,N,N,CP_Drtn,TT_Task,DT_FixedDUR2,RV_OK,TK_Complete,720BM04151,BF to external sides of the retaining walls,2306,208,0,0,32064,0,32064,120,,,0,,2008-07-08 08:00,2008-07-24 17:00,2008-11-02 08:00,2008-11-01 17:00,,2008-10-02 08:00,2008-10-01 17:00,,,2008-07-08 08:00,2008-07-24 17:00,,,,,PT_Normal,,,,,4TdC1GJYfUeLyM4nwJrB6Q,,,,N,32064,0
2140,84039,829,11318,912,1,100,N,N,N,CP_Drtn,TT_Task,DT_FixedDUR2,RV_OK,TK_Complete,720BM04154,Backfilling under slab on grade,2306,0,0,0,48608.2,0,48608.2,120,,,0,,2008-02-28 08:00,2008-03-16 17:00,2008-10-02 08:00,2008-10-01 17:00,,2008-10-02 08:00,2008-10-01 17:00,,,2008-02-28 08:00,2008-03-16 17:00,,,,,PT_Normal,,,,,zMFCoEUGpU6nmodqHxBIQw,,,,N,48608.2,0
2141,84040,829,11528,912,1,100,N,N,N,CP_Drtn,TT_Task,DT_FixedDUR2,RV_OK,TK_Complete,720BM06050,Blinding under raft slab,2306,0,0,0,76790,0,76790,72,,,0,,2008-01-14 08:00,2008-01-23 17:00,2008-10-02 08:00,2008-10-01 17:00,,2008-10-02 08:00,2008-10-01 17:00,,,2008-01-14 08:00,2008-01-23 17:00,,,,,PT_Normal,,,,,N4eTujLEjkKXPcuPlu1gKQ,,,,N,76790,0
2142,84041,829,11528,912,1,100,N,N,N,CP_Drtn,TT_Task,DT_FixedDUR2,RV_OK,TK_Complete,720BM06051,Blinding under slab on fill,2306,0,0,0,69088,0,69088,128,,,0,,2008-03-12 08:00,2008-03-31 17:00,2008-10-02 08:00,2008-10-01 17:00,,2008-10-02 08:00,2008-10-01 17:00,,,2008-03-12 08:00,2008-03-31 17:00,,,,,PT_Normal,,,,,rbhdj4FBlEWRxeoF9tqfMQ,,,,N,69088,0
2143,84042,829,11528,912,1,100,N,N,N,CP_Drtn,TT_Task,DT_FixedDUR2,RV_OK,TK_Complete,720BM06054,Blinding under ground beams & slab on grade,2306,0,0,0,26790.14,0,26790.14,120,,,0,,2008-03-11 08:00,2008-03-29 17:00,2008-10-02 08:00,2008-10-01 17:00,,2008-10-02 08:00,2008-10-01 17:00,,,2008-03-11 08:00,2008-03-29 17:00,,,,,PT_Normal,,,,,HgLg7fD5BUGZ1AVjyXM3Fw,,,,N,26790.14,0
2144,84043,829,11528,912,1,100,N,N,N,CP_Drtn,TT_Task,DT_FixedDUR2,RV_OK,TK_Complete,720BM06150,Construction of raft slab,2306,0,0,0,272122,0,272122,160,12257280,12257280,0,,2008-01-22 08:00,2008-02-13 17:00,2008-10-02 08:00,2008-10-01 17:00,,2008-10-02 08:00,2008-10-01 17:00,,,2008-01-22 08:00,2008-02-13 17:00,,,,,PT_Normal,,,,,BwRHIK0TFEuauYm13wPVWw,,,,N,272122,12257280
2145,84044,829,11528,912,1,100,N,N,N,CP_Drtn,TT_Task,DT_FixedDUR2,RV_OK,TK_Complete,720BM06200,Neck columns & walls,2306,0,0,0,40151.5,0,40151.5,128,937064,937064,0,,2008-02-04 08:00,2008-02-21 17:00,2008-10-02 08:00,2008-10-01 17:00,,2008-10-02 08:00,2008-10-01 17:00,,,2008-02-04 08:00,2008-02-21 17:00,,,,,PT_Normal,,,,,XyRnE+UhKkOQs2BCwvp5JQ,,,,N,40151.5,937064
2146,84045,829,11528,912,1,100,N,N,N,CP_Drtn,TT_Task,DT_FixedDUR2,RV_OK,TK_Complete,720BM06300,Construction of slab on fill,2306,0,0,0,67571.8,0,67571.8,160,2838400,2838400,0,,2008-03-13 08:00,2008-04-06 17:00,2008-10-02 08:00,2008-10-01 17:00,,2008-10-02 08:00,2008-10-01 17:00,,,2008-03-13 08:00,2008-04-06 17:00,,,,,PT_Normal,,,,,2IGOiDaiBk+9eZbjFIRGFA,,,,N,67571.8,2838400
2147,84046,829,11528,912,1,100,N,N,N,CP_Drtn,TT_Task,DT_FixedDUR2,RV_OK,TK_Complete,720BM06301,Construction of slab on grade & ground beams,2306,0,0,0,25578,0,25578,120,1072000,1072000,0,,2008-04-01 08:00,2008-04-17 17:00,2008-10-02 08:00,2008-10-01 17:00,,2008-10-02 08:00,2008-10-01 17:00,,,2008-04-01 08:00,2008-04-17 17:00,,,,,PT_Normal,,,,,dhER/fStMUmhtpDnZhEigg,,,,N,25578,1072000
2148,84047,829,11529,912,1,100,N,N,N,CP_Drtn,TT_Task,DT_FixedDUR2,RV_OK,TK_Complete,720BM08050,Block works as permanent shutters for raft slab,2306,0,0,0,8290,0,9924,120,,1634,0,,2008-01-15 08:00,2008-01-31 17:00,2008-10-02 08:00,2008-10-01 17:00,,2008-10-02 08:00,2008-10-01 17:00,,,2008-01-15 08:00,2008-01-31 17:00,,,,,PT_Normal,,,,,RvrqYG6/f0uRCtUG+YNm3g,,,,N,8290,1634
2149,84048,829,11529,912,1,100,N,N,N,CP_Drtn,TT_Task,DT_FixedDUR2,RV_OK,TK_Complete,720BM08051,Block works as permanent shutters for GB,2306,0,0,0,5760,0,6888,120,,1128,0,,2008-03-16 08:00,2008-04-02 17:00,2008-10-02 08:00,2008-10-01 17:00,,2008-10-02 08:00,2008-10-01 17:00,,,2008-03-16 08:00,2008-04-02 17:00,,,,,PT_Normal,,,,,42o8dXURzkSGJT21SVX3mQ,,,,N,5760,1128
2150,84049,829,11321,912,1,100,N,N,N,CP_Drtn,TT_Task,DT_FixedDUR2,RV_OK,TK_Complete,720BM10050,W/P for raft slab,2306,0,0,0,108475.6,0,108475.6,120,,,0,,2008-01-19 08:00,2008-02-04 17:00,2008-10-02 08:00,2008-10-01 17:00,,2008-10-02 08:00,2008-10-01 17:00,,,2008-01-19 08:00,2008-02-04 17:00,,,,,PT_Normal,,,,,Rgim4HXR9EKZav6erIYwcA,,,,N,108475.6,0
2151,84050,829,11321,912,1,100,N,N,N,CP_Drtn,TT_Task,DT_FixedDUR2,RV_OK,TK_Complete,720BM10051,W/P for ground beams & slab on grade,2306,0,0,0,35236.4,0,35236.4,120,,,0,,2008-03-22 08:00,2008-04-07 17:00,2008-10-02 08:00,2008-10-01 17:00,,2008-10-02 08:00,2008-10-01 17:00,,,2008-03-22 08:00,2008-04-07 17:00,,,,,PT_Normal,,,,,fKBqG78JAEOiVNy7GEPZ3A,,,,N,35236.4,0
2152,84051,829,11321,912,1,100,N,N,N,CP_Drtn,TT_Task,DT_FixedDUR2,RV_OK,TK_Complete,720BM10100,W/P externally for retaining walls,2306,208,0,0,75201.8,0,75201.8,120,,,0,,2008-06-21 08:00,2008-07-07 17:00,2008-11-02 08:00,2008-11-01 17:00,,2008-10-02 08:00,2008-10-01 17:00,,,2008-06-21 08:00,2008-07-07 17:00,,,,,PT_Normal,,,,,Ap50PIKwd0qAoJDOiKK61A,,,,N,75201.8,0
2153,84052,829,11321,912,1,100,N,N,N,CP_Drtn,TT_Task,DT_FixedDUR2,RV_OK,TK_Complete,720BM10150,Screed protection for W/P under raft slab,2306,0,0,0,84388.4,0,84388.4,120,,,0,,2008-01-20 08:00,2008-02-05 17:00,2008-10-02 08:00,2008-10-01 17:00,,2008-10-02 08:00,2008-10-01 17:00,,,2008-01-20 08:00,2008-02-05 17:00,,,,,PT_Normal,,,,,fjdVY75OMUOaa4uLZylnGg,,,,N,84388.4,0
2154,84053,829,11321,912,1,100,N,N,N,CP_Drtn,TT_Task,DT_FixedDUR2,RV_OK,TK_Complete,720BM10151,Screed protection for W/P of GB & SOG,2306,0,0,0,26109.8,0,26109.8,120,,,0,,2008-03-23 08:00,2008-04-08 17:00,2008-10-02 08:00,2008-10-01 17:00,,2008-10-02 08:00,2008-10-01 17:00,,,2008-03-23 08:00,2008-04-08 17:00,,,,,PT_Normal,,,,,TmmL5x4K3UuMH+4W9adrWg,,,,N,26109.8,0
2155,84054,829,11531,912,1,100,N,N,N,CP_Drtn,TT_Task,DT_FixedDUR2,RV_OK,TK_Complete,720BM12050,Columns & walls up to GL,2306,0,0,0,296580.4,0,296580.4,160,8313096,8313096,0,,2008-04-09 08:00,2008-05-01 17:00,2008-10-02 08:00,2008-10-01 17:00,,2008-10-02 08:00,2008-10-01 17:00,,,2008-04-09 08:00,2008-05-01 17:00,,,,,PT_Normal,,,,,hjFa3xYopUuwtPJJW8TbSQ,,,,N,296580.4,8313096
2156,84055,829,11531,912,1,100,N,N,N,CP_Drtn,TT_Task,DT_FixedDUR2,RV_OK,TK_Complete,720BM12100,Retaining walls up to GL,2306,0,0,0,135612.4,0,135612.4,160,3216744,3216744,0,,2008-04-19 08:00,2008-05-11 17:00,2008-10-02 08:00,2008-10-01 17:00,,2008-10-02 08:00,2008-10-01 17:00,,,2008-04-19 08:00,2008-05-11 17:00,,,,,PT_Normal,,,,,iNVZfvJHDEuN9VMHCgLd5g,,,,N,135612.4,3216744
2157,84056,829,11531,912,1,100,N,N,N,CP_Drtn,TT_Task,DT_FixedDUR2,RV_OK,TK_Complete,720BM12150,Ramp walls & slabs,2306,0,0,0,24486.2,0,24486.2,120,394216,394216,0,,2008-04-07 08:00,2008-04-23 17:00,2008-10-02 08:00,2008-10-01 17:00,,2008-10-02 08:00,2008-10-01 17:00,,,2008-04-07 08:00,2008-04-23 17:00,,,,,PT_Normal,,,,,NaiA/O/TiECiRjH+wtkbuA,,,,N,24486.2,394216
2158,84057,829,11531,912,1,100,N,N,N,CP_Drtn,TT_Task,DT_FixedDUR2,RV_OK,TK_Complete,720BM12200,Slab @ GL level,2306,0,0,0,62392,0,62392,160,2423568,2423568,0,,2008-05-17 08:00,2008-06-08 17:00,2008-10-02 08:00,2008-10-01 17:00,,2008-10-02 08:00,2008-10-01 17:00,,,2008-05-17 08:00,2008-06-08 17:00,,,,,PT_Normal,,,,,eoEv1WheFEOvrietjmZZDg,,,,N,62392,2423568
2159,84058,829,11531,912,1,100,N,N,N,CP_Drtn,TT_Task,DT_FixedDUR2,RV_OK,TK_Complete,720BM12210,Slab @ Landscape level,2306,0,0,0,54549.76,0,54549.76,160,2118161.12,2118161.12,0,,2008-04-30 08:00,2008-05-22 17:00,2008-10-02 08:00,2008-10-01 17:00,,2008-10-02 08:00,2008-10-01 17:00,,,2008-04-30 08:00,2008-05-22 17:00,,,,,PT_Normal,,,,,jAy3dLt+n0i9KEVW8ZixMg,,,,N,54549.76,2118161.12
2160,84059,829,11531,912,1,100,N,N,N,CP_Drtn,TT_Task,DT_FixedDUR2,RV_OK,TK_Complete,720BM12250,Staircases BM to GL,2306,208,0,0,4430.2,0,4430.2,128,82312,82312,0,,2008-05-21 08:00,2008-06-08 17:00,2008-11-02 08:00,2008-11-01 17:00,,2008-10-02 08:00,2008-10-01 17:00,,,2008-05-21 08:00,2008-06-08 17:00,,,,,PT_Normal,,,,,LIxyV4kpG0+vg1o5jyKa3Q,,,,N,4430.2,82312
2161,84060,829,11390,912,1,100,N,N,N,CP_Drtn,TT_Task,DT_FixedDUR2,RV_OK,TK_Complete,720BM14050,Block walls,2306,304,0,0,24321,0,30073.5,160,,5752.5,0,,2008-06-21 08:00,2008-07-13 17:00,2008-11-16 08:00,2008-11-15 17:00,,2008-10-02 08:00,2008-10-01 17:00,,,2008-06-21 08:00,2008-07-13 17:00,,,,,PT_Normal,,,,,x9tVjFrg80mXO8zd9FMMHA,,,,N,24321,5752.5
2162,84061,829,11600,912,1,100,N,N,N,CP_Drtn,TT_Task,DT_FixedDUR2,RV_OK,TK_Complete,720BM16050,Internal plaster works,2306,304,0,0,125957.7,0,125957.7,120,,,0,,2008-07-26 08:00,2008-08-12 17:00,2008-11-16 08:00,2008-11-15 17:00,,2008-10-02 08:00,2008-10-01 17:00,,,2008-07-26 08:00,2008-08-12 17:00,,,,,PT_Normal,,,,,a6d9L6DlT0eJ65OLWD8wvQ,,,,N,125957.7,0
2163,84062,829,11601,912,1,100,N,N,N,CP_Drtn,TT_Task,DT_FixedDUR2,RV_OK,TK_Complete,720BM18050,Rendering works,2306,304,0,0,100525.5,0,100525.5,120,,,0,,2008-07-14 08:00,2008-07-30 17:00,2008-11-16 08:00,2008-11-15 17:00,,2008-10-02 08:00,2008-10-01 17:00,,,2008-07-14 08:00,2008-07-30 17:00,,,,,PT_Normal,,,,,CP2u/8g9PUaHIHxuTBdG4Q,,,,N,100525.5,0
2164,84063,829,11601,912,1,100,N,N,N,CP_Drtn,TT_Task,DT_FixedDUR2,RV_OK,TK_Complete,720BM18100,Painting base coats,2306,304,0,0,219028.4,0,219028.4,120,,,0,,2008-08-07 08:00,2008-08-24 17:00,2008-11-16 08:00,2008-11-15 17:00,,2008-10-02 08:00,2008-10-01 17:00,,,2008-08-07 08:00,2008-08-24 17:00,,,,,PT_Normal,,,,,212fWFxE/024A8BCe0BLJg,,,,N,219028.4,0
2165,84064,829,11601,912,1,0,N,N,N,CP_Drtn,TT_Task,DT_FixedDUR2,RV_OK,TK_NotStart,720BM18152,Painting 1st top coat for car park,2306,584,0,72,0,173002.4,173002.4,72,0,0,0,,,,2009-01-14 08:00,2009-01-24 17:00,,2008-10-21 08:00,2008-10-30 17:00,2008-10-21 08:00,2008-10-30 17:00,2008-10-21 08:00,2008-10-30 17:00,,,,,PT_Normal,,,,,fL284DH+bEyVyQzuImAo5A,,,,N,0,0
2166,84065,829,11601,912,1,0,N,N,N,CP_Drtn,TT_Task,DT_FixedDUR2,RV_OK,TK_NotStart,720BM18153,Painting 1st top coat for lift lobies,2306,776,0,72,0,7816.4,7816.4,72,0,0,0,,,,2009-02-05 08:00,2009-02-15 17:00,,2008-10-15 08:00,2008-10-25 17:00,2008-10-15 08:00,2008-10-25 17:00,2008-10-15 08:00,2008-10-25 17:00,,,,,PT_Normal,,,,,hReH85ltCE+kNTis8fSu0A,,,,N,0,0
2167,84066,829,11601,912,1,0,N,N,N,CP_Drtn,TT_Task,DT_FixedDUR2,RV_OK,TK_NotStart,720BM18155,Painting 1st top coat for service rooms,2306,304,0,120,0,28402.4,28402.4,120,0,0,0,,,,2009-01-01 08:00,2009-01-18 17:00,,2008-11-18 08:00,2008-12-04 17:00,2008-11-18 08:00,2008-12-04 17:00,2008-11-18 08:00,2008-12-04 17:00,,,,,PT_Normal,,,,,2Zp8QZJQQUivk9unAqqACQ,,,,N,0,0
2168,84067,829,10667,912,1,0,N,N,N,CP_Drtn,TT_Task,DT_FixedDUR2,RV_OK,TK_NotStart,720BM18200,Painting final top coat,2306,584,584,64,0,208946.4,208946.4,64,0,0,0,,,,2009-03-23 08:00,2009-03-31 17:00,,2008-12-28 08:00,2009-01-05 17:00,2008-12-28 08:00,2009-01-05 17:00,2008-12-28 08:00,2009-01-05 17:00,,,,,PT_Normal,,,,,LTgw/h1JM0qYyHiBH8lEXQ,,,,N,0,0
2169,84068,829,11602,912,1,0,N,N,N,CP_Drtn,TT_Task,DT_FixedDUR2,RV_OK,TK_NotStart,720BM20053,Floor tiling for lift lobbies,2306,304,0,64,0,3239.6,3239.6,64,0,0,0,,,,2008-12-07 08:00,2008-12-15 17:00,,2008-10-23 08:00,2008-11-01 17:00,2008-10-23 08:00,2008-11-01 17:00,2008-10-23 08:00,2008-11-01 17:00,,,,,PT_Normal,,,,,qNRCowGGt0WEOh18c8zeXA,,,,N,0,0
2170,84069,829,11603,912,1,100,N,N,N,CP_Drtn,TT_Task,DT_FixedDUR2,RV_OK,TK_Complete,720BM22100,Non toxic Epoxy Coating for water tanks,2306,1280,0,0,7390,0,7390,120,,,0,,2008-08-02 08:00,2008-08-18 17:00,2009-04-07 08:00,2009-04-06 17:00,,2008-10-02 08:00,2008-10-01 17:00,,,2008-08-02 08:00,2008-08-18 17:00,,,,,PT_Normal,,,,,QAt7SrL8SEWRCpBEEeTpLw,,,,N,7390,0
2171,84070,829,11395,912,1,0,N,N,N,CP_Drtn,TT_Task,DT_FixedDUR2,RV_OK,TK_NotStart,720BM26050,Steel doors,2306,304,0,120,0,2280,2280,120,0,0,0,,,,2008-12-15 08:00,2008-12-31 17:00,,2008-11-01 08:00,2008-11-17 17:00,2008-11-01 08:00,2008-11-17 17:00,2008-11-01 08:00,2008-11-17 17:00,,,,,PT_Normal,,,,,GxaqQXl8tkOaLeCPV2sU1A,,,,N,0,0
2172,84071,829,11605,912,1,100,N,N,N,CP_Drtn,TT_Task,DT_FixedDUR2,RV_OK,TK_Complete,720BM28100,Rugs & Access panel for water tanks,2306,1280,0,0,472,0,472,64,,,0,,2008-08-19 08:00,2008-08-27 17:00,2009-04-07 08:00,2009-04-06 17:00,,2008-10-02 08:00,2008-10-01 17:00,,,2008-08-19 08:00,2008-08-27 17:00,,,,,PT_Normal,,,,,K4USaZiMS0amvq7Cho5ioA,,,,N,472,0
2173,84072,829,11606,912,1,26.7,N,N,N,CP_Drtn,TT_Task,DT_FixedDUR2,RV_OK,TK_Active,720BM34050,False ceiling works,2306,304,0,88,483.2,1328.8,1812,120,,,,,2008-09-28 08:00,,2008-11-16 08:00,2008-11-27 17:00,,2008-10-02 08:00,2008-10-14 17:00,2008-10-02 08:00,2008-10-14 17:00,2008-09-28 08:00,2008-10-14 17:00,,,,,PT_Normal,,,,,qFqlNzRYWEq4NkGwfg6xjQ,,,,N,483.2,0
2174,84073,829,11398,912,1,0,N,N,N,CP_Drtn,TT_Task,DT_FixedDUR2,RV_OK,TK_NotStart,720BM38050,Traffic coating & marking system,2306,584,0,224,0,157130,157130,224,0,0,0,,,,2009-01-26 08:00,2009-02-26 17:00,,2008-11-02 08:00,2008-12-03 17:00,2008-11-02 08:00,2008-12-03 17:00,2008-11-02 08:00,2008-12-03 17:00,,,,,PT_Normal,,,,,AZdS9inYoUiufo3ICL7Myg,,,,N,0,0
2175,84074,829,11398,912,1,0,N,N,N,CP_Drtn,TT_Task,DT_FixedDUR2,RV_OK,TK_NotStart,720BM38100,Epoxy coating system,2306,648,336,120,0,9230.2,9230.2,120,0,0,0,,,,2009-03-21 08:00,2009-04-06 17:00,,2008-12-16 08:00,2009-01-01 17:00,2008-12-16 08:00,2009-01-01 17:00,2008-12-16 08:00,2009-01-01 17:00,,,,,PT_Normal,,,,,gMFDZtNk90WH7j8M+21ukQ,,,,N,0,0
2176,84075,829,11399,912,1,0,N,N,N,CP_Drtn,TT_Task,DT_FixedDUR2,RV_OK,TK_NotStart,720BM42050,Signage works,2306,1000,688,120,0,1193.8,1193.8,120,0,0,0,,,,2009-03-21 08:00,2009-04-06 17:00,,2008-10-26 08:00,2008-11-11 17:00,2008-10-26 08:00,2008-11-11 17:00,2008-10-26 08:00,2008-11-11 17:00,,,,,PT_Normal,,,,,evXvOFKoCE2Lxrna1/j9VQ,,,,N,0,0
2177,84076,829,11609,912,1,0,N,N,N,CP_Drtn,TT_Task,DT_FixedDUR2,RV_OK,TK_NotStart,720BM44100,Wheel stopers,2306,584,0,120,0,5664,5664,120,0,0,0,,,,2009-01-26 08:00,2009-02-11 17:00,,2008-11-02 08:00,2008-11-18 17:00,2008-11-02 08:00,2008-11-18 17:00,2008-11-02 08:00,2008-11-18 17:00,,,,,PT_Normal,,,,,criXudbWcke09TGXPPZYXA,,,,N,0,0
2178,84077,829,11609,912,1,0,N,N,N,CP_Drtn,TT_Task,DT_FixedDUR2,RV_OK,TK_NotStart,720BM44150,Wall guards for columns & ramp walls,2306,584,0,120,0,6920,6920,120,0,0,0,,,,2009-01-26 08:00,2009-02-11 17:00,,2008-11-02 08:00,2008-11-18 17:00,2008-11-02 08:00,2008-11-18 17:00,2008-11-02 08:00,2008-11-18 17:00,,,,,PT_Normal,,,,,woRWrTXtv0aRzWzvLYQ75w,,,,N,0,0
2179,84078,829,11609,912,1,0,N,N,N,CP_Drtn,TT_Task,DT_FixedDUR2,RV_OK,TK_NotStart,720BM44200,Speed hump,2306,664,80,120,0,296,296,120,0,0,0,,,,2009-01-26 08:00,2009-02-11 17:00,,2008-10-21 08:00,2008-11-06 17:00,2008-10-21 08:00,2008-11-06 17:00,2008-10-21 08:00,2008-11-06 17:00,,,,,PT_Normal,,,,,MDpYkY//NkOha00eCQxXAw,,,,N,0,0
2180,84079,829,12152,912,1,100,N,N,N,CP_Drtn,TT_Task,DT_FixedDUR2,RV_OK,TK_Complete,720BM50050,Basement underground MEP provisions,2296,0,0,0,6431.8,0,6431.8,120,,,0,,2008-03-09 08:00,2008-03-26 17:00,2008-10-02 08:00,2008-10-01 17:00,,2008-10-02 08:00,2008-10-01 17:00,,,2008-03-09 08:00,2008-03-26 17:00,,,,,PT_Normal,,,,,P1FCJl+ve0OVzLZOx4+dgw,,,,N,6431.8,0
2181,84080,829,12152,912,1,100,N,N,N,CP_Drtn,TT_Task,DT_FixedDUR2,RV_OK,TK_Complete,720BM50100,MEP skeleton embedded provisions,2296,0,0,0,942,0,942,128,,,0,,2008-04-09 08:00,2008-04-27 17:00,2008-10-02 08:00,2008-10-01 17:00,,2008-10-02 08:00,2008-10-01 17:00,,,2008-04-09 08:00,2008-04-27 17:00,,,,,PT_Normal,,,,,d9+l7iiAKEGnKLMdw0yq8A,,,,N,942,0
2182,84081,829,12363,912,1,100,N,N,N,CP_Drtn,TT_Task,DT_FixedDUR2,RV_OK,TK_Complete,720BM52050,A/C duct works,2296,304,0,0,8139,0,8139,120,,,0,,2008-08-19 08:00,2008-09-04 17:00,2008-11-16 08:00,2008-11-15 17:00,,2008-10-02 08:00,2008-10-01 17:00,,,2008-08-19 08:00,2008-09-04 17:00,,,,,PT_Normal,,,,,jMzpbdNVp0GMoLLCsmwrDQ,,,,N,8139,0
2183,84082,829,12363,912,1,100,N,N,N,CP_Drtn,TT_Task,DT_FixedDUR2,RV_OK,TK_Complete,720BM52100,Chilled water pipe works,2296,304,0,0,8700,0,8700,120,,,0,,2008-08-28 08:00,2008-09-14 17:00,2008-11-16 08:00,2008-11-15 17:00,,2008-10-02 08:00,2008-10-01 17:00,,,2008-08-28 08:00,2008-09-14 17:00,,,,,PT_Normal,,,,,ZcjE8EsWB0ia9Z4Oyt02uw,,,,N,8700,0
2184,84083,829,12573,912,1,100,N,N,N,CP_Drtn,TT_Task,DT_FixedDUR2,RV_OK,TK_Complete,720BM52150,FCU/ACCU's hangging,2296,304,0,0,3556.8,0,3556.8,72,,,0,,2008-08-25 08:00,2008-09-03 17:00,2008-11-16 08:00,2008-11-15 17:00,,2008-10-02 08:00,2008-10-01 17:00,,,2008-08-25 08:00,2008-09-03 17:00,,,,,PT_Normal,,,,,5cV+A/kNoEO531KyWJOM3w,,,,N,3556.8,0
2185,84084,829,12573,912,1,100,N,N,N,CP_Drtn,TT_Task,DT_FixedDUR2,RV_OK,TK_Complete,720BM52300,FCU assembly & duct connections,2296,304,0,0,3556.8,0,3556.8,72,,,0,,2008-09-15 08:00,2008-09-24 17:00,2008-11-16 08:00,2008-11-15 17:00,,2008-10-02 08:00,2008-10-01 17:00,,,2008-09-15 08:00,2008-09-24 17:00,,,,,PT_Normal,,,,,1Slwz0+950+mkCdphMSl4w,,,,N,3556.8,0
2186,84085,829,12573,912,1,0,N,N,N,CP_Drtn,TT_Task,DT_FixedDUR2,RV_OK,TK_NotStart,720BM52350,Grills & diffusers,2296,736,152,72,0,4164,4164,72,0,0,0,,,,2009-01-31 08:00,2009-02-09 17:00,,2008-10-15 08:00,2008-10-25 17:00,2008-10-15 08:00,2008-10-25 17:00,2008-10-15 08:00,2008-10-25 17:00,,,,,PT_Normal,,,,,MUIUtPRldU2PDImExw0EfQ,,,,N,0,0
2187,84086,829,12365,912,1,0,N,N,N,CP_Drtn,TT_Task,DT_FixedDUR2,RV_OK,TK_NotStart,720BM52450,Jet & exhaust fans,2296,448,144,120,0,3640,3640,120,0,0,0,,,,2009-02-09 08:00,2009-02-25 17:00,,2008-12-06 08:00,2008-12-22 17:00,2008-12-06 08:00,2008-12-22 17:00,2008-12-06 08:00,2008-12-22 17:00,,,,,PT_Normal,,,,,WmJJR87ubkSBElzFJAb85w,,,,N,0,0
2188,84087,829,12365,912,1,0,N,N,N,CP_Drtn,TT_Task,DT_FixedDUR2,RV_OK,TK_NotStart,720BM52500,"ETS room equipments, pumps & HX",2296,448,144,120,0,8581.2,8581.2,120,0,0,0,,,,2009-02-09 08:00,2009-02-25 17:00,,2008-12-06 08:00,2008-12-22 17:00,2008-12-06 08:00,2008-12-22 17:00,2008-12-06 08:00,2008-12-22 17:00,,,,,PT_Normal,,,,,Cxa1tZwTWUujzu0kmy2dmA,,,,N,0,0
2189,84088,829,12576,912,1,100,N,N,N,CP_Drtn,TT_Task,DT_FixedDUR2,RV_OK,TK_Complete,720BM54100,Water supply pipe works,2296,304,0,0,4032,0,4032,72,,,0,,2008-08-07 08:00,2008-08-17 17:00,2008-11-16 08:00,2008-11-15 17:00,,2008-10-02 08:00,2008-10-01 17:00,,,2008-08-07 08:00,2008-08-17 17:00,,,,,PT_Normal,,,,,qFJwjCxlikOQ1oY3Q/uK4A,,,,N,4032,0
2190,84089,829,12159,912,1,0,N,N,N,CP_Drtn,TT_Task,DT_FixedDUR2,RV_OK,TK_NotStart,720BM54550,Booster pump set & Hydropneumatic tank,2296,344,0,120,0,4467.2,4467.2,120,0,0,0,,,,2009-01-25 08:00,2009-02-10 17:00,,2008-12-06 08:00,2008-12-22 17:00,2008-12-06 08:00,2008-12-22 17:00,2008-12-06 08:00,2008-12-22 17:00,,,,,PT_Normal,,,,,9yCnTFU0q02c+/2qWPLkvw,,,,N,0,0
2191,84090,829,12161,912,1,100,N,N,N,CP_Drtn,TT_Task,DT_FixedDUR2,RV_OK,TK_Complete,720BM56150,Over head drainage pipe works,2296,304,0,0,3090,0,3090,120,,,0,,2008-07-14 08:00,2008-07-30 17:00,2008-11-16 08:00,2008-11-15 17:00,,2008-10-02 08:00,2008-10-01 17:00,,,2008-07-14 08:00,2008-07-30 17:00,,,,,PT_Normal,,,,,5eb78PtpoUeCWpuipty+Og,,,,N,3090,0
2192,84091,829,12580,912,1,0,N,N,N,CP_Drtn,TT_Task,DT_FixedDUR2,RV_OK,TK_NotStart,720BM56200,Submersible pumps,2296,344,8,120,0,2265,2265,120,0,0,0,,,,2009-01-25 08:00,2009-02-10 17:00,,2008-12-06 08:00,2008-12-22 17:00,2008-12-06 08:00,2008-12-22 17:00,2008-12-06 08:00,2008-12-22 17:00,,,,,PT_Normal,,,,,bzKReU6ES0upWWsXK+lPgw,,,,N,0,0
2193,84092,829,12164,912,1,100,N,N,N,CP_Drtn,TT_Task,DT_FixedDUR2,RV_OK,TK_Complete,720BM58050,Fire fighting pipe works,2296,304,0,0,4245,0,4245,120,,,0,,2008-07-14 08:00,2008-07-30 17:00,2008-11-16 08:00,2008-11-15 17:00,,2008-10-02 08:00,2008-10-01 17:00,,,2008-07-14 08:00,2008-07-30 17:00,,,,,PT_Normal,,,,,rceLpzv4I0CNZCdy424+xg,,,,N,4245,0
2194,84093,829,12583,912,1,0,N,N,N,CP_Drtn,TT_Task,DT_FixedDUR2,RV_OK,TK_NotStart,720BM58200,Fire cabinet complete,2296,1000,592,120,0,1550,1550,120,0,0,0,,,,2009-03-21 08:00,2009-04-06 17:00,,2008-10-26 08:00,2008-11-11 17:00,2008-10-26 08:00,2008-11-11 17:00,2008-10-26 08:00,2008-11-11 17:00,,,,,PT_Normal,,,,,cJoUpTlAJEKY8aCUbJnBSw,,,,N,0,0
2195,84094,829,12583,912,1,0,N,N,N,CP_Drtn,TT_Task,DT_FixedDUR2,RV_OK,TK_NotStart,720BM58250,Sprinkler heads,2296,448,144,120,0,1880,1880,120,0,0,0,,,,2009-02-09 08:00,2009-02-25 17:00,,2008-12-06 08:00,2008-12-22 17:00,2008-12-06 08:00,2008-12-22 17:00,2008-12-06 08:00,2008-12-22 17:00,,,,,PT_Normal,,,,,nmgDEw+/TkuuvK+Azs1OQQ,,,,N,0,0
2196,84095,829,12583,912,1,0,N,N,N,CP_Drtn,TT_Task,DT_FixedDUR2,RV_OK,TK_NotStart,720BM58300,FM-200,2296,368,64,120,0,1770,1770,120,0,0,0,,,,2008-12-27 08:00,2009-01-12 17:00,,2008-11-03 08:00,2008-11-19 17:00,2008-11-03 08:00,2008-11-19 17:00,2008-11-03 08:00,2008-11-19 17:00,,,,,PT_Normal,,,,,FacGGxq96kShmfCCtlM6RA,,,,N,0,0
2197,84096,829,12166,912,1,0,N,N,N,CP_Drtn,TT_Task,DT_FixedDUR2,RV_OK,TK_NotStart,720BM58350,Fire pump set,2296,304,0,120,0,1550,1550,120,0,0,0,,,,2009-01-19 08:00,2009-02-04 17:00,,2008-12-06 08:00,2008-12-22 17:00,2008-12-06 08:00,2008-12-22 17:00,2008-12-06 08:00,2008-12-22 17:00,,,,,PT_Normal,,,,,KJWv1FHy0UuKpFTVBDjW0g,,,,N,0,0
2198,84097,829,12586,912,1,100,N,N,N,CP_Drtn,TT_Task,DT_FixedDUR2,RV_OK,TK_Complete,720BM60050,LPG pipe works,2296,864,0,0,708,0,708,48,,,0,,2008-08-02 08:00,2008-08-07 17:00,2009-02-05 08:00,2009-02-04 17:00,,2008-10-02 08:00,2008-10-01 17:00,,,2008-08-02 08:00,2008-08-07 17:00,,,,,PT_Normal,,,,,1R7N+60SRUCSSbxmmcocgQ,,,,N,708,0
2199,84098,829,12379,912,1,100,N,N,N,CP_Drtn,TT_Task,DT_FixedDUR2,RV_OK,TK_Complete,720BM62050,BMS cabling,2296,304,0,0,1761.6,0,1761.6,72,,,0,,2008-09-06 08:00,2008-09-15 17:00,2008-11-16 08:00,2008-11-15 17:00,,2008-10-02 08:00,2008-10-01 17:00,,,2008-09-06 08:00,2008-09-15 17:00,,,,,PT_Normal,,,,,HQ9MMtBHikKETllgkxRK8A,,,,N,1761.6,0
2200,84099,829,12280,912,1,0,N,N,N,CP_Drtn,TT_Task,DT_FixedDUR2,RV_OK,TK_NotStart,720BM62100,DGC & cable termination to equipments,2296,608,0,72,0,705.6,705.6,72,0,0,0,,,,2009-03-04 08:00,2009-03-14 17:00,,2008-12-06 08:00,2008-12-15 17:00,2008-12-06 08:00,2008-12-15 17:00,2008-12-06 08:00,2008-12-15 17:00,,,,,PT_Normal,,,,,xglFFUkbCE2nBBqhl4+O0A,,,,N,0,0
2201,84100,829,12280,912,1,0,N,N,N,CP_Drtn,TT_Task,DT_FixedDUR2,RV_OK,TK_NotStart,720BM62150,Main controler &  workstation equipment,2296,608,288,72,0,212.8,212.8,72,0,0,0,,,,2009-03-15 08:00,2009-03-24 17:00,,2008-12-16 08:00,2008-12-25 17:00,2008-12-16 08:00,2008-12-25 17:00,2008-12-16 08:00,2008-12-25 17:00,,,,,PT_Normal,,,,,oZ424Mj300mgQj5oH5VW8Q,,,,N,0,0
2202,84101,829,12382,912,1,100,N,N,N,CP_Drtn,TT_Task,DT_FixedDUR2,RV_OK,TK_Complete,720BM66050,Chasing and installation of conduits,2296,304,0,0,3076.8,0,3076.8,120,,,0,,2008-07-14 08:00,2008-07-30 17:00,2008-11-16 08:00,2008-11-15 17:00,,2008-10-02 08:00,2008-10-01 17:00,,,2008-07-14 08:00,2008-07-30 17:00,,,,,PT_Normal,,,,,g7H5FvDchkKApAGps6Q2qA,,,,N,3076.8,0
2203,84102,829,12382,912,1,100,N,N,N,CP_Drtn,TT_Task,DT_FixedDUR2,RV_OK,TK_Complete,720BM66100,Cable trays & trunking,2296,304,0,0,3288,0,3288,120,,,0,,2008-08-19 08:00,2008-09-04 17:00,2008-11-16 08:00,2008-11-15 17:00,,2008-10-02 08:00,2008-10-01 17:00,,,2008-08-19 08:00,2008-09-04 17:00,,,,,PT_Normal,,,,,/IkDWezpEEyeFszpPF+FVQ,,,,N,3288,0
2204,84103,829,12384,912,1,100,N,N,N,CP_Drtn,TT_Task,DT_FixedDUR2,RV_OK,TK_Complete,720BM68050,Single core wiring,2296,304,0,0,4304,0,4304,80,,,0,,2008-07-14 08:00,2008-07-24 17:00,2008-11-16 08:00,2008-11-15 17:00,,2008-10-02 08:00,2008-10-01 17:00,,,2008-07-14 08:00,2008-07-24 17:00,,,,,PT_Normal,,,,,i4Cav0Yya0+rzr597tejDQ,,,,N,4304,0
2205,84104,829,12385,912,1,100,N,N,N,CP_Drtn,TT_Task,DT_FixedDUR2,RV_OK,TK_Complete,720BM68150,LV feeder cables,2296,304,0,0,4344,0,4344,120,,,0,,2008-09-06 08:00,2008-09-22 17:00,2008-11-16 08:00,2008-11-15 17:00,,2008-10-02 08:00,2008-10-01 17:00,,,2008-09-06 08:00,2008-09-22 17:00,,,,,PT_Normal,,,,,FfdzTY84nEuRR+dVbBVd5w,,,,N,4344,0
2206,84105,829,12177,912,1,0,N,N,N,CP_Drtn,TT_Task,DT_FixedDUR2,RV_OK,TK_NotStart,720BM68300,SMDB,2296,648,0,72,0,1761.6,1761.6,72,0,0,0,,,,2009-03-10 08:00,2009-03-19 17:00,,2008-12-06 08:00,2008-12-15 17:00,2008-12-06 08:00,2008-12-15 17:00,2008-12-06 08:00,2008-12-15 17:00,,,,,PT_Normal,,,,,6z7GFhKMrUyVfKVs6A+yfQ,,,,N,0,0
2207,84106,829,12177,912,1,0,N,N,N,CP_Drtn,TT_Task,DT_FixedDUR2,RV_OK,TK_NotStart,720BM68350,Light Fittings,2296,584,0,120,0,2232,2232,120,0,0,0,,,,2008-12-28 08:00,2009-01-13 17:00,,2008-10-04 08:00,2008-10-20 17:00,2008-10-04 08:00,2008-10-20 17:00,2008-10-04 08:00,2008-10-20 17:00,,,,,PT_Normal,,,,,tz9ipRjXtEy6Qh5CBEhVug,,,,N,0,0
2208,84107,829,12177,912,1,0,N,N,N,CP_Drtn,TT_Task,DT_FixedDUR2,RV_OK,TK_NotStart,720BM68400,Lighting Control Panels,2296,912,624,48,0,4272,4272,48,0,0,0,,,,2009-03-08 08:00,2009-03-14 17:00,,2008-10-26 08:00,2008-11-01 17:00,2008-10-26 08:00,2008-11-01 17:00,2008-10-26 08:00,2008-11-01 17:00,,,,,PT_Normal,,,,,r9JgEK1fMkGzkn8+EbXY6w,,,,N,0,0
2209,84108,829,12177,912,1,0,N,N,N,CP_Drtn,TT_Task,DT_FixedDUR2,RV_OK,TK_NotStart,720BM68500,Isolators,2296,792,384,48,0,752,752,48,0,0,0,,,,2009-03-31 08:00,2009-04-06 17:00,,2008-12-06 08:00,2008-12-11 17:00,2008-12-06 08:00,2008-12-11 17:00,2008-12-06 08:00,2008-12-11 17:00,,,,,PT_Normal,,,,,3gPWjA77n0yKGrcekNnsaQ,,,,N,0,0
2210,84109,829,12177,912,1,0,N,N,N,CP_Drtn,TT_Task,DT_FixedDUR2,RV_OK,TK_NotStart,720BM68600,Switches & sockets,2296,768,360,72,0,1761.6,1761.6,72,0,0,0,,,,2009-03-28 08:00,2009-04-06 17:00,,2008-12-06 08:00,2008-12-15 17:00,2008-12-06 08:00,2008-12-15 17:00,2008-12-06 08:00,2008-12-15 17:00,,,,,PT_Normal,,,,,zj0ooYipLEO8+KZooPfGDg,,,,N,0,0
2211,84110,829,12177,912,1,53.3,N,N,N,CP_Drtn,TT_Task,DT_FixedDUR2,RV_OK,TK_Active,720BM68700,Earthing pits,2296,656,72,56,364.38,318.82,683.2,120,,,,,2008-09-23 08:00,,2009-01-06 08:00,2009-01-13 17:00,,2008-10-02 08:00,2008-10-09 17:00,2008-10-02 08:00,2008-10-09 17:00,2008-09-23 08:00,2008-10-09 17:00,,,,,PT_Normal,,,,,Q2fyThrdSUmHWBpCZn3eug,,,,N,364.38,0
2212,84111,829,12388,912,1,100,N,N,N,CP_Drtn,TT_Task,DT_FixedDUR2,RV_OK,TK_Complete,720BM70050,Central Battery cables,2296,304,0,0,1550.4,0,1550.4,72,,,0,,2008-07-26 08:00,2008-08-05 17:00,2008-11-16 08:00,2008-11-15 17:00,,2008-10-02 08:00,2008-10-01 17:00,,,2008-07-26 08:00,2008-08-05 17:00,,,,,PT_Normal,,,,,Ilde3/rUY0iIlILG4nKm9g,,,,N,1550.4,0
2213,84112,829,12389,912,1,0,N,N,N,CP_Drtn,TT_Task,DT_FixedDUR2,RV_OK,TK_NotStart,720BM70100,Main Central Battery Panel,2296,600,96,64,0,908.8,908.8,64,0,0,0,,,,2009-03-03 08:00,2009-03-11 17:00,,2008-12-06 08:00,2008-12-14 17:00,2008-12-06 08:00,2008-12-14 17:00,2008-12-06 08:00,2008-12-14 17:00,,,,,PT_Normal,,,,,3Ews5QLbSkmXo2uxp6L/iQ,,,,N,0,0
2214,84113,829,12389,912,1,0,N,N,N,CP_Drtn,TT_Task,DT_FixedDUR2,RV_OK,TK_NotStart,720BM70150,Emergency & exit light fittings,2296,944,440,72,0,916.8,916.8,72,0,0,0,,,,2009-03-02 08:00,2009-03-11 17:00,,2008-10-15 08:00,2008-10-25 17:00,2008-10-15 08:00,2008-10-25 17:00,2008-10-15 08:00,2008-10-25 17:00,,,,,PT_Normal,,,,,IF/MAR2Iu0Wp6/NabGiDLw,,,,N,0,0
2215,84114,829,12182,912,1,100,N,N,N,CP_Drtn,TT_Task,DT_FixedDUR2,RV_OK,TK_Complete,720BM72050,CCTV system cables,2296,304,0,0,494.4,0,494.4,72,,,0,,2008-09-06 08:00,2008-09-15 17:00,2008-11-16 08:00,2008-11-15 17:00,,2008-10-02 08:00,2008-10-01 17:00,,,2008-09-06 08:00,2008-09-15 17:00,,,,,PT_Normal,,,,,4QHQX31fuEm4i7FVAuuc8g,,,,N,494.4,0
2216,84115,829,12392,912,1,0,N,N,N,CP_Drtn,TT_Task,DT_FixedDUR2,RV_OK,TK_NotStart,720BM72100,CCTV system equipments,2296,888,352,72,0,283.2,283.2,72,0,0,0,,,,2009-03-04 08:00,2009-03-14 17:00,,2008-10-26 08:00,2008-11-04 17:00,2008-10-26 08:00,2008-11-04 17:00,2008-10-26 08:00,2008-11-04 17:00,,,,,PT_Normal,,,,,BB7uWN4wqESxkaJSvr+svQ,,,,N,0,0
2217,84116,829,12392,912,1,0,N,N,N,CP_Drtn,TT_Task,DT_FixedDUR2,RV_OK,TK_NotStart,720BM72150,Gate barriers & card readers,2296,584,0,64,0,204.8,204.8,64,0,0,0,,,,2009-02-18 08:00,2009-02-26 17:00,,2008-11-25 08:00,2008-12-03 17:00,2008-11-25 08:00,2008-12-03 17:00,2008-11-25 08:00,2008-12-03 17:00,,,,,PT_Normal,,,,,E/rhEBk4+0qZiEhaqDzpOA,,,,N,0,0
2218,84117,829,12185,912,1,100,N,N,N,CP_Drtn,TT_Task,DT_FixedDUR2,RV_OK,TK_Complete,720BM74050,Fire alarm cables,2296,304,0,0,1057.6,0,1057.6,72,,,0,,2008-07-26 08:00,2008-08-05 17:00,2008-11-16 08:00,2008-11-15 17:00,,2008-10-02 08:00,2008-10-01 17:00,,,2008-07-26 08:00,2008-08-05 17:00,,,,,PT_Normal,,,,,N/e7huGIuUyjfm7UItesQA,,,,N,1057.6,0
2219,84118,829,12395,912,1,0,N,N,N,CP_Drtn,TT_Task,DT_FixedDUR2,RV_OK,TK_NotStart,720BM74100,Fire alarm fittings,2296,776,472,72,0,283.2,283.2,72,0,0,0,,,,2009-02-16 08:00,2009-02-25 17:00,,2008-10-26 08:00,2008-11-04 17:00,2008-10-26 08:00,2008-11-04 17:00,2008-10-26 08:00,2008-11-04 17:00,,,,,PT_Normal,,,,,L4q92Ll34k2wNw1jvcUdjw,,,,N,0,0
2220,84119,829,12395,912,1,0,N,N,N,CP_Drtn,TT_Task,DT_FixedDUR2,RV_OK,TK_NotStart,720BM74200,MFACP @ BMS room,2296,520,216,48,0,400,400,48,0,0,0,,,,2009-02-19 08:00,2009-02-25 17:00,,2008-12-06 08:00,2008-12-11 17:00,2008-12-06 08:00,2008-12-11 17:00,2008-12-06 08:00,2008-12-11 17:00,,,,,PT_Normal,,,,,NFdDtgV4S0SJclRCQNjF9A,,,,N,0,0
2221,84120,829,12397,912,1,100,N,N,N,CP_Drtn,TT_Task,DT_FixedDUR2,RV_OK,TK_Complete,720BM76050,Structured cabling,2296,304,0,0,635.2,0,635.2,72,,,0,,2008-09-06 08:00,2008-09-15 17:00,2008-11-16 08:00,2008-11-15 17:00,,2008-10-02 08:00,2008-10-01 17:00,,,2008-09-06 08:00,2008-09-15 17:00,,,,,PT_Normal,,,,,YSh5q3z94Ey4FJZybYaMMA,,,,N,635.2,0
2222,84121,829,10670,912,1,0,N,N,N,CP_Drtn,TT_Task,DT_FixedDUR2,RV_OK,TK_NotStart,7211L00000,Pre-Snagging & Disnagging for duplexes,2296,40,0,120,0,420,420,120,0,0,0,,,,2009-01-05 08:00,2009-01-21 17:00,,2008-12-30 08:00,2009-01-15 17:00,2008-12-30 08:00,2009-01-15 17:00,2008-12-30 08:00,2009-01-15 17:00,,,,,PT_Normal,,,,,lZMR8SOZ8EiioqPD354gwg,,,,N,0,0
2223,84122,829,10670,912,1,0,N,N,N,CP_Drtn,TT_Task,DT_FixedDUR2,RV_OK,TK_NotStart,7211L00002,Pre-Snagging & Disnagging for corrid & Srv rooms,2296,256,0,64,0,214,214,64,0,0,0,,,,2009-02-25 08:00,2009-03-05 17:00,,2009-01-19 08:00,2009-01-27 17:00,2009-01-19 08:00,2009-01-27 17:00,2009-01-19 08:00,2009-01-27 17:00,,,,,PT_Normal,,,,,aTxyx3L0jkWoi0Fy/QxkHQ,,,,N,0,0
2224,84123,829,11342,912,1,100,N,N,N,CP_Drtn,TT_Task,DT_FixedDUR2,RV_OK,TK_Complete,7211L12050,Columns & walls 1L to 1U - Part 1,2306,24,0,0,3408.26,0,3408.26,32,102126.4,102126.4,0,,2008-07-07 08:00,2008-07-10 17:00,2008-10-06 08:00,2008-10-05 17:00,,2008-10-02 08:00,2008-10-01 17:00,,,2008-07-07 08:00,2008-07-10 17:00,,,,,PT_Normal,,,,,QpOo3IZy7EaWfVnheEBVsQ,,,,N,3408.26,102126.4
2225,84124,829,11342,912,1,100,N,N,N,CP_Drtn,TT_Task,DT_FixedDUR2,RV_OK,TK_Complete,7211L12051,Columns & walls 1L to 1U - Part 2,2306,24,0,0,3408.26,0,3408.26,32,102126.4,102126.4,0,,2008-07-15 08:00,2008-07-19 17:00,2008-10-06 08:00,2008-10-05 17:00,,2008-10-02 08:00,2008-10-01 17:00,,,2008-07-15 08:00,2008-07-19 17:00,,,,,PT_Normal,,,,,JxrIaG7bTUWZzA+/gzb+Kg,,,,N,3408.26,102126.4
2226,84125,829,11342,912,1,100,N,N,N,CP_Drtn,TT_Task,DT_FixedDUR2,RV_OK,TK_Complete,7211L12052,Columns & walls 1L to 1U - Middle Part,2306,24,0,0,7073.11,0,7073.11,32,212979.36,212979.36,0,,2008-07-14 08:00,2008-07-17 17:00,2008-10-06 08:00,2008-10-05 17:00,,2008-10-02 08:00,2008-10-01 17:00,,,2008-07-14 08:00,2008-07-17 17:00,,,,,PT_Normal,,,,,FA1qs24F1Uu9JBAkE6ClBA,,,,N,7073.11,212979.36
2227,84126,829,11342,912,1,100,N,N,N,CP_Drtn,TT_Task,DT_FixedDUR2,RV_OK,TK_Complete,7211L12200,Slab @ 1U level - Part 1,2306,24,0,0,1938.1,0,1938.1,56,69809.52,69809.52,0,,2008-07-15 08:00,2008-07-22 17:00,2008-10-06 08:00,2008-10-05 17:00,,2008-10-02 08:00,2008-10-01 17:00,,,2008-07-15 08:00,2008-07-22 17:00,,,,,PT_Normal,,,,,ABrk2rlo3U66xGzNBd2GJg,,,,N,1938.1,69809.52
2228,84127,829,11342,912,1,100,N,N,N,CP_Drtn,TT_Task,DT_FixedDUR2,RV_OK,TK_Complete,7211L12201,Slab @ 1U level - Part 2,2306,24,0,0,1938.1,0,1938.1,56,69809.52,69809.52,0,,2008-07-23 08:00,2008-07-30 17:00,2008-10-06 08:00,2008-10-05 17:00,,2008-10-02 08:00,2008-10-01 17:00,,,2008-07-23 08:00,2008-07-30 17:00,,,,,PT_Normal,,,,,PedG7BGAXEapl+0jnjIXRg,,,,N,1938.1,69809.52
2229,84128,829,11342,912,1,100,N,N,N,CP_Drtn,TT_Task,DT_FixedDUR2,RV_OK,TK_Complete,7211L12202,Slab @ 1U level - Middle Part,2306,24,0,0,2781.47,0,2781.47,56,101094.8,101094.8,0,,2008-07-22 08:00,2008-07-29 17:00,2008-10-06 08:00,2008-10-05 17:00,,2008-10-02 08:00,2008-10-01 17:00,,,2008-07-22 08:00,2008-07-29 17:00,,,,,PT_Normal,,,,,0GR+ZSbEPEWbYz8dXmutkw,,,,N,2781.47,101094.8
2230,84129,829,11342,912,1,100,N,N,N,CP_Drtn,TT_Task,DT_FixedDUR2,RV_OK,TK_Complete,7211L12250,Staircases 1L to 1U,2306,208,0,0,991.88,0,991.88,24,18457.6,18457.6,0,,2008-08-02 08:00,2008-08-04 17:00,2008-11-02 08:00,2008-11-01 17:00,,2008-10-02 08:00,2008-10-01 17:00,,,2008-08-02 08:00,2008-08-04 17:00,,,,,PT_Normal,,,,,VVcDS//NpkuFt4mz2Uj/iA,,,,N,991.88,18457.6
2231,84130,829,11640,912,1,100,N,N,N,CP_Drtn,TT_Task,DT_FixedDUR2,RV_OK,TK_Complete,7211L14050,Block works,2306,40,0,0,24323,0,30085.5,120,18440,24202.5,0,,2008-08-25 08:00,2008-09-10 17:00,2008-10-08 08:00,2008-10-07 17:00,,2008-10-02 08:00,2008-10-01 17:00,,,2008-08-25 08:00,2008-09-10 17:00,,,,,PT_Normal,,,,,iQgLCZjVz0ml2cRpn+ZpXg,,,,N,24323,24202.5
2232,84131,829,11641,912,1,100,N,N,N,CP_Drtn,TT_Task,DT_FixedDUR2,RV_OK,TK_Complete,7211L16050,Plaster works,2306,40,0,0,24385.9,0,24385.9,120,19032,19032,0,,2008-09-11 08:00,2008-09-28 17:00,2008-10-08 08:00,2008-10-07 17:00,,2008-10-02 08:00,2008-10-01 17:00,,,2008-09-11 08:00,2008-09-28 17:00,,,,,PT_Normal,,,,,/GN1qyp9EEqhyL3iXOp+Kw,,,,N,24385.9,19032
2233,84132,829,11641,912,1,100,N,N,N,CP_Drtn,TT_Task,DT_FixedDUR2,RV_OK,TK_Complete,7211L16051,Plaste works behind tiles,2306,216,0,0,10136.2,0,10136.2,120,7856,7856,0,,2008-09-15 08:00,2008-10-01 17:00,2008-11-03 08:00,2008-11-02 17:00,,2008-10-02 08:00,2008-10-01 17:00,,,2008-09-15 08:00,2008-10-01 17:00,,,,,PT_Normal,,,,,OQbpAW8oU0K4Fo9RjglSMA,,,,N,10136.2,7856
2234,84133,829,11533,912,1,100,N,N,N,CP_Drtn,TT_Task,DT_FixedDUR2,RV_OK,TK_Complete,7211L18050,Rendering works,2306,40,0,0,5683,0,5683,120,5000,5000,0,,2008-09-02 08:00,2008-09-18 17:00,2008-10-08 08:00,2008-10-07 17:00,,2008-10-02 08:00,2008-10-01 17:00,,,2008-09-02 08:00,2008-09-18 17:00,,,,,PT_Normal,,,,,87CG3m/60UGdqZ3Qa9m5gw,,,,N,5683,5000
2235,84134,829,11533,912,1,73.3,N,N,N,CP_Drtn,TT_Task,DT_FixedDUR2,RV_OK,TK_Active,7211L18100,Painting base coats,2306,40,0,32,19474.08,7081.52,26555.6,120,24032,17623.44,6408.56,,2008-09-20 08:00,,2008-10-08 08:00,2008-10-12 17:00,,2008-10-02 08:00,2008-10-06 17:00,2008-10-02 08:00,2008-10-06 17:00,2008-09-20 08:00,2008-10-06 17:00,,,,,PT_Normal,,,,,EmHUCcZpSkuMdea0sO+tFQ,,,,N,19474.08,17623.44
2236,84135,829,11533,912,1,0,N,N,N,CP_Drtn,TT_Task,DT_FixedDUR2,RV_OK,TK_NotStart,7211L18150,Painting 1st top coat for apartments,2306,184,0,72,0,17300.2,17300.2,72,16408,0,16408,,,,2008-12-17 08:00,2008-12-27 17:00,,2008-11-20 08:00,2008-11-30 17:00,2008-11-20 08:00,2008-11-30 17:00,2008-11-20 08:00,2008-11-30 17:00,,,,,PT_Normal,,,,,gxpTVWwz80+QJkyIWbOulg,,,,N,0,0
2237,84136,829,11533,912,1,0,N,N,N,CP_Drtn,TT_Task,DT_FixedDUR2,RV_OK,TK_NotStart,7211L18153,Painting 1st top coat for corridors/lobbies,2306,432,0,48,0,14370,14370,48,13640,0,13640,,,,2009-02-04 08:00,2009-02-10 17:00,,2008-12-03 08:00,2008-12-09 17:00,2008-12-03 08:00,2008-12-09 17:00,2008-12-03 08:00,2008-12-09 17:00,,,,,PT_Normal,,,,,xVcV6kgFIECA9LBI70hakQ,,,,N,0,0
2238,84137,829,11533,912,1,0,N,N,N,CP_Drtn,TT_Task,DT_FixedDUR2,RV_OK,TK_NotStart,7211L18155,Painting 1st top coat for service rooms,2306,432,0,48,0,6364.4,6364.4,48,6016,0,6016,,,,2009-02-02 08:00,2009-02-08 17:00,,2008-12-01 08:00,2008-12-07 17:00,2008-12-01 08:00,2008-12-07 17:00,2008-12-01 08:00,2008-12-07 17:00,,,,,PT_Normal,,,,,JAh+dzAxFkqEQ9AoI7u8xA,,,,N,0,0
2239,84138,829,10670,912,1,0,N,N,N,CP_Drtn,TT_Task,DT_FixedDUR2,RV_OK,TK_NotStart,7211L18200,Painting final top coat,2306,312,72,32,0,25265.8,25265.8,32,24032,0,24032,,,,2009-03-18 08:00,2009-03-22 17:00,,2009-02-01 08:00,2009-02-04 17:00,2009-02-01 08:00,2009-02-04 17:00,2009-02-01 08:00,2009-02-04 17:00,,,,,PT_Normal,,,,,Mk/c0rFMWEOYChlBGxlmLA,,,,N,0,0
2240,84139,829,11643,912,1,20,N,N,N,CP_Drtn,TT_Task,DT_FixedDUR2,RV_OK,TK_Active,7211L20050,Floor tiles for apartments-dry area,2306,232,8,96,1769.28,7077.12,8846.4,120,6464,1292.8,5171.2,,2008-09-29 08:00,,2008-11-05 08:00,2008-11-18 17:00,,2008-10-02 08:00,2008-10-15 17:00,2008-10-02 08:00,2008-10-15 17:00,2008-09-29 08:00,2008-10-15 17:00,,,,,PT_Normal,,,,,brzoUFSsLkKbIlDwn6AL9g,,,,N,1769.28,1292.8
2241,84140,829,11643,912,1,0,N,N,N,CP_Drtn,TT_Task,DT_FixedDUR2,RV_OK,TK_NotStart,7211L20053,Floor tiles for corridors / lobbies,2306,176,0,48,0,4638,4638,48,3400,0,3400,,,,2008-12-14 08:00,2008-12-20 17:00,,2008-11-18 08:00,2008-11-24 17:00,2008-11-18 08:00,2008-11-24 17:00,2008-11-18 08:00,2008-11-24 17:00,,,,,PT_Normal,,,,,wn4x/oY4KUa0JXri6TMegA,,,,N,0,0
2242,84141,829,11643,912,1,0,N,N,N,CP_Drtn,TT_Task,DT_FixedDUR2,RV_OK,TK_NotStart,7211L20070,Floor tiles for apartments-wet area,2306,40,0,120,0,3684,3684,120,2640,0,2640,,,,2008-11-17 08:00,2008-12-03 17:00,,2008-11-11 08:00,2008-11-27 17:00,2008-11-11 08:00,2008-11-27 17:00,2008-11-11 08:00,2008-11-27 17:00,,,,,PT_Normal,,,,,Dx/yAsFGZEqyB9e65WQHdA,,,,N,0,0
2243,84142,829,11643,912,1,0,N,N,N,CP_Drtn,TT_Task,DT_FixedDUR2,RV_OK,TK_NotStart,7211L20110,Wall tiles for apartments-wet area,2306,96,0,120,0,9159,9159,120,6026,0,6026,,,,2008-11-25 08:00,2008-12-11 17:00,,2008-11-11 08:00,2008-11-27 17:00,2008-11-11 08:00,2008-11-27 17:00,2008-11-11 08:00,2008-11-27 17:00,,,,,PT_Normal,,,,,ba6ielPhp0msO0Isqjd0ig,,,,N,0,0
2244,84143,829,11435,912,1,100,N,N,N,CP_Drtn,TT_Task,DT_FixedDUR2,RV_OK,TK_Complete,7211L22150,W/P for for apartments,2306,312,0,0,4880.4,0,4880.4,120,4328,4328,0,,2008-09-11 08:00,2008-09-28 17:00,2008-11-17 08:00,2008-11-16 17:00,,2008-10-02 08:00,2008-10-01 17:00,,,2008-09-11 08:00,2008-09-28 17:00,,,,,PT_Normal,,,,,dNAzrrdLGkyADROVPTO5Ow,,,,N,4880.4,4328
2245,84144,829,11645,912,1,0,N,N,N,CP_Drtn,TT_Task,DT_FixedDUR2,RV_OK,TK_NotStart,7211L24050,Aluminium doors & windows,2306,280,184,120,0,1976,1976,120,464,0,464,,,,2008-11-17 08:00,2008-12-03 17:00,,2008-10-07 08:00,2008-10-23 17:00,2008-10-07 08:00,2008-10-23 17:00,2008-10-07 08:00,2008-10-23 17:00,,,,,PT_Normal,,,,,9uIJbuI630meIzzanDK27Q,,,,N,0,0
2246,84145,829,11645,912,1,0,N,N,N,CP_Drtn,TT_Task,DT_FixedDUR2,RV_OK,TK_NotStart,7211L24200,Balcony handrails,2306,40,0,120,0,2710,2710,120,1480,0,1480,,,,2008-12-04 08:00,2008-12-21 17:00,,2008-11-29 08:00,2008-12-15 17:00,2008-11-29 08:00,2008-12-15 17:00,2008-11-29 08:00,2008-12-15 17:00,,,,,PT_Normal,,,,,0TZS2KTYfEqNZnRZt3I9Kw,,,,N,0,0
2247,84146,829,11645,912,1,0,N,N,N,CP_Drtn,TT_Task,DT_FixedDUR2,RV_OK,TK_NotStart,7211L24203,Lobby handrails,2306,552,128,64,0,946,946,64,504,0,504,,,,2009-02-14 08:00,2009-02-22 17:00,,2008-11-25 08:00,2008-12-03 17:00,2008-11-25 08:00,2008-12-03 17:00,2008-11-25 08:00,2008-12-03 17:00,,,,,PT_Normal,,,,,q3h2j/nt4E6LwpWJD/lI2Q,,,,N,0,0
2248,84147,829,11646,912,1,0,N,N,N,CP_Drtn,TT_Task,DT_FixedDUR2,RV_OK,TK_NotStart,7211L26050,Steel doors,2306,432,0,64,0,384,384,64,64,0,64,,,,2009-01-24 08:00,2009-02-01 17:00,,2008-11-22 08:00,2008-11-30 17:00,2008-11-22 08:00,2008-11-30 17:00,2008-11-22 08:00,2008-11-30 17:00,,,,,PT_Normal,,,,,J8pAWcB8B0aT1IUgG+k2LQ,,,,N,0,0
2249,84148,829,11438,912,1,0,N,N,N,CP_Drtn,TT_Task,DT_FixedDUR2,RV_OK,TK_NotStart,7211L30050,Wooden doors,2306,136,16,176,0,2192,2192,176,576,0,576,,,,2008-12-01 08:00,2008-12-25 17:00,,2008-11-11 08:00,2008-12-06 17:00,2008-11-11 08:00,2008-12-06 17:00,2008-11-11 08:00,2008-12-06 17:00,,,,,PT_Normal,,,,,vIBOZ3oXYEmNtfdGmf0oew,,,,N,0,0
2250,84149,829,11439,912,1,0,N,N,N,CP_Drtn,TT_Task,DT_FixedDUR2,RV_OK,TK_NotStart,7211L32050,Kitchen cabinets,2306,96,56,128,0,3104,3104,128,96,0,96,,,,2008-12-11 08:00,2008-12-29 17:00,,2008-11-27 08:00,2008-12-15 17:00,2008-11-27 08:00,2008-12-15 17:00,2008-11-27 08:00,2008-12-15 17:00,,,,,PT_Normal,,,,,uwVvM+Ggi0yk9sSUK53gTQ,,,,N,0,0
2251,84150,829,11439,912,1,0,N,N,N,CP_Drtn,TT_Task,DT_FixedDUR2,RV_OK,TK_NotStart,7211L32100,Vanity counters,2306,56,0,120,0,1880,1880,120,160,0,160,,,,2008-12-07 08:00,2008-12-23 17:00,,2008-11-29 08:00,2008-12-15 17:00,2008-11-29 08:00,2008-12-15 17:00,2008-11-29 08:00,2008-12-15 17:00,,,,,PT_Normal,,,,,pV9iQ+WyXUWQnPjtgoQW3Q,,,,N,0,0
2252,84151,829,11439,912,1,0,N,N,N,CP_Drtn,TT_Task,DT_FixedDUR2,RV_OK,TK_NotStart,7211L32150,Wardrobes,2306,232,192,120,0,4152,4152,120,192,0,192,,,,2008-12-13 08:00,2008-12-29 17:00,,2008-11-09 08:00,2008-11-25 17:00,2008-11-09 08:00,2008-11-25 17:00,2008-11-09 08:00,2008-11-25 17:00,,,,,PT_Normal,,,,,N4wQO8mEpEuTuqHrkwr20Q,,,,N,0,0
2253,84152,829,11649,912,1,0,N,N,N,CP_Drtn,TT_Task,DT_FixedDUR2,RV_OK,TK_NotStart,7211L34050,False ceiling works for apartments-dry area,2306,176,0,160,0,1506.16,1506.16,160,897.44,0,897.44,,,,2008-11-23 08:00,2008-12-15 17:00,,2008-10-28 08:00,2008-11-19 17:00,2008-10-28 08:00,2008-11-19 17:00,2008-10-28 08:00,2008-11-19 17:00,,,,,PT_Normal,,,,,l7wOLPk/LUe42BUpFh/kRw,,,,N,0,0
2254,84153,829,11649,912,1,0,N,N,N,CP_Drtn,TT_Task,DT_FixedDUR2,RV_OK,TK_NotStart,7211L34053,False ceiling works for corridors/lobbies,2306,176,0,72,0,9876,9876,72,6536,0,6536,,,,2008-12-06 08:00,2008-12-15 17:00,,2008-11-10 08:00,2008-11-19 17:00,2008-11-10 08:00,2008-11-19 17:00,2008-11-10 08:00,2008-11-19 17:00,,,,,PT_Normal,,,,,xIJL+urQzkeSejSsmXNYcg,,,,N,0,0
2255,84154,829,11649,912,1,0,N,N,N,CP_Drtn,TT_Task,DT_FixedDUR2,RV_OK,TK_NotStart,7211L34070,False ceiling works for apartments-wet area,2306,40,0,160,0,709.84,709.84,160,366.56,0,366.56,,,,2008-11-03 08:00,2008-11-25 17:00,,2008-10-28 08:00,2008-11-19 17:00,2008-10-28 08:00,2008-11-19 17:00,2008-10-28 08:00,2008-11-19 17:00,,,,,PT_Normal,,,,,u2ElHfHgN0a8mh5vjmVHXw,,,,N,0,0
2256,84155,829,11650,912,1,0,N,N,N,CP_Drtn,TT_Task,DT_FixedDUR2,RV_OK,TK_NotStart,7211L36050,Stone finishing top,2306,136,0,64,0,484,484,64,240,0,240,,,,2008-12-17 08:00,2008-12-25 17:00,,2008-11-27 08:00,2008-12-06 17:00,2008-11-27 08:00,2008-12-06 17:00,2008-11-27 08:00,2008-12-06 17:00,,,,,PT_Normal,,,,,QxpzGyFZaEqLO3R9f5VQxw,,,,N,0,0
2257,84156,829,11650,912,1,0,N,N,N,CP_Drtn,TT_Task,DT_FixedDUR2,RV_OK,TK_NotStart,7211L36100,Thresholds,2306,96,0,120,0,924,924,120,536,0,536,,,,2008-12-13 08:00,2008-12-29 17:00,,2008-11-29 08:00,2008-12-15 17:00,2008-11-29 08:00,2008-12-15 17:00,2008-11-29 08:00,2008-12-15 17:00,,,,,PT_Normal,,,,,W3yTVhf95UOHpqEhcX08/A,,,,N,0,0
2258,84157,829,11442,912,1,0,N,N,N,CP_Drtn,TT_Task,DT_FixedDUR2,RV_OK,TK_NotStart,7211L38100,Epoxy coating system,2306,432,176,48,0,816,816,48,640,0,640,,,,2009-02-16 08:00,2009-02-22 17:00,,2008-12-15 08:00,2008-12-21 17:00,2008-12-15 08:00,2008-12-21 17:00,2008-12-15 08:00,2008-12-21 17:00,,,,,PT_Normal,,,,,MV7rC4FPRk6XKv6EyjpXHQ,,,,N,0,0
2259,84158,829,11652,912,1,0,N,N,N,CP_Drtn,TT_Task,DT_FixedDUR2,RV_OK,TK_NotStart,7211L40050,Duplex apartment stairs,2306,224,0,120,0,3816,3816,120,96,0,96,,,,2008-11-19 08:00,2008-12-06 17:00,,2008-10-18 08:00,2008-11-03 17:00,2008-10-18 08:00,2008-11-03 17:00,2008-10-18 08:00,2008-11-03 17:00,,,,,PT_Normal,,,,,XGyWbpeq7k6c9diS+w1a2Q,,,,N,0,0
2260,84159,829,11652,912,1,0,N,N,N,CP_Drtn,TT_Task,DT_FixedDUR2,RV_OK,TK_NotStart,7211L40100,Wooden steps for Duplex stairs,2306,224,0,120,0,936,936,120,96,0,96,,,,2008-12-01 08:00,2008-12-17 17:00,,2008-10-29 08:00,2008-11-15 17:00,2008-10-29 08:00,2008-11-15 17:00,2008-10-29 08:00,2008-11-15 17:00,,,,,PT_Normal,,,,,Py00Sjik6UObMt2/3rEAew,,,,N,0,0
2261,84160,829,11652,912,1,0,N,N,N,CP_Drtn,TT_Task,DT_FixedDUR2,RV_OK,TK_NotStart,7211L40150,Duplex stair railings,2306,224,168,120,0,5120,5120,120,2000,0,2000,,,,2008-12-13 08:00,2008-12-29 17:00,,2008-11-10 08:00,2008-11-26 17:00,2008-11-10 08:00,2008-11-26 17:00,2008-11-10 08:00,2008-11-26 17:00,,,,,PT_Normal,,,,,AWAopp10fUi3lczTiwdYLA,,,,N,0,0
2262,84161,829,11653,912,1,0,N,N,N,CP_Drtn,TT_Task,DT_FixedDUR2,RV_OK,TK_NotStart,7211L42050,Signage works,2306,464,208,48,0,153.8,153.8,48,96,0,96,,,,2009-02-16 08:00,2009-02-22 17:00,,2008-12-10 08:00,2008-12-16 17:00,2008-12-10 08:00,2008-12-16 17:00,2008-12-10 08:00,2008-12-16 17:00,,,,,PT_Normal,,,,,OAUxV2zLaUqONti3YPOiwA,,,,N,0,0
2263,84162,829,11445,912,1,100,N,N,N,CP_Drtn,TT_Task,DT_FixedDUR2,RV_OK,TK_Complete,7211L44050,Sub-frames,2306,40,0,0,1272,0,1272,120,576,576,0,,2008-09-03 08:00,2008-09-20 17:00,2008-10-08 08:00,2008-10-07 17:00,,2008-10-02 08:00,2008-10-01 17:00,,,2008-09-03 08:00,2008-09-20 17:00,,,,,PT_Normal,,,,,+8BUVlptm0a5xYcBS6Q0UA,,,,N,1272,576
2264,84163,829,12467,912,1,100,N,N,N,CP_Drtn,TT_Task,DT_FixedDUR2,RV_OK,TK_Complete,7211L50100,MEP skeleton embedded provisions,2296,24,0,0,512,0,512,72,,,0,,2008-07-07 08:00,2008-07-16 17:00,2008-10-06 08:00,2008-10-05 17:00,,2008-10-02 08:00,2008-10-01 17:00,,,2008-07-07 08:00,2008-07-16 17:00,,,,,PT_Normal,,,,,lgLKHGP/eEqgdPsWNFTWnQ,,,,N,512,0
2265,84164,829,12260,912,1,100,N,N,N,CP_Drtn,TT_Task,DT_FixedDUR2,RV_OK,TK_Complete,7211L52050,A/C duct works,2296,184,0,0,831,0,831,160,,,0,,2008-09-06 08:00,2008-09-28 17:00,2008-10-29 08:00,2008-10-28 17:00,,2008-10-02 08:00,2008-10-01 17:00,,,2008-09-06 08:00,2008-09-28 17:00,,,,,PT_Normal,,,,,t4nkN88IPkirKUO6Y2l4JA,,,,N,831,0
2266,84165,829,12260,912,1,100,N,N,N,CP_Drtn,TT_Task,DT_FixedDUR2,RV_OK,TK_Complete,7211L52100,Chilled water pipe works,2296,120,0,0,787,0,787,72,,,0,,2008-09-18 08:00,2008-09-28 17:00,2008-10-20 08:00,2008-10-19 17:00,,2008-10-02 08:00,2008-10-01 17:00,,,2008-09-18 08:00,2008-09-28 17:00,,,,,PT_Normal,,,,,DPmJlK3wtky37oGfGW1hzA,,,,N,787,0
2267,84166,829,12470,912,1,100,N,N,N,CP_Drtn,TT_Task,DT_FixedDUR2,RV_OK,TK_Complete,7211L52150,FCU's hanging,2296,176,0,0,935.2,0,935.2,64,,,0,,2008-09-17 08:00,2008-09-25 17:00,2008-10-28 08:00,2008-10-27 17:00,,2008-10-02 08:00,2008-10-01 17:00,,,2008-09-17 08:00,2008-09-25 17:00,,,,,PT_Normal,,,,,I6k1nUyxtEycZbpqw4lUEQ,,,,N,935.2,0
2268,84167,829,12470,912,1,0,N,N,N,CP_Drtn,TT_Task,DT_FixedDUR2,RV_OK,TK_NotStart,7211L52300,FCU's assembly & duct connections,2296,96,56,80,0,951.2,951.2,80,0,0,0,,,,2008-10-22 08:00,2008-11-02 17:00,,2008-10-08 08:00,2008-10-19 17:00,2008-10-08 08:00,2008-10-19 17:00,2008-10-08 08:00,2008-10-19 17:00,,,,,PT_Normal,,,,,6OY5VBGlfUyavQfPJpq12A,,,,N,0,0
2269,84168,829,12470,912,1,0,N,N,N,CP_Drtn,TT_Task,DT_FixedDUR2,RV_OK,TK_NotStart,7211L52350,Grills & diffusers,2296,584,304,120,0,912,912,120,0,0,0,,,,2009-02-05 08:00,2009-02-22 17:00,,2008-11-12 08:00,2008-11-29 17:00,2008-11-12 08:00,2008-11-29 17:00,2008-11-12 08:00,2008-11-29 17:00,,,,,PT_Normal,,,,,gMR6q/vmF0SgwwthDfQjnA,,,,N,0,0
2270,84169,829,12260,912,1,100,N,N,N,CP_Drtn,TT_Task,DT_FixedDUR2,RV_OK,TK_Complete,7211L52550,A/C duct risers,2296,96,0,0,1626,0,1626,64,,,0,,2008-09-23 08:00,2008-10-01 17:00,2008-10-16 08:00,2008-10-15 17:00,,2008-10-02 08:00,2008-10-01 17:00,,,2008-09-23 08:00,2008-10-01 17:00,,,,,PT_Normal,,,,,etfHezTT8UmAIf73+QlzHw,,,,N,1626,0
2271,84170,829,12263,912,1,100,N,N,N,CP_Drtn,TT_Task,DT_FixedDUR2,RV_OK,TK_Complete,7211L54050,Chasing & Pex pipe works,2296,184,0,0,395,0,395,120,,,0,,2008-09-06 08:00,2008-09-22 17:00,2008-10-29 08:00,2008-10-28 17:00,,2008-10-02 08:00,2008-10-01 17:00,,,2008-09-06 08:00,2008-09-22 17:00,,,,,PT_Normal,,,,,1b1TLTEP80uGf3VzS7rx3A,,,,N,395,0
2272,84171,829,12263,912,1,100,N,N,N,CP_Drtn,TT_Task,DT_FixedDUR2,RV_OK,TK_Complete,7211L54100,Over head distribution water pipe network,2296,184,0,0,8314,0,8314,64,,,0,,2008-09-17 08:00,2008-09-25 17:00,2008-10-29 08:00,2008-10-28 17:00,,2008-10-02 08:00,2008-10-01 17:00,,,2008-09-17 08:00,2008-09-25 17:00,,,,,PT_Normal,,,,,4aU6fCGmo0yDn5P2p9ZMAA,,,,N,8314,0
2273,84172,829,12474,912,1,0,N,N,N,CP_Drtn,TT_Task,DT_FixedDUR2,RV_OK,TK_NotStart,7211L54150,Water meter cabinet pipe works,2296,376,192,120,0,340,340,120,0,0,0,,,,2008-12-13 08:00,2008-12-29 17:00,,2008-10-19 08:00,2008-11-04 17:00,2008-10-19 08:00,2008-11-04 17:00,2008-10-19 08:00,2008-11-04 17:00,,,,,PT_Normal,,,,,IwNAWbbtWUa98mg9uIA3vw,,,,N,0,0
2274,84173,829,12264,912,1,100,N,N,N,CP_Drtn,TT_Task,DT_FixedDUR2,RV_OK,TK_Complete,7211L54250,Bathtubs,2296,336,0,0,176.8,0,273.6,80,,96.8,0,,2008-09-17 08:00,2008-09-28 17:00,2008-11-20 08:00,2008-11-19 17:00,,2008-10-02 08:00,2008-10-01 17:00,,,2008-09-17 08:00,2008-09-28 17:00,,,,,PT_Normal,,,,,VyqOn324okWWp3IeeJoLcQ,,,,N,176.8,96.8
2275,84174,829,12264,912,1,100,N,N,N,CP_Drtn,TT_Task,DT_FixedDUR2,RV_OK,TK_Complete,7211L54300,Water heater,2296,176,0,0,310.4,0,310.4,64,,,0,,2008-09-23 08:00,2008-10-01 17:00,2008-10-28 08:00,2008-10-27 17:00,,2008-10-02 08:00,2008-10-01 17:00,,,2008-09-23 08:00,2008-10-01 17:00,,,,,PT_Normal,,,,,mAm6/QqGt021rnWD6laZyg,,,,N,310.4,0
2276,84175,829,12264,912,1,55.6,N,N,N,CP_Drtn,TT_Task,DT_FixedDUR2,RV_OK,TK_Active,7211L54350,Over head pipe assembly & vlave connections,2296,184,144,32,131.66,105.34,237,72,,,,,2008-09-27 08:00,,2008-10-29 08:00,2008-11-02 17:00,,2008-10-02 08:00,2008-10-06 17:00,2008-10-02 08:00,2008-10-06 17:00,2008-09-27 08:00,2008-10-06 17:00,,,,,PT_Normal,,,,,vLputPEmF067G7YifNfQ1g,,,,N,131.66,0
2277,84176,829,12474,912,1,0,N,N,N,CP_Drtn,TT_Task,DT_FixedDUR2,RV_OK,TK_NotStart,7211L54400,Sanitary fixures,2296,136,0,120,0,516,516,120,0,0,0,,,,2008-12-09 08:00,2008-12-25 17:00,,2008-11-19 08:00,2008-12-06 17:00,2008-11-19 08:00,2008-12-06 17:00,2008-11-19 08:00,2008-12-06 17:00,,,,,PT_Normal,,,,,cUrO6AEcGUqT+DWbfHq+iQ,,,,N,0,0
2278,84177,829,12474,912,1,0,N,N,N,CP_Drtn,TT_Task,DT_FixedDUR2,RV_OK,TK_NotStart,7211L54450,Mirrors,2296,56,0,120,0,186,186,120,0,0,0,,,,2008-12-13 08:00,2008-12-29 17:00,,2008-12-04 08:00,2008-12-21 17:00,2008-12-04 08:00,2008-12-21 17:00,2008-12-04 08:00,2008-12-21 17:00,,,,,PT_Normal,,,,,13jCAQNbE0y5Cnit5YrDrg,,,,N,0,0
2279,84178,829,12264,912,1,100,N,N,N,CP_Drtn,TT_Task,DT_FixedDUR2,RV_OK,TK_Complete,7211L54500,Concealed Flushing Cistern,2296,336,0,0,146,0,212,80,,66,0,,2008-09-17 08:00,2008-09-28 17:00,2008-11-20 08:00,2008-11-19 17:00,,2008-10-02 08:00,2008-10-01 17:00,,,2008-09-17 08:00,2008-09-28 17:00,,,,,PT_Normal,,,,,qCHnE5iYBUOJkrJ39CmZPA,,,,N,146,66
2280,84179,829,12267,912,1,100,N,N,N,CP_Drtn,TT_Task,DT_FixedDUR2,RV_OK,TK_Complete,7211L56050,Chasing and installation of drainage pipes,2296,136,0,0,285,0,285,120,,,0,,2008-09-06 08:00,2008-09-22 17:00,2008-10-22 08:00,2008-10-21 17:00,,2008-10-02 08:00,2008-10-01 17:00,,,2008-09-06 08:00,2008-09-22 17:00,,,,,PT_Normal,,,,,SZM5L17faUCx/D7T1FeCYw,,,,N,285,0
2281,84180,829,12267,912,1,100,N,N,N,CP_Drtn,TT_Task,DT_FixedDUR2,RV_OK,TK_Complete,7211L56100,Drainage riser pipes,2296,160,0,0,284,0,284,64,,,0,,2008-09-02 08:00,2008-09-10 17:00,2008-10-26 08:00,2008-10-25 17:00,,2008-10-02 08:00,2008-10-01 17:00,,,2008-09-02 08:00,2008-09-10 17:00,,,,,PT_Normal,,,,,gz80XfWc8UyePc4yKU183g,,,,N,284,0
2282,84181,829,12477,912,1,12.5,N,N,N,CP_Drtn,TT_Task,DT_FixedDUR2,RV_OK,TK_Active,7211L56150,Over head drainage pipe works,2296,160,120,56,32.2,225.4,257.6,64,,,,,2008-10-01 08:00,,2008-10-26 08:00,2008-11-02 17:00,,2008-10-02 08:00,2008-10-09 17:00,2008-10-02 08:00,2008-10-09 17:00,2008-10-01 08:00,2008-10-09 17:00,,,,,PT_Normal,,,,,vK22WQ7p1UOuO3mKnCGgEw,,,,N,32.2,0
2283,84182,829,12270,912,1,100,N,N,N,CP_Drtn,TT_Task,DT_FixedDUR2,RV_OK,TK_Complete,7211L58050,Fire fighting pipe works,2296,216,0,0,292,0,292,72,,,0,,2008-09-11 08:00,2008-09-21 17:00,2008-11-03 08:00,2008-11-02 17:00,,2008-10-02 08:00,2008-10-01 17:00,,,2008-09-11 08:00,2008-09-21 17:00,,,,,PT_Normal,,,,,7yAYIIJUy066AT36pC68wA,,,,N,292,0
2284,84183,829,12480,912,1,0,N,N,N,CP_Drtn,TT_Task,DT_FixedDUR2,RV_OK,TK_NotStart,7211L58200,Fire cabinet complete,2296,432,176,64,0,339,339,64,0,0,0,,,,2009-02-14 08:00,2009-02-22 17:00,,2008-12-13 08:00,2008-12-21 17:00,2008-12-13 08:00,2008-12-21 17:00,2008-12-13 08:00,2008-12-21 17:00,,,,,PT_Normal,,,,,KkzaP0CoOEiRZAWAmTLFQw,,,,N,0,0
2285,84184,829,12480,912,1,0,N,N,N,CP_Drtn,TT_Task,DT_FixedDUR2,RV_OK,TK_NotStart,7211L58250,Sprinkler heads,2296,528,248,120,0,450,450,120,0,0,0,,,,2009-02-05 08:00,2009-02-22 17:00,,2008-11-20 08:00,2008-12-07 17:00,2008-11-20 08:00,2008-12-07 17:00,2008-11-20 08:00,2008-12-07 17:00,,,,,PT_Normal,,,,,jQB+ZgNlL0uH1n0fTlGa3g,,,,N,0,0
2286,84185,829,12273,912,1,0,N,N,N,CP_Drtn,TT_Task,DT_FixedDUR2,RV_OK,TK_NotStart,7211L60050,LPG piping,2296,392,0,72,0,292,292,72,0,0,0,,,,2008-12-01 08:00,2008-12-10 17:00,,2008-10-05 08:00,2008-10-14 17:00,2008-10-05 08:00,2008-10-14 17:00,2008-10-05 08:00,2008-10-14 17:00,,,,,PT_Normal,,,,,cygKaW2UDEiN79NX8xFNEA,,,,N,0,0
2287,84186,829,12483,912,1,0,N,N,N,CP_Drtn,TT_Task,DT_FixedDUR2,RV_OK,TK_NotStart,7211L60100,Gas meter & leak detector,2296,448,408,72,0,248,248,72,0,0,0,,,,2008-12-20 08:00,2008-12-29 17:00,,2008-10-15 08:00,2008-10-25 17:00,2008-10-15 08:00,2008-10-25 17:00,2008-10-15 08:00,2008-10-25 17:00,,,,,PT_Normal,,,,,qcXpUBE4YUG4eJgDlWhEGw,,,,N,0,0
2288,84187,829,12276,912,1,0,N,N,N,CP_Drtn,TT_Task,DT_FixedDUR2,RV_OK,TK_NotStart,7211L62050,BMS cabling,2296,80,40,64,0,486.4,486.4,64,0,0,0,,,,2008-10-25 08:00,2008-11-02 17:00,,2008-10-13 08:00,2008-10-21 17:00,2008-10-13 08:00,2008-10-21 17:00,2008-10-13 08:00,2008-10-21 17:00,,,,,PT_Normal,,,,,Wa9BF9vNsE+lscFNbyJ5Tg,,,,N,0,0
2289,84188,829,12486,912,1,0,N,N,N,CP_Drtn,TT_Task,DT_FixedDUR2,RV_OK,TK_NotStart,7211L62100,DGC & cable termination to equipments,2296,440,8,48,0,329.6,329.6,48,0,0,0,,,,2009-02-10 08:00,2009-02-16 17:00,,2008-12-08 08:00,2008-12-14 17:00,2008-12-08 08:00,2008-12-14 17:00,2008-12-08 08:00,2008-12-14 17:00,,,,,PT_Normal,,,,,6K4qPWyfTU6/VUXcxd2Jqg,,,,N,0,0
2290,84189,829,12488,912,1,100,N,N,N,CP_Drtn,TT_Task,DT_FixedDUR2,RV_OK,TK_Complete,7211L66050,Chasing and installation of conduits,2296,40,0,0,1809.6,0,1809.6,120,,,0,,2008-09-03 08:00,2008-09-20 17:00,2008-10-08 08:00,2008-10-07 17:00,,2008-10-02 08:00,2008-10-01 17:00,,,2008-09-03 08:00,2008-09-20 17:00,,,,,PT_Normal,,,,,g5vzefWTYU2I2NB4aEY98g,,,,N,1809.6,0
2291,84190,829,12488,912,1,6.7,N,N,N,CP_Drtn,TT_Task,DT_FixedDUR2,RV_OK,TK_Active,7211L66100,Cable trays & trunking,2296,40,0,112,101.86,1426.14,1528,120,,,,,2008-10-01 08:00,,2008-10-08 08:00,2008-10-23 17:00,,2008-10-02 08:00,2008-10-18 17:00,2008-10-02 08:00,2008-10-18 17:00,2008-10-01 08:00,2008-10-18 17:00,,,,,PT_Normal,,,,,hmDRFBFDDEu1FVS16kywXA,,,,N,101.86,0
2292,84191,829,12281,912,1,100,N,N,N,CP_Drtn,TT_Task,DT_FixedDUR2,RV_OK,TK_Complete,7211L68050,Single core wiring,2296,216,0,0,1128,0,1128,72,,,0,,2008-09-06 08:00,2008-09-15 17:00,2008-11-03 08:00,2008-11-02 17:00,,2008-10-02 08:00,2008-10-01 17:00,,,2008-09-06 08:00,2008-09-15 17:00,,,,,PT_Normal,,,,,clrNRfVAl0G65ww3wdyMnA,,,,N,1128,0
2293,84192,829,12282,912,1,100,N,N,N,CP_Drtn,TT_Task,DT_FixedDUR2,RV_OK,TK_Complete,7211L68100,DB enclosure,2296,72,0,0,416,0,416,64,,,0,,2008-09-11 08:00,2008-09-20 17:00,2008-10-13 08:00,2008-10-12 17:00,,2008-10-02 08:00,2008-10-01 17:00,,,2008-09-11 08:00,2008-09-20 17:00,,,,,PT_Normal,,,,,NNk9uYyhbUO1/xcDz9b/7w,,,,N,416,0
2294,84193,829,12282,912,1,0,N,N,N,CP_Drtn,TT_Task,DT_FixedDUR2,RV_OK,TK_NotStart,7211L68150,LV feeder cables,2296,112,40,72,0,2606.4,2606.4,72,0,0,0,,,,2008-11-04 08:00,2008-11-13 17:00,,2008-10-19 08:00,2008-10-28 17:00,2008-10-19 08:00,2008-10-28 17:00,2008-10-19 08:00,2008-10-28 17:00,,,,,PT_Normal,,,,,xrJJmwphO0a33UmIuuTQNQ,,,,N,0,0
2295,84194,829,12492,912,1,0,N,N,N,CP_Drtn,TT_Task,DT_FixedDUR2,RV_OK,TK_NotStart,7211L68250,DB-breakers assembly,2296,200,160,72,0,564.8,564.8,72,0,0,0,,,,2008-12-20 08:00,2008-12-29 17:00,,2008-11-20 08:00,2008-11-30 17:00,2008-11-20 08:00,2008-11-30 17:00,2008-11-20 08:00,2008-11-30 17:00,,,,,PT_Normal,,,,,qo5ys6giTk6YdmqIaGQHlQ,,,,N,0,0
2296,84195,829,12492,912,1,0,N,N,N,CP_Drtn,TT_Task,DT_FixedDUR2,RV_OK,TK_NotStart,7211L68300,SMDB,2296,432,0,48,0,1315.2,1315.2,48,0,0,0,,,,2009-02-09 08:00,2009-02-15 17:00,,2008-12-08 08:00,2008-12-14 17:00,2008-12-08 08:00,2008-12-14 17:00,2008-12-08 08:00,2008-12-14 17:00,,,,,PT_Normal,,,,,y5JXEdee806Y5TzdLCUqSA,,,,N,0,0
2297,84196,829,12492,912,1,0,N,N,N,CP_Drtn,TT_Task,DT_FixedDUR2,RV_OK,TK_NotStart,7211L68350,Light Fittings,2296,208,168,120,0,1105.6,1105.6,120,0,0,0,,,,2008-12-13 08:00,2008-12-29 17:00,,2008-11-12 08:00,2008-11-29 17:00,2008-11-12 08:00,2008-11-29 17:00,2008-11-12 08:00,2008-11-29 17:00,,,,,PT_Normal,,,,,ODjM7xlf+kak2sd659NqGg,,,,N,0,0
2298,84197,829,12492,912,1,0,N,N,N,CP_Drtn,TT_Task,DT_FixedDUR2,RV_OK,TK_NotStart,7211L68400,Lighting Control Panels,2296,448,192,64,0,275.2,275.2,64,0,0,0,,,,2009-02-14 08:00,2009-02-22 17:00,,2008-12-10 08:00,2008-12-18 17:00,2008-12-10 08:00,2008-12-18 17:00,2008-12-10 08:00,2008-12-18 17:00,,,,,PT_Normal,,,,,IH0+Xe63X0+MHD/WfO0Mjg,,,,N,0,0
2299,84198,829,12492,912,1,0,N,N,N,CP_Drtn,TT_Task,DT_FixedDUR2,RV_OK,TK_NotStart,7211L68600,Switches & sockets,2296,200,160,72,0,494.4,494.4,72,0,0,0,,,,2008-12-20 08:00,2008-12-29 17:00,,2008-11-20 08:00,2008-11-30 17:00,2008-11-20 08:00,2008-11-30 17:00,2008-11-20 08:00,2008-11-30 17:00,,,,,PT_Normal,,,,,9780HKmQikuD1biRgPdBjQ,,,,N,0,0
2300,84199,829,12285,912,1,100,N,N,N,CP_Drtn,TT_Task,DT_FixedDUR2,RV_OK,TK_Complete,7211L70050,Central Battery cables,2296,216,0,0,345.6,0,345.6,64,,,0,,2008-09-11 08:00,2008-09-20 17:00,2008-11-03 08:00,2008-11-02 17:00,,2008-10-02 08:00,2008-10-01 17:00,,,2008-09-11 08:00,2008-09-20 17:00,,,,,PT_Normal,,,,,1uBTmR4T5kuvLsUYoP02IQ,,,,N,345.6,0
2301,84200,829,12495,912,1,0,N,N,N,CP_Drtn,TT_Task,DT_FixedDUR2,RV_OK,TK_NotStart,7211L70150,Emergency & exit light fittings,2296,568,184,48,0,188.8,188.8,48,0,0,0,,,,2009-02-16 08:00,2009-02-22 17:00,,2008-11-25 08:00,2008-12-01 17:00,2008-11-25 08:00,2008-12-01 17:00,2008-11-25 08:00,2008-12-01 17:00,,,,,PT_Normal,,,,,TaS7uGVPYUmXdT8muTssGA,,,,N,0,0
2302,84201,829,12288,912,1,0,N,N,N,CP_Drtn,TT_Task,DT_FixedDUR2,RV_OK,TK_NotStart,7211L72200,Intercom system cables,2296,64,24,64,0,592,592,64,0,0,0,,,,2008-10-25 08:00,2008-11-02 17:00,,2008-10-15 08:00,2008-10-23 17:00,2008-10-15 08:00,2008-10-23 17:00,2008-10-15 08:00,2008-10-23 17:00,,,,,PT_Normal,,,,,rmbS9FV7h0+HlSpyvK8Jjw,,,,N,0,0
2303,84202,829,12498,912,1,0,N,N,N,CP_Drtn,TT_Task,DT_FixedDUR2,RV_OK,TK_NotStart,7211L72250,Intercom system equipments,2296,184,144,64,0,697.6,697.6,64,0,0,0,,,,2008-12-21 08:00,2008-12-29 17:00,,2008-11-24 08:00,2008-12-02 17:00,2008-11-24 08:00,2008-12-02 17:00,2008-11-24 08:00,2008-12-02 17:00,,,,,PT_Normal,,,,,jHs2EvgECEOissVpv0bDPg,,,,N,0,0
2304,84203,829,12291,912,1,100,N,N,N,CP_Drtn,TT_Task,DT_FixedDUR2,RV_OK,TK_Complete,7211L74050,Fire alarm cables,2296,216,0,0,380.8,0,380.8,64,,,0,,2008-09-11 08:00,2008-09-20 17:00,2008-11-03 08:00,2008-11-02 17:00,,2008-10-02 08:00,2008-10-01 17:00,,,2008-09-11 08:00,2008-09-20 17:00,,,,,PT_Normal,,,,,nM4DNL0K1EO+yBCzWQvhGQ,,,,N,380.8,0
2305,84204,829,12501,912,1,0,N,N,N,CP_Drtn,TT_Task,DT_FixedDUR2,RV_OK,TK_NotStart,7211L74100,Fire alarm fittings,2296,512,232,120,0,172.8,172.8,120,0,0,0,,,,2009-02-05 08:00,2009-02-22 17:00,,2008-11-23 08:00,2008-12-09 17:00,2008-11-23 08:00,2008-12-09 17:00,2008-11-23 08:00,2008-12-09 17:00,,,,,PT_Normal,,,,,zdZgpHQ+Y0Knc2tdUhr8Fg,,,,N,0,0
2306,84205,829,12294,912,1,0,N,N,N,CP_Drtn,TT_Task,DT_FixedDUR2,RV_OK,TK_NotStart,7211L76050,Structured cabling,2296,80,40,64,0,345.6,345.6,64,0,0,0,,,,2008-10-27 08:00,2008-11-04 17:00,,2008-10-15 08:00,2008-10-23 17:00,2008-10-15 08:00,2008-10-23 17:00,2008-10-15 08:00,2008-10-23 17:00,,,,,PT_Normal,,,,,l21FAkZ3Rk+A3Gfd/mTcXw,,,,N,0,0
2307,84206,829,12295,912,1,0,N,N,N,CP_Drtn,TT_Task,DT_FixedDUR2,RV_OK,TK_NotStart,7211L76100,Consolidated pionts,2296,40,0,64,0,486.4,486.4,64,0,0,0,,,,2008-11-05 08:00,2008-11-13 17:00,,2008-10-30 08:00,2008-11-08 17:00,2008-10-30 08:00,2008-11-08 17:00,2008-10-30 08:00,2008-11-08 17:00,,,,,PT_Normal,,,,,s/Kf3mjuUk+N39d3hcMA0w,,,,N,0,0
2308,84207,829,11553,912,1,100,N,N,N,CP_Drtn,TT_Task,DT_FixedDUR2,RV_OK,TK_Complete,7211U12050,Columns & walls 1U to 2L - Part 1,2306,24,0,0,3724.34,0,3724.34,32,111688.16,111688.16,0,,2008-07-23 08:00,2008-07-27 17:00,2008-10-06 08:00,2008-10-05 17:00,,2008-10-02 08:00,2008-10-01 17:00,,,2008-07-23 08:00,2008-07-27 17:00,,,,,PT_Normal,,,,,o7hy8t9N1EGfOa5MyHYwwg,,,,N,3724.34,111688.16
2309,84208,829,11553,912,1,100,N,N,N,CP_Drtn,TT_Task,DT_FixedDUR2,RV_OK,TK_Complete,7211U12051,Columns & walls 1U to 2L - Part 2,2306,24,0,0,3724.34,0,3724.34,32,111688.16,111688.16,0,,2008-08-02 08:00,2008-08-05 17:00,2008-10-06 08:00,2008-10-05 17:00,,2008-10-02 08:00,2008-10-01 17:00,,,2008-08-02 08:00,2008-08-05 17:00,,,,,PT_Normal,,,,,jm9JkbSO4UeCWbDQ1NqPAA,,,,N,3724.34,111688.16
2310,84209,829,11553,912,1,100,N,N,N,CP_Drtn,TT_Task,DT_FixedDUR2,RV_OK,TK_Complete,7211U12052,Columns & walls 1U to 2L - Middle Part,2306,24,0,0,8020.4,0,8020.4,32,241635.84,241635.84,0,,2008-07-30 08:00,2008-08-04 17:00,2008-10-06 08:00,2008-10-05 17:00,,2008-10-02 08:00,2008-10-01 17:00,,,2008-07-30 08:00,2008-08-04 17:00,,,,,PT_Normal,,,,,lz/e/6ycOE+EJL6IAzDpKQ,,,,N,8020.4,241635.84
2311,84210,829,11553,912,1,100,N,N,N,CP_Drtn,TT_Task,DT_FixedDUR2,RV_OK,TK_Complete,7211U12200,Slab @ 2L level - Part 1,2306,24,0,0,4376.76,0,4376.76,56,160277.68,160277.68,0,,2008-08-02 08:00,2008-08-09 17:00,2008-10-06 08:00,2008-10-05 17:00,,2008-10-02 08:00,2008-10-01 17:00,,,2008-08-02 08:00,2008-08-09 17:00,,,,,PT_Normal,,,,,GsGGKCgd60+p99+78vsXHA,,,,N,4376.76,160277.68
2312,84211,829,11553,912,1,100,N,N,N,CP_Drtn,TT_Task,DT_FixedDUR2,RV_OK,TK_Complete,7211U12201,Slab @ 2L level - Part 2,2306,24,0,0,4376.76,0,4376.76,56,160277.68,160277.68,0,,2008-08-10 08:00,2008-08-17 17:00,2008-10-06 08:00,2008-10-05 17:00,,2008-10-02 08:00,2008-10-01 17:00,,,2008-08-10 08:00,2008-08-17 17:00,,,,,PT_Normal,,,,,SH6ZCBkZZkiUuvGgS3GVvg,,,,N,4376.76,160277.68
2313,84212,829,11553,912,1,100,N,N,N,CP_Drtn,TT_Task,DT_FixedDUR2,RV_OK,TK_Complete,7211U12202,Slab @ 2L level - Middle Part,2306,24,0,0,6315.78,0,6315.78,56,232201.84,232201.84,0,,2008-08-07 08:00,2008-08-14 17:00,2008-10-06 08:00,2008-10-05 17:00,,2008-10-02 08:00,2008-10-01 17:00,,,2008-08-07 08:00,2008-08-14 17:00,,,,,PT_Normal,,,,,Dq6RushGtUelSiy6yl3tdw,,,,N,6315.78,232201.84
2314,84213,829,11553,912,1,100,N,N,N,CP_Drtn,TT_Task,DT_FixedDUR2,RV_OK,TK_Complete,7211U12250,Staircases 1U to 2L,2296,208,0,0,991.88,0,991.88,24,18457.6,18457.6,0,,2008-08-18 08:00,2008-08-20 17:00,2008-11-02 08:00,2008-11-01 17:00,,2008-10-02 08:00,2008-10-01 17:00,,,2008-08-18 08:00,2008-08-20 17:00,,,,,PT_Normal,,,,,FfDAYwA3KUSnoyFMlmV8RQ,,,,N,991.88,18457.6
2315,84214,829,11656,912,1,100,N,N,N,CP_Drtn,TT_Task,DT_FixedDUR2,RV_OK,TK_Complete,7211U14050,Block works,2306,40,0,0,24323,0,30085.5,120,18440,24202.5,0,,2008-09-03 08:00,2008-09-20 17:00,2008-10-08 08:00,2008-10-07 17:00,,2008-10-02 08:00,2008-10-01 17:00,,,2008-09-03 08:00,2008-09-20 17:00,,,,,PT_Normal,,,,,ETmjwAfBLEqvIdYs6wbs6Q,,,,N,24323,24202.5
2316,84215,829,11657,912,1,80,N,N,N,CP_Drtn,TT_Task,DT_FixedDUR2,RV_OK,TK_Active,7211U16050,Plaster works,2306,40,0,24,19500.64,4875.16,24375.8,120,19024,15219.2,3804.8,,2008-09-18 08:00,,2008-10-08 08:00,2008-10-11 17:00,,2008-10-02 08:00,2008-10-05 17:00,2008-10-02 08:00,2008-10-05 17:00,2008-09-18 08:00,2008-10-05 17:00,,,,,PT_Normal,,,,,CDd9eHQcrUOyiEjmuCHdAQ,,,,N,19500.64,15219.2
2317,84216,829,11657,912,1,46.7,N,N,N,CP_Drtn,TT_Task,DT_FixedDUR2,RV_OK,TK_Active,7211U16051,Plaste works behind tiles,2306,208,128,64,2531.22,2892.78,5424,120,4160,1941.36,2218.64,,2008-09-24 08:00,,2008-11-02 08:00,2008-11-10 17:00,,2008-10-02 08:00,2008-10-11 17:00,2008-10-02 08:00,2008-10-11 17:00,2008-09-24 08:00,2008-10-11 17:00,,,,,PT_Normal,,,,,fs7r/+h1C0iXmacf+Y3UjA,,,,N,2531.22,1941.36
2318,84217,829,11658,912,1,100,N,N,N,CP_Drtn,TT_Task,DT_FixedDUR2,RV_OK,TK_Complete,7211U18050,Rendering works,2306,40,0,0,5683,0,5683,120,5000,5000,0,,2008-09-11 08:00,2008-09-28 17:00,2008-10-08 08:00,2008-10-07 17:00,,2008-10-02 08:00,2008-10-01 17:00,,,2008-09-11 08:00,2008-09-28 17:00,,,,,PT_Normal,,,,,tdOw6P+OvU6hhulLZ6rTQA,,,,N,5683,5000
2319,84218,829,11658,912,1,33.3,N,N,N,CP_Drtn,TT_Task,DT_FixedDUR2,RV_OK,TK_Active,7211U18100,Paintin1 base coats,2306,40,0,80,8848.73,17697.47,26546.2,120,24024,8008,16016,,2008-09-27 08:00,,2008-10-08 08:00,2008-10-19 17:00,,2008-10-02 08:00,2008-10-13 17:00,2008-10-02 08:00,2008-10-13 17:00,2008-09-27 08:00,2008-10-13 17:00,,,,,PT_Normal,,,,,StLPqgmgdkyndCpa3HSVTA,,,,N,8848.73,8008
2320,84219,829,11658,912,1,0,N,N,N,CP_Drtn,TT_Task,DT_FixedDUR2,RV_OK,TK_NotStart,7211U18150,Painting 1st top coat for apartments,2306,184,0,72,0,17300.2,17300.2,72,16408,0,16408,,,,2008-12-20 08:00,2008-12-29 17:00,,2008-11-23 08:00,2008-12-02 17:00,2008-11-23 08:00,2008-12-02 17:00,2008-11-23 08:00,2008-12-02 17:00,,,,,PT_Normal,,,,,XjkvKmCBjESGEHAu17kglQ,,,,N,0,0
2321,84220,829,11450,912,1,0,N,N,N,CP_Drtn,TT_Task,DT_FixedDUR2,RV_OK,TK_NotStart,7211U20050,Floor tiles for apartments-dry area,2306,224,0,120,0,9570,9570,120,7000,0,7000,,,,2008-11-08 08:00,2008-11-24 17:00,,2008-10-06 08:00,2008-10-22 17:00,2008-10-06 08:00,2008-10-22 17:00,2008-10-06 08:00,2008-10-22 17:00,,,,,PT_Normal,,,,,spTxhZdia0y7OjVtAOcs0Q,,,,N,0,0
2322,84221,829,11450,912,1,0,N,N,N,CP_Drtn,TT_Task,DT_FixedDUR2,RV_OK,TK_NotStart,7211U20070,Floor tiles for apartments-wet area,2306,80,0,120,0,3835.2,3835.2,120,2752,0,2752,,,,2008-11-25 08:00,2008-12-11 17:00,,2008-11-13 08:00,2008-11-30 17:00,2008-11-13 08:00,2008-11-30 17:00,2008-11-13 08:00,2008-11-30 17:00,,,,,PT_Normal,,,,,Wk+GsuBdR0WQi5GZ5KAibQ,,,,N,0,0
2323,84222,829,11450,912,1,0,N,N,N,CP_Drtn,TT_Task,DT_FixedDUR2,RV_OK,TK_NotStart,7211U20110,Wall tiles for apartments-wet area,2306,144,0,120,0,9066,9066,120,5964,0,5964,,,,2008-12-04 08:00,2008-12-21 17:00,,2008-11-13 08:00,2008-11-30 17:00,2008-11-13 08:00,2008-11-30 17:00,2008-11-13 08:00,2008-11-30 17:00,,,,,PT_Normal,,,,,IIme0ymAP0KOYx1dYaW/zA,,,,N,0,0
2324,84223,829,11660,912,1,66.7,N,N,N,CP_Drtn,TT_Task,DT_FixedDUR2,RV_OK,TK_Active,7211U22150,W/P for for apartments,2306,176,0,40,1986.7,993.3,2980,120,2600,1733.36,866.64,,2008-09-21 08:00,,2008-10-28 08:00,2008-11-02 17:00,,2008-10-02 08:00,2008-10-07 17:00,2008-10-02 08:00,2008-10-07 17:00,2008-09-21 08:00,2008-10-07 17:00,,,,,PT_Normal,,,,,zmj1Vf/ifkWOEx3YterFpw,,,,N,1986.7,1733.36
2325,84224,829,11661,912,1,0,N,N,N,CP_Drtn,TT_Task,DT_FixedDUR2,RV_OK,TK_NotStart,7211U24050,Aluminium doors & windows,2306,288,152,120,0,1208,1208,120,272,0,272,,,,2008-11-25 08:00,2008-12-11 17:00,,2008-10-14 08:00,2008-10-30 17:00,2008-10-14 08:00,2008-10-30 17:00,2008-10-14 08:00,2008-10-30 17:00,,,,,PT_Normal,,,,,Tfu/SoXOdEO0kRr4pDDRhA,,,,N,0,0
2326,84225,829,11661,912,1,0,N,N,N,CP_Drtn,TT_Task,DT_FixedDUR2,RV_OK,TK_NotStart,7211U24200,Balcony handrails,2306,40,0,120,0,2192,2192,120,1184,0,1184,,,,2008-12-13 08:00,2008-12-29 17:00,,2008-12-07 08:00,2008-12-23 17:00,2008-12-07 08:00,2008-12-23 17:00,2008-12-07 08:00,2008-12-23 17:00,,,,,PT_Normal,,,,,2h1Sr80sa0O3SG93Yh2M1w,,,,N,0,0
2327,84226,829,11453,912,1,0,N,N,N,CP_Drtn,TT_Task,DT_FixedDUR2,RV_OK,TK_NotStart,7211U30050,Wooden doors,2306,120,16,176,0,1520,1520,176,384,0,384,,,,2008-12-01 08:00,2008-12-25 17:00,,2008-11-13 08:00,2008-12-08 17:00,2008-11-13 08:00,2008-12-08 17:00,2008-11-13 08:00,2008-12-08 17:00,,,,,PT_Normal,,,,,+hnmMJbRREa1mK60UanuFg,,,,N,0,0
2328,84227,829,11663,912,1,0,N,N,N,CP_Drtn,TT_Task,DT_FixedDUR2,RV_OK,TK_NotStart,7211U32100,Vanity counters,2306,56,0,120,0,2232,2232,120,192,0,192,,,,2008-12-13 08:00,2008-12-29 17:00,,2008-12-04 08:00,2008-12-21 17:00,2008-12-04 08:00,2008-12-21 17:00,2008-12-04 08:00,2008-12-21 17:00,,,,,PT_Normal,,,,,SMOuMqHMi0+/TVjMYNxUmw,,,,N,0,0
2329,84228,829,11663,912,1,0,N,N,N,CP_Drtn,TT_Task,DT_FixedDUR2,RV_OK,TK_NotStart,7211U32150,Wardrobes,2306,216,176,120,0,6168,6168,120,288,0,288,,,,2008-12-13 08:00,2008-12-29 17:00,,2008-11-11 08:00,2008-11-27 17:00,2008-11-11 08:00,2008-11-27 17:00,2008-11-11 08:00,2008-11-27 17:00,,,,,PT_Normal,,,,,63sAkJP1vkqQebFHT/sBSQ,,,,N,0,0
2330,84229,829,11664,912,1,0,N,N,N,CP_Drtn,TT_Task,DT_FixedDUR2,RV_OK,TK_NotStart,7211U34050,False ceiling works for apartments-dry area,2306,184,0,160,0,1525.12,1525.12,160,910.08,0,910.08,,,,2008-11-26 08:00,2008-12-18 17:00,,2008-10-30 08:00,2008-11-22 17:00,2008-10-30 08:00,2008-11-22 17:00,2008-10-30 08:00,2008-11-22 17:00,,,,,PT_Normal,,,,,csbXqgikr0CUJ1cATtIRBw,,,,N,0,0
2331,84230,829,11664,912,1,0,N,N,N,CP_Drtn,TT_Task,DT_FixedDUR2,RV_OK,TK_NotStart,7211U34070,False ceiling works for apartments-wet area,2306,80,0,160,0,690.88,690.88,160,353.92,0,353.92,,,,2008-11-11 08:00,2008-12-03 17:00,,2008-10-30 08:00,2008-11-22 17:00,2008-10-30 08:00,2008-11-22 17:00,2008-10-30 08:00,2008-11-22 17:00,,,,,PT_Normal,,,,,HOTEkyBc8kmMl+J0WRr2mg,,,,N,0,0
2332,84231,829,11456,912,1,0,N,N,N,CP_Drtn,TT_Task,DT_FixedDUR2,RV_OK,TK_NotStart,7211U36050,Stone finishin1 top,2306,136,96,64,0,344,344,64,160,0,160,,,,2008-12-21 08:00,2008-12-29 17:00,,2008-12-01 08:00,2008-12-09 17:00,2008-12-01 08:00,2008-12-09 17:00,2008-12-01 08:00,2008-12-09 17:00,,,,,PT_Normal,,,,,gNZFkgjo/k6x5JoeO8k4zw,,,,N,0,0
2333,84232,829,11456,912,1,0,N,N,N,CP_Drtn,TT_Task,DT_FixedDUR2,RV_OK,TK_NotStart,7211U36100,Thresholds,2306,96,56,64,0,520,520,64,304,0,304,,,,2008-12-21 08:00,2008-12-29 17:00,,2008-12-07 08:00,2008-12-15 17:00,2008-12-07 08:00,2008-12-15 17:00,2008-12-07 08:00,2008-12-15 17:00,,,,,PT_Normal,,,,,kUTNZEuuo0qWy6uO1jkdbg,,,,N,0,0
2334,84233,829,11666,912,1,100,N,N,N,CP_Drtn,TT_Task,DT_FixedDUR2,RV_OK,TK_Complete,7211U44050,Sub-frames,2306,40,0,0,848,0,848,80,384,384,0,,2008-09-13 08:00,2008-09-23 17:00,2008-10-08 08:00,2008-10-07 17:00,,2008-10-02 08:00,2008-10-01 17:00,,,2008-09-13 08:00,2008-09-23 17:00,,,,,PT_Normal,,,,,YcUSwnSVxUS1Bd+XzzqlSA,,,,N,848,384
2335,84234,829,12507,912,1,100,N,N,N,CP_Drtn,TT_Task,DT_FixedDUR2,RV_OK,TK_Complete,7211U50100,MEP skeleton embedded provisions,2296,24,0,0,512,0,512,72,,,0,,2008-07-23 08:00,2008-08-03 17:00,2008-10-06 08:00,2008-10-05 17:00,,2008-10-02 08:00,2008-10-01 17:00,,,2008-07-23 08:00,2008-08-03 17:00,,,,,PT_Normal,,,,,V0p9Tt4Zd0yDELg57epK3g,,,,N,512,0
2336,84235,829,12300,912,1,75,N,N,N,CP_Drtn,TT_Task,DT_FixedDUR2,RV_OK,TK_Active,7211U52050,A/C duct works,2296,176,88,40,623.26,207.74,831,160,,,,,2008-09-15 08:00,,2008-10-28 08:00,2008-11-02 17:00,,2008-10-02 08:00,2008-10-07 17:00,2008-10-02 08:00,2008-10-07 17:00,2008-09-15 08:00,2008-10-07 17:00,,,,,PT_Normal,,,,,CthWM97Hf0idPtnGZ0pKdQ,,,,N,623.26,0
2337,84236,829,12300,912,1,44.4,N,N,N,CP_Drtn,TT_Task,DT_FixedDUR2,RV_OK,TK_Active,7211U52100,Chilled water pipe works,2296,112,24,40,349.78,437.22,787,72,,,,,2008-09-28 08:00,,2008-10-19 08:00,2008-10-23 17:00,,2008-10-02 08:00,2008-10-07 17:00,2008-10-02 08:00,2008-10-07 17:00,2008-09-28 08:00,2008-10-07 17:00,,,,,PT_Normal,,,,,vcFdrio/8Uuvm20QYM5WJw,,,,N,349.78,0
2338,84237,829,12510,912,1,62.5,N,N,N,CP_Drtn,TT_Task,DT_FixedDUR2,RV_OK,TK_Active,7211U52150,FCU's hanging,2296,168,80,24,584.5,350.7,935.2,64,,,,,2008-09-27 08:00,,2008-10-27 08:00,2008-10-29 17:00,,2008-10-02 08:00,2008-10-05 17:00,2008-10-02 08:00,2008-10-05 17:00,2008-09-27 08:00,2008-10-05 17:00,,,,,PT_Normal,,,,,153TfGIsNkSSVMYWO5N/7A,,,,N,584.5,0
2339,84238,829,12510,912,1,0,N,N,N,CP_Drtn,TT_Task,DT_FixedDUR2,RV_OK,TK_NotStart,7211U52300,FCU's assembly & duct connections,2296,88,8,80,0,951.2,951.2,80,0,0,0,,,,2008-10-30 08:00,2008-11-10 17:00,,2008-10-18 08:00,2008-10-28 17:00,2008-10-18 08:00,2008-10-28 17:00,2008-10-18 08:00,2008-10-28 17:00,,,,,PT_Normal,,,,,LKJUnOeTJ0qSnqHx18pWpg,,,,N,0,0
2340,84239,829,12510,912,1,0,N,N,N,CP_Drtn,TT_Task,DT_FixedDUR2,RV_OK,TK_NotStart,7211U52350,Grills & diffusers,2296,192,152,64,0,856,856,64,0,0,0,,,,2008-12-21 08:00,2008-12-29 17:00,,2008-11-23 08:00,2008-12-01 17:00,2008-11-23 08:00,2008-12-01 17:00,2008-11-23 08:00,2008-12-01 17:00,,,,,PT_Normal,,,,,81H9FkWdQU6c1IufsTF9Hg,,,,N,0,0
2341,84240,829,12300,912,1,0,N,N,N,CP_Drtn,TT_Task,DT_FixedDUR2,RV_OK,TK_NotStart,7211U52550,A/C duct risers,2296,88,0,64,0,1626,1626,64,0,0,0,,,,2008-10-15 08:00,2008-10-23 17:00,,2008-10-02 08:00,2008-10-11 17:00,2008-10-02 08:00,2008-10-11 17:00,2008-10-02 08:00,2008-10-11 17:00,,,,,PT_Normal,,,,,5MVRFIUb6E+92Ew7F+lY5g,,,,N,0,0
2342,84241,829,12303,912,1,100,N,N,N,CP_Drtn,TT_Task,DT_FixedDUR2,RV_OK,TK_Complete,7211U54050,Chasing & Pex pipe works,2296,208,0,0,395,0,395,120,,,0,,2008-09-15 08:00,2008-10-01 17:00,2008-11-02 08:00,2008-11-01 17:00,,2008-10-02 08:00,2008-10-01 17:00,,,2008-09-15 08:00,2008-10-01 17:00,,,,,PT_Normal,,,,,qAdOvejcfEqIppV4ObUscw,,,,N,395,0
2343,84242,829,12304,912,1,50,N,N,N,CP_Drtn,TT_Task,DT_FixedDUR2,RV_OK,TK_Active,7211U54250,Bathtubs,2296,328,0,40,88.4,136.8,273.6,80,,48.4,,,2008-09-27 08:00,,2008-11-19 08:00,2008-11-24 17:00,,2008-10-02 08:00,2008-10-07 17:00,2008-10-02 08:00,2008-10-07 17:00,2008-09-27 08:00,2008-10-07 17:00,,,,,PT_Normal,,,,,xGOUdNYk8k+1Jv3QqGgSew,,,,N,88.4,48.4
2344,84243,829,12304,912,1,0,N,N,N,CP_Drtn,TT_Task,DT_FixedDUR2,RV_OK,TK_NotStart,7211U54300,Water heater,2296,168,0,64,0,310.4,310.4,64,0,0,0,,,,2008-10-27 08:00,2008-11-04 17:00,,2008-10-02 08:00,2008-10-11 17:00,2008-10-02 08:00,2008-10-11 17:00,2008-10-02 08:00,2008-10-11 17:00,,,,,PT_Normal,,,,,E/mQp0V8cEGV1iSjiCCXRQ,,,,N,0,0
2345,84244,829,12304,912,1,0,N,N,N,CP_Drtn,TT_Task,DT_FixedDUR2,RV_OK,TK_NotStart,7211U54350,Over head pipe assembly & vlave connections,2296,200,120,64,0,229,229,64,0,0,0,,,,2008-11-02 08:00,2008-11-10 17:00,,2008-10-04 08:00,2008-10-12 17:00,2008-10-04 08:00,2008-10-12 17:00,2008-10-04 08:00,2008-10-12 17:00,,,,,PT_Normal,,,,,ndiNGow570uKAoHaXUUP0A,,,,N,0,0
2346,84245,829,12514,912,1,0,N,N,N,CP_Drtn,TT_Task,DT_FixedDUR2,RV_OK,TK_NotStart,7211U54400,Sanitary fixures,2296,144,8,120,0,516,516,120,0,0,0,,,,2008-12-13 08:00,2008-12-29 17:00,,2008-11-22 08:00,2008-12-08 17:00,2008-11-22 08:00,2008-12-08 17:00,2008-11-22 08:00,2008-12-08 17:00,,,,,PT_Normal,,,,,nFgpZDash0+WPeBaDerAAw,,,,N,0,0
2347,84246,829,12514,912,1,0,N,N,N,CP_Drtn,TT_Task,DT_FixedDUR2,RV_OK,TK_NotStart,7211U54450,Mirrors,2296,56,16,80,0,146,146,80,0,0,0,,,,2008-12-18 08:00,2008-12-29 17:00,,2008-12-10 08:00,2008-12-21 17:00,2008-12-10 08:00,2008-12-21 17:00,2008-12-10 08:00,2008-12-21 17:00,,,,,PT_Normal,,,,,kLu2PRML+0eFIOelnaSNkQ,,,,N,0,0
2348,84247,829,12304,912,1,50,N,N,N,CP_Drtn,TT_Task,DT_FixedDUR2,RV_OK,TK_Active,7211U54500,Concealed Flushing Cistern,2296,328,248,40,73,106,212,80,,33,,,2008-09-27 08:00,,2008-11-19 08:00,2008-11-24 17:00,,2008-10-02 08:00,2008-10-07 17:00,2008-10-02 08:00,2008-10-07 17:00,2008-09-27 08:00,2008-10-07 17:00,,,,,PT_Normal,,,,,gdPXnWBjS0mWpXCiprmiDg,,,,N,73,33
2349,84248,829,12307,912,1,100,N,N,N,CP_Drtn,TT_Task,DT_FixedDUR2,RV_OK,TK_Complete,7211U56050,Chasing and installation of drainage pipes,2296,160,0,0,285,0,285,120,,,0,,2008-09-15 08:00,2008-10-01 17:00,2008-10-26 08:00,2008-10-25 17:00,,2008-10-02 08:00,2008-10-01 17:00,,,2008-09-15 08:00,2008-10-01 17:00,,,,,PT_Normal,,,,,zHUNF+pfCEiTQdI0xND4TQ,,,,N,285,0
2350,84249,829,12307,912,1,100,N,N,N,CP_Drtn,TT_Task,DT_FixedDUR2,RV_OK,TK_Complete,7211U56100,Drainage riser pipes,2296,208,0,0,284,0,284,64,,,0,,2008-09-11 08:00,2008-09-20 17:00,2008-11-02 08:00,2008-11-01 17:00,,2008-10-02 08:00,2008-10-01 17:00,,,2008-09-11 08:00,2008-09-20 17:00,,,,,PT_Normal,,,,,KYgNQgkYkEeqlLJM9d/ERQ,,,,N,284,0
2351,84250,829,12517,912,1,0,N,N,N,CP_Drtn,TT_Task,DT_FixedDUR2,RV_OK,TK_NotStart,7211U56150,Over head drainage pipe works,2296,80,0,64,0,257.6,257.6,64,0,0,0,,,,2008-11-02 08:00,2008-11-10 17:00,,2008-10-21 08:00,2008-10-29 17:00,2008-10-21 08:00,2008-10-29 17:00,2008-10-21 08:00,2008-10-29 17:00,,,,,PT_Normal,,,,,TBpQYoSV9kW5n5z5ZOA5LA,,,,N,0,0
2352,84251,829,12310,912,1,100,N,N,N,CP_Drtn,TT_Task,DT_FixedDUR2,RV_OK,TK_Complete,7211U58050,Fire fighting pipe works,2296,224,0,0,292,0,292,72,,,0,,2008-09-21 08:00,2008-09-30 17:00,2008-11-04 08:00,2008-11-03 17:00,,2008-10-02 08:00,2008-10-01 17:00,,,2008-09-21 08:00,2008-09-30 17:00,,,,,PT_Normal,,,,,/wSrAhw3sEuIzYZwTtj/cQ,,,,N,292,0
2353,84252,829,12520,912,1,0,N,N,N,CP_Drtn,TT_Task,DT_FixedDUR2,RV_OK,TK_NotStart,7211U58250,Sprinkler heads,2296,192,152,64,0,394,394,64,0,0,0,,,,2008-12-21 08:00,2008-12-29 17:00,,2008-11-23 08:00,2008-12-01 17:00,2008-11-23 08:00,2008-12-01 17:00,2008-11-23 08:00,2008-12-01 17:00,,,,,PT_Normal,,,,,Qcd6mI8s1UqfdSfPZsAfUQ,,,,N,0,0
2354,84253,829,11885,912,1,100,N,N,N,CP_Drtn,TT_Task,DT_FixedDUR2,RV_OK,TK_Complete,7211U66050,Chasing and installation of conduits,2296,40,0,0,1528,0,1528,120,,,0,,2008-09-13 08:00,2008-09-29 17:00,2008-10-08 08:00,2008-10-07 17:00,,2008-10-02 08:00,2008-10-01 17:00,,,2008-09-13 08:00,2008-09-29 17:00,,,,,PT_Normal,,,,,dus906vAC0WKxkRa3TRcOg,,,,N,1528,0
2355,84254,829,12523,912,1,100,N,N,N,CP_Drtn,TT_Task,DT_FixedDUR2,RV_OK,TK_Complete,7211U68050,Single core wiring,2296,240,0,0,1128,0,1128,72,,,0,,2008-09-15 08:00,2008-09-24 17:00,2008-11-06 08:00,2008-11-05 17:00,,2008-10-02 08:00,2008-10-01 17:00,,,2008-09-15 08:00,2008-09-24 17:00,,,,,PT_Normal,,,,,gkWRcV7nPUWG1ZzaZlr50w,,,,N,1128,0
2356,84255,829,12315,912,1,0,N,N,N,CP_Drtn,TT_Task,DT_FixedDUR2,RV_OK,TK_NotStart,7211U68350,Light Fittings,2296,192,152,120,0,1035.2,1035.2,120,0,0,0,,,,2008-12-13 08:00,2008-12-29 17:00,,2008-11-15 08:00,2008-12-01 17:00,2008-11-15 08:00,2008-12-01 17:00,2008-11-15 08:00,2008-12-01 17:00,,,,,PT_Normal,,,,,3VJD64nh6kGtHA6Bj693FQ,,,,N,0,0
2357,84256,829,12315,912,1,0,N,N,N,CP_Drtn,TT_Task,DT_FixedDUR2,RV_OK,TK_NotStart,7211U68600,Switches & sockets,2296,184,144,72,0,494.4,494.4,72,0,0,0,,,,2008-12-20 08:00,2008-12-29 17:00,,2008-11-23 08:00,2008-12-02 17:00,2008-11-23 08:00,2008-12-02 17:00,2008-11-23 08:00,2008-12-02 17:00,,,,,PT_Normal,,,,,bWj1i0dceUSi0Wumm7tDkw,,,,N,0,0
2358,84257,829,12526,912,1,100,N,N,N,CP_Drtn,TT_Task,DT_FixedDUR2,RV_OK,TK_Complete,7211U74050,Fire alarm cables,2296,208,0,0,380.8,0,380.8,64,,,0,,2008-09-21 08:00,2008-09-29 17:00,2008-11-02 08:00,2008-11-01 17:00,,2008-10-02 08:00,2008-10-01 17:00,,,2008-09-21 08:00,2008-09-29 17:00,,,,,PT_Normal,,,,,8mnyV/z9wkCGQXVaxHO1qw,,,,N,380.8,0
2359,84258,829,12318,912,1,0,N,N,N,CP_Drtn,TT_Task,DT_FixedDUR2,RV_OK,TK_NotStart,7211U74100,Fire alarm fittings,2296,192,152,64,0,116.8,116.8,64,0,0,0,,,,2008-12-21 08:00,2008-12-29 17:00,,2008-11-23 08:00,2008-12-01 17:00,2008-11-23 08:00,2008-12-01 17:00,2008-11-23 08:00,2008-12-01 17:00,,,,,PT_Normal,,,,,kJjOf6naU0agUknalMN50g,,,,N,0,0
2360,84259,829,12529,912,1,0,N,N,N,CP_Drtn,TT_Task,DT_FixedDUR2,RV_OK,TK_NotStart,7211U76050,Structured cabling,2296,40,0,64,0,345.6,345.6,64,0,0,0,,,,2008-10-27 08:00,2008-11-04 17:00,,2008-10-21 08:00,2008-10-29 17:00,2008-10-21 08:00,2008-10-29 17:00,2008-10-21 08:00,2008-10-29 17:00,,,,,PT_Normal,,,,,gCnys5HGa0qyfFQQ3LNeGA,,,,N,0,0
2361,84260,829,10671,912,1,0,N,N,N,CP_Drtn,TT_Task,DT_FixedDUR2,RV_OK,TK_NotStart,7212L00000,Pre-Snagging & Disnagging for duplexes,2296,24,0,120,0,420,420,120,0,0,0,,,,2009-01-22 08:00,2009-02-08 17:00,,2009-01-19 08:00,2009-02-04 17:00,2009-01-19 08:00,2009-02-04 17:00,2009-01-19 08:00,2009-02-04 17:00,,,,,PT_Normal,,,,,alKn7FVwCkOizysX6uA/qg,,,,N,0,0
2362,84261,829,10671,912,1,0,N,N,N,CP_Drtn,TT_Task,DT_FixedDUR2,RV_OK,TK_NotStart,7212L00002,Pre-Snagging & Disnagging for corrid & Srv rooms,2296,184,0,64,0,214,214,64,0,0,0,,,,2009-03-07 08:00,2009-03-15 17:00,,2009-02-08 08:00,2009-02-16 17:00,2009-02-08 08:00,2009-02-16 17:00,2009-02-08 08:00,2009-02-16 17:00,,,,,PT_Normal,,,,,v5MlKfVVOEGh9v4uCAT3jQ,,,,N,0,0
2363,84262,829,11555,912,1,100,N,N,N,CP_Drtn,TT_Task,DT_FixedDUR2,RV_OK,TK_Complete,7212L12050,Columns & walls 2L to 2U - Part 1,2306,24,0,0,3506.92,0,3506.92,24,105352.08,105352.08,0,,2008-08-10 08:00,2008-08-12 17:00,2008-10-06 08:00,2008-10-05 17:00,,2008-10-02 08:00,2008-10-01 17:00,,,2008-08-10 08:00,2008-08-12 17:00,,,,,PT_Normal,,,,,bia92J5SH0O1pVjO+mlH3Q,,,,N,3506.92,105352.08
2364,84263,829,11555,912,1,100,N,N,N,CP_Drtn,TT_Task,DT_FixedDUR2,RV_OK,TK_Complete,7212L12051,Columns & walls 2L to 2U - Part 2,2306,24,0,0,3506.92,0,3506.92,24,105352.08,105352.08,0,,2008-08-18 08:00,2008-08-20 17:00,2008-10-06 08:00,2008-10-05 17:00,,2008-10-02 08:00,2008-10-01 17:00,,,2008-08-18 08:00,2008-08-20 17:00,,,,,PT_Normal,,,,,Emz7LtqSJU2iViZ/K7GCEw,,,,N,3506.92,105352.08
2365,84264,829,11555,912,1,100,N,N,N,CP_Drtn,TT_Task,DT_FixedDUR2,RV_OK,TK_Complete,7212L12052,Columns & walls 2L to 2U - Middle Part,2306,24,0,0,7218.37,0,7218.37,24,217616.24,217616.24,0,,2008-08-16 08:00,2008-08-18 17:00,2008-10-06 08:00,2008-10-05 17:00,,2008-10-02 08:00,2008-10-01 17:00,,,2008-08-16 08:00,2008-08-18 17:00,,,,,PT_Normal,,,,,spCETFqMHkWkcRbWc+41lQ,,,,N,7218.37,217616.24
2366,84265,829,11555,912,1,100,N,N,N,CP_Drtn,TT_Task,DT_FixedDUR2,RV_OK,TK_Complete,7212L12200,Slab @ 2U level - Part 1,2306,24,0,0,3872.99,0,3872.99,56,141659.52,141659.52,0,,2008-08-18 08:00,2008-08-25 17:00,2008-10-06 08:00,2008-10-05 17:00,,2008-10-02 08:00,2008-10-01 17:00,,,2008-08-18 08:00,2008-08-25 17:00,,,,,PT_Normal,,,,,Uh0Wqsg2IEK2e25FC8MwZg,,,,N,3872.99,141659.52
2367,84266,829,11555,912,1,100,N,N,N,CP_Drtn,TT_Task,DT_FixedDUR2,RV_OK,TK_Complete,7212L12201,Slab @ 2U level - Part 2,2306,24,0,0,3865.79,0,3865.79,56,141318.64,141318.64,0,,2008-08-26 08:00,2008-09-02 17:00,2008-10-06 08:00,2008-10-05 17:00,,2008-10-02 08:00,2008-10-01 17:00,,,2008-08-26 08:00,2008-09-02 17:00,,,,,PT_Normal,,,,,6/TeJTF8j0WJdikj9izr5w,,,,N,3865.79,141318.64
2368,84267,829,11555,912,1,100,N,N,N,CP_Drtn,TT_Task,DT_FixedDUR2,RV_OK,TK_Complete,7212L12202,Slab @ 2U level - Middle Part,2306,24,0,0,5579.54,0,5579.54,56,204883.76,204883.76,0,,2008-08-24 08:00,2008-08-31 17:00,2008-10-06 08:00,2008-10-05 17:00,,2008-10-02 08:00,2008-10-01 17:00,,,2008-08-24 08:00,2008-08-31 17:00,,,,,PT_Normal,,,,,Id7IrCAMTUOYaLvMJqD53Q,,,,N,5579.54,204883.76
2369,84268,829,11555,912,1,100,N,N,N,CP_Drtn,TT_Task,DT_FixedDUR2,RV_OK,TK_Complete,7212L12250,Staircases 2L to 2U,2306,208,0,0,991.88,0,991.88,24,18457.6,18457.6,0,,2008-09-02 08:00,2008-09-04 17:00,2008-11-02 08:00,2008-11-01 17:00,,2008-10-02 08:00,2008-10-01 17:00,,,2008-09-02 08:00,2008-09-04 17:00,,,,,PT_Normal,,,,,hoUwjHPwA0ePXSLdAHBw0Q,,,,N,991.88,18457.6
2370,84269,829,11668,912,1,33.3,N,N,N,CP_Drtn,TT_Task,DT_FixedDUR2,RV_OK,TK_Active,7212L14050,Block works,2306,24,0,80,8107.64,20057.03,30085.5,120,18440,8067.47,12293.36,,2008-09-27 08:00,,2008-10-06 08:00,2008-10-16 17:00,,2008-10-02 08:00,2008-10-13 17:00,2008-10-02 08:00,2008-10-13 17:00,2008-09-27 08:00,2008-10-13 17:00,,,,,PT_Normal,,,,,tZFJ5PpeukSVoqEw+Ux6yw,,,,N,8107.64,8067.47
2371,84270,829,11669,912,1,0,N,N,N,CP_Drtn,TT_Task,DT_FixedDUR2,RV_OK,TK_NotStart,7212L16050,Plaster works,2306,40,0,120,0,24385.9,24385.9,120,19032,0,19032,,,,2008-10-18 08:00,2008-11-03 17:00,,2008-10-12 08:00,2008-10-28 17:00,2008-10-12 08:00,2008-10-28 17:00,2008-10-12 08:00,2008-10-28 17:00,,,,,PT_Normal,,,,,D2NS4LISL0GN7t7jZmq2wg,,,,N,0,0
2372,84271,829,11669,912,1,0,N,N,N,CP_Drtn,TT_Task,DT_FixedDUR2,RV_OK,TK_NotStart,7212L16051,Plaste works behind tiles,2306,184,160,120,0,10136.2,10136.2,120,7856,0,7856,,,,2008-11-08 08:00,2008-11-24 17:00,,2008-10-12 08:00,2008-10-28 17:00,2008-10-12 08:00,2008-10-28 17:00,2008-10-12 08:00,2008-10-28 17:00,,,,,PT_Normal,,,,,19uNSvi/N0OV87m6egf7cA,,,,N,0,0
2373,84272,829,11461,912,1,0,N,N,N,CP_Drtn,TT_Task,DT_FixedDUR2,RV_OK,TK_NotStart,7212L18050,Rendering works,2306,64,24,120,0,5683,5683,120,5000,0,5000,,,,2008-10-14 08:00,2008-10-30 17:00,,2008-10-05 08:00,2008-10-21 17:00,2008-10-05 08:00,2008-10-21 17:00,2008-10-05 08:00,2008-10-21 17:00,,,,,PT_Normal,,,,,AP6RbRhcwEmumF3Eau+8zw,,,,N,0,0
2374,84273,829,11461,912,1,0,N,N,N,CP_Drtn,TT_Task,DT_FixedDUR2,RV_OK,TK_NotStart,7212L18100,Painting base coats,2306,40,0,120,0,26555.6,26555.6,120,24032,0,24032,,,,2008-10-26 08:00,2008-11-11 17:00,,2008-10-20 08:00,2008-11-05 17:00,2008-10-20 08:00,2008-11-05 17:00,2008-10-20 08:00,2008-11-05 17:00,,,,,PT_Normal,,,,,TssJIeGnj0OJFx3xdaNfNA,,,,N,0,0
2375,84274,829,11461,912,1,0,N,N,N,CP_Drtn,TT_Task,DT_FixedDUR2,RV_OK,TK_NotStart,7212L18150,Painting 1st top coat for apartments,2306,136,0,72,0,17300.2,17300.2,72,16408,0,16408,,,,2009-01-04 08:00,2009-01-13 17:00,,2008-12-15 08:00,2008-12-24 17:00,2008-12-15 08:00,2008-12-24 17:00,2008-12-15 08:00,2008-12-24 17:00,,,,,PT_Normal,,,,,kXmBHe8b/EqJbC1W4CidhQ,,,,N,0,0
2376,84275,829,11461,912,1,0,N,N,N,CP_Drtn,TT_Task,DT_FixedDUR2,RV_OK,TK_NotStart,7212L18153,Painting 1st top coat for corridors/lobbies,2306,352,0,48,0,14370,14370,48,13640,0,13640,,,,2009-02-17 08:00,2009-02-23 17:00,,2008-12-28 08:00,2009-01-03 17:00,2008-12-28 08:00,2009-01-03 17:00,2008-12-28 08:00,2009-01-03 17:00,,,,,PT_Normal,,,,,E6mVkqfRWUiQc5uD31M9ug,,,,N,0,0
2377,84276,829,11461,912,1,0,N,N,N,CP_Drtn,TT_Task,DT_FixedDUR2,RV_OK,TK_NotStart,7212L18155,Painting 1st top coat for service rooms,2306,320,0,48,0,6364.4,6364.4,48,6016,0,6016,,,,2009-02-12 08:00,2009-02-18 17:00,,2008-12-28 08:00,2009-01-03 17:00,2008-12-28 08:00,2009-01-03 17:00,2008-12-28 08:00,2009-01-03 17:00,,,,,PT_Normal,,,,,KMSkutPqr0SfAHYcy3AIcg,,,,N,0,0
2378,84277,829,10671,912,1,0,N,N,N,CP_Drtn,TT_Task,DT_FixedDUR2,RV_OK,TK_NotStart,7212L18200,Painting final top coat,2306,240,56,32,0,25265.8,25265.8,32,24032,0,24032,,,,2009-03-23 08:00,2009-03-26 17:00,,2009-02-16 08:00,2009-02-19 17:00,2009-02-16 08:00,2009-02-19 17:00,2009-02-16 08:00,2009-02-19 17:00,,,,,PT_Normal,,,,,kRiRQfiWx0i1QIpAUGgGUg,,,,N,0,0
2379,84278,829,11671,912,1,0,N,N,N,CP_Drtn,TT_Task,DT_FixedDUR2,RV_OK,TK_NotStart,7212L20050,Floor tiles for apartments-dry area,2306,144,24,120,0,8846.4,8846.4,120,6464,0,6464,,,,2008-11-19 08:00,2008-12-06 17:00,,2008-10-29 08:00,2008-11-15 17:00,2008-10-29 08:00,2008-11-15 17:00,2008-10-29 08:00,2008-11-15 17:00,,,,,PT_Normal,,,,,FbI8BoP4D0u7a3cGbn2jLA,,,,N,0,0
2380,84279,829,11671,912,1,0,N,N,N,CP_Drtn,TT_Task,DT_FixedDUR2,RV_OK,TK_NotStart,7212L20053,Floor tiles for corridors / lobbies,2306,112,0,48,0,4638,4638,48,3400,0,3400,,,,2008-12-31 08:00,2009-01-06 17:00,,2008-12-15 08:00,2008-12-21 17:00,2008-12-15 08:00,2008-12-21 17:00,2008-12-15 08:00,2008-12-21 17:00,,,,,PT_Normal,,,,,pORYh4XIp0uCkEkeaKiLPg,,,,N,0,0
2381,84280,829,11671,912,1,0,N,N,N,CP_Drtn,TT_Task,DT_FixedDUR2,RV_OK,TK_NotStart,7212L20070,Floor tiles for apartments-wet area,2306,24,0,120,0,4062,4062,120,2920,0,2920,,,,2008-12-07 08:00,2008-12-23 17:00,,2008-12-03 08:00,2008-12-20 17:00,2008-12-03 08:00,2008-12-20 17:00,2008-12-03 08:00,2008-12-20 17:00,,,,,PT_Normal,,,,,XaFJCJMO5UaO8fjQPHVuOw,,,,N,0,0
2382,84281,829,11671,912,1,0,N,N,N,CP_Drtn,TT_Task,DT_FixedDUR2,RV_OK,TK_NotStart,7212L20110,Wall tiles for apartments-wet area,2306,48,0,120,0,9159,9159,120,6026,0,6026,,,,2008-12-13 08:00,2008-12-29 17:00,,2008-12-06 08:00,2008-12-22 17:00,2008-12-06 08:00,2008-12-22 17:00,2008-12-06 08:00,2008-12-22 17:00,,,,,PT_Normal,,,,,C5zUb4iWFUSBkubUneBfmw,,,,N,0,0
2383,84282,829,11672,912,1,0,N,N,N,CP_Drtn,TT_Task,DT_FixedDUR2,RV_OK,TK_NotStart,7212L22150,W/P for for apartments,2306,248,0,72,0,4832.4,4832.4,72,4328,0,4328,,,,2008-11-19 08:00,2008-11-29 17:00,,2008-10-14 08:00,2008-10-23 17:00,2008-10-14 08:00,2008-10-23 17:00,2008-10-14 08:00,2008-10-23 17:00,,,,,PT_Normal,,,,,XcHdfS13RU2LunIoIdPVCw,,,,N,0,0
2384,84283,829,11464,912,1,0,N,N,N,CP_Drtn,TT_Task,DT_FixedDUR2,RV_OK,TK_NotStart,7212L24050,Aluminium doors & windows,2306,248,144,120,0,1976,1976,120,464,0,464,,,,2008-12-13 08:00,2008-12-29 17:00,,2008-11-06 08:00,2008-11-23 17:00,2008-11-06 08:00,2008-11-23 17:00,2008-11-06 08:00,2008-11-23 17:00,,,,,PT_Normal,,,,,WvAJDt+WpkC+pWcGiKS0vQ,,,,N,0,0
2385,84284,829,11464,912,1,0,N,N,N,CP_Drtn,TT_Task,DT_FixedDUR2,RV_OK,TK_NotStart,7212L24200,Balcony handrails,2306,64,0,120,0,2710,2710,120,1480,0,1480,,,,2008-12-30 08:00,2009-01-15 17:00,,2008-12-21 08:00,2009-01-06 17:00,2008-12-21 08:00,2009-01-06 17:00,2008-12-21 08:00,2009-01-06 17:00,,,,,PT_Normal,,,,,LAznKsD78Ua5Ex72cnw/HQ,,,,N,0,0
2386,84285,829,11464,912,1,0,N,N,N,CP_Drtn,TT_Task,DT_FixedDUR2,RV_OK,TK_NotStart,7212L24203,Lobby handrails,2306,432,248,64,0,946,946,64,504,0,504,,,,2009-02-23 08:00,2009-03-03 17:00,,2008-12-22 08:00,2008-12-30 17:00,2008-12-22 08:00,2008-12-30 17:00,2008-12-22 08:00,2008-12-30 17:00,,,,,PT_Normal,,,,,O/eHfBFBDkCgfcyYQvvbAA,,,,N,0,0
2387,84286,829,11674,912,1,0,N,N,N,CP_Drtn,TT_Task,DT_FixedDUR2,RV_OK,TK_NotStart,7212L26050,Steel doors,2306,320,0,48,0,368,368,48,64,0,64,,,,2009-02-05 08:00,2009-02-11 17:00,,2008-12-21 08:00,2008-12-27 17:00,2008-12-21 08:00,2008-12-27 17:00,2008-12-21 08:00,2008-12-27 17:00,,,,,PT_Normal,,,,,xQlo04c1k0uc7D0uVNyD8Q,,,,N,0,0
2388,84287,829,11675,912,1,0,N,N,N,CP_Drtn,TT_Task,DT_FixedDUR2,RV_OK,TK_NotStart,7212L30050,Wooden doors,2306,104,32,176,0,2192,2192,176,576,0,576,,,,2008-12-18 08:00,2009-01-12 17:00,,2008-12-03 08:00,2008-12-28 17:00,2008-12-03 08:00,2008-12-28 17:00,2008-12-03 08:00,2008-12-28 17:00,,,,,PT_Normal,,,,,2ohB3PEpJkazlipgErqpjw,,,,N,0,0
2389,84288,829,11676,912,1,0,N,N,N,CP_Drtn,TT_Task,DT_FixedDUR2,RV_OK,TK_NotStart,7212L32050,Kitchen cabinets,2306,48,24,128,0,3104,3104,128,96,0,96,,,,2008-12-29 08:00,2009-01-15 17:00,,2008-12-22 08:00,2009-01-08 17:00,2008-12-22 08:00,2009-01-08 17:00,2008-12-22 08:00,2009-01-08 17:00,,,,,PT_Normal,,,,,eQQDLvn8VUWBIMdXxBSsYw,,,,N,0,0
2390,84289,829,11676,912,1,0,N,N,N,CP_Drtn,TT_Task,DT_FixedDUR2,RV_OK,TK_NotStart,7212L32100,Vanity counters,2306,24,0,120,0,1880,1880,120,160,0,160,,,,2008-12-24 08:00,2009-01-10 17:00,,2008-12-21 08:00,2009-01-06 17:00,2008-12-21 08:00,2009-01-06 17:00,2008-12-21 08:00,2009-01-06 17:00,,,,,PT_Normal,,,,,TTA/6wPEJEqrsYImDFakSw,,,,N,0,0
2391,84290,829,11676,912,1,0,N,N,N,CP_Drtn,TT_Task,DT_FixedDUR2,RV_OK,TK_NotStart,7212L32150,Wardrobes,2306,184,160,120,0,4152,4152,120,192,0,192,,,,2008-12-30 08:00,2009-01-15 17:00,,2008-12-03 08:00,2008-12-20 17:00,2008-12-03 08:00,2008-12-20 17:00,2008-12-03 08:00,2008-12-20 17:00,,,,,PT_Normal,,,,,qoh+Bk4xSU+bofFm0paNwg,,,,N,0,0
2392,84291,829,11677,912,1,0,N,N,N,CP_Drtn,TT_Task,DT_FixedDUR2,RV_OK,TK_NotStart,7212L34050,False ceiling works for apartments-dry area,2306,128,0,160,0,1506.16,1506.16,160,897.44,0,897.44,,,,2008-12-10 08:00,2009-01-01 17:00,,2008-11-22 08:00,2008-12-14 17:00,2008-11-22 08:00,2008-12-14 17:00,2008-11-22 08:00,2008-12-14 17:00,,,,,PT_Normal,,,,,n2U6/QEbX064mYdOfESWBw,,,,N,0,0
2393,84292,829,11677,912,1,0,N,N,N,CP_Drtn,TT_Task,DT_FixedDUR2,RV_OK,TK_NotStart,7212L34053,False ceiling works for corridors/lobbies,2306,112,0,72,0,9876,9876,72,6536,0,6536,,,,2008-12-23 08:00,2009-01-01 17:00,,2008-12-07 08:00,2008-12-16 17:00,2008-12-07 08:00,2008-12-16 17:00,2008-12-07 08:00,2008-12-16 17:00,,,,,PT_Normal,,,,,+HDPgkEhhUu4hCYv27DC9A,,,,N,0,0
2394,84293,829,11677,912,1,0,N,N,N,CP_Drtn,TT_Task,DT_FixedDUR2,RV_OK,TK_NotStart,7212L34070,False ceiling works for apartments-wet area,2306,24,0,160,0,709.84,709.84,160,366.56,0,366.56,,,,2008-11-25 08:00,2008-12-17 17:00,,2008-11-22 08:00,2008-12-14 17:00,2008-11-22 08:00,2008-12-14 17:00,2008-11-22 08:00,2008-12-14 17:00,,,,,PT_Normal,,,,,ESU2GBO1zEK/4XOIU3LVPg,,,,N,0,0
2395,84294,829,11678,912,1,0,N,N,N,CP_Drtn,TT_Task,DT_FixedDUR2,RV_OK,TK_NotStart,7212L36050,Stone finishing top,2306,88,8,64,0,484,484,64,240,0,240,,,,2009-01-04 08:00,2009-01-12 17:00,,2008-12-22 08:00,2008-12-30 17:00,2008-12-22 08:00,2008-12-30 17:00,2008-12-22 08:00,2008-12-30 17:00,,,,,PT_Normal,,,,,hXRFmIRit0GIKIFsAHE2tg,,,,N,0,0
2396,84295,829,11678,912,1,0,N,N,N,CP_Drtn,TT_Task,DT_FixedDUR2,RV_OK,TK_NotStart,7212L36100,Thresholds,2306,64,8,120,0,924,924,120,536,0,536,,,,2008-12-30 08:00,2009-01-15 17:00,,2008-12-21 08:00,2009-01-06 17:00,2008-12-21 08:00,2009-01-06 17:00,2008-12-21 08:00,2009-01-06 17:00,,,,,PT_Normal,,,,,kFhS+S1R90yEnRrg3/+Zxw,,,,N,0,0
2397,84296,829,11679,912,1,0,N,N,N,CP_Drtn,TT_Task,DT_FixedDUR2,RV_OK,TK_NotStart,7212L38100,Epoxy coating system,2306,320,136,48,0,816,816,48,640,0,640,,,,2009-02-25 08:00,2009-03-03 17:00,,2009-01-10 08:00,2009-01-15 17:00,2009-01-10 08:00,2009-01-15 17:00,2009-01-10 08:00,2009-01-15 17:00,,,,,PT_Normal,,,,,tIocTUDwwEebTywU7qWBJg,,,,N,0,0
2398,84297,829,11680,912,1,0,N,N,N,CP_Drtn,TT_Task,DT_FixedDUR2,RV_OK,TK_NotStart,7212L40050,Duplex apartment stairs,2306,120,0,120,0,3816,3816,120,96,0,96,,,,2008-12-07 08:00,2008-12-23 17:00,,2008-11-19 08:00,2008-12-06 17:00,2008-11-19 08:00,2008-12-06 17:00,2008-11-19 08:00,2008-12-06 17:00,,,,,PT_Normal,,,,,rs2udBUdcUGGw7Ur5P3mKQ,,,,N,0,0
2399,84298,829,11680,912,1,0,N,N,N,CP_Drtn,TT_Task,DT_FixedDUR2,RV_OK,TK_NotStart,7212L40100,Wooden steps for Duplex stairs,2306,120,0,120,0,936,936,120,96,0,96,,,,2008-12-18 08:00,2009-01-04 17:00,,2008-12-01 08:00,2008-12-17 17:00,2008-12-01 08:00,2008-12-17 17:00,2008-12-01 08:00,2008-12-17 17:00,,,,,PT_Normal,,,,,ohw2Jq26w0i2S7zEfnsDLQ,,,,N,0,0
2400,84299,829,11680,912,1,0,N,N,N,CP_Drtn,TT_Task,DT_FixedDUR2,RV_OK,TK_NotStart,7212L40150,Duplex stair railings,2306,120,96,120,0,5120,5120,120,2000,0,2000,,,,2008-12-30 08:00,2009-01-15 17:00,,2008-12-13 08:00,2008-12-29 17:00,2008-12-13 08:00,2008-12-29 17:00,2008-12-13 08:00,2008-12-29 17:00,,,,,PT_Normal,,,,,0N00cD66TUiBhmkHAx70VQ,,,,N,0,0
2401,84300,829,11681,912,1,0,N,N,N,CP_Drtn,TT_Task,DT_FixedDUR2,RV_OK,TK_NotStart,7212L42050,Signage works,2306,360,176,48,0,153.8,153.8,48,96,0,96,,,,2009-02-25 08:00,2009-03-03 17:00,,2009-01-04 08:00,2009-01-10 17:00,2009-01-04 08:00,2009-01-10 17:00,2009-01-04 08:00,2009-01-10 17:00,,,,,PT_Normal,,,,,JB7QzMas2EO0Rn9PnwmV1Q,,,,N,0,0
2402,84301,829,11473,912,1,0,N,N,N,CP_Drtn,TT_Task,DT_FixedDUR2,RV_OK,TK_NotStart,7212L44050,Sub-frames,2306,40,0,120,0,1272,1272,120,576,0,576,,,,2008-10-12 08:00,2008-10-28 17:00,,2008-10-06 08:00,2008-10-22 17:00,2008-10-06 08:00,2008-10-22 17:00,2008-10-06 08:00,2008-10-22 17:00,,,,,PT_Normal,,,,,ivoApizEBEOyYAOFuPD4cw,,,,N,0,0
2403,84302,829,12532,912,1,100,N,N,N,CP_Drtn,TT_Task,DT_FixedDUR2,RV_OK,TK_Complete,7212L50100,MEP skeleton embedded provisions,2296,24,0,0,512,0,512,72,,,0,,2008-08-10 08:00,2008-08-19 17:00,2008-10-06 08:00,2008-10-05 17:00,,2008-10-02 08:00,2008-10-01 17:00,,,2008-08-10 08:00,2008-08-19 17:00,,,,,PT_Normal,,,,,a/VM8SrZi0m1hVy7YLadlQ,,,,N,512,0
2404,84303,829,12534,912,1,0,N,N,N,CP_Drtn,TT_Task,DT_FixedDUR2,RV_OK,TK_NotStart,7212L52050,A/C duct works,2296,136,112,160,0,831,831,160,0,0,0,,,,2008-10-25 08:00,2008-11-16 17:00,,2008-10-05 08:00,2008-10-27 17:00,2008-10-05 08:00,2008-10-27 17:00,2008-10-05 08:00,2008-10-27 17:00,,,,,PT_Normal,,,,,Jexpi3bUZ0aCOJZKgYxTIA,,,,N,0,0
2405,84304,829,12534,912,1,0,N,N,N,CP_Drtn,TT_Task,DT_FixedDUR2,RV_OK,TK_NotStart,7212L52100,Chilled water pipe works,2296,88,64,72,0,787,787,72,0,0,0,,,,2008-10-28 08:00,2008-11-06 17:00,,2008-10-15 08:00,2008-10-25 17:00,2008-10-15 08:00,2008-10-25 17:00,2008-10-15 08:00,2008-10-25 17:00,,,,,PT_Normal,,,,,FqgEk/86KEKjuZpuEV8hBA,,,,N,0,0
2406,84305,829,12326,912,1,0,N,N,N,CP_Drtn,TT_Task,DT_FixedDUR2,RV_OK,TK_NotStart,7212L52150,FCU's hanging,2296,144,120,64,0,935.2,935.2,64,0,0,0,,,,2008-11-04 08:00,2008-11-12 17:00,,2008-10-14 08:00,2008-10-22 17:00,2008-10-14 08:00,2008-10-22 17:00,2008-10-14 08:00,2008-10-22 17:00,,,,,PT_Normal,,,,,lEcSq1IdUUWpnXOsve3vHw,,,,N,0,0
2407,84306,829,12326,912,1,0,N,N,N,CP_Drtn,TT_Task,DT_FixedDUR2,RV_OK,TK_NotStart,7212L52300,FCU's assembly & duct connections,2296,24,0,72,0,943.2,943.2,72,0,0,0,,,,2008-11-15 08:00,2008-11-24 17:00,,2008-11-11 08:00,2008-11-20 17:00,2008-11-11 08:00,2008-11-20 17:00,2008-11-11 08:00,2008-11-20 17:00,,,,,PT_Normal,,,,,7XMzkqk1TEicX84ncE6q5g,,,,N,0,0
2408,84307,829,12326,912,1,0,N,N,N,CP_Drtn,TT_Task,DT_FixedDUR2,RV_OK,TK_NotStart,7212L52350,Grills & diffusers,2296,424,120,80,0,872,872,80,0,0,0,,,,2009-02-15 08:00,2009-02-25 17:00,,2008-12-15 08:00,2008-12-25 17:00,2008-12-15 08:00,2008-12-25 17:00,2008-12-15 08:00,2008-12-25 17:00,,,,,PT_Normal,,,,,T9iLcbfV0EWCPyBT552nrg,,,,N,0,0
2409,84308,829,12534,912,1,0,N,N,N,CP_Drtn,TT_Task,DT_FixedDUR2,RV_OK,TK_NotStart,7212L52550,A/C duct risers,2296,24,0,64,0,1626,1626,64,0,0,0,,,,2008-10-29 08:00,2008-11-06 17:00,,2008-10-26 08:00,2008-11-03 17:00,2008-10-26 08:00,2008-11-03 17:00,2008-10-26 08:00,2008-11-03 17:00,,,,,PT_Normal,,,,,RFmBQsDZG0mbjb7b8hHEkw,,,,N,0,0
2410,84309,829,12537,912,1,0,N,N,N,CP_Drtn,TT_Task,DT_FixedDUR2,RV_OK,TK_NotStart,7212L54050,Chasing & Pex pipe works,2296,160,8,120,0,395,395,120,0,0,0,,,,2008-10-28 08:00,2008-11-13 17:00,,2008-10-05 08:00,2008-10-21 17:00,2008-10-05 08:00,2008-10-21 17:00,2008-10-05 08:00,2008-10-21 17:00,,,,,PT_Normal,,,,,Fe1aDzQ4s0i1AbdZOEf6bg,,,,N,0,0
2411,84310,829,12537,912,1,0,N,N,N,CP_Drtn,TT_Task,DT_FixedDUR2,RV_OK,TK_NotStart,7212L54100,Over head distribution water pipe network,2296,96,0,64,0,8314,8314,64,0,0,0,,,,2008-11-03 08:00,2008-11-11 17:00,,2008-10-20 08:00,2008-10-28 17:00,2008-10-20 08:00,2008-10-28 17:00,2008-10-20 08:00,2008-10-28 17:00,,,,,PT_Normal,,,,,hFNB/CNwLEqU6D0Hh107Sg,,,,N,0,0
2412,84311,829,12330,912,1,0,N,N,N,CP_Drtn,TT_Task,DT_FixedDUR2,RV_OK,TK_NotStart,7212L54150,Water meter cabinet pipe works,2296,288,152,120,0,340,340,120,0,0,0,,,,2008-12-30 08:00,2009-01-15 17:00,,2008-11-18 08:00,2008-12-04 17:00,2008-11-18 08:00,2008-12-04 17:00,2008-11-18 08:00,2008-12-04 17:00,,,,,PT_Normal,,,,,3AyVgFI+C0iMda1nkDXiAg,,,,N,0,0
2413,84312,829,12329,912,1,0,N,N,N,CP_Drtn,TT_Task,DT_FixedDUR2,RV_OK,TK_NotStart,7212L54250,Bathtubs,2296,248,0,80,0,273.6,273.6,80,0,0,0,,,,2008-11-25 08:00,2008-12-06 17:00,,2008-10-20 08:00,2008-10-30 17:00,2008-10-20 08:00,2008-10-30 17:00,2008-10-20 08:00,2008-10-30 17:00,,,,,PT_Normal,,,,,YbJsKg6cDEi87wLYFARBnA,,,,N,0,0
2414,84313,829,12329,912,1,0,N,N,N,CP_Drtn,TT_Task,DT_FixedDUR2,RV_OK,TK_NotStart,7212L54300,Water heater,2296,128,64,64,0,310.4,310.4,64,0,0,0,,,,2008-11-10 08:00,2008-11-18 17:00,,2008-10-22 08:00,2008-10-30 17:00,2008-10-22 08:00,2008-10-30 17:00,2008-10-22 08:00,2008-10-30 17:00,,,,,PT_Normal,,,,,GMbYDhLYRUC/ToPgrZ7b2g,,,,N,0,0
2415,84314,829,12329,912,1,0,N,N,N,CP_Drtn,TT_Task,DT_FixedDUR2,RV_OK,TK_NotStart,7212L54350,Over head pipe assembly & vlave connections,2296,96,72,72,0,237,237,72,0,0,0,,,,2008-11-15 08:00,2008-11-24 17:00,,2008-11-01 08:00,2008-11-10 17:00,2008-11-01 08:00,2008-11-10 17:00,2008-11-01 08:00,2008-11-10 17:00,,,,,PT_Normal,,,,,uD8CtvB0qUClsQHGtsIQ7A,,,,N,0,0
2416,84315,829,12330,912,1,0,N,N,N,CP_Drtn,TT_Task,DT_FixedDUR2,RV_OK,TK_NotStart,7212L54400,Sanitary fixures,2296,88,0,120,0,516,516,120,0,0,0,,,,2008-12-27 08:00,2009-01-12 17:00,,2008-12-14 08:00,2008-12-30 17:00,2008-12-14 08:00,2008-12-30 17:00,2008-12-14 08:00,2008-12-30 17:00,,,,,PT_Normal,,,,,uKyndx0uBkKCUIKfUYMaMQ,,,,N,0,0
2417,84316,829,12330,912,1,0,N,N,N,CP_Drtn,TT_Task,DT_FixedDUR2,RV_OK,TK_NotStart,7212L54450,Mirrors,2296,24,0,120,0,186,186,120,0,0,0,,,,2008-12-30 08:00,2009-01-15 17:00,,2008-12-27 08:00,2009-01-12 17:00,2008-12-27 08:00,2009-01-12 17:00,2008-12-27 08:00,2009-01-12 17:00,,,,,PT_Normal,,,,,Lh679alq4kWvXDz/IF+9mA,,,,N,0,0
2418,84317,829,12329,912,1,0,N,N,N,CP_Drtn,TT_Task,DT_FixedDUR2,RV_OK,TK_NotStart,7212L54500,Concealed Flushing Cistern,2296,248,224,80,0,212,212,80,0,0,0,,,,2008-11-25 08:00,2008-12-06 17:00,,2008-10-20 08:00,2008-10-30 17:00,2008-10-20 08:00,2008-10-30 17:00,2008-10-20 08:00,2008-10-30 17:00,,,,,PT_Normal,,,,,oChZdtJ47E6UzPlgEVGzag,,,,N,0,0
2419,84318,829,12541,912,1,0,N,N,N,CP_Drtn,TT_Task,DT_FixedDUR2,RV_OK,TK_NotStart,7212L56050,Chasing and installation of drainage pipes,2296,80,0,120,0,285,285,120,0,0,0,,,,2008-10-16 08:00,2008-11-02 17:00,,2008-10-05 08:00,2008-10-21 17:00,2008-10-05 08:00,2008-10-21 17:00,2008-10-05 08:00,2008-10-21 17:00,,,,,PT_Normal,,,,,EgVJQ9TtnU+lOZCSgKKezg,,,,N,0,0
2420,84319,829,12541,912,1,0,N,N,N,CP_Drtn,TT_Task,DT_FixedDUR2,RV_OK,TK_NotStart,7212L56100,Drainage riser pipes,2296,192,72,64,0,284,284,64,0,0,0,,,,2008-11-02 08:00,2008-11-10 17:00,,2008-10-05 08:00,2008-10-13 17:00,2008-10-05 08:00,2008-10-13 17:00,2008-10-05 08:00,2008-10-13 17:00,,,,,PT_Normal,,,,,xkspQQ9sSEWJtjVrdYE7uw,,,,N,0,0
2421,84320,829,12333,912,1,0,N,N,N,CP_Drtn,TT_Task,DT_FixedDUR2,RV_OK,TK_NotStart,7212L56150,Over head drainage pipe works,2296,152,128,64,0,257.6,257.6,64,0,0,0,,,,2008-11-16 08:00,2008-11-24 17:00,,2008-10-25 08:00,2008-11-02 17:00,2008-10-25 08:00,2008-11-02 17:00,2008-10-25 08:00,2008-11-02 17:00,,,,,PT_Normal,,,,,ynK4nwspB0SImJTQLIYn2A,,,,N,0,0
2422,84321,829,12544,912,1,0,N,N,N,CP_Drtn,TT_Task,DT_FixedDUR2,RV_OK,TK_NotStart,7212L58050,Fire fighting pipe works,2296,160,136,72,0,292,292,72,0,0,0,,,,2008-11-06 08:00,2008-11-16 17:00,,2008-10-14 08:00,2008-10-23 17:00,2008-10-14 08:00,2008-10-23 17:00,2008-10-14 08:00,2008-10-23 17:00,,,,,PT_Normal,,,,,ScXn5xUUw02eyXAYkAxJuA,,,,N,0,0
2423,84322,829,12336,912,1,0,N,N,N,CP_Drtn,TT_Task,DT_FixedDUR2,RV_OK,TK_NotStart,7212L58200,Fire cabinet complete,2296,352,168,64,0,339,339,64,0,0,0,,,,2009-02-23 08:00,2009-03-03 17:00,,2009-01-03 08:00,2009-01-11 17:00,2009-01-03 08:00,2009-01-11 17:00,2009-01-03 08:00,2009-01-11 17:00,,,,,PT_Normal,,,,,zI0/fyQY4kyKIQc7hk8LVQ,,,,N,0,0
2424,84323,829,12336,912,1,0,N,N,N,CP_Drtn,TT_Task,DT_FixedDUR2,RV_OK,TK_NotStart,7212L58250,Sprinkler heads,2296,384,80,120,0,450,450,120,0,0,0,,,,2009-02-09 08:00,2009-02-25 17:00,,2008-12-15 08:00,2008-12-31 17:00,2008-12-15 08:00,2008-12-31 17:00,2008-12-15 08:00,2008-12-31 17:00,,,,,PT_Normal,,,,,XlFEenDQ2ECGtl+U0tQfuw,,,,N,0,0
2425,84324,829,12547,912,1,0,N,N,N,CP_Drtn,TT_Task,DT_FixedDUR2,RV_OK,TK_NotStart,7212L60050,LPG piping,2296,288,0,72,0,292,292,72,0,0,0,,,,2008-12-18 08:00,2008-12-28 17:00,,2008-11-06 08:00,2008-11-16 17:00,2008-11-06 08:00,2008-11-16 17:00,2008-11-06 08:00,2008-11-16 17:00,,,,,PT_Normal,,,,,hDKCk/f5dUmS6m84cKB2gQ,,,,N,0,0
2426,84325,829,12339,912,1,0,N,N,N,CP_Drtn,TT_Task,DT_FixedDUR2,RV_OK,TK_NotStart,7212L60100,Gas meter & leak detector,2296,344,136,72,0,248,248,72,0,0,0,,,,2009-01-06 08:00,2009-01-15 17:00,,2008-11-17 08:00,2008-11-26 17:00,2008-11-17 08:00,2008-11-26 17:00,2008-11-17 08:00,2008-11-26 17:00,,,,,PT_Normal,,,,,J6n++Zk1q0KHROawgAitkw,,,,N,0,0
2427,84326,829,12550,912,1,0,N,N,N,CP_Drtn,TT_Task,DT_FixedDUR2,RV_OK,TK_NotStart,7212L62050,BMS cabling,2296,80,56,48,0,470.4,470.4,48,0,0,0,,,,2008-11-18 08:00,2008-11-24 17:00,,2008-11-06 08:00,2008-11-12 17:00,2008-11-06 08:00,2008-11-12 17:00,2008-11-06 08:00,2008-11-12 17:00,,,,,PT_Normal,,,,,AQNk2Nn8BUi83P5nO8DL0g,,,,N,0,0
2428,84327,829,12342,912,1,0,N,N,N,CP_Drtn,TT_Task,DT_FixedDUR2,RV_OK,TK_NotStart,7212L62100,DGC & cable termination to equipments,2296,320,0,48,0,329.6,329.6,48,0,0,0,,,,2009-02-19 08:00,2009-02-25 17:00,,2009-01-04 08:00,2009-01-10 17:00,2009-01-04 08:00,2009-01-10 17:00,2009-01-04 08:00,2009-01-10 17:00,,,,,PT_Normal,,,,,/Mdp14hy8kW36M6pSDpnaA,,,,N,0,0
2429,84328,829,12553,912,1,0,N,N,N,CP_Drtn,TT_Task,DT_FixedDUR2,RV_OK,TK_NotStart,7212L66050,Chasing and installation of conduits,2296,40,0,120,0,1809.6,1809.6,120,0,0,0,,,,2008-10-12 08:00,2008-10-28 17:00,,2008-10-06 08:00,2008-10-22 17:00,2008-10-06 08:00,2008-10-22 17:00,2008-10-06 08:00,2008-10-22 17:00,,,,,PT_Normal,,,,,Ewwqdrq/okaL9rKByJd+cg,,,,N,0,0
2430,84329,829,12553,912,1,0,N,N,N,CP_Drtn,TT_Task,DT_FixedDUR2,RV_OK,TK_NotStart,7212L66100,Cable trays & trunking,2296,40,0,64,0,1472,1472,64,0,0,0,,,,2008-11-06 08:00,2008-11-15 17:00,,2008-11-01 08:00,2008-11-09 17:00,2008-11-01 08:00,2008-11-09 17:00,2008-11-01 08:00,2008-11-09 17:00,,,,,PT_Normal,,,,,ac+rMmA1lEa+6FUTUoO8yQ,,,,N,0,0
2431,84330,829,12555,912,1,0,N,N,N,CP_Drtn,TT_Task,DT_FixedDUR2,RV_OK,TK_NotStart,7212L68050,Single core wiring,2296,176,152,72,0,1128,1128,72,0,0,0,,,,2008-11-03 08:00,2008-11-12 17:00,,2008-10-08 08:00,2008-10-18 17:00,2008-10-08 08:00,2008-10-18 17:00,2008-10-08 08:00,2008-10-18 17:00,,,,,PT_Normal,,,,,Cfgx9yKgwky4lVnsEoKVjw,,,,N,0,0
2432,84331,829,12347,912,1,0,N,N,N,CP_Drtn,TT_Task,DT_FixedDUR2,RV_OK,TK_NotStart,7212L68100,DB enclosure,2296,56,16,64,0,416,416,64,0,0,0,,,,2008-10-22 08:00,2008-10-30 17:00,,2008-10-14 08:00,2008-10-22 17:00,2008-10-14 08:00,2008-10-22 17:00,2008-10-14 08:00,2008-10-22 17:00,,,,,PT_Normal,,,,,K5n6a/dE3UGMXs/EuDjZPQ,,,,N,0,0
2433,84332,829,12347,912,1,0,N,N,N,CP_Drtn,TT_Task,DT_FixedDUR2,RV_OK,TK_NotStart,7212L68150,LV feeder cables,2296,112,72,72,0,2606.4,2606.4,72,0,0,0,,,,2008-11-26 08:00,2008-12-06 17:00,,2008-11-10 08:00,2008-11-19 17:00,2008-11-10 08:00,2008-11-19 17:00,2008-11-10 08:00,2008-11-19 17:00,,,,,PT_Normal,,,,,VyiQ+MPxhUaIcU3ODTWEUQ,,,,N,0,0
2434,84333,829,12348,912,1,0,N,N,N,CP_Drtn,TT_Task,DT_FixedDUR2,RV_OK,TK_NotStart,7212L68250,DB-breakers assembly,2296,152,128,72,0,564.8,564.8,72,0,0,0,,,,2009-01-06 08:00,2009-01-15 17:00,,2008-12-15 08:00,2008-12-24 17:00,2008-12-15 08:00,2008-12-24 17:00,2008-12-15 08:00,2008-12-24 17:00,,,,,PT_Normal,,,,,Y5zEXRGK9kOnuwDh/+vHOQ,,,,N,0,0
2435,84334,829,12348,912,1,0,N,N,N,CP_Drtn,TT_Task,DT_FixedDUR2,RV_OK,TK_NotStart,7212L68300,SMDB,2296,320,0,48,0,1315.2,1315.2,48,0,0,0,,,,2009-02-18 08:00,2009-02-24 17:00,,2009-01-03 08:00,2009-01-08 17:00,2009-01-03 08:00,2009-01-08 17:00,2009-01-03 08:00,2009-01-08 17:00,,,,,PT_Normal,,,,,/24WoCR5DkGPXoF8ztD9RA,,,,N,0,0
2436,84335,829,12348,912,1,0,N,N,N,CP_Drtn,TT_Task,DT_FixedDUR2,RV_OK,TK_NotStart,7212L68350,Light Fittings,2296,144,120,120,0,1105.6,1105.6,120,0,0,0,,,,2008-12-30 08:00,2009-01-15 17:00,,2008-12-09 08:00,2008-12-25 17:00,2008-12-09 08:00,2008-12-25 17:00,2008-12-09 08:00,2008-12-25 17:00,,,,,PT_Normal,,,,,XmQhIEnEskOu42ruad3+vQ,,,,N,0,0
2437,84336,829,12348,912,1,0,N,N,N,CP_Drtn,TT_Task,DT_FixedDUR2,RV_OK,TK_NotStart,7212L68400,Lighting Control Panels,2296,352,136,64,0,275.2,275.2,64,0,0,0,,,,2009-02-23 08:00,2009-03-03 17:00,,2009-01-03 08:00,2009-01-11 17:00,2009-01-03 08:00,2009-01-11 17:00,2009-01-03 08:00,2009-01-11 17:00,,,,,PT_Normal,,,,,cS8pOO7nsUm4mpPTNq4BPw,,,,N,0,0
2438,84337,829,12348,912,1,0,N,N,N,CP_Drtn,TT_Task,DT_FixedDUR2,RV_OK,TK_NotStart,7212L68600,Switches & sockets,2296,152,128,72,0,494.4,494.4,72,0,0,0,,,,2009-01-06 08:00,2009-01-15 17:00,,2008-12-15 08:00,2008-12-24 17:00,2008-12-15 08:00,2008-12-24 17:00,2008-12-15 08:00,2008-12-24 17:00,,,,,PT_Normal,,,,,+e4ppgRb1EmNDJ5RMMDXIQ,,,,N,0,0
2439,84338,829,12559,912,1,0,N,N,N,CP_Drtn,TT_Task,DT_FixedDUR2,RV_OK,TK_NotStart,7212L70050,Central Battery cables,2296,144,120,64,0,345.6,345.6,64,0,0,0,,,,2008-11-04 08:00,2008-11-12 17:00,,2008-10-14 08:00,2008-10-22 17:00,2008-10-14 08:00,2008-10-22 17:00,2008-10-14 08:00,2008-10-22 17:00,,,,,PT_Normal,,,,,c1j9eylloUS9Pl17qZXDwA,,,,N,0,0
2440,84339,829,12351,912,1,0,N,N,N,CP_Drtn,TT_Task,DT_FixedDUR2,RV_OK,TK_NotStart,7212L70150,Emergency & exit light fittings,2296,448,0,48,0,188.8,188.8,48,0,0,0,,,,2009-02-25 08:00,2009-03-03 17:00,,2008-12-22 08:00,2008-12-28 17:00,2008-12-22 08:00,2008-12-28 17:00,2008-12-22 08:00,2008-12-28 17:00,,,,,PT_Normal,,,,,QoWOzF6PRUOyT/clIE1p1g,,,,N,0,0
2441,84340,829,12562,912,1,0,N,N,N,CP_Drtn,TT_Task,DT_FixedDUR2,RV_OK,TK_NotStart,7212L72200,Intercom system cables,2296,64,40,48,0,576,576,48,0,0,0,,,,2008-11-18 08:00,2008-11-24 17:00,,2008-11-09 08:00,2008-11-15 17:00,2008-11-09 08:00,2008-11-15 17:00,2008-11-09 08:00,2008-11-15 17:00,,,,,PT_Normal,,,,,kJQu1aIjwEOPLKwznKYYZw,,,,N,0,0
2442,84341,829,12354,912,1,0,N,N,N,CP_Drtn,TT_Task,DT_FixedDUR2,RV_OK,TK_NotStart,7212L72250,Intercom system equipments,2296,136,112,64,0,486.4,486.4,64,0,0,0,,,,2009-01-07 08:00,2009-01-15 17:00,,2008-12-18 08:00,2008-12-27 17:00,2008-12-18 08:00,2008-12-27 17:00,2008-12-18 08:00,2008-12-27 17:00,,,,,PT_Normal,,,,,7R4F73hCKkSprFFW/TBR6A,,,,N,0,0
2443,84342,829,12565,912,1,0,N,N,N,CP_Drtn,TT_Task,DT_FixedDUR2,RV_OK,TK_NotStart,7212L74050,Fire alarm cables,2296,144,120,64,0,380.8,380.8,64,0,0,0,,,,2008-11-04 08:00,2008-11-12 17:00,,2008-10-14 08:00,2008-10-22 17:00,2008-10-14 08:00,2008-10-22 17:00,2008-10-14 08:00,2008-10-22 17:00,,,,,PT_Normal,,,,,e3YQk2fm0EGLiab+nkdD7Q,,,,N,0,0
2444,84343,829,12357,912,1,0,N,N,N,CP_Drtn,TT_Task,DT_FixedDUR2,RV_OK,TK_NotStart,7212L74100,Fire alarm fittings,2296,368,64,80,0,132.8,132.8,80,0,0,0,,,,2009-02-15 08:00,2009-02-25 17:00,,2008-12-23 08:00,2009-01-03 17:00,2008-12-23 08:00,2009-01-03 17:00,2008-12-23 08:00,2009-01-03 17:00,,,,,PT_Normal,,,,,K4Eott33Kky0X6Oim7xiXQ,,,,N,0,0
2445,84344,829,12568,912,1,0,N,N,N,CP_Drtn,TT_Task,DT_FixedDUR2,RV_OK,TK_NotStart,7212L76050,Structured cabling,2296,80,40,64,0,345.6,345.6,64,0,0,0,,,,2008-11-18 08:00,2008-11-26 17:00,,2008-11-06 08:00,2008-11-15 17:00,2008-11-06 08:00,2008-11-15 17:00,2008-11-06 08:00,2008-11-15 17:00,,,,,PT_Normal,,,,,NbrlnZIId0SqsesRSjBClg,,,,N,0,0
2446,84345,829,12360,912,1,0,N,N,N,CP_Drtn,TT_Task,DT_FixedDUR2,RV_OK,TK_NotStart,7212L76100,Consolidated pionts,2296,40,16,64,0,486.4,486.4,64,0,0,0,,,,2008-11-27 08:00,2008-12-06 17:00,,2008-11-22 08:00,2008-11-30 17:00,2008-11-22 08:00,2008-11-30 17:00,2008-11-22 08:00,2008-11-30 17:00,,,,,PT_Normal,,,,,23S1nGumzEWUaSy4fIukHA,,,,N,0,0
2447,84346,829,11557,912,1,100,N,N,N,CP_Drtn,TT_Task,DT_FixedDUR2,RV_OK,TK_Complete,7212U12050,Columns & walls 2U to Roof - Part 1,2306,24,0,0,3823,0,3823,24,114913.84,114913.84,0,,2008-08-26 08:00,2008-08-28 17:00,2008-10-06 08:00,2008-10-05 17:00,,2008-10-02 08:00,2008-10-01 17:00,,,2008-08-26 08:00,2008-08-28 17:00,,,,,PT_Normal,,,,,aoOZzJ67U0+3gA/maPju4g,,,,N,3823,114913.84
2448,84347,829,11557,912,1,100,N,N,N,CP_Drtn,TT_Task,DT_FixedDUR2,RV_OK,TK_Complete,7212U12051,Columns & walls 2U to Roof - Part 2,2306,24,0,0,3823,0,3823,24,114913.84,114913.84,0,,2008-09-03 08:00,2008-09-06 17:00,2008-10-06 08:00,2008-10-05 17:00,,2008-10-02 08:00,2008-10-01 17:00,,,2008-09-03 08:00,2008-09-06 17:00,,,,,PT_Normal,,,,,sLJym9mhUEiGjmJyVD3xww,,,,N,3823,114913.84
2449,84348,829,11557,912,1,100,N,N,N,CP_Drtn,TT_Task,DT_FixedDUR2,RV_OK,TK_Complete,7212U12052,Columns & walls 2U to Roof - Middle Part,2306,24,0,0,8166.64,0,8166.64,24,246301.52,246301.52,0,,2008-09-01 08:00,2008-09-03 17:00,2008-10-06 08:00,2008-10-05 17:00,,2008-10-02 08:00,2008-10-01 17:00,,,2008-09-01 08:00,2008-09-03 17:00,,,,,PT_Normal,,,,,E3d7rYw4lU++Z1wffomxsQ,,,,N,8166.64,246301.52
2450,84349,829,11557,912,1,100,N,N,N,CP_Drtn,TT_Task,DT_FixedDUR2,RV_OK,TK_Complete,7212U12200,Slab @ Roof level - Part 1,2306,24,0,0,4733.44,0,4733.44,56,173509.36,173509.36,0,,2008-09-03 08:00,2008-09-10 17:00,2008-10-06 08:00,2008-10-05 17:00,,2008-10-02 08:00,2008-10-01 17:00,,,2008-09-03 08:00,2008-09-10 17:00,,,,,PT_Normal,,,,,edJbcyMlqUO7XQKXry1/mg,,,,N,4733.44,173509.36
2451,84350,829,11557,912,1,100,N,N,N,CP_Drtn,TT_Task,DT_FixedDUR2,RV_OK,TK_Complete,7212U12201,Slab @ Roof level - Part 2,2306,24,0,0,4733.44,0,4733.44,56,173509.36,173509.36,0,,2008-09-11 08:00,2008-09-18 17:00,2008-10-06 08:00,2008-10-05 17:00,,2008-10-02 08:00,2008-10-01 17:00,,,2008-09-11 08:00,2008-09-18 17:00,,,,,PT_Normal,,,,,YtXnIfqP0E6IkLyN/QZ7sg,,,,N,4733.44,173509.36
2452,84351,829,11557,912,1,100,N,N,N,CP_Drtn,TT_Task,DT_FixedDUR2,RV_OK,TK_Complete,7212U12202,Slab @ Roof level - Middle Part,2306,24,0,0,6554.96,0,6554.96,56,241077.52,241077.52,0,,2008-09-09 08:00,2008-09-16 17:00,2008-10-06 08:00,2008-10-05 17:00,,2008-10-02 08:00,2008-10-01 17:00,,,2008-09-09 08:00,2008-09-16 17:00,,,,,PT_Normal,,,,,mI3jglEMZkuIMsgt1ZAd/A,,,,N,6554.96,241077.52
2453,84352,829,11557,912,1,100,N,N,N,CP_Drtn,TT_Task,DT_FixedDUR2,RV_OK,TK_Complete,7212U12250,Staircases 2U to Roof,2306,208,0,0,991.88,0,991.88,24,18457.6,18457.6,0,,2008-09-18 08:00,2008-09-21 17:00,2008-11-02 08:00,2008-11-01 17:00,,2008-10-02 08:00,2008-10-01 17:00,,,2008-09-18 08:00,2008-09-21 17:00,,,,,PT_Normal,,,,,kkWmHfin0EOwSPxd0Ll+iQ,,,,N,991.88,18457.6
2454,84353,829,11475,912,1,0,N,N,N,CP_Drtn,TT_Task,DT_FixedDUR2,RV_OK,TK_NotStart,7212U14050,Block works,2306,24,0,120,0,30085.5,30085.5,120,18440,0,18440,,,,2008-10-09 08:00,2008-10-26 17:00,,2008-10-06 08:00,2008-10-22 17:00,2008-10-06 08:00,2008-10-22 17:00,2008-10-06 08:00,2008-10-22 17:00,,,,,PT_Normal,,,,,XGHP5SMBw0mSlurSQw6grA,,,,N,0,0
2455,84354,829,11685,912,1,0,N,N,N,CP_Drtn,TT_Task,DT_FixedDUR2,RV_OK,TK_NotStart,7212U16050,Plaster works,2306,56,0,120,0,24375.8,24375.8,120,19024,0,19024,,,,2008-10-29 08:00,2008-11-15 17:00,,2008-10-21 08:00,2008-11-06 17:00,2008-10-21 08:00,2008-11-06 17:00,2008-10-21 08:00,2008-11-06 17:00,,,,,PT_Normal,,,,,jH04w0j6UUiDCO/4o5D1zA,,,,N,0,0
2456,84355,829,11685,912,1,0,N,N,N,CP_Drtn,TT_Task,DT_FixedDUR2,RV_OK,TK_NotStart,7212U16051,Plaste works behind tiles,2306,144,120,120,0,5424,5424,120,4160,0,4160,,,,2008-11-17 08:00,2008-12-03 17:00,,2008-10-27 08:00,2008-11-12 17:00,2008-10-27 08:00,2008-11-12 17:00,2008-10-27 08:00,2008-11-12 17:00,,,,,PT_Normal,,,,,MJwaYDDHM0WWmDOTENomHQ,,,,N,0,0
2457,84356,829,11477,912,1,0,N,N,N,CP_Drtn,TT_Task,DT_FixedDUR2,RV_OK,TK_NotStart,7212U18050,Rendering works,2306,80,24,120,0,5683,5683,120,5000,0,5000,,,,2008-10-26 08:00,2008-11-11 17:00,,2008-10-14 08:00,2008-10-30 17:00,2008-10-14 08:00,2008-10-30 17:00,2008-10-14 08:00,2008-10-30 17:00,,,,,PT_Normal,,,,,AZ1BoD5yc0Owlvd7+q/T/w,,,,N,0,0
2458,84357,829,11477,912,1,0,N,N,N,CP_Drtn,TT_Task,DT_FixedDUR2,RV_OK,TK_NotStart,7212U18100,Painting base coats,2306,56,0,120,0,26546.2,26546.2,120,24024,0,24024,,,,2008-11-06 08:00,2008-11-23 17:00,,2008-10-29 08:00,2008-11-15 17:00,2008-10-29 08:00,2008-11-15 17:00,2008-10-29 08:00,2008-11-15 17:00,,,,,PT_Normal,,,,,mh9k2DMwKkqnwSH7CGYiIw,,,,N,0,0
2459,84358,829,11477,912,1,0,N,N,N,CP_Drtn,TT_Task,DT_FixedDUR2,RV_OK,TK_NotStart,7212U18150,Painting 1st top coat for apartments,2306,96,0,72,0,17300.2,17300.2,72,16408,0,16408,,,,2009-01-07 08:00,2009-01-17 17:00,,2008-12-24 08:00,2009-01-03 17:00,2008-12-24 08:00,2009-01-03 17:00,2008-12-24 08:00,2009-01-03 17:00,,,,,PT_Normal,,,,,54L/C5eXj0qUntjQ1kcjCA,,,,N,0,0
2460,84359,829,11687,912,1,0,N,N,N,CP_Drtn,TT_Task,DT_FixedDUR2,RV_OK,TK_NotStart,7212U20050,Floor tiles for apartments-dry area,2306,120,0,120,0,9570,9570,120,7000,0,7000,,,,2008-11-25 08:00,2008-12-11 17:00,,2008-11-08 08:00,2008-11-24 17:00,2008-11-08 08:00,2008-11-24 17:00,2008-11-08 08:00,2008-11-24 17:00,,,,,PT_Normal,,,,,UMb3DURpXkqvcIKG08B8Sg,,,,N,0,0
2461,84360,829,11687,912,1,0,N,N,N,CP_Drtn,TT_Task,DT_FixedDUR2,RV_OK,TK_NotStart,7212U20070,Floor tiles for apartments-wet area,2306,24,0,120,0,3835.2,3835.2,120,2752,0,2752,,,,2008-12-14 08:00,2008-12-30 17:00,,2008-12-10 08:00,2008-12-27 17:00,2008-12-10 08:00,2008-12-27 17:00,2008-12-10 08:00,2008-12-27 17:00,,,,,PT_Normal,,,,,eCmbRUY000yryTUAdqUkjg,,,,N,0,0
2462,84361,829,11687,912,1,0,N,N,N,CP_Drtn,TT_Task,DT_FixedDUR2,RV_OK,TK_NotStart,7212U20110,Wall tiles for apartments-wet area,2306,80,0,120,0,9066,9066,120,5964,0,5964,,,,2008-12-22 08:00,2009-01-07 17:00,,2008-12-10 08:00,2008-12-27 17:00,2008-12-10 08:00,2008-12-27 17:00,2008-12-10 08:00,2008-12-27 17:00,,,,,PT_Normal,,,,,Yze1cs7ET0q1qQ65gJeCiw,,,,N,0,0
2463,84362,829,11688,912,1,0,N,N,N,CP_Drtn,TT_Task,DT_FixedDUR2,RV_OK,TK_NotStart,7212U22150,W/P for for apartments,2306,104,0,120,0,2980,2980,120,2600,0,2600,,,,2008-11-08 08:00,2008-11-24 17:00,,2008-10-23 08:00,2008-11-09 17:00,2008-10-23 08:00,2008-11-09 17:00,2008-10-23 08:00,2008-11-09 17:00,,,,,PT_Normal,,,,,uP5IxcNClEuHMbdNT4vTTg,,,,N,0,0
2464,84363,829,11480,912,1,0,N,N,N,CP_Drtn,TT_Task,DT_FixedDUR2,RV_OK,TK_NotStart,7212U24050,Aluminium doors & windows,2306,144,80,120,0,1208,1208,120,272,0,272,,,,2008-12-07 08:00,2008-12-23 17:00,,2008-11-16 08:00,2008-12-02 17:00,2008-11-16 08:00,2008-12-02 17:00,2008-11-16 08:00,2008-12-02 17:00,,,,,PT_Normal,,,,,CSxsEuT8BUCcKFq1Hkj66Q,,,,N,0,0
2465,84364,829,11480,912,1,0,N,N,N,CP_Drtn,TT_Task,DT_FixedDUR2,RV_OK,TK_NotStart,7212U24200,Balcony handrails,2306,64,40,120,0,2192,2192,120,1184,0,1184,,,,2008-12-30 08:00,2009-01-15 17:00,,2008-12-21 08:00,2009-01-06 17:00,2008-12-21 08:00,2009-01-06 17:00,2008-12-21 08:00,2009-01-06 17:00,,,,,PT_Normal,,,,,RAym3lJAL02wYT0TgRZ5eA,,,,N,0,0
2466,84365,829,11690,912,1,0,N,N,N,CP_Drtn,TT_Task,DT_FixedDUR2,RV_OK,TK_NotStart,7212U30050,Wooden doors,2306,56,0,176,0,1520,1520,176,384,0,384,,,,2008-12-18 08:00,2009-01-12 17:00,,2008-12-10 08:00,2009-01-04 17:00,2008-12-10 08:00,2009-01-04 17:00,2008-12-10 08:00,2009-01-04 17:00,,,,,PT_Normal,,,,,q41YNUbe8kCYmWMwJMEi7g,,,,N,0,0
2467,84366,829,11691,912,1,0,N,N,N,CP_Drtn,TT_Task,DT_FixedDUR2,RV_OK,TK_NotStart,7212U32100,Vanity counters,2306,24,0,120,0,2232,2232,120,192,0,192,,,,2008-12-31 08:00,2009-01-17 17:00,,2008-12-28 08:00,2009-01-13 17:00,2008-12-28 08:00,2009-01-13 17:00,2008-12-28 08:00,2009-01-13 17:00,,,,,PT_Normal,,,,,NxjFbVL710G/nOPqYmoQKg,,,,N,0,0
2468,84367,829,11691,912,1,0,N,N,N,CP_Drtn,TT_Task,DT_FixedDUR2,RV_OK,TK_NotStart,7212U32150,Wardrobes,2306,120,96,120,0,6168,6168,120,288,0,288,,,,2008-12-30 08:00,2009-01-15 17:00,,2008-12-13 08:00,2008-12-29 17:00,2008-12-13 08:00,2008-12-29 17:00,2008-12-13 08:00,2008-12-29 17:00,,,,,PT_Normal,,,,,DQUyr+9qw0W68N+Haf30Cg,,,,N,0,0
2469,84368,829,11483,912,1,0,N,N,N,CP_Drtn,TT_Task,DT_FixedDUR2,RV_OK,TK_NotStart,7212U34050,False ceiling works for apartments-dry area,2306,96,0,128,0,1493.12,1493.12,128,910.08,0,910.08,,,,2008-12-15 08:00,2009-01-01 17:00,,2008-12-01 08:00,2008-12-18 17:00,2008-12-01 08:00,2008-12-18 17:00,2008-12-01 08:00,2008-12-18 17:00,,,,,PT_Normal,,,,,Wx20pQedPUiWwEdEgHu4dQ,,,,N,0,0
2470,84369,829,11483,912,1,0,N,N,N,CP_Drtn,TT_Task,DT_FixedDUR2,RV_OK,TK_NotStart,7212U34070,False ceiling works for apartments-wet area,2306,24,0,128,0,658.88,658.88,128,353.92,0,353.92,,,,2008-12-04 08:00,2008-12-22 17:00,,2008-12-01 08:00,2008-12-18 17:00,2008-12-01 08:00,2008-12-18 17:00,2008-12-01 08:00,2008-12-18 17:00,,,,,PT_Normal,,,,,45vMnGZdyECxWk4wRVeXzQ,,,,N,0,0
2471,84370,829,11861,912,1,0,N,N,N,CP_Drtn,TT_Task,DT_FixedDUR2,RV_OK,TK_NotStart,7212U36050,Stone finishing top,2306,80,56,64,0,344,344,64,160,0,160,,,,2009-01-07 08:00,2009-01-15 17:00,,2008-12-27 08:00,2009-01-04 17:00,2008-12-27 08:00,2009-01-04 17:00,2008-12-27 08:00,2009-01-04 17:00,,,,,PT_Normal,,,,,fSYduXnNkkKh5RWtgqafhA,,,,N,0,0
2472,84371,829,11861,912,1,0,N,N,N,CP_Drtn,TT_Task,DT_FixedDUR2,RV_OK,TK_NotStart,7212U36100,Thresholds,2306,56,32,64,0,520,520,64,304,0,304,,,,2009-01-07 08:00,2009-01-15 17:00,,2008-12-30 08:00,2009-01-07 17:00,2008-12-30 08:00,2009-01-07 17:00,2008-12-30 08:00,2009-01-07 17:00,,,,,PT_Normal,,,,,j6uqU57f40q5+l+PsywYoA,,,,N,0,0
2473,84372,829,11485,912,1,0,N,N,N,CP_Drtn,TT_Task,DT_FixedDUR2,RV_OK,TK_NotStart,7212U44050,Sub-frames,2306,56,0,120,0,888,888,120,384,0,384,,,,2008-10-23 08:00,2008-11-09 17:00,,2008-10-15 08:00,2008-11-01 17:00,2008-10-15 08:00,2008-11-01 17:00,2008-10-15 08:00,2008-11-01 17:00,,,,,PT_Normal,,,,,TEwsejUXUUePI2ersbPX+A,,,,N,0,0
2474,84373,829,12572,912,1,100,N,N,N,CP_Drtn,TT_Task,DT_FixedDUR2,RV_OK,TK_Complete,7212U50100,MEP skeleton embedded provisions,2296,24,0,0,512,0,512,72,,,0,,2008-08-26 08:00,2008-09-04 17:00,2008-10-06 08:00,2008-10-05 17:00,,2008-10-02 08:00,2008-10-01 17:00,,,2008-08-26 08:00,2008-09-04 17:00,,,,,PT_Normal,,,,,jKmKbJZP1E21E1yfFZaQ2w,,,,N,512,0
2475,84374,829,12574,912,1,0,N,N,N,CP_Drtn,TT_Task,DT_FixedDUR2,RV_OK,TK_NotStart,7212U52050,A/C duct works,2296,136,112,160,0,831,831,160,0,0,0,,,,2008-11-03 08:00,2008-11-25 17:00,,2008-10-14 08:00,2008-11-05 17:00,2008-10-14 08:00,2008-11-05 17:00,2008-10-14 08:00,2008-11-05 17:00,,,,,PT_Normal,,,,,+dXnv7zpk02Wn3tTIy03Nw,,,,N,0,0
2476,84375,829,12574,912,1,0,N,N,N,CP_Drtn,TT_Task,DT_FixedDUR2,RV_OK,TK_NotStart,7212U52100,Chilled water pipe works,2296,88,64,72,0,787,787,72,0,0,0,,,,2008-11-06 08:00,2008-11-16 17:00,,2008-10-25 08:00,2008-11-03 17:00,2008-10-25 08:00,2008-11-03 17:00,2008-10-25 08:00,2008-11-03 17:00,,,,,PT_Normal,,,,,Vsg5TOzasE62p8must9X5w,,,,N,0,0
2477,84376,829,12366,912,1,0,N,N,N,CP_Drtn,TT_Task,DT_FixedDUR2,RV_OK,TK_NotStart,7212U52150,FCU's hanging,2296,144,120,64,0,935.2,935.2,64,0,0,0,,,,2008-11-13 08:00,2008-11-22 17:00,,2008-10-23 08:00,2008-11-01 17:00,2008-10-23 08:00,2008-11-01 17:00,2008-10-23 08:00,2008-11-01 17:00,,,,,PT_Normal,,,,,11prj9J/CEqfsfTjLw/Xrg,,,,N,0,0
2478,84377,829,12366,912,1,0,N,N,N,CP_Drtn,TT_Task,DT_FixedDUR2,RV_OK,TK_NotStart,7212U52300,FCU's assembly & duct connections,2296,24,0,80,0,951.2,951.2,80,0,0,0,,,,2008-11-23 08:00,2008-12-03 17:00,,2008-11-19 08:00,2008-11-30 17:00,2008-11-19 08:00,2008-11-30 17:00,2008-11-19 08:00,2008-11-30 17:00,,,,,PT_Normal,,,,,WAlMO3EuHEam6MtW6UGNgw,,,,N,0,0
2479,84378,829,12366,912,1,0,N,N,N,CP_Drtn,TT_Task,DT_FixedDUR2,RV_OK,TK_NotStart,7212U52350,Grills & diffusers,2296,128,104,64,0,856,856,64,0,0,0,,,,2009-01-07 08:00,2009-01-15 17:00,,2008-12-20 08:00,2008-12-28 17:00,2008-12-20 08:00,2008-12-28 17:00,2008-12-20 08:00,2008-12-28 17:00,,,,,PT_Normal,,,,,E9MuttKr7ku06dsbQzgh1g,,,,N,0,0
2480,84379,829,12574,912,1,0,N,N,N,CP_Drtn,TT_Task,DT_FixedDUR2,RV_OK,TK_NotStart,7212U52550,A/C duct risers,2296,24,0,64,0,1626,1626,64,0,0,0,,,,2008-11-08 08:00,2008-11-16 17:00,,2008-11-04 08:00,2008-11-12 17:00,2008-11-04 08:00,2008-11-12 17:00,2008-11-04 08:00,2008-11-12 17:00,,,,,PT_Normal,,,,,g8WjZhwo6EGwGECjcHAXSw,,,,N,0,0
2481,84380,829,12368,912,1,0,N,N,N,CP_Drtn,TT_Task,DT_FixedDUR2,RV_OK,TK_NotStart,7212U54050,Chasing & Pex pipe works,2296,152,0,120,0,395,395,120,0,0,0,,,,2008-11-05 08:00,2008-11-22 17:00,,2008-10-14 08:00,2008-10-30 17:00,2008-10-14 08:00,2008-10-30 17:00,2008-10-14 08:00,2008-10-30 17:00,,,,,PT_Normal,,,,,emiGcjuNp0aI/867d52duA,,,,N,0,0
2482,84381,829,12369,912,1,0,N,N,N,CP_Drtn,TT_Task,DT_FixedDUR2,RV_OK,TK_NotStart,7212U54250,Bathtubs,2296,232,0,80,0,273.6,273.6,80,0,0,0,,,,2008-12-02 08:00,2008-12-13 17:00,,2008-10-29 08:00,2008-11-09 17:00,2008-10-29 08:00,2008-11-09 17:00,2008-10-29 08:00,2008-11-09 17:00,,,,,PT_Normal,,,,,ZiMS6CryU0WT2p78kaqcCQ,,,,N,0,0
2483,84382,829,12369,912,1,0,N,N,N,CP_Drtn,TT_Task,DT_FixedDUR2,RV_OK,TK_NotStart,7212U54300,Water heater,2296,128,0,64,0,310.4,310.4,64,0,0,0,,,,2008-11-19 08:00,2008-11-27 17:00,,2008-11-01 08:00,2008-11-09 17:00,2008-11-01 08:00,2008-11-09 17:00,2008-11-01 08:00,2008-11-09 17:00,,,,,PT_Normal,,,,,nC3EX9Crz0S71OBgqNInoQ,,,,N,0,0
2484,84383,829,12369,912,1,0,N,N,N,CP_Drtn,TT_Task,DT_FixedDUR2,RV_OK,TK_NotStart,7212U54350,Over head pipe assembly & vlave connections,2296,160,136,72,0,237,237,72,0,0,0,,,,2008-11-24 08:00,2008-12-03 17:00,,2008-11-01 08:00,2008-11-10 17:00,2008-11-01 08:00,2008-11-10 17:00,2008-11-01 08:00,2008-11-10 17:00,,,,,PT_Normal,,,,,ArA0vZDwHkGl6VSJw5PR9w,,,,N,0,0
2485,84384,829,12370,912,1,0,N,N,N,CP_Drtn,TT_Task,DT_FixedDUR2,RV_OK,TK_NotStart,7212U54400,Sanitary fixures,2296,80,0,80,0,476,476,80,0,0,0,,,,2009-01-05 08:00,2009-01-15 17:00,,2008-12-24 08:00,2009-01-04 17:00,2008-12-24 08:00,2009-01-04 17:00,2008-12-24 08:00,2009-01-04 17:00,,,,,PT_Normal,,,,,smdb++7K9UCtDB6BoTERZQ,,,,N,0,0
2486,84385,829,12370,912,1,0,N,N,N,CP_Drtn,TT_Task,DT_FixedDUR2,RV_OK,TK_NotStart,7212U54450,Mirrors,2296,24,0,72,0,138,138,72,0,0,0,,,,2009-01-06 08:00,2009-01-15 17:00,,2009-01-03 08:00,2009-01-12 17:00,2009-01-03 08:00,2009-01-12 17:00,2009-01-03 08:00,2009-01-12 17:00,,,,,PT_Normal,,,,,A+fn3JHOSUSDLdEWcF6qRQ,,,,N,0,0
2487,84386,829,12369,912,1,0,N,N,N,CP_Drtn,TT_Task,DT_FixedDUR2,RV_OK,TK_NotStart,7212U54500,Concealed Flushing Cistern,2296,232,208,80,0,212,212,80,0,0,0,,,,2008-12-02 08:00,2008-12-13 17:00,,2008-10-29 08:00,2008-11-09 17:00,2008-10-29 08:00,2008-11-09 17:00,2008-10-29 08:00,2008-11-09 17:00,,,,,PT_Normal,,,,,lzMsiuP7Z0CfE2a4EBJkgQ,,,,N,0,0
2488,84387,829,12372,912,1,0,N,N,N,CP_Drtn,TT_Task,DT_FixedDUR2,RV_OK,TK_NotStart,7212U56050,Chasing and installation of drainage pipes,2296,152,0,80,0,245,245,80,0,0,0,,,,2008-11-05 08:00,2008-11-16 17:00,,2008-10-14 08:00,2008-10-25 17:00,2008-10-14 08:00,2008-10-25 17:00,2008-10-14 08:00,2008-10-25 17:00,,,,,PT_Normal,,,,,XdDohVG5RU+m4TtakEGO4w,,,,N,0,0
2489,84388,829,12372,912,1,0,N,N,N,CP_Drtn,TT_Task,DT_FixedDUR2,RV_OK,TK_NotStart,7212U56100,Drainage riser pipes,2296,208,72,64,0,284,284,64,0,0,0,,,,2008-11-13 08:00,2008-11-22 17:00,,2008-10-14 08:00,2008-10-22 17:00,2008-10-14 08:00,2008-10-22 17:00,2008-10-14 08:00,2008-10-22 17:00,,,,,PT_Normal,,,,,5Rv6mMXpa0GfUTPUxPA/VA,,,,N,0,0
2490,84389,829,12373,912,1,0,N,N,N,CP_Drtn,TT_Task,DT_FixedDUR2,RV_OK,TK_NotStart,7212U56150,Over head drainage pipe works,2296,40,16,64,0,257.6,257.6,64,0,0,0,,,,2008-11-25 08:00,2008-12-03 17:00,,2008-11-19 08:00,2008-11-27 17:00,2008-11-19 08:00,2008-11-27 17:00,2008-11-19 08:00,2008-11-27 17:00,,,,,PT_Normal,,,,,M7JbdnRsbUO6K8gpN1Y8ow,,,,N,0,0
2491,84390,829,12375,912,1,0,N,N,N,CP_Drtn,TT_Task,DT_FixedDUR2,RV_OK,TK_NotStart,7212U58050,Fire fighting pipe works,2296,160,136,72,0,292,292,72,0,0,0,,,,2008-11-16 08:00,2008-11-25 17:00,,2008-10-23 08:00,2008-11-02 17:00,2008-10-23 08:00,2008-11-02 17:00,2008-10-23 08:00,2008-11-02 17:00,,,,,PT_Normal,,,,,FiVRq2BeYESffEsd2O2heQ,,,,N,0,0
2492,84391,829,12376,912,1,0,N,N,N,CP_Drtn,TT_Task,DT_FixedDUR2,RV_OK,TK_NotStart,7212U58250,Sprinkler heads,2296,128,104,64,0,394,394,64,0,0,0,,,,2009-01-07 08:00,2009-01-15 17:00,,2008-12-20 08:00,2008-12-28 17:00,2008-12-20 08:00,2008-12-28 17:00,2008-12-20 08:00,2008-12-28 17:00,,,,,PT_Normal,,,,,4t2rapMfK0OxJMfLQS+bhg,,,,N,0,0
2493,84392,829,11750,912,1,0,N,N,N,CP_Drtn,TT_Task,DT_FixedDUR2,RV_OK,TK_NotStart,7212U66050,Chasing and installation of conduits,2296,56,0,120,0,1528,1528,120,0,0,0,,,,2008-10-23 08:00,2008-11-09 17:00,,2008-10-15 08:00,2008-11-01 17:00,2008-10-15 08:00,2008-11-01 17:00,2008-10-15 08:00,2008-11-01 17:00,,,,,PT_Normal,,,,,/9nK4yU6KE2JZpzh2TTCBg,,,,N,0,0
2494,84393,829,12588,912,1,0,N,N,N,CP_Drtn,TT_Task,DT_FixedDUR2,RV_OK,TK_NotStart,7212U68050,Single core wiring,2296,176,152,72,0,1128,1128,72,0,0,0,,,,2008-11-12 08:00,2008-11-22 17:00,,2008-10-18 08:00,2008-10-27 17:00,2008-10-18 08:00,2008-10-27 17:00,2008-10-18 08:00,2008-10-27 17:00,,,,,PT_Normal,,,,,IFI76rSwIEGJ0pCNgLuk3w,,,,N,0,0
2495,84394,829,12380,912,1,0,N,N,N,CP_Drtn,TT_Task,DT_FixedDUR2,RV_OK,TK_NotStart,7212U68350,Light Fittings,2296,128,104,120,0,1035.2,1035.2,120,0,0,0,,,,2008-12-30 08:00,2009-01-15 17:00,,2008-12-11 08:00,2008-12-28 17:00,2008-12-11 08:00,2008-12-28 17:00,2008-12-11 08:00,2008-12-28 17:00,,,,,PT_Normal,,,,,t1XOzGlzjk6TPCTBipRbXw,,,,N,0,0
2496,84395,829,12380,912,1,0,N,N,N,CP_Drtn,TT_Task,DT_FixedDUR2,RV_OK,TK_NotStart,7212U68600,Switches & sockets,2296,96,72,64,0,486.4,486.4,64,0,0,0,,,,2009-01-07 08:00,2009-01-15 17:00,,2008-12-24 08:00,2009-01-01 17:00,2008-12-24 08:00,2009-01-01 17:00,2008-12-24 08:00,2009-01-01 17:00,,,,,PT_Normal,,,,,Z73kH4LuSUGPT9HeOf3yqw,,,,N,0,0
2497,84396,829,12591,912,1,0,N,N,N,CP_Drtn,TT_Task,DT_FixedDUR2,RV_OK,TK_NotStart,7212U74050,Fire alarm cables,2296,144,120,64,0,380.8,380.8,64,0,0,0,,,,2008-11-13 08:00,2008-11-22 17:00,,2008-10-23 08:00,2008-11-01 17:00,2008-10-23 08:00,2008-11-01 17:00,2008-10-23 08:00,2008-11-01 17:00,,,,,PT_Normal,,,,,ybXFhE39iUeeWbO2Q0zS1A,,,,N,0,0
2498,84397,829,12383,912,1,0,N,N,N,CP_Drtn,TT_Task,DT_FixedDUR2,RV_OK,TK_NotStart,7212U74100,Fire alarm fittings,2296,152,128,64,0,116.8,116.8,64,0,0,0,,,,2009-01-07 08:00,2009-01-15 17:00,,2008-12-16 08:00,2008-12-24 17:00,2008-12-16 08:00,2008-12-24 17:00,2008-12-16 08:00,2008-12-24 17:00,,,,,PT_Normal,,,,,kWuWdHST6UegFj3WFfK4/A,,,,N,0,0
2499,84398,829,12594,912,1,0,N,N,N,CP_Drtn,TT_Task,DT_FixedDUR2,RV_OK,TK_NotStart,7212U76050,Structured cabling,2296,40,0,64,0,345.6,345.6,64,0,0,0,,,,2008-11-18 08:00,2008-11-26 17:00,,2008-11-12 08:00,2008-11-20 17:00,2008-11-12 08:00,2008-11-20 17:00,2008-11-12 08:00,2008-11-20 17:00,,,,,PT_Normal,,,,,Na9s/8powUeGmg5pEe0h1Q,,,,N,0,0
2500,84399,829,10694,912,1,0,N,N,N,CP_Drtn,TT_Task,DT_FixedDUR2,RV_OK,TK_NotStart,7219946000,Testing & commissioning of Elevators,2296,488,184,120,0,320,320,120,0,0,0,,,,2009-03-08 08:00,2009-03-24 17:00,,2008-12-27 08:00,2009-01-12 17:00,2008-12-27 08:00,2009-01-12 17:00,2008-12-27 08:00,2009-01-12 17:00,,,,,PT_Normal,,,,,aJHbRdLVJkCH8LYpv6qGxw,,,,N,0,0
2501,84400,829,10694,912,1,0,N,N,N,CP_Drtn,TT_Task,DT_FixedDUR2,RV_OK,TK_NotStart,7219952000,Testing & commissioning of A/C system,2296,304,0,200,0,1400,1400,200,0,0,0,,,,2009-02-26 08:00,2009-03-26 17:00,,2009-01-13 08:00,2009-02-10 17:00,2009-01-13 08:00,2009-02-10 17:00,2009-01-13 08:00,2009-02-10 17:00,,,,,PT_Normal,,,,,4wcXFh37w0qFqFhydYWDBQ,,,,N,0,0
2502,84401,829,10694,912,1,0,N,N,N,CP_Drtn,TT_Task,DT_FixedDUR2,RV_OK,TK_NotStart,7219954000,Testing & commissioning of water supply system,2296,336,32,200,0,700,700,200,0,0,0,,,,2009-03-01 08:00,2009-03-29 17:00,,2009-01-11 08:00,2009-02-08 17:00,2009-01-11 08:00,2009-02-08 17:00,2009-01-11 08:00,2009-02-08 17:00,,,,,PT_Normal,,,,,9vxURhbXa0uAfHjrzcXX4w,,,,N,0,0
2503,84402,829,10694,912,1,0,N,N,N,CP_Drtn,TT_Task,DT_FixedDUR2,RV_OK,TK_NotStart,7219956000,Testing & commissioning of drainage system,2296,336,32,200,0,1000,1000,200,0,0,0,,,,2009-03-01 08:00,2009-03-29 17:00,,2009-01-11 08:00,2009-02-08 17:00,2009-01-11 08:00,2009-02-08 17:00,2009-01-11 08:00,2009-02-08 17:00,,,,,PT_Normal,,,,,wrvHx0lAc0KcR5eXInVsBQ,,,,N,0,0
2504,84403,829,10694,912,1,0,N,N,N,CP_Drtn,TT_Task,DT_FixedDUR2,RV_OK,TK_NotStart,7219958000,Testing & commissioning of Fire Fighting system,2296,304,0,200,0,300,300,200,0,0,0,,,,2009-02-26 08:00,2009-03-26 17:00,,2009-01-13 08:00,2009-02-10 17:00,2009-01-13 08:00,2009-02-10 17:00,2009-01-13 08:00,2009-02-10 17:00,,,,,PT_Normal,,,,,gWcIU6PODE+SYlKv1ffyXg,,,,N,0,0
2505,84404,829,10694,912,1,0,N,N,N,CP_Drtn,TT_Task,DT_FixedDUR2,RV_OK,TK_NotStart,7219960000,Testing & commissioning of LPG system,2296,480,480,120,0,420,420,120,0,0,0,,,,2009-03-15 08:00,2009-03-31 17:00,,2009-01-04 08:00,2009-01-20 17:00,2009-01-04 08:00,2009-01-20 17:00,2009-01-04 08:00,2009-01-20 17:00,,,,,PT_Normal,,,,,4PXZIbOv8UiEHHXwvhqxig,,,,N,0,0
2506,84405,829,10694,912,1,0,N,N,N,CP_Drtn,TT_Task,DT_FixedDUR2,RV_OK,TK_NotStart,7219962000,Testing & commissioning of BMS system,2296,304,304,48,0,248,248,48,0,0,0,,,,2009-03-25 08:00,2009-03-31 17:00,,2009-02-09 08:00,2009-02-15 17:00,2009-02-09 08:00,2009-02-15 17:00,2009-02-09 08:00,2009-02-15 17:00,,,,,PT_Normal,,,,,UR6yKfoNcEix/tmGtQ4KDQ,,,,N,0,0
2507,84406,829,10694,912,0,0,N,N,N,CP_Drtn,TT_Mile,DT_FixedDUR2,RV_OK,TK_NotStart,7219968000,Power ready for testing & commissioning,2296,424,0,0,0,0,0,0,0,0,0,,,,2009-02-26 08:00,2009-02-25 17:00,,2008-12-27 08:00,2008-12-25 17:00,2008-12-27 08:00,2008-12-27 08:00,2008-12-27 08:00,2008-12-27 08:00,,,,,PT_Normal,,,,,xoDFItgC60S818I3BYtSCg,,,,N,0,0
2508,84407,829,10694,912,1,0,N,N,N,CP_Drtn,TT_Task,DT_FixedDUR2,RV_OK,TK_NotStart,7219968002,Testing & commissioning of Power & Lighting,2296,288,288,120,0,820,820,120,0,0,0,,,,2009-03-15 08:00,2009-03-31 17:00,,2009-02-01 08:00,2009-02-17 17:00,2009-02-01 08:00,2009-02-17 17:00,2009-02-01 08:00,2009-02-17 17:00,,,,,PT_Normal,,,,,Js6y2/h7skuman4gkkBwbw,,,,N,0,0
2509,84408,829,10694,912,1,0,N,N,N,CP_Drtn,TT_Task,DT_FixedDUR2,RV_OK,TK_NotStart,7219970000,Testing & commissioning of Central Battery syst.,2296,504,200,120,0,420,420,120,0,0,0,,,,2009-03-12 08:00,2009-03-29 17:00,,2008-12-29 08:00,2009-01-14 17:00,2008-12-29 08:00,2009-01-14 17:00,2008-12-29 08:00,2009-01-14 17:00,,,,,PT_Normal,,,,,tTyUbDD05kOnoWFcl24+6A,,,,N,0,0
2510,84409,829,10694,912,1,0,N,N,N,CP_Drtn,TT_Task,DT_FixedDUR2,RV_OK,TK_NotStart,7219972000,Testing & commissioning of security systems,2296,536,536,120,0,320,320,120,0,0,0,,,,2009-03-15 08:00,2009-03-31 17:00,,2008-12-27 08:00,2009-01-12 17:00,2008-12-27 08:00,2009-01-12 17:00,2008-12-27 08:00,2009-01-12 17:00,,,,,PT_Normal,,,,,8ELaorVJ3EuoW3u4KW2MiQ,,,,N,0,0
2511,84410,829,10694,912,1,0,N,N,N,CP_Drtn,TT_Task,DT_FixedDUR2,RV_OK,TK_NotStart,7219974000,Testing & commissioning of Fire Alarm system,2296,304,0,200,0,600,600,200,0,0,0,,,,2009-02-26 08:00,2009-03-26 17:00,,2009-01-13 08:00,2009-02-10 17:00,2009-01-13 08:00,2009-02-10 17:00,2009-01-13 08:00,2009-02-10 17:00,,,,,PT_Normal,,,,,E/5v9hCBF0yRjJFQttH0XQ,,,,N,0,0
2512,84411,829,10694,912,1,0,N,N,N,CP_Drtn,TT_Task,DT_FixedDUR2,RV_OK,TK_NotStart,7219976000,Testing & commissioning of Tel & Data system,2296,416,416,120,0,320,320,120,0,0,0,,,,2009-03-15 08:00,2009-03-31 17:00,,2009-01-13 08:00,2009-01-29 17:00,2009-01-13 08:00,2009-01-29 17:00,2009-01-13 08:00,2009-01-29 17:00,,,,,PT_Normal,,,,,7V7QJAV8HEajBSevwlBuYQ,,,,N,0,0
2513,84412,829,11710,912,1,0,N,N,N,CP_Drtn,TT_Task,DT_FixedDUR2,RV_OK,TK_NotStart,721EV16100,External plaster works,2306,288,0,160,0,101092,101092,160,77640,0,77640,,,,2008-11-23 08:00,2008-12-15 17:00,,2008-10-12 08:00,2008-11-03 17:00,2008-10-12 08:00,2008-11-03 17:00,2008-10-12 08:00,2008-11-03 17:00,,,,,PT_Normal,,,,,k7XLUpMmSUul1bpnohqMuQ,,,,N,0,0
2514,84413,829,11920,912,1,0,N,N,N,CP_Drtn,TT_Task,DT_FixedDUR2,RV_OK,TK_NotStart,721EV18100,Painting base coats,2306,288,0,160,0,85564,85564,160,77640,0,77640,,,,2008-12-16 08:00,2009-01-07 17:00,,2008-11-04 08:00,2008-11-26 17:00,2008-11-04 08:00,2008-11-26 17:00,2008-11-04 08:00,2008-11-26 17:00,,,,,PT_Normal,,,,,xxXRN+poPUixTcbtWNxFHw,,,,N,0,0
2515,84414,829,11920,912,1,0,N,N,N,CP_Drtn,TT_Task,DT_FixedDUR2,RV_OK,TK_NotStart,721EV18150,Painting 1st top coat,2306,288,0,160,0,81682,81682,160,77640,0,77640,,,,2009-01-20 08:00,2009-02-11 17:00,,2008-12-09 08:00,2008-12-31 17:00,2008-12-09 08:00,2008-12-31 17:00,2008-12-09 08:00,2008-12-31 17:00,,,,,PT_Normal,,,,,wBskQjyr9U+7yKHuVn+qKA,,,,N,0,0
2516,84415,829,11920,912,1,0,N,N,N,CP_Drtn,TT_Task,DT_FixedDUR2,RV_OK,TK_NotStart,721EV18200,Painting final top coat,2306,288,0,160,0,81682,81682,160,77640,0,77640,,,,2009-02-24 08:00,2009-03-18 17:00,,2009-01-13 08:00,2009-02-04 17:00,2009-01-13 08:00,2009-02-04 17:00,2009-01-13 08:00,2009-02-04 17:00,,,,,PT_Normal,,,,,jtR9Rx0BNki3iJNWPKFctg,,,,N,0,0
2517,84416,829,11712,912,1,0,N,N,N,CP_Drtn,TT_Task,DT_FixedDUR2,RV_OK,TK_NotStart,721EV28200,Pergola & canopy structures,2306,288,0,160,0,4112,4112,160,152,0,152,,,,2009-02-01 08:00,2009-02-23 17:00,,2008-12-21 08:00,2009-01-12 17:00,2008-12-21 08:00,2009-01-12 17:00,2008-12-21 08:00,2009-01-12 17:00,,,,,PT_Normal,,,,,tBhpEU3QAUOQtxyhowdojw,,,,N,0,0
2518,84417,829,11712,912,1,0,N,N,N,CP_Drtn,TT_Task,DT_FixedDUR2,RV_OK,TK_NotStart,721EV28250,Brackets for pergola & canopy structures,2306,288,0,160,0,2592,2592,160,152,0,152,,,,2009-01-08 08:00,2009-01-31 17:00,,2008-11-27 08:00,2008-12-20 17:00,2008-11-27 08:00,2008-12-20 17:00,2008-11-27 08:00,2008-12-20 17:00,,,,,PT_Normal,,,,,v4LZw+mUWUaM4MJ/XinlYQ,,,,N,0,0
2519,84418,829,12605,912,1,0,N,N,N,CP_Drtn,TT_Task,DT_FixedDUR2,RV_OK,TK_NotStart,721EV68350,Aviation Light Fittings,2296,288,0,72,0,402,402,72,0,0,0,,,,2009-03-04 08:00,2009-03-14 17:00,,2009-01-21 08:00,2009-01-31 17:00,2009-01-21 08:00,2009-01-31 17:00,2009-01-21 08:00,2009-01-31 17:00,,,,,PT_Normal,,,,,F7m+WOeNp0KhrFQTZ96c/g,,,,N,0,0
2520,84419,829,10665,912,1,0,N,N,N,CP_Drtn,TT_Task,DT_FixedDUR2,RV_OK,TK_NotStart,721GL00000,Pre-Snagging & Disnagging for lofts,2296,24,0,120,0,420,420,120,0,0,0,,,,2009-02-03 08:00,2009-02-19 17:00,,2009-01-31 08:00,2009-02-16 17:00,2009-01-31 08:00,2009-02-16 17:00,2009-01-31 08:00,2009-02-16 17:00,,,,,PT_Normal,,,,,nR1oWL7KSUuIFoj1jwZNLw,,,,N,0,0
2521,84420,829,10665,912,1,0,N,N,N,CP_Drtn,TT_Task,DT_FixedDUR2,RV_OK,TK_NotStart,721GL00002,Pre-Snagging & Disnagging for corrid & Srv rooms,2296,184,0,64,0,214,214,64,0,0,0,,,,2009-03-18 08:00,2009-03-26 17:00,,2009-02-19 08:00,2009-02-28 17:00,2009-02-19 08:00,2009-02-28 17:00,2009-02-19 08:00,2009-02-28 17:00,,,,,PT_Normal,,,,,pjoW53yLH0KH8OeW2crAnQ,,,,N,0,0
2522,84421,829,11547,912,1,100,N,N,N,CP_Drtn,TT_Task,DT_FixedDUR2,RV_OK,TK_Complete,721GL12050,Columns & walls GL to GU - Part 1,2306,24,0,0,5264.24,0,5264.24,48,157672.56,157672.56,0,,2008-06-03 08:00,2008-06-09 17:00,2008-10-06 08:00,2008-10-05 17:00,,2008-10-02 08:00,2008-10-01 17:00,,,2008-06-03 08:00,2008-06-09 17:00,,,,,PT_Normal,,,,,Z/l2MVxnDkuTVfWbunrvrQ,,,,N,5264.24,157672.56
2523,84422,829,11547,912,1,100,N,N,N,CP_Drtn,TT_Task,DT_FixedDUR2,RV_OK,TK_Complete,721GL12051,Columns & walls GL to GU - Part 2,2306,24,0,0,5264.24,0,5264.24,48,157672.56,157672.56,0,,2008-06-10 08:00,2008-06-16 17:00,2008-10-06 08:00,2008-10-05 17:00,,2008-10-02 08:00,2008-10-01 17:00,,,2008-06-10 08:00,2008-06-16 17:00,,,,,PT_Normal,,,,,XnHh2aekZEGh3tpfXNzjxg,,,,N,5264.24,157672.56
2524,84423,829,11547,912,1,100,N,N,N,CP_Drtn,TT_Task,DT_FixedDUR2,RV_OK,TK_Complete,721GL12052,Columns & walls GL to GU - Middle Part,2306,24,0,0,8034.91,0,8034.91,48,241424.4,241424.4,0,,2008-06-09 08:00,2008-06-15 17:00,2008-10-06 08:00,2008-10-05 17:00,,2008-10-02 08:00,2008-10-01 17:00,,,2008-06-09 08:00,2008-06-15 17:00,,,,,PT_Normal,,,,,/i+TCcCNbU6gBwBmZLW9vA,,,,N,8034.91,241424.4
2525,84424,829,11547,912,1,100,N,N,N,CP_Drtn,TT_Task,DT_FixedDUR2,RV_OK,TK_Complete,721GL12200,Slab @ GU level - Part 1,2306,24,0,0,4104.78,0,4104.78,64,149880.72,149880.72,0,,2008-06-10 08:00,2008-06-18 17:00,2008-10-06 08:00,2008-10-05 17:00,,2008-10-02 08:00,2008-10-01 17:00,,,2008-06-10 08:00,2008-06-18 17:00,,,,,PT_Normal,,,,,I1CVvBBKrEmD1NC2MzoK6g,,,,N,4104.78,149880.72
2526,84425,829,11547,912,1,100,N,N,N,CP_Drtn,TT_Task,DT_FixedDUR2,RV_OK,TK_Complete,721GL12201,Slab @ GU level - Part 2,2306,24,0,0,4098.76,0,4098.76,64,149570.48,149570.48,0,,2008-06-19 08:00,2008-06-28 17:00,2008-10-06 08:00,2008-10-05 17:00,,2008-10-02 08:00,2008-10-01 17:00,,,2008-06-19 08:00,2008-06-28 17:00,,,,,PT_Normal,,,,,dGj73sxvzUeNDgXHVFXcxg,,,,N,4098.76,149570.48
2527,84426,829,11547,912,1,100,N,N,N,CP_Drtn,TT_Task,DT_FixedDUR2,RV_OK,TK_Complete,721GL12202,Slab @ GU level - Middle Part,2306,24,0,0,5907.6,0,5907.6,64,216622.72,216622.72,0,,2008-06-18 08:00,2008-06-26 17:00,2008-10-06 08:00,2008-10-05 17:00,,2008-10-02 08:00,2008-10-01 17:00,,,2008-06-18 08:00,2008-06-26 17:00,,,,,PT_Normal,,,,,HriUccTgzkm9h8BZ+OWsdQ,,,,N,5907.6,216622.72
2528,84427,829,11547,912,1,100,N,N,N,CP_Drtn,TT_Task,DT_FixedDUR2,RV_OK,TK_Complete,721GL12250,Staircases GL to GU,2306,208,0,0,999.88,0,999.88,32,18457.6,18457.6,0,,2008-06-29 08:00,2008-07-02 17:00,2008-11-02 08:00,2008-11-01 17:00,,2008-10-02 08:00,2008-10-01 17:00,,,2008-06-29 08:00,2008-07-02 17:00,,,,,PT_Normal,,,,,p/vMA9qTlEiuXE5e98gYSw,,,,N,999.88,18457.6
2529,84428,829,11612,912,1,100,N,N,N,CP_Drtn,TT_Task,DT_FixedDUR2,RV_OK,TK_Complete,721GL14050,Block works,2306,168,0,0,59160,0,66360,120,,7200,0,,2008-07-19 08:00,2008-08-05 17:00,2008-10-27 08:00,2008-10-26 17:00,,2008-10-02 08:00,2008-10-01 17:00,,,2008-07-19 08:00,2008-08-05 17:00,,,,,PT_Normal,,,,,maM98y+470+5TP2XzHsd7w,,,,N,59160,7200
2530,84429,829,11613,912,1,100,N,N,N,CP_Drtn,TT_Task,DT_FixedDUR2,RV_OK,TK_Complete,721GL16050,Plaster works,2306,168,0,0,25456.4,0,25456.4,120,19872,19872,0,,2008-08-04 08:00,2008-08-20 17:00,2008-10-27 08:00,2008-10-26 17:00,,2008-10-02 08:00,2008-10-01 17:00,,,2008-08-04 08:00,2008-08-20 17:00,,,,,PT_Normal,,,,,j/xMtSbkw0KlKi+pcB+xfg,,,,N,25456.4,19872
2531,84430,829,11613,912,1,100,N,N,N,CP_Drtn,TT_Task,DT_FixedDUR2,RV_OK,TK_Complete,721GL16051,Plaste works behind tiles,2306,168,0,0,9810,0,9810,120,7600,7600,0,,2008-08-12 08:00,2008-08-28 17:00,2008-10-27 08:00,2008-10-26 17:00,,2008-10-02 08:00,2008-10-01 17:00,,,2008-08-12 08:00,2008-08-28 17:00,,,,,PT_Normal,,,,,EQLGgDnAi0Wa3wesZ8G9Eg,,,,N,9810,7600
2532,84431,829,11405,912,1,100,N,N,N,CP_Drtn,TT_Task,DT_FixedDUR2,RV_OK,TK_Complete,721GL18050,Rendering works,2306,168,0,0,5700.2,0,5700.2,120,5016,5016,0,,2008-07-28 08:00,2008-08-14 17:00,2008-10-27 08:00,2008-10-26 17:00,,2008-10-02 08:00,2008-10-01 17:00,,,2008-07-28 08:00,2008-08-14 17:00,,,,,PT_Normal,,,,,1+24d3Wau0isFnFTZ5399g,,,,N,5700.2,5016
2533,84432,829,11405,912,1,100,N,N,N,CP_Drtn,TT_Task,DT_FixedDUR2,RV_OK,TK_Complete,721GL18100,Painting base coats,2306,168,0,0,27496.4,0,27496.4,120,24888,24888,0,,2008-08-10 08:00,2008-08-26 17:00,2008-10-27 08:00,2008-10-26 17:00,,2008-10-02 08:00,2008-10-01 17:00,,,2008-08-10 08:00,2008-08-26 17:00,,,,,PT_Normal,,,,,8PYMrz0G0kaSpZYcz5jcrA,,,,N,27496.4,24888
2534,84433,829,11405,912,1,0,N,N,N,CP_Drtn,TT_Task,DT_FixedDUR2,RV_OK,TK_NotStart,721GL18150,Painting 1st top coat for apartments,2306,624,0,72,0,17325.8,17325.8,72,16432,0,16432,,,,2009-01-15 08:00,2009-01-25 17:00,,2008-10-16 08:00,2008-10-26 17:00,2008-10-16 08:00,2008-10-26 17:00,2008-10-16 08:00,2008-10-26 17:00,,,,,PT_Normal,,,,,y1JWQCz3W0+tD7b+UWwZ5w,,,,N,0,0
2535,84434,829,11405,912,1,0,N,N,N,CP_Drtn,TT_Task,DT_FixedDUR2,RV_OK,TK_NotStart,721GL18153,Painting 1st top coat for corridors/lobbies,2306,696,0,48,0,14386.4,14386.4,48,13656,0,13656,,,,2009-02-14 08:00,2009-02-19 17:00,,2008-11-04 08:00,2008-11-10 17:00,2008-11-04 08:00,2008-11-10 17:00,2008-11-04 08:00,2008-11-10 17:00,,,,,PT_Normal,,,,,1Z3Sylp3wEOSiebWSwZ0PQ,,,,N,0,0
2536,84435,829,11405,912,1,0,N,N,N,CP_Drtn,TT_Task,DT_FixedDUR2,RV_OK,TK_NotStart,721GL18155,Painting 1st top coat for service rooms,2306,824,0,48,0,5508,5508,48,5200,0,5200,,,,2009-02-24 08:00,2009-03-02 17:00,,2008-10-27 08:00,2008-11-02 17:00,2008-10-27 08:00,2008-11-02 17:00,2008-10-27 08:00,2008-11-02 17:00,,,,,PT_Normal,,,,,N8C7ksFkd028Agq0ZWmmOQ,,,,N,0,0
2537,84436,829,10665,912,1,0,N,N,N,CP_Drtn,TT_Task,DT_FixedDUR2,RV_OK,TK_NotStart,721GL18200,Painting final top coat,2306,184,184,32,0,26164.2,26164.2,32,24888,0,24888,,,,2009-03-28 08:00,2009-03-31 17:00,,2009-03-01 08:00,2009-03-04 17:00,2009-03-01 08:00,2009-03-04 17:00,2009-03-01 08:00,2009-03-04 17:00,,,,,PT_Normal,,,,,+ctamOprJEGDGTLzm8qJKg,,,,N,0,0
2538,84437,829,11615,912,1,100,N,N,N,CP_Drtn,TT_Task,DT_FixedDUR2,RV_OK,TK_Complete,721GL20050,Floor tiles for apartments-dry area,2306,288,0,0,14013.34,0,14013.34,120,10291.36,10291.36,0,,2008-08-16 08:00,2008-09-01 17:00,2008-11-13 08:00,2008-11-12 17:00,,2008-10-02 08:00,2008-10-01 17:00,,,2008-08-16 08:00,2008-09-01 17:00,,,,,PT_Normal,,,,,plRlarrdikSlrEaA1ly6jA,,,,N,14013.34,10291.36
2539,84438,829,11615,912,1,0,N,N,N,CP_Drtn,TT_Task,DT_FixedDUR2,RV_OK,TK_NotStart,721GL20053,Floor tiles for corridors / lobbies,2306,376,0,48,0,4778.2,4778.2,48,3504,0,3504,,,,2008-12-08 08:00,2008-12-14 17:00,,2008-10-14 08:00,2008-10-20 17:00,2008-10-14 08:00,2008-10-20 17:00,2008-10-14 08:00,2008-10-20 17:00,,,,,PT_Normal,,,,,QTZNE6cnsEivPWcIKdLGtw,,,,N,0,0
2540,84439,829,11615,912,1,0,N,N,N,CP_Drtn,TT_Task,DT_FixedDUR2,RV_OK,TK_NotStart,721GL20070,Floor tiles for apartments-wet area,2306,168,0,120,0,5682,5682,120,4120,0,4120,,,,2008-11-01 08:00,2008-11-17 17:00,,2008-10-07 08:00,2008-10-23 17:00,2008-10-07 08:00,2008-10-23 17:00,2008-10-07 08:00,2008-10-23 17:00,,,,,PT_Normal,,,,,WRBPJkpsdES2yNBWic8MWQ,,,,N,0,0
2541,84440,829,11615,912,1,0,N,N,N,CP_Drtn,TT_Task,DT_FixedDUR2,RV_OK,TK_NotStart,721GL20110,Wall tiles for apartments-wet area,2306,328,0,120,0,9360,9360,120,6160,0,6160,,,,2008-11-24 08:00,2008-12-10 17:00,,2008-10-07 08:00,2008-10-23 17:00,2008-10-07 08:00,2008-10-23 17:00,2008-10-07 08:00,2008-10-23 17:00,,,,,PT_Normal,,,,,BueS9DtON06DUA9hauiRzw,,,,N,0,0
2542,84441,829,11616,912,1,100,N,N,N,CP_Drtn,TT_Task,DT_FixedDUR2,RV_OK,TK_Complete,721GL22150,W/P for for apartments,2306,200,0,0,5144.4,0,5144.4,120,4568,4568,0,,2008-08-06 08:00,2008-08-23 17:00,2008-11-01 08:00,2008-10-30 17:00,,2008-10-02 08:00,2008-10-01 17:00,,,2008-08-06 08:00,2008-08-23 17:00,,,,,PT_Normal,,,,,5+zN/s5gTEy+rGs3iVeHDA,,,,N,5144.4,4568
2543,84442,829,11616,912,1,0,N,N,N,CP_Drtn,TT_Task,DT_FixedDUR2,RV_OK,TK_NotStart,721GL22151,W/P for open to sky areas,2306,968,656,120,0,47103.6,47103.6,120,42712,0,42712,,,,2009-03-21 08:00,2009-04-06 17:00,,2008-10-30 08:00,2008-11-16 17:00,2008-10-30 08:00,2008-11-16 17:00,2008-10-30 08:00,2008-11-16 17:00,,,,,PT_Normal,,,,,QHJ523yEK0GPQ7ZgoA2u8A,,,,N,0,0
2544,84443,829,11616,912,1,100,N,N,N,CP_Drtn,TT_Task,DT_FixedDUR2,RV_OK,TK_Complete,721GL22154,W/P for planter boxes,2306,856,0,0,1472,0,1472,64,1280,1280,0,,2008-09-16 08:00,2008-09-24 17:00,2009-02-04 08:00,2009-02-03 17:00,,2008-10-02 08:00,2008-10-01 17:00,,,2008-09-16 08:00,2008-09-24 17:00,,,,,PT_Normal,,,,,nA9dcBFTQECey6HtvEEzng,,,,N,1472,1280
2545,84444,829,11408,912,1,100,N,N,N,CP_Drtn,TT_Task,DT_FixedDUR2,RV_OK,TK_Complete,721GL24050,Aluminium doors & windows,2306,320,0,0,2936,0,2936,120,704,704,0,,2008-08-27 08:00,2008-09-13 17:00,2008-11-18 08:00,2008-11-17 17:00,,2008-10-02 08:00,2008-10-01 17:00,,,2008-08-27 08:00,2008-09-13 17:00,,,,,PT_Normal,,,,,yv7UnlKZckOwoiAXOY/hjQ,,,,N,2936,704
2546,84445,829,11408,912,1,0,N,N,N,CP_Drtn,TT_Task,DT_FixedDUR2,RV_OK,TK_NotStart,721GL24200,Balcony handrails,2306,168,0,120,0,1520,1520,120,800,0,800,,,,2008-11-18 08:00,2008-12-04 17:00,,2008-10-25 08:00,2008-11-10 17:00,2008-10-25 08:00,2008-11-10 17:00,2008-10-25 08:00,2008-11-10 17:00,,,,,PT_Normal,,,,,YmFcA8BLzUGsI47AK7Kiew,,,,N,0,0
2547,84446,829,11408,912,1,0,N,N,N,CP_Drtn,TT_Task,DT_FixedDUR2,RV_OK,TK_NotStart,721GL24203,Lobby handrails,2306,736,184,64,0,946,946,64,504,0,504,,,,2009-02-05 08:00,2009-02-14 17:00,,2008-10-21 08:00,2008-10-29 17:00,2008-10-21 08:00,2008-10-29 17:00,2008-10-21 08:00,2008-10-29 17:00,,,,,PT_Normal,,,,,L0Q7pqsW+0Slo4COGPQJBA,,,,N,0,0
2548,84447,829,11618,912,1,0,N,N,N,CP_Drtn,TT_Task,DT_FixedDUR2,RV_OK,TK_NotStart,721GL26050,Steel doors,2306,752,0,48,0,528,528,48,96,0,96,,,,2009-02-07 08:00,2009-02-12 17:00,,2008-10-20 08:00,2008-10-26 17:00,2008-10-20 08:00,2008-10-26 17:00,2008-10-20 08:00,2008-10-26 17:00,,,,,PT_Normal,,,,,+JTDBSKicEuApDm1UehaDQ,,,,N,0,0
2549,84448,829,11619,912,1,44.8,N,N,N,CP_Drtn,TT_Task,DT_FixedDUR2,RV_OK,TK_Active,721GL30050,Wooden doors,2306,288,0,256,1274.86,1569.14,2844,464,680,304.8,375.2,,2008-09-02 08:00,,2008-11-13 08:00,2008-12-20 17:00,,2008-10-02 08:00,2008-11-08 17:00,2008-10-02 08:00,2008-11-08 17:00,2008-09-02 08:00,2008-11-08 17:00,,,,,PT_Normal,,,,,T3I4/VtNGUGwtMzQnQR7qQ,,,,N,1274.86,304.8
2550,84449,829,11411,912,1,0,N,N,N,CP_Drtn,TT_Task,DT_FixedDUR2,RV_OK,TK_NotStart,721GL32050,Kitchen cabinets,2306,536,512,160,0,4376,4376,160,136,0,136,,,,2009-01-05 08:00,2009-01-27 17:00,,2008-10-19 08:00,2008-11-10 17:00,2008-10-19 08:00,2008-11-10 17:00,2008-10-19 08:00,2008-11-10 17:00,,,,,PT_Normal,,,,,1L+0U+YzNEWC+qDrW55UyQ,,,,N,0,0
2551,84450,829,11411,912,1,0,N,N,N,CP_Drtn,TT_Task,DT_FixedDUR2,RV_OK,TK_NotStart,721GL32100,Vanity counters,2306,200,0,120,0,3112,3112,120,272,0,272,,,,2008-11-23 08:00,2008-12-09 17:00,,2008-10-25 08:00,2008-11-10 17:00,2008-10-25 08:00,2008-11-10 17:00,2008-10-25 08:00,2008-11-10 17:00,,,,,PT_Normal,,,,,qyd69L6u7E2nU9RdawyW0g,,,,N,0,0
2552,84451,829,11411,912,1,0,N,N,N,CP_Drtn,TT_Task,DT_FixedDUR2,RV_OK,TK_NotStart,721GL32150,Wardrobes,2306,632,608,160,0,3688,3688,160,168,0,168,,,,2009-01-05 08:00,2009-01-27 17:00,,2008-10-05 08:00,2008-10-27 17:00,2008-10-05 08:00,2008-10-27 17:00,2008-10-05 08:00,2008-10-27 17:00,,,,,PT_Normal,,,,,jEYfreBBE0WRjmpubnQRwA,,,,N,0,0
2553,84452,829,11512,912,1,40,N,N,N,CP_Drtn,TT_Task,DT_FixedDUR2,RV_OK,TK_Active,721GL34050,False ceiling works for apartments-dry area,2306,376,0,96,602.44,903.72,1506.16,160,897.44,358.96,538.48,,2008-09-23 08:00,,2008-11-26 08:00,2008-12-09 17:00,,2008-10-02 08:00,2008-10-15 17:00,2008-10-02 08:00,2008-10-15 17:00,2008-09-23 08:00,2008-10-15 17:00,,,,,PT_Normal,,,,,s9CN+RuE9E6vEynLemaWcQ,,,,N,602.44,358.96
2554,84453,829,11512,912,1,0,N,N,N,CP_Drtn,TT_Task,DT_FixedDUR2,RV_OK,TK_NotStart,721GL34053,False ceiling works for corridors/lobbies,2306,376,0,72,0,9876,9876,72,6536,0,6536,,,,2008-11-30 08:00,2008-12-09 17:00,,2008-10-06 08:00,2008-10-15 17:00,2008-10-06 08:00,2008-10-15 17:00,2008-10-06 08:00,2008-10-15 17:00,,,,,PT_Normal,,,,,UYcZIEeh9ku/+aqkCiXvYg,,,,N,0,0
2555,84454,829,11512,912,1,40,N,N,N,CP_Drtn,TT_Task,DT_FixedDUR2,RV_OK,TK_Active,721GL34070,False ceiling works for apartments-wet area,2306,168,0,96,283.96,425.88,709.84,160,366.56,146.64,219.92,,2008-09-23 08:00,,2008-10-27 08:00,2008-11-09 17:00,,2008-10-02 08:00,2008-10-15 17:00,2008-10-02 08:00,2008-10-15 17:00,2008-09-23 08:00,2008-10-15 17:00,,,,,PT_Normal,,,,,CoIMT8UkLUGvyjXkPBcDjQ,,,,N,283.96,146.64
2556,84455,829,11622,912,1,0,N,N,N,CP_Drtn,TT_Task,DT_FixedDUR2,RV_OK,TK_NotStart,721GL36050,Stone finishing top,2306,328,32,64,0,526,526,64,264,0,264,,,,2008-12-10 08:00,2008-12-18 17:00,,2008-10-23 08:00,2008-11-01 17:00,2008-10-23 08:00,2008-11-01 17:00,2008-10-23 08:00,2008-11-01 17:00,,,,,PT_Normal,,,,,7qlsOJn/hUSxws1BPXwM3g,,,,N,0,0
2557,84456,829,11622,912,1,0,N,N,N,CP_Drtn,TT_Task,DT_FixedDUR2,RV_OK,TK_NotStart,721GL36100,Thresholds,2306,288,0,176,0,1016,1016,176,560,0,560,,,,2008-11-29 08:00,2008-12-23 17:00,,2008-10-18 08:00,2008-11-11 17:00,2008-10-18 08:00,2008-11-11 17:00,2008-10-18 08:00,2008-11-11 17:00,,,,,PT_Normal,,,,,kl4mC2qzpU2DqyEUWrOZkg,,,,N,0,0
2558,84457,829,11623,912,1,0,N,N,N,CP_Drtn,TT_Task,DT_FixedDUR2,RV_OK,TK_NotStart,721GL38100,Epoxy coating system,2306,824,640,48,0,1152,1152,48,920,0,920,,,,2009-03-09 08:00,2009-03-15 17:00,,2008-11-09 08:00,2008-11-15 17:00,2008-11-09 08:00,2008-11-15 17:00,2008-11-09 08:00,2008-11-15 17:00,,,,,PT_Normal,,,,,F8GKT3YuQkW3gZd64AhtMQ,,,,N,0,0
2559,84458,829,11624,912,1,86.7,N,N,N,CP_Drtn,TT_Task,DT_FixedDUR2,RV_OK,TK_Active,721GL40050,Duplex apartment stairs,2306,376,0,16,4641.83,714.17,5356,120,136,117.84,18.16,,2008-09-17 08:00,,2008-11-26 08:00,2008-11-27 17:00,,2008-10-02 08:00,2008-10-04 17:00,2008-10-02 08:00,2008-10-04 17:00,2008-09-17 08:00,2008-10-04 17:00,,,,,PT_Normal,,,,,WHXNMpgJfk+BarZFGiUq/g,,,,N,4641.83,117.84
2560,84459,829,11624,912,1,20,N,N,N,CP_Drtn,TT_Task,DT_FixedDUR2,RV_OK,TK_Active,721GL40100,Wooden steps for Duplex staircase,2306,376,0,96,200.8,803.2,1004,120,104,20.8,83.2,,2008-09-29 08:00,,2008-11-26 08:00,2008-12-09 17:00,,2008-10-02 08:00,2008-10-15 17:00,2008-10-02 08:00,2008-10-15 17:00,2008-09-29 08:00,2008-10-15 17:00,,,,,PT_Normal,,,,,dXWtw4A2ykOL+xLbX1bIQg,,,,N,200.8,20.8
2561,84460,829,11624,912,1,0,N,N,N,CP_Drtn,TT_Task,DT_FixedDUR2,RV_OK,TK_NotStart,721GL40150,Duplex stair railings,2306,376,152,120,0,6480,6480,120,2544,0,2544,,,,2008-12-04 08:00,2008-12-21 17:00,,2008-10-11 08:00,2008-10-27 17:00,2008-10-11 08:00,2008-10-27 17:00,2008-10-11 08:00,2008-10-27 17:00,,,,,PT_Normal,,,,,pWmeggY3rka6hNUJcf7rUw,,,,N,0,0
2562,84461,829,11416,912,1,0,N,N,N,CP_Drtn,TT_Task,DT_FixedDUR2,RV_OK,TK_NotStart,721GL42050,Signage works,2306,808,624,48,0,197.8,197.8,48,136,0,136,,,,2009-03-09 08:00,2009-03-15 17:00,,2008-11-11 08:00,2008-11-17 17:00,2008-11-11 08:00,2008-11-17 17:00,2008-11-11 08:00,2008-11-17 17:00,,,,,PT_Normal,,,,,5R4CJZ2z1U6Ymio/rTPXRA,,,,N,0,0
2563,84462,829,11417,912,1,100,N,N,N,CP_Drtn,TT_Task,DT_FixedDUR2,RV_OK,TK_Complete,721GL44050,Sub-frames,2306,168,0,0,1480,0,1480,120,680,680,0,,2008-07-26 08:00,2008-08-12 17:00,2008-10-27 08:00,2008-10-26 17:00,,2008-10-02 08:00,2008-10-01 17:00,,,2008-07-26 08:00,2008-08-12 17:00,,,,,PT_Normal,,,,,vh7mYkuMbkCXuNlLP4i+Vw,,,,N,1480,680
2564,84463,829,12401,912,1,100,N,N,N,CP_Drtn,TT_Task,DT_FixedDUR2,RV_OK,TK_Complete,721GL50100,MEP skeleton embedded provisions,2296,24,0,0,512,0,512,72,,,0,,2008-06-03 08:00,2008-06-12 17:00,2008-10-06 08:00,2008-10-05 17:00,,2008-10-02 08:00,2008-10-01 17:00,,,2008-06-03 08:00,2008-06-12 17:00,,,,,PT_Normal,,,,,39/KeKvOqkOGkQO4yT6/+Q,,,,N,512,0
2565,84464,829,12194,912,1,100,N,N,N,CP_Drtn,TT_Task,DT_FixedDUR2,RV_OK,TK_Complete,721GL52050,A/C duct works,2296,168,0,0,831,0,831,160,,,0,,2008-07-30 08:00,2008-08-23 17:00,2008-10-27 08:00,2008-10-26 17:00,,2008-10-02 08:00,2008-10-01 17:00,,,2008-07-30 08:00,2008-08-23 17:00,,,,,PT_Normal,,,,,f7/VzgovdE2KeJfn6SaRyg,,,,N,831,0
2566,84465,829,12194,912,1,100,N,N,N,CP_Drtn,TT_Task,DT_FixedDUR2,RV_OK,TK_Complete,721GL52100,Chilled water pipe works,2296,168,0,0,787,0,787,72,,,0,,2008-08-13 08:00,2008-08-23 17:00,2008-10-27 08:00,2008-10-26 17:00,,2008-10-02 08:00,2008-10-01 17:00,,,2008-08-13 08:00,2008-08-23 17:00,,,,,PT_Normal,,,,,XYBS9gi/y0yQQ5PXFI6pIQ,,,,N,787,0
2567,84466,829,12404,912,1,100,N,N,N,CP_Drtn,TT_Task,DT_FixedDUR2,RV_OK,TK_Complete,721GL52150,FCU's hanging,2296,168,0,0,935.2,0,935.2,64,,,0,,2008-08-12 08:00,2008-08-20 17:00,2008-10-27 08:00,2008-10-26 17:00,,2008-10-02 08:00,2008-10-01 17:00,,,2008-08-12 08:00,2008-08-20 17:00,,,,,PT_Normal,,,,,ju3CbLi2p0quOZZdB3kzMA,,,,N,935.2,0
2568,84467,829,12404,912,1,100,N,N,N,CP_Drtn,TT_Task,DT_FixedDUR2,RV_OK,TK_Complete,721GL52300,FCU's assembly & duct connections,2296,168,0,0,991.2,0,991.2,120,,,0,,2008-08-27 08:00,2008-09-13 17:00,2008-10-27 08:00,2008-10-26 17:00,,2008-10-02 08:00,2008-10-01 17:00,,,2008-08-27 08:00,2008-09-13 17:00,,,,,PT_Normal,,,,,KZQxjgbbe064M5z2hck8yw,,,,N,991.2,0
2569,84468,829,12404,912,1,54.5,N,N,N,CP_Drtn,TT_Task,DT_FixedDUR2,RV_OK,TK_Active,721GL52350,Grills & diffusers,2296,848,544,160,624,520,1144,352,,,,,2008-09-04 08:00,,2009-02-03 08:00,2009-02-25 17:00,,2008-10-02 08:00,2008-10-25 17:00,2008-10-02 08:00,2008-10-25 17:00,2008-09-04 08:00,2008-10-25 17:00,,,,,PT_Normal,,,,,2Ckp2ejp3Ey+Ymer31kY4Q,,,,N,624,0
2570,84469,829,12194,912,1,100,N,N,N,CP_Drtn,TT_Task,DT_FixedDUR2,RV_OK,TK_Complete,721GL52550,A/C duct risers,2296,168,0,0,1626,0,1626,64,,,0,,2008-08-18 08:00,2008-08-26 17:00,2008-10-27 08:00,2008-10-26 17:00,,2008-10-02 08:00,2008-10-01 17:00,,,2008-08-18 08:00,2008-08-26 17:00,,,,,PT_Normal,,,,,kQKOvCOqCUCN9hP8vexpIA,,,,N,1626,0
2571,84470,829,12306,912,1,100,N,N,N,CP_Drtn,TT_Task,DT_FixedDUR2,RV_OK,TK_Complete,721GL54050,Chasing & Pex pipe works,2296,168,0,0,395,0,395,120,,,0,,2008-07-30 08:00,2008-08-17 17:00,2008-10-27 08:00,2008-10-26 17:00,,2008-10-02 08:00,2008-10-01 17:00,,,2008-07-30 08:00,2008-08-17 17:00,,,,,PT_Normal,,,,,nArTvSUP6UW3phI96G/NcA,,,,N,395,0
2572,84471,829,12306,912,1,100,N,N,N,CP_Drtn,TT_Task,DT_FixedDUR2,RV_OK,TK_Complete,721GL54100,Over head distribution water pipe network,2296,168,0,0,8314,0,8314,64,,,0,,2008-08-13 08:00,2008-08-21 17:00,2008-10-27 08:00,2008-10-26 17:00,,2008-10-02 08:00,2008-10-01 17:00,,,2008-08-13 08:00,2008-08-21 17:00,,,,,PT_Normal,,,,,S0GHGkUIgUGZidgEFK3OMA,,,,N,8314,0
2573,84472,829,12408,912,1,100,N,N,N,CP_Drtn,TT_Task,DT_FixedDUR2,RV_OK,TK_Complete,721GL54150,Water meter cabinet pipe works,2296,840,0,0,340,0,340,120,,,0,,2008-09-10 08:00,2008-09-27 17:00,2009-02-02 08:00,2009-02-01 17:00,,2008-10-02 08:00,2008-10-01 17:00,,,2008-09-10 08:00,2008-09-27 17:00,,,,,PT_Normal,,,,,KKRot7FocUG0GA3G47FchQ,,,,N,340,0
2574,84473,829,12198,912,1,100,N,N,N,CP_Drtn,TT_Task,DT_FixedDUR2,RV_OK,TK_Complete,721GL54250,Bathtubs,2296,320,0,0,216.8,0,313.6,120,,96.8,0,,2008-08-12 08:00,2008-08-28 17:00,2008-11-18 08:00,2008-11-17 17:00,,2008-10-02 08:00,2008-10-01 17:00,,,2008-08-12 08:00,2008-08-28 17:00,,,,,PT_Normal,,,,,KHCKuOEYIE2C5ThkehXu7w,,,,N,216.8,96.8
2575,84474,829,12198,912,1,100,N,N,N,CP_Drtn,TT_Task,DT_FixedDUR2,RV_OK,TK_Complete,721GL54300,Water heater,2296,168,0,0,310.4,0,310.4,64,,,0,,2008-08-18 08:00,2008-08-26 17:00,2008-10-27 08:00,2008-10-26 17:00,,2008-10-02 08:00,2008-10-01 17:00,,,2008-08-18 08:00,2008-08-26 17:00,,,,,PT_Normal,,,,,LGOcBmAhSEq2SWA3PFtiEA,,,,N,310.4,0
2576,84475,829,12198,912,1,100,N,N,N,CP_Drtn,TT_Task,DT_FixedDUR2,RV_OK,TK_Complete,721GL54350,Over head pipe assembly & vlave connections,2296,168,0,0,237,0,237,72,,,0,,2008-08-23 08:00,2008-09-01 17:00,2008-10-27 08:00,2008-10-26 17:00,,2008-10-02 08:00,2008-10-01 17:00,,,2008-08-23 08:00,2008-09-01 17:00,,,,,PT_Normal,,,,,Jd6xmzDrZU+3Wg5TQ2J3+Q,,,,N,237,0
2577,84476,829,12408,912,1,0,N,N,N,CP_Drtn,TT_Task,DT_FixedDUR2,RV_OK,TK_NotStart,721GL54400,Sanitary fixures,2296,328,0,120,0,516,516,120,0,0,0,,,,2008-12-02 08:00,2008-12-18 17:00,,2008-10-15 08:00,2008-11-01 17:00,2008-10-15 08:00,2008-11-01 17:00,2008-10-15 08:00,2008-11-01 17:00,,,,,PT_Normal,,,,,zncrQHUrs0aksNgeDNalJQ,,,,N,0,0
2578,84477,829,12408,912,1,0,N,N,N,CP_Drtn,TT_Task,DT_FixedDUR2,RV_OK,TK_NotStart,721GL54450,Mirrors,2296,240,40,120,0,186,186,120,0,0,0,,,,2008-12-04 08:00,2008-12-21 17:00,,2008-10-30 08:00,2008-11-16 17:00,2008-10-30 08:00,2008-11-16 17:00,2008-10-30 08:00,2008-11-16 17:00,,,,,PT_Normal,,,,,vL6zIrQ2xkuYksqoaOUl2Q,,,,N,0,0
2579,84478,829,12198,912,1,100,N,N,N,CP_Drtn,TT_Task,DT_FixedDUR2,RV_OK,TK_Complete,721GL54500,Concealed Flushing Cistern,2296,320,0,0,186,0,252,120,,66,0,,2008-08-12 08:00,2008-08-28 17:00,2008-11-18 08:00,2008-11-17 17:00,,2008-10-02 08:00,2008-10-01 17:00,,,2008-08-12 08:00,2008-08-28 17:00,,,,,PT_Normal,,,,,oarOy30q90CLRFo9cccpmg,,,,N,186,66
2580,84479,829,12201,912,1,100,N,N,N,CP_Drtn,TT_Task,DT_FixedDUR2,RV_OK,TK_Complete,721GL56050,Chasing and installation of drainage pipes,2296,168,0,0,285,0,285,120,,,0,,2008-07-30 08:00,2008-08-17 17:00,2008-10-27 08:00,2008-10-26 17:00,,2008-10-02 08:00,2008-10-01 17:00,,,2008-07-30 08:00,2008-08-17 17:00,,,,,PT_Normal,,,,,0pxC8dxug0Oapj4h3kyS3g,,,,N,285,0
2581,84480,829,12201,912,1,100,N,N,N,CP_Drtn,TT_Task,DT_FixedDUR2,RV_OK,TK_Complete,721GL56100,Drainage riser pipes,2296,168,0,0,284,0,284,64,,,0,,2008-07-27 08:00,2008-08-05 17:00,2008-10-27 08:00,2008-10-26 17:00,,2008-10-02 08:00,2008-10-01 17:00,,,2008-07-27 08:00,2008-08-05 17:00,,,,,PT_Normal,,,,,QC1IM3lR70+HU4UmQMO7Cg,,,,N,284,0
2582,84481,829,12411,912,1,100,N,N,N,CP_Drtn,TT_Task,DT_FixedDUR2,RV_OK,TK_Complete,721GL56150,Over head drainage pipe works,2296,168,0,0,257.6,0,257.6,64,,,0,,2008-08-30 08:00,2008-09-07 17:00,2008-10-27 08:00,2008-10-26 17:00,,2008-10-02 08:00,2008-10-01 17:00,,,2008-08-30 08:00,2008-09-07 17:00,,,,,PT_Normal,,,,,Mvny7+LOAEazWh0mjl060Q,,,,N,257.6,0
2583,84482,829,12204,912,1,100,N,N,N,CP_Drtn,TT_Task,DT_FixedDUR2,RV_OK,TK_Complete,721GL58050,Fire fighting pipe works,2296,168,0,0,292,0,292,72,,,0,,2008-08-06 08:00,2008-08-16 17:00,2008-10-27 08:00,2008-10-26 17:00,,2008-10-02 08:00,2008-10-01 17:00,,,2008-08-06 08:00,2008-08-16 17:00,,,,,PT_Normal,,,,,tWIIc766mU2czQbx5qlKZw,,,,N,292,0
2584,84483,829,12414,912,1,0,N,N,N,CP_Drtn,TT_Task,DT_FixedDUR2,RV_OK,TK_NotStart,721GL58200,Fire cabinet complete,2296,776,520,64,0,339,339,64,0,0,0,,,,2009-03-07 08:00,2009-03-15 17:00,,2008-11-13 08:00,2008-11-22 17:00,2008-11-13 08:00,2008-11-22 17:00,2008-11-13 08:00,2008-11-22 17:00,,,,,PT_Normal,,,,,2ah9KmM6tEOCQkDj+y9+Tg,,,,N,0,0
2585,84484,829,12414,912,1,0,N,N,N,CP_Drtn,TT_Task,DT_FixedDUR2,RV_OK,TK_NotStart,721GL58250,Sprinkler heads,2296,792,488,120,0,450,450,120,0,0,0,,,,2009-02-09 08:00,2009-02-25 17:00,,2008-10-16 08:00,2008-11-02 17:00,2008-10-16 08:00,2008-11-02 17:00,2008-10-16 08:00,2008-11-02 17:00,,,,,PT_Normal,,,,,lemSviLsS0ex/skvWgxtBg,,,,N,0,0
2586,84485,829,12207,912,1,100,N,N,N,CP_Drtn,TT_Task,DT_FixedDUR2,RV_OK,TK_Complete,721GL60050,LPG piping,2296,648,0,0,292,0,292,72,,,0,,2008-08-30 08:00,2008-09-08 17:00,2009-01-05 08:00,2009-01-04 17:00,,2008-10-02 08:00,2008-10-01 17:00,,,2008-08-30 08:00,2008-09-08 17:00,,,,,PT_Normal,,,,,ehhIyXvZb0mtkbl1JwHIFg,,,,N,292,0
2587,84486,829,12417,912,1,100,N,N,N,CP_Drtn,TT_Task,DT_FixedDUR2,RV_OK,TK_Complete,721GL60100,Gas meter & leak detector,2296,896,0,0,248,0,248,72,,,0,,2008-09-09 08:00,2008-09-18 17:00,2009-02-10 08:00,2009-02-09 17:00,,2008-10-02 08:00,2008-10-01 17:00,,,2008-09-09 08:00,2008-09-18 17:00,,,,,PT_Normal,,,,,2EAKyHyUUU25Pgn3MLgbdw,,,,N,248,0
2588,84487,829,12210,912,1,100,N,N,N,CP_Drtn,TT_Task,DT_FixedDUR2,RV_OK,TK_Complete,721GL62050,BMS cabling,2296,168,0,0,486.4,0,486.4,64,,,0,,2008-09-08 08:00,2008-09-16 17:00,2008-10-27 08:00,2008-10-26 17:00,,2008-10-02 08:00,2008-10-01 17:00,,,2008-09-08 08:00,2008-09-16 17:00,,,,,PT_Normal,,,,,Q+CTNRQENUqCETR90Moprg,,,,N,486.4,0
2589,84488,829,12420,912,1,0,N,N,N,CP_Drtn,TT_Task,DT_FixedDUR2,RV_OK,TK_NotStart,721GL62100,DGC & cable termination to equipments,2296,824,0,48,0,329.6,329.6,48,0,0,0,,,,2009-03-03 08:00,2009-03-09 17:00,,2008-11-03 08:00,2008-11-09 17:00,2008-11-03 08:00,2008-11-09 17:00,2008-11-03 08:00,2008-11-09 17:00,,,,,PT_Normal,,,,,GxS2N0XrD0eSUYJ4w0UeTw,,,,N,0,0
2590,84489,829,12422,912,1,100,N,N,N,CP_Drtn,TT_Task,DT_FixedDUR2,RV_OK,TK_Complete,721GL66050,Chasing and installation of conduits,2296,168,0,0,2091.2,0,2091.2,120,,,0,,2008-07-28 08:00,2008-08-14 17:00,2008-10-27 08:00,2008-10-26 17:00,,2008-10-02 08:00,2008-10-01 17:00,,,2008-07-28 08:00,2008-08-14 17:00,,,,,PT_Normal,,,,,T5DeRNU9u0uMk3rysEI9Jg,,,,N,2091.2,0
2591,84490,829,12422,912,1,100,N,N,N,CP_Drtn,TT_Task,DT_FixedDUR2,RV_OK,TK_Complete,721GL66100,Cable trays & trunking,2296,168,0,0,1528,0,1528,120,,,0,,2008-08-27 08:00,2008-09-13 17:00,2008-10-27 08:00,2008-10-26 17:00,,2008-10-02 08:00,2008-10-01 17:00,,,2008-08-27 08:00,2008-09-13 17:00,,,,,PT_Normal,,,,,lUxnHVilc0SW035KM0Sq8w,,,,N,1528,0
2592,84491,829,12324,912,1,100,N,N,N,CP_Drtn,TT_Task,DT_FixedDUR2,RV_OK,TK_Complete,721GL68050,Single core wiring,2296,168,0,0,1339.2,0,1339.2,72,,,0,,2008-07-30 08:00,2008-08-10 17:00,2008-10-27 08:00,2008-10-26 17:00,,2008-10-02 08:00,2008-10-01 17:00,,,2008-07-30 08:00,2008-08-10 17:00,,,,,PT_Normal,,,,,Mxlf+6EtbEuL33WorBtthA,,,,N,1339.2,0
2593,84492,829,12216,912,1,100,N,N,N,CP_Drtn,TT_Task,DT_FixedDUR2,RV_OK,TK_Complete,721GL68100,DB enclosure,2296,168,0,0,486.4,0,486.4,64,,,0,,2008-08-06 08:00,2008-08-14 17:00,2008-10-27 08:00,2008-10-26 17:00,,2008-10-02 08:00,2008-10-01 17:00,,,2008-08-06 08:00,2008-08-14 17:00,,,,,PT_Normal,,,,,3zXj1rRRrEW/NNbBvmXMDQ,,,,N,486.4,0
2594,84493,829,12216,912,1,100,N,N,N,CP_Drtn,TT_Task,DT_FixedDUR2,RV_OK,TK_Complete,721GL68150,LV feeder cables,2296,240,0,0,2888,0,2888,72,,,0,,2008-09-14 08:00,2008-09-23 17:00,2008-11-06 08:00,2008-11-05 17:00,,2008-10-02 08:00,2008-10-01 17:00,,,2008-09-14 08:00,2008-09-23 17:00,,,,,PT_Normal,,,,,oV3qAw9aCkW7MLZ5StS+aQ,,,,N,2888,0
2595,84494,829,12426,912,1,0,N,N,N,CP_Drtn,TT_Task,DT_FixedDUR2,RV_OK,TK_NotStart,721GL68250,DB-breakers assembly,2296,640,616,72,0,635.2,635.2,72,0,0,0,,,,2009-01-18 08:00,2009-01-27 17:00,,2008-10-16 08:00,2008-10-26 17:00,2008-10-16 08:00,2008-10-26 17:00,2008-10-16 08:00,2008-10-26 17:00,,,,,PT_Normal,,,,,Knw6XezC1USwQsemsUtJaQ,,,,N,0,0
2596,84495,829,12426,912,1,0,N,N,N,CP_Drtn,TT_Task,DT_FixedDUR2,RV_OK,TK_NotStart,721GL68300,SMDB,2296,824,0,48,0,1456,1456,48,0,0,0,,,,2009-03-02 08:00,2009-03-08 17:00,,2008-11-02 08:00,2008-11-08 17:00,2008-11-02 08:00,2008-11-08 17:00,2008-11-02 08:00,2008-11-08 17:00,,,,,PT_Normal,,,,,f6dRmXGjKE2/oDFwh4xugA,,,,N,0,0
2597,84496,829,12426,912,1,50,N,N,N,CP_Drtn,TT_Task,DT_FixedDUR2,RV_OK,TK_Active,721GL68350,Light Fittings,2296,632,608,176,668.8,668.8,1337.6,352,,,,,2008-09-07 08:00,,2009-01-03 08:00,2009-01-27 17:00,,2008-10-02 08:00,2008-10-27 17:00,2008-10-02 08:00,2008-10-27 17:00,2008-09-07 08:00,2008-10-27 17:00,,,,,PT_Normal,,,,,88eQ0yPu/UiQQIdEpz56yg,,,,N,668.8,0
2598,84497,829,12426,912,1,0,N,N,N,CP_Drtn,TT_Task,DT_FixedDUR2,RV_OK,TK_NotStart,721GL68400,Lighting Control Panels,2296,808,520,64,0,275.2,275.2,64,0,0,0,,,,2009-03-05 08:00,2009-03-14 17:00,,2008-11-08 08:00,2008-11-16 17:00,2008-11-08 08:00,2008-11-16 17:00,2008-11-08 08:00,2008-11-16 17:00,,,,,PT_Normal,,,,,BfAF5v+bWUuNBUKxhbq+gg,,,,N,0,0
2599,84498,829,12426,912,1,0,N,N,N,CP_Drtn,TT_Task,DT_FixedDUR2,RV_OK,TK_NotStart,721GL68600,Switches & sockets,2296,640,616,72,0,494.4,494.4,72,0,0,0,,,,2009-01-18 08:00,2009-01-27 17:00,,2008-10-16 08:00,2008-10-26 17:00,2008-10-16 08:00,2008-10-26 17:00,2008-10-16 08:00,2008-10-26 17:00,,,,,PT_Normal,,,,,1fps0ZVxWU6LcO8FIB1LeA,,,,N,0,0
2600,84499,829,12219,912,1,100,N,N,N,CP_Drtn,TT_Task,DT_FixedDUR2,RV_OK,TK_Complete,721GL70050,Central Battery cables,2296,168,0,0,345.6,0,345.6,64,,,0,,2008-08-06 08:00,2008-08-14 17:00,2008-10-27 08:00,2008-10-26 17:00,,2008-10-02 08:00,2008-10-01 17:00,,,2008-08-06 08:00,2008-08-14 17:00,,,,,PT_Normal,,,,,FlKygy0IdkiniAX6X0Y3RA,,,,N,345.6,0
2601,84500,829,12429,912,1,0,N,N,N,CP_Drtn,TT_Task,DT_FixedDUR2,RV_OK,TK_NotStart,721GL70150,Emergency & exit light fittings,2296,928,424,48,0,188.8,188.8,48,0,0,0,,,,2009-03-05 08:00,2009-03-11 17:00,,2008-10-21 08:00,2008-10-27 17:00,2008-10-21 08:00,2008-10-27 17:00,2008-10-21 08:00,2008-10-27 17:00,,,,,PT_Normal,,,,,YBAwIkEA3UedJDqOGR8ZvA,,,,N,0,0
2602,84501,829,12222,912,1,100,N,N,N,CP_Drtn,TT_Task,DT_FixedDUR2,RV_OK,TK_Complete,721GL72050,CCTV system cables,2296,248,0,0,204.8,0,204.8,64,,,0,,2008-09-14 08:00,2008-09-22 17:00,2008-11-08 08:00,2008-11-06 17:00,,2008-10-02 08:00,2008-10-01 17:00,,,2008-09-14 08:00,2008-09-22 17:00,,,,,PT_Normal,,,,,xMCH4V61JEK9MIJmNARavg,,,,N,204.8,0
2603,84502,829,12432,912,1,0,N,N,N,CP_Drtn,TT_Task,DT_FixedDUR2,RV_OK,TK_NotStart,721GL72100,CCTV system equipments,2296,800,264,48,0,118.4,118.4,48,0,0,0,,,,2009-03-08 08:00,2009-03-14 17:00,,2008-11-11 08:00,2008-11-17 17:00,2008-11-11 08:00,2008-11-17 17:00,2008-11-11 08:00,2008-11-17 17:00,,,,,PT_Normal,,,,,81Kzo+q9VkiNfXt9tgCjog,,,,N,0,0
2604,84503,829,12222,912,1,100,N,N,N,CP_Drtn,TT_Task,DT_FixedDUR2,RV_OK,TK_Complete,721GL72200,Intercom system cables,2296,168,0,0,697.6,0,697.6,64,,,0,,2008-09-14 08:00,2008-09-22 17:00,2008-10-27 08:00,2008-10-26 17:00,,2008-10-02 08:00,2008-10-01 17:00,,,2008-09-14 08:00,2008-09-22 17:00,,,,,PT_Normal,,,,,4rksw5hPhkmRJhRNfef9Gg,,,,N,697.6,0
2605,84504,829,12432,912,1,0,N,N,N,CP_Drtn,TT_Task,DT_FixedDUR2,RV_OK,TK_NotStart,721GL72250,Intercom system equipments,2296,624,400,64,0,908.8,908.8,64,0,0,0,,,,2009-01-19 08:00,2009-01-27 17:00,,2008-10-20 08:00,2008-10-28 17:00,2008-10-20 08:00,2008-10-28 17:00,2008-10-20 08:00,2008-10-28 17:00,,,,,PT_Normal,,,,,Ke/DlgARkE+QnikPjVi5+g,,,,N,0,0
2606,84505,829,12225,912,1,100,N,N,N,CP_Drtn,TT_Task,DT_FixedDUR2,RV_OK,TK_Complete,721GL74050,Fire alarm cables,2296,168,0,0,380.8,0,380.8,64,,,0,,2008-08-06 08:00,2008-08-14 17:00,2008-10-27 08:00,2008-10-26 17:00,,2008-10-02 08:00,2008-10-01 17:00,,,2008-08-06 08:00,2008-08-14 17:00,,,,,PT_Normal,,,,,p8LuwQlp6k6Kurqrk09HLA,,,,N,380.8,0
2607,84506,829,12435,912,1,22.7,N,N,N,CP_Drtn,TT_Task,DT_FixedDUR2,RV_OK,TK_Active,721GL74100,Fire alarm fittings,2296,736,432,272,92,312.8,404.8,352,,,,,2008-09-21 08:00,,2009-01-18 08:00,2009-02-25 17:00,,2008-10-02 08:00,2008-11-10 17:00,2008-10-02 08:00,2008-11-10 17:00,2008-09-21 08:00,2008-11-10 17:00,,,,,PT_Normal,,,,,FDbr9LaJCUmwrKuHcuJ8/w,,,,N,92,0
2608,84507,829,12435,912,1,0,N,N,N,CP_Drtn,TT_Task,DT_FixedDUR2,RV_OK,TK_NotStart,721GL74150,Fire alarm control panels,2296,696,392,48,0,188.8,188.8,48,0,0,0,,,,2009-02-19 08:00,2009-02-25 17:00,,2008-11-10 08:00,2008-11-16 17:00,2008-11-10 08:00,2008-11-16 17:00,2008-11-10 08:00,2008-11-16 17:00,,,,,PT_Normal,,,,,8SFqYpmK70KYhOyEewDR7w,,,,N,0,0
2609,84508,829,12337,912,1,100,N,N,N,CP_Drtn,TT_Task,DT_FixedDUR2,RV_OK,TK_Complete,721GL76050,Structured cabling,2296,168,0,0,345.6,0,345.6,64,,,0,,2008-09-10 08:00,2008-09-18 17:00,2008-10-27 08:00,2008-10-26 17:00,,2008-10-02 08:00,2008-10-01 17:00,,,2008-09-10 08:00,2008-09-18 17:00,,,,,PT_Normal,,,,,Wjo1JKcOAUaUSORxSuPZxg,,,,N,345.6,0
2610,84509,829,12229,912,1,75,N,N,N,CP_Drtn,TT_Task,DT_FixedDUR2,RV_OK,TK_Active,721GL76100,Consolidated pionts,2296,168,0,16,470.4,156.8,627.2,64,,,,,2008-09-25 08:00,,2008-10-27 08:00,2008-10-28 17:00,,2008-10-02 08:00,2008-10-04 17:00,2008-10-02 08:00,2008-10-04 17:00,2008-09-25 08:00,2008-10-04 17:00,,,,,PT_Normal,,,,,SFxUlCsJq0mcz6gpn26UwA,,,,N,470.4,0
2611,84510,829,11495,912,1,0,N,N,N,CP_Drtn,TT_Task,DT_FixedDUR2,RV_OK,TK_NotStart,721GR20050,Floor tiles for garbage rooms,2306,488,0,120,0,1254,1254,120,840,0,840,,,,2009-03-09 08:00,2009-03-25 17:00,,2008-12-28 08:00,2009-01-13 17:00,2008-12-28 08:00,2009-01-13 17:00,2008-12-28 08:00,2009-01-13 17:00,,,,,PT_Normal,,,,,loFxfOqmlEeMSbA0K3IQ0w,,,,N,0,0
2612,84511,829,11495,912,1,0,N,N,N,CP_Drtn,TT_Task,DT_FixedDUR2,RV_OK,TK_NotStart,721GR20100,Wall tiles for garbage rooms,2306,488,0,120,0,744,744,120,416,0,416,,,,2009-02-02 08:00,2009-02-18 17:00,,2008-11-23 08:00,2008-12-09 17:00,2008-11-23 08:00,2008-12-09 17:00,2008-11-23 08:00,2008-12-09 17:00,,,,,PT_Normal,,,,,i1WfWOQZVE24is51qLyIEw,,,,N,0,0
2613,84512,829,11705,912,1,0,N,N,N,CP_Drtn,TT_Task,DT_FixedDUR2,RV_OK,TK_NotStart,721GR22150,W/P for garbage room,2306,488,0,120,0,1783.6,1783.6,120,1512,0,1512,,,,2009-02-19 08:00,2009-03-08 17:00,,2008-12-10 08:00,2008-12-27 17:00,2008-12-10 08:00,2008-12-27 17:00,2008-12-10 08:00,2008-12-27 17:00,,,,,PT_Normal,,,,,DKFbv7IFC0Ggi4abERdOgg,,,,N,0,0
2614,84513,829,11706,912,1,0,N,N,N,CP_Drtn,TT_Task,DT_FixedDUR2,RV_OK,TK_NotStart,721GR48050,Shaft plumpness & chipping,2306,488,0,48,0,256,256,48,8,0,8,,,,2008-12-22 08:00,2008-12-28 17:00,,2008-10-12 08:00,2008-10-18 17:00,2008-10-12 08:00,2008-10-18 17:00,2008-10-12 08:00,2008-10-18 17:00,,,,,PT_Normal,,,,,g/Y/wQaWVkeASaHbc5xD6g,,,,N,0,0
2615,84514,829,11706,912,1,0,N,N,N,CP_Drtn,TT_Task,DT_FixedDUR2,RV_OK,TK_NotStart,721GR48100,Brackets,2306,488,0,120,0,268,268,120,8,0,8,,,,2008-12-29 08:00,2009-01-14 17:00,,2008-10-19 08:00,2008-11-04 17:00,2008-10-19 08:00,2008-11-04 17:00,2008-10-19 08:00,2008-11-04 17:00,,,,,PT_Normal,,,,,Tl0yOJBaTUmJ0+iiMWhC/g,,,,N,0,0
2616,84515,829,11706,912,1,0,N,N,N,CP_Drtn,TT_Task,DT_FixedDUR2,RV_OK,TK_NotStart,721GR48150,Garbage chute installation,2306,488,0,120,0,528,528,120,8,0,8,,,,2009-01-10 08:00,2009-01-26 17:00,,2008-10-30 08:00,2008-11-16 17:00,2008-10-30 08:00,2008-11-16 17:00,2008-10-30 08:00,2008-11-16 17:00,,,,,PT_Normal,,,,,Ay7fMurit0Stj6HYt9on4Q,,,,N,0,0
2617,84516,829,11706,912,1,0,N,N,N,CP_Drtn,TT_Task,DT_FixedDUR2,RV_OK,TK_NotStart,721GR48250,Hooper doors & foot bedals,2306,488,0,120,0,264,264,120,24,0,24,,,,2009-03-21 08:00,2009-04-06 17:00,,2009-01-08 08:00,2009-01-25 17:00,2009-01-08 08:00,2009-01-25 17:00,2009-01-08 08:00,2009-01-25 17:00,,,,,PT_Normal,,,,,MTNL6wYafkCP7jMZyNx7Ww,,,,N,0,0
2618,84517,829,11706,912,1,0,N,N,N,CP_Drtn,TT_Task,DT_FixedDUR2,RV_OK,TK_NotStart,721GR48350,Compactors & trolleys,2306,488,176,48,0,120,120,48,32,0,32,,,,2009-03-31 08:00,2009-04-06 17:00,,2009-01-19 08:00,2009-01-25 17:00,2009-01-19 08:00,2009-01-25 17:00,2009-01-19 08:00,2009-01-25 17:00,,,,,PT_Normal,,,,,wuwASd8vuEGLQlBEpcu06A,,,,N,0,0
2619,84518,829,12602,912,1,0,N,N,N,CP_Drtn,TT_Task,DT_FixedDUR2,RV_OK,TK_NotStart,721GR58050,Fire fighting provisions,2296,488,0,120,0,450,450,120,0,0,0,,,,2009-01-10 08:00,2009-01-26 17:00,,2008-10-30 08:00,2008-11-16 17:00,2008-10-30 08:00,2008-11-16 17:00,2008-10-30 08:00,2008-11-16 17:00,,,,,PT_Normal,,,,,A9au2eudSUGVQ4O9I0dEPg,,,,N,0,0
2620,84519,829,11549,912,1,100,N,N,N,CP_Drtn,TT_Task,DT_FixedDUR2,RV_OK,TK_Complete,721GU12050,Columns & walls GU to 1L - Part 1,2306,24,0,0,5587.77,0,5587.77,32,167999.52,167999.52,0,,2008-06-19 08:00,2008-06-23 17:00,2008-10-06 08:00,2008-10-05 17:00,,2008-10-02 08:00,2008-10-01 17:00,,,2008-06-19 08:00,2008-06-23 17:00,,,,,PT_Normal,,,,,WWCWJF7TbUihvJjK4hC1HA,,,,N,5587.77,167999.52
2621,84520,829,11549,912,1,100,N,N,N,CP_Drtn,TT_Task,DT_FixedDUR2,RV_OK,TK_Complete,721GU12051,Columns & walls GU to 1L - Part 2,2306,24,0,0,5587.77,0,5587.77,32,167999.52,167999.52,0,,2008-06-29 08:00,2008-07-02 17:00,2008-10-06 08:00,2008-10-05 17:00,,2008-10-02 08:00,2008-10-01 17:00,,,2008-06-29 08:00,2008-07-02 17:00,,,,,PT_Normal,,,,,9BxK+emAl02VWV8yN/TmEw,,,,N,5587.77,167999.52
2622,84521,829,11549,912,1,100,N,N,N,CP_Drtn,TT_Task,DT_FixedDUR2,RV_OK,TK_Complete,721GU12052,Columns & walls GU to 1L - Middle Part,2306,24,0,0,9003.34,0,9003.34,32,271281.92,271281.92,0,,2008-06-28 08:00,2008-07-01 17:00,2008-10-06 08:00,2008-10-05 17:00,,2008-10-02 08:00,2008-10-01 17:00,,,2008-06-28 08:00,2008-07-01 17:00,,,,,PT_Normal,,,,,Zy47bQ9u/kWPzb1kHPpfqw,,,,N,9003.34,271281.92
2623,84522,829,11549,912,1,100,N,N,N,CP_Drtn,TT_Task,DT_FixedDUR2,RV_OK,TK_Complete,721GU12200,Slab @ 1L level - Part 1,2306,24,0,0,4957,0,4957,56,181794.24,181794.24,0,,2008-06-29 08:00,2008-07-06 17:00,2008-10-06 08:00,2008-10-05 17:00,,2008-10-02 08:00,2008-10-01 17:00,,,2008-06-29 08:00,2008-07-06 17:00,,,,,PT_Normal,,,,,BqmvyOXHMEGjzRUQ+OkV+Q,,,,N,4957,181794.24
2624,84523,829,11549,912,1,100,N,N,N,CP_Drtn,TT_Task,DT_FixedDUR2,RV_OK,TK_Complete,721GU12201,Slab @ 1L level - Part 2,2306,24,0,0,4957,0,4957,56,181794.24,181794.24,0,,2008-07-07 08:00,2008-07-14 17:00,2008-10-06 08:00,2008-10-05 17:00,,2008-10-02 08:00,2008-10-01 17:00,,,2008-07-07 08:00,2008-07-14 17:00,,,,,PT_Normal,,,,,ko7oSuVaSUmk5LcQD3pnsw,,,,N,4957,181794.24
2625,84524,829,11549,912,1,100,N,N,N,CP_Drtn,TT_Task,DT_FixedDUR2,RV_OK,TK_Complete,721GU12202,Slab @ 1L level - Middle Part,2306,24,0,0,5868.65,0,5868.65,56,215610,215610,0,,2008-07-06 08:00,2008-07-13 17:00,2008-10-06 08:00,2008-10-05 17:00,,2008-10-02 08:00,2008-10-01 17:00,,,2008-07-06 08:00,2008-07-13 17:00,,,,,PT_Normal,,,,,lcaPeDVn90i8KbYMYTInWg,,,,N,5868.65,215610
2626,84525,829,11549,912,1,100,N,N,N,CP_Drtn,TT_Task,DT_FixedDUR2,RV_OK,TK_Complete,721GU12250,Staircases GU to 1L,2306,208,0,0,999.88,0,999.88,32,18457.6,18457.6,0,,2008-07-15 08:00,2008-07-19 17:00,2008-11-02 08:00,2008-11-01 17:00,,2008-10-02 08:00,2008-10-01 17:00,,,2008-07-15 08:00,2008-07-19 17:00,,,,,PT_Normal,,,,,7kXDIdocYk6W38wucLeyvw,,,,N,999.88,18457.6
2627,84526,829,11628,912,1,100,N,N,N,CP_Drtn,TT_Task,DT_FixedDUR2,RV_OK,TK_Complete,721GU14050,Block works,2306,168,0,0,30371,0,37573.5,120,23048,30250.5,0,,2008-08-02 08:00,2008-08-18 17:00,2008-10-27 08:00,2008-10-26 17:00,,2008-10-02 08:00,2008-10-01 17:00,,,2008-08-02 08:00,2008-08-18 17:00,,,,,PT_Normal,,,,,a85HPRcz40qaDCs2TrMKHQ,,,,N,30371,30250.5
2628,84527,829,11420,912,1,100,N,N,N,CP_Drtn,TT_Task,DT_FixedDUR2,RV_OK,TK_Complete,721GU16050,Plaster works,2306,168,0,0,25467.5,0,25467.5,120,19880,19880,0,,2008-08-19 08:00,2008-09-04 17:00,2008-10-27 08:00,2008-10-26 17:00,,2008-10-02 08:00,2008-10-01 17:00,,,2008-08-19 08:00,2008-09-04 17:00,,,,,PT_Normal,,,,,LeS2u2Mb+Uyj8arWpaHTWw,,,,N,25467.5,19880
2629,84528,829,11420,912,1,100,N,N,N,CP_Drtn,TT_Task,DT_FixedDUR2,RV_OK,TK_Complete,721GU16051,Plaste works behind tiles,2306,208,0,0,8004.3,0,8004.3,120,6184,6184,0,,2008-08-25 08:00,2008-09-10 17:00,2008-11-02 08:00,2008-11-01 17:00,,2008-10-02 08:00,2008-10-01 17:00,,,2008-08-25 08:00,2008-09-10 17:00,,,,,PT_Normal,,,,,VyV8rzxC8E6KLTmAr4Q2fQ,,,,N,8004.3,6184
2630,84529,829,11521,912,1,100,N,N,N,CP_Drtn,TT_Task,DT_FixedDUR2,RV_OK,TK_Complete,721GU18050,Rendering works,2306,168,0,0,5683,0,5683,120,5000,5000,0,,2008-08-07 08:00,2008-08-24 17:00,2008-10-27 08:00,2008-10-26 17:00,,2008-10-02 08:00,2008-10-01 17:00,,,2008-08-07 08:00,2008-08-24 17:00,,,,,PT_Normal,,,,,pgXOa9NR6UC4WqpVZQ+rQg,,,,N,5683,5000
2631,84530,829,11521,912,1,100,N,N,N,CP_Drtn,TT_Task,DT_FixedDUR2,RV_OK,TK_Complete,721GU18100,Painting base coats,2306,168,0,0,27488,0,27488,120,24880,24880,0,,2008-08-27 08:00,2008-09-13 17:00,2008-10-27 08:00,2008-10-26 17:00,,2008-10-02 08:00,2008-10-01 17:00,,,2008-08-27 08:00,2008-09-13 17:00,,,,,PT_Normal,,,,,KCPEnkKtVkuyb1QbZy7j6w,,,,N,27488,24880
2632,84531,829,11521,912,1,0,N,N,N,CP_Drtn,TT_Task,DT_FixedDUR2,RV_OK,TK_NotStart,721GU18150,Painting 1st top coat for apartments,2306,584,0,72,0,17300.2,17300.2,72,16408,0,16408,,,,2009-01-18 08:00,2009-01-27 17:00,,2008-10-25 08:00,2008-11-03 17:00,2008-10-25 08:00,2008-11-03 17:00,2008-10-25 08:00,2008-11-03 17:00,,,,,PT_Normal,,,,,CvGNifvIG0K2XWKWpNrXOw,,,,N,0,0
2633,84532,829,11631,912,1,100,N,N,N,CP_Drtn,TT_Task,DT_FixedDUR2,RV_OK,TK_Complete,721GU20050,Floor tiles for apartments-dry area,2306,376,0,0,8036.4,0,8036.4,120,5864,5864,0,,2008-09-06 08:00,2008-09-22 17:00,2008-11-26 08:00,2008-11-25 17:00,,2008-10-02 08:00,2008-10-01 17:00,,,2008-09-06 08:00,2008-09-22 17:00,,,,,PT_Normal,,,,,/5CaKULUHkyUwpT38j1+dg,,,,N,8036.4,5864
2634,84533,829,11631,912,1,0,N,N,N,CP_Drtn,TT_Task,DT_FixedDUR2,RV_OK,TK_NotStart,721GU20070,Floor tiles for apartments-wet area,2306,208,0,120,0,3014.4,3014.4,120,2144,0,2144,,,,2008-11-09 08:00,2008-11-25 17:00,,2008-10-09 08:00,2008-10-26 17:00,2008-10-09 08:00,2008-10-26 17:00,2008-10-09 08:00,2008-10-26 17:00,,,,,PT_Normal,,,,,ZQzosu5RS0Gd7O3ZUz6ZOg,,,,N,0,0
2635,84534,829,11631,912,1,0,N,N,N,CP_Drtn,TT_Task,DT_FixedDUR2,RV_OK,TK_NotStart,721GU20110,Wall tiles for apartments-wet area,2306,336,40,120,0,8103.24,8103.24,120,5322.16,0,5322.16,,,,2008-11-27 08:00,2008-12-14 17:00,,2008-10-09 08:00,2008-10-26 17:00,2008-10-09 08:00,2008-10-26 17:00,2008-10-09 08:00,2008-10-26 17:00,,,,,PT_Normal,,,,,P6Mzl0ex30SUMIDJbQEwfA,,,,N,0,0
2636,84535,829,11423,912,1,100,N,N,N,CP_Drtn,TT_Task,DT_FixedDUR2,RV_OK,TK_Complete,721GU22150,W/P for for apartments,2306,256,0,0,2900.4,0,2900.4,120,2528,2528,0,,2008-08-19 08:00,2008-09-04 17:00,2008-11-09 08:00,2008-11-08 17:00,,2008-10-02 08:00,2008-10-01 17:00,,,2008-08-19 08:00,2008-09-04 17:00,,,,,PT_Normal,,,,,n1RRgE8qeEu21Meyvvlxmg,,,,N,2900.4,2528
2637,84536,829,11633,912,1,100,N,N,N,CP_Drtn,TT_Task,DT_FixedDUR2,RV_OK,TK_Complete,721GU24050,Aluminium doors & windows,2306,376,0,0,1656,0,1656,120,384,384,0,,2008-09-14 08:00,2008-09-30 17:00,2008-11-26 08:00,2008-11-25 17:00,,2008-10-02 08:00,2008-10-01 17:00,,,2008-09-14 08:00,2008-09-30 17:00,,,,,PT_Normal,,,,,ztuoXlLw8U+TKfyITunjPA,,,,N,1656,384
2638,84537,829,11633,912,1,0,N,N,N,CP_Drtn,TT_Task,DT_FixedDUR2,RV_OK,TK_NotStart,721GU24200,Balcony handrails,2306,168,128,120,0,2360,2360,120,1280,0,1280,,,,2008-11-26 08:00,2008-12-13 17:00,,2008-11-02 08:00,2008-11-18 17:00,2008-11-02 08:00,2008-11-18 17:00,2008-11-02 08:00,2008-11-18 17:00,,,,,PT_Normal,,,,,rUqwfkcLfkWjNC1qLgDdaA,,,,N,0,0
2639,84538,829,11634,912,1,0,N,N,N,CP_Drtn,TT_Task,DT_FixedDUR2,RV_OK,TK_NotStart,721GU30050,Wooden doors,2306,296,0,120,0,960,960,120,240,0,240,,,,2008-11-30 08:00,2008-12-16 17:00,,2008-10-18 08:00,2008-11-03 17:00,2008-10-18 08:00,2008-11-03 17:00,2008-10-18 08:00,2008-11-03 17:00,,,,,PT_Normal,,,,,gFTp0V9yUk+sZonK+yTlPA,,,,N,0,0
2640,84539,829,11426,912,1,0,N,N,N,CP_Drtn,TT_Task,DT_FixedDUR2,RV_OK,TK_NotStart,721GU32100,Vanity counters,2306,200,0,120,0,1968,1968,120,168,0,168,,,,2008-11-29 08:00,2008-12-15 17:00,,2008-10-30 08:00,2008-11-16 17:00,2008-10-30 08:00,2008-11-16 17:00,2008-10-30 08:00,2008-11-16 17:00,,,,,PT_Normal,,,,,LtdPXwqEE0yHC+TLesOlhA,,,,N,0,0
2641,84540,829,11426,912,1,0,N,N,N,CP_Drtn,TT_Task,DT_FixedDUR2,RV_OK,TK_NotStart,721GU32150,Wardrobes,2306,616,592,120,0,5832,5832,120,272,0,272,,,,2009-01-11 08:00,2009-01-27 17:00,,2008-10-13 08:00,2008-10-29 17:00,2008-10-13 08:00,2008-10-29 17:00,2008-10-13 08:00,2008-10-29 17:00,,,,,PT_Normal,,,,,U50pBt+tF0CK8rQYgcUv7w,,,,N,0,0
2642,84541,829,11636,912,1,6.7,N,N,N,CP_Drtn,TT_Task,DT_FixedDUR2,RV_OK,TK_Active,721GU34050,False ceiling works for apartments-dry area,2306,400,0,112,98.98,1386.14,1485.12,120,910.08,60.64,849.44,,2008-10-01 08:00,,2008-11-30 08:00,2008-12-15 17:00,,2008-10-02 08:00,2008-10-18 17:00,2008-10-02 08:00,2008-10-18 17:00,2008-10-01 08:00,2008-10-18 17:00,,,,,PT_Normal,,,,,VC8B3sMTfUOF6YhdiC65kw,,,,N,98.98,60.64
2643,84542,829,11636,912,1,6.7,N,N,N,CP_Drtn,TT_Task,DT_FixedDUR2,RV_OK,TK_Active,721GU34070,False ceiling works for apartments-wet area,2306,208,0,112,43.4,607.48,650.88,120,353.92,23.6,330.32,,2008-10-01 08:00,,2008-11-02 08:00,2008-11-17 17:00,,2008-10-02 08:00,2008-10-18 17:00,2008-10-02 08:00,2008-10-18 17:00,2008-10-01 08:00,2008-10-18 17:00,,,,,PT_Normal,,,,,14KXb7nOik+f0s82ZpDzZg,,,,N,43.4,23.6
2644,84543,829,11637,912,1,0,N,N,N,CP_Drtn,TT_Task,DT_FixedDUR2,RV_OK,TK_NotStart,721GU36050,Stone finishing top,2306,296,160,64,0,316,316,64,144,0,144,,,,2008-12-14 08:00,2008-12-22 17:00,,2008-11-01 08:00,2008-11-09 17:00,2008-11-01 08:00,2008-11-09 17:00,2008-11-01 08:00,2008-11-09 17:00,,,,,PT_Normal,,,,,Zkl4O/sTiEi1qm2Jhv8P7A,,,,N,0,0
2645,84544,829,11637,912,1,0,N,N,N,CP_Drtn,TT_Task,DT_FixedDUR2,RV_OK,TK_NotStart,721GU36100,Thresholds,2306,288,192,64,0,580,580,64,344,0,344,,,,2008-12-15 08:00,2008-12-23 17:00,,2008-11-03 08:00,2008-11-11 17:00,2008-11-03 08:00,2008-11-11 17:00,2008-11-03 08:00,2008-11-11 17:00,,,,,PT_Normal,,,,,x8CbOSODZEWfFntdEanDLw,,,,N,0,0
2646,84545,829,11429,912,1,100,N,N,N,CP_Drtn,TT_Task,DT_FixedDUR2,RV_OK,TK_Complete,721GU44050,Sub-frames,2306,168,0,0,600,0,600,120,240,240,0,,2008-08-11 08:00,2008-08-27 17:00,2008-10-27 08:00,2008-10-26 17:00,,2008-10-02 08:00,2008-10-01 17:00,,,2008-08-11 08:00,2008-08-27 17:00,,,,,PT_Normal,,,,,BZ6s6ONoeUq5o4rcnO0Mjw,,,,N,600,240
2647,84546,829,12441,912,1,100,N,N,N,CP_Drtn,TT_Task,DT_FixedDUR2,RV_OK,TK_Complete,721GU50100,MEP skeleton embedded provisions,2296,24,0,0,512,0,512,72,,,0,,2008-06-19 08:00,2008-06-29 17:00,2008-10-06 08:00,2008-10-05 17:00,,2008-10-02 08:00,2008-10-01 17:00,,,2008-06-19 08:00,2008-06-29 17:00,,,,,PT_Normal,,,,,X52YMKDzWEe8oQc05nTt/A,,,,N,512,0
2648,84547,829,12234,912,1,100,N,N,N,CP_Drtn,TT_Task,DT_FixedDUR2,RV_OK,TK_Complete,721GU52050,A/C duct works,2296,208,0,0,831,0,831,160,,,0,,2008-08-13 08:00,2008-09-04 17:00,2008-11-02 08:00,2008-11-01 17:00,,2008-10-02 08:00,2008-10-01 17:00,,,2008-08-13 08:00,2008-09-04 17:00,,,,,PT_Normal,,,,,KRY3yuoi30W3Uj3coLap9w,,,,N,831,0
2649,84548,829,12234,912,1,100,N,N,N,CP_Drtn,TT_Task,DT_FixedDUR2,RV_OK,TK_Complete,721GU52100,Chilled water pipe works,2296,208,0,0,787,0,787,72,,,0,,2008-08-26 08:00,2008-09-04 17:00,2008-11-02 08:00,2008-11-01 17:00,,2008-10-02 08:00,2008-10-01 17:00,,,2008-08-26 08:00,2008-09-04 17:00,,,,,PT_Normal,,,,,Oi9Q6ZHM/0ydKB0Ih7Npqw,,,,N,787,0
2650,84549,829,12444,912,1,100,N,N,N,CP_Drtn,TT_Task,DT_FixedDUR2,RV_OK,TK_Complete,721GU52150,FCU's hanging,2296,208,0,0,935.2,0,935.2,64,,,0,,2008-08-25 08:00,2008-09-02 17:00,2008-11-02 08:00,2008-11-01 17:00,,2008-10-02 08:00,2008-10-01 17:00,,,2008-08-25 08:00,2008-09-02 17:00,,,,,PT_Normal,,,,,KmBZP271206d7sA7/qxbjg,,,,N,935.2,0
2651,84550,829,12444,912,1,100,N,N,N,CP_Drtn,TT_Task,DT_FixedDUR2,RV_OK,TK_Complete,721GU52300,FCU's assembly & duct connections,2296,208,0,0,991.2,0,991.2,120,,,0,,2008-09-09 08:00,2008-09-25 17:00,2008-11-02 08:00,2008-11-01 17:00,,2008-10-02 08:00,2008-10-01 17:00,,,2008-09-09 08:00,2008-09-25 17:00,,,,,PT_Normal,,,,,KzyeoucXJUWmR519WT2eMA,,,,N,991.2,0
2652,84551,829,12444,912,1,0,N,N,N,CP_Drtn,TT_Task,DT_FixedDUR2,RV_OK,TK_NotStart,721GU52350,Grills & diffusers,2296,632,528,64,0,856,856,64,0,0,0,,,,2009-01-19 08:00,2009-01-27 17:00,,2008-10-19 08:00,2008-10-27 17:00,2008-10-19 08:00,2008-10-27 17:00,2008-10-19 08:00,2008-10-27 17:00,,,,,PT_Normal,,,,,s5UZJl2Od0SZ5S6dOfiuuQ,,,,N,0,0
2653,84552,829,12234,912,1,100,N,N,N,CP_Drtn,TT_Task,DT_FixedDUR2,RV_OK,TK_Complete,721GU52550,A/C duct risers,2296,208,0,0,1626,0,1626,64,,,0,,2008-08-31 08:00,2008-09-08 17:00,2008-11-02 08:00,2008-11-01 17:00,,2008-10-02 08:00,2008-10-01 17:00,,,2008-08-31 08:00,2008-09-08 17:00,,,,,PT_Normal,,,,,TEbWsl4iAkiPKXu70IQ66w,,,,N,1626,0
2654,84553,829,12237,912,1,100,N,N,N,CP_Drtn,TT_Task,DT_FixedDUR2,RV_OK,TK_Complete,721GU54050,Chasing & Pex pipe works,2296,208,0,0,395,0,395,120,,,0,,2008-08-13 08:00,2008-08-30 17:00,2008-11-02 08:00,2008-11-01 17:00,,2008-10-02 08:00,2008-10-01 17:00,,,2008-08-13 08:00,2008-08-30 17:00,,,,,PT_Normal,,,,,Tw8OyUYs3kWkKbMBVn90FA,,,,N,395,0
2655,84554,829,12238,912,1,100,N,N,N,CP_Drtn,TT_Task,DT_FixedDUR2,RV_OK,TK_Complete,721GU54250,Bathtubs,2296,376,0,0,216.8,0,313.6,120,,96.8,0,,2008-08-25 08:00,2008-09-10 17:00,2008-11-26 08:00,2008-11-25 17:00,,2008-10-02 08:00,2008-10-01 17:00,,,2008-08-25 08:00,2008-09-10 17:00,,,,,PT_Normal,,,,,FSW/Nt+xz0KLy7QfQLmKBw,,,,N,216.8,96.8
2656,84555,829,12238,912,1,100,N,N,N,CP_Drtn,TT_Task,DT_FixedDUR2,RV_OK,TK_Complete,721GU54300,Water heater,2296,208,0,0,310.4,0,310.4,64,,,0,,2008-08-31 08:00,2008-09-08 17:00,2008-11-02 08:00,2008-11-01 17:00,,2008-10-02 08:00,2008-10-01 17:00,,,2008-08-31 08:00,2008-09-08 17:00,,,,,PT_Normal,,,,,WxcJi06FAkaEHKFe4NHcnQ,,,,N,310.4,0
2657,84556,829,12238,912,1,100,N,N,N,CP_Drtn,TT_Task,DT_FixedDUR2,RV_OK,TK_Complete,721GU54350,Over head pipe assembly & vlave connections,2296,208,0,0,237,0,237,72,,,0,,2008-08-31 08:00,2008-09-09 17:00,2008-11-02 08:00,2008-11-01 17:00,,2008-10-02 08:00,2008-10-01 17:00,,,2008-08-31 08:00,2008-09-09 17:00,,,,,PT_Normal,,,,,GSMIK7KRHUG0qmHsfGlgAA,,,,N,237,0
2658,84557,829,12448,912,1,0,N,N,N,CP_Drtn,TT_Task,DT_FixedDUR2,RV_OK,TK_NotStart,721GU54400,Sanitary fixures,2296,296,0,120,0,516,516,120,0,0,0,,,,2008-12-06 08:00,2008-12-22 17:00,,2008-10-23 08:00,2008-11-09 17:00,2008-10-23 08:00,2008-11-09 17:00,2008-10-23 08:00,2008-11-09 17:00,,,,,PT_Normal,,,,,ksvzSI6tvkyFVQvvPsCHJw,,,,N,0,0
2659,84558,829,12448,912,1,0,N,N,N,CP_Drtn,TT_Task,DT_FixedDUR2,RV_OK,TK_NotStart,721GU54450,Mirrors,2296,200,144,120,0,186,186,120,0,0,0,,,,2008-12-04 08:00,2008-12-21 17:00,,2008-11-05 08:00,2008-11-22 17:00,2008-11-05 08:00,2008-11-22 17:00,2008-11-05 08:00,2008-11-22 17:00,,,,,PT_Normal,,,,,cDuK1PeBL0yCklWSw+/MwA,,,,N,0,0
2660,84559,829,12238,912,1,100,N,N,N,CP_Drtn,TT_Task,DT_FixedDUR2,RV_OK,TK_Complete,721GU54500,Concealed Flushing Cistern,2296,376,0,0,186,0,252,120,,66,0,,2008-08-25 08:00,2008-09-10 17:00,2008-11-26 08:00,2008-11-25 17:00,,2008-10-02 08:00,2008-10-01 17:00,,,2008-08-25 08:00,2008-09-10 17:00,,,,,PT_Normal,,,,,weUxs9bb50SdzZWKEUZN5Q,,,,N,186,66
2661,84560,829,12241,912,1,100,N,N,N,CP_Drtn,TT_Task,DT_FixedDUR2,RV_OK,TK_Complete,721GU56050,Chasing and installation of drainage pipes,2296,168,0,0,285,0,285,120,,,0,,2008-08-13 08:00,2008-08-30 17:00,2008-10-27 08:00,2008-10-26 17:00,,2008-10-02 08:00,2008-10-01 17:00,,,2008-08-13 08:00,2008-08-30 17:00,,,,,PT_Normal,,,,,IW+f3zp/mE+9HiwYh/Ez3w,,,,N,285,0
2662,84561,829,12241,912,1,100,N,N,N,CP_Drtn,TT_Task,DT_FixedDUR2,RV_OK,TK_Complete,721GU56100,Drainage riser pipes,2296,168,0,0,284,0,284,64,,,0,,2008-08-10 08:00,2008-08-18 17:00,2008-10-27 08:00,2008-10-26 17:00,,2008-10-02 08:00,2008-10-01 17:00,,,2008-08-10 08:00,2008-08-18 17:00,,,,,PT_Normal,,,,,equFYCT5wkedkZoPh66JbQ,,,,N,284,0
2663,84562,829,12451,912,1,100,N,N,N,CP_Drtn,TT_Task,DT_FixedDUR2,RV_OK,TK_Complete,721GU56150,Over head drainage pipe works,2296,208,0,0,257.6,0,257.6,64,,,0,,2008-09-22 08:00,2008-09-30 17:00,2008-11-02 08:00,2008-11-01 17:00,,2008-10-02 08:00,2008-10-01 17:00,,,2008-09-22 08:00,2008-09-30 17:00,,,,,PT_Normal,,,,,R3u/CNh9sUymz0DgoZHlEQ,,,,N,257.6,0
2664,84563,829,12244,912,1,100,N,N,N,CP_Drtn,TT_Task,DT_FixedDUR2,RV_OK,TK_Complete,721GU58050,Fire fighting pipe works,2296,208,0,0,292,0,292,72,,,0,,2008-08-19 08:00,2008-08-28 17:00,2008-11-02 08:00,2008-11-01 17:00,,2008-10-02 08:00,2008-10-01 17:00,,,2008-08-19 08:00,2008-08-28 17:00,,,,,PT_Normal,,,,,/t7uXmpOxUits7uHfRabdw,,,,N,292,0
2665,84564,829,12454,912,1,0,N,N,N,CP_Drtn,TT_Task,DT_FixedDUR2,RV_OK,TK_NotStart,721GU58250,Sprinkler heads,2296,632,528,64,0,394,394,64,0,0,0,,,,2009-01-19 08:00,2009-01-27 17:00,,2008-10-19 08:00,2008-10-27 17:00,2008-10-19 08:00,2008-10-27 17:00,2008-10-19 08:00,2008-10-27 17:00,,,,,PT_Normal,,,,,ltMYWwpA5kmVMtKulH96YA,,,,N,0,0
2666,84565,829,12456,912,1,100,N,N,N,CP_Drtn,TT_Task,DT_FixedDUR2,RV_OK,TK_Complete,721GU66050,Chasing and installation of conduits,2296,168,0,0,1528,0,1528,120,,,0,,2008-08-11 08:00,2008-08-27 17:00,2008-10-27 08:00,2008-10-26 17:00,,2008-10-02 08:00,2008-10-01 17:00,,,2008-08-11 08:00,2008-08-27 17:00,,,,,PT_Normal,,,,,B4li3bS4Xkqsd2ks/P4kSw,,,,N,1528,0
2667,84566,829,12249,912,1,100,N,N,N,CP_Drtn,TT_Task,DT_FixedDUR2,RV_OK,TK_Complete,721GU68050,Single core wiring,2296,208,0,0,1339.2,0,1339.2,72,,,0,,2008-08-13 08:00,2008-08-23 17:00,2008-11-02 08:00,2008-11-01 17:00,,2008-10-02 08:00,2008-10-01 17:00,,,2008-08-13 08:00,2008-08-23 17:00,,,,,PT_Normal,,,,,WiqHwPMfLU2/mkr8ZR72Wg,,,,N,1339.2,0
2668,84567,829,12459,912,1,0,N,N,N,CP_Drtn,TT_Task,DT_FixedDUR2,RV_OK,TK_NotStart,721GU68350,Light Fittings,2296,616,592,120,0,1035.2,1035.2,120,0,0,0,,,,2009-01-11 08:00,2009-01-27 17:00,,2008-10-13 08:00,2008-10-29 17:00,2008-10-13 08:00,2008-10-29 17:00,2008-10-13 08:00,2008-10-29 17:00,,,,,PT_Normal,,,,,4pc3EbJb9kuGrXmEcYfvZw,,,,N,0,0
2669,84568,829,12459,912,1,0,N,N,N,CP_Drtn,TT_Task,DT_FixedDUR2,RV_OK,TK_NotStart,721GU68600,Switches & sockets,2296,584,560,72,0,494.4,494.4,72,0,0,0,,,,2009-01-18 08:00,2009-01-27 17:00,,2008-10-25 08:00,2008-11-03 17:00,2008-10-25 08:00,2008-11-03 17:00,2008-10-25 08:00,2008-11-03 17:00,,,,,PT_Normal,,,,,fqcl1yldCk6TIlsTx1VmGw,,,,N,0,0
2670,84569,829,12252,912,1,100,N,N,N,CP_Drtn,TT_Task,DT_FixedDUR2,RV_OK,TK_Complete,721GU74050,Fire alarm cables,2296,208,0,0,380.8,0,380.8,64,,,0,,2008-08-19 08:00,2008-08-27 17:00,2008-11-02 08:00,2008-11-01 17:00,,2008-10-02 08:00,2008-10-01 17:00,,,2008-08-19 08:00,2008-08-27 17:00,,,,,PT_Normal,,,,,vHBr3JUvUUu/6tjO6evViQ,,,,N,380.8,0
2671,84570,829,12462,912,1,0,N,N,N,CP_Drtn,TT_Task,DT_FixedDUR2,RV_OK,TK_NotStart,721GU74100,Fire alarm fittings,2296,616,512,64,0,116.8,116.8,64,0,0,0,,,,2009-01-19 08:00,2009-01-27 17:00,,2008-10-21 08:00,2008-10-29 17:00,2008-10-21 08:00,2008-10-29 17:00,2008-10-21 08:00,2008-10-29 17:00,,,,,PT_Normal,,,,,guW6X50fe0iT7sKGfq+Gcg,,,,N,0,0
2672,84571,829,12255,912,1,100,N,N,N,CP_Drtn,TT_Task,DT_FixedDUR2,RV_OK,TK_Complete,721GU76050,Structured cabling,2296,168,0,0,345.6,0,345.6,64,,,0,,2008-09-16 08:00,2008-09-24 17:00,2008-10-27 08:00,2008-10-26 17:00,,2008-10-02 08:00,2008-10-01 17:00,,,2008-09-16 08:00,2008-09-24 17:00,,,,,PT_Normal,,,,,Jvcobf+AhUie7UYOYcctlw,,,,N,345.6,0
2673,84572,829,11876,912,1,46.7,N,N,N,CP_Drtn,TT_Task,DT_FixedDUR2,RV_OK,TK_Active,721PE46050,Jambs & headers,2306,528,0,64,436.78,499.22,936,120,16,7.44,8.56,,2008-09-24 08:00,,2008-12-18 08:00,2008-12-27 17:00,,2008-10-02 08:00,2008-10-11 17:00,2008-10-02 08:00,2008-10-11 17:00,2008-09-24 08:00,2008-10-11 17:00,,,,,PT_Normal,,,,,BmjBQe7NQEOSKHlxG7lMjw,,,,N,436.78,7.44
2674,84573,829,11876,912,1,0,N,N,N,CP_Drtn,TT_Task,DT_FixedDUR2,RV_OK,TK_NotStart,721PE46100,Brackets & seperators,2306,528,0,120,0,536,536,120,16,0,16,,,,2008-12-28 08:00,2009-01-13 17:00,,2008-10-12 08:00,2008-10-28 17:00,2008-10-12 08:00,2008-10-28 17:00,2008-10-12 08:00,2008-10-28 17:00,,,,,PT_Normal,,,,,SPFGn1Jv6Eex1qUqI5P0jw,,,,N,0,0
2675,84574,829,11876,912,1,0,N,N,N,CP_Drtn,TT_Task,DT_FixedDUR2,RV_OK,TK_NotStart,721PE46150,Guide rails,2306,528,0,120,0,536,536,120,16,0,16,,,,2009-01-14 08:00,2009-01-31 17:00,,2008-10-29 08:00,2008-11-15 17:00,2008-10-29 08:00,2008-11-15 17:00,2008-10-29 08:00,2008-11-15 17:00,,,,,PT_Normal,,,,,J7zwvqbA4EKmeAUY+32joA,,,,N,0,0
2676,84575,829,11876,912,1,0,N,N,N,CP_Drtn,TT_Task,DT_FixedDUR2,RV_OK,TK_NotStart,721PE46200,Machine room works,2306,528,0,120,0,536,536,120,16,0,16,,,,2009-01-26 08:00,2009-02-11 17:00,,2008-11-10 08:00,2008-11-26 17:00,2008-11-10 08:00,2008-11-26 17:00,2008-11-10 08:00,2008-11-26 17:00,,,,,PT_Normal,,,,,2bwgFotZbEi9pjfyrv2JWw,,,,N,0,0
2677,84576,829,11876,912,1,0,N,N,N,CP_Drtn,TT_Task,DT_FixedDUR2,RV_OK,TK_NotStart,721PE46250,Cabin works,2306,528,0,120,0,472,472,120,0,0,0,,,,2009-02-07 08:00,2009-02-23 17:00,,2008-11-22 08:00,2008-12-08 17:00,2008-11-22 08:00,2008-12-08 17:00,2008-11-22 08:00,2008-12-08 17:00,,,,,PT_Normal,,,,,mGfDRc18mkSWiakafY6RvA,,,,N,0,0
2678,84577,829,11876,912,1,0,N,N,N,CP_Drtn,TT_Task,DT_FixedDUR2,RV_OK,TK_NotStart,721PE46300,"Ropping, hatch doors, hoistways & wirring",2306,528,40,120,0,616,616,120,16,0,16,,,,2009-02-18 08:00,2009-03-07 17:00,,2008-12-03 08:00,2008-12-20 17:00,2008-12-03 08:00,2008-12-20 17:00,2008-12-03 08:00,2008-12-20 17:00,,,,,PT_Normal,,,,,7sNI2s5EP0irTy5qYOPOXQ,,,,N,0,0
2679,84578,829,11350,912,1,100,N,N,N,CP_Drtn,TT_Task,DT_FixedDUR2,RV_OK,TK_Complete,721RF12350,Roof Parapets,2306,216,0,0,8972.4,0,8972.4,32,99744,99744,0,,2008-09-20 08:00,2008-09-23 17:00,2008-11-03 08:00,2008-11-02 17:00,,2008-10-02 08:00,2008-10-01 17:00,,,2008-09-20 08:00,2008-09-23 17:00,,,,,PT_Normal,,,,,t4YYHroSuUaquQeR60BVHA,,,,N,8972.4,99744
2680,84579,829,11696,912,1,0,N,N,N,CP_Drtn,TT_Task,DT_FixedDUR2,RV_OK,TK_NotStart,721RF22200,Roof light weight concreting & angle fillet,2306,208,0,72,0,17722,17722,72,14120,0,14120,,,,2008-11-12 08:00,2008-11-22 17:00,,2008-10-13 08:00,2008-10-22 17:00,2008-10-13 08:00,2008-10-22 17:00,2008-10-13 08:00,2008-10-22 17:00,,,,,PT_Normal,,,,,6pj1M9Ddzkunc2USwOE1Aw,,,,N,0,0
2681,84580,829,11696,912,1,0,N,N,N,CP_Drtn,TT_Task,DT_FixedDUR2,RV_OK,TK_NotStart,721RF22250,Roof membrane,2306,208,0,72,0,17016,17016,72,14120,0,14120,,,,2008-11-23 08:00,2008-12-02 17:00,,2008-10-23 08:00,2008-11-02 17:00,2008-10-23 08:00,2008-11-02 17:00,2008-10-23 08:00,2008-11-02 17:00,,,,,PT_Normal,,,,,heZiR8DitUmwb5776Xd/mg,,,,N,0,0
2682,84581,829,11696,912,1,0,N,N,N,CP_Drtn,TT_Task,DT_FixedDUR2,RV_OK,TK_NotStart,721RF22300,Polystyrene insulation & seperation layers,2306,576,0,64,0,17008,17008,64,14120,0,14120,,,,2009-01-26 08:00,2009-02-03 17:00,,2008-11-03 08:00,2008-11-11 17:00,2008-11-03 08:00,2008-11-11 17:00,2008-11-03 08:00,2008-11-11 17:00,,,,,PT_Normal,,,,,bZS1EU2pr0SbHlD6K3m1mg,,,,N,0,0
2683,84582,829,11696,912,1,0,N,N,N,CP_Drtn,TT_Task,DT_FixedDUR2,RV_OK,TK_NotStart,721RF22350,Concrete tiles,2306,576,0,80,0,16330,16330,80,13000,0,13000,,,,2009-02-07 08:00,2009-02-17 17:00,,2008-11-15 08:00,2008-11-25 17:00,2008-11-15 08:00,2008-11-25 17:00,2008-11-15 08:00,2008-11-25 17:00,,,,,PT_Normal,,,,,n+4izAH2+02XxZZw7dn4Eg,,,,N,0,0
2684,84583,829,11696,912,1,0,N,N,N,CP_Drtn,TT_Task,DT_FixedDUR2,RV_OK,TK_NotStart,721RF22400,Gravel fill,2306,856,544,48,0,1280,1280,48,1120,0,1120,,,,2009-03-31 08:00,2009-04-06 17:00,,2008-11-26 08:00,2008-12-02 17:00,2008-11-26 08:00,2008-12-02 17:00,2008-11-26 08:00,2008-12-02 17:00,,,,,PT_Normal,,,,,qGP8Xi+0u0CGG+lSVF/+gw,,,,N,0,0
2685,84584,829,11696,912,1,0,N,N,N,CP_Drtn,TT_Task,DT_FixedDUR2,RV_OK,TK_NotStart,721RF22450,Aluminium flashing,2306,840,528,64,0,3256.2,3256.2,64,2776,0,2776,,,,2009-03-29 08:00,2009-04-06 17:00,,2008-11-26 08:00,2008-12-04 17:00,2008-11-26 08:00,2008-12-04 17:00,2008-11-26 08:00,2008-12-04 17:00,,,,,PT_Normal,,,,,sjOcffb3/EataB6St47zwg,,,,N,0,0
2686,84585,829,11588,912,1,0,N,N,N,CP_Drtn,TT_Task,DT_FixedDUR2,RV_OK,TK_NotStart,721RF24300,Aluminium framing for roof towers,2306,840,528,64,0,768,768,64,64,0,64,,,,2009-03-29 08:00,2009-04-06 17:00,,2008-11-26 08:00,2008-12-04 17:00,2008-11-26 08:00,2008-12-04 17:00,2008-11-26 08:00,2008-12-04 17:00,,,,,PT_Normal,,,,,RWFoxxBunU2pOk/0XKQgxg,,,,N,0,0
2687,84586,829,11489,912,1,0,N,N,N,CP_Drtn,TT_Task,DT_FixedDUR2,RV_OK,TK_NotStart,721RF44250,Roof upstands & equipement foundations,2306,208,0,64,0,3979.76,3979.76,64,608,0,608,,,,2008-11-03 08:00,2008-11-11 17:00,,2008-10-04 08:00,2008-10-12 17:00,2008-10-04 08:00,2008-10-12 17:00,2008-10-04 08:00,2008-10-12 17:00,,,,,PT_Normal,,,,,jI37sZ+ubUq9mS7IrORKIQ,,,,N,0,0
2688,84587,829,11489,912,1,87.5,N,N,N,CP_Drtn,TT_Task,DT_FixedDUR2,RV_OK,TK_Active,721RF44350,Roof tower concrete elements,2306,216,8,8,437.15,62.45,499.6,64,64,56,8,,2008-09-24 08:00,,2008-11-03 08:00,2008-11-03 17:00,,2008-10-02 08:00,2008-10-02 17:00,2008-10-02 08:00,2008-10-02 17:00,2008-09-24 08:00,2008-10-02 17:00,,,,,PT_Normal,,,,,9KcEWE99tEaij0S0j4wq6A,,,,N,437.15,56
2689,84588,829,12597,912,1,0,N,N,N,CP_Drtn,TT_Task,DT_FixedDUR2,RV_OK,TK_NotStart,721RF52400,FAHU's & fans,2296,576,272,120,0,1836,1836,120,0,0,0,,,,2009-02-09 08:00,2009-02-25 17:00,,2008-11-17 08:00,2008-12-03 17:00,2008-11-17 08:00,2008-12-03 17:00,2008-11-17 08:00,2008-12-03 17:00,,,,,PT_Normal,,,,,TgFAmXKzpE66g/Fp/rJ9pg,,,,N,0,0
2690,84589,829,12599,912,1,0,N,N,N,CP_Drtn,TT_Task,DT_FixedDUR2,RV_OK,TK_NotStart,721RF68800,Lighting protection system,2296,344,56,64,0,328,328,64,0,0,0,,,,2008-12-07 08:00,2008-12-15 17:00,,2008-10-18 08:00,2008-10-26 17:00,2008-10-18 08:00,2008-10-26 17:00,2008-10-18 08:00,2008-10-26 17:00,,,,,PT_Normal,,,,,DxXaaeuoUkuAInM2O+pufg,,,,N,0,0
2691,84590,829,11491,912,1,0,N,N,N,CP_Drtn,TT_Task,DT_FixedDUR2,RV_OK,TK_NotStart,721ST18150,Painting 1st top coat,2306,512,200,120,0,12972,12972,120,12240,0,12240,,,,2009-03-21 08:00,2009-04-06 17:00,,2009-01-05 08:00,2009-01-21 17:00,2009-01-05 08:00,2009-01-21 17:00,2009-01-05 08:00,2009-01-21 17:00,,,,,PT_Normal,,,,,Kc8j1/Q4N06t7ZTqB1btxw,,,,N,0,0
2692,84591,829,11701,912,1,0,N,N,N,CP_Drtn,TT_Task,DT_FixedDUR2,RV_OK,TK_NotStart,721ST20050,Floor tiles for staircases,2306,512,0,120,0,1848,1848,120,1280,0,1280,,,,2009-02-02 08:00,2009-02-18 17:00,,2008-11-19 08:00,2008-12-06 17:00,2008-11-19 08:00,2008-12-06 17:00,2008-11-19 08:00,2008-12-06 17:00,,,,,PT_Normal,,,,,yP0cYBELdEePTpFo6sAmvw,,,,N,0,0
2693,84592,829,11701,912,1,0,N,N,N,CP_Drtn,TT_Task,DT_FixedDUR2,RV_OK,TK_NotStart,721ST20150,Treads & risers,2306,512,0,120,0,4320,4320,120,2800,0,2800,,,,2009-01-10 08:00,2009-01-26 17:00,,2008-10-27 08:00,2008-11-12 17:00,2008-10-27 08:00,2008-11-12 17:00,2008-10-27 08:00,2008-11-12 17:00,,,,,PT_Normal,,,,,c1e8ddz8NU26Hcs5w2XfLA,,,,N,0,0
2694,84593,829,11702,912,1,0,N,N,N,CP_Drtn,TT_Task,DT_FixedDUR2,RV_OK,TK_NotStart,721ST24350,Staircase handrail,2306,512,0,120,0,3578,3578,120,1976,0,1976,,,,2009-02-25 08:00,2009-03-14 17:00,,2008-12-13 08:00,2008-12-29 17:00,2008-12-13 08:00,2008-12-29 17:00,2008-12-13 08:00,2008-12-29 17:00,,,,,PT_Normal,,,,,BOs1FI0q/0WMGmtikSxrSg,,,,N,0,0
2695,84594,829,10664,912,1,0,N,N,N,CP_Drtn,TT_Task,DT_FixedDUR2,RV_OK,TK_NotStart,7221L00000,Pre-Snagging & Disnagging for duplexes,2296,40,0,120,0,420,420,120,0,0,0,,,,2009-01-17 08:00,2009-02-02 17:00,,2009-01-11 08:00,2009-01-27 17:00,2009-01-11 08:00,2009-01-27 17:00,2009-01-11 08:00,2009-01-27 17:00,,,,,PT_Normal,,,,,NxpsQqd81kORBPCGgimMMA,,,,N,0,0
2696,84595,829,10664,912,1,0,N,N,N,CP_Drtn,TT_Task,DT_FixedDUR2,RV_OK,TK_NotStart,7221L00002,Pre-Snagging & Disnagging for corrid & Srv rooms,2296,176,0,64,0,214,214,64,0,0,0,,,,2009-02-25 08:00,2009-03-05 17:00,,2009-01-31 08:00,2009-02-08 17:00,2009-01-31 08:00,2009-02-08 17:00,2009-01-31 08:00,2009-02-08 17:00,,,,,PT_Normal,,,,,lIFhlvL7EECMhVM25MF1mA,,,,N,0,0
2697,84596,829,11357,912,1,100,N,N,N,CP_Drtn,TT_Task,DT_FixedDUR2,RV_OK,TK_Complete,7221L12050,Columns & walls 1L to 1U - Part 1,2306,24,0,0,3408.26,0,3408.26,32,102126.4,102126.4,0,,2008-07-19 08:00,2008-07-22 17:00,2008-10-06 08:00,2008-10-05 17:00,,2008-10-02 08:00,2008-10-01 17:00,,,2008-07-19 08:00,2008-07-22 17:00,,,,,PT_Normal,,,,,aCQ1l8P++EODyoTiFCScgw,,,,N,3408.26,102126.4
2698,84597,829,11357,912,1,100,N,N,N,CP_Drtn,TT_Task,DT_FixedDUR2,RV_OK,TK_Complete,7221L12051,Columns & walls 1L to 1U - Part 2,2306,24,0,0,3408.26,0,3408.26,32,102126.4,102126.4,0,,2008-07-27 08:00,2008-07-30 17:00,2008-10-06 08:00,2008-10-05 17:00,,2008-10-02 08:00,2008-10-01 17:00,,,2008-07-27 08:00,2008-07-30 17:00,,,,,PT_Normal,,,,,gIFTqPkjlUSCPedO4KTnDg,,,,N,3408.26,102126.4
2699,84598,829,11357,912,1,100,N,N,N,CP_Drtn,TT_Task,DT_FixedDUR2,RV_OK,TK_Complete,7221L12052,Columns & walls 1L to 1U - Middle Part,2306,24,0,0,7073.11,0,7073.11,32,212979.36,212979.36,0,,2008-07-26 08:00,2008-07-29 17:00,2008-10-06 08:00,2008-10-05 17:00,,2008-10-02 08:00,2008-10-01 17:00,,,2008-07-26 08:00,2008-07-29 17:00,,,,,PT_Normal,,,,,dAUhn/8i8Uy5JAW8yHisOA,,,,N,7073.11,212979.36
2700,84599,829,11357,912,1,100,N,N,N,CP_Drtn,TT_Task,DT_FixedDUR2,RV_OK,TK_Complete,7221L12200,Slab @ 1U level - Part 1,2306,24,0,0,1938.1,0,1938.1,56,69809.52,69809.52,0,,2008-07-27 08:00,2008-08-04 17:00,2008-10-06 08:00,2008-10-05 17:00,,2008-10-02 08:00,2008-10-01 17:00,,,2008-07-27 08:00,2008-08-04 17:00,,,,,PT_Normal,,,,,OScxqyyxZ0qOj0lGsNVy+w,,,,N,1938.1,69809.52
2701,84600,829,11357,912,1,100,N,N,N,CP_Drtn,TT_Task,DT_FixedDUR2,RV_OK,TK_Complete,7221L12201,Slab @ 1U level - Part 2,2306,24,0,0,1938.1,0,1938.1,56,69809.52,69809.52,0,,2008-08-05 08:00,2008-08-12 17:00,2008-10-06 08:00,2008-10-05 17:00,,2008-10-02 08:00,2008-10-01 17:00,,,2008-08-05 08:00,2008-08-12 17:00,,,,,PT_Normal,,,,,yF/3PoGepkO8HXw0JNJwHQ,,,,N,1938.1,69809.52
2702,84601,829,11357,912,1,100,N,N,N,CP_Drtn,TT_Task,DT_FixedDUR2,RV_OK,TK_Complete,7221L12202,Slab @ 1U level - Middle Part,2306,24,0,0,2781.47,0,2781.47,56,101094.8,101094.8,0,,2008-08-04 08:00,2008-08-11 17:00,2008-10-06 08:00,2008-10-05 17:00,,2008-10-02 08:00,2008-10-01 17:00,,,2008-08-04 08:00,2008-08-11 17:00,,,,,PT_Normal,,,,,lfcSdkYzIkevYdsp4jew/Q,,,,N,2781.47,101094.8
2703,84602,829,11357,912,1,100,N,N,N,CP_Drtn,TT_Task,DT_FixedDUR2,RV_OK,TK_Complete,7221L12250,Staircases 1L to 1U,2306,208,0,0,991.88,0,991.88,24,18457.6,18457.6,0,,2008-08-13 08:00,2008-08-16 17:00,2008-11-02 08:00,2008-11-01 17:00,,2008-10-02 08:00,2008-10-01 17:00,,,2008-08-13 08:00,2008-08-16 17:00,,,,,PT_Normal,,,,,AaNOyTbkgUe0YP9+WPzj+A,,,,N,991.88,18457.6
2704,84603,829,11743,912,1,100,N,N,N,CP_Drtn,TT_Task,DT_FixedDUR2,RV_OK,TK_Complete,7221L14050,Block works,2306,40,0,0,24323,0,30085.5,120,18440,24202.5,0,,2008-09-06 08:00,2008-09-22 17:00,2008-10-08 08:00,2008-10-07 17:00,,2008-10-02 08:00,2008-10-01 17:00,,,2008-09-06 08:00,2008-09-22 17:00,,,,,PT_Normal,,,,,gP+VWYFeMUuLdHJF2wSFog,,,,N,24323,24202.5
2705,84604,829,11744,912,1,53.3,N,N,N,CP_Drtn,TT_Task,DT_FixedDUR2,RV_OK,TK_Active,7221L16050,Plaster works,2306,40,0,56,13005.81,11380.09,24385.9,120,19032,10150.4,8881.6,,2008-09-23 08:00,,2008-10-08 08:00,2008-10-15 17:00,,2008-10-02 08:00,2008-10-09 17:00,2008-10-02 08:00,2008-10-09 17:00,2008-09-23 08:00,2008-10-09 17:00,,,,,PT_Normal,,,,,0YO7whIGiUupTWr3tDT+sg,,,,N,13005.81,10150.4
2706,84605,829,11744,912,1,33.3,N,N,N,CP_Drtn,TT_Task,DT_FixedDUR2,RV_OK,TK_Active,7221L16051,Plaste works behind tiles,2306,216,176,80,3378.71,6757.49,10136.2,120,7856,2618.64,5237.36,,2008-09-27 08:00,,2008-11-03 08:00,2008-11-13 17:00,,2008-10-02 08:00,2008-10-13 17:00,2008-10-02 08:00,2008-10-13 17:00,2008-09-27 08:00,2008-10-13 17:00,,,,,PT_Normal,,,,,B6aF9DIid0qcmsyiWV33Yg,,,,N,3378.71,2618.64
2707,84606,829,11745,912,1,100,N,N,N,CP_Drtn,TT_Task,DT_FixedDUR2,RV_OK,TK_Complete,7221L18050,Rendering works,2306,40,0,0,5683,0,5683,120,5000,5000,0,,2008-09-14 08:00,2008-09-30 17:00,2008-10-08 08:00,2008-10-07 17:00,,2008-10-02 08:00,2008-10-01 17:00,,,2008-09-14 08:00,2008-09-30 17:00,,,,,PT_Normal,,,,,Kgjymhb9qUSO2jK1xUzUMg,,,,N,5683,5000
2708,84607,829,11745,912,1,6.7,N,N,N,CP_Drtn,TT_Task,DT_FixedDUR2,RV_OK,TK_Active,7221L18100,Painting base coats,2306,40,0,112,1770.4,24785.2,26555.6,120,24032,1602.16,22429.84,,2008-10-01 08:00,,2008-10-08 08:00,2008-10-23 17:00,,2008-10-02 08:00,2008-10-18 17:00,2008-10-02 08:00,2008-10-18 17:00,2008-10-01 08:00,2008-10-18 17:00,,,,,PT_Normal,,,,,bBPZzLIJoUS/RRR3jX41+w,,,,N,1770.4,1602.16
2709,84608,829,11745,912,1,0,N,N,N,CP_Drtn,TT_Task,DT_FixedDUR2,RV_OK,TK_NotStart,7221L18150,Painting 1st top coat for apartments,2306,184,0,72,0,17300.2,17300.2,72,16408,0,16408,,,,2008-12-29 08:00,2009-01-07 17:00,,2008-12-02 08:00,2008-12-11 17:00,2008-12-02 08:00,2008-12-11 17:00,2008-12-02 08:00,2008-12-11 17:00,,,,,PT_Normal,,,,,qP1xPsUJKkiE68u8C/8AjA,,,,N,0,0
2710,84609,829,11745,912,1,0,N,N,N,CP_Drtn,TT_Task,DT_FixedDUR2,RV_OK,TK_NotStart,7221L18153,Painting 1st top coat for corridors/lobbies,2306,352,0,48,0,14370,14370,48,13640,0,13640,,,,2009-02-04 08:00,2009-02-10 17:00,,2008-12-15 08:00,2008-12-21 17:00,2008-12-15 08:00,2008-12-21 17:00,2008-12-15 08:00,2008-12-21 17:00,,,,,PT_Normal,,,,,xjHtO+VoFECX5I0NS9M3kQ,,,,N,0,0
2711,84610,829,11745,912,1,0,N,N,N,CP_Drtn,TT_Task,DT_FixedDUR2,RV_OK,TK_NotStart,7221L18155,Painting 1st top coat for service rooms,2306,352,0,48,0,6364.4,6364.4,48,6016,0,6016,,,,2009-02-02 08:00,2009-02-08 17:00,,2008-12-13 08:00,2008-12-18 17:00,2008-12-13 08:00,2008-12-18 17:00,2008-12-13 08:00,2008-12-18 17:00,,,,,PT_Normal,,,,,4u/rt+k+J0On1NNg3uqpjw,,,,N,0,0
2712,84611,829,10664,912,1,0,N,N,N,CP_Drtn,TT_Task,DT_FixedDUR2,RV_OK,TK_NotStart,7221L18200,Painting final top coat,2306,232,72,32,0,25265.8,25265.8,32,24032,0,24032,,,,2009-03-18 08:00,2009-03-22 17:00,,2009-02-12 08:00,2009-02-16 17:00,2009-02-12 08:00,2009-02-16 17:00,2009-02-12 08:00,2009-02-16 17:00,,,,,PT_Normal,,,,,vrwGTUHynkG/NjntDB31zA,,,,N,0,0
2713,84612,829,11746,912,1,0,N,N,N,CP_Drtn,TT_Task,DT_FixedDUR2,RV_OK,TK_NotStart,7221L20050,Floor tiles for apartments-dry area,2306,232,8,120,0,8846.4,8846.4,120,6464,0,6464,,,,2008-11-13 08:00,2008-11-30 17:00,,2008-10-11 08:00,2008-10-27 17:00,2008-10-11 08:00,2008-10-27 17:00,2008-10-11 08:00,2008-10-27 17:00,,,,,PT_Normal,,,,,wlac1RuTvEioNCebphV0IQ,,,,N,0,0
2714,84613,829,11746,912,1,0,N,N,N,CP_Drtn,TT_Task,DT_FixedDUR2,RV_OK,TK_NotStart,7221L20053,Floor tiles for corridors / lobbies,2306,176,0,48,0,4638,4638,48,3400,0,3400,,,,2008-12-25 08:00,2008-12-31 17:00,,2008-11-30 08:00,2008-12-06 17:00,2008-11-30 08:00,2008-12-06 17:00,2008-11-30 08:00,2008-12-06 17:00,,,,,PT_Normal,,,,,LlTSWy+8KEyO6EeOgrYnvg,,,,N,0,0
2715,84614,829,11746,912,1,0,N,N,N,CP_Drtn,TT_Task,DT_FixedDUR2,RV_OK,TK_NotStart,7221L20070,Floor tiles for apartments-wet area,2306,40,0,120,0,3684,3684,120,2640,0,2640,,,,2008-11-29 08:00,2008-12-15 17:00,,2008-11-23 08:00,2008-12-09 17:00,2008-11-23 08:00,2008-12-09 17:00,2008-11-23 08:00,2008-12-09 17:00,,,,,PT_Normal,,,,,RPP41csEGE2Du8DvPgl0zw,,,,N,0,0
2716,84615,829,11746,912,1,0,N,N,N,CP_Drtn,TT_Task,DT_FixedDUR2,RV_OK,TK_NotStart,7221L20110,Wall tiles for apartments-wet area,2306,96,0,120,0,9159,9159,120,6026,0,6026,,,,2008-12-07 08:00,2008-12-23 17:00,,2008-11-23 08:00,2008-12-09 17:00,2008-11-23 08:00,2008-12-09 17:00,2008-11-23 08:00,2008-12-09 17:00,,,,,PT_Normal,,,,,S0lFSk3Zq0G727ZhB6gZ/g,,,,N,0,0
2717,84616,829,11538,912,1,53.3,N,N,N,CP_Drtn,TT_Task,DT_FixedDUR2,RV_OK,TK_Active,7221L22150,W/P for for apartments,2306,336,0,56,2602.85,2277.55,4880.4,120,4328,2308.24,2019.76,,2008-09-23 08:00,,2008-11-20 08:00,2008-11-27 17:00,,2008-10-02 08:00,2008-10-09 17:00,2008-10-02 08:00,2008-10-09 17:00,2008-09-23 08:00,2008-10-09 17:00,,,,,PT_Normal,,,,,UiqRZA2Vg0ydHnBAAC5GKw,,,,N,2602.85,2308.24
2718,84617,829,11539,912,1,0,N,N,N,CP_Drtn,TT_Task,DT_FixedDUR2,RV_OK,TK_NotStart,7221L24050,Aluminium doors & windows,2306,280,184,120,0,1976,1976,120,464,0,464,,,,2008-11-29 08:00,2008-12-15 17:00,,2008-10-19 08:00,2008-11-04 17:00,2008-10-19 08:00,2008-11-04 17:00,2008-10-19 08:00,2008-11-04 17:00,,,,,PT_Normal,,,,,4jGL3mEsz0meE638IDk54w,,,,N,0,0
2719,84618,829,11539,912,1,0,N,N,N,CP_Drtn,TT_Task,DT_FixedDUR2,RV_OK,TK_NotStart,7221L24200,Balcony handrails,2306,40,0,120,0,2710,2710,120,1480,0,1480,,,,2008-12-16 08:00,2009-01-01 17:00,,2008-12-10 08:00,2008-12-27 17:00,2008-12-10 08:00,2008-12-27 17:00,2008-12-10 08:00,2008-12-27 17:00,,,,,PT_Normal,,,,,mOX5tgOb7E28hNXMgeeG6A,,,,N,0,0
2720,84619,829,11539,912,1,0,N,N,N,CP_Drtn,TT_Task,DT_FixedDUR2,RV_OK,TK_NotStart,7221L24203,Lobby handrails,2306,472,128,64,0,946,946,64,504,0,504,,,,2009-02-14 08:00,2009-02-22 17:00,,2008-12-07 08:00,2008-12-15 17:00,2008-12-07 08:00,2008-12-15 17:00,2008-12-07 08:00,2008-12-15 17:00,,,,,PT_Normal,,,,,b5ckhe4ubkOxpw/AkKsguw,,,,N,0,0
2721,84620,829,11749,912,1,0,N,N,N,CP_Drtn,TT_Task,DT_FixedDUR2,RV_OK,TK_NotStart,7221L26050,Steel doors,2306,352,0,64,0,384,384,64,64,0,64,,,,2009-01-24 08:00,2009-02-01 17:00,,2008-12-03 08:00,2008-12-11 17:00,2008-12-03 08:00,2008-12-11 17:00,2008-12-03 08:00,2008-12-11 17:00,,,,,PT_Normal,,,,,pcojNRe3E06isKHlADZDXw,,,,N,0,0
2722,84621,829,11541,912,1,0,N,N,N,CP_Drtn,TT_Task,DT_FixedDUR2,RV_OK,TK_NotStart,7221L30050,Wooden doors,2306,136,16,176,0,2192,2192,176,576,0,576,,,,2008-12-13 08:00,2009-01-06 17:00,,2008-11-23 08:00,2008-12-17 17:00,2008-11-23 08:00,2008-12-17 17:00,2008-11-23 08:00,2008-12-17 17:00,,,,,PT_Normal,,,,,Vh8wcwP7zUSYmV6OzL8W1Q,,,,N,0,0
2723,84622,829,11542,912,1,0,N,N,N,CP_Drtn,TT_Task,DT_FixedDUR2,RV_OK,TK_NotStart,7221L32050,Kitchen cabinets,2306,96,56,128,0,3104,3104,128,96,0,96,,,,2008-12-23 08:00,2009-01-10 17:00,,2008-12-09 08:00,2008-12-27 17:00,2008-12-09 08:00,2008-12-27 17:00,2008-12-09 08:00,2008-12-27 17:00,,,,,PT_Normal,,,,,yI2MWdFjyU6lpIeqvv+HWQ,,,,N,0,0
2724,84623,829,11542,912,1,0,N,N,N,CP_Drtn,TT_Task,DT_FixedDUR2,RV_OK,TK_NotStart,7221L32100,Vanity counters,2306,56,0,120,0,1880,1880,120,160,0,160,,,,2008-12-18 08:00,2009-01-04 17:00,,2008-12-10 08:00,2008-12-27 17:00,2008-12-10 08:00,2008-12-27 17:00,2008-12-10 08:00,2008-12-27 17:00,,,,,PT_Normal,,,,,18apAv6oY06HlipYBgTdwQ,,,,N,0,0
2725,84624,829,11542,912,1,0,N,N,N,CP_Drtn,TT_Task,DT_FixedDUR2,RV_OK,TK_NotStart,7221L32150,Wardrobes,2306,232,192,120,0,4152,4152,120,192,0,192,,,,2008-12-24 08:00,2009-01-10 17:00,,2008-11-20 08:00,2008-12-07 17:00,2008-11-20 08:00,2008-12-07 17:00,2008-11-20 08:00,2008-12-07 17:00,,,,,PT_Normal,,,,,v8dVyD7r6UOb61RlYYjP1w,,,,N,0,0
2726,84625,829,11752,912,1,0,N,N,N,CP_Drtn,TT_Task,DT_FixedDUR2,RV_OK,TK_NotStart,7221L34050,False ceiling works for apartments-dry area,2306,176,0,160,0,1506.16,1506.16,160,897.44,0,897.44,,,,2008-12-04 08:00,2008-12-27 17:00,,2008-11-09 08:00,2008-12-01 17:00,2008-11-09 08:00,2008-12-01 17:00,2008-11-09 08:00,2008-12-01 17:00,,,,,PT_Normal,,,,,GKvVKnSjV0qStjKrwA8KxQ,,,,N,0,0
2727,84626,829,11752,912,1,0,N,N,N,CP_Drtn,TT_Task,DT_FixedDUR2,RV_OK,TK_NotStart,7221L34053,False ceiling works for corridors/lobbies,2306,176,0,72,0,9876,9876,72,6536,0,6536,,,,2008-12-17 08:00,2008-12-27 17:00,,2008-11-22 08:00,2008-12-01 17:00,2008-11-22 08:00,2008-12-01 17:00,2008-11-22 08:00,2008-12-01 17:00,,,,,PT_Normal,,,,,XSXUxiWkDkqIYgxRGGNF8Q,,,,N,0,0
2728,84627,829,11752,912,1,0,N,N,N,CP_Drtn,TT_Task,DT_FixedDUR2,RV_OK,TK_NotStart,7221L34070,False ceiling works for apartments-wet area,2306,40,0,160,0,709.84,709.84,160,366.56,0,366.56,,,,2008-11-15 08:00,2008-12-07 17:00,,2008-11-09 08:00,2008-12-01 17:00,2008-11-09 08:00,2008-12-01 17:00,2008-11-09 08:00,2008-12-01 17:00,,,,,PT_Normal,,,,,CTHiVCs5PEWErDIDle6QKw,,,,N,0,0
2729,84628,829,11753,912,1,0,N,N,N,CP_Drtn,TT_Task,DT_FixedDUR2,RV_OK,TK_NotStart,7221L36050,Stone finishing top,2306,136,0,64,0,484,484,64,240,0,240,,,,2008-12-29 08:00,2009-01-06 17:00,,2008-12-09 08:00,2008-12-17 17:00,2008-12-09 08:00,2008-12-17 17:00,2008-12-09 08:00,2008-12-17 17:00,,,,,PT_Normal,,,,,e8DHumj/WE6eQ2j57upY8g,,,,N,0,0
2730,84629,829,11753,912,1,0,N,N,N,CP_Drtn,TT_Task,DT_FixedDUR2,RV_OK,TK_NotStart,7221L36100,Thresholds,2306,96,0,120,0,924,924,120,536,0,536,,,,2008-12-24 08:00,2009-01-10 17:00,,2008-12-10 08:00,2008-12-27 17:00,2008-12-10 08:00,2008-12-27 17:00,2008-12-10 08:00,2008-12-27 17:00,,,,,PT_Normal,,,,,HAb69A64/kqxmYA98bD+AA,,,,N,0,0
2731,84630,829,11545,912,1,0,N,N,N,CP_Drtn,TT_Task,DT_FixedDUR2,RV_OK,TK_NotStart,7221L38100,Epoxy coating system,2306,352,176,48,0,816,816,48,640,0,640,,,,2009-02-16 08:00,2009-02-22 17:00,,2008-12-27 08:00,2009-01-01 17:00,2008-12-27 08:00,2009-01-01 17:00,2008-12-27 08:00,2009-01-01 17:00,,,,,PT_Normal,,,,,rQhPx9JsfkmcL/k4hRshgw,,,,N,0,0
2732,84631,829,11546,912,1,0,N,N,N,CP_Drtn,TT_Task,DT_FixedDUR2,RV_OK,TK_NotStart,7221L40050,Duplex apartment stairs,2306,224,0,120,0,3816,3816,120,96,0,96,,,,2008-12-01 08:00,2008-12-17 17:00,,2008-10-29 08:00,2008-11-15 17:00,2008-10-29 08:00,2008-11-15 17:00,2008-10-29 08:00,2008-11-15 17:00,,,,,PT_Normal,,,,,qPThOptyYkGAm/ycbY+k2Q,,,,N,0,0
2733,84632,829,11546,912,1,0,N,N,N,CP_Drtn,TT_Task,DT_FixedDUR2,RV_OK,TK_NotStart,7221L40100,Wooden steps for Duplex stairs,2306,224,0,120,0,936,936,120,96,0,96,,,,2008-12-13 08:00,2008-12-29 17:00,,2008-11-10 08:00,2008-11-26 17:00,2008-11-10 08:00,2008-11-26 17:00,2008-11-10 08:00,2008-11-26 17:00,,,,,PT_Normal,,,,,FqBAvWKWC0ufeIJ2womP0A,,,,N,0,0
2734,84633,829,11546,912,1,0,N,N,N,CP_Drtn,TT_Task,DT_FixedDUR2,RV_OK,TK_NotStart,7221L40150,Duplex stair railings,2306,224,168,120,0,5120,5120,120,2000,0,2000,,,,2008-12-24 08:00,2009-01-10 17:00,,2008-11-22 08:00,2008-12-08 17:00,2008-11-22 08:00,2008-12-08 17:00,2008-11-22 08:00,2008-12-08 17:00,,,,,PT_Normal,,,,,Rbjjh66aokS7pjLsTj+BqA,,,,N,0,0
2735,84634,829,11756,912,1,0,N,N,N,CP_Drtn,TT_Task,DT_FixedDUR2,RV_OK,TK_NotStart,7221L42050,Signage works,2306,384,208,48,0,153.8,153.8,48,96,0,96,,,,2009-02-16 08:00,2009-02-22 17:00,,2008-12-22 08:00,2008-12-28 17:00,2008-12-22 08:00,2008-12-28 17:00,2008-12-22 08:00,2008-12-28 17:00,,,,,PT_Normal,,,,,ziunE7Ks506Z6TKLfmZOYw,,,,N,0,0
2736,84635,829,11339,912,1,100,N,N,N,CP_Drtn,TT_Task,DT_FixedDUR2,RV_OK,TK_Complete,7221L44050,Sub-frames,2306,40,0,0,1272,0,1272,120,576,576,0,,2008-09-15 08:00,2008-10-01 17:00,2008-10-08 08:00,2008-10-07 17:00,,2008-10-02 08:00,2008-10-01 17:00,,,2008-09-15 08:00,2008-10-01 17:00,,,,,PT_Normal,,,,,u+zSBQPjdEafacfcg8gKtA,,,,N,1272,576
2737,84636,829,12675,912,1,100,N,N,N,CP_Drtn,TT_Task,DT_FixedDUR2,RV_OK,TK_Complete,7221L50100,MEP skeleton embedded provisions,2296,24,0,0,512,0,512,72,,,0,,2008-07-19 08:00,2008-07-28 17:00,2008-10-06 08:00,2008-10-05 17:00,,2008-10-02 08:00,2008-10-01 17:00,,,2008-07-19 08:00,2008-07-28 17:00,,,,,PT_Normal,,,,,LpMAOc9CvkOQF8Pb6niIWQ,,,,N,512,0
2738,84637,829,12677,912,1,65,N,N,N,CP_Drtn,TT_Task,DT_FixedDUR2,RV_OK,TK_Active,7221L52050,A/C duct works,2296,184,88,56,540.16,290.84,831,160,,,,,2008-09-17 08:00,,2008-10-29 08:00,2008-11-05 17:00,,2008-10-02 08:00,2008-10-09 17:00,2008-10-02 08:00,2008-10-09 17:00,2008-09-17 08:00,2008-10-09 17:00,,,,,PT_Normal,,,,,wZbEE9/dEU+SjggbvQQBog,,,,N,540.16,0
2739,84638,829,12677,912,1,22.2,N,N,N,CP_Drtn,TT_Task,DT_FixedDUR2,RV_OK,TK_Active,7221L52100,Chilled water pipe works,2296,120,24,56,174.88,612.12,787,72,,,,,2008-09-30 08:00,,2008-10-20 08:00,2008-10-27 17:00,,2008-10-02 08:00,2008-10-09 17:00,2008-10-02 08:00,2008-10-09 17:00,2008-09-30 08:00,2008-10-09 17:00,,,,,PT_Normal,,,,,NXoWmT2ozEm09MwpBDngcA,,,,N,174.88,0
2740,84639,829,12469,912,1,37.5,N,N,N,CP_Drtn,TT_Task,DT_FixedDUR2,RV_OK,TK_Active,7221L52150,FCU's hanging,2296,176,80,40,350.7,584.5,935.2,64,,,,,2008-09-29 08:00,,2008-10-28 08:00,2008-11-02 17:00,,2008-10-02 08:00,2008-10-07 17:00,2008-10-02 08:00,2008-10-07 17:00,2008-09-29 08:00,2008-10-07 17:00,,,,,PT_Normal,,,,,AOpXfjhBw0GXxmagiES2jw,,,,N,350.7,0
2741,84640,829,12469,912,1,0,N,N,N,CP_Drtn,TT_Task,DT_FixedDUR2,RV_OK,TK_NotStart,7221L52300,FCU's assembly & duct connections,2296,96,56,80,0,951.2,951.2,80,0,0,0,,,,2008-11-03 08:00,2008-11-13 17:00,,2008-10-20 08:00,2008-10-30 17:00,2008-10-20 08:00,2008-10-30 17:00,2008-10-20 08:00,2008-10-30 17:00,,,,,PT_Normal,,,,,LzDton39QU+V7v0UBWEUrw,,,,N,0,0
2742,84641,829,12469,912,1,0,N,N,N,CP_Drtn,TT_Task,DT_FixedDUR2,RV_OK,TK_NotStart,7221L52350,Grills & diffusers,2296,504,224,120,0,912,912,120,0,0,0,,,,2009-02-05 08:00,2009-02-22 17:00,,2008-11-24 08:00,2008-12-10 17:00,2008-11-24 08:00,2008-12-10 17:00,2008-11-24 08:00,2008-12-10 17:00,,,,,PT_Normal,,,,,NTKIBN/VIkWBYztjfKf7Bg,,,,N,0,0
2743,84642,829,12677,912,1,0,N,N,N,CP_Drtn,TT_Task,DT_FixedDUR2,RV_OK,TK_NotStart,7221L52550,A/C duct risers,2296,96,0,64,0,1626,1626,64,0,0,0,,,,2008-10-19 08:00,2008-10-27 17:00,,2008-10-05 08:00,2008-10-13 17:00,2008-10-05 08:00,2008-10-13 17:00,2008-10-05 08:00,2008-10-13 17:00,,,,,PT_Normal,,,,,RN25789eOE26L97cI27Yrg,,,,N,0,0
2744,84643,829,12680,912,1,86.7,N,N,N,CP_Drtn,TT_Task,DT_FixedDUR2,RV_OK,TK_Active,7221L54050,Chasing & Pex pipe works,2296,208,0,16,342.34,52.66,395,120,,,,,2008-09-17 08:00,,2008-11-02 08:00,2008-11-03 17:00,,2008-10-02 08:00,2008-10-04 17:00,2008-10-02 08:00,2008-10-04 17:00,2008-09-17 08:00,2008-10-04 17:00,,,,,PT_Normal,,,,,l/gYCAcCbUqMv4EFUtxdZQ,,,,N,342.34,0
2745,84644,829,12680,912,1,37.5,N,N,N,CP_Drtn,TT_Task,DT_FixedDUR2,RV_OK,TK_Active,7221L54100,Over head distribution water pipe network,2296,184,0,40,3117.76,5196.24,8314,64,,,,,2008-09-29 08:00,,2008-10-29 08:00,2008-11-03 17:00,,2008-10-02 08:00,2008-10-07 17:00,2008-10-02 08:00,2008-10-07 17:00,2008-09-29 08:00,2008-10-07 17:00,,,,,PT_Normal,,,,,Zh6hwNtxc0aeevTCC9mU8w,,,,N,3117.76,0
2746,84645,829,12473,912,1,0,N,N,N,CP_Drtn,TT_Task,DT_FixedDUR2,RV_OK,TK_NotStart,7221L54150,Water meter cabinet pipe works,2296,376,192,120,0,340,340,120,0,0,0,,,,2008-12-24 08:00,2009-01-10 17:00,,2008-10-30 08:00,2008-11-16 17:00,2008-10-30 08:00,2008-11-16 17:00,2008-10-30 08:00,2008-11-16 17:00,,,,,PT_Normal,,,,,TuJa8o9W8UOnSul4aBej6Q,,,,N,0,0
2747,84646,829,12472,912,1,30,N,N,N,CP_Drtn,TT_Task,DT_FixedDUR2,RV_OK,TK_Active,7221L54250,Bathtubs,2296,336,0,56,53.04,191.52,273.6,80,,29.04,,,2008-09-29 08:00,,2008-11-20 08:00,2008-11-27 17:00,,2008-10-02 08:00,2008-10-09 17:00,2008-10-02 08:00,2008-10-09 17:00,2008-09-29 08:00,2008-10-09 17:00,,,,,PT_Normal,,,,,yEKq41/WRUiEkDXqkI21xA,,,,N,53.04,29.04
2748,84647,829,12472,912,1,0,N,N,N,CP_Drtn,TT_Task,DT_FixedDUR2,RV_OK,TK_NotStart,7221L54300,Water heater,2296,176,24,64,0,310.4,310.4,64,0,0,0,,,,2008-10-30 08:00,2008-11-08 17:00,,2008-10-05 08:00,2008-10-13 17:00,2008-10-05 08:00,2008-10-13 17:00,2008-10-05 08:00,2008-10-13 17:00,,,,,PT_Normal,,,,,1osxXP9/60Wp/8Hrx3pVOg,,,,N,0,0
2749,84648,829,12472,912,1,0,N,N,N,CP_Drtn,TT_Task,DT_FixedDUR2,RV_OK,TK_NotStart,7221L54350,Over head pipe assembly & vlave connections,2296,184,144,72,0,237,237,72,0,0,0,,,,2008-11-04 08:00,2008-11-13 17:00,,2008-10-08 08:00,2008-10-18 17:00,2008-10-08 08:00,2008-10-18 17:00,2008-10-08 08:00,2008-10-18 17:00,,,,,PT_Normal,,,,,3lUaMsMkFkCCHvABb41iWg,,,,N,0,0
2750,84649,829,12473,912,1,0,N,N,N,CP_Drtn,TT_Task,DT_FixedDUR2,RV_OK,TK_NotStart,7221L54400,Sanitary fixures,2296,136,0,120,0,516,516,120,0,0,0,,,,2008-12-21 08:00,2009-01-06 17:00,,2008-12-01 08:00,2008-12-17 17:00,2008-12-01 08:00,2008-12-17 17:00,2008-12-01 08:00,2008-12-17 17:00,,,,,PT_Normal,,,,,89qcgthf4USc5NT26AKRtQ,,,,N,0,0
2751,84650,829,12473,912,1,0,N,N,N,CP_Drtn,TT_Task,DT_FixedDUR2,RV_OK,TK_NotStart,7221L54450,Mirrors,2296,56,0,120,0,186,186,120,0,0,0,,,,2008-12-24 08:00,2009-01-10 17:00,,2008-12-16 08:00,2009-01-01 17:00,2008-12-16 08:00,2009-01-01 17:00,2008-12-16 08:00,2009-01-01 17:00,,,,,PT_Normal,,,,,VkDeE3FnK0WHQgnuklbeHw,,,,N,0,0
2752,84651,829,12472,912,1,30,N,N,N,CP_Drtn,TT_Task,DT_FixedDUR2,RV_OK,TK_Active,7221L54500,Concealed Flushing Cistern,2296,336,296,56,43.8,148.4,212,80,,19.8,,,2008-09-29 08:00,,2008-11-20 08:00,2008-11-27 17:00,,2008-10-02 08:00,2008-10-09 17:00,2008-10-02 08:00,2008-10-09 17:00,2008-09-29 08:00,2008-10-09 17:00,,,,,PT_Normal,,,,,k748RYDC+0uhbS2GTPNvfw,,,,N,43.8,19.8
2753,84652,829,12684,912,1,86.7,N,N,N,CP_Drtn,TT_Task,DT_FixedDUR2,RV_OK,TK_Active,7221L56050,Chasing and installation of drainage pipes,2296,200,0,16,247,38,285,120,,,,,2008-09-17 08:00,,2008-11-01 08:00,2008-11-02 17:00,,2008-10-02 08:00,2008-10-04 17:00,2008-10-02 08:00,2008-10-04 17:00,2008-09-17 08:00,2008-10-04 17:00,,,,,PT_Normal,,,,,WEJBw6uBok2JKLi/MTTDgg,,,,N,247,0
2754,84653,829,12684,912,1,100,N,N,N,CP_Drtn,TT_Task,DT_FixedDUR2,RV_OK,TK_Complete,7221L56100,Drainage riser pipes,2296,232,0,0,284,0,284,64,,,0,,2008-09-14 08:00,2008-09-22 17:00,2008-11-05 08:00,2008-11-04 17:00,,2008-10-02 08:00,2008-10-01 17:00,,,2008-09-14 08:00,2008-09-22 17:00,,,,,PT_Normal,,,,,BkRpStjWaECu2amCTEzh1g,,,,N,284,0
2755,84654,829,12476,912,1,0,N,N,N,CP_Drtn,TT_Task,DT_FixedDUR2,RV_OK,TK_NotStart,7221L56150,Over head drainage pipe works,2296,160,120,64,0,257.6,257.6,64,0,0,0,,,,2008-11-05 08:00,2008-11-13 17:00,,2008-10-13 08:00,2008-10-21 17:00,2008-10-13 08:00,2008-10-21 17:00,2008-10-13 08:00,2008-10-21 17:00,,,,,PT_Normal,,,,,w3QWZ5S+EU2kC7LbnPsAIA,,,,N,0,0
2756,84655,829,12687,912,1,88.9,N,N,N,CP_Drtn,TT_Task,DT_FixedDUR2,RV_OK,TK_Active,7221L58050,Fire fighting pipe works,2296,232,192,8,259.56,32.44,292,72,,,,,2008-09-23 08:00,,2008-11-05 08:00,2008-11-05 17:00,,2008-10-02 08:00,2008-10-02 17:00,2008-10-02 08:00,2008-10-02 17:00,2008-09-23 08:00,2008-10-02 17:00,,,,,PT_Normal,,,,,gBBxv479EUyNHDO/20N9tQ,,,,N,259.56,0
2757,84656,829,12479,912,1,0,N,N,N,CP_Drtn,TT_Task,DT_FixedDUR2,RV_OK,TK_NotStart,7221L58200,Fire cabinet complete,2296,352,176,64,0,339,339,64,0,0,0,,,,2009-02-14 08:00,2009-02-22 17:00,,2008-12-24 08:00,2009-01-01 17:00,2008-12-24 08:00,2009-01-01 17:00,2008-12-24 08:00,2009-01-01 17:00,,,,,PT_Normal,,,,,HRvT8Hlx4EqNVmVo0bBqPA,,,,N,0,0
2758,84657,829,12479,912,1,0,N,N,N,CP_Drtn,TT_Task,DT_FixedDUR2,RV_OK,TK_NotStart,7221L58250,Sprinkler heads,2296,448,168,120,0,450,450,120,0,0,0,,,,2009-02-05 08:00,2009-02-22 17:00,,2008-12-02 08:00,2008-12-18 17:00,2008-12-02 08:00,2008-12-18 17:00,2008-12-02 08:00,2008-12-18 17:00,,,,,PT_Normal,,,,,vLG1aCB0QUKEHLyfxFL+2g,,,,N,0,0
2759,84658,829,12690,912,1,0,N,N,N,CP_Drtn,TT_Task,DT_FixedDUR2,RV_OK,TK_NotStart,7221L60050,LPG piping,2296,392,0,72,0,292,292,72,0,0,0,,,,2008-12-13 08:00,2008-12-22 17:00,,2008-10-16 08:00,2008-10-26 17:00,2008-10-16 08:00,2008-10-26 17:00,2008-10-16 08:00,2008-10-26 17:00,,,,,PT_Normal,,,,,xki1NapdekeND7JUSdVpNA,,,,N,0,0
2760,84659,829,12482,912,1,0,N,N,N,CP_Drtn,TT_Task,DT_FixedDUR2,RV_OK,TK_NotStart,7221L60100,Gas meter & leak detector,2296,448,400,72,0,248,248,72,0,0,0,,,,2008-12-31 08:00,2009-01-10 17:00,,2008-10-27 08:00,2008-11-05 17:00,2008-10-27 08:00,2008-11-05 17:00,2008-10-27 08:00,2008-11-05 17:00,,,,,PT_Normal,,,,,Q+ZyoAix+0CUTavfcAZUzw,,,,N,0,0
2761,84660,829,12693,912,1,0,N,N,N,CP_Drtn,TT_Task,DT_FixedDUR2,RV_OK,TK_NotStart,7221L62050,BMS cabling,2296,80,40,64,0,486.4,486.4,64,0,0,0,,,,2008-11-05 08:00,2008-11-13 17:00,,2008-10-25 08:00,2008-11-02 17:00,2008-10-25 08:00,2008-11-02 17:00,2008-10-25 08:00,2008-11-02 17:00,,,,,PT_Normal,,,,,Uls3KIc49EqQ9TXMHr9uBQ,,,,N,0,0
2762,84661,829,12485,912,1,0,N,N,N,CP_Drtn,TT_Task,DT_FixedDUR2,RV_OK,TK_NotStart,7221L62100,DGC & cable termination to equipments,2296,360,8,48,0,329.6,329.6,48,0,0,0,,,,2009-02-10 08:00,2009-02-16 17:00,,2008-12-20 08:00,2008-12-25 17:00,2008-12-20 08:00,2008-12-25 17:00,2008-12-20 08:00,2008-12-25 17:00,,,,,PT_Normal,,,,,DemlZV08s0Cg259ceq8vHA,,,,N,0,0
2763,84662,829,12696,912,1,100,N,N,N,CP_Drtn,TT_Task,DT_FixedDUR2,RV_OK,TK_Complete,7221L66050,Chasing and installation of conduits,2296,40,0,0,1809.6,0,1809.6,120,,,0,,2008-09-15 08:00,2008-10-01 17:00,2008-10-08 08:00,2008-10-07 17:00,,2008-10-02 08:00,2008-10-01 17:00,,,2008-09-15 08:00,2008-10-01 17:00,,,,,PT_Normal,,,,,5nfqHS/6n0iGyOIN0npHZA,,,,N,1809.6,0
2764,84663,829,12696,912,1,0,N,N,N,CP_Drtn,TT_Task,DT_FixedDUR2,RV_OK,TK_NotStart,7221L66100,Cable trays & trunking,2296,40,0,120,0,1528,1528,120,0,0,0,,,,2008-10-19 08:00,2008-11-04 17:00,,2008-10-13 08:00,2008-10-29 17:00,2008-10-13 08:00,2008-10-29 17:00,2008-10-13 08:00,2008-10-29 17:00,,,,,PT_Normal,,,,,I68ZiiOm00ukohSRDbnosA,,,,N,0,0
2765,84664,829,12698,912,1,100,N,N,N,CP_Drtn,TT_Task,DT_FixedDUR2,RV_OK,TK_Complete,7221L68050,Single core wiring,2296,248,0,0,1128,0,1128,72,,,0,,2008-09-17 08:00,2008-09-27 17:00,2008-11-08 08:00,2008-11-06 17:00,,2008-10-02 08:00,2008-10-01 17:00,,,2008-09-17 08:00,2008-09-27 17:00,,,,,PT_Normal,,,,,uWtpTGB+4UyywddZjs78tg,,,,N,1128,0
2766,84665,829,12490,912,1,100,N,N,N,CP_Drtn,TT_Task,DT_FixedDUR2,RV_OK,TK_Complete,7221L68100,DB enclosure,2296,72,0,0,416,0,416,64,,,0,,2008-09-23 08:00,2008-10-01 17:00,2008-10-13 08:00,2008-10-12 17:00,,2008-10-02 08:00,2008-10-01 17:00,,,2008-09-23 08:00,2008-10-01 17:00,,,,,PT_Normal,,,,,I7S9QLdI7kucveIEWckEdw,,,,N,416,0
2767,84666,829,12490,912,1,0,N,N,N,CP_Drtn,TT_Task,DT_FixedDUR2,RV_OK,TK_NotStart,7221L68150,LV feeder cables,2296,112,40,72,0,2606.4,2606.4,72,0,0,0,,,,2008-11-16 08:00,2008-11-25 17:00,,2008-10-30 08:00,2008-11-09 17:00,2008-10-30 08:00,2008-11-09 17:00,2008-10-30 08:00,2008-11-09 17:00,,,,,PT_Normal,,,,,p0LiNQejZEKAiFGau61N9g,,,,N,0,0
2768,84667,829,12491,912,1,0,N,N,N,CP_Drtn,TT_Task,DT_FixedDUR2,RV_OK,TK_NotStart,7221L68250,DB-breakers assembly,2296,200,160,72,0,564.8,564.8,72,0,0,0,,,,2008-12-31 08:00,2009-01-10 17:00,,2008-12-02 08:00,2008-12-11 17:00,2008-12-02 08:00,2008-12-11 17:00,2008-12-02 08:00,2008-12-11 17:00,,,,,PT_Normal,,,,,duc7SYSsSUqvGq/SgoOpqA,,,,N,0,0
2769,84668,829,12491,912,1,0,N,N,N,CP_Drtn,TT_Task,DT_FixedDUR2,RV_OK,TK_NotStart,7221L68300,SMDB,2296,352,0,48,0,1315.2,1315.2,48,0,0,0,,,,2009-02-09 08:00,2009-02-15 17:00,,2008-12-20 08:00,2008-12-25 17:00,2008-12-20 08:00,2008-12-25 17:00,2008-12-20 08:00,2008-12-25 17:00,,,,,PT_Normal,,,,,G3veq7KiPkOswo0iG8aUUw,,,,N,0,0
2770,84669,829,12491,912,1,0,N,N,N,CP_Drtn,TT_Task,DT_FixedDUR2,RV_OK,TK_NotStart,7221L68350,Light Fittings,2296,208,168,120,0,1105.6,1105.6,120,0,0,0,,,,2008-12-24 08:00,2009-01-10 17:00,,2008-11-24 08:00,2008-12-10 17:00,2008-11-24 08:00,2008-12-10 17:00,2008-11-24 08:00,2008-12-10 17:00,,,,,PT_Normal,,,,,5zQ75aSAnkq6tRtzy5pJZA,,,,N,0,0
2771,84670,829,12491,912,1,0,N,N,N,CP_Drtn,TT_Task,DT_FixedDUR2,RV_OK,TK_NotStart,7221L68400,Lighting Control Panels,2296,368,192,64,0,275.2,275.2,64,0,0,0,,,,2009-02-14 08:00,2009-02-22 17:00,,2008-12-22 08:00,2008-12-30 17:00,2008-12-22 08:00,2008-12-30 17:00,2008-12-22 08:00,2008-12-30 17:00,,,,,PT_Normal,,,,,ehyLXDH8MkCz8YXg+lTZTQ,,,,N,0,0
2772,84671,829,12491,912,1,0,N,N,N,CP_Drtn,TT_Task,DT_FixedDUR2,RV_OK,TK_NotStart,7221L68600,Switches & sockets,2296,200,160,72,0,494.4,494.4,72,0,0,0,,,,2008-12-31 08:00,2009-01-10 17:00,,2008-12-02 08:00,2008-12-11 17:00,2008-12-02 08:00,2008-12-11 17:00,2008-12-02 08:00,2008-12-11 17:00,,,,,PT_Normal,,,,,UJJE0CsJ00i9iILCi7ORbg,,,,N,0,0
2773,84672,829,12702,912,1,100,N,N,N,CP_Drtn,TT_Task,DT_FixedDUR2,RV_OK,TK_Complete,7221L70050,Central Battery cables,2296,216,0,0,345.6,0,345.6,64,,,0,,2008-09-23 08:00,2008-10-01 17:00,2008-11-03 08:00,2008-11-02 17:00,,2008-10-02 08:00,2008-10-01 17:00,,,2008-09-23 08:00,2008-10-01 17:00,,,,,PT_Normal,,,,,kU+YUa1RcEavkICygxRJ0A,,,,N,345.6,0
2774,84673,829,12494,912,1,0,N,N,N,CP_Drtn,TT_Task,DT_FixedDUR2,RV_OK,TK_NotStart,7221L70150,Emergency & exit light fittings,2296,488,184,48,0,188.8,188.8,48,0,0,0,,,,2009-02-16 08:00,2009-02-22 17:00,,2008-12-07 08:00,2008-12-13 17:00,2008-12-07 08:00,2008-12-13 17:00,2008-12-07 08:00,2008-12-13 17:00,,,,,PT_Normal,,,,,Nwwt+Q2AqEKtYUBsl+dEvg,,,,N,0,0
2775,84674,829,12705,912,1,0,N,N,N,CP_Drtn,TT_Task,DT_FixedDUR2,RV_OK,TK_NotStart,7221L72200,Intercom system cables,2296,64,24,64,0,592,592,64,0,0,0,,,,2008-11-05 08:00,2008-11-13 17:00,,2008-10-27 08:00,2008-11-04 17:00,2008-10-27 08:00,2008-11-04 17:00,2008-10-27 08:00,2008-11-04 17:00,,,,,PT_Normal,,,,,0ON0vS41DE2nqp2hxAbnXQ,,,,N,0,0
2776,84675,829,12497,912,1,0,N,N,N,CP_Drtn,TT_Task,DT_FixedDUR2,RV_OK,TK_NotStart,7221L72250,Intercom system equipments,2296,184,144,64,0,697.6,697.6,64,0,0,0,,,,2009-01-01 08:00,2009-01-10 17:00,,2008-12-06 08:00,2008-12-14 17:00,2008-12-06 08:00,2008-12-14 17:00,2008-12-06 08:00,2008-12-14 17:00,,,,,PT_Normal,,,,,jCpvZwKB60iHFMEzwP+gzg,,,,N,0,0
2777,84676,829,12708,912,1,100,N,N,N,CP_Drtn,TT_Task,DT_FixedDUR2,RV_OK,TK_Complete,7221L74050,Fire alarm cables,2296,216,0,0,380.8,0,380.8,64,,,0,,2008-09-23 08:00,2008-10-01 17:00,2008-11-03 08:00,2008-11-02 17:00,,2008-10-02 08:00,2008-10-01 17:00,,,2008-09-23 08:00,2008-10-01 17:00,,,,,PT_Normal,,,,,Wz1ft9/GFEGznz2iaiGWtA,,,,N,380.8,0
2778,84677,829,12500,912,1,0,N,N,N,CP_Drtn,TT_Task,DT_FixedDUR2,RV_OK,TK_NotStart,7221L74100,Fire alarm fittings,2296,432,168,120,0,172.8,172.8,120,0,0,0,,,,2009-02-05 08:00,2009-02-22 17:00,,2008-12-04 08:00,2008-12-21 17:00,2008-12-04 08:00,2008-12-21 17:00,2008-12-04 08:00,2008-12-21 17:00,,,,,PT_Normal,,,,,/rt9I5Dq6k6462ll5YPAIQ,,,,N,0,0
2779,84678,829,12711,912,1,0,N,N,N,CP_Drtn,TT_Task,DT_FixedDUR2,RV_OK,TK_NotStart,7221L76050,Structured cabling,2296,80,40,64,0,345.6,345.6,64,0,0,0,,,,2008-11-08 08:00,2008-11-16 17:00,,2008-10-27 08:00,2008-11-04 17:00,2008-10-27 08:00,2008-11-04 17:00,2008-10-27 08:00,2008-11-04 17:00,,,,,PT_Normal,,,,,LB3LBJgcmUCr0URC+0YSSA,,,,N,0,0
2780,84679,829,12503,912,1,0,N,N,N,CP_Drtn,TT_Task,DT_FixedDUR2,RV_OK,TK_NotStart,7221L76100,Consolidated pionts,2296,40,0,64,0,486.4,486.4,64,0,0,0,,,,2008-11-17 08:00,2008-11-25 17:00,,2008-11-11 08:00,2008-11-19 17:00,2008-11-11 08:00,2008-11-19 17:00,2008-11-11 08:00,2008-11-19 17:00,,,,,PT_Normal,,,,,UKSkpS7/5UegSFz/mjOYRg,,,,N,0,0
2781,84680,829,11568,912,1,100,N,N,N,CP_Drtn,TT_Task,DT_FixedDUR2,RV_OK,TK_Complete,7221U12050,Columns & walls 1U to 2L - Part 1,2306,24,0,0,3724.34,0,3724.34,32,111688.16,111688.16,0,,2008-08-05 08:00,2008-08-09 17:00,2008-10-06 08:00,2008-10-05 17:00,,2008-10-02 08:00,2008-10-01 17:00,,,2008-08-05 08:00,2008-08-09 17:00,,,,,PT_Normal,,,,,pwehLMbL2Uq/pMSzUZhuXQ,,,,N,3724.34,111688.16
2782,84681,829,11568,912,1,100,N,N,N,CP_Drtn,TT_Task,DT_FixedDUR2,RV_OK,TK_Complete,7221U12051,Columns & walls 1U to 2L - Part 2,2306,24,0,0,3724.34,0,3724.34,32,111688.16,111688.16,0,,2008-08-13 08:00,2008-08-17 17:00,2008-10-06 08:00,2008-10-05 17:00,,2008-10-02 08:00,2008-10-01 17:00,,,2008-08-13 08:00,2008-08-17 17:00,,,,,PT_Normal,,,,,5pQNMWfMS0utuAdz0z+0pQ,,,,N,3724.34,111688.16
2783,84682,829,11568,912,1,100,N,N,N,CP_Drtn,TT_Task,DT_FixedDUR2,RV_OK,TK_Complete,7221U12052,Columns & walls 1U to 2L - Middle Part,2306,24,0,0,8020.4,0,8020.4,32,241635.84,241635.84,0,,2008-08-12 08:00,2008-08-16 17:00,2008-10-06 08:00,2008-10-05 17:00,,2008-10-02 08:00,2008-10-01 17:00,,,2008-08-12 08:00,2008-08-16 17:00,,,,,PT_Normal,,,,,5ofa6Bp0iEmgDPul75Zzgg,,,,N,8020.4,241635.84
2784,84683,829,11568,912,1,100,N,N,N,CP_Drtn,TT_Task,DT_FixedDUR2,RV_OK,TK_Complete,7221U12200,Slab @ 2L level - Part 1,2306,24,0,0,4376.76,0,4376.76,56,160277.68,160277.68,0,,2008-08-13 08:00,2008-08-20 17:00,2008-10-06 08:00,2008-10-05 17:00,,2008-10-02 08:00,2008-10-01 17:00,,,2008-08-13 08:00,2008-08-20 17:00,,,,,PT_Normal,,,,,ybhr3FeLz0mC/Sl1uvmYog,,,,N,4376.76,160277.68
2785,84684,829,11568,912,1,100,N,N,N,CP_Drtn,TT_Task,DT_FixedDUR2,RV_OK,TK_Complete,7221U12201,Slab @ 2L level - Part 2,2306,24,0,0,4376.76,0,4376.76,56,160277.68,160277.68,0,,2008-08-21 08:00,2008-08-28 17:00,2008-10-06 08:00,2008-10-05 17:00,,2008-10-02 08:00,2008-10-01 17:00,,,2008-08-21 08:00,2008-08-28 17:00,,,,,PT_Normal,,,,,E5aBTP57GUGRXEHV6vS15Q,,,,N,4376.76,160277.68
2786,84685,829,11568,912,1,100,N,N,N,CP_Drtn,TT_Task,DT_FixedDUR2,RV_OK,TK_Complete,7221U12202,Slab @ 2L level - Middle Part,2306,24,0,0,6315.78,0,6315.78,56,232201.84,232201.84,0,,2008-08-19 08:00,2008-08-26 17:00,2008-10-06 08:00,2008-10-05 17:00,,2008-10-02 08:00,2008-10-01 17:00,,,2008-08-19 08:00,2008-08-26 17:00,,,,,PT_Normal,,,,,NiJW9sm6J0KRQvt+xDn5cg,,,,N,6315.78,232201.84
2787,84686,829,11568,912,1,100,N,N,N,CP_Drtn,TT_Task,DT_FixedDUR2,RV_OK,TK_Complete,7221U12250,Staircases 1U to 2L,2296,208,0,0,991.88,0,991.88,24,18457.6,18457.6,0,,2008-08-30 08:00,2008-09-01 17:00,2008-11-02 08:00,2008-11-01 17:00,,2008-10-02 08:00,2008-10-01 17:00,,,2008-08-30 08:00,2008-09-01 17:00,,,,,PT_Normal,,,,,inKpp8hyO06KbpAEcVcv+A,,,,N,991.88,18457.6
2788,84687,829,11550,912,1,100,N,N,N,CP_Drtn,TT_Task,DT_FixedDUR2,RV_OK,TK_Complete,7221U14050,Block works,2306,72,0,0,24323,0,30085.5,120,18440,24202.5,0,,2008-09-15 08:00,2008-10-01 17:00,2008-10-13 08:00,2008-10-12 17:00,,2008-10-02 08:00,2008-10-01 17:00,,,2008-09-15 08:00,2008-10-01 17:00,,,,,PT_Normal,,,,,sacYMj5Ugkexbs1TsNJsXw,,,,N,24323,24202.5
2789,84688,829,11551,912,1,13.3,N,N,N,CP_Drtn,TT_Task,DT_FixedDUR2,RV_OK,TK_Active,7221U16050,Plaster works,2306,72,0,104,3250.13,21125.67,24375.8,120,19024,2536.56,16487.44,,2008-09-30 08:00,,2008-10-13 08:00,2008-10-27 17:00,,2008-10-02 08:00,2008-10-16 17:00,2008-10-02 08:00,2008-10-16 17:00,2008-09-30 08:00,2008-10-16 17:00,,,,,PT_Normal,,,,,/1kfAg1lYkaZ3n9hje044Q,,,,N,3250.13,2536.56
2790,84689,829,11551,912,1,0,N,N,N,CP_Drtn,TT_Task,DT_FixedDUR2,RV_OK,TK_NotStart,7221U16051,Plaste works behind tiles,2306,208,128,120,0,5424,5424,120,4160,0,4160,,,,2008-11-05 08:00,2008-11-22 17:00,,2008-10-06 08:00,2008-10-22 17:00,2008-10-06 08:00,2008-10-22 17:00,2008-10-06 08:00,2008-10-22 17:00,,,,,PT_Normal,,,,,OYGuatNPPEGG1ViJW6Dy7w,,,,N,0,0
2791,84690,829,11552,912,1,53.3,N,N,N,CP_Drtn,TT_Task,DT_FixedDUR2,RV_OK,TK_Active,7221U18050,Rendering works,2306,96,24,56,3030.91,2652.09,5683,120,5000,2666.64,2333.36,,2008-09-23 08:00,,2008-10-16 08:00,2008-10-23 17:00,,2008-10-02 08:00,2008-10-09 17:00,2008-10-02 08:00,2008-10-09 17:00,2008-09-23 08:00,2008-10-09 17:00,,,,,PT_Normal,,,,,qAjhAlmnjk+DjswdFAd45g,,,,N,3030.91,2666.64
2792,84691,829,11552,912,1,0,N,N,N,CP_Drtn,TT_Task,DT_FixedDUR2,RV_OK,TK_NotStart,7221U18100,Paintin1 base coats,2306,72,0,120,0,26546.2,26546.2,120,24024,0,24024,,,,2008-10-19 08:00,2008-11-04 17:00,,2008-10-08 08:00,2008-10-25 17:00,2008-10-08 08:00,2008-10-25 17:00,2008-10-08 08:00,2008-10-25 17:00,,,,,PT_Normal,,,,,J1us3vBTvUCQE05K2LaBUw,,,,N,0,0
2793,84692,829,11552,912,1,0,N,N,N,CP_Drtn,TT_Task,DT_FixedDUR2,RV_OK,TK_NotStart,7221U18150,Painting 1st top coat for apartments,2306,184,0,72,0,17300.2,17300.2,72,16408,0,16408,,,,2008-12-31 08:00,2009-01-10 17:00,,2008-12-04 08:00,2008-12-14 17:00,2008-12-04 08:00,2008-12-14 17:00,2008-12-04 08:00,2008-12-14 17:00,,,,,PT_Normal,,,,,ZFVsUIu2jk6rKAEN9CgvFA,,,,N,0,0
2794,84693,829,11762,912,1,0,N,N,N,CP_Drtn,TT_Task,DT_FixedDUR2,RV_OK,TK_NotStart,7221U20050,Floor tiles for apartments-dry area,2306,224,0,120,0,9570,9570,120,7000,0,7000,,,,2008-11-19 08:00,2008-12-06 17:00,,2008-10-18 08:00,2008-11-03 17:00,2008-10-18 08:00,2008-11-03 17:00,2008-10-18 08:00,2008-11-03 17:00,,,,,PT_Normal,,,,,cqeU8qnYA02sbX+pXrxzjw,,,,N,0,0
2795,84694,829,11762,912,1,0,N,N,N,CP_Drtn,TT_Task,DT_FixedDUR2,RV_OK,TK_NotStart,7221U20070,Floor tiles for apartments-wet area,2306,80,0,120,0,3835.2,3835.2,120,2752,0,2752,,,,2008-12-07 08:00,2008-12-23 17:00,,2008-11-25 08:00,2008-12-11 17:00,2008-11-25 08:00,2008-12-11 17:00,2008-11-25 08:00,2008-12-11 17:00,,,,,PT_Normal,,,,,F3+G3mm0006nmHIBKWEG3Q,,,,N,0,0
2796,84695,829,11762,912,1,0,N,N,N,CP_Drtn,TT_Task,DT_FixedDUR2,RV_OK,TK_NotStart,7221U20110,Wall tiles for apartments-wet area,2306,144,0,120,0,9066,9066,120,5964,0,5964,,,,2008-12-16 08:00,2009-01-01 17:00,,2008-11-25 08:00,2008-12-11 17:00,2008-11-25 08:00,2008-12-11 17:00,2008-11-25 08:00,2008-12-11 17:00,,,,,PT_Normal,,,,,+p1TCH0f5Ee/kDYs2HVssg,,,,N,0,0
2797,84696,829,11345,912,1,0,N,N,N,CP_Drtn,TT_Task,DT_FixedDUR2,RV_OK,TK_NotStart,7221U22150,W/P for for apartments,2306,176,0,120,0,2980,2980,120,2600,0,2600,,,,2008-10-28 08:00,2008-11-13 17:00,,2008-10-02 08:00,2008-10-19 17:00,2008-10-02 08:00,2008-10-19 17:00,2008-10-02 08:00,2008-10-19 17:00,,,,,PT_Normal,,,,,zQ+FnaA4TkqGnONXHDp/aA,,,,N,0,0
2798,84697,829,11764,912,1,0,N,N,N,CP_Drtn,TT_Task,DT_FixedDUR2,RV_OK,TK_NotStart,7221U24050,Aluminium doors & windows,2306,288,152,120,0,1208,1208,120,272,0,272,,,,2008-12-07 08:00,2008-12-23 17:00,,2008-10-26 08:00,2008-11-11 17:00,2008-10-26 08:00,2008-11-11 17:00,2008-10-26 08:00,2008-11-11 17:00,,,,,PT_Normal,,,,,nyDF8TzuK0ufj1zhG5a+IQ,,,,N,0,0
2799,84698,829,11764,912,1,0,N,N,N,CP_Drtn,TT_Task,DT_FixedDUR2,RV_OK,TK_NotStart,7221U24200,Balcony handrails,2306,40,0,120,0,2192,2192,120,1184,0,1184,,,,2008-12-24 08:00,2009-01-10 17:00,,2008-12-18 08:00,2009-01-04 17:00,2008-12-18 08:00,2009-01-04 17:00,2008-12-18 08:00,2009-01-04 17:00,,,,,PT_Normal,,,,,Z8oXzgPBUEGrmn0ecowT8A,,,,N,0,0
2800,84699,829,11556,912,1,0,N,N,N,CP_Drtn,TT_Task,DT_FixedDUR2,RV_OK,TK_NotStart,7221U30050,Wooden doors,2306,120,16,176,0,1520,1520,176,384,0,384,,,,2008-12-13 08:00,2009-01-06 17:00,,2008-11-25 08:00,2008-12-20 17:00,2008-11-25 08:00,2008-12-20 17:00,2008-11-25 08:00,2008-12-20 17:00,,,,,PT_Normal,,,,,YJ6EPHLbz0CTesfUffHzng,,,,N,0,0
2801,84700,829,11766,912,1,0,N,N,N,CP_Drtn,TT_Task,DT_FixedDUR2,RV_OK,TK_NotStart,7221U32100,Vanity counters,2306,56,0,120,0,2232,2232,120,192,0,192,,,,2008-12-24 08:00,2009-01-10 17:00,,2008-12-16 08:00,2009-01-01 17:00,2008-12-16 08:00,2009-01-01 17:00,2008-12-16 08:00,2009-01-01 17:00,,,,,PT_Normal,,,,,DYAumOI9REOhvmkMlITy+A,,,,N,0,0
2802,84701,829,11766,912,1,0,N,N,N,CP_Drtn,TT_Task,DT_FixedDUR2,RV_OK,TK_NotStart,7221U32150,Wardrobes,2306,216,176,120,0,6168,6168,120,288,0,288,,,,2008-12-24 08:00,2009-01-10 17:00,,2008-11-23 08:00,2008-12-09 17:00,2008-11-23 08:00,2008-12-09 17:00,2008-11-23 08:00,2008-12-09 17:00,,,,,PT_Normal,,,,,m/BKXAWKxUWtGDYm9L1xgw,,,,N,0,0
2803,84702,829,11558,912,1,0,N,N,N,CP_Drtn,TT_Task,DT_FixedDUR2,RV_OK,TK_NotStart,7221U34050,False ceiling works for apartments-dry area,2306,184,0,160,0,1525.12,1525.12,160,910.08,0,910.08,,,,2008-12-08 08:00,2008-12-30 17:00,,2008-11-11 08:00,2008-12-03 17:00,2008-11-11 08:00,2008-12-03 17:00,2008-11-11 08:00,2008-12-03 17:00,,,,,PT_Normal,,,,,ZQ+jwvBzfUC4rzMlDUFsxQ,,,,N,0,0
2804,84703,829,11558,912,1,0,N,N,N,CP_Drtn,TT_Task,DT_FixedDUR2,RV_OK,TK_NotStart,7221U34070,False ceiling works for apartments-wet area,2306,80,0,160,0,690.88,690.88,160,353.92,0,353.92,,,,2008-11-23 08:00,2008-12-15 17:00,,2008-11-11 08:00,2008-12-03 17:00,2008-11-11 08:00,2008-12-03 17:00,2008-11-11 08:00,2008-12-03 17:00,,,,,PT_Normal,,,,,GUlRiMhvKE2P1RZ89Gb3yQ,,,,N,0,0
2805,84704,829,11559,912,1,0,N,N,N,CP_Drtn,TT_Task,DT_FixedDUR2,RV_OK,TK_NotStart,7221U36050,Stone finishin1 top,2306,136,96,64,0,344,344,64,160,0,160,,,,2009-01-01 08:00,2009-01-10 17:00,,2008-12-13 08:00,2008-12-21 17:00,2008-12-13 08:00,2008-12-21 17:00,2008-12-13 08:00,2008-12-21 17:00,,,,,PT_Normal,,,,,bvyTAaawKkW3YRWA/h9VZQ,,,,N,0,0
2806,84705,829,11559,912,1,0,N,N,N,CP_Drtn,TT_Task,DT_FixedDUR2,RV_OK,TK_NotStart,7221U36100,Thresholds,2306,96,56,64,0,520,520,64,304,0,304,,,,2009-01-01 08:00,2009-01-10 17:00,,2008-12-18 08:00,2008-12-27 17:00,2008-12-18 08:00,2008-12-27 17:00,2008-12-18 08:00,2008-12-27 17:00,,,,,PT_Normal,,,,,ua96yCeqqE27md8lp1l8pA,,,,N,0,0
2807,84706,829,11560,912,1,70,N,N,N,CP_Drtn,TT_Task,DT_FixedDUR2,RV_OK,TK_Active,7221U44050,Sub-frames,2306,72,0,24,593.6,254.4,848,80,384,268.8,115.2,,2008-09-24 08:00,,2008-10-13 08:00,2008-10-15 17:00,,2008-10-02 08:00,2008-10-05 17:00,2008-10-02 08:00,2008-10-05 17:00,2008-09-24 08:00,2008-10-05 17:00,,,,,PT_Normal,,,,,BopdmRn9t0OUXSkNjGvl3A,,,,N,593.6,268.8
2808,84707,829,12715,912,1,100,N,N,N,CP_Drtn,TT_Task,DT_FixedDUR2,RV_OK,TK_Complete,7221U50100,MEP skeleton embedded provisions,2296,24,0,0,512,0,512,72,,,0,,2008-08-05 08:00,2008-08-14 17:00,2008-10-06 08:00,2008-10-05 17:00,,2008-10-02 08:00,2008-10-01 17:00,,,2008-08-05 08:00,2008-08-14 17:00,,,,,PT_Normal,,,,,GKNFWZyFo0GnBd5P3jvOIA,,,,N,512,0
2809,84708,829,12717,912,1,25,N,N,N,CP_Drtn,TT_Task,DT_FixedDUR2,RV_OK,TK_Active,7221U52050,A/C duct works,2296,176,88,120,207.76,623.24,831,160,,,,,2008-09-27 08:00,,2008-10-28 08:00,2008-11-13 17:00,,2008-10-02 08:00,2008-10-19 17:00,2008-10-02 08:00,2008-10-19 17:00,2008-09-27 08:00,2008-10-19 17:00,,,,,PT_Normal,,,,,7tOfmSe+bEaBBfPLkOTp3Q,,,,N,207.76,0
2810,84709,829,12717,912,1,0,N,N,N,CP_Drtn,TT_Task,DT_FixedDUR2,RV_OK,TK_NotStart,7221U52100,Chilled water pipe works,2296,112,24,72,0,787,787,72,0,0,0,,,,2008-10-26 08:00,2008-11-04 17:00,,2008-10-09 08:00,2008-10-19 17:00,2008-10-09 08:00,2008-10-19 17:00,2008-10-09 08:00,2008-10-19 17:00,,,,,PT_Normal,,,,,auygNfN/JE+JWMH9MjSM9g,,,,N,0,0
2811,84710,829,12509,912,1,0,N,N,N,CP_Drtn,TT_Task,DT_FixedDUR2,RV_OK,TK_NotStart,7221U52150,FCU's hanging,2296,168,80,64,0,935.2,935.2,64,0,0,0,,,,2008-11-02 08:00,2008-11-10 17:00,,2008-10-08 08:00,2008-10-16 17:00,2008-10-08 08:00,2008-10-16 17:00,2008-10-08 08:00,2008-10-16 17:00,,,,,PT_Normal,,,,,O+sPogFbpEuAM8lueTJdtQ,,,,N,0,0
2812,84711,829,12509,912,1,0,N,N,N,CP_Drtn,TT_Task,DT_FixedDUR2,RV_OK,TK_NotStart,7221U52300,FCU's assembly & duct connections,2296,88,8,80,0,951.2,951.2,80,0,0,0,,,,2008-11-11 08:00,2008-11-22 17:00,,2008-10-29 08:00,2008-11-09 17:00,2008-10-29 08:00,2008-11-09 17:00,2008-10-29 08:00,2008-11-09 17:00,,,,,PT_Normal,,,,,/OGqUPrUI0uHIMXG5VEriA,,,,N,0,0
2813,84712,829,12509,912,1,0,N,N,N,CP_Drtn,TT_Task,DT_FixedDUR2,RV_OK,TK_NotStart,7221U52350,Grills & diffusers,2296,192,152,64,0,856,856,64,0,0,0,,,,2009-01-01 08:00,2009-01-10 17:00,,2008-12-04 08:00,2008-12-13 17:00,2008-12-04 08:00,2008-12-13 17:00,2008-12-04 08:00,2008-12-13 17:00,,,,,PT_Normal,,,,,CQ26iO3HSkGRPKf89uK/mQ,,,,N,0,0
2814,84713,829,12717,912,1,0,N,N,N,CP_Drtn,TT_Task,DT_FixedDUR2,RV_OK,TK_NotStart,7221U52550,A/C duct risers,2296,88,0,64,0,1626,1626,64,0,0,0,,,,2008-10-27 08:00,2008-11-04 17:00,,2008-10-14 08:00,2008-10-22 17:00,2008-10-14 08:00,2008-10-22 17:00,2008-10-14 08:00,2008-10-22 17:00,,,,,PT_Normal,,,,,kDYZv2qdc0+T2eg7HCVuSA,,,,N,0,0
2815,84714,829,12720,912,1,33.3,N,N,N,CP_Drtn,TT_Task,DT_FixedDUR2,RV_OK,TK_Active,7221U54050,Chasing & Pex pipe works,2296,208,0,80,131.66,263.34,395,120,,,,,2008-09-27 08:00,,2008-11-02 08:00,2008-11-12 17:00,,2008-10-02 08:00,2008-10-13 17:00,2008-10-02 08:00,2008-10-13 17:00,2008-09-27 08:00,2008-10-13 17:00,,,,,PT_Normal,,,,,n+D8EEESjEKsLFTaidCF/g,,,,N,131.66,0
2816,84715,829,12512,912,1,0,N,N,N,CP_Drtn,TT_Task,DT_FixedDUR2,RV_OK,TK_NotStart,7221U54250,Bathtubs,2296,328,0,80,0,273.6,273.6,80,0,0,0,,,,2008-11-25 08:00,2008-12-06 17:00,,2008-10-08 08:00,2008-10-19 17:00,2008-10-08 08:00,2008-10-19 17:00,2008-10-08 08:00,2008-10-19 17:00,,,,,PT_Normal,,,,,f+VJ6Ju3SUaiZNrPavkEww,,,,N,0,0
2817,84716,829,12512,912,1,0,N,N,N,CP_Drtn,TT_Task,DT_FixedDUR2,RV_OK,TK_NotStart,7221U54300,Water heater,2296,168,0,64,0,310.4,310.4,64,0,0,0,,,,2008-11-08 08:00,2008-11-16 17:00,,2008-10-14 08:00,2008-10-22 17:00,2008-10-14 08:00,2008-10-22 17:00,2008-10-14 08:00,2008-10-22 17:00,,,,,PT_Normal,,,,,0kQvHm84VU2lleQV1N6vfg,,,,N,0,0
2818,84717,829,12512,912,1,0,N,N,N,CP_Drtn,TT_Task,DT_FixedDUR2,RV_OK,TK_NotStart,7221U54350,Over head pipe assembly & vlave connections,2296,200,120,64,0,229,229,64,0,0,0,,,,2008-11-13 08:00,2008-11-22 17:00,,2008-10-15 08:00,2008-10-23 17:00,2008-10-15 08:00,2008-10-23 17:00,2008-10-15 08:00,2008-10-23 17:00,,,,,PT_Normal,,,,,exvFaw+WuEWTg80nM2/sEg,,,,N,0,0
2819,84718,829,12513,912,1,0,N,N,N,CP_Drtn,TT_Task,DT_FixedDUR2,RV_OK,TK_NotStart,7221U54400,Sanitary fixures,2296,144,8,120,0,516,516,120,0,0,0,,,,2008-12-24 08:00,2009-01-10 17:00,,2008-12-03 08:00,2008-12-20 17:00,2008-12-03 08:00,2008-12-20 17:00,2008-12-03 08:00,2008-12-20 17:00,,,,,PT_Normal,,,,,IKdaoYrOLUqtlPYvBz7cAA,,,,N,0,0
2820,84719,829,12513,912,1,0,N,N,N,CP_Drtn,TT_Task,DT_FixedDUR2,RV_OK,TK_NotStart,7221U54450,Mirrors,2296,56,16,80,0,146,146,80,0,0,0,,,,2008-12-30 08:00,2009-01-10 17:00,,2008-12-22 08:00,2009-01-01 17:00,2008-12-22 08:00,2009-01-01 17:00,2008-12-22 08:00,2009-01-01 17:00,,,,,PT_Normal,,,,,32VlS1cJLkmn+ihLdQN44Q,,,,N,0,0
2821,84720,829,12512,912,1,0,N,N,N,CP_Drtn,TT_Task,DT_FixedDUR2,RV_OK,TK_NotStart,7221U54500,Concealed Flushing Cistern,2296,328,248,80,0,212,212,80,0,0,0,,,,2008-11-25 08:00,2008-12-06 17:00,,2008-10-08 08:00,2008-10-19 17:00,2008-10-08 08:00,2008-10-19 17:00,2008-10-08 08:00,2008-10-19 17:00,,,,,PT_Normal,,,,,/vGpMEq/2EWgJa+BHNlmXw,,,,N,0,0
2822,84721,829,12724,912,1,33.3,N,N,N,CP_Drtn,TT_Task,DT_FixedDUR2,RV_OK,TK_Active,7221U56050,Chasing and installation of drainage pipes,2296,160,0,80,95,190,285,120,,,,,2008-09-27 08:00,,2008-10-26 08:00,2008-11-05 17:00,,2008-10-02 08:00,2008-10-13 17:00,2008-10-02 08:00,2008-10-13 17:00,2008-09-27 08:00,2008-10-13 17:00,,,,,PT_Normal,,,,,UDE+uUD9VUOBP9hKg0IsVw,,,,N,95,0
2823,84722,829,12724,912,1,100,N,N,N,CP_Drtn,TT_Task,DT_FixedDUR2,RV_OK,TK_Complete,7221U56100,Drainage riser pipes,2296,288,0,0,284,0,284,64,,,0,,2008-09-23 08:00,2008-10-01 17:00,2008-11-13 08:00,2008-11-12 17:00,,2008-10-02 08:00,2008-10-01 17:00,,,2008-09-23 08:00,2008-10-01 17:00,,,,,PT_Normal,,,,,Ky39xbSbaEC/BJOLMhMkww,,,,N,284,0
2824,84723,829,12516,912,1,0,N,N,N,CP_Drtn,TT_Task,DT_FixedDUR2,RV_OK,TK_NotStart,7221U56150,Over head drainage pipe works,2296,80,0,64,0,257.6,257.6,64,0,0,0,,,,2008-11-13 08:00,2008-11-22 17:00,,2008-11-02 08:00,2008-11-10 17:00,2008-11-02 08:00,2008-11-10 17:00,2008-11-02 08:00,2008-11-10 17:00,,,,,PT_Normal,,,,,FQnRnk5xpk+t6uwg4P837g,,,,N,0,0
2825,84724,829,12727,912,1,0,N,N,N,CP_Drtn,TT_Task,DT_FixedDUR2,RV_OK,TK_NotStart,7221U58050,Fire fighting pipe works,2296,224,144,72,0,292,292,72,0,0,0,,,,2008-11-04 08:00,2008-11-13 17:00,,2008-10-02 08:00,2008-10-12 17:00,2008-10-02 08:00,2008-10-12 17:00,2008-10-02 08:00,2008-10-12 17:00,,,,,PT_Normal,,,,,aSgrFl3xZEO4etIfQx4WTA,,,,N,0,0
2826,84725,829,12519,912,1,0,N,N,N,CP_Drtn,TT_Task,DT_FixedDUR2,RV_OK,TK_NotStart,7221U58250,Sprinkler heads,2296,192,152,64,0,394,394,64,0,0,0,,,,2009-01-01 08:00,2009-01-10 17:00,,2008-12-04 08:00,2008-12-13 17:00,2008-12-04 08:00,2008-12-13 17:00,2008-12-04 08:00,2008-12-13 17:00,,,,,PT_Normal,,,,,+UbImj+gvkaX/erlqZFddw,,,,N,0,0
2827,84726,829,12730,912,1,46.7,N,N,N,CP_Drtn,TT_Task,DT_FixedDUR2,RV_OK,TK_Active,7221U66050,Chasing and installation of conduits,2296,72,0,64,713.06,814.94,1528,120,,,,,2008-09-24 08:00,,2008-10-13 08:00,2008-10-21 17:00,,2008-10-02 08:00,2008-10-11 17:00,2008-10-02 08:00,2008-10-11 17:00,2008-09-24 08:00,2008-10-11 17:00,,,,,PT_Normal,,,,,w+FpJ1dumUKoBp/d+Wqwgw,,,,N,713.06,0
2828,84727,829,12732,912,1,55.6,N,N,N,CP_Drtn,TT_Task,DT_FixedDUR2,RV_OK,TK_Active,7221U68050,Single core wiring,2296,240,160,32,626.66,501.34,1128,72,,,,,2008-09-27 08:00,,2008-11-06 08:00,2008-11-10 17:00,,2008-10-02 08:00,2008-10-06 17:00,2008-10-02 08:00,2008-10-06 17:00,2008-09-27 08:00,2008-10-06 17:00,,,,,PT_Normal,,,,,mzGG+Xfqx0ap9AFMKCwTOA,,,,N,626.66,0
2829,84728,829,12524,912,1,0,N,N,N,CP_Drtn,TT_Task,DT_FixedDUR2,RV_OK,TK_NotStart,7221U68350,Light Fittings,2296,192,152,120,0,1035.2,1035.2,120,0,0,0,,,,2008-12-24 08:00,2009-01-10 17:00,,2008-11-26 08:00,2008-12-13 17:00,2008-11-26 08:00,2008-12-13 17:00,2008-11-26 08:00,2008-12-13 17:00,,,,,PT_Normal,,,,,dJBPBYAFhk+ld+0jw2N6fw,,,,N,0,0
2830,84729,829,12524,912,1,0,N,N,N,CP_Drtn,TT_Task,DT_FixedDUR2,RV_OK,TK_NotStart,7221U68600,Switches & sockets,2296,184,144,72,0,494.4,494.4,72,0,0,0,,,,2008-12-31 08:00,2009-01-10 17:00,,2008-12-04 08:00,2008-12-14 17:00,2008-12-04 08:00,2008-12-14 17:00,2008-12-04 08:00,2008-12-14 17:00,,,,,PT_Normal,,,,,EAHNakS0BUumCt5H5aq+DA,,,,N,0,0
2831,84730,829,12735,912,1,0,N,N,N,CP_Drtn,TT_Task,DT_FixedDUR2,RV_OK,TK_NotStart,7221U74050,Fire alarm cables,2296,208,128,64,0,380.8,380.8,64,0,0,0,,,,2008-11-02 08:00,2008-11-10 17:00,,2008-10-02 08:00,2008-10-11 17:00,2008-10-02 08:00,2008-10-11 17:00,2008-10-02 08:00,2008-10-11 17:00,,,,,PT_Normal,,,,,xr9X9aUaCE6C0GHHBFsf/w,,,,N,0,0
2832,84731,829,12527,912,1,0,N,N,N,CP_Drtn,TT_Task,DT_FixedDUR2,RV_OK,TK_NotStart,7221U74100,Fire alarm fittings,2296,192,152,64,0,116.8,116.8,64,0,0,0,,,,2009-01-01 08:00,2009-01-10 17:00,,2008-12-04 08:00,2008-12-13 17:00,2008-12-04 08:00,2008-12-13 17:00,2008-12-04 08:00,2008-12-13 17:00,,,,,PT_Normal,,,,,YA5zyVr2lEaGFIx/r6IpnQ,,,,N,0,0
2833,84732,829,12738,912,1,0,N,N,N,CP_Drtn,TT_Task,DT_FixedDUR2,RV_OK,TK_NotStart,7221U76050,Structured cabling,2296,40,0,64,0,345.6,345.6,64,0,0,0,,,,2008-11-08 08:00,2008-11-16 17:00,,2008-11-02 08:00,2008-11-10 17:00,2008-11-02 08:00,2008-11-10 17:00,2008-11-02 08:00,2008-11-10 17:00,,,,,PT_Normal,,,,,XhviY+UQ+UWUiyOWZJEdsA,,,,N,0,0
2834,84733,829,10695,912,1,0,N,N,N,CP_Drtn,TT_Task,DT_FixedDUR2,RV_OK,TK_NotStart,7222L00000,Pre-Snagging & Disnagging for duplexes,2296,24,0,120,0,420,420,120,0,0,0,,,,2009-02-03 08:00,2009-02-19 17:00,,2009-01-31 08:00,2009-02-16 17:00,2009-01-31 08:00,2009-02-16 17:00,2009-01-31 08:00,2009-02-16 17:00,,,,,PT_Normal,,,,,XEwkuvZisEy3X0Xau2WMQg,,,,N,0,0
2835,84734,829,10695,912,1,0,N,N,N,CP_Drtn,TT_Task,DT_FixedDUR2,RV_OK,TK_NotStart,7222L00002,Pre-Snagging & Disnagging for corrid & Srv rooms,2296,104,0,64,0,214,214,64,0,0,0,,,,2009-03-07 08:00,2009-03-15 17:00,,2009-02-19 08:00,2009-02-28 17:00,2009-02-19 08:00,2009-02-28 17:00,2009-02-19 08:00,2009-02-28 17:00,,,,,PT_Normal,,,,,Q2M8sE5MlUOC3ERCEW/BHQ,,,,N,0,0
2836,84735,829,11570,912,1,100,N,N,N,CP_Drtn,TT_Task,DT_FixedDUR2,RV_OK,TK_Complete,7222L12050,Columns & walls 2L to 2U - Part 1,2306,24,0,0,3506.92,0,3506.92,24,105352.08,105352.08,0,,2008-08-21 08:00,2008-08-24 17:00,2008-10-06 08:00,2008-10-05 17:00,,2008-10-02 08:00,2008-10-01 17:00,,,2008-08-21 08:00,2008-08-24 17:00,,,,,PT_Normal,,,,,44ubkxL+ok6vk3lDuhPBYw,,,,N,3506.92,105352.08
2837,84736,829,11570,912,1,100,N,N,N,CP_Drtn,TT_Task,DT_FixedDUR2,RV_OK,TK_Complete,7222L12051,Columns & walls 2L to 2U - Part 2,2306,24,0,0,3506.92,0,3506.92,24,105352.08,105352.08,0,,2008-08-30 08:00,2008-09-01 17:00,2008-10-06 08:00,2008-10-05 17:00,,2008-10-02 08:00,2008-10-01 17:00,,,2008-08-30 08:00,2008-09-01 17:00,,,,,PT_Normal,,,,,33ZuTrVLLkekb7SimZczKw,,,,N,3506.92,105352.08
2838,84737,829,11570,912,1,100,N,N,N,CP_Drtn,TT_Task,DT_FixedDUR2,RV_OK,TK_Complete,7222L12052,Columns & walls 2L to 2U - Middle Part,2306,24,0,0,7218.37,0,7218.37,24,217616.24,217616.24,0,,2008-08-27 08:00,2008-08-30 17:00,2008-10-06 08:00,2008-10-05 17:00,,2008-10-02 08:00,2008-10-01 17:00,,,2008-08-27 08:00,2008-08-30 17:00,,,,,PT_Normal,,,,,SQFJnmw2Vk6xIw3M+ng+Sg,,,,N,7218.37,217616.24
2839,84738,829,11570,912,1,100,N,N,N,CP_Drtn,TT_Task,DT_FixedDUR2,RV_OK,TK_Complete,7222L12200,Slab @ 2U level - Part 1,2306,24,0,0,3872.99,0,3872.99,56,141659.52,141659.52,0,,2008-08-30 08:00,2008-09-06 17:00,2008-10-06 08:00,2008-10-05 17:00,,2008-10-02 08:00,2008-10-01 17:00,,,2008-08-30 08:00,2008-09-06 17:00,,,,,PT_Normal,,,,,cl0XjI+qq0udRrage47U7g,,,,N,3872.99,141659.52
2840,84739,829,11570,912,1,100,N,N,N,CP_Drtn,TT_Task,DT_FixedDUR2,RV_OK,TK_Complete,7222L12201,Slab @ 2U level - Part 2,2306,24,0,0,3865.79,0,3865.79,56,141318.64,141318.64,0,,2008-09-07 08:00,2008-09-14 17:00,2008-10-06 08:00,2008-10-05 17:00,,2008-10-02 08:00,2008-10-01 17:00,,,2008-09-07 08:00,2008-09-14 17:00,,,,,PT_Normal,,,,,sQQQKFnbT0+/+XiJOBvMyg,,,,N,3865.79,141318.64
2841,84740,829,11570,912,1,100,N,N,N,CP_Drtn,TT_Task,DT_FixedDUR2,RV_OK,TK_Complete,7222L12202,Slab @ 2U level - Middle Part,2306,24,0,0,5579.54,0,5579.54,56,204883.76,204883.76,0,,2008-09-04 08:00,2008-09-11 17:00,2008-10-06 08:00,2008-10-05 17:00,,2008-10-02 08:00,2008-10-01 17:00,,,2008-09-04 08:00,2008-09-11 17:00,,,,,PT_Normal,,,,,DEL/iusyc0KVlVq3/+tyDQ,,,,N,5579.54,204883.76
2842,84741,829,11570,912,1,100,N,N,N,CP_Drtn,TT_Task,DT_FixedDUR2,RV_OK,TK_Complete,7222L12250,Staircases 2L to 2U,2306,208,0,0,991.88,0,991.88,24,18457.6,18457.6,0,,2008-09-14 08:00,2008-09-16 17:00,2008-11-02 08:00,2008-11-01 17:00,,2008-10-02 08:00,2008-10-01 17:00,,,2008-09-14 08:00,2008-09-16 17:00,,,,,PT_Normal,,,,,36f9CyNLS0Wx3cSJL2lyqQ,,,,N,991.88,18457.6
2843,84742,829,11730,912,1,0,N,N,N,CP_Drtn,TT_Task,DT_FixedDUR2,RV_OK,TK_NotStart,7222L14050,Block works,2306,24,0,120,0,30085.5,30085.5,120,18440,0,18440,,,,2008-10-12 08:00,2008-10-28 17:00,,2008-10-08 08:00,2008-10-25 17:00,2008-10-08 08:00,2008-10-25 17:00,2008-10-08 08:00,2008-10-25 17:00,,,,,PT_Normal,,,,,HmCZX8O7NU6hWXByxSJoGw,,,,N,0,0
2844,84743,829,11354,912,1,0,N,N,N,CP_Drtn,TT_Task,DT_FixedDUR2,RV_OK,TK_NotStart,7222L16050,Plaster works,2306,40,0,120,0,24385.9,24385.9,120,19032,0,19032,,,,2008-10-29 08:00,2008-11-15 17:00,,2008-10-23 08:00,2008-11-09 17:00,2008-10-23 08:00,2008-11-09 17:00,2008-10-23 08:00,2008-11-09 17:00,,,,,PT_Normal,,,,,FXFSj1l8MkWE14bFB04PSQ,,,,N,0,0
2845,84744,829,11354,912,1,0,N,N,N,CP_Drtn,TT_Task,DT_FixedDUR2,RV_OK,TK_NotStart,7222L16051,Plaste works behind tiles,2306,184,160,120,0,10136.2,10136.2,120,7856,0,7856,,,,2008-11-19 08:00,2008-12-06 17:00,,2008-10-23 08:00,2008-11-09 17:00,2008-10-23 08:00,2008-11-09 17:00,2008-10-23 08:00,2008-11-09 17:00,,,,,PT_Normal,,,,,lbzeImQ/8UyQ9kp0TQBZyA,,,,N,0,0
2846,84745,829,11773,912,1,0,N,N,N,CP_Drtn,TT_Task,DT_FixedDUR2,RV_OK,TK_NotStart,7222L18050,Rendering works,2306,64,24,120,0,5683,5683,120,5000,0,5000,,,,2008-10-26 08:00,2008-11-11 17:00,,2008-10-16 08:00,2008-11-02 17:00,2008-10-16 08:00,2008-11-02 17:00,2008-10-16 08:00,2008-11-02 17:00,,,,,PT_Normal,,,,,RSL0NORlp0OlnT7rJswg8g,,,,N,0,0
2847,84746,829,11773,912,1,0,N,N,N,CP_Drtn,TT_Task,DT_FixedDUR2,RV_OK,TK_NotStart,7222L18100,Painting base coats,2306,40,0,120,0,26555.6,26555.6,120,24032,0,24032,,,,2008-11-06 08:00,2008-11-23 17:00,,2008-11-01 08:00,2008-11-17 17:00,2008-11-01 08:00,2008-11-17 17:00,2008-11-01 08:00,2008-11-17 17:00,,,,,PT_Normal,,,,,Sa1bF7pY40m0o6ok+8DC/w,,,,N,0,0
2848,84747,829,11773,912,1,0,N,N,N,CP_Drtn,TT_Task,DT_FixedDUR2,RV_OK,TK_NotStart,7222L18150,Painting 1st top coat for apartments,2306,136,0,72,0,17300.2,17300.2,72,16408,0,16408,,,,2009-01-15 08:00,2009-01-25 17:00,,2008-12-27 08:00,2009-01-05 17:00,2008-12-27 08:00,2009-01-05 17:00,2008-12-27 08:00,2009-01-05 17:00,,,,,PT_Normal,,,,,boF3R5HfekSjCWNE+hTMJg,,,,N,0,0
2849,84748,829,11773,912,1,0,N,N,N,CP_Drtn,TT_Task,DT_FixedDUR2,RV_OK,TK_NotStart,7222L18153,Painting 1st top coat for corridors/lobbies,2306,272,0,48,0,14370,14370,48,13640,0,13640,,,,2009-02-17 08:00,2009-02-23 17:00,,2009-01-08 08:00,2009-01-14 17:00,2009-01-08 08:00,2009-01-14 17:00,2009-01-08 08:00,2009-01-14 17:00,,,,,PT_Normal,,,,,XOV0SxC/o0OcZ9Lk49ne4Q,,,,N,0,0
2850,84749,829,11773,912,1,0,N,N,N,CP_Drtn,TT_Task,DT_FixedDUR2,RV_OK,TK_NotStart,7222L18155,Painting 1st top coat for service rooms,2306,240,0,48,0,6364.4,6364.4,48,6016,0,6016,,,,2009-02-12 08:00,2009-02-18 17:00,,2009-01-08 08:00,2009-01-14 17:00,2009-01-08 08:00,2009-01-14 17:00,2009-01-08 08:00,2009-01-14 17:00,,,,,PT_Normal,,,,,xUXkQq9FVEe1K7yK5Fkdbg,,,,N,0,0
2851,84750,829,10695,912,1,0,N,N,N,CP_Drtn,TT_Task,DT_FixedDUR2,RV_OK,TK_NotStart,7222L18200,Painting final top coat,2306,160,56,32,0,25265.8,25265.8,32,24032,0,24032,,,,2009-03-23 08:00,2009-03-26 17:00,,2009-02-28 08:00,2009-03-03 17:00,2009-02-28 08:00,2009-03-03 17:00,2009-02-28 08:00,2009-03-03 17:00,,,,,PT_Normal,,,,,kEK+2yWnyEW8rWlkPfr8Zw,,,,N,0,0
2852,84751,829,11565,912,1,0,N,N,N,CP_Drtn,TT_Task,DT_FixedDUR2,RV_OK,TK_NotStart,7222L20050,Floor tiles for apartments-dry area,2306,144,24,120,0,8846.4,8846.4,120,6464,0,6464,,,,2008-12-01 08:00,2008-12-17 17:00,,2008-11-10 08:00,2008-11-26 17:00,2008-11-10 08:00,2008-11-26 17:00,2008-11-10 08:00,2008-11-26 17:00,,,,,PT_Normal,,,,,lbrm7apckkuh8btsYXHEOg,,,,N,0,0
2853,84752,829,11565,912,1,0,N,N,N,CP_Drtn,TT_Task,DT_FixedDUR2,RV_OK,TK_NotStart,7222L20053,Floor tiles for corridors / lobbies,2306,112,0,48,0,4638,4638,48,3400,0,3400,,,,2009-01-12 08:00,2009-01-18 17:00,,2008-12-27 08:00,2009-01-01 17:00,2008-12-27 08:00,2009-01-01 17:00,2008-12-27 08:00,2009-01-01 17:00,,,,,PT_Normal,,,,,93TEWNfOX0K1I5cEX1z2FA,,,,N,0,0
2854,84753,829,11565,912,1,0,N,N,N,CP_Drtn,TT_Task,DT_FixedDUR2,RV_OK,TK_NotStart,7222L20070,Floor tiles for apartments-wet area,2306,24,0,120,0,4062,4062,120,2920,0,2920,,,,2008-12-18 08:00,2009-01-04 17:00,,2008-12-15 08:00,2008-12-31 17:00,2008-12-15 08:00,2008-12-31 17:00,2008-12-15 08:00,2008-12-31 17:00,,,,,PT_Normal,,,,,qY0Ffz35E0yBSC+YrKSk/g,,,,N,0,0
2855,84754,829,11565,912,1,0,N,N,N,CP_Drtn,TT_Task,DT_FixedDUR2,RV_OK,TK_NotStart,7222L20110,Wall tiles for apartments-wet area,2306,48,0,120,0,9159,9159,120,6026,0,6026,,,,2008-12-24 08:00,2009-01-10 17:00,,2008-12-17 08:00,2009-01-03 17:00,2008-12-17 08:00,2009-01-03 17:00,2008-12-17 08:00,2009-01-03 17:00,,,,,PT_Normal,,,,,aYGomg8pEEO0sTs+LSa2AQ,,,,N,0,0
2856,84755,829,11566,912,1,0,N,N,N,CP_Drtn,TT_Task,DT_FixedDUR2,RV_OK,TK_NotStart,7222L22150,W/P for for apartments,2306,248,0,72,0,4832.4,4832.4,72,4328,0,4328,,,,2008-12-01 08:00,2008-12-10 17:00,,2008-10-26 08:00,2008-11-04 17:00,2008-10-26 08:00,2008-11-04 17:00,2008-10-26 08:00,2008-11-04 17:00,,,,,PT_Normal,,,,,kU1z4xZSQk6LiqcTwcoeKA,,,,N,0,0
2857,84756,829,11567,912,1,0,N,N,N,CP_Drtn,TT_Task,DT_FixedDUR2,RV_OK,TK_NotStart,7222L24050,Aluminium doors & windows,2306,248,144,120,0,1976,1976,120,464,0,464,,,,2008-12-24 08:00,2009-01-10 17:00,,2008-11-18 08:00,2008-12-04 17:00,2008-11-18 08:00,2008-12-04 17:00,2008-11-18 08:00,2008-12-04 17:00,,,,,PT_Normal,,,,,psChfwRPXESIz+OtM17J0Q,,,,N,0,0
2858,84757,829,11567,912,1,0,N,N,N,CP_Drtn,TT_Task,DT_FixedDUR2,RV_OK,TK_NotStart,7222L24200,Balcony handrails,2306,64,0,120,0,2710,2710,120,1480,0,1480,,,,2009-01-11 08:00,2009-01-27 17:00,,2009-01-01 08:00,2009-01-18 17:00,2009-01-01 08:00,2009-01-18 17:00,2009-01-01 08:00,2009-01-18 17:00,,,,,PT_Normal,,,,,bPGbBCNUzUKFv4obspCyVw,,,,N,0,0
2859,84758,829,11567,912,1,0,N,N,N,CP_Drtn,TT_Task,DT_FixedDUR2,RV_OK,TK_NotStart,7222L24203,Lobby handrails,2306,352,248,64,0,946,946,64,504,0,504,,,,2009-02-23 08:00,2009-03-03 17:00,,2009-01-03 08:00,2009-01-11 17:00,2009-01-03 08:00,2009-01-11 17:00,2009-01-03 08:00,2009-01-11 17:00,,,,,PT_Normal,,,,,IPMOMx2MR0eCYVs1gwBLjQ,,,,N,0,0
2860,84759,829,11777,912,1,0,N,N,N,CP_Drtn,TT_Task,DT_FixedDUR2,RV_OK,TK_NotStart,7222L26050,Steel doors,2306,240,0,48,0,368,368,48,64,0,64,,,,2009-02-05 08:00,2009-02-11 17:00,,2009-01-01 08:00,2009-01-07 17:00,2009-01-01 08:00,2009-01-07 17:00,2009-01-01 08:00,2009-01-07 17:00,,,,,PT_Normal,,,,,QyBWRWEHcUGojk3SuweY7A,,,,N,0,0
2861,84760,829,11360,912,1,0,N,N,N,CP_Drtn,TT_Task,DT_FixedDUR2,RV_OK,TK_NotStart,7222L30050,Wooden doors,2306,104,32,176,0,2192,2192,176,576,0,576,,,,2008-12-30 08:00,2009-01-24 17:00,,2008-12-15 08:00,2009-01-08 17:00,2008-12-15 08:00,2009-01-08 17:00,2008-12-15 08:00,2009-01-08 17:00,,,,,PT_Normal,,,,,wVhushLzsUOwEcMLx8ncpQ,,,,N,0,0
2862,84761,829,11779,912,1,0,N,N,N,CP_Drtn,TT_Task,DT_FixedDUR2,RV_OK,TK_NotStart,7222L32050,Kitchen cabinets,2306,48,24,128,0,3104,3104,128,96,0,96,,,,2009-01-10 08:00,2009-01-27 17:00,,2009-01-03 08:00,2009-01-20 17:00,2009-01-03 08:00,2009-01-20 17:00,2009-01-03 08:00,2009-01-20 17:00,,,,,PT_Normal,,,,,i3miuWuCyECid8H4DBvV7w,,,,N,0,0
2863,84762,829,11779,912,1,0,N,N,N,CP_Drtn,TT_Task,DT_FixedDUR2,RV_OK,TK_NotStart,7222L32100,Vanity counters,2306,24,0,120,0,1880,1880,120,160,0,160,,,,2009-01-05 08:00,2009-01-21 17:00,,2009-01-01 08:00,2009-01-18 17:00,2009-01-01 08:00,2009-01-18 17:00,2009-01-01 08:00,2009-01-18 17:00,,,,,PT_Normal,,,,,xrhkINQMwUOySqSeeRrh+Q,,,,N,0,0
2864,84763,829,11779,912,1,0,N,N,N,CP_Drtn,TT_Task,DT_FixedDUR2,RV_OK,TK_NotStart,7222L32150,Wardrobes,2306,184,160,120,0,4152,4152,120,192,0,192,,,,2009-01-11 08:00,2009-01-27 17:00,,2008-12-15 08:00,2008-12-31 17:00,2008-12-15 08:00,2008-12-31 17:00,2008-12-15 08:00,2008-12-31 17:00,,,,,PT_Normal,,,,,kj8W+XqSmUCHxsezj3PDlA,,,,N,0,0
2865,84764,829,11571,912,1,0,N,N,N,CP_Drtn,TT_Task,DT_FixedDUR2,RV_OK,TK_NotStart,7222L34050,False ceiling works for apartments-dry area,2306,128,0,160,0,1506.16,1506.16,160,897.44,0,897.44,,,,2008-12-22 08:00,2009-01-13 17:00,,2008-12-03 08:00,2008-12-25 17:00,2008-12-03 08:00,2008-12-25 17:00,2008-12-03 08:00,2008-12-25 17:00,,,,,PT_Normal,,,,,LmBpRIqQk0yPNXcMM+h5dQ,,,,N,0,0
2866,84765,829,11571,912,1,0,N,N,N,CP_Drtn,TT_Task,DT_FixedDUR2,RV_OK,TK_NotStart,7222L34053,False ceiling works for corridors/lobbies,2306,112,0,72,0,9876,9876,72,6536,0,6536,,,,2009-01-04 08:00,2009-01-13 17:00,,2008-12-18 08:00,2008-12-28 17:00,2008-12-18 08:00,2008-12-28 17:00,2008-12-18 08:00,2008-12-28 17:00,,,,,PT_Normal,,,,,XY+Vmwz0L0O4VKhc1Je1xg,,,,N,0,0
2867,84766,829,11571,912,1,0,N,N,N,CP_Drtn,TT_Task,DT_FixedDUR2,RV_OK,TK_NotStart,7222L34070,False ceiling works for apartments-wet area,2306,24,0,160,0,709.84,709.84,160,366.56,0,366.56,,,,2008-12-07 08:00,2008-12-29 17:00,,2008-12-03 08:00,2008-12-25 17:00,2008-12-03 08:00,2008-12-25 17:00,2008-12-03 08:00,2008-12-25 17:00,,,,,PT_Normal,,,,,nzWgQ8oM3Ue9pBt/vOfwCQ,,,,N,0,0
2868,84767,829,11572,912,1,0,N,N,N,CP_Drtn,TT_Task,DT_FixedDUR2,RV_OK,TK_NotStart,7222L36050,Stone finishing top,2306,88,8,64,0,484,484,64,240,0,240,,,,2009-01-15 08:00,2009-01-24 17:00,,2009-01-03 08:00,2009-01-11 17:00,2009-01-03 08:00,2009-01-11 17:00,2009-01-03 08:00,2009-01-11 17:00,,,,,PT_Normal,,,,,MsCjLXnRGEKNdI3hZl8Tyw,,,,N,0,0
2869,84768,829,11572,912,1,0,N,N,N,CP_Drtn,TT_Task,DT_FixedDUR2,RV_OK,TK_NotStart,7222L36100,Thresholds,2306,64,8,120,0,924,924,120,536,0,536,,,,2009-01-11 08:00,2009-01-27 17:00,,2009-01-01 08:00,2009-01-18 17:00,2009-01-01 08:00,2009-01-18 17:00,2009-01-01 08:00,2009-01-18 17:00,,,,,PT_Normal,,,,,GS6AhKdXg02HlBjHaVoQGA,,,,N,0,0
2870,84769,829,11364,912,1,0,N,N,N,CP_Drtn,TT_Task,DT_FixedDUR2,RV_OK,TK_NotStart,7222L38100,Epoxy coating system,2306,240,136,48,0,816,816,48,640,0,640,,,,2009-02-25 08:00,2009-03-03 17:00,,2009-01-21 08:00,2009-01-27 17:00,2009-01-21 08:00,2009-01-27 17:00,2009-01-21 08:00,2009-01-27 17:00,,,,,PT_Normal,,,,,S8H6FjQxbUqMbu/uFhB4jg,,,,N,0,0
2871,84770,829,11783,912,1,0,N,N,N,CP_Drtn,TT_Task,DT_FixedDUR2,RV_OK,TK_NotStart,7222L40050,Duplex apartment stairs,2306,120,0,120,0,3816,3816,120,96,0,96,,,,2008-12-18 08:00,2009-01-04 17:00,,2008-12-01 08:00,2008-12-17 17:00,2008-12-01 08:00,2008-12-17 17:00,2008-12-01 08:00,2008-12-17 17:00,,,,,PT_Normal,,,,,tmgOqYdaUUqipKfhs097MQ,,,,N,0,0
2872,84771,829,11783,912,1,0,N,N,N,CP_Drtn,TT_Task,DT_FixedDUR2,RV_OK,TK_NotStart,7222L40100,Wooden steps for Duplex stairs,2306,120,0,120,0,936,936,120,96,0,96,,,,2008-12-30 08:00,2009-01-15 17:00,,2008-12-13 08:00,2008-12-29 17:00,2008-12-13 08:00,2008-12-29 17:00,2008-12-13 08:00,2008-12-29 17:00,,,,,PT_Normal,,,,,TPZbvqkolEe8/Y5R4kXHcQ,,,,N,0,0
2873,84772,829,11783,912,1,0,N,N,N,CP_Drtn,TT_Task,DT_FixedDUR2,RV_OK,TK_NotStart,7222L40150,Duplex stair railings,2306,120,96,120,0,5120,5120,120,2000,0,2000,,,,2009-01-11 08:00,2009-01-27 17:00,,2008-12-24 08:00,2009-01-10 17:00,2008-12-24 08:00,2009-01-10 17:00,2008-12-24 08:00,2009-01-10 17:00,,,,,PT_Normal,,,,,wY6uk7xy3E2kbsmfEnh1yA,,,,N,0,0
2874,84773,829,11784,912,1,0,N,N,N,CP_Drtn,TT_Task,DT_FixedDUR2,RV_OK,TK_NotStart,7222L42050,Signage works,2306,280,176,48,0,153.8,153.8,48,96,0,96,,,,2009-02-25 08:00,2009-03-03 17:00,,2009-01-15 08:00,2009-01-21 17:00,2009-01-15 08:00,2009-01-21 17:00,2009-01-15 08:00,2009-01-21 17:00,,,,,PT_Normal,,,,,y1yojdY0YEGF9AexV2yNmg,,,,N,0,0
2875,84774,829,11576,912,1,0,N,N,N,CP_Drtn,TT_Task,DT_FixedDUR2,RV_OK,TK_NotStart,7222L44050,Sub-frames,2306,40,0,120,0,1272,1272,120,576,0,576,,,,2008-10-23 08:00,2008-11-09 17:00,,2008-10-18 08:00,2008-11-03 17:00,2008-10-18 08:00,2008-11-03 17:00,2008-10-18 08:00,2008-11-03 17:00,,,,,PT_Normal,,,,,53swTwI84USpcGrvJZRB/A,,,,N,0,0
2876,84775,829,12741,912,1,100,N,N,N,CP_Drtn,TT_Task,DT_FixedDUR2,RV_OK,TK_Complete,7222L50100,MEP skeleton embedded provisions,2296,24,0,0,512,0,512,72,,,0,,2008-08-21 08:00,2008-08-31 17:00,2008-10-06 08:00,2008-10-05 17:00,,2008-10-02 08:00,2008-10-01 17:00,,,2008-08-21 08:00,2008-08-31 17:00,,,,,PT_Normal,,,,,/n/7eW6KSkiJgt2aWwtqrA,,,,N,512,0
2877,84776,829,12743,912,1,0,N,N,N,CP_Drtn,TT_Task,DT_FixedDUR2,RV_OK,TK_NotStart,7222L52050,A/C duct works,2296,136,112,160,0,831,831,160,0,0,0,,,,2008-11-05 08:00,2008-11-27 17:00,,2008-10-16 08:00,2008-11-08 17:00,2008-10-16 08:00,2008-11-08 17:00,2008-10-16 08:00,2008-11-08 17:00,,,,,PT_Normal,,,,,DskZDYJPRkOns+F0fPiElw,,,,N,0,0
2878,84777,829,12743,912,1,0,N,N,N,CP_Drtn,TT_Task,DT_FixedDUR2,RV_OK,TK_NotStart,7222L52100,Chilled water pipe works,2296,88,64,72,0,787,787,72,0,0,0,,,,2008-11-09 08:00,2008-11-18 17:00,,2008-10-27 08:00,2008-11-05 17:00,2008-10-27 08:00,2008-11-05 17:00,2008-10-27 08:00,2008-11-05 17:00,,,,,PT_Normal,,,,,bASZUDoL+kOpszayED0T8g,,,,N,0,0
2879,84778,829,12535,912,1,0,N,N,N,CP_Drtn,TT_Task,DT_FixedDUR2,RV_OK,TK_NotStart,7222L52150,FCU's hanging,2296,144,120,64,0,935.2,935.2,64,0,0,0,,,,2008-11-16 08:00,2008-11-24 17:00,,2008-10-26 08:00,2008-11-03 17:00,2008-10-26 08:00,2008-11-03 17:00,2008-10-26 08:00,2008-11-03 17:00,,,,,PT_Normal,,,,,1L8U5YLRa0ahC5qg3HvpWg,,,,N,0,0
2880,84779,829,12535,912,1,0,N,N,N,CP_Drtn,TT_Task,DT_FixedDUR2,RV_OK,TK_NotStart,7222L52300,FCU's assembly & duct connections,2296,24,0,72,0,943.2,943.2,72,0,0,0,,,,2008-11-26 08:00,2008-12-06 17:00,,2008-11-23 08:00,2008-12-02 17:00,2008-11-23 08:00,2008-12-02 17:00,2008-11-23 08:00,2008-12-02 17:00,,,,,PT_Normal,,,,,0LOAWWFNHUuj5Je57lbBUA,,,,N,0,0
2881,84780,829,12535,912,1,0,N,N,N,CP_Drtn,TT_Task,DT_FixedDUR2,RV_OK,TK_NotStart,7222L52350,Grills & diffusers,2296,344,40,80,0,872,872,80,0,0,0,,,,2009-02-15 08:00,2009-02-25 17:00,,2008-12-27 08:00,2009-01-06 17:00,2008-12-27 08:00,2009-01-06 17:00,2008-12-27 08:00,2009-01-06 17:00,,,,,PT_Normal,,,,,+/OZ4GRASkOCtJP4zEThHA,,,,N,0,0
2882,84781,829,12743,912,1,0,N,N,N,CP_Drtn,TT_Task,DT_FixedDUR2,RV_OK,TK_NotStart,7222L52550,A/C duct risers,2296,24,0,64,0,1626,1626,64,0,0,0,,,,2008-11-10 08:00,2008-11-18 17:00,,2008-11-06 08:00,2008-11-15 17:00,2008-11-06 08:00,2008-11-15 17:00,2008-11-06 08:00,2008-11-15 17:00,,,,,PT_Normal,,,,,QslPo5lFxE2HaC6kyBCc2g,,,,N,0,0
2883,84782,829,12746,912,1,0,N,N,N,CP_Drtn,TT_Task,DT_FixedDUR2,RV_OK,TK_NotStart,7222L54050,Chasing & Pex pipe works,2296,160,8,120,0,395,395,120,0,0,0,,,,2008-11-09 08:00,2008-11-25 17:00,,2008-10-16 08:00,2008-11-02 17:00,2008-10-16 08:00,2008-11-02 17:00,2008-10-16 08:00,2008-11-02 17:00,,,,,PT_Normal,,,,,oOLDSg6j5Uuk2ATg2BxV/w,,,,N,0,0
2884,84783,829,12746,912,1,0,N,N,N,CP_Drtn,TT_Task,DT_FixedDUR2,RV_OK,TK_NotStart,7222L54100,Over head distribution water pipe network,2296,96,0,64,0,8314,8314,64,0,0,0,,,,2008-11-15 08:00,2008-11-23 17:00,,2008-11-01 08:00,2008-11-09 17:00,2008-11-01 08:00,2008-11-09 17:00,2008-11-01 08:00,2008-11-09 17:00,,,,,PT_Normal,,,,,asOB5ba0AU2lu43/+zTcuQ,,,,N,0,0
2885,84784,829,12539,912,1,0,N,N,N,CP_Drtn,TT_Task,DT_FixedDUR2,RV_OK,TK_NotStart,7222L54150,Water meter cabinet pipe works,2296,288,152,120,0,340,340,120,0,0,0,,,,2009-01-11 08:00,2009-01-27 17:00,,2008-11-30 08:00,2008-12-16 17:00,2008-11-30 08:00,2008-12-16 17:00,2008-11-30 08:00,2008-12-16 17:00,,,,,PT_Normal,,,,,R6UVeYeXAEmyP8CEdJrAqg,,,,N,0,0
2886,84785,829,12538,912,1,0,N,N,N,CP_Drtn,TT_Task,DT_FixedDUR2,RV_OK,TK_NotStart,7222L54250,Bathtubs,2296,248,0,80,0,273.6,273.6,80,0,0,0,,,,2008-12-07 08:00,2008-12-17 17:00,,2008-11-01 08:00,2008-11-11 17:00,2008-11-01 08:00,2008-11-11 17:00,2008-11-01 08:00,2008-11-11 17:00,,,,,PT_Normal,,,,,EvRLNI/DK0iGWKCcPvEHMg,,,,N,0,0
2887,84786,829,12538,912,1,0,N,N,N,CP_Drtn,TT_Task,DT_FixedDUR2,RV_OK,TK_NotStart,7222L54300,Water heater,2296,128,64,64,0,310.4,310.4,64,0,0,0,,,,2008-11-22 08:00,2008-11-30 17:00,,2008-11-03 08:00,2008-11-11 17:00,2008-11-03 08:00,2008-11-11 17:00,2008-11-03 08:00,2008-11-11 17:00,,,,,PT_Normal,,,,,qv3AM551mk2PXWDIzUJh7w,,,,N,0,0
2888,84787,829,12538,912,1,0,N,N,N,CP_Drtn,TT_Task,DT_FixedDUR2,RV_OK,TK_NotStart,7222L54350,Over head pipe assembly & vlave connections,2296,96,72,72,0,237,237,72,0,0,0,,,,2008-11-26 08:00,2008-12-06 17:00,,2008-11-12 08:00,2008-11-22 17:00,2008-11-12 08:00,2008-11-22 17:00,2008-11-12 08:00,2008-11-22 17:00,,,,,PT_Normal,,,,,O4Xifa1N3EqICBO8ZHjfzw,,,,N,0,0
2889,84788,829,12539,912,1,0,N,N,N,CP_Drtn,TT_Task,DT_FixedDUR2,RV_OK,TK_NotStart,7222L54400,Sanitary fixures,2296,88,0,120,0,516,516,120,0,0,0,,,,2009-01-07 08:00,2009-01-24 17:00,,2008-12-25 08:00,2009-01-11 17:00,2008-12-25 08:00,2009-01-11 17:00,2008-12-25 08:00,2009-01-11 17:00,,,,,PT_Normal,,,,,J5tzJ8zuBk6q2+vSfR9/Kg,,,,N,0,0
2890,84789,829,12539,912,1,0,N,N,N,CP_Drtn,TT_Task,DT_FixedDUR2,RV_OK,TK_NotStart,7222L54450,Mirrors,2296,24,0,120,0,186,186,120,0,0,0,,,,2009-01-11 08:00,2009-01-27 17:00,,2009-01-07 08:00,2009-01-24 17:00,2009-01-07 08:00,2009-01-24 17:00,2009-01-07 08:00,2009-01-24 17:00,,,,,PT_Normal,,,,,y5l1x6hqa0Cx0ebz/HnGQA,,,,N,0,0
2891,84790,829,12538,912,1,0,N,N,N,CP_Drtn,TT_Task,DT_FixedDUR2,RV_OK,TK_NotStart,7222L54500,Concealed Flushing Cistern,2296,248,224,80,0,212,212,80,0,0,0,,,,2008-12-07 08:00,2008-12-17 17:00,,2008-11-01 08:00,2008-11-11 17:00,2008-11-01 08:00,2008-11-11 17:00,2008-11-01 08:00,2008-11-11 17:00,,,,,PT_Normal,,,,,3Pyr/hTcYUibDGqKTulmcw,,,,N,0,0
2892,84791,829,12750,912,1,0,N,N,N,CP_Drtn,TT_Task,DT_FixedDUR2,RV_OK,TK_NotStart,7222L56050,Chasing and installation of drainage pipes,2296,80,0,120,0,285,285,120,0,0,0,,,,2008-10-28 08:00,2008-11-13 17:00,,2008-10-16 08:00,2008-11-02 17:00,2008-10-16 08:00,2008-11-02 17:00,2008-10-16 08:00,2008-11-02 17:00,,,,,PT_Normal,,,,,vEq7I99rNke+i1BkEgqnyw,,,,N,0,0
2893,84792,829,12750,912,1,0,N,N,N,CP_Drtn,TT_Task,DT_FixedDUR2,RV_OK,TK_NotStart,7222L56100,Drainage riser pipes,2296,192,72,64,0,284,284,64,0,0,0,,,,2008-11-13 08:00,2008-11-22 17:00,,2008-10-16 08:00,2008-10-25 17:00,2008-10-16 08:00,2008-10-25 17:00,2008-10-16 08:00,2008-10-25 17:00,,,,,PT_Normal,,,,,wYLMhOU+aE+kLTpuLBlKdg,,,,N,0,0
2894,84793,829,12542,912,1,0,N,N,N,CP_Drtn,TT_Task,DT_FixedDUR2,RV_OK,TK_NotStart,7222L56150,Over head drainage pipe works,2296,152,128,64,0,257.6,257.6,64,0,0,0,,,,2008-11-27 08:00,2008-12-06 17:00,,2008-11-05 08:00,2008-11-13 17:00,2008-11-05 08:00,2008-11-13 17:00,2008-11-05 08:00,2008-11-13 17:00,,,,,PT_Normal,,,,,L8qp+f8t6U6b1Lh6WRR/tw,,,,N,0,0
2895,84794,829,12753,912,1,0,N,N,N,CP_Drtn,TT_Task,DT_FixedDUR2,RV_OK,TK_NotStart,7222L58050,Fire fighting pipe works,2296,160,136,72,0,292,292,72,0,0,0,,,,2008-11-18 08:00,2008-11-27 17:00,,2008-10-26 08:00,2008-11-04 17:00,2008-10-26 08:00,2008-11-04 17:00,2008-10-26 08:00,2008-11-04 17:00,,,,,PT_Normal,,,,,Ny8oETkvikSVR0mtiV6gwQ,,,,N,0,0
2896,84795,829,12545,912,1,0,N,N,N,CP_Drtn,TT_Task,DT_FixedDUR2,RV_OK,TK_NotStart,7222L58200,Fire cabinet complete,2296,272,96,64,0,339,339,64,0,0,0,,,,2009-02-23 08:00,2009-03-03 17:00,,2009-01-14 08:00,2009-01-22 17:00,2009-01-14 08:00,2009-01-22 17:00,2009-01-14 08:00,2009-01-22 17:00,,,,,PT_Normal,,,,,pd412D+lkEG5zb/Y6eDB4A,,,,N,0,0
2897,84796,829,12545,912,1,0,N,N,N,CP_Drtn,TT_Task,DT_FixedDUR2,RV_OK,TK_NotStart,7222L58250,Sprinkler heads,2296,304,0,120,0,450,450,120,0,0,0,,,,2009-02-09 08:00,2009-02-25 17:00,,2008-12-27 08:00,2009-01-12 17:00,2008-12-27 08:00,2009-01-12 17:00,2008-12-27 08:00,2009-01-12 17:00,,,,,PT_Normal,,,,,wvH36alVZESmEeTGPpUtdw,,,,N,0,0
2898,84797,829,12756,912,1,0,N,N,N,CP_Drtn,TT_Task,DT_FixedDUR2,RV_OK,TK_NotStart,7222L60050,LPG piping,2296,288,0,72,0,292,292,72,0,0,0,,,,2008-12-30 08:00,2009-01-08 17:00,,2008-11-18 08:00,2008-11-27 17:00,2008-11-18 08:00,2008-11-27 17:00,2008-11-18 08:00,2008-11-27 17:00,,,,,PT_Normal,,,,,1OS0DYhEK0W2p6V1H7eDpA,,,,N,0,0
2899,84798,829,12548,912,1,0,N,N,N,CP_Drtn,TT_Task,DT_FixedDUR2,RV_OK,TK_NotStart,7222L60100,Gas meter & leak detector,2296,344,56,72,0,248,248,72,0,0,0,,,,2009-01-18 08:00,2009-01-27 17:00,,2008-11-29 08:00,2008-12-08 17:00,2008-11-29 08:00,2008-12-08 17:00,2008-11-29 08:00,2008-12-08 17:00,,,,,PT_Normal,,,,,aX4PuChdLEeWvm7N5Au2Cg,,,,N,0,0
2900,84799,829,12759,912,1,0,N,N,N,CP_Drtn,TT_Task,DT_FixedDUR2,RV_OK,TK_NotStart,7222L62050,BMS cabling,2296,80,56,48,0,470.4,470.4,48,0,0,0,,,,2008-11-30 08:00,2008-12-06 17:00,,2008-11-18 08:00,2008-11-24 17:00,2008-11-18 08:00,2008-11-24 17:00,2008-11-18 08:00,2008-11-24 17:00,,,,,PT_Normal,,,,,OcNF3awWBEyUpMpPFWaElA,,,,N,0,0
2901,84800,829,12551,912,1,0,N,N,N,CP_Drtn,TT_Task,DT_FixedDUR2,RV_OK,TK_NotStart,7222L62100,DGC & cable termination to equipments,2296,240,0,48,0,329.6,329.6,48,0,0,0,,,,2009-02-19 08:00,2009-02-25 17:00,,2009-01-15 08:00,2009-01-21 17:00,2009-01-15 08:00,2009-01-21 17:00,2009-01-15 08:00,2009-01-21 17:00,,,,,PT_Normal,,,,,XNb9rXXY7EeJ7/CKnel+yw,,,,N,0,0
2902,84801,829,12762,912,1,0,N,N,N,CP_Drtn,TT_Task,DT_FixedDUR2,RV_OK,TK_NotStart,7222L66050,Chasing and installation of conduits,2296,40,0,120,0,1809.6,1809.6,120,0,0,0,,,,2008-10-23 08:00,2008-11-09 17:00,,2008-10-18 08:00,2008-11-03 17:00,2008-10-18 08:00,2008-11-03 17:00,2008-10-18 08:00,2008-11-03 17:00,,,,,PT_Normal,,,,,I4MOFXR05US5Fl3Wi8PDPQ,,,,N,0,0
2903,84802,829,12762,912,1,0,N,N,N,CP_Drtn,TT_Task,DT_FixedDUR2,RV_OK,TK_NotStart,7222L66100,Cable trays & trunking,2296,40,0,64,0,1472,1472,64,0,0,0,,,,2008-11-18 08:00,2008-11-26 17:00,,2008-11-12 08:00,2008-11-20 17:00,2008-11-12 08:00,2008-11-20 17:00,2008-11-12 08:00,2008-11-20 17:00,,,,,PT_Normal,,,,,IXHFljOjWEafZ7aqoG9QGg,,,,N,0,0
2904,84803,829,12764,912,1,0,N,N,N,CP_Drtn,TT_Task,DT_FixedDUR2,RV_OK,TK_NotStart,7222L68050,Single core wiring,2296,176,152,72,0,1128,1128,72,0,0,0,,,,2008-11-15 08:00,2008-11-24 17:00,,2008-10-20 08:00,2008-10-29 17:00,2008-10-20 08:00,2008-10-29 17:00,2008-10-20 08:00,2008-10-29 17:00,,,,,PT_Normal,,,,,0w+w5RwKKU2QmYUIIMWexQ,,,,N,0,0
2905,84804,829,12556,912,1,0,N,N,N,CP_Drtn,TT_Task,DT_FixedDUR2,RV_OK,TK_NotStart,7222L68100,DB enclosure,2296,56,16,64,0,416,416,64,0,0,0,,,,2008-11-03 08:00,2008-11-11 17:00,,2008-10-26 08:00,2008-11-03 17:00,2008-10-26 08:00,2008-11-03 17:00,2008-10-26 08:00,2008-11-03 17:00,,,,,PT_Normal,,,,,te9XIP+DBEm8igFOECM9kg,,,,N,0,0
2906,84805,829,12556,912,1,0,N,N,N,CP_Drtn,TT_Task,DT_FixedDUR2,RV_OK,TK_NotStart,7222L68150,LV feeder cables,2296,112,72,72,0,2606.4,2606.4,72,0,0,0,,,,2008-12-08 08:00,2008-12-17 17:00,,2008-11-22 08:00,2008-12-01 17:00,2008-11-22 08:00,2008-12-01 17:00,2008-11-22 08:00,2008-12-01 17:00,,,,,PT_Normal,,,,,8wTJnHPdkEmAJnwJU9kPkw,,,,N,0,0
2907,84806,829,12557,912,1,0,N,N,N,CP_Drtn,TT_Task,DT_FixedDUR2,RV_OK,TK_NotStart,7222L68250,DB-breakers assembly,2296,152,128,72,0,564.8,564.8,72,0,0,0,,,,2009-01-18 08:00,2009-01-27 17:00,,2008-12-27 08:00,2009-01-05 17:00,2008-12-27 08:00,2009-01-05 17:00,2008-12-27 08:00,2009-01-05 17:00,,,,,PT_Normal,,,,,RCHgIeJd3k+c8WvSnjv7Rw,,,,N,0,0
2908,84807,829,12557,912,1,0,N,N,N,CP_Drtn,TT_Task,DT_FixedDUR2,RV_OK,TK_NotStart,7222L68300,SMDB,2296,240,0,48,0,1315.2,1315.2,48,0,0,0,,,,2009-02-18 08:00,2009-02-24 17:00,,2009-01-14 08:00,2009-01-20 17:00,2009-01-14 08:00,2009-01-20 17:00,2009-01-14 08:00,2009-01-20 17:00,,,,,PT_Normal,,,,,WhW7bD9afUGYBZAqS855DA,,,,N,0,0
2909,84808,829,12557,912,1,0,N,N,N,CP_Drtn,TT_Task,DT_FixedDUR2,RV_OK,TK_NotStart,7222L68350,Light Fittings,2296,144,120,120,0,1105.6,1105.6,120,0,0,0,,,,2009-01-11 08:00,2009-01-27 17:00,,2008-12-21 08:00,2009-01-06 17:00,2008-12-21 08:00,2009-01-06 17:00,2008-12-21 08:00,2009-01-06 17:00,,,,,PT_Normal,,,,,VVHSwX2g10GIVSP+UqORlA,,,,N,0,0
2910,84809,829,12557,912,1,0,N,N,N,CP_Drtn,TT_Task,DT_FixedDUR2,RV_OK,TK_NotStart,7222L68400,Lighting Control Panels,2296,272,96,64,0,275.2,275.2,64,0,0,0,,,,2009-02-23 08:00,2009-03-03 17:00,,2009-01-14 08:00,2009-01-22 17:00,2009-01-14 08:00,2009-01-22 17:00,2009-01-14 08:00,2009-01-22 17:00,,,,,PT_Normal,,,,,MUSKlpnrz0SohVpaWSelYQ,,,,N,0,0
2911,84810,829,12557,912,1,0,N,N,N,CP_Drtn,TT_Task,DT_FixedDUR2,RV_OK,TK_NotStart,7222L68600,Switches & sockets,2296,152,128,72,0,494.4,494.4,72,0,0,0,,,,2009-01-18 08:00,2009-01-27 17:00,,2008-12-27 08:00,2009-01-05 17:00,2008-12-27 08:00,2009-01-05 17:00,2008-12-27 08:00,2009-01-05 17:00,,,,,PT_Normal,,,,,60U3YxglYku844LboxQhig,,,,N,0,0
2912,84811,829,12768,912,1,0,N,N,N,CP_Drtn,TT_Task,DT_FixedDUR2,RV_OK,TK_NotStart,7222L70050,Central Battery cables,2296,144,120,64,0,345.6,345.6,64,0,0,0,,,,2008-11-16 08:00,2008-11-24 17:00,,2008-10-26 08:00,2008-11-03 17:00,2008-10-26 08:00,2008-11-03 17:00,2008-10-26 08:00,2008-11-03 17:00,,,,,PT_Normal,,,,,0krsZBaeZEiX5sghhO5bRA,,,,N,0,0
2913,84812,829,12560,912,1,0,N,N,N,CP_Drtn,TT_Task,DT_FixedDUR2,RV_OK,TK_NotStart,7222L70150,Emergency & exit light fittings,2296,368,0,48,0,188.8,188.8,48,0,0,0,,,,2009-02-25 08:00,2009-03-03 17:00,,2009-01-03 08:00,2009-01-08 17:00,2009-01-03 08:00,2009-01-08 17:00,2009-01-03 08:00,2009-01-08 17:00,,,,,PT_Normal,,,,,9dlBcNv8vkKZl0kzIINQeQ,,,,N,0,0
2914,84813,829,12771,912,1,0,N,N,N,CP_Drtn,TT_Task,DT_FixedDUR2,RV_OK,TK_NotStart,7222L72200,Intercom system cables,2296,64,40,48,0,576,576,48,0,0,0,,,,2008-11-30 08:00,2008-12-06 17:00,,2008-11-20 08:00,2008-11-26 17:00,2008-11-20 08:00,2008-11-26 17:00,2008-11-20 08:00,2008-11-26 17:00,,,,,PT_Normal,,,,,y82i6102u0SVlTgtxIZtTw,,,,N,0,0
2915,84814,829,12563,912,1,0,N,N,N,CP_Drtn,TT_Task,DT_FixedDUR2,RV_OK,TK_NotStart,7222L72250,Intercom system equipments,2296,136,112,64,0,486.4,486.4,64,0,0,0,,,,2009-01-19 08:00,2009-01-27 17:00,,2008-12-30 08:00,2009-01-07 17:00,2008-12-30 08:00,2009-01-07 17:00,2008-12-30 08:00,2009-01-07 17:00,,,,,PT_Normal,,,,,M9u2jQg86kaBOeqfy3JloQ,,,,N,0,0
2916,84815,829,12774,912,1,0,N,N,N,CP_Drtn,TT_Task,DT_FixedDUR2,RV_OK,TK_NotStart,7222L74050,Fire alarm cables,2296,144,120,64,0,380.8,380.8,64,0,0,0,,,,2008-11-16 08:00,2008-11-24 17:00,,2008-10-26 08:00,2008-11-03 17:00,2008-10-26 08:00,2008-11-03 17:00,2008-10-26 08:00,2008-11-03 17:00,,,,,PT_Normal,,,,,IPsMvHG+8E2deFsYmzsRqw,,,,N,0,0
2917,84816,829,12566,912,1,0,N,N,N,CP_Drtn,TT_Task,DT_FixedDUR2,RV_OK,TK_NotStart,7222L74100,Fire alarm fittings,2296,288,0,80,0,132.8,132.8,80,0,0,0,,,,2009-02-15 08:00,2009-02-25 17:00,,2009-01-04 08:00,2009-01-14 17:00,2009-01-04 08:00,2009-01-14 17:00,2009-01-04 08:00,2009-01-14 17:00,,,,,PT_Normal,,,,,WuN4eqzP70m1MCua5WtngA,,,,N,0,0
2918,84817,829,12777,912,1,0,N,N,N,CP_Drtn,TT_Task,DT_FixedDUR2,RV_OK,TK_NotStart,7222L76050,Structured cabling,2296,80,40,64,0,345.6,345.6,64,0,0,0,,,,2008-11-30 08:00,2008-12-08 17:00,,2008-11-18 08:00,2008-11-26 17:00,2008-11-18 08:00,2008-11-26 17:00,2008-11-18 08:00,2008-11-26 17:00,,,,,PT_Normal,,,,,IPqxI78iJkW0Bsia5V78vA,,,,N,0,0
2919,84818,829,12569,912,1,0,N,N,N,CP_Drtn,TT_Task,DT_FixedDUR2,RV_OK,TK_NotStart,7222L76100,Consolidated pionts,2296,40,16,64,0,486.4,486.4,64,0,0,0,,,,2008-12-09 08:00,2008-12-17 17:00,,2008-12-03 08:00,2008-12-11 17:00,2008-12-03 08:00,2008-12-11 17:00,2008-12-03 08:00,2008-12-11 17:00,,,,,PT_Normal,,,,,q8NS/d2GlkSvu1CwPX+hpw,,,,N,0,0
2920,84819,829,11363,912,1,100,N,N,N,CP_Drtn,TT_Task,DT_FixedDUR2,RV_OK,TK_Complete,7222U12050,Columns & walls 2U to Roof - Part 1,2306,24,0,0,3823,0,3823,24,114913.84,114913.84,0,,2008-09-07 08:00,2008-09-09 17:00,2008-10-06 08:00,2008-10-05 17:00,,2008-10-02 08:00,2008-10-01 17:00,,,2008-09-07 08:00,2008-09-09 17:00,,,,,PT_Normal,,,,,U/If6EI/OE2oA4l+epk+0A,,,,N,3823,114913.84
2921,84820,829,11363,912,1,100,N,N,N,CP_Drtn,TT_Task,DT_FixedDUR2,RV_OK,TK_Complete,7222U12051,Columns & walls 2U to Roof - Part 2,2306,24,0,0,3823,0,3823,24,114913.84,114913.84,0,,2008-09-15 08:00,2008-09-17 17:00,2008-10-06 08:00,2008-10-05 17:00,,2008-10-02 08:00,2008-10-01 17:00,,,2008-09-15 08:00,2008-09-17 17:00,,,,,PT_Normal,,,,,EUQMGXEc20mBzOI6ndVqmQ,,,,N,3823,114913.84
2922,84821,829,11363,912,1,100,N,N,N,CP_Drtn,TT_Task,DT_FixedDUR2,RV_OK,TK_Complete,7222U12052,Columns & walls 2U to Roof - Middle Part,2306,24,0,0,8166.64,0,8166.64,24,246301.52,246301.52,0,,2008-09-13 08:00,2008-09-15 17:00,2008-10-06 08:00,2008-10-05 17:00,,2008-10-02 08:00,2008-10-01 17:00,,,2008-09-13 08:00,2008-09-15 17:00,,,,,PT_Normal,,,,,V8C8wJ2hUEKS9cVVmYUpiA,,,,N,8166.64,246301.52
2923,84822,829,11363,912,1,100,N,N,N,CP_Drtn,TT_Task,DT_FixedDUR2,RV_OK,TK_Complete,7222U12200,Slab @ Roof level - Part 1,2306,24,0,0,4733.44,0,4733.44,56,173509.36,173509.36,0,,2008-09-15 08:00,2008-09-22 17:00,2008-10-06 08:00,2008-10-05 17:00,,2008-10-02 08:00,2008-10-01 17:00,,,2008-09-15 08:00,2008-09-22 17:00,,,,,PT_Normal,,,,,UZEu42voJUOxVgvvbOcOhg,,,,N,4733.44,173509.36
2924,84823,829,11363,912,1,100,N,N,N,CP_Drtn,TT_Task,DT_FixedDUR2,RV_OK,TK_Complete,7222U12201,Slab @ Roof level - Part 2,2306,24,0,0,4733.44,0,4733.44,56,173509.36,173509.36,0,,2008-09-23 08:00,2008-09-30 17:00,2008-10-06 08:00,2008-10-05 17:00,,2008-10-02 08:00,2008-10-01 17:00,,,2008-09-23 08:00,2008-09-30 17:00,,,,,PT_Normal,,,,,gXv9peFysUK7SGpz2pglrg,,,,N,4733.44,173509.36
2925,84824,829,11363,912,1,100,N,N,N,CP_Drtn,TT_Task,DT_FixedDUR2,RV_OK,TK_Complete,7222U12202,Slab @ Roof level - Middle Part,2306,24,0,0,6554.96,0,6554.96,56,241077.52,241077.52,0,,2008-09-21 08:00,2008-09-28 17:00,2008-10-06 08:00,2008-10-05 17:00,,2008-10-02 08:00,2008-10-01 17:00,,,2008-09-21 08:00,2008-09-28 17:00,,,,,PT_Normal,,,,,Wswvez1pc0+liPtbVgaFsg,,,,N,6554.96,241077.52
2926,84825,829,11363,912,1,66.7,N,N,N,CP_Drtn,TT_Task,DT_FixedDUR2,RV_OK,TK_Active,7222U12250,Staircases 2U to Roof,2306,208,0,8,661.27,330.61,991.88,24,18457.6,12305.12,6152.48,,2008-09-30 08:00,,2008-11-02 08:00,2008-11-02 17:00,,2008-10-02 08:00,2008-10-02 17:00,2008-10-02 08:00,2008-10-02 17:00,2008-09-30 08:00,2008-10-02 17:00,,,,,PT_Normal,,,,,/OWMY6X9k0uX6Ar/z/7HRw,,,,N,661.27,12305.12
2927,84826,829,11369,912,1,0,N,N,N,CP_Drtn,TT_Task,DT_FixedDUR2,RV_OK,TK_NotStart,7222U14050,Block works,2306,24,0,120,0,30085.5,30085.5,120,18440,0,18440,,,,2008-10-21 08:00,2008-11-06 17:00,,2008-10-18 08:00,2008-11-03 17:00,2008-10-18 08:00,2008-11-03 17:00,2008-10-18 08:00,2008-11-03 17:00,,,,,PT_Normal,,,,,QeIBzE1f0ki1XKzUv63u+g,,,,N,0,0
2928,84827,829,11788,912,1,0,N,N,N,CP_Drtn,TT_Task,DT_FixedDUR2,RV_OK,TK_NotStart,7222U16050,Plaster works,2306,56,0,120,0,24375.8,24375.8,120,19024,0,19024,,,,2008-11-10 08:00,2008-11-26 17:00,,2008-11-02 08:00,2008-11-18 17:00,2008-11-02 08:00,2008-11-18 17:00,2008-11-02 08:00,2008-11-18 17:00,,,,,PT_Normal,,,,,eg9AQ4NhfU6zqZetdCtaAQ,,,,N,0,0
2929,84828,829,11788,912,1,0,N,N,N,CP_Drtn,TT_Task,DT_FixedDUR2,RV_OK,TK_NotStart,7222U16051,Plaste works behind tiles,2306,144,120,120,0,5424,5424,120,4160,0,4160,,,,2008-11-29 08:00,2008-12-15 17:00,,2008-11-08 08:00,2008-11-24 17:00,2008-11-08 08:00,2008-11-24 17:00,2008-11-08 08:00,2008-11-24 17:00,,,,,PT_Normal,,,,,U3VmAiJLL026NcsJWtGzhQ,,,,N,0,0
2930,84829,829,11580,912,1,0,N,N,N,CP_Drtn,TT_Task,DT_FixedDUR2,RV_OK,TK_NotStart,7222U18050,Rendering works,2306,80,24,120,0,5683,5683,120,5000,0,5000,,,,2008-11-06 08:00,2008-11-23 17:00,,2008-10-26 08:00,2008-11-11 17:00,2008-10-26 08:00,2008-11-11 17:00,2008-10-26 08:00,2008-11-11 17:00,,,,,PT_Normal,,,,,V14jiTqIMEmqLupX0r42Fg,,,,N,0,0
2931,84830,829,11580,912,1,0,N,N,N,CP_Drtn,TT_Task,DT_FixedDUR2,RV_OK,TK_NotStart,7222U18100,Painting base coats,2306,56,0,120,0,26546.2,26546.2,120,24024,0,24024,,,,2008-11-18 08:00,2008-12-04 17:00,,2008-11-10 08:00,2008-11-26 17:00,2008-11-10 08:00,2008-11-26 17:00,2008-11-10 08:00,2008-11-26 17:00,,,,,PT_Normal,,,,,Ur2XtAEz90Khy96brWh0aw,,,,N,0,0
2932,84831,829,11580,912,1,0,N,N,N,CP_Drtn,TT_Task,DT_FixedDUR2,RV_OK,TK_NotStart,7222U18150,Painting 1st top coat for apartments,2306,96,0,72,0,17300.2,17300.2,72,16408,0,16408,,,,2009-01-19 08:00,2009-01-28 17:00,,2009-01-05 08:00,2009-01-14 17:00,2009-01-05 08:00,2009-01-14 17:00,2009-01-05 08:00,2009-01-14 17:00,,,,,PT_Normal,,,,,XAXdXqAMh0SH7nwhFWZuyA,,,,N,0,0
2933,84832,829,11581,912,1,0,N,N,N,CP_Drtn,TT_Task,DT_FixedDUR2,RV_OK,TK_NotStart,7222U20050,Floor tiles for apartments-dry area,2306,120,0,120,0,9570,9570,120,7000,0,7000,,,,2008-12-07 08:00,2008-12-23 17:00,,2008-11-19 08:00,2008-12-06 17:00,2008-11-19 08:00,2008-12-06 17:00,2008-11-19 08:00,2008-12-06 17:00,,,,,PT_Normal,,,,,pFsHMHwRFE6npOyAKbWLQA,,,,N,0,0
2934,84833,829,11581,912,1,0,N,N,N,CP_Drtn,TT_Task,DT_FixedDUR2,RV_OK,TK_NotStart,7222U20070,Floor tiles for apartments-wet area,2306,24,0,120,0,3835.2,3835.2,120,2752,0,2752,,,,2008-12-25 08:00,2009-01-11 17:00,,2008-12-22 08:00,2009-01-07 17:00,2008-12-22 08:00,2009-01-07 17:00,2008-12-22 08:00,2009-01-07 17:00,,,,,PT_Normal,,,,,xFlC7X00+Em9nTz5ii7GzA,,,,N,0,0
2935,84834,829,11581,912,1,0,N,N,N,CP_Drtn,TT_Task,DT_FixedDUR2,RV_OK,TK_NotStart,7222U20110,Wall tiles for apartments-wet area,2306,80,0,120,0,9066,9066,120,5964,0,5964,,,,2009-01-03 08:00,2009-01-19 17:00,,2008-12-22 08:00,2009-01-07 17:00,2008-12-22 08:00,2009-01-07 17:00,2008-12-22 08:00,2009-01-07 17:00,,,,,PT_Normal,,,,,C4vPi6rLiE2Ta3Y33gLM9g,,,,N,0,0
2936,84835,829,11373,912,1,0,N,N,N,CP_Drtn,TT_Task,DT_FixedDUR2,RV_OK,TK_NotStart,7222U22150,W/P for for apartments,2306,104,0,120,0,2980,2980,120,2600,0,2600,,,,2008-11-19 08:00,2008-12-06 17:00,,2008-11-04 08:00,2008-11-20 17:00,2008-11-04 08:00,2008-11-20 17:00,2008-11-04 08:00,2008-11-20 17:00,,,,,PT_Normal,,,,,Z1LtYEHSpUm7HtIrl9NJHw,,,,N,0,0
2937,84836,829,11792,912,1,0,N,N,N,CP_Drtn,TT_Task,DT_FixedDUR2,RV_OK,TK_NotStart,7222U24050,Aluminium doors & windows,2306,144,80,120,0,1208,1208,120,272,0,272,,,,2008-12-18 08:00,2009-01-04 17:00,,2008-11-27 08:00,2008-12-14 17:00,2008-11-27 08:00,2008-12-14 17:00,2008-11-27 08:00,2008-12-14 17:00,,,,,PT_Normal,,,,,pjbl6vxc3ECIyLisAIXD3A,,,,N,0,0
2938,84837,829,11792,912,1,0,N,N,N,CP_Drtn,TT_Task,DT_FixedDUR2,RV_OK,TK_NotStart,7222U24200,Balcony handrails,2306,64,40,120,0,2192,2192,120,1184,0,1184,,,,2009-01-11 08:00,2009-01-27 17:00,,2009-01-01 08:00,2009-01-18 17:00,2009-01-01 08:00,2009-01-18 17:00,2009-01-01 08:00,2009-01-18 17:00,,,,,PT_Normal,,,,,w2y20qDOPEeR1R194bxU7g,,,,N,0,0
2939,84838,829,11584,912,1,0,N,N,N,CP_Drtn,TT_Task,DT_FixedDUR2,RV_OK,TK_NotStart,7222U30050,Wooden doors,2306,56,0,176,0,1520,1520,176,384,0,384,,,,2008-12-30 08:00,2009-01-24 17:00,,2008-12-22 08:00,2009-01-15 17:00,2008-12-22 08:00,2009-01-15 17:00,2008-12-22 08:00,2009-01-15 17:00,,,,,PT_Normal,,,,,63JCBlRGRESkjgRaLnGzmw,,,,N,0,0
2940,84839,829,11585,912,1,0,N,N,N,CP_Drtn,TT_Task,DT_FixedDUR2,RV_OK,TK_NotStart,7222U32100,Vanity counters,2306,24,0,120,0,2232,2232,120,192,0,192,,,,2009-01-12 08:00,2009-01-28 17:00,,2009-01-08 08:00,2009-01-25 17:00,2009-01-08 08:00,2009-01-25 17:00,2009-01-08 08:00,2009-01-25 17:00,,,,,PT_Normal,,,,,p+qk1b/OmUOg5WReARigfg,,,,N,0,0
2941,84840,829,11585,912,1,0,N,N,N,CP_Drtn,TT_Task,DT_FixedDUR2,RV_OK,TK_NotStart,7222U32150,Wardrobes,2306,120,96,120,0,6168,6168,120,288,0,288,,,,2009-01-11 08:00,2009-01-27 17:00,,2008-12-24 08:00,2009-01-10 17:00,2008-12-24 08:00,2009-01-10 17:00,2008-12-24 08:00,2009-01-10 17:00,,,,,PT_Normal,,,,,LYgg7pRiykKdXfo9Su9Nwg,,,,N,0,0
2942,84841,829,11586,912,1,0,N,N,N,CP_Drtn,TT_Task,DT_FixedDUR2,RV_OK,TK_NotStart,7222U34050,False ceiling works for apartments-dry area,2306,96,0,128,0,1493.12,1493.12,128,910.08,0,910.08,,,,2008-12-27 08:00,2009-01-13 17:00,,2008-12-13 08:00,2008-12-30 17:00,2008-12-13 08:00,2008-12-30 17:00,2008-12-13 08:00,2008-12-30 17:00,,,,,PT_Normal,,,,,zbjNV/hdZ0muAfJYG6PmSw,,,,N,0,0
2943,84842,829,11586,912,1,0,N,N,N,CP_Drtn,TT_Task,DT_FixedDUR2,RV_OK,TK_NotStart,7222U34070,False ceiling works for apartments-wet area,2306,24,0,128,0,658.88,658.88,128,353.92,0,353.92,,,,2008-12-16 08:00,2009-01-03 17:00,,2008-12-13 08:00,2008-12-30 17:00,2008-12-13 08:00,2008-12-30 17:00,2008-12-13 08:00,2008-12-30 17:00,,,,,PT_Normal,,,,,7ePU9Cr35UCDEoOmwHxo7A,,,,N,0,0
2944,84843,829,11796,912,1,0,N,N,N,CP_Drtn,TT_Task,DT_FixedDUR2,RV_OK,TK_NotStart,7222U36050,Stone finishing top,2306,80,56,64,0,344,344,64,160,0,160,,,,2009-01-19 08:00,2009-01-27 17:00,,2009-01-07 08:00,2009-01-15 17:00,2009-01-07 08:00,2009-01-15 17:00,2009-01-07 08:00,2009-01-15 17:00,,,,,PT_Normal,,,,,h1rhsdTHBE2Zc+RExMmtRQ,,,,N,0,0
2945,84844,829,11796,912,1,0,N,N,N,CP_Drtn,TT_Task,DT_FixedDUR2,RV_OK,TK_NotStart,7222U36100,Thresholds,2306,56,32,64,0,520,520,64,304,0,304,,,,2009-01-19 08:00,2009-01-27 17:00,,2009-01-11 08:00,2009-01-19 17:00,2009-01-11 08:00,2009-01-19 17:00,2009-01-11 08:00,2009-01-19 17:00,,,,,PT_Normal,,,,,VcBcB9iAA06/+OALa7WCnA,,,,N,0,0
2946,84845,829,11379,912,1,0,N,N,N,CP_Drtn,TT_Task,DT_FixedDUR2,RV_OK,TK_NotStart,7222U44050,Sub-frames,2306,56,0,120,0,888,888,120,384,0,384,,,,2008-11-04 08:00,2008-11-20 17:00,,2008-10-27 08:00,2008-11-12 17:00,2008-10-27 08:00,2008-11-12 17:00,2008-10-27 08:00,2008-11-12 17:00,,,,,PT_Normal,,,,,aG7VSxtMrkqeJSbvK4BkpQ,,,,N,0,0
2947,84846,829,12781,912,1,100,N,N,N,CP_Drtn,TT_Task,DT_FixedDUR2,RV_OK,TK_Complete,7222U50100,MEP skeleton embedded provisions,2296,24,0,0,512,0,512,72,,,0,,2008-09-07 08:00,2008-09-16 17:00,2008-10-06 08:00,2008-10-05 17:00,,2008-10-02 08:00,2008-10-01 17:00,,,2008-09-07 08:00,2008-09-16 17:00,,,,,PT_Normal,,,,,Rm1RBFbJeEu0gb7qpEnp9A,,,,N,512,0
2948,84847,829,12783,912,1,0,N,N,N,CP_Drtn,TT_Task,DT_FixedDUR2,RV_OK,TK_NotStart,7222U52050,A/C duct works,2296,136,112,160,0,831,831,160,0,0,0,,,,2008-11-15 08:00,2008-12-07 17:00,,2008-10-26 08:00,2008-11-17 17:00,2008-10-26 08:00,2008-11-17 17:00,2008-10-26 08:00,2008-11-17 17:00,,,,,PT_Normal,,,,,hVit+keYtE2rtgituvswYA,,,,N,0,0
2949,84848,829,12783,912,1,0,N,N,N,CP_Drtn,TT_Task,DT_FixedDUR2,RV_OK,TK_NotStart,7222U52100,Chilled water pipe works,2296,88,64,72,0,787,787,72,0,0,0,,,,2008-11-18 08:00,2008-11-27 17:00,,2008-11-05 08:00,2008-11-15 17:00,2008-11-05 08:00,2008-11-15 17:00,2008-11-05 08:00,2008-11-15 17:00,,,,,PT_Normal,,,,,m30bhoY3rk6/18sHikpF6Q,,,,N,0,0
2950,84849,829,12575,912,1,0,N,N,N,CP_Drtn,TT_Task,DT_FixedDUR2,RV_OK,TK_NotStart,7222U52150,FCU's hanging,2296,144,120,64,0,935.2,935.2,64,0,0,0,,,,2008-11-25 08:00,2008-12-03 17:00,,2008-11-04 08:00,2008-11-12 17:00,2008-11-04 08:00,2008-11-12 17:00,2008-11-04 08:00,2008-11-12 17:00,,,,,PT_Normal,,,,,IeZ4A3D+TEmtahrUM41cfg,,,,N,0,0
2951,84850,829,12575,912,1,0,N,N,N,CP_Drtn,TT_Task,DT_FixedDUR2,RV_OK,TK_NotStart,7222U52300,FCU's assembly & duct connections,2296,24,0,80,0,951.2,951.2,80,0,0,0,,,,2008-12-04 08:00,2008-12-15 17:00,,2008-12-01 08:00,2008-12-11 17:00,2008-12-01 08:00,2008-12-11 17:00,2008-12-01 08:00,2008-12-11 17:00,,,,,PT_Normal,,,,,TYg3P0e4ZUGOkVDLUQcblQ,,,,N,0,0
2952,84851,829,12575,912,1,0,N,N,N,CP_Drtn,TT_Task,DT_FixedDUR2,RV_OK,TK_NotStart,7222U52350,Grills & diffusers,2296,128,24,64,0,856,856,64,0,0,0,,,,2009-01-19 08:00,2009-01-27 17:00,,2008-12-31 08:00,2009-01-08 17:00,2008-12-31 08:00,2009-01-08 17:00,2008-12-31 08:00,2009-01-08 17:00,,,,,PT_Normal,,,,,XvLldSs8ZEqK1fUu0VI5UQ,,,,N,0,0
2953,84852,829,12783,912,1,0,N,N,N,CP_Drtn,TT_Task,DT_FixedDUR2,RV_OK,TK_NotStart,7222U52550,A/C duct risers,2296,24,0,64,0,1626,1626,64,0,0,0,,,,2008-11-19 08:00,2008-11-27 17:00,,2008-11-16 08:00,2008-11-24 17:00,2008-11-16 08:00,2008-11-24 17:00,2008-11-16 08:00,2008-11-24 17:00,,,,,PT_Normal,,,,,p1bTddc+3kaUOVYTDWIU1w,,,,N,0,0
2954,84853,829,12577,912,1,0,N,N,N,CP_Drtn,TT_Task,DT_FixedDUR2,RV_OK,TK_NotStart,7222U54050,Chasing & Pex pipe works,2296,152,0,120,0,395,395,120,0,0,0,,,,2008-11-17 08:00,2008-12-03 17:00,,2008-10-26 08:00,2008-11-11 17:00,2008-10-26 08:00,2008-11-11 17:00,2008-10-26 08:00,2008-11-11 17:00,,,,,PT_Normal,,,,,1wUI188INk6tetMceEbcVQ,,,,N,0,0
2955,84854,829,12578,912,1,0,N,N,N,CP_Drtn,TT_Task,DT_FixedDUR2,RV_OK,TK_NotStart,7222U54250,Bathtubs,2296,232,0,80,0,273.6,273.6,80,0,0,0,,,,2008-12-14 08:00,2008-12-24 17:00,,2008-11-10 08:00,2008-11-20 17:00,2008-11-10 08:00,2008-11-20 17:00,2008-11-10 08:00,2008-11-20 17:00,,,,,PT_Normal,,,,,182E7ryHYE2m0FEpo2y8EA,,,,N,0,0
2956,84855,829,12578,912,1,0,N,N,N,CP_Drtn,TT_Task,DT_FixedDUR2,RV_OK,TK_NotStart,7222U54300,Water heater,2296,128,0,64,0,310.4,310.4,64,0,0,0,,,,2008-12-01 08:00,2008-12-09 17:00,,2008-11-12 08:00,2008-11-20 17:00,2008-11-12 08:00,2008-11-20 17:00,2008-11-12 08:00,2008-11-20 17:00,,,,,PT_Normal,,,,,p3PcYzl7U0eP0hk4AFiGVQ,,,,N,0,0
2957,84856,829,12578,912,1,0,N,N,N,CP_Drtn,TT_Task,DT_FixedDUR2,RV_OK,TK_NotStart,7222U54350,Over head pipe assembly & vlave connections,2296,160,136,72,0,237,237,72,0,0,0,,,,2008-12-06 08:00,2008-12-15 17:00,,2008-11-12 08:00,2008-11-22 17:00,2008-11-12 08:00,2008-11-22 17:00,2008-11-12 08:00,2008-11-22 17:00,,,,,PT_Normal,,,,,6A9yHEAOvk25subqzDiQaQ,,,,N,0,0
2958,84857,829,12579,912,1,0,N,N,N,CP_Drtn,TT_Task,DT_FixedDUR2,RV_OK,TK_NotStart,7222U54400,Sanitary fixures,2296,80,0,80,0,476,476,80,0,0,0,,,,2009-01-17 08:00,2009-01-27 17:00,,2009-01-05 08:00,2009-01-15 17:00,2009-01-05 08:00,2009-01-15 17:00,2009-01-05 08:00,2009-01-15 17:00,,,,,PT_Normal,,,,,svH6w1m0W0mfHwuk2icXTg,,,,N,0,0
2959,84858,829,12579,912,1,0,N,N,N,CP_Drtn,TT_Task,DT_FixedDUR2,RV_OK,TK_NotStart,7222U54450,Mirrors,2296,24,0,72,0,138,138,72,0,0,0,,,,2009-01-18 08:00,2009-01-27 17:00,,2009-01-14 08:00,2009-01-24 17:00,2009-01-14 08:00,2009-01-24 17:00,2009-01-14 08:00,2009-01-24 17:00,,,,,PT_Normal,,,,,arip/7UJq0K2qECL8sqURQ,,,,N,0,0
2960,84859,829,12578,912,1,0,N,N,N,CP_Drtn,TT_Task,DT_FixedDUR2,RV_OK,TK_NotStart,7222U54500,Concealed Flushing Cistern,2296,232,208,80,0,212,212,80,0,0,0,,,,2008-12-14 08:00,2008-12-24 17:00,,2008-11-10 08:00,2008-11-20 17:00,2008-11-10 08:00,2008-11-20 17:00,2008-11-10 08:00,2008-11-20 17:00,,,,,PT_Normal,,,,,PxJos/ujm0SxpvM8UNoCYw,,,,N,0,0
2961,84860,829,12581,912,1,0,N,N,N,CP_Drtn,TT_Task,DT_FixedDUR2,RV_OK,TK_NotStart,7222U56050,Chasing and installation of drainage pipes,2296,152,0,80,0,245,245,80,0,0,0,,,,2008-11-17 08:00,2008-11-27 17:00,,2008-10-26 08:00,2008-11-05 17:00,2008-10-26 08:00,2008-11-05 17:00,2008-10-26 08:00,2008-11-05 17:00,,,,,PT_Normal,,,,,nDctKo2SwE+mJuwGxUaqBg,,,,N,0,0
2962,84861,829,12581,912,1,0,N,N,N,CP_Drtn,TT_Task,DT_FixedDUR2,RV_OK,TK_NotStart,7222U56100,Drainage riser pipes,2296,208,72,64,0,284,284,64,0,0,0,,,,2008-11-25 08:00,2008-12-03 17:00,,2008-10-26 08:00,2008-11-03 17:00,2008-10-26 08:00,2008-11-03 17:00,2008-10-26 08:00,2008-11-03 17:00,,,,,PT_Normal,,,,,asW7DUjHyk6/TezA8wCMrQ,,,,N,0,0
2963,84862,829,12582,912,1,0,N,N,N,CP_Drtn,TT_Task,DT_FixedDUR2,RV_OK,TK_NotStart,7222U56150,Over head drainage pipe works,2296,40,16,64,0,257.6,257.6,64,0,0,0,,,,2008-12-07 08:00,2008-12-15 17:00,,2008-12-01 08:00,2008-12-09 17:00,2008-12-01 08:00,2008-12-09 17:00,2008-12-01 08:00,2008-12-09 17:00,,,,,PT_Normal,,,,,fCmqQXKR/Ual6nCPVMpcKA,,,,N,0,0
2964,84863,829,12584,912,1,0,N,N,N,CP_Drtn,TT_Task,DT_FixedDUR2,RV_OK,TK_NotStart,7222U58050,Fire fighting pipe works,2296,160,136,72,0,292,292,72,0,0,0,,,,2008-11-27 08:00,2008-12-07 17:00,,2008-11-04 08:00,2008-11-13 17:00,2008-11-04 08:00,2008-11-13 17:00,2008-11-04 08:00,2008-11-13 17:00,,,,,PT_Normal,,,,,uxtSX39OjkyplVJdcChCiw,,,,N,0,0
2965,84864,829,12585,912,1,0,N,N,N,CP_Drtn,TT_Task,DT_FixedDUR2,RV_OK,TK_NotStart,7222U58250,Sprinkler heads,2296,128,24,64,0,394,394,64,0,0,0,,,,2009-01-19 08:00,2009-01-27 17:00,,2008-12-31 08:00,2009-01-08 17:00,2008-12-31 08:00,2009-01-08 17:00,2008-12-31 08:00,2009-01-08 17:00,,,,,PT_Normal,,,,,4x/clX4fmEy/RXlSAau9Vw,,,,N,0,0
2966,84865,829,12587,912,1,0,N,N,N,CP_Drtn,TT_Task,DT_FixedDUR2,RV_OK,TK_NotStart,7222U66050,Chasing and installation of conduits,2296,56,0,120,0,1528,1528,120,0,0,0,,,,2008-11-04 08:00,2008-11-20 17:00,,2008-10-27 08:00,2008-11-12 17:00,2008-10-27 08:00,2008-11-12 17:00,2008-10-27 08:00,2008-11-12 17:00,,,,,PT_Normal,,,,,lgiaUABBlEmI680bkMOobg,,,,N,0,0
2967,84866,829,12589,912,1,0,N,N,N,CP_Drtn,TT_Task,DT_FixedDUR2,RV_OK,TK_NotStart,7222U68050,Single core wiring,2296,176,152,72,0,1128,1128,72,0,0,0,,,,2008-11-24 08:00,2008-12-03 17:00,,2008-10-29 08:00,2008-11-08 17:00,2008-10-29 08:00,2008-11-08 17:00,2008-10-29 08:00,2008-11-08 17:00,,,,,PT_Normal,,,,,3YAw+6/lHkCqyZ46PexITQ,,,,N,0,0
2968,84867,829,12590,912,1,0,N,N,N,CP_Drtn,TT_Task,DT_FixedDUR2,RV_OK,TK_NotStart,7222U68350,Light Fittings,2296,128,104,120,0,1035.2,1035.2,120,0,0,0,,,,2009-01-11 08:00,2009-01-27 17:00,,2008-12-23 08:00,2009-01-08 17:00,2008-12-23 08:00,2009-01-08 17:00,2008-12-23 08:00,2009-01-08 17:00,,,,,PT_Normal,,,,,rh6fCMcNiUeBeci3Yt5yiw,,,,N,0,0
2969,84868,829,12590,912,1,0,N,N,N,CP_Drtn,TT_Task,DT_FixedDUR2,RV_OK,TK_NotStart,7222U68600,Switches & sockets,2296,96,72,64,0,486.4,486.4,64,0,0,0,,,,2009-01-19 08:00,2009-01-27 17:00,,2009-01-05 08:00,2009-01-13 17:00,2009-01-05 08:00,2009-01-13 17:00,2009-01-05 08:00,2009-01-13 17:00,,,,,PT_Normal,,,,,a+E7Z4flS0qpqvfRjtBQqg,,,,N,0,0
2970,84869,829,12592,912,1,0,N,N,N,CP_Drtn,TT_Task,DT_FixedDUR2,RV_OK,TK_NotStart,7222U74050,Fire alarm cables,2296,144,120,64,0,380.8,380.8,64,0,0,0,,,,2008-11-25 08:00,2008-12-03 17:00,,2008-11-04 08:00,2008-11-12 17:00,2008-11-04 08:00,2008-11-12 17:00,2008-11-04 08:00,2008-11-12 17:00,,,,,PT_Normal,,,,,HsL1bYjwbEanzyVw3btmlw,,,,N,0,0
2971,84870,829,12593,912,1,0,N,N,N,CP_Drtn,TT_Task,DT_FixedDUR2,RV_OK,TK_NotStart,7222U74100,Fire alarm fittings,2296,152,64,64,0,116.8,116.8,64,0,0,0,,,,2009-01-19 08:00,2009-01-27 17:00,,2008-12-28 08:00,2009-01-05 17:00,2008-12-28 08:00,2009-01-05 17:00,2008-12-28 08:00,2009-01-05 17:00,,,,,PT_Normal,,,,,tJVIeTHx6ECykEH9hGfT5w,,,,N,0,0
2972,84871,829,12595,912,1,0,N,N,N,CP_Drtn,TT_Task,DT_FixedDUR2,RV_OK,TK_NotStart,7222U76050,Structured cabling,2296,40,0,64,0,345.6,345.6,64,0,0,0,,,,2008-11-30 08:00,2008-12-08 17:00,,2008-11-24 08:00,2008-12-02 17:00,2008-11-24 08:00,2008-12-02 17:00,2008-11-24 08:00,2008-12-02 17:00,,,,,PT_Normal,,,,,NyX0lyu1FkOTQFV4zlkxmw,,,,N,0,0
2973,84872,829,10693,912,1,0,N,N,N,CP_Drtn,TT_Task,DT_FixedDUR2,RV_OK,TK_NotStart,7229946000,Testing & commissioning of Elevators,2296,448,160,120,0,320,320,120,0,0,0,,,,2009-03-08 08:00,2009-03-24 17:00,,2009-01-01 08:00,2009-01-18 17:00,2009-01-01 08:00,2009-01-18 17:00,2009-01-01 08:00,2009-01-18 17:00,,,,,PT_Normal,,,,,5d9Eb8731Um+dLDa6LbZUg,,,,N,0,0
2974,84873,829,10693,912,1,0,N,N,N,CP_Drtn,TT_Task,DT_FixedDUR2,RV_OK,TK_NotStart,7229952000,Testing & commissioning of A/C system,2296,304,16,200,0,1400,1400,200,0,0,0,,,,2009-02-26 08:00,2009-03-26 17:00,,2009-01-13 08:00,2009-02-10 17:00,2009-01-13 08:00,2009-02-10 17:00,2009-01-13 08:00,2009-02-10 17:00,,,,,PT_Normal,,,,,w7J+zl4+Mkqj5Vb/cpDqpQ,,,,N,0,0
2975,84874,829,10693,912,1,0,N,N,N,CP_Drtn,TT_Task,DT_FixedDUR2,RV_OK,TK_NotStart,7229954000,Testing & commissioning of water supply system,2296,296,8,200,0,700,700,200,0,0,0,,,,2009-03-01 08:00,2009-03-29 17:00,,2009-01-17 08:00,2009-02-14 17:00,2009-01-17 08:00,2009-02-14 17:00,2009-01-17 08:00,2009-02-14 17:00,,,,,PT_Normal,,,,,kyyvKgV1m0a232oDrUN9WQ,,,,N,0,0
2976,84875,829,10693,912,1,0,N,N,N,CP_Drtn,TT_Task,DT_FixedDUR2,RV_OK,TK_NotStart,7229956000,Testing & commissioning of drainage system,2296,296,8,200,0,1000,1000,200,0,0,0,,,,2009-03-01 08:00,2009-03-29 17:00,,2009-01-17 08:00,2009-02-14 17:00,2009-01-17 08:00,2009-02-14 17:00,2009-01-17 08:00,2009-02-14 17:00,,,,,PT_Normal,,,,,hQ1ub8zSgUqU1zuPrgQHgw,,,,N,0,0
2977,84876,829,10693,912,1,0,N,N,N,CP_Drtn,TT_Task,DT_FixedDUR2,RV_OK,TK_NotStart,7229958000,Testing & commissioning of Fire Fighting system,2296,304,16,200,0,300,300,200,0,0,0,,,,2009-02-26 08:00,2009-03-26 17:00,,2009-01-13 08:00,2009-02-10 17:00,2009-01-13 08:00,2009-02-10 17:00,2009-01-13 08:00,2009-02-10 17:00,,,,,PT_Normal,,,,,FFKthkoaIUSOIYc5Ajr4Yg,,,,N,0,0
2978,84877,829,10693,912,1,0,N,N,N,CP_Drtn,TT_Task,DT_FixedDUR2,RV_OK,TK_NotStart,7229960000,Testing & commissioning of LPG system,2296,480,480,120,0,420,420,120,0,0,0,,,,2009-03-15 08:00,2009-03-31 17:00,,2009-01-04 08:00,2009-01-20 17:00,2009-01-04 08:00,2009-01-20 17:00,2009-01-04 08:00,2009-01-20 17:00,,,,,PT_Normal,,,,,EZ3voGvUlkm05jriooSTgw,,,,N,0,0
2979,84878,829,10693,912,1,0,N,N,N,CP_Drtn,TT_Task,DT_FixedDUR2,RV_OK,TK_NotStart,7229962000,Testing & commissioning of BMS system,2296,288,288,48,0,248,248,48,0,0,0,,,,2009-03-25 08:00,2009-03-31 17:00,,2009-02-11 08:00,2009-02-17 17:00,2009-02-11 08:00,2009-02-17 17:00,2009-02-11 08:00,2009-02-17 17:00,,,,,PT_Normal,,,,,tnhgalsOv0afZWZneCtpng,,,,N,0,0
2980,84879,829,10693,912,0,0,N,N,N,CP_Drtn,TT_Mile,DT_FixedDUR2,RV_OK,TK_NotStart,7229968000,Power ready for testing & commissioning,2296,424,0,0,0,0,0,0,0,0,0,,,,2009-02-26 08:00,2009-02-25 17:00,,2008-12-27 08:00,2008-12-25 17:00,2008-12-27 08:00,2008-12-27 08:00,2008-12-27 08:00,2008-12-27 08:00,,,,,PT_Normal,,,,,iePVmS8B0Ua/lPjSthvXsw,,,,N,0,0
2981,84880,829,10693,912,1,0,N,N,N,CP_Drtn,TT_Task,DT_FixedDUR2,RV_OK,TK_NotStart,7229968002,Testing & commissioning of Power & Lighting,2296,144,144,120,0,820,820,120,0,0,0,,,,2009-03-15 08:00,2009-03-31 17:00,,2009-02-22 08:00,2009-03-10 17:00,2009-02-22 08:00,2009-03-10 17:00,2009-02-22 08:00,2009-03-10 17:00,,,,,PT_Normal,,,,,Z8MT5laqMEaKPjyOhV0OiA,,,,N,0,0
2982,84881,829,10693,912,1,0,N,N,N,CP_Drtn,TT_Task,DT_FixedDUR2,RV_OK,TK_NotStart,7229970000,Testing & commissioning of Central Battery syst.,2296,424,136,120,0,420,420,120,0,0,0,,,,2009-03-12 08:00,2009-03-29 17:00,,2009-01-10 08:00,2009-01-26 17:00,2009-01-10 08:00,2009-01-26 17:00,2009-01-10 08:00,2009-01-26 17:00,,,,,PT_Normal,,,,,Xn1Fp+uxpUO5AciMVLC3Bw,,,,N,0,0
2983,84882,829,10693,912,1,0,N,N,N,CP_Drtn,TT_Task,DT_FixedDUR2,RV_OK,TK_NotStart,7229972000,Testing & commissioning of security systems,2296,608,608,48,0,248,248,48,0,0,0,,,,2009-03-25 08:00,2009-03-31 17:00,,2008-12-27 08:00,2009-01-01 17:00,2008-12-27 08:00,2009-01-01 17:00,2008-12-27 08:00,2009-01-01 17:00,,,,,PT_Normal,,,,,Pvo3lXMzI0S/4/ujyJ9ZTw,,,,N,0,0
2984,84883,829,10693,912,1,0,N,N,N,CP_Drtn,TT_Task,DT_FixedDUR2,RV_OK,TK_NotStart,7229974000,Testing & commissioning of Fire Alarm system,2296,288,0,200,0,600,600,200,0,0,0,,,,2009-02-26 08:00,2009-03-26 17:00,,2009-01-15 08:00,2009-02-12 17:00,2009-01-15 08:00,2009-02-12 17:00,2009-01-15 08:00,2009-02-12 17:00,,,,,PT_Normal,,,,,PGGK/NPX+Ea5hjBmKdd3iQ,,,,N,0,0
2985,84884,829,10693,912,1,0,N,N,N,CP_Drtn,TT_Task,DT_FixedDUR2,RV_OK,TK_NotStart,7229976000,Testing & commissioning of Tel & Data system,2296,416,416,120,0,320,320,120,0,0,0,,,,2009-03-15 08:00,2009-03-31 17:00,,2009-01-13 08:00,2009-01-29 17:00,2009-01-13 08:00,2009-01-29 17:00,2009-01-13 08:00,2009-01-29 17:00,,,,,PT_Normal,,,,,67gNGEjtjk+Jj4JLOm9ueA,,,,N,0,0
2986,84885,829,11604,912,1,0,N,N,N,CP_Drtn,TT_Task,DT_FixedDUR2,RV_OK,TK_NotStart,722EV16100,External plaster works,2306,144,0,160,0,101092,101092,160,77640,0,77640,,,,2008-11-17 08:00,2008-12-09 17:00,,2008-10-27 08:00,2008-11-18 17:00,2008-10-27 08:00,2008-11-18 17:00,2008-10-27 08:00,2008-11-18 17:00,,,,,PT_Normal,,,,,bzhe25/uwUGCRlZ4+D/Rqw,,,,N,0,0
2987,84886,829,11814,912,1,0,N,N,N,CP_Drtn,TT_Task,DT_FixedDUR2,RV_OK,TK_NotStart,722EV18100,Painting base coats,2306,144,0,160,0,85564,85564,160,77640,0,77640,,,,2008-12-10 08:00,2009-01-01 17:00,,2008-11-19 08:00,2008-12-11 17:00,2008-11-19 08:00,2008-12-11 17:00,2008-11-19 08:00,2008-12-11 17:00,,,,,PT_Normal,,,,,qxsO1bosD0ST9yCxQAGfDQ,,,,N,0,0
2988,84887,829,11814,912,1,0,N,N,N,CP_Drtn,TT_Task,DT_FixedDUR2,RV_OK,TK_NotStart,722EV18150,Painting 1st top coat,2306,144,0,160,0,81682,81682,160,77640,0,77640,,,,2009-01-14 08:00,2009-02-05 17:00,,2008-12-24 08:00,2009-01-15 17:00,2008-12-24 08:00,2009-01-15 17:00,2008-12-24 08:00,2009-01-15 17:00,,,,,PT_Normal,,,,,8KA4wX9cHU221v6oQ2TSYw,,,,N,0,0
2989,84888,829,11814,912,1,0,N,N,N,CP_Drtn,TT_Task,DT_FixedDUR2,RV_OK,TK_NotStart,722EV18200,Painting final top coat,2306,144,0,160,0,81682,81682,160,77640,0,77640,,,,2009-02-18 08:00,2009-03-12 17:00,,2009-01-28 08:00,2009-02-19 17:00,2009-01-28 08:00,2009-02-19 17:00,2009-01-28 08:00,2009-02-19 17:00,,,,,PT_Normal,,,,,GAfGTJ+gEEKfjlKJQi5EKA,,,,N,0,0
2990,84889,829,11815,912,1,0,N,N,N,CP_Drtn,TT_Task,DT_FixedDUR2,RV_OK,TK_NotStart,722EV28200,Pergola & canopy structures,2306,144,0,160,0,4112,4112,160,152,0,152,,,,2009-01-26 08:00,2009-02-17 17:00,,2009-01-05 08:00,2009-01-27 17:00,2009-01-05 08:00,2009-01-27 17:00,2009-01-05 08:00,2009-01-27 17:00,,,,,PT_Normal,,,,,NKWgJFTZNUeacGI/8Sxi1A,,,,N,0,0
2991,84890,829,11815,912,1,0,N,N,N,CP_Drtn,TT_Task,DT_FixedDUR2,RV_OK,TK_NotStart,722EV28250,Brackets for pergola & canopy structures,2306,144,0,160,0,2592,2592,160,152,0,152,,,,2009-01-03 08:00,2009-01-25 17:00,,2008-12-13 08:00,2009-01-04 17:00,2008-12-13 08:00,2009-01-04 17:00,2008-12-13 08:00,2009-01-04 17:00,,,,,PT_Normal,,,,,4U1xZ6g+40qwwHbumtHJ/w,,,,N,0,0
2992,84891,829,12606,912,1,0,N,N,N,CP_Drtn,TT_Task,DT_FixedDUR2,RV_OK,TK_NotStart,722EV68350,Aviation Light Fittings,2296,144,0,72,0,402,402,72,0,0,0,,,,2009-02-26 08:00,2009-03-08 17:00,,2009-02-05 08:00,2009-02-15 17:00,2009-02-05 08:00,2009-02-15 17:00,2009-02-05 08:00,2009-02-15 17:00,,,,,PT_Normal,,,,,Ypci39fnKkqX3ONhPkowsw,,,,N,0,0
2993,84892,829,10681,912,1,0,N,N,N,CP_Drtn,TT_Task,DT_FixedDUR2,RV_OK,TK_NotStart,722GL00000,Pre-Snagging & Disnagging for lofts,2296,24,0,120,0,420,420,120,0,0,0,,,,2009-02-15 08:00,2009-03-03 17:00,,2009-02-11 08:00,2009-02-28 17:00,2009-02-11 08:00,2009-02-28 17:00,2009-02-11 08:00,2009-02-28 17:00,,,,,PT_Normal,,,,,iUYpxtvickSo9JbBkIk94w,,,,N,0,0
2994,84893,829,10681,912,1,0,N,N,N,CP_Drtn,TT_Task,DT_FixedDUR2,RV_OK,TK_NotStart,722GL00002,Pre-Snagging & Disnagging for corrid & Srv rooms,2296,104,0,64,0,214,214,64,0,0,0,,,,2009-03-18 08:00,2009-03-26 17:00,,2009-03-03 08:00,2009-03-11 17:00,2009-03-03 08:00,2009-03-11 17:00,2009-03-03 08:00,2009-03-11 17:00,,,,,PT_Normal,,,,,iYaLpcO4DU6OSzjUmXJCQw,,,,N,0,0
2995,84894,829,11562,912,1,100,N,N,N,CP_Drtn,TT_Task,DT_FixedDUR2,RV_OK,TK_Complete,722GL12050,Columns & walls GL to GU - Part 1,2306,24,0,0,5264.24,0,5264.24,48,157672.56,157672.56,0,,2008-06-15 08:00,2008-06-21 17:00,2008-10-06 08:00,2008-10-05 17:00,,2008-10-02 08:00,2008-10-01 17:00,,,2008-06-15 08:00,2008-06-21 17:00,,,,,PT_Normal,,,,,ISzI4NYoG0CDeIXE8xAgtw,,,,N,5264.24,157672.56
2996,84895,829,11562,912,1,100,N,N,N,CP_Drtn,TT_Task,DT_FixedDUR2,RV_OK,TK_Complete,722GL12051,Columns & walls GL to GU - Part 2,2306,24,0,0,5264.24,0,5264.24,48,157672.56,157672.56,0,,2008-06-22 08:00,2008-06-28 17:00,2008-10-06 08:00,2008-10-05 17:00,,2008-10-02 08:00,2008-10-01 17:00,,,2008-06-22 08:00,2008-06-28 17:00,,,,,PT_Normal,,,,,HsOsjgiCPECy/0jVHncrtA,,,,N,5264.24,157672.56
2997,84896,829,11562,912,1,100,N,N,N,CP_Drtn,TT_Task,DT_FixedDUR2,RV_OK,TK_Complete,722GL12052,Columns & walls GL to GU - Middle Part,2306,24,0,0,8034.91,0,8034.91,48,241424.4,241424.4,0,,2008-06-21 08:00,2008-06-26 17:00,2008-10-06 08:00,2008-10-05 17:00,,2008-10-02 08:00,2008-10-01 17:00,,,2008-06-21 08:00,2008-06-26 17:00,,,,,PT_Normal,,,,,O02qMi2960unSDxalcNgiw,,,,N,8034.91,241424.4
2998,84897,829,11562,912,1,100,N,N,N,CP_Drtn,TT_Task,DT_FixedDUR2,RV_OK,TK_Complete,722GL12200,Slab @ GU level - Part 1,2306,24,0,0,4104.78,0,4104.78,64,149880.72,149880.72,0,,2008-06-22 08:00,2008-06-30 17:00,2008-10-06 08:00,2008-10-05 17:00,,2008-10-02 08:00,2008-10-01 17:00,,,2008-06-22 08:00,2008-06-30 17:00,,,,,PT_Normal,,,,,R9pnHGDzb06+q0649p4XAg,,,,N,4104.78,149880.72
2999,84898,829,11562,912,1,100,N,N,N,CP_Drtn,TT_Task,DT_FixedDUR2,RV_OK,TK_Complete,722GL12201,Slab @ GU level - Part 2,2306,24,0,0,4098.76,0,4098.76,64,149570.48,149570.48,0,,2008-07-01 08:00,2008-07-09 17:00,2008-10-06 08:00,2008-10-05 17:00,,2008-10-02 08:00,2008-10-01 17:00,,,2008-07-01 08:00,2008-07-09 17:00,,,,,PT_Normal,,,,,6/RA791NgEOEvPzvxefLqw,,,,N,4098.76,149570.48
3000,84899,829,11562,912,1,100,N,N,N,CP_Drtn,TT_Task,DT_FixedDUR2,RV_OK,TK_Complete,722GL12202,Slab @ GU level - Middle Part,2306,24,0,0,5907.6,0,5907.6,64,216622.72,216622.72,0,,2008-06-30 08:00,2008-07-08 17:00,2008-10-06 08:00,2008-10-05 17:00,,2008-10-02 08:00,2008-10-01 17:00,,,2008-06-30 08:00,2008-07-08 17:00,,,,,PT_Normal,,,,,6vRvOcqndU2VkDKmA359rQ,,,,N,5907.6,216622.72
3001,84900,829,11562,912,1,100,N,N,N,CP_Drtn,TT_Task,DT_FixedDUR2,RV_OK,TK_Complete,722GL12250,Staircases GL to GU,2306,208,0,0,999.88,0,999.88,32,18457.6,18457.6,0,,2008-07-10 08:00,2008-07-14 17:00,2008-11-02 08:00,2008-11-01 17:00,,2008-10-02 08:00,2008-10-01 17:00,,,2008-07-10 08:00,2008-07-14 17:00,,,,,PT_Normal,,,,,bAvJnCXGokGE/U5HwJdXFA,,,,N,999.88,18457.6
3002,84901,829,11715,912,1,100,N,N,N,CP_Drtn,TT_Task,DT_FixedDUR2,RV_OK,TK_Complete,722GL14050,Block works,2306,168,0,0,59160,0,66360,120,23040,30240,0,,2008-07-30 08:00,2008-08-17 17:00,2008-10-27 08:00,2008-10-26 17:00,,2008-10-02 08:00,2008-10-01 17:00,,,2008-07-30 08:00,2008-08-17 17:00,,,,,PT_Normal,,,,,9DK7V1RqKU2zdOzBYZAjCQ,,,,N,59160,30240
3003,84902,829,11507,912,1,100,N,N,N,CP_Drtn,TT_Task,DT_FixedDUR2,RV_OK,TK_Complete,722GL16050,Plaster works,2306,168,0,0,25456.4,0,25456.4,120,19872,19872,0,,2008-08-16 08:00,2008-09-01 17:00,2008-10-27 08:00,2008-10-26 17:00,,2008-10-02 08:00,2008-10-01 17:00,,,2008-08-16 08:00,2008-09-01 17:00,,,,,PT_Normal,,,,,PtyzEmYRjEC8bUPNIJilvw,,,,N,25456.4,19872
3004,84903,829,11507,912,1,100,N,N,N,CP_Drtn,TT_Task,DT_FixedDUR2,RV_OK,TK_Complete,722GL16051,Plaste works behind tiles,2306,184,0,0,9810,0,9810,120,7600,7600,0,,2008-08-24 08:00,2008-09-09 17:00,2008-10-29 08:00,2008-10-28 17:00,,2008-10-02 08:00,2008-10-01 17:00,,,2008-08-24 08:00,2008-09-09 17:00,,,,,PT_Normal,,,,,w4JvxXC1e0aoSskzaC72sA,,,,N,9810,7600
3005,84904,829,11717,912,1,100,N,N,N,CP_Drtn,TT_Task,DT_FixedDUR2,RV_OK,TK_Complete,722GL18050,Rendering works,2306,168,0,0,5700.2,0,5700.2,120,5016,5016,0,,2008-08-10 08:00,2008-08-26 17:00,2008-10-27 08:00,2008-10-26 17:00,,2008-10-02 08:00,2008-10-01 17:00,,,2008-08-10 08:00,2008-08-26 17:00,,,,,PT_Normal,,,,,w2kSXO3jzkScu/Jm5w0xVA,,,,N,5700.2,5016
3006,84905,829,11717,912,1,100,N,N,N,CP_Drtn,TT_Task,DT_FixedDUR2,RV_OK,TK_Complete,722GL18100,Painting base coats,2306,168,0,0,27496.4,0,27496.4,120,24888,24888,0,,2008-08-21 08:00,2008-09-07 17:00,2008-10-27 08:00,2008-10-26 17:00,,2008-10-02 08:00,2008-10-01 17:00,,,2008-08-21 08:00,2008-09-07 17:00,,,,,PT_Normal,,,,,HbaNBkU1ekyjLHTj0kpbiA,,,,N,27496.4,24888
3007,84906,829,11717,912,1,0,N,N,N,CP_Drtn,TT_Task,DT_FixedDUR2,RV_OK,TK_NotStart,722GL18150,Painting 1st top coat for apartments,2306,624,0,72,0,17325.8,17325.8,72,16432,0,16432,,,,2009-01-27 08:00,2009-02-05 17:00,,2008-10-28 08:00,2008-11-06 17:00,2008-10-28 08:00,2008-11-06 17:00,2008-10-28 08:00,2008-11-06 17:00,,,,,PT_Normal,,,,,tM2wu91Bu0a5jVxCpbpwhg,,,,N,0,0
3008,84907,829,11717,912,1,0,N,N,N,CP_Drtn,TT_Task,DT_FixedDUR2,RV_OK,TK_NotStart,722GL18153,Painting 1st top coat for corridors/lobbies,2306,616,0,48,0,14386.4,14386.4,48,13656,0,13656,,,,2009-02-14 08:00,2009-02-19 17:00,,2008-11-16 08:00,2008-11-22 17:00,2008-11-16 08:00,2008-11-22 17:00,2008-11-16 08:00,2008-11-22 17:00,,,,,PT_Normal,,,,,tr8HAwUSmEKtreGN4naB8g,,,,N,0,0
3009,84908,829,11717,912,1,0,N,N,N,CP_Drtn,TT_Task,DT_FixedDUR2,RV_OK,TK_NotStart,722GL18155,Painting 1st top coat for service rooms,2306,744,0,48,0,5508,5508,48,5200,0,5200,,,,2009-02-24 08:00,2009-03-02 17:00,,2008-11-08 08:00,2008-11-13 17:00,2008-11-08 08:00,2008-11-13 17:00,2008-11-08 08:00,2008-11-13 17:00,,,,,PT_Normal,,,,,ThVea9x8aka++9vsj+2A3Q,,,,N,0,0
3010,84909,829,10681,912,1,0,N,N,N,CP_Drtn,TT_Task,DT_FixedDUR2,RV_OK,TK_NotStart,722GL18200,Painting final top coat,2306,104,104,32,0,26164.2,26164.2,32,24888,0,24888,,,,2009-03-28 08:00,2009-03-31 17:00,,2009-03-12 08:00,2009-03-16 17:00,2009-03-12 08:00,2009-03-16 17:00,2009-03-12 08:00,2009-03-16 17:00,,,,,PT_Normal,,,,,GHz3WXP190CjSvFGb9uBZQ,,,,N,0,0
3011,84910,829,11718,912,1,100,N,N,N,CP_Drtn,TT_Task,DT_FixedDUR2,RV_OK,TK_Complete,722GL20050,Floor tiles for apartments-dry area,2306,288,0,0,14013.34,0,14013.34,120,10291.36,10291.36,0,,2008-08-27 08:00,2008-09-13 17:00,2008-11-13 08:00,2008-11-12 17:00,,2008-10-02 08:00,2008-10-01 17:00,,,2008-08-27 08:00,2008-09-13 17:00,,,,,PT_Normal,,,,,sjvPi24eIUSpkQRMItlpzw,,,,N,14013.34,10291.36
3012,84911,829,11718,912,1,0,N,N,N,CP_Drtn,TT_Task,DT_FixedDUR2,RV_OK,TK_NotStart,722GL20053,Floor tiles for corridors / lobbies,2306,376,0,48,0,4778.2,4778.2,48,3504,0,3504,,,,2008-12-20 08:00,2008-12-25 17:00,,2008-10-26 08:00,2008-11-01 17:00,2008-10-26 08:00,2008-11-01 17:00,2008-10-26 08:00,2008-11-01 17:00,,,,,PT_Normal,,,,,xksRG+gghEyaOvlRib13Sw,,,,N,0,0
3013,84912,829,11718,912,1,0,N,N,N,CP_Drtn,TT_Task,DT_FixedDUR2,RV_OK,TK_NotStart,722GL20070,Floor tiles for apartments-wet area,2306,168,0,120,0,5682,5682,120,4120,0,4120,,,,2008-11-12 08:00,2008-11-29 17:00,,2008-10-19 08:00,2008-11-04 17:00,2008-10-19 08:00,2008-11-04 17:00,2008-10-19 08:00,2008-11-04 17:00,,,,,PT_Normal,,,,,GmAFFuZchEGdfQRQfZFAfw,,,,N,0,0
3014,84913,829,11718,912,1,0,N,N,N,CP_Drtn,TT_Task,DT_FixedDUR2,RV_OK,TK_NotStart,722GL20110,Wall tiles for apartments-wet area,2306,328,0,120,0,9360,9360,120,6160,0,6160,,,,2008-12-06 08:00,2008-12-22 17:00,,2008-10-19 08:00,2008-11-04 17:00,2008-10-19 08:00,2008-11-04 17:00,2008-10-19 08:00,2008-11-04 17:00,,,,,PT_Normal,,,,,KobqjAUYEE6/RvB6HaheVA,,,,N,0,0
3015,84914,829,11301,912,1,100,N,N,N,CP_Drtn,TT_Task,DT_FixedDUR2,RV_OK,TK_Complete,722GL22150,W/P for for apartments,2306,280,0,0,5144.4,0,5144.4,120,4568,4568,0,,2008-08-18 08:00,2008-09-03 17:00,2008-11-12 08:00,2008-11-11 17:00,,2008-10-02 08:00,2008-10-01 17:00,,,2008-08-18 08:00,2008-09-03 17:00,,,,,PT_Normal,,,,,M/tkzO4gwUGtsHgnzrmBdg,,,,N,5144.4,4568
3016,84915,829,11301,912,1,0,N,N,N,CP_Drtn,TT_Task,DT_FixedDUR2,RV_OK,TK_NotStart,722GL22151,W/P for open to sky areas,2306,888,576,120,0,47103.6,47103.6,120,42712,0,42712,,,,2009-03-21 08:00,2009-04-06 17:00,,2008-11-11 08:00,2008-11-27 17:00,2008-11-11 08:00,2008-11-27 17:00,2008-11-11 08:00,2008-11-27 17:00,,,,,PT_Normal,,,,,vNHy2zTJE02OyOD17Ezaow,,,,N,0,0
3017,84916,829,11301,912,1,50,N,N,N,CP_Drtn,TT_Task,DT_FixedDUR2,RV_OK,TK_Active,722GL22154,W/P for planter boxes,2306,856,0,32,736,736,1472,64,1280,640,640,,2008-09-28 08:00,,2009-02-04 08:00,2009-02-08 17:00,,2008-10-02 08:00,2008-10-06 17:00,2008-10-02 08:00,2008-10-06 17:00,2008-09-28 08:00,2008-10-06 17:00,,,,,PT_Normal,,,,,x1LmSWvoW0qTFNZdYlMbFQ,,,,N,736,640
3018,84917,829,11511,912,1,100,N,N,N,CP_Drtn,TT_Task,DT_FixedDUR2,RV_OK,TK_Complete,722GL24050,Aluminium doors & windows,2306,400,0,0,2936,0,2936,120,704,704,0,,2008-09-08 08:00,2008-09-24 17:00,2008-11-30 08:00,2008-11-29 17:00,,2008-10-02 08:00,2008-10-01 17:00,,,2008-09-08 08:00,2008-09-24 17:00,,,,,PT_Normal,,,,,WCDfbQRGWkqb96LmkVRiSQ,,,,N,2936,704
3019,84918,829,11511,912,1,0,N,N,N,CP_Drtn,TT_Task,DT_FixedDUR2,RV_OK,TK_NotStart,722GL24200,Balcony handrails,2306,168,0,120,0,1520,1520,120,800,0,800,,,,2008-11-30 08:00,2008-12-16 17:00,,2008-11-05 08:00,2008-11-22 17:00,2008-11-05 08:00,2008-11-22 17:00,2008-11-05 08:00,2008-11-22 17:00,,,,,PT_Normal,,,,,JHH4hkw7ikuNTjoCGbZVsw,,,,N,0,0
3020,84919,829,11511,912,1,0,N,N,N,CP_Drtn,TT_Task,DT_FixedDUR2,RV_OK,TK_NotStart,722GL24203,Lobby handrails,2306,656,184,64,0,946,946,64,504,0,504,,,,2009-02-05 08:00,2009-02-14 17:00,,2008-11-02 08:00,2008-11-10 17:00,2008-11-02 08:00,2008-11-10 17:00,2008-11-02 08:00,2008-11-10 17:00,,,,,PT_Normal,,,,,DrxMBxpkskqEgjQF3OY7yw,,,,N,0,0
3021,84920,829,11303,912,1,0,N,N,N,CP_Drtn,TT_Task,DT_FixedDUR2,RV_OK,TK_NotStart,722GL26050,Steel doors,2306,672,0,48,0,528,528,48,96,0,96,,,,2009-02-07 08:00,2009-02-12 17:00,,2008-11-01 08:00,2008-11-06 17:00,2008-11-01 08:00,2008-11-06 17:00,2008-11-01 08:00,2008-11-06 17:00,,,,,PT_Normal,,,,,u4htSjFscE2uILbqe3tALA,,,,N,0,0
3022,84921,829,11513,912,1,27.6,N,N,N,CP_Drtn,TT_Task,DT_FixedDUR2,RV_OK,TK_Active,722GL30050,Wooden doors,2306,288,0,336,784.56,2059.44,2844,464,680,187.6,492.4,,2008-09-14 08:00,,2008-11-13 08:00,2008-12-31 17:00,,2008-10-02 08:00,2008-11-19 17:00,2008-10-02 08:00,2008-11-19 17:00,2008-09-14 08:00,2008-11-19 17:00,,,,,PT_Normal,,,,,c3zrUuaXRkSrKM6WfIG2xw,,,,N,784.56,187.6
3023,84922,829,11514,912,1,0,N,N,N,CP_Drtn,TT_Task,DT_FixedDUR2,RV_OK,TK_NotStart,722GL32050,Kitchen cabinets,2306,536,512,160,0,4376,4376,160,136,0,136,,,,2009-01-17 08:00,2009-02-08 17:00,,2008-10-30 08:00,2008-11-22 17:00,2008-10-30 08:00,2008-11-22 17:00,2008-10-30 08:00,2008-11-22 17:00,,,,,PT_Normal,,,,,j51TR9PdfkCYFBiGkulvzg,,,,N,0,0
3024,84923,829,11514,912,1,0,N,N,N,CP_Drtn,TT_Task,DT_FixedDUR2,RV_OK,TK_NotStart,722GL32100,Vanity counters,2306,200,0,120,0,3112,3112,120,272,0,272,,,,2008-12-04 08:00,2008-12-21 17:00,,2008-11-05 08:00,2008-11-22 17:00,2008-11-05 08:00,2008-11-22 17:00,2008-11-05 08:00,2008-11-22 17:00,,,,,PT_Normal,,,,,XMKNrIBupE2W0Af+xk3Q1w,,,,N,0,0
3025,84924,829,11514,912,1,0,N,N,N,CP_Drtn,TT_Task,DT_FixedDUR2,RV_OK,TK_NotStart,722GL32150,Wardrobes,2306,632,608,160,0,3688,3688,160,168,0,168,,,,2009-01-17 08:00,2009-02-08 17:00,,2008-10-16 08:00,2008-11-08 17:00,2008-10-16 08:00,2008-11-08 17:00,2008-10-16 08:00,2008-11-08 17:00,,,,,PT_Normal,,,,,rShnBuP2b0aAd53fG58ffQ,,,,N,0,0
3026,84925,829,11306,912,1,0,N,N,N,CP_Drtn,TT_Task,DT_FixedDUR2,RV_OK,TK_NotStart,722GL34050,False ceiling works for apartments-dry area,2306,376,0,160,0,1506.16,1506.16,160,897.44,0,897.44,,,,2008-11-29 08:00,2008-12-21 17:00,,2008-10-05 08:00,2008-10-27 17:00,2008-10-05 08:00,2008-10-27 17:00,2008-10-05 08:00,2008-10-27 17:00,,,,,PT_Normal,,,,,8X35IAVeIk+P5gRMK4YK2w,,,,N,0,0
3027,84926,829,11306,912,1,0,N,N,N,CP_Drtn,TT_Task,DT_FixedDUR2,RV_OK,TK_NotStart,722GL34053,False ceiling works for corridors/lobbies,2306,376,0,72,0,9876,9876,72,6536,0,6536,,,,2008-12-11 08:00,2008-12-21 17:00,,2008-10-18 08:00,2008-10-27 17:00,2008-10-18 08:00,2008-10-27 17:00,2008-10-18 08:00,2008-10-27 17:00,,,,,PT_Normal,,,,,yMcdi+Oo/0+FnfAsa+PZHw,,,,N,0,0
3028,84927,829,11306,912,1,0,N,N,N,CP_Drtn,TT_Task,DT_FixedDUR2,RV_OK,TK_NotStart,722GL34070,False ceiling works for apartments-wet area,2306,168,0,160,0,709.84,709.84,160,366.56,0,366.56,,,,2008-10-29 08:00,2008-11-20 17:00,,2008-10-05 08:00,2008-10-27 17:00,2008-10-05 08:00,2008-10-27 17:00,2008-10-05 08:00,2008-10-27 17:00,,,,,PT_Normal,,,,,HFTp66wbmEOOqNPpOkF7Zw,,,,N,0,0
3029,84928,829,11307,912,1,0,N,N,N,CP_Drtn,TT_Task,DT_FixedDUR2,RV_OK,TK_NotStart,722GL36050,Stone finishing top,2306,328,32,64,0,526,526,64,264,0,264,,,,2008-12-22 08:00,2008-12-30 17:00,,2008-11-04 08:00,2008-11-12 17:00,2008-11-04 08:00,2008-11-12 17:00,2008-11-04 08:00,2008-11-12 17:00,,,,,PT_Normal,,,,,m+nSs5MU7kq0y6FWSGRKDg,,,,N,0,0
3030,84929,829,11307,912,1,0,N,N,N,CP_Drtn,TT_Task,DT_FixedDUR2,RV_OK,TK_NotStart,722GL36100,Thresholds,2306,288,0,176,0,1016,1016,176,560,0,560,,,,2008-12-10 08:00,2009-01-04 17:00,,2008-10-29 08:00,2008-11-23 17:00,2008-10-29 08:00,2008-11-23 17:00,2008-10-29 08:00,2008-11-23 17:00,,,,,PT_Normal,,,,,YwlHq4Wrv0OupJsU1LoIMA,,,,N,0,0
3031,84930,829,11517,912,1,0,N,N,N,CP_Drtn,TT_Task,DT_FixedDUR2,RV_OK,TK_NotStart,722GL38100,Epoxy coating system,2306,744,584,48,0,1152,1152,48,920,0,920,,,,2009-03-09 08:00,2009-03-15 17:00,,2008-11-20 08:00,2008-11-26 17:00,2008-11-20 08:00,2008-11-26 17:00,2008-11-20 08:00,2008-11-26 17:00,,,,,PT_Normal,,,,,DUoJfFNV4kqg1/j4bwswkQ,,,,N,0,0
3032,84931,829,11727,912,1,20,N,N,N,CP_Drtn,TT_Task,DT_FixedDUR2,RV_OK,TK_Active,722GL40050,Duplex apartment stairs,2306,376,0,96,1071.2,4284.8,5356,120,136,27.2,108.8,,2008-09-29 08:00,,2008-11-26 08:00,2008-12-09 17:00,,2008-10-02 08:00,2008-10-15 17:00,2008-10-02 08:00,2008-10-15 17:00,2008-09-29 08:00,2008-10-15 17:00,,,,,PT_Normal,,,,,TVJ9Cp6eIEW09F2M6XCn9A,,,,N,1071.2,27.2
3033,84932,829,11727,912,1,0,N,N,N,CP_Drtn,TT_Task,DT_FixedDUR2,RV_OK,TK_NotStart,722GL40100,Wooden steps for Duplex staircase,2306,376,0,120,0,1004,1004,120,104,0,104,,,,2008-12-04 08:00,2008-12-21 17:00,,2008-10-11 08:00,2008-10-27 17:00,2008-10-11 08:00,2008-10-27 17:00,2008-10-11 08:00,2008-10-27 17:00,,,,,PT_Normal,,,,,CKQARTlO+0We4/VZI9Cptg,,,,N,0,0
3034,84933,829,11727,912,1,0,N,N,N,CP_Drtn,TT_Task,DT_FixedDUR2,RV_OK,TK_NotStart,722GL40150,Duplex stair railings,2306,376,152,120,0,6480,6480,120,2544,0,2544,,,,2008-12-16 08:00,2009-01-01 17:00,,2008-10-22 08:00,2008-11-08 17:00,2008-10-22 08:00,2008-11-08 17:00,2008-10-22 08:00,2008-11-08 17:00,,,,,PT_Normal,,,,,rz32dBVfbkOveknOhzcDPQ,,,,N,0,0
3035,84934,829,11310,912,1,0,N,N,N,CP_Drtn,TT_Task,DT_FixedDUR2,RV_OK,TK_NotStart,722GL42050,Signage works,2306,728,568,48,0,197.8,197.8,48,136,0,136,,,,2009-03-09 08:00,2009-03-15 17:00,,2008-11-23 08:00,2008-11-29 17:00,2008-11-23 08:00,2008-11-29 17:00,2008-11-23 08:00,2008-11-29 17:00,,,,,PT_Normal,,,,,EAkBXOUzv0ubSKFJ4HZJug,,,,N,0,0
3036,84935,829,11520,912,1,100,N,N,N,CP_Drtn,TT_Task,DT_FixedDUR2,RV_OK,TK_Complete,722GL44050,Sub-frames,2306,168,0,0,1480,0,1480,120,680,680,0,,2008-08-07 08:00,2008-08-24 17:00,2008-10-27 08:00,2008-10-26 17:00,,2008-10-02 08:00,2008-10-01 17:00,,,2008-08-07 08:00,2008-08-24 17:00,,,,,PT_Normal,,,,,mWZSlQRcOUuc6+Mt5wjeGw,,,,N,1480,680
3037,84936,829,12609,912,1,100,N,N,N,CP_Drtn,TT_Task,DT_FixedDUR2,RV_OK,TK_Complete,722GL50100,MEP skeleton embedded provisions,2296,24,0,0,512,0,512,72,,,0,,2008-06-15 08:00,2008-06-24 17:00,2008-10-06 08:00,2008-10-05 17:00,,2008-10-02 08:00,2008-10-01 17:00,,,2008-06-15 08:00,2008-06-24 17:00,,,,,PT_Normal,,,,,7kKiG9pvaES+yNZDN5FXlA,,,,N,512,0
3038,84937,829,12611,912,1,100,N,N,N,CP_Drtn,TT_Task,DT_FixedDUR2,RV_OK,TK_Complete,722GL52050,A/C duct works,2296,184,0,0,831,0,831,160,,,0,,2008-08-12 08:00,2008-09-03 17:00,2008-10-29 08:00,2008-10-28 17:00,,2008-10-02 08:00,2008-10-01 17:00,,,2008-08-12 08:00,2008-09-03 17:00,,,,,PT_Normal,,,,,274VUkRGBkCoTAsMIsrdug,,,,N,831,0
3039,84938,829,12611,912,1,100,N,N,N,CP_Drtn,TT_Task,DT_FixedDUR2,RV_OK,TK_Complete,722GL52100,Chilled water pipe works,2296,184,0,0,787,0,787,72,,,0,,2008-08-25 08:00,2008-09-03 17:00,2008-10-29 08:00,2008-10-28 17:00,,2008-10-02 08:00,2008-10-01 17:00,,,2008-08-25 08:00,2008-09-03 17:00,,,,,PT_Normal,,,,,tNbjmNqCg0eQ16BnKczMkw,,,,N,787,0
3040,84939,829,12403,912,1,100,N,N,N,CP_Drtn,TT_Task,DT_FixedDUR2,RV_OK,TK_Complete,722GL52150,FCU's hanging,2296,184,0,0,935.2,0,935.2,64,,,0,,2008-08-24 08:00,2008-09-01 17:00,2008-10-29 08:00,2008-10-28 17:00,,2008-10-02 08:00,2008-10-01 17:00,,,2008-08-24 08:00,2008-09-01 17:00,,,,,PT_Normal,,,,,iO9vf2l3fEuNiGF8OSQdyg,,,,N,935.2,0
3041,84940,829,12403,912,1,100,N,N,N,CP_Drtn,TT_Task,DT_FixedDUR2,RV_OK,TK_Complete,722GL52300,FCU's assembly & duct connections,2296,184,0,0,991.2,0,991.2,120,,,0,,2008-09-08 08:00,2008-09-24 17:00,2008-10-29 08:00,2008-10-28 17:00,,2008-10-02 08:00,2008-10-01 17:00,,,2008-09-08 08:00,2008-09-24 17:00,,,,,PT_Normal,,,,,RRhRMpWVpk6qsJ5swRkgQA,,,,N,991.2,0
3042,84941,829,12403,912,1,31.8,N,N,N,CP_Drtn,TT_Task,DT_FixedDUR2,RV_OK,TK_Active,722GL52350,Grills & diffusers,2296,768,464,240,364,780,1144,352,,,,,2008-09-16 08:00,,2009-01-22 08:00,2009-02-25 17:00,,2008-10-02 08:00,2008-11-05 17:00,2008-10-02 08:00,2008-11-05 17:00,2008-09-16 08:00,2008-11-05 17:00,,,,,PT_Normal,,,,,kWht6nqdDEWjvC9IdSgLHg,,,,N,364,0
3043,84942,829,12611,912,1,100,N,N,N,CP_Drtn,TT_Task,DT_FixedDUR2,RV_OK,TK_Complete,722GL52550,A/C duct risers,2296,184,0,0,1626,0,1626,64,,,0,,2008-08-30 08:00,2008-09-07 17:00,2008-10-29 08:00,2008-10-28 17:00,,2008-10-02 08:00,2008-10-01 17:00,,,2008-08-30 08:00,2008-09-07 17:00,,,,,PT_Normal,,,,,y/FimxWP5EysGh94hEOVqw,,,,N,1626,0
3044,84943,829,12614,912,1,100,N,N,N,CP_Drtn,TT_Task,DT_FixedDUR2,RV_OK,TK_Complete,722GL54050,Chasing & Pex pipe works,2296,184,0,0,395,0,395,120,,,0,,2008-08-12 08:00,2008-08-28 17:00,2008-10-29 08:00,2008-10-28 17:00,,2008-10-02 08:00,2008-10-01 17:00,,,2008-08-12 08:00,2008-08-28 17:00,,,,,PT_Normal,,,,,m0jXS6sMz06fuS1G/jsseA,,,,N,395,0
3045,84944,829,12614,912,1,100,N,N,N,CP_Drtn,TT_Task,DT_FixedDUR2,RV_OK,TK_Complete,722GL54100,Over head distribution water pipe network,2296,184,0,0,8314,0,8314,64,,,0,,2008-08-25 08:00,2008-09-02 17:00,2008-10-29 08:00,2008-10-28 17:00,,2008-10-02 08:00,2008-10-01 17:00,,,2008-08-25 08:00,2008-09-02 17:00,,,,,PT_Normal,,,,,rGCFf3/cm0Wk6VcLft6aEA,,,,N,8314,0
3046,84945,829,12407,912,1,73.3,N,N,N,CP_Drtn,TT_Task,DT_FixedDUR2,RV_OK,TK_Active,722GL54150,Water meter cabinet pipe works,2296,856,272,32,249.34,90.66,340,120,,,,,2008-09-20 08:00,,2009-02-04 08:00,2009-02-08 17:00,,2008-10-02 08:00,2008-10-06 17:00,2008-10-02 08:00,2008-10-06 17:00,2008-09-20 08:00,2008-10-06 17:00,,,,,PT_Normal,,,,,zGSKI71iBkuCEQZQ791CAA,,,,N,249.34,0
3047,84946,829,12406,912,1,100,N,N,N,CP_Drtn,TT_Task,DT_FixedDUR2,RV_OK,TK_Complete,722GL54250,Bathtubs,2296,400,0,0,216.8,0,313.6,120,,96.8,0,,2008-08-24 08:00,2008-09-09 17:00,2008-11-30 08:00,2008-11-29 17:00,,2008-10-02 08:00,2008-10-01 17:00,,,2008-08-24 08:00,2008-09-09 17:00,,,,,PT_Normal,,,,,0A2JcWKO0kq8jYP+z9AFCQ,,,,N,216.8,96.8
3048,84947,829,12406,912,1,100,N,N,N,CP_Drtn,TT_Task,DT_FixedDUR2,RV_OK,TK_Complete,722GL54300,Water heater,2296,184,0,0,310.4,0,310.4,64,,,0,,2008-08-30 08:00,2008-09-07 17:00,2008-10-29 08:00,2008-10-28 17:00,,2008-10-02 08:00,2008-10-01 17:00,,,2008-08-30 08:00,2008-09-07 17:00,,,,,PT_Normal,,,,,Kbb2aZcttU+18MdAt1BT+g,,,,N,310.4,0
3049,84948,829,12406,912,1,100,N,N,N,CP_Drtn,TT_Task,DT_FixedDUR2,RV_OK,TK_Complete,722GL54350,Over head pipe assembly & vlave connections,2296,184,0,0,237,0,237,72,,,0,,2008-09-03 08:00,2008-09-13 17:00,2008-10-29 08:00,2008-10-28 17:00,,2008-10-02 08:00,2008-10-01 17:00,,,2008-09-03 08:00,2008-09-13 17:00,,,,,PT_Normal,,,,,N7uuqTMftECScJ55NvV9Ow,,,,N,237,0
3050,84949,829,12407,912,1,0,N,N,N,CP_Drtn,TT_Task,DT_FixedDUR2,RV_OK,TK_NotStart,722GL54400,Sanitary fixures,2296,328,0,120,0,516,516,120,0,0,0,,,,2008-12-14 08:00,2008-12-30 17:00,,2008-10-27 08:00,2008-11-12 17:00,2008-10-27 08:00,2008-11-12 17:00,2008-10-27 08:00,2008-11-12 17:00,,,,,PT_Normal,,,,,p1JHutYFFkCoST1vjb4/bg,,,,N,0,0
3051,84950,829,12407,912,1,0,N,N,N,CP_Drtn,TT_Task,DT_FixedDUR2,RV_OK,TK_NotStart,722GL54450,Mirrors,2296,240,40,120,0,186,186,120,0,0,0,,,,2008-12-16 08:00,2009-01-01 17:00,,2008-11-11 08:00,2008-11-27 17:00,2008-11-11 08:00,2008-11-27 17:00,2008-11-11 08:00,2008-11-27 17:00,,,,,PT_Normal,,,,,oKsldhrIKEOmRpCtdfOvkQ,,,,N,0,0
3052,84951,829,12406,912,1,100,N,N,N,CP_Drtn,TT_Task,DT_FixedDUR2,RV_OK,TK_Complete,722GL54500,Concealed Flushing Cistern,2296,400,0,0,186,0,252,120,,66,0,,2008-08-24 08:00,2008-09-09 17:00,2008-11-30 08:00,2008-11-29 17:00,,2008-10-02 08:00,2008-10-01 17:00,,,2008-08-24 08:00,2008-09-09 17:00,,,,,PT_Normal,,,,,xhR2JCY2mUu0Hp/x97j/bw,,,,N,186,66
3053,84952,829,12618,912,1,100,N,N,N,CP_Drtn,TT_Task,DT_FixedDUR2,RV_OK,TK_Complete,722GL56050,Chasing and installation of drainage pipes,2296,184,0,0,285,0,285,120,,,0,,2008-08-12 08:00,2008-08-28 17:00,2008-10-29 08:00,2008-10-28 17:00,,2008-10-02 08:00,2008-10-01 17:00,,,2008-08-12 08:00,2008-08-28 17:00,,,,,PT_Normal,,,,,uMkT3/i2/EioPmx1cwOiJg,,,,N,285,0
3054,84953,829,12618,912,1,100,N,N,N,CP_Drtn,TT_Task,DT_FixedDUR2,RV_OK,TK_Complete,722GL56100,Drainage riser pipes,2296,184,0,0,284,0,284,64,,,0,,2008-08-09 08:00,2008-08-17 17:00,2008-10-29 08:00,2008-10-28 17:00,,2008-10-02 08:00,2008-10-01 17:00,,,2008-08-09 08:00,2008-08-17 17:00,,,,,PT_Normal,,,,,Lw6rZ8YwmEaoTwsIA9AafA,,,,N,284,0
3055,84954,829,12410,912,1,100,N,N,N,CP_Drtn,TT_Task,DT_FixedDUR2,RV_OK,TK_Complete,722GL56150,Over head drainage pipe works,2296,184,0,0,257.6,0,257.6,64,,,0,,2008-09-10 08:00,2008-09-18 17:00,2008-10-29 08:00,2008-10-28 17:00,,2008-10-02 08:00,2008-10-01 17:00,,,2008-09-10 08:00,2008-09-18 17:00,,,,,PT_Normal,,,,,YDVLPdAMgkC7KXFJDvwGjg,,,,N,257.6,0
3056,84955,829,12621,912,1,100,N,N,N,CP_Drtn,TT_Task,DT_FixedDUR2,RV_OK,TK_Complete,722GL58050,Fire fighting pipe works,2296,184,0,0,292,0,292,72,,,0,,2008-08-18 08:00,2008-08-27 17:00,2008-10-29 08:00,2008-10-28 17:00,,2008-10-02 08:00,2008-10-01 17:00,,,2008-08-18 08:00,2008-08-27 17:00,,,,,PT_Normal,,,,,5xEYtBpCUU6ygb2Xj/g6Mw,,,,N,292,0
3057,84956,829,12413,912,1,0,N,N,N,CP_Drtn,TT_Task,DT_FixedDUR2,RV_OK,TK_NotStart,722GL58200,Fire cabinet complete,2296,696,440,64,0,339,339,64,0,0,0,,,,2009-03-07 08:00,2009-03-15 17:00,,2008-11-25 08:00,2008-12-03 17:00,2008-11-25 08:00,2008-12-03 17:00,2008-11-25 08:00,2008-12-03 17:00,,,,,PT_Normal,,,,,oUtBoPabD0OEaCRha43HzA,,,,N,0,0
3058,84957,829,12413,912,1,0,N,N,N,CP_Drtn,TT_Task,DT_FixedDUR2,RV_OK,TK_NotStart,722GL58250,Sprinkler heads,2296,712,408,120,0,450,450,120,0,0,0,,,,2009-02-09 08:00,2009-02-25 17:00,,2008-10-28 08:00,2008-11-13 17:00,2008-10-28 08:00,2008-11-13 17:00,2008-10-28 08:00,2008-11-13 17:00,,,,,PT_Normal,,,,,50PZkv0bZ0SNUmUSAEEDbg,,,,N,0,0
3059,84958,829,12624,912,1,100,N,N,N,CP_Drtn,TT_Task,DT_FixedDUR2,RV_OK,TK_Complete,722GL60050,LPG piping,2296,728,0,0,292,0,292,72,,,0,,2008-09-10 08:00,2008-09-20 17:00,2009-01-17 08:00,2009-01-15 17:00,,2008-10-02 08:00,2008-10-01 17:00,,,2008-09-10 08:00,2008-09-20 17:00,,,,,PT_Normal,,,,,xMAD5wbzE0C04Ozb+Ac6Iw,,,,N,292,0
3060,84959,829,12416,912,1,100,N,N,N,CP_Drtn,TT_Task,DT_FixedDUR2,RV_OK,TK_Complete,722GL60100,Gas meter & leak detector,2296,896,0,0,248,0,248,72,,,0,,2008-09-21 08:00,2008-09-30 17:00,2009-02-10 08:00,2009-02-09 17:00,,2008-10-02 08:00,2008-10-01 17:00,,,2008-09-21 08:00,2008-09-30 17:00,,,,,PT_Normal,,,,,66EVnd3QvEyhOXGD38jMRQ,,,,N,248,0
3061,84960,829,12627,912,1,100,N,N,N,CP_Drtn,TT_Task,DT_FixedDUR2,RV_OK,TK_Complete,722GL62050,BMS cabling,2296,184,0,0,486.4,0,486.4,64,,,0,,2008-09-20 08:00,2008-09-28 17:00,2008-10-29 08:00,2008-10-28 17:00,,2008-10-02 08:00,2008-10-01 17:00,,,2008-09-20 08:00,2008-09-28 17:00,,,,,PT_Normal,,,,,6/TBAZuD5kagHmjGkMgCUQ,,,,N,486.4,0
3062,84961,829,12419,912,1,0,N,N,N,CP_Drtn,TT_Task,DT_FixedDUR2,RV_OK,TK_NotStart,722GL62100,DGC & cable termination to equipments,2296,744,0,48,0,329.6,329.6,48,0,0,0,,,,2009-03-03 08:00,2009-03-09 17:00,,2008-11-15 08:00,2008-11-20 17:00,2008-11-15 08:00,2008-11-20 17:00,2008-11-15 08:00,2008-11-20 17:00,,,,,PT_Normal,,,,,iAnlZ25WT0OCDsErg8NXbw,,,,N,0,0
3063,84962,829,12630,912,1,100,N,N,N,CP_Drtn,TT_Task,DT_FixedDUR2,RV_OK,TK_Complete,722GL66050,Chasing and installation of conduits,2296,168,0,0,2091.2,0,2091.2,120,,,0,,2008-08-10 08:00,2008-08-26 17:00,2008-10-27 08:00,2008-10-26 17:00,,2008-10-02 08:00,2008-10-01 17:00,,,2008-08-10 08:00,2008-08-26 17:00,,,,,PT_Normal,,,,,eMzxkpBJmEyn4Ik3qy4yTg,,,,N,2091.2,0
3064,84963,829,12630,912,1,100,N,N,N,CP_Drtn,TT_Task,DT_FixedDUR2,RV_OK,TK_Complete,722GL66100,Cable trays & trunking,2296,168,0,0,1528,0,1528,120,,,0,,2008-09-08 08:00,2008-09-24 17:00,2008-10-27 08:00,2008-10-26 17:00,,2008-10-02 08:00,2008-10-01 17:00,,,2008-09-08 08:00,2008-09-24 17:00,,,,,PT_Normal,,,,,cN2LSa4xvUaSNdbeBuMZaw,,,,N,1528,0
3065,84964,829,12632,912,1,100,N,N,N,CP_Drtn,TT_Task,DT_FixedDUR2,RV_OK,TK_Complete,722GL68050,Single core wiring,2296,184,0,0,1339.2,0,1339.2,72,,,0,,2008-08-12 08:00,2008-08-21 17:00,2008-10-29 08:00,2008-10-28 17:00,,2008-10-02 08:00,2008-10-01 17:00,,,2008-08-12 08:00,2008-08-21 17:00,,,,,PT_Normal,,,,,iSiS46fZxkej83MXgEPgsg,,,,N,1339.2,0
3066,84965,829,12424,912,1,100,N,N,N,CP_Drtn,TT_Task,DT_FixedDUR2,RV_OK,TK_Complete,722GL68100,DB enclosure,2296,168,0,0,486.4,0,486.4,64,,,0,,2008-08-18 08:00,2008-08-26 17:00,2008-10-27 08:00,2008-10-26 17:00,,2008-10-02 08:00,2008-10-01 17:00,,,2008-08-18 08:00,2008-08-26 17:00,,,,,PT_Normal,,,,,hLHmjb1X406JBYtOl7n1zQ,,,,N,486.4,0
3067,84966,829,12424,912,1,66.7,N,N,N,CP_Drtn,TT_Task,DT_FixedDUR2,RV_OK,TK_Active,722GL68150,LV feeder cables,2296,240,40,24,1925.34,962.66,2888,72,,,,,2008-09-25 08:00,,2008-11-06 08:00,2008-11-09 17:00,,2008-10-02 08:00,2008-10-05 17:00,2008-10-02 08:00,2008-10-05 17:00,2008-09-25 08:00,2008-10-05 17:00,,,,,PT_Normal,,,,,8cgkaJpYWUuExMy821p4sw,,,,N,1925.34,0
3068,84967,829,12425,912,1,0,N,N,N,CP_Drtn,TT_Task,DT_FixedDUR2,RV_OK,TK_NotStart,722GL68250,DB-breakers assembly,2296,640,616,72,0,635.2,635.2,72,0,0,0,,,,2009-01-29 08:00,2009-02-08 17:00,,2008-10-28 08:00,2008-11-06 17:00,2008-10-28 08:00,2008-11-06 17:00,2008-10-28 08:00,2008-11-06 17:00,,,,,PT_Normal,,,,,7GCsSpAB7U2YgjOkVbOsog,,,,N,0,0
3069,84968,829,12425,912,1,0,N,N,N,CP_Drtn,TT_Task,DT_FixedDUR2,RV_OK,TK_NotStart,722GL68300,SMDB,2296,744,0,48,0,1456,1456,48,0,0,0,,,,2009-03-02 08:00,2009-03-08 17:00,,2008-11-13 08:00,2008-11-19 17:00,2008-11-13 08:00,2008-11-19 17:00,2008-11-13 08:00,2008-11-19 17:00,,,,,PT_Normal,,,,,MME0ie8ZnkG+ATJAePEBFg,,,,N,0,0
3070,84969,829,12425,912,1,27.3,N,N,N,CP_Drtn,TT_Task,DT_FixedDUR2,RV_OK,TK_Active,722GL68350,Light Fittings,2296,632,608,256,364.8,972.8,1337.6,352,,,,,2008-09-18 08:00,,2009-01-03 08:00,2009-02-08 17:00,,2008-10-02 08:00,2008-11-08 17:00,2008-10-02 08:00,2008-11-08 17:00,2008-09-18 08:00,2008-11-08 17:00,,,,,PT_Normal,,,,,YVWayFBIA0ScYM5oS7D59Q,,,,N,364.8,0
3071,84970,829,12425,912,1,0,N,N,N,CP_Drtn,TT_Task,DT_FixedDUR2,RV_OK,TK_NotStart,722GL68400,Lighting Control Panels,2296,728,480,64,0,275.2,275.2,64,0,0,0,,,,2009-03-05 08:00,2009-03-14 17:00,,2008-11-19 08:00,2008-11-27 17:00,2008-11-19 08:00,2008-11-27 17:00,2008-11-19 08:00,2008-11-27 17:00,,,,,PT_Normal,,,,,A3F7I8k4LkaqClGujsCk7w,,,,N,0,0
3072,84971,829,12425,912,1,0,N,N,N,CP_Drtn,TT_Task,DT_FixedDUR2,RV_OK,TK_NotStart,722GL68600,Switches & sockets,2296,640,616,72,0,494.4,494.4,72,0,0,0,,,,2009-01-29 08:00,2009-02-08 17:00,,2008-10-28 08:00,2008-11-06 17:00,2008-10-28 08:00,2008-11-06 17:00,2008-10-28 08:00,2008-11-06 17:00,,,,,PT_Normal,,,,,1m4WPhyY0U62sujOXrDS8Q,,,,N,0,0
3073,84972,829,12636,912,1,100,N,N,N,CP_Drtn,TT_Task,DT_FixedDUR2,RV_OK,TK_Complete,722GL70050,Central Battery cables,2296,184,0,0,345.6,0,345.6,64,,,0,,2008-08-18 08:00,2008-08-26 17:00,2008-10-29 08:00,2008-10-28 17:00,,2008-10-02 08:00,2008-10-01 17:00,,,2008-08-18 08:00,2008-08-26 17:00,,,,,PT_Normal,,,,,E7xCDgKt40eKm4c+ksxvYA,,,,N,345.6,0
3074,84973,829,12428,912,1,0,N,N,N,CP_Drtn,TT_Task,DT_FixedDUR2,RV_OK,TK_NotStart,722GL70150,Emergency & exit light fittings,2296,848,424,48,0,188.8,188.8,48,0,0,0,,,,2009-03-05 08:00,2009-03-11 17:00,,2008-11-02 08:00,2008-11-08 17:00,2008-11-02 08:00,2008-11-08 17:00,2008-11-02 08:00,2008-11-08 17:00,,,,,PT_Normal,,,,,YJsdoxtvH0yioHD50ap2Fg,,,,N,0,0
3075,84974,829,12639,912,1,75,N,N,N,CP_Drtn,TT_Task,DT_FixedDUR2,RV_OK,TK_Active,722GL72050,CCTV system cables,2296,248,80,16,153.6,51.2,204.8,64,,,,,2008-09-25 08:00,,2008-11-08 08:00,2008-11-09 17:00,,2008-10-02 08:00,2008-10-04 17:00,2008-10-02 08:00,2008-10-04 17:00,2008-09-25 08:00,2008-10-04 17:00,,,,,PT_Normal,,,,,Inq679rqGEu3UAQ9k3swSg,,,,N,153.6,0
3076,84975,829,12431,912,1,0,N,N,N,CP_Drtn,TT_Task,DT_FixedDUR2,RV_OK,TK_NotStart,722GL72100,CCTV system equipments,2296,728,184,48,0,118.4,118.4,48,0,0,0,,,,2009-03-09 08:00,2009-03-15 17:00,,2008-11-23 08:00,2008-11-29 17:00,2008-11-23 08:00,2008-11-29 17:00,2008-11-23 08:00,2008-11-29 17:00,,,,,PT_Normal,,,,,Elu2iDsKNEiOR9R1+LleEw,,,,N,0,0
3077,84976,829,12639,912,1,75,N,N,N,CP_Drtn,TT_Task,DT_FixedDUR2,RV_OK,TK_Active,722GL72200,Intercom system cables,2296,168,0,16,523.2,174.4,697.6,64,,,,,2008-09-25 08:00,,2008-10-27 08:00,2008-10-28 17:00,,2008-10-02 08:00,2008-10-04 17:00,2008-10-02 08:00,2008-10-04 17:00,2008-09-25 08:00,2008-10-04 17:00,,,,,PT_Normal,,,,,4Y8QPQac0Ead+ba/pkurug,,,,N,523.2,0
3078,84977,829,12431,912,1,0,N,N,N,CP_Drtn,TT_Task,DT_FixedDUR2,RV_OK,TK_NotStart,722GL72250,Intercom system equipments,2296,624,320,64,0,908.8,908.8,64,0,0,0,,,,2009-01-31 08:00,2009-02-08 17:00,,2008-11-01 08:00,2008-11-09 17:00,2008-11-01 08:00,2008-11-09 17:00,2008-11-01 08:00,2008-11-09 17:00,,,,,PT_Normal,,,,,xF/CqnLSjkm661HG4WvyJg,,,,N,0,0
3079,84978,829,12642,912,1,100,N,N,N,CP_Drtn,TT_Task,DT_FixedDUR2,RV_OK,TK_Complete,722GL74050,Fire alarm cables,2296,184,0,0,380.8,0,380.8,64,,,0,,2008-08-18 08:00,2008-08-26 17:00,2008-10-29 08:00,2008-10-28 17:00,,2008-10-02 08:00,2008-10-01 17:00,,,2008-08-18 08:00,2008-08-26 17:00,,,,,PT_Normal,,,,,0Yf5hGEsZkeNhEC3QbmM+w,,,,N,380.8,0
3080,84979,829,12434,912,1,0,N,N,N,CP_Drtn,TT_Task,DT_FixedDUR2,RV_OK,TK_NotStart,722GL74100,Fire alarm fittings,2296,656,368,352,0,404.8,404.8,352,0,0,0,,,,2009-01-06 08:00,2009-02-25 17:00,,2008-10-02 08:00,2008-11-22 17:00,2008-10-02 08:00,2008-11-22 17:00,2008-10-02 08:00,2008-11-22 17:00,,,,,PT_Normal,,,,,z1YJ4LC730y0FM96n1B/yA,,,,N,0,0
3081,84980,829,12434,912,1,0,N,N,N,CP_Drtn,TT_Task,DT_FixedDUR2,RV_OK,TK_NotStart,722GL74150,Fire alarm control panels,2296,616,328,48,0,188.8,188.8,48,0,0,0,,,,2009-02-19 08:00,2009-02-25 17:00,,2008-11-22 08:00,2008-11-27 17:00,2008-11-22 08:00,2008-11-27 17:00,2008-11-22 08:00,2008-11-27 17:00,,,,,PT_Normal,,,,,jAbxJxuJekSZpjkiYnEYyg,,,,N,0,0
3082,84981,829,12645,912,1,100,N,N,N,CP_Drtn,TT_Task,DT_FixedDUR2,RV_OK,TK_Complete,722GL76050,Structured cabling,2296,200,0,0,345.6,0,345.6,64,,,0,,2008-09-22 08:00,2008-09-30 17:00,2008-11-01 08:00,2008-10-30 17:00,,2008-10-02 08:00,2008-10-01 17:00,,,2008-09-22 08:00,2008-09-30 17:00,,,,,PT_Normal,,,,,oqVyPL/98U6ZUgm/4ga8pQ,,,,N,345.6,0
3083,84982,829,12437,912,1,0,N,N,N,CP_Drtn,TT_Task,DT_FixedDUR2,RV_OK,TK_NotStart,722GL76100,Consolidated pionts,2296,168,0,64,0,627.2,627.2,64,0,0,0,,,,2008-11-01 08:00,2008-11-09 17:00,,2008-10-07 08:00,2008-10-15 17:00,2008-10-07 08:00,2008-10-15 17:00,2008-10-07 08:00,2008-10-15 17:00,,,,,PT_Normal,,,,,8OojcxB7RE2PNFbtbAqGkQ,,,,N,0,0
3084,84983,829,11598,912,1,0,N,N,N,CP_Drtn,TT_Task,DT_FixedDUR2,RV_OK,TK_NotStart,722GR20050,Floor tiles for garbage rooms,2306,408,0,120,0,1254,1254,120,840,0,840,,,,2009-03-09 08:00,2009-03-25 17:00,,2009-01-08 08:00,2009-01-25 17:00,2009-01-08 08:00,2009-01-25 17:00,2009-01-08 08:00,2009-01-25 17:00,,,,,PT_Normal,,,,,P0az0FgqKE6UWMMwGJWjlw,,,,N,0,0
3085,84984,829,11598,912,1,0,N,N,N,CP_Drtn,TT_Task,DT_FixedDUR2,RV_OK,TK_NotStart,722GR20100,Wall tiles for garbage rooms,2306,408,0,120,0,744,744,120,416,0,416,,,,2009-02-02 08:00,2009-02-18 17:00,,2008-12-04 08:00,2008-12-21 17:00,2008-12-04 08:00,2008-12-21 17:00,2008-12-04 08:00,2008-12-21 17:00,,,,,PT_Normal,,,,,zRvpGZTq8kib4KT0UyLitw,,,,N,0,0
3086,84985,829,11599,912,1,0,N,N,N,CP_Drtn,TT_Task,DT_FixedDUR2,RV_OK,TK_NotStart,722GR22150,W/P for garbage room,2306,408,0,120,0,1783.6,1783.6,120,1512,0,1512,,,,2009-02-19 08:00,2009-03-08 17:00,,2008-12-22 08:00,2009-01-07 17:00,2008-12-22 08:00,2009-01-07 17:00,2008-12-22 08:00,2009-01-07 17:00,,,,,PT_Normal,,,,,1Vc1RnO1PkiTkbqfif83Cg,,,,N,0,0
3087,84986,829,11809,912,1,0,N,N,N,CP_Drtn,TT_Task,DT_FixedDUR2,RV_OK,TK_NotStart,722GR48050,Shaft plumpness & chipping,2306,408,0,48,0,256,256,48,8,0,8,,,,2008-12-22 08:00,2008-12-28 17:00,,2008-10-23 08:00,2008-10-29 17:00,2008-10-23 08:00,2008-10-29 17:00,2008-10-23 08:00,2008-10-29 17:00,,,,,PT_Normal,,,,,lvavs7W5mU2sCSzkp0dNHA,,,,N,0,0
3088,84987,829,11809,912,1,0,N,N,N,CP_Drtn,TT_Task,DT_FixedDUR2,RV_OK,TK_NotStart,722GR48100,Brackets,2306,408,0,120,0,268,268,120,8,0,8,,,,2008-12-29 08:00,2009-01-14 17:00,,2008-10-30 08:00,2008-11-16 17:00,2008-10-30 08:00,2008-11-16 17:00,2008-10-30 08:00,2008-11-16 17:00,,,,,PT_Normal,,,,,7fIMcCYlP0CaO51wExqc8A,,,,N,0,0
3089,84988,829,11809,912,1,0,N,N,N,CP_Drtn,TT_Task,DT_FixedDUR2,RV_OK,TK_NotStart,722GR48150,Garbage chute installation,2306,408,0,120,0,528,528,120,8,0,8,,,,2009-01-10 08:00,2009-01-26 17:00,,2008-11-11 08:00,2008-11-27 17:00,2008-11-11 08:00,2008-11-27 17:00,2008-11-11 08:00,2008-11-27 17:00,,,,,PT_Normal,,,,,0O91Ow7qdUKL/Zp5j+K3UA,,,,N,0,0
3090,84989,829,11809,912,1,0,N,N,N,CP_Drtn,TT_Task,DT_FixedDUR2,RV_OK,TK_NotStart,722GR48250,Hooper doors & foot bedals,2306,408,0,120,0,264,264,120,24,0,24,,,,2009-03-21 08:00,2009-04-06 17:00,,2009-01-20 08:00,2009-02-05 17:00,2009-01-20 08:00,2009-02-05 17:00,2009-01-20 08:00,2009-02-05 17:00,,,,,PT_Normal,,,,,bUhrhmqFtUeDo3L5HRcbCg,,,,N,0,0
3091,84990,829,11809,912,1,0,N,N,N,CP_Drtn,TT_Task,DT_FixedDUR2,RV_OK,TK_NotStart,722GR48350,Compactors & trolleys,2306,408,96,48,0,120,120,48,32,0,32,,,,2009-03-31 08:00,2009-04-06 17:00,,2009-01-31 08:00,2009-02-05 17:00,2009-01-31 08:00,2009-02-05 17:00,2009-01-31 08:00,2009-02-05 17:00,,,,,PT_Normal,,,,,4B1ZhZ+pW0SV9nyK7VfXkA,,,,N,0,0
3092,84991,829,12603,912,1,0,N,N,N,CP_Drtn,TT_Task,DT_FixedDUR2,RV_OK,TK_NotStart,722GR58050,Fire fighting provisions,2296,408,0,120,0,450,450,120,0,0,0,,,,2009-01-10 08:00,2009-01-26 17:00,,2008-11-11 08:00,2008-11-27 17:00,2008-11-11 08:00,2008-11-27 17:00,2008-11-11 08:00,2008-11-27 17:00,,,,,PT_Normal,,,,,Xj3REMPxakmOPL9ikjBhNA,,,,N,0,0
3093,84992,829,11564,912,1,100,N,N,N,CP_Drtn,TT_Task,DT_FixedDUR2,RV_OK,TK_Complete,722GU12050,Columns & walls GU to 1L - Part 1,2306,24,0,0,5587.77,0,5587.77,32,167999.52,167999.52,0,,2008-07-01 08:00,2008-07-05 17:00,2008-10-06 08:00,2008-10-05 17:00,,2008-10-02 08:00,2008-10-01 17:00,,,2008-07-01 08:00,2008-07-05 17:00,,,,,PT_Normal,,,,,88SPiZZswUKQFtsAaBCr3A,,,,N,5587.77,167999.52
3094,84993,829,11564,912,1,100,N,N,N,CP_Drtn,TT_Task,DT_FixedDUR2,RV_OK,TK_Complete,722GU12051,Columns & walls GU to 1L - Part 2,2306,24,0,0,5587.77,0,5587.77,32,167999.52,167999.52,0,,2008-07-10 08:00,2008-07-14 17:00,2008-10-06 08:00,2008-10-05 17:00,,2008-10-02 08:00,2008-10-01 17:00,,,2008-07-10 08:00,2008-07-14 17:00,,,,,PT_Normal,,,,,wKlfMUmKUEmegxSuqfC5ZQ,,,,N,5587.77,167999.52
3095,84994,829,11564,912,1,100,N,N,N,CP_Drtn,TT_Task,DT_FixedDUR2,RV_OK,TK_Complete,722GU12052,Columns & walls GU to 1L - Middle Part,2306,24,0,0,9003.34,0,9003.34,32,271281.92,271281.92,0,,2008-07-09 08:00,2008-07-13 17:00,2008-10-06 08:00,2008-10-05 17:00,,2008-10-02 08:00,2008-10-01 17:00,,,2008-07-09 08:00,2008-07-13 17:00,,,,,PT_Normal,,,,,B9nQBd8cm0CMmX/Qmi14FA,,,,N,9003.34,271281.92
3096,84995,829,11564,912,1,100,N,N,N,CP_Drtn,TT_Task,DT_FixedDUR2,RV_OK,TK_Complete,722GU12200,Slab @ 1L level - Part 1,2306,24,0,0,4957,0,4957,56,181794.24,181794.24,0,,2008-07-10 08:00,2008-07-17 17:00,2008-10-06 08:00,2008-10-05 17:00,,2008-10-02 08:00,2008-10-01 17:00,,,2008-07-10 08:00,2008-07-17 17:00,,,,,PT_Normal,,,,,Kig5UYILV0yGtEn3lF9DQA,,,,N,4957,181794.24
3097,84996,829,11564,912,1,100,N,N,N,CP_Drtn,TT_Task,DT_FixedDUR2,RV_OK,TK_Complete,722GU12201,Slab @ 1L level - Part 2,2306,24,0,0,4957,0,4957,56,181794.24,181794.24,0,,2008-07-19 08:00,2008-07-26 17:00,2008-10-06 08:00,2008-10-05 17:00,,2008-10-02 08:00,2008-10-01 17:00,,,2008-07-19 08:00,2008-07-26 17:00,,,,,PT_Normal,,,,,A1HU4o4thk2o3pzs+Me/Pg,,,,N,4957,181794.24
3098,84997,829,11564,912,1,100,N,N,N,CP_Drtn,TT_Task,DT_FixedDUR2,RV_OK,TK_Complete,722GU12202,Slab @ 1L level - Middle Part,2306,24,0,0,5868.65,0,5868.65,56,215610,215610,0,,2008-07-17 08:00,2008-07-24 17:00,2008-10-06 08:00,2008-10-05 17:00,,2008-10-02 08:00,2008-10-01 17:00,,,2008-07-17 08:00,2008-07-24 17:00,,,,,PT_Normal,,,,,90icrqS6rUyI4gmoQY8/JA,,,,N,5868.65,215610
3099,84998,829,11564,912,1,100,N,N,N,CP_Drtn,TT_Task,DT_FixedDUR2,RV_OK,TK_Complete,722GU12250,Staircases GU to 1L,2306,208,0,0,999.88,0,999.88,32,18457.6,18457.6,0,,2008-07-27 08:00,2008-07-30 17:00,2008-11-02 08:00,2008-11-01 17:00,,2008-10-02 08:00,2008-10-01 17:00,,,2008-07-27 08:00,2008-07-30 17:00,,,,,PT_Normal,,,,,YSASt+cnTk6YIq7a4PXzCw,,,,N,999.88,18457.6
3100,84999,829,11313,912,1,100,N,N,N,CP_Drtn,TT_Task,DT_FixedDUR2,RV_OK,TK_Complete,722GU14050,Block works,2306,168,0,0,30371,0,37573.5,120,23048,30250.5,0,,2008-08-13 08:00,2008-08-30 17:00,2008-10-27 08:00,2008-10-26 17:00,,2008-10-02 08:00,2008-10-01 17:00,,,2008-08-13 08:00,2008-08-30 17:00,,,,,PT_Normal,,,,,5hBpWt5zmU66H4F82OC7Yw,,,,N,30371,30250.5
3101,85000,829,11732,912,1,100,N,N,N,CP_Drtn,TT_Task,DT_FixedDUR2,RV_OK,TK_Complete,722GU16050,Plaster works,2306,168,0,0,25467.5,0,25467.5,120,19880,19880,0,,2008-08-31 08:00,2008-09-16 17:00,2008-10-27 08:00,2008-10-26 17:00,,2008-10-02 08:00,2008-10-01 17:00,,,2008-08-31 08:00,2008-09-16 17:00,,,,,PT_Normal,,,,,X/LkcuEvL0C6gEKtV9RQ4Q,,,,N,25467.5,19880
3102,85001,829,11732,912,1,100,N,N,N,CP_Drtn,TT_Task,DT_FixedDUR2,RV_OK,TK_Complete,722GU16051,Plaste works behind tiles,2306,280,0,0,8004.3,0,8004.3,120,6184,6184,0,,2008-09-06 08:00,2008-09-22 17:00,2008-11-12 08:00,2008-11-11 17:00,,2008-10-02 08:00,2008-10-01 17:00,,,2008-09-06 08:00,2008-09-22 17:00,,,,,PT_Normal,,,,,BSgfga3nmk67o4iZCOVjsQ,,,,N,8004.3,6184
3103,85002,829,11733,912,1,100,N,N,N,CP_Drtn,TT_Task,DT_FixedDUR2,RV_OK,TK_Complete,722GU18050,Rendering works,2306,168,0,0,5683,0,5683,120,5000,5000,0,,2008-08-19 08:00,2008-09-04 17:00,2008-10-27 08:00,2008-10-26 17:00,,2008-10-02 08:00,2008-10-01 17:00,,,2008-08-19 08:00,2008-09-04 17:00,,,,,PT_Normal,,,,,fwCeAP3l4UqeGNLGQotA4Q,,,,N,5683,5000
3104,85003,829,11733,912,1,100,N,N,N,CP_Drtn,TT_Task,DT_FixedDUR2,RV_OK,TK_Complete,722GU18100,Painting base coats,2306,168,0,0,27488,0,27488,120,24880,24880,0,,2008-09-08 08:00,2008-09-24 17:00,2008-10-27 08:00,2008-10-26 17:00,,2008-10-02 08:00,2008-10-01 17:00,,,2008-09-08 08:00,2008-09-24 17:00,,,,,PT_Normal,,,,,2wrsu8GDaUOftZ/3SC2M/g,,,,N,27488,24880
3105,85004,829,11733,912,1,0,N,N,N,CP_Drtn,TT_Task,DT_FixedDUR2,RV_OK,TK_NotStart,722GU18150,Painting 1st top coat for apartments,2306,584,0,72,0,17300.2,17300.2,72,16408,0,16408,,,,2009-01-29 08:00,2009-02-08 17:00,,2008-11-05 08:00,2008-11-15 17:00,2008-11-05 08:00,2008-11-15 17:00,2008-11-05 08:00,2008-11-15 17:00,,,,,PT_Normal,,,,,6NZWQa0Dv02db1EGWuYIfA,,,,N,0,0
3106,85005,829,11734,912,1,86.7,N,N,N,CP_Drtn,TT_Task,DT_FixedDUR2,RV_OK,TK_Active,722GU20050,Floor tiles for apartments-dry area,2306,376,0,16,6964.9,1071.5,8036.4,120,5864,5082.16,781.84,,2008-09-17 08:00,,2008-11-26 08:00,2008-11-27 17:00,,2008-10-02 08:00,2008-10-04 17:00,2008-10-02 08:00,2008-10-04 17:00,2008-09-17 08:00,2008-10-04 17:00,,,,,PT_Normal,,,,,hdmxJrmBZU26NtTBsKT2dQ,,,,N,6964.9,5082.16
3107,85006,829,11734,912,1,0,N,N,N,CP_Drtn,TT_Task,DT_FixedDUR2,RV_OK,TK_NotStart,722GU20070,Floor tiles for apartments-wet area,2306,208,0,120,0,3014.4,3014.4,120,2144,0,2144,,,,2008-11-20 08:00,2008-12-07 17:00,,2008-10-21 08:00,2008-11-06 17:00,2008-10-21 08:00,2008-11-06 17:00,2008-10-21 08:00,2008-11-06 17:00,,,,,PT_Normal,,,,,mcZ8D5Xd8ku7EybBCVzEzg,,,,N,0,0
3108,85007,829,11734,912,1,0,N,N,N,CP_Drtn,TT_Task,DT_FixedDUR2,RV_OK,TK_NotStart,722GU20110,Wall tiles for apartments-wet area,2306,336,40,120,0,8103.24,8103.24,120,5322.16,0,5322.16,,,,2008-12-09 08:00,2008-12-25 17:00,,2008-10-21 08:00,2008-11-06 17:00,2008-10-21 08:00,2008-11-06 17:00,2008-10-21 08:00,2008-11-06 17:00,,,,,PT_Normal,,,,,OFJd6IRXvkOh0qAyPStiJQ,,,,N,0,0
3109,85008,829,11526,912,1,100,N,N,N,CP_Drtn,TT_Task,DT_FixedDUR2,RV_OK,TK_Complete,722GU22150,W/P for for apartments,2306,288,0,0,2900.4,0,2900.4,120,2528,2528,0,,2008-08-31 08:00,2008-09-16 17:00,2008-11-13 08:00,2008-11-12 17:00,,2008-10-02 08:00,2008-10-01 17:00,,,2008-08-31 08:00,2008-09-16 17:00,,,,,PT_Normal,,,,,aSJZVVqMhU6qJ3knAnGQ4w,,,,N,2900.4,2528
3110,85009,829,11527,912,1,40,N,N,N,CP_Drtn,TT_Task,DT_FixedDUR2,RV_OK,TK_Active,722GU24050,Aluminium doors & windows,2306,384,160,72,662.4,993.6,1656,120,384,153.6,230.4,,2008-09-25 08:00,,2008-11-27 08:00,2008-12-07 17:00,,2008-10-02 08:00,2008-10-12 17:00,2008-10-02 08:00,2008-10-12 17:00,2008-09-25 08:00,2008-10-12 17:00,,,,,PT_Normal,,,,,okmzJX2Kpky9fDFCSioQaw,,,,N,662.4,153.6
3111,85010,829,11527,912,1,0,N,N,N,CP_Drtn,TT_Task,DT_FixedDUR2,RV_OK,TK_NotStart,722GU24200,Balcony handrails,2306,168,128,120,0,2360,2360,120,1280,0,1280,,,,2008-12-08 08:00,2008-12-24 17:00,,2008-11-13 08:00,2008-11-30 17:00,2008-11-13 08:00,2008-11-30 17:00,2008-11-13 08:00,2008-11-30 17:00,,,,,PT_Normal,,,,,qOGPsplDpEu1jbZ6A24G4A,,,,N,0,0
3112,85011,829,11737,912,1,0,N,N,N,CP_Drtn,TT_Task,DT_FixedDUR2,RV_OK,TK_NotStart,722GU30050,Wooden doors,2306,296,0,120,0,960,960,120,240,0,240,,,,2008-12-11 08:00,2008-12-28 17:00,,2008-10-29 08:00,2008-11-15 17:00,2008-10-29 08:00,2008-11-15 17:00,2008-10-29 08:00,2008-11-15 17:00,,,,,PT_Normal,,,,,WlcF6t/FDkqIALqZ34zoHw,,,,N,0,0
3113,85012,829,11738,912,1,0,N,N,N,CP_Drtn,TT_Task,DT_FixedDUR2,RV_OK,TK_NotStart,722GU32100,Vanity counters,2306,200,0,120,0,1968,1968,120,168,0,168,,,,2008-12-10 08:00,2008-12-27 17:00,,2008-11-11 08:00,2008-11-27 17:00,2008-11-11 08:00,2008-11-27 17:00,2008-11-11 08:00,2008-11-27 17:00,,,,,PT_Normal,,,,,Oqoc0XfkYk+lHCSNAODQVA,,,,N,0,0
3114,85013,829,11738,912,1,0,N,N,N,CP_Drtn,TT_Task,DT_FixedDUR2,RV_OK,TK_NotStart,722GU32150,Wardrobes,2306,616,592,120,0,5832,5832,120,272,0,272,,,,2009-01-22 08:00,2009-02-08 17:00,,2008-10-25 08:00,2008-11-10 17:00,2008-10-25 08:00,2008-11-10 17:00,2008-10-25 08:00,2008-11-10 17:00,,,,,PT_Normal,,,,,v04ss6uvEUWR4uC3H8UDKQ,,,,N,0,0
3115,85014,829,11530,912,1,0,N,N,N,CP_Drtn,TT_Task,DT_FixedDUR2,RV_OK,TK_NotStart,722GU34050,False ceiling works for apartments-dry area,2306,408,0,120,0,1485.12,1485.12,120,910.08,0,910.08,,,,2008-12-11 08:00,2008-12-28 17:00,,2008-10-13 08:00,2008-10-29 17:00,2008-10-13 08:00,2008-10-29 17:00,2008-10-13 08:00,2008-10-29 17:00,,,,,PT_Normal,,,,,DcXtvUx13UC1Ci3CNPjFhA,,,,N,0,0
3116,85015,829,11530,912,1,0,N,N,N,CP_Drtn,TT_Task,DT_FixedDUR2,RV_OK,TK_NotStart,722GU34070,False ceiling works for apartments-wet area,2306,208,0,120,0,650.88,650.88,120,353.92,0,353.92,,,,2008-11-12 08:00,2008-11-29 17:00,,2008-10-13 08:00,2008-10-29 17:00,2008-10-13 08:00,2008-10-29 17:00,2008-10-13 08:00,2008-10-29 17:00,,,,,PT_Normal,,,,,T5ZdfIzCOUGRdirMUS7SVQ,,,,N,0,0
3117,85016,829,11740,912,1,0,N,N,N,CP_Drtn,TT_Task,DT_FixedDUR2,RV_OK,TK_NotStart,722GU36050,Stone finishing top,2306,296,160,64,0,316,316,64,144,0,144,,,,2008-12-25 08:00,2009-01-03 17:00,,2008-11-12 08:00,2008-11-20 17:00,2008-11-12 08:00,2008-11-20 17:00,2008-11-12 08:00,2008-11-20 17:00,,,,,PT_Normal,,,,,CtiBRqwd0EuVnzGXsXeAMA,,,,N,0,0
3118,85017,829,11740,912,1,0,N,N,N,CP_Drtn,TT_Task,DT_FixedDUR2,RV_OK,TK_NotStart,722GU36100,Thresholds,2306,288,192,64,0,580,580,64,344,0,344,,,,2008-12-27 08:00,2009-01-04 17:00,,2008-11-15 08:00,2008-11-23 17:00,2008-11-15 08:00,2008-11-23 17:00,2008-11-15 08:00,2008-11-23 17:00,,,,,PT_Normal,,,,,zX1spx6Xg0KbWoeS+nagXA,,,,N,0,0
3119,85018,829,11741,912,1,100,N,N,N,CP_Drtn,TT_Task,DT_FixedDUR2,RV_OK,TK_Complete,722GU44050,Sub-frames,2306,168,0,0,600,0,600,120,240,240,0,,2008-08-23 08:00,2008-09-08 17:00,2008-10-27 08:00,2008-10-26 17:00,,2008-10-02 08:00,2008-10-01 17:00,,,2008-08-23 08:00,2008-09-08 17:00,,,,,PT_Normal,,,,,/ezQFpcqnUSa40ACH/ySlA,,,,N,600,240
3120,85019,829,12649,912,1,100,N,N,N,CP_Drtn,TT_Task,DT_FixedDUR2,RV_OK,TK_Complete,722GU50100,MEP skeleton embedded provisions,2296,24,0,0,512,0,512,72,,,0,,2008-07-01 08:00,2008-07-10 17:00,2008-10-06 08:00,2008-10-05 17:00,,2008-10-02 08:00,2008-10-01 17:00,,,2008-07-01 08:00,2008-07-10 17:00,,,,,PT_Normal,,,,,gJj4gAQnokeK2IIIv/m9Tg,,,,N,512,0
3121,85020,829,12651,912,1,100,N,N,N,CP_Drtn,TT_Task,DT_FixedDUR2,RV_OK,TK_Complete,722GU52050,A/C duct works,2296,280,0,0,831,0,831,160,,,0,,2008-08-25 08:00,2008-09-16 17:00,2008-11-12 08:00,2008-11-11 17:00,,2008-10-02 08:00,2008-10-01 17:00,,,2008-08-25 08:00,2008-09-16 17:00,,,,,PT_Normal,,,,,Hs5vMms1zk+6dilDzPMn2w,,,,N,831,0
3122,85021,829,12651,912,1,100,N,N,N,CP_Drtn,TT_Task,DT_FixedDUR2,RV_OK,TK_Complete,722GU52100,Chilled water pipe works,2296,264,0,0,787,0,787,72,,,0,,2008-09-07 08:00,2008-09-16 17:00,2008-11-10 08:00,2008-11-09 17:00,,2008-10-02 08:00,2008-10-01 17:00,,,2008-09-07 08:00,2008-09-16 17:00,,,,,PT_Normal,,,,,mWRqOq92h0u438r4IntUOQ,,,,N,787,0
3123,85022,829,12443,912,1,100,N,N,N,CP_Drtn,TT_Task,DT_FixedDUR2,RV_OK,TK_Complete,722GU52150,FCU's hanging,2296,280,0,0,935.2,0,935.2,64,,,0,,2008-09-06 08:00,2008-09-14 17:00,2008-11-12 08:00,2008-11-11 17:00,,2008-10-02 08:00,2008-10-01 17:00,,,2008-09-06 08:00,2008-09-14 17:00,,,,,PT_Normal,,,,,txzKFRvGlE6wXOVHQSfUjQ,,,,N,935.2,0
3124,85023,829,12443,912,1,66.7,N,N,N,CP_Drtn,TT_Task,DT_FixedDUR2,RV_OK,TK_Active,722GU52300,FCU's assembly & duct connections,2296,240,24,40,660.8,330.4,991.2,120,,,,,2008-09-21 08:00,,2008-11-06 08:00,2008-11-11 17:00,,2008-10-02 08:00,2008-10-07 17:00,2008-10-02 08:00,2008-10-07 17:00,2008-09-21 08:00,2008-10-07 17:00,,,,,PT_Normal,,,,,L3JCVktEmEqZgrr8gwQdhw,,,,N,660.8,0
3125,85024,829,12443,912,1,0,N,N,N,CP_Drtn,TT_Task,DT_FixedDUR2,RV_OK,TK_NotStart,722GU52350,Grills & diffusers,2296,632,448,64,0,856,856,64,0,0,0,,,,2009-01-31 08:00,2009-02-08 17:00,,2008-10-30 08:00,2008-11-08 17:00,2008-10-30 08:00,2008-11-08 17:00,2008-10-30 08:00,2008-11-08 17:00,,,,,PT_Normal,,,,,SdfGiH8K9EeMysAGTX2efg,,,,N,0,0
3126,85025,829,12651,912,1,100,N,N,N,CP_Drtn,TT_Task,DT_FixedDUR2,RV_OK,TK_Complete,722GU52550,A/C duct risers,2296,240,0,0,1626,0,1626,64,,,0,,2008-09-11 08:00,2008-09-20 17:00,2008-11-06 08:00,2008-11-05 17:00,,2008-10-02 08:00,2008-10-01 17:00,,,2008-09-11 08:00,2008-09-20 17:00,,,,,PT_Normal,,,,,p+CnAD+hkkWOxOS325BSGQ,,,,N,1626,0
3127,85026,829,12654,912,1,100,N,N,N,CP_Drtn,TT_Task,DT_FixedDUR2,RV_OK,TK_Complete,722GU54050,Chasing & Pex pipe works,2296,280,0,0,395,0,395,120,,,0,,2008-08-25 08:00,2008-09-10 17:00,2008-11-12 08:00,2008-11-11 17:00,,2008-10-02 08:00,2008-10-01 17:00,,,2008-08-25 08:00,2008-09-10 17:00,,,,,PT_Normal,,,,,9q5oXmWRlEGnHxhSeXvGCQ,,,,N,395,0
3128,85027,829,12446,912,1,100,N,N,N,CP_Drtn,TT_Task,DT_FixedDUR2,RV_OK,TK_Complete,722GU54250,Bathtubs,2296,400,0,0,216.8,0,313.6,120,,96.8,0,,2008-09-06 08:00,2008-09-22 17:00,2008-11-30 08:00,2008-11-29 17:00,,2008-10-02 08:00,2008-10-01 17:00,,,2008-09-06 08:00,2008-09-22 17:00,,,,,PT_Normal,,,,,40SZmQPoTECv/XokAEElkg,,,,N,216.8,96.8
3129,85028,829,12446,912,1,100,N,N,N,CP_Drtn,TT_Task,DT_FixedDUR2,RV_OK,TK_Complete,722GU54300,Water heater,2296,280,0,0,310.4,0,310.4,64,,,0,,2008-09-11 08:00,2008-09-20 17:00,2008-11-12 08:00,2008-11-11 17:00,,2008-10-02 08:00,2008-10-01 17:00,,,2008-09-11 08:00,2008-09-20 17:00,,,,,PT_Normal,,,,,LNw0Hkp/JUeg2S9b1ev3Qw,,,,N,310.4,0
3130,85029,829,12446,912,1,100,N,N,N,CP_Drtn,TT_Task,DT_FixedDUR2,RV_OK,TK_Complete,722GU54350,Over head pipe assembly & vlave connections,2296,280,0,0,237,0,237,72,,,0,,2008-09-11 08:00,2008-09-21 17:00,2008-11-12 08:00,2008-11-11 17:00,,2008-10-02 08:00,2008-10-01 17:00,,,2008-09-11 08:00,2008-09-21 17:00,,,,,PT_Normal,,,,,qe31edRHK0+MqncK0SG7Zw,,,,N,237,0
3131,85030,829,12447,912,1,0,N,N,N,CP_Drtn,TT_Task,DT_FixedDUR2,RV_OK,TK_NotStart,722GU54400,Sanitary fixures,2296,296,0,120,0,516,516,120,0,0,0,,,,2008-12-17 08:00,2009-01-03 17:00,,2008-11-04 08:00,2008-11-20 17:00,2008-11-04 08:00,2008-11-20 17:00,2008-11-04 08:00,2008-11-20 17:00,,,,,PT_Normal,,,,,GHGjJLpYOkyQKbKRNT/rlg,,,,N,0,0
3132,85031,829,12447,912,1,0,N,N,N,CP_Drtn,TT_Task,DT_FixedDUR2,RV_OK,TK_NotStart,722GU54450,Mirrors,2296,200,144,120,0,186,186,120,0,0,0,,,,2008-12-16 08:00,2009-01-01 17:00,,2008-11-17 08:00,2008-12-03 17:00,2008-11-17 08:00,2008-12-03 17:00,2008-11-17 08:00,2008-12-03 17:00,,,,,PT_Normal,,,,,oveH7O9+TkaCnj07E38eIw,,,,N,0,0
3133,85032,829,12446,912,1,100,N,N,N,CP_Drtn,TT_Task,DT_FixedDUR2,RV_OK,TK_Complete,722GU54500,Concealed Flushing Cistern,2296,400,0,0,186,0,252,120,,66,0,,2008-09-06 08:00,2008-09-22 17:00,2008-11-30 08:00,2008-11-29 17:00,,2008-10-02 08:00,2008-10-01 17:00,,,2008-09-06 08:00,2008-09-22 17:00,,,,,PT_Normal,,,,,tu2HfCy7RUeTGFEPrWVreQ,,,,N,186,66
3134,85033,829,12658,912,1,100,N,N,N,CP_Drtn,TT_Task,DT_FixedDUR2,RV_OK,TK_Complete,722GU56050,Chasing and installation of drainage pipes,2296,184,0,0,285,0,285,120,,,0,,2008-08-25 08:00,2008-09-10 17:00,2008-10-29 08:00,2008-10-28 17:00,,2008-10-02 08:00,2008-10-01 17:00,,,2008-08-25 08:00,2008-09-10 17:00,,,,,PT_Normal,,,,,xQlg4GKGPkGvYRgEedGaLQ,,,,N,285,0
3135,85034,829,12658,912,1,100,N,N,N,CP_Drtn,TT_Task,DT_FixedDUR2,RV_OK,TK_Complete,722GU56100,Drainage riser pipes,2296,184,0,0,284,0,284,64,,,0,,2008-08-21 08:00,2008-08-30 17:00,2008-10-29 08:00,2008-10-28 17:00,,2008-10-02 08:00,2008-10-01 17:00,,,2008-08-21 08:00,2008-08-30 17:00,,,,,PT_Normal,,,,,ruTFJAI44UGtxrdvYt+C9Q,,,,N,284,0
3136,85035,829,12450,912,1,0,N,N,N,CP_Drtn,TT_Task,DT_FixedDUR2,RV_OK,TK_NotStart,722GU56150,Over head drainage pipe works,2296,208,0,64,0,257.6,257.6,64,0,0,0,,,,2008-11-03 08:00,2008-11-11 17:00,,2008-10-04 08:00,2008-10-12 17:00,2008-10-04 08:00,2008-10-12 17:00,2008-10-04 08:00,2008-10-12 17:00,,,,,PT_Normal,,,,,rbnDzJW7UUa4SaKl3AJG2Q,,,,N,0,0
3137,85036,829,12661,912,1,100,N,N,N,CP_Drtn,TT_Task,DT_FixedDUR2,RV_OK,TK_Complete,722GU58050,Fire fighting pipe works,2296,280,0,0,292,0,292,72,,,0,,2008-08-31 08:00,2008-09-09 17:00,2008-11-12 08:00,2008-11-11 17:00,,2008-10-02 08:00,2008-10-01 17:00,,,2008-08-31 08:00,2008-09-09 17:00,,,,,PT_Normal,,,,,WLoK5bXxkkKtco++XYImlQ,,,,N,292,0
3138,85037,829,12453,912,1,0,N,N,N,CP_Drtn,TT_Task,DT_FixedDUR2,RV_OK,TK_NotStart,722GU58250,Sprinkler heads,2296,632,448,64,0,394,394,64,0,0,0,,,,2009-01-31 08:00,2009-02-08 17:00,,2008-10-30 08:00,2008-11-08 17:00,2008-10-30 08:00,2008-11-08 17:00,2008-10-30 08:00,2008-11-08 17:00,,,,,PT_Normal,,,,,BpKnv81Z30CU4xJrOihTIg,,,,N,0,0
3139,85038,829,12664,912,1,100,N,N,N,CP_Drtn,TT_Task,DT_FixedDUR2,RV_OK,TK_Complete,722GU66050,Chasing and installation of conduits,2296,168,0,0,1528,0,1528,120,,,0,,2008-08-23 08:00,2008-09-08 17:00,2008-10-27 08:00,2008-10-26 17:00,,2008-10-02 08:00,2008-10-01 17:00,,,2008-08-23 08:00,2008-09-08 17:00,,,,,PT_Normal,,,,,p5s9ICjQ0kyAB0KfIWFA+g,,,,N,1528,0
3140,85039,829,12666,912,1,100,N,N,N,CP_Drtn,TT_Task,DT_FixedDUR2,RV_OK,TK_Complete,722GU68050,Single core wiring,2296,280,0,0,1339.2,0,1339.2,72,,,0,,2008-08-25 08:00,2008-09-03 17:00,2008-11-12 08:00,2008-11-11 17:00,,2008-10-02 08:00,2008-10-01 17:00,,,2008-08-25 08:00,2008-09-03 17:00,,,,,PT_Normal,,,,,MbaS+hqgxku74a2Dtx2VCQ,,,,N,1339.2,0
3141,85040,829,12458,912,1,0,N,N,N,CP_Drtn,TT_Task,DT_FixedDUR2,RV_OK,TK_NotStart,722GU68350,Light Fittings,2296,616,592,120,0,1035.2,1035.2,120,0,0,0,,,,2009-01-22 08:00,2009-02-08 17:00,,2008-10-25 08:00,2008-11-10 17:00,2008-10-25 08:00,2008-11-10 17:00,2008-10-25 08:00,2008-11-10 17:00,,,,,PT_Normal,,,,,INod0a1Bfk6cJlrZnNYymQ,,,,N,0,0
3142,85041,829,12458,912,1,0,N,N,N,CP_Drtn,TT_Task,DT_FixedDUR2,RV_OK,TK_NotStart,722GU68600,Switches & sockets,2296,584,560,72,0,494.4,494.4,72,0,0,0,,,,2009-01-29 08:00,2009-02-08 17:00,,2008-11-05 08:00,2008-11-15 17:00,2008-11-05 08:00,2008-11-15 17:00,2008-11-05 08:00,2008-11-15 17:00,,,,,PT_Normal,,,,,3mQnRerGJUyvtyGgcq2XJQ,,,,N,0,0
3143,85042,829,12669,912,1,100,N,N,N,CP_Drtn,TT_Task,DT_FixedDUR2,RV_OK,TK_Complete,722GU74050,Fire alarm cables,2296,280,0,0,380.8,0,380.8,64,,,0,,2008-08-31 08:00,2008-09-08 17:00,2008-11-12 08:00,2008-11-11 17:00,,2008-10-02 08:00,2008-10-01 17:00,,,2008-08-31 08:00,2008-09-08 17:00,,,,,PT_Normal,,,,,nAFJPy3WcUatFGQNWUvfUQ,,,,N,380.8,0
3144,85043,829,12461,912,1,0,N,N,N,CP_Drtn,TT_Task,DT_FixedDUR2,RV_OK,TK_NotStart,722GU74100,Fire alarm fittings,2296,616,448,64,0,116.8,116.8,64,0,0,0,,,,2009-01-31 08:00,2009-02-08 17:00,,2008-11-02 08:00,2008-11-10 17:00,2008-11-02 08:00,2008-11-10 17:00,2008-11-02 08:00,2008-11-10 17:00,,,,,PT_Normal,,,,,6L21DnvkOEuKd4Rz4o1vPw,,,,N,0,0
3145,85044,829,12672,912,1,50,N,N,N,CP_Drtn,TT_Task,DT_FixedDUR2,RV_OK,TK_Active,722GU76050,Structured cabling,2296,168,0,32,172.8,172.8,345.6,64,,,,,2008-09-28 08:00,,2008-10-27 08:00,2008-10-30 17:00,,2008-10-02 08:00,2008-10-06 17:00,2008-10-02 08:00,2008-10-06 17:00,2008-09-28 08:00,2008-10-06 17:00,,,,,PT_Normal,,,,,XxasMZ8yQkSr0og6oAfsyw,,,,N,172.8,0
3146,85045,829,11811,912,1,0,N,N,N,CP_Drtn,TT_Task,DT_FixedDUR2,RV_OK,TK_NotStart,722PE46050,Jambs & headers,2306,448,0,120,0,936,936,120,16,0,16,,,,2008-12-10 08:00,2008-12-27 17:00,,2008-10-06 08:00,2008-10-22 17:00,2008-10-06 08:00,2008-10-22 17:00,2008-10-06 08:00,2008-10-22 17:00,,,,,PT_Normal,,,,,ZVkxJVSuREGkNHDiLNXsrA,,,,N,0,0
3147,85046,829,11811,912,1,0,N,N,N,CP_Drtn,TT_Task,DT_FixedDUR2,RV_OK,TK_NotStart,722PE46100,Brackets & seperators,2306,448,0,120,0,536,536,120,16,0,16,,,,2008-12-28 08:00,2009-01-13 17:00,,2008-10-23 08:00,2008-11-09 17:00,2008-10-23 08:00,2008-11-09 17:00,2008-10-23 08:00,2008-11-09 17:00,,,,,PT_Normal,,,,,EdTH9/s7ukKf0XGBG14NPA,,,,N,0,0
3148,85047,829,11811,912,1,0,N,N,N,CP_Drtn,TT_Task,DT_FixedDUR2,RV_OK,TK_NotStart,722PE46150,Guide rails,2306,448,0,120,0,536,536,120,16,0,16,,,,2009-01-14 08:00,2009-01-31 17:00,,2008-11-10 08:00,2008-11-26 17:00,2008-11-10 08:00,2008-11-26 17:00,2008-11-10 08:00,2008-11-26 17:00,,,,,PT_Normal,,,,,kc2LtYY9eUegUeslPtg7Cg,,,,N,0,0
3149,85048,829,11811,912,1,0,N,N,N,CP_Drtn,TT_Task,DT_FixedDUR2,RV_OK,TK_NotStart,722PE46200,Machine room works,2306,448,0,120,0,536,536,120,16,0,16,,,,2009-01-26 08:00,2009-02-11 17:00,,2008-11-22 08:00,2008-12-08 17:00,2008-11-22 08:00,2008-12-08 17:00,2008-11-22 08:00,2008-12-08 17:00,,,,,PT_Normal,,,,,K2yfxfvQeUa5k8tfG806OQ,,,,N,0,0
3150,85049,829,11811,912,1,0,N,N,N,CP_Drtn,TT_Task,DT_FixedDUR2,RV_OK,TK_NotStart,722PE46250,Cabin works,2306,448,0,120,0,472,472,120,0,0,0,,,,2009-02-07 08:00,2009-02-23 17:00,,2008-12-03 08:00,2008-12-20 17:00,2008-12-03 08:00,2008-12-20 17:00,2008-12-03 08:00,2008-12-20 17:00,,,,,PT_Normal,,,,,5LrI+OHnzUGN1dr5ebGqxA,,,,N,0,0
3151,85050,829,11811,912,1,0,N,N,N,CP_Drtn,TT_Task,DT_FixedDUR2,RV_OK,TK_NotStart,722PE46300,"Ropping, hatch doors, hoistways & wirring",2306,448,0,120,0,616,616,120,16,0,16,,,,2009-02-18 08:00,2009-03-07 17:00,,2008-12-15 08:00,2008-12-31 17:00,2008-12-15 08:00,2008-12-31 17:00,2008-12-15 08:00,2008-12-31 17:00,,,,,PT_Normal,,,,,6oGWAXARd0u8kiGNOpRpWw,,,,N,0,0
3152,85051,829,11574,912,1,25,N,N,N,CP_Drtn,TT_Task,DT_FixedDUR2,RV_OK,TK_Active,722RF12350,Roof Parapets,2306,144,0,24,2243.1,6729.3,8972.4,32,99744,24936,74808,,2008-10-01 08:00,,2008-10-23 08:00,2008-10-26 17:00,,2008-10-02 08:00,2008-10-05 17:00,2008-10-02 08:00,2008-10-05 17:00,2008-10-01 08:00,2008-10-05 17:00,,,,,PT_Normal,,,,,YeshQS1qOkaFz2HHgRGIgg,,,,N,2243.1,24936
3153,85052,829,11799,912,1,0,N,N,N,CP_Drtn,TT_Task,DT_FixedDUR2,RV_OK,TK_NotStart,722RF22200,Roof light weight concreting & angle fillet,2306,208,0,72,0,17722,17722,72,14120,0,14120,,,,2008-11-24 08:00,2008-12-03 17:00,,2008-10-25 08:00,2008-11-03 17:00,2008-10-25 08:00,2008-11-03 17:00,2008-10-25 08:00,2008-11-03 17:00,,,,,PT_Normal,,,,,taChCJER+EiyN1MjzJue4A,,,,N,0,0
3154,85053,829,11799,912,1,0,N,N,N,CP_Drtn,TT_Task,DT_FixedDUR2,RV_OK,TK_NotStart,722RF22250,Roof membrane,2306,208,0,72,0,17016,17016,72,14120,0,14120,,,,2008-12-04 08:00,2008-12-14 17:00,,2008-11-04 08:00,2008-11-13 17:00,2008-11-04 08:00,2008-11-13 17:00,2008-11-04 08:00,2008-11-13 17:00,,,,,PT_Normal,,,,,h3sNVXB55UKoi9hgEOwDaA,,,,N,0,0
3155,85054,829,11799,912,1,0,N,N,N,CP_Drtn,TT_Task,DT_FixedDUR2,RV_OK,TK_NotStart,722RF22300,Polystyrene insulation & seperation layers,2306,496,0,64,0,17008,17008,64,14120,0,14120,,,,2009-01-26 08:00,2009-02-03 17:00,,2008-11-15 08:00,2008-11-23 17:00,2008-11-15 08:00,2008-11-23 17:00,2008-11-15 08:00,2008-11-23 17:00,,,,,PT_Normal,,,,,5K7zIiL7uEqJoW5GwDcKkg,,,,N,0,0
3156,85055,829,11799,912,1,0,N,N,N,CP_Drtn,TT_Task,DT_FixedDUR2,RV_OK,TK_NotStart,722RF22350,Concrete tiles,2306,496,0,80,0,16330,16330,80,13000,0,13000,,,,2009-02-07 08:00,2009-02-17 17:00,,2008-11-26 08:00,2008-12-07 17:00,2008-11-26 08:00,2008-12-07 17:00,2008-11-26 08:00,2008-12-07 17:00,,,,,PT_Normal,,,,,r24FUdd3uUCK8jkEbYgb+A,,,,N,0,0
3157,85056,829,11799,912,1,0,N,N,N,CP_Drtn,TT_Task,DT_FixedDUR2,RV_OK,TK_NotStart,722RF22400,Gravel fill,2306,776,464,48,0,1280,1280,48,1120,0,1120,,,,2009-03-31 08:00,2009-04-06 17:00,,2008-12-08 08:00,2008-12-14 17:00,2008-12-08 08:00,2008-12-14 17:00,2008-12-08 08:00,2008-12-14 17:00,,,,,PT_Normal,,,,,2cd/h47ep02ACZ2Mcps17A,,,,N,0,0
3158,85057,829,11799,912,1,0,N,N,N,CP_Drtn,TT_Task,DT_FixedDUR2,RV_OK,TK_NotStart,722RF22450,Aluminium flashing,2306,760,448,64,0,3256.2,3256.2,64,2776,0,2776,,,,2009-03-29 08:00,2009-04-06 17:00,,2008-12-08 08:00,2008-12-16 17:00,2008-12-08 08:00,2008-12-16 17:00,2008-12-08 08:00,2008-12-16 17:00,,,,,PT_Normal,,,,,DcxjqtLp0U+4Szq92CVHIw,,,,N,0,0
3159,85058,829,11591,912,1,0,N,N,N,CP_Drtn,TT_Task,DT_FixedDUR2,RV_OK,TK_NotStart,722RF24300,Aluminium framing for roof towers,2306,760,448,64,0,768,768,64,64,0,64,,,,2009-03-29 08:00,2009-04-06 17:00,,2008-12-08 08:00,2008-12-16 17:00,2008-12-08 08:00,2008-12-16 17:00,2008-12-08 08:00,2008-12-16 17:00,,,,,PT_Normal,,,,,ZVdFt+Edp0SdvreZk14hlw,,,,N,0,0
3160,85059,829,11801,912,1,0,N,N,N,CP_Drtn,TT_Task,DT_FixedDUR2,RV_OK,TK_NotStart,722RF44250,Roof upstands & equipement foundations,2306,208,0,64,0,3979.76,3979.76,64,608,0,608,,,,2008-11-15 08:00,2008-11-23 17:00,,2008-10-15 08:00,2008-10-23 17:00,2008-10-15 08:00,2008-10-23 17:00,2008-10-15 08:00,2008-10-23 17:00,,,,,PT_Normal,,,,,OIv2wSNsKEmEjgkV9Hr2nA,,,,N,0,0
3161,85060,829,11801,912,1,0,N,N,N,CP_Drtn,TT_Task,DT_FixedDUR2,RV_OK,TK_NotStart,722RF44350,Roof tower concrete elements,2306,272,64,64,0,499.6,499.6,64,64,0,64,,,,2008-11-15 08:00,2008-11-23 17:00,,2008-10-06 08:00,2008-10-14 17:00,2008-10-06 08:00,2008-10-14 17:00,2008-10-06 08:00,2008-10-14 17:00,,,,,PT_Normal,,,,,Z51vnGExEES3We6ZkZ1+0g,,,,N,0,0
3162,85061,829,12598,912,1,0,N,N,N,CP_Drtn,TT_Task,DT_FixedDUR2,RV_OK,TK_NotStart,722RF52400,FAHU's & fans,2296,496,192,120,0,1836,1836,120,0,0,0,,,,2009-02-09 08:00,2009-02-25 17:00,,2008-11-29 08:00,2008-12-15 17:00,2008-11-29 08:00,2008-12-15 17:00,2008-11-29 08:00,2008-12-15 17:00,,,,,PT_Normal,,,,,N264o6Fx2ECHsKnUILDuUw,,,,N,0,0
3163,85062,829,12600,912,1,0,N,N,N,CP_Drtn,TT_Task,DT_FixedDUR2,RV_OK,TK_NotStart,722RF68800,Lighting protection system,2296,224,80,64,0,328,328,64,0,0,0,,,,2008-12-01 08:00,2008-12-09 17:00,,2008-10-29 08:00,2008-11-06 17:00,2008-10-29 08:00,2008-11-06 17:00,2008-10-29 08:00,2008-11-06 17:00,,,,,PT_Normal,,,,,YECQUtnEMkGu9lu3cFkmDg,,,,N,0,0
3164,85063,829,11594,912,1,0,N,N,N,CP_Drtn,TT_Task,DT_FixedDUR2,RV_OK,TK_NotStart,722ST18150,Painting 1st top coat,2306,432,120,120,0,12972,12972,120,12240,0,12240,,,,2009-03-21 08:00,2009-04-06 17:00,,2009-01-17 08:00,2009-02-02 17:00,2009-01-17 08:00,2009-02-02 17:00,2009-01-17 08:00,2009-02-02 17:00,,,,,PT_Normal,,,,,jV8grFdyc0WPMSsaVosqGg,,,,N,0,0
3165,85064,829,11804,912,1,0,N,N,N,CP_Drtn,TT_Task,DT_FixedDUR2,RV_OK,TK_NotStart,722ST20050,Floor tiles for staircases,2306,432,0,120,0,1848,1848,120,1280,0,1280,,,,2009-02-02 08:00,2009-02-18 17:00,,2008-12-01 08:00,2008-12-17 17:00,2008-12-01 08:00,2008-12-17 17:00,2008-12-01 08:00,2008-12-17 17:00,,,,,PT_Normal,,,,,UOV4SuOFWUmHryJ72U3xcg,,,,N,0,0
3166,85065,829,11804,912,1,0,N,N,N,CP_Drtn,TT_Task,DT_FixedDUR2,RV_OK,TK_NotStart,722ST20150,Treads & risers,2306,432,0,120,0,4320,4320,120,2800,0,2800,,,,2009-01-10 08:00,2009-01-26 17:00,,2008-11-08 08:00,2008-11-24 17:00,2008-11-08 08:00,2008-11-24 17:00,2008-11-08 08:00,2008-11-24 17:00,,,,,PT_Normal,,,,,yKtnxeiju0qBNA2oJFKYvw,,,,N,0,0
3167,85066,829,11596,912,1,0,N,N,N,CP_Drtn,TT_Task,DT_FixedDUR2,RV_OK,TK_NotStart,722ST24350,Staircase handrail,2306,432,0,120,0,3578,3578,120,1976,0,1976,,,,2009-02-25 08:00,2009-03-14 17:00,,2008-12-24 08:00,2009-01-10 17:00,2008-12-24 08:00,2009-01-10 17:00,2008-12-24 08:00,2009-01-10 17:00,,,,,PT_Normal,,,,,xvdG8Mg2KUqU6DmiaNHMKQ,,,,N,0,0
3168,85067,829,10657,912,1,0,N,N,N,CP_Drtn,TT_Task,DT_FixedDUR2,RV_OK,TK_NotStart,7231L00000,Pre-Snagging & Disnagging for duplexes,2296,0,0,120,0,420,420,120,0,0,0,,,,2009-01-28 08:00,2009-02-14 17:00,,2009-01-28 08:00,2009-02-14 17:00,2009-01-28 08:00,2009-02-14 17:00,2009-01-28 08:00,2009-02-14 17:00,,,,,PT_Normal,,,,,SbCvhMZx+0S6z+FBuTe8EQ,,,,N,0,0
3169,85068,829,10657,912,1,0,N,N,N,CP_Drtn,TT_Task,DT_FixedDUR2,RV_OK,TK_NotStart,7231L00002,Pre-Snagging & Disnagging for corrid & Srv rooms,2296,56,0,64,0,214,214,64,0,0,0,,,,2009-02-25 08:00,2009-03-05 17:00,,2009-02-17 08:00,2009-02-25 17:00,2009-02-17 08:00,2009-02-25 17:00,2009-02-17 08:00,2009-02-25 17:00,,,,,PT_Normal,,,,,aXsycS42mUSIK/MY+lhkVw,,,,N,0,0
3170,85069,829,11372,912,1,100,N,N,N,CP_Drtn,TT_Task,DT_FixedDUR2,RV_OK,TK_Complete,7231L12050,Columns & walls 1L to 1U - Part 1,2306,0,0,0,3408.26,0,3408.26,32,102126.4,102126.4,0,,2008-08-03 08:00,2008-08-06 17:00,2008-10-02 08:00,2008-10-01 17:00,,2008-10-02 08:00,2008-10-01 17:00,,,2008-08-03 08:00,2008-08-06 17:00,,,,,PT_Normal,,,,,+eO9WBJSxUeABp1AIk9IwA,,,,N,3408.26,102126.4
3171,85070,829,11372,912,1,100,N,N,N,CP_Drtn,TT_Task,DT_FixedDUR2,RV_OK,TK_Complete,7231L12051,Columns & walls 1L to 1U - Part 2,2306,0,0,0,3408.26,0,3408.26,32,102126.4,102126.4,0,,2008-08-11 08:00,2008-08-14 17:00,2008-10-02 08:00,2008-10-01 17:00,,2008-10-02 08:00,2008-10-01 17:00,,,2008-08-11 08:00,2008-08-14 17:00,,,,,PT_Normal,,,,,inC1TqRJYkWfX1bLtDhDig,,,,N,3408.26,102126.4
3172,85071,829,11372,912,1,100,N,N,N,CP_Drtn,TT_Task,DT_FixedDUR2,RV_OK,TK_Complete,7231L12052,Columns & walls 1L to 1U - Middle Part,2306,0,0,0,7073.11,0,7073.11,32,212979.36,212979.36,0,,2008-08-10 08:00,2008-08-13 17:00,2008-10-02 08:00,2008-10-01 17:00,,2008-10-02 08:00,2008-10-01 17:00,,,2008-08-10 08:00,2008-08-13 17:00,,,,,PT_Normal,,,,,FeVeCy7Rp0mVaD1W481fhA,,,,N,7073.11,212979.36
3173,85072,829,11372,912,1,100,N,N,N,CP_Drtn,TT_Task,DT_FixedDUR2,RV_OK,TK_Complete,7231L12200,Slab @ 1U level - Part 1,2306,0,0,0,1938.1,0,1938.1,56,69809.52,69809.52,0,,2008-08-11 08:00,2008-08-18 17:00,2008-10-02 08:00,2008-10-01 17:00,,2008-10-02 08:00,2008-10-01 17:00,,,2008-08-11 08:00,2008-08-18 17:00,,,,,PT_Normal,,,,,Mif604GZJ0+2j7TWTv69Pg,,,,N,1938.1,69809.52
3174,85073,829,11372,912,1,100,N,N,N,CP_Drtn,TT_Task,DT_FixedDUR2,RV_OK,TK_Complete,7231L12201,Slab @ 1U level - Part 2,2306,0,0,0,1938.1,0,1938.1,56,69809.52,69809.52,0,,2008-08-19 08:00,2008-08-26 17:00,2008-10-02 08:00,2008-10-01 17:00,,2008-10-02 08:00,2008-10-01 17:00,,,2008-08-19 08:00,2008-08-26 17:00,,,,,PT_Normal,,,,,iMYGbgvpbke8h3H1et4uTA,,,,N,1938.1,69809.52
3175,85074,829,11372,912,1,100,N,N,N,CP_Drtn,TT_Task,DT_FixedDUR2,RV_OK,TK_Complete,7231L12202,Slab @ 1U level - Middle Part,2306,0,0,0,2781.47,0,2781.47,56,101094.8,101094.8,0,,2008-08-18 08:00,2008-08-25 17:00,2008-10-02 08:00,2008-10-01 17:00,,2008-10-02 08:00,2008-10-01 17:00,,,2008-08-18 08:00,2008-08-25 17:00,,,,,PT_Normal,,,,,Cn4uxvifHE2ww+5UIWo4jA,,,,N,2781.47,101094.8
3176,85075,829,11372,912,1,100,N,N,N,CP_Drtn,TT_Task,DT_FixedDUR2,RV_OK,TK_Complete,7231L12250,Staircases 1L to 1U,2306,288,0,0,991.88,0,991.88,24,18457.6,18457.6,0,,2008-08-27 08:00,2008-08-30 17:00,2008-11-13 08:00,2008-11-12 17:00,,2008-10-02 08:00,2008-10-01 17:00,,,2008-08-27 08:00,2008-08-30 17:00,,,,,PT_Normal,,,,,jBMi67CUNEGtsSbHddxGzQ,,,,N,991.88,18457.6
3177,85076,829,11846,912,1,73.3,N,N,N,CP_Drtn,TT_Task,DT_FixedDUR2,RV_OK,TK_Active,7231L14050,Block works,2306,0,0,32,17836.84,8022.83,30085.5,120,18440,17748.47,4917.36,,2008-09-20 08:00,,2008-10-02 08:00,2008-10-06 17:00,,2008-10-02 08:00,2008-10-06 17:00,2008-10-02 08:00,2008-10-06 17:00,2008-09-20 08:00,2008-10-06 17:00,,,,,PT_Normal,,,,,/Emk/W/U8kyNwsHrIT3fVA,,,,N,17836.84,17748.47
3178,85077,829,11638,912,1,0,N,N,N,CP_Drtn,TT_Task,DT_FixedDUR2,RV_OK,TK_NotStart,7231L16050,Plaster works,2306,0,0,120,0,24385.9,24385.9,120,19032,0,19032,,,,2008-10-11 08:00,2008-10-27 17:00,,2008-10-11 08:00,2008-10-27 17:00,2008-10-11 08:00,2008-10-27 17:00,2008-10-11 08:00,2008-10-27 17:00,,,,,PT_Normal,,,,,gFs+wie1DkaFB8bgyRmiyw,,,,N,0,0
3179,85078,829,11638,912,1,0,N,N,N,CP_Drtn,TT_Task,DT_FixedDUR2,RV_OK,TK_NotStart,7231L16051,Plaste works behind tiles,2306,200,200,120,0,10136.2,10136.2,120,7856,0,7856,,,,2008-11-09 08:00,2008-11-25 17:00,,2008-10-11 08:00,2008-10-27 17:00,2008-10-11 08:00,2008-10-27 17:00,2008-10-11 08:00,2008-10-27 17:00,,,,,PT_Normal,,,,,AUhVKdVexUOq5wZLO+8Pdg,,,,N,0,0
3180,85079,829,11430,912,1,26.7,N,N,N,CP_Drtn,TT_Task,DT_FixedDUR2,RV_OK,TK_Active,7231L18050,Rendering works,2306,64,64,88,1515.49,4167.51,5683,120,5000,1333.36,3666.64,,2008-09-28 08:00,,2008-10-12 08:00,2008-10-23 17:00,,2008-10-02 08:00,2008-10-14 17:00,2008-10-02 08:00,2008-10-14 17:00,2008-09-28 08:00,2008-10-14 17:00,,,,,PT_Normal,,,,,o0wSD2ko0EuUl+jAja2b1g,,,,N,1515.49,1333.36
3181,85080,829,11430,912,1,0,N,N,N,CP_Drtn,TT_Task,DT_FixedDUR2,RV_OK,TK_NotStart,7231L18100,Painting base coats,2306,0,0,120,0,26555.6,26555.6,120,24032,0,24032,,,,2008-10-19 08:00,2008-11-04 17:00,,2008-10-19 08:00,2008-11-04 17:00,2008-10-19 08:00,2008-11-04 17:00,2008-10-19 08:00,2008-11-04 17:00,,,,,PT_Normal,,,,,NRGw2aucckqDYl1+yrNKsg,,,,N,0,0
3182,85081,829,11430,912,1,0,N,N,N,CP_Drtn,TT_Task,DT_FixedDUR2,RV_OK,TK_NotStart,7231L18150,Painting 1st top coat for apartments,2306,144,0,72,0,17300.2,17300.2,72,16408,0,16408,,,,2009-01-10 08:00,2009-01-19 17:00,,2008-12-20 08:00,2008-12-29 17:00,2008-12-20 08:00,2008-12-29 17:00,2008-12-20 08:00,2008-12-29 17:00,,,,,PT_Normal,,,,,QgOwO7r1BUu3RLEa9dHTSQ,,,,N,0,0
3183,85082,829,11430,912,1,0,N,N,N,CP_Drtn,TT_Task,DT_FixedDUR2,RV_OK,TK_NotStart,7231L18153,Painting 1st top coat for corridors/lobbies,2306,248,0,48,0,14370,14370,48,13640,0,13640,,,,2009-02-04 08:00,2009-02-10 17:00,,2008-12-30 08:00,2009-01-05 17:00,2008-12-30 08:00,2009-01-05 17:00,2008-12-30 08:00,2009-01-05 17:00,,,,,PT_Normal,,,,,D3mgxx8P+UOuAk6F+9Vyzw,,,,N,0,0
3184,85083,829,11430,912,1,0,N,N,N,CP_Drtn,TT_Task,DT_FixedDUR2,RV_OK,TK_NotStart,7231L18155,Painting 1st top coat for service rooms,2306,232,0,48,0,6364.4,6364.4,48,6016,0,6016,,,,2009-02-02 08:00,2009-02-08 17:00,,2008-12-30 08:00,2009-01-05 17:00,2008-12-30 08:00,2009-01-05 17:00,2008-12-30 08:00,2009-01-05 17:00,,,,,PT_Normal,,,,,DL1rnl4Vfk6ePrSpis6XLg,,,,N,0,0
3185,85084,829,10657,912,1,0,N,N,N,CP_Drtn,TT_Task,DT_FixedDUR2,RV_OK,TK_NotStart,7231L18200,Painting final top coat,2306,112,56,32,0,25265.8,25265.8,32,24032,0,24032,,,,2009-03-18 08:00,2009-03-22 17:00,,2009-03-02 08:00,2009-03-05 17:00,2009-03-02 08:00,2009-03-05 17:00,2009-03-02 08:00,2009-03-05 17:00,,,,,PT_Normal,,,,,HC3HxUpSpEGFZDTvJu+tmw,,,,N,0,0
3186,85085,829,11849,912,1,0,N,N,N,CP_Drtn,TT_Task,DT_FixedDUR2,RV_OK,TK_NotStart,7231L20050,Floor tiles for apartments-dry area,2306,192,0,120,0,8846.4,8846.4,120,6464,0,6464,,,,2008-11-25 08:00,2008-12-11 17:00,,2008-10-28 08:00,2008-11-13 17:00,2008-10-28 08:00,2008-11-13 17:00,2008-10-28 08:00,2008-11-13 17:00,,,,,PT_Normal,,,,,Aip6DVwoVEGdRYis7voPZw,,,,N,0,0
3187,85086,829,11849,912,1,0,N,N,N,CP_Drtn,TT_Task,DT_FixedDUR2,RV_OK,TK_NotStart,7231L20053,Floor tiles for corridors / lobbies,2306,136,0,48,0,4638,4638,48,3400,0,3400,,,,2009-01-06 08:00,2009-01-12 17:00,,2008-12-17 08:00,2008-12-23 17:00,2008-12-17 08:00,2008-12-23 17:00,2008-12-17 08:00,2008-12-23 17:00,,,,,PT_Normal,,,,,xeRwxpSBfEOCn2DcNm0sHA,,,,N,0,0
3188,85087,829,11849,912,1,0,N,N,N,CP_Drtn,TT_Task,DT_FixedDUR2,RV_OK,TK_NotStart,7231L20070,Floor tiles for apartments-wet area,2306,0,0,120,0,3684,3684,120,2640,0,2640,,,,2008-12-10 08:00,2008-12-27 17:00,,2008-12-10 08:00,2008-12-27 17:00,2008-12-10 08:00,2008-12-27 17:00,2008-12-10 08:00,2008-12-27 17:00,,,,,PT_Normal,,,,,38CoWA7RL0SO07Or6vz3Tw,,,,N,0,0
3189,85088,829,11849,912,1,0,N,N,N,CP_Drtn,TT_Task,DT_FixedDUR2,RV_OK,TK_NotStart,7231L20110,Wall tiles for apartments-wet area,2306,56,0,120,0,9159,9159,120,6026,0,6026,,,,2008-12-18 08:00,2009-01-04 17:00,,2008-12-10 08:00,2008-12-27 17:00,2008-12-10 08:00,2008-12-27 17:00,2008-12-10 08:00,2008-12-27 17:00,,,,,PT_Normal,,,,,XpuBlsKEy0mQrIeRl+CfSQ,,,,N,0,0
3190,85089,829,11850,912,1,53.3,N,N,N,CP_Drtn,TT_Task,DT_FixedDUR2,RV_OK,TK_Active,7231L22150,W/P for for apartments,2306,416,0,56,2602.85,2277.55,4880.4,120,4328,2308.24,2019.76,,2008-09-23 08:00,,2008-12-02 08:00,2008-12-09 17:00,,2008-10-02 08:00,2008-10-09 17:00,2008-10-02 08:00,2008-10-09 17:00,2008-09-23 08:00,2008-10-09 17:00,,,,,PT_Normal,,,,,91Wu0HcvckmHIT+GS18cfQ,,,,N,2602.85,2308.24
3191,85090,829,11742,912,1,0,N,N,N,CP_Drtn,TT_Task,DT_FixedDUR2,RV_OK,TK_NotStart,7231L24050,Aluminium doors & windows,2306,240,184,120,0,1976,1976,120,464,0,464,,,,2008-12-10 08:00,2008-12-27 17:00,,2008-11-05 08:00,2008-11-22 17:00,2008-11-05 08:00,2008-11-22 17:00,2008-11-05 08:00,2008-11-22 17:00,,,,,PT_Normal,,,,,xUh7fx82mkO5yG6eiJeJow,,,,N,0,0
3192,85091,829,11742,912,1,0,N,N,N,CP_Drtn,TT_Task,DT_FixedDUR2,RV_OK,TK_NotStart,7231L24200,Balcony handrails,2306,0,0,120,0,2710,2710,120,1480,0,1480,,,,2008-12-28 08:00,2009-01-13 17:00,,2008-12-28 08:00,2009-01-13 17:00,2008-12-28 08:00,2009-01-13 17:00,2008-12-28 08:00,2009-01-13 17:00,,,,,PT_Normal,,,,,Z5lH18E2zk2gWlOe4IkmVg,,,,N,0,0
3193,85092,829,11742,912,1,0,N,N,N,CP_Drtn,TT_Task,DT_FixedDUR2,RV_OK,TK_NotStart,7231L24203,Lobby handrails,2306,352,104,64,0,946,946,64,504,0,504,,,,2009-02-14 08:00,2009-02-22 17:00,,2008-12-24 08:00,2009-01-01 17:00,2008-12-24 08:00,2009-01-01 17:00,2008-12-24 08:00,2009-01-01 17:00,,,,,PT_Normal,,,,,v6yDGsoIrEy1qn2qezi/Dg,,,,N,0,0
3194,85093,829,11852,912,1,0,N,N,N,CP_Drtn,TT_Task,DT_FixedDUR2,RV_OK,TK_NotStart,7231L26050,Steel doors,2306,232,0,64,0,384,384,64,64,0,64,,,,2009-01-24 08:00,2009-02-01 17:00,,2008-12-21 08:00,2008-12-29 17:00,2008-12-21 08:00,2008-12-29 17:00,2008-12-21 08:00,2008-12-29 17:00,,,,,PT_Normal,,,,,xE4YHd2TI0CXeOvwkOyRPw,,,,N,0,0
3195,85094,829,11644,912,1,0,N,N,N,CP_Drtn,TT_Task,DT_FixedDUR2,RV_OK,TK_NotStart,7231L30050,Wooden doors,2306,96,16,176,0,2192,2192,176,576,0,576,,,,2008-12-24 08:00,2009-01-18 17:00,,2008-12-10 08:00,2009-01-04 17:00,2008-12-10 08:00,2009-01-04 17:00,2008-12-10 08:00,2009-01-04 17:00,,,,,PT_Normal,,,,,dvvMWwAIRkufaafzxMrF5g,,,,N,0,0
3196,85095,829,11854,912,1,0,N,N,N,CP_Drtn,TT_Task,DT_FixedDUR2,RV_OK,TK_NotStart,7231L32050,Kitchen cabinets,2306,56,56,128,0,3104,3104,128,96,0,96,,,,2009-01-04 08:00,2009-01-21 17:00,,2008-12-27 08:00,2009-01-13 17:00,2008-12-27 08:00,2009-01-13 17:00,2008-12-27 08:00,2009-01-13 17:00,,,,,PT_Normal,,,,,pwQlt1UBIkCWBrKe53t3fw,,,,N,0,0
3197,85096,829,11854,912,1,0,N,N,N,CP_Drtn,TT_Task,DT_FixedDUR2,RV_OK,TK_NotStart,7231L32100,Vanity counters,2306,16,0,120,0,1880,1880,120,160,0,160,,,,2008-12-30 08:00,2009-01-15 17:00,,2008-12-28 08:00,2009-01-13 17:00,2008-12-28 08:00,2009-01-13 17:00,2008-12-28 08:00,2009-01-13 17:00,,,,,PT_Normal,,,,,e2wrByHGKU2Fjg7S0bKm1w,,,,N,0,0
3198,85097,829,11854,912,1,0,N,N,N,CP_Drtn,TT_Task,DT_FixedDUR2,RV_OK,TK_NotStart,7231L32150,Wardrobes,2306,192,192,120,0,4152,4152,120,192,0,192,,,,2009-01-05 08:00,2009-01-21 17:00,,2008-12-08 08:00,2008-12-24 17:00,2008-12-08 08:00,2008-12-24 17:00,2008-12-08 08:00,2008-12-24 17:00,,,,,PT_Normal,,,,,ocxv/923HEmdUVZZOjgvFQ,,,,N,0,0
3199,85098,829,11855,912,1,0,N,N,N,CP_Drtn,TT_Task,DT_FixedDUR2,RV_OK,TK_NotStart,7231L34050,False ceiling works for apartments-dry area,2306,136,0,160,0,1506.16,1506.16,160,897.44,0,897.44,,,,2008-12-16 08:00,2009-01-07 17:00,,2008-11-26 08:00,2008-12-18 17:00,2008-11-26 08:00,2008-12-18 17:00,2008-11-26 08:00,2008-12-18 17:00,,,,,PT_Normal,,,,,5PpY9BJctkqGNKv14RYDNA,,,,N,0,0
3200,85099,829,11855,912,1,0,N,N,N,CP_Drtn,TT_Task,DT_FixedDUR2,RV_OK,TK_NotStart,7231L34053,False ceiling works for corridors/lobbies,2306,136,0,72,0,9876,9876,72,6536,0,6536,,,,2008-12-29 08:00,2009-01-07 17:00,,2008-12-09 08:00,2008-12-18 17:00,2008-12-09 08:00,2008-12-18 17:00,2008-12-09 08:00,2008-12-18 17:00,,,,,PT_Normal,,,,,xJTJakIDFki6v1Potbzoag,,,,N,0,0
3201,85100,829,11855,912,1,0,N,N,N,CP_Drtn,TT_Task,DT_FixedDUR2,RV_OK,TK_NotStart,7231L34070,False ceiling works for apartments-wet area,2306,0,0,160,0,709.84,709.84,160,366.56,0,366.56,,,,2008-11-26 08:00,2008-12-18 17:00,,2008-11-26 08:00,2008-12-18 17:00,2008-11-26 08:00,2008-12-18 17:00,2008-11-26 08:00,2008-12-18 17:00,,,,,PT_Normal,,,,,C/Vgj1ulYEqvAtkrJ9q5CQ,,,,N,0,0
3202,85101,829,11647,912,1,0,N,N,N,CP_Drtn,TT_Task,DT_FixedDUR2,RV_OK,TK_NotStart,7231L36050,Stone finishing top,2306,96,0,64,0,484,484,64,240,0,240,,,,2009-01-10 08:00,2009-01-18 17:00,,2008-12-27 08:00,2009-01-04 17:00,2008-12-27 08:00,2009-01-04 17:00,2008-12-27 08:00,2009-01-04 17:00,,,,,PT_Normal,,,,,s5dCZXXUqECnECJlld6mUQ,,,,N,0,0
3203,85102,829,11647,912,1,0,N,N,N,CP_Drtn,TT_Task,DT_FixedDUR2,RV_OK,TK_NotStart,7231L36100,Thresholds,2306,56,0,120,0,924,924,120,536,0,536,,,,2009-01-05 08:00,2009-01-21 17:00,,2008-12-28 08:00,2009-01-13 17:00,2008-12-28 08:00,2009-01-13 17:00,2008-12-28 08:00,2009-01-13 17:00,,,,,PT_Normal,,,,,IOfgAGukd0GTDJKIavVEkA,,,,N,0,0
3204,85103,829,11648,912,1,0,N,N,N,CP_Drtn,TT_Task,DT_FixedDUR2,RV_OK,TK_NotStart,7231L38100,Epoxy coating system,2306,232,176,48,0,816,816,48,640,0,640,,,,2009-02-16 08:00,2009-02-22 17:00,,2009-01-13 08:00,2009-01-19 17:00,2009-01-13 08:00,2009-01-19 17:00,2009-01-13 08:00,2009-01-19 17:00,,,,,PT_Normal,,,,,ypEmxpaBG06AeohEjp7HHA,,,,N,0,0
3205,85104,829,11858,912,1,0,N,N,N,CP_Drtn,TT_Task,DT_FixedDUR2,RV_OK,TK_NotStart,7231L40050,Duplex apartment stairs,2306,192,0,120,0,3816,3816,120,96,0,96,,,,2008-12-13 08:00,2008-12-29 17:00,,2008-11-15 08:00,2008-12-01 17:00,2008-11-15 08:00,2008-12-01 17:00,2008-11-15 08:00,2008-12-01 17:00,,,,,PT_Normal,,,,,3a6fC/LFY0qge1Z45t0M+g,,,,N,0,0
3206,85105,829,11858,912,1,0,N,N,N,CP_Drtn,TT_Task,DT_FixedDUR2,RV_OK,TK_NotStart,7231L40100,Wooden steps for Duplex stairs,2306,192,0,120,0,936,936,120,96,0,96,,,,2008-12-24 08:00,2009-01-10 17:00,,2008-11-26 08:00,2008-12-13 17:00,2008-11-26 08:00,2008-12-13 17:00,2008-11-26 08:00,2008-12-13 17:00,,,,,PT_Normal,,,,,XP9gd4XTKUiA1XMvCLSYRA,,,,N,0,0
3207,85106,829,11858,912,1,0,N,N,N,CP_Drtn,TT_Task,DT_FixedDUR2,RV_OK,TK_NotStart,7231L40150,Duplex stair railings,2306,192,128,120,0,5120,5120,120,2000,0,2000,,,,2009-01-05 08:00,2009-01-21 17:00,,2008-12-08 08:00,2008-12-24 17:00,2008-12-08 08:00,2008-12-24 17:00,2008-12-08 08:00,2008-12-24 17:00,,,,,PT_Normal,,,,,TAzimQUEEk+PlisGXF/mNw,,,,N,0,0
3208,85107,829,11859,912,1,0,N,N,N,CP_Drtn,TT_Task,DT_FixedDUR2,RV_OK,TK_NotStart,7231L42050,Signage works,2306,280,224,48,0,153.8,153.8,48,96,0,96,,,,2009-02-16 08:00,2009-02-22 17:00,,2009-01-06 08:00,2009-01-12 17:00,2009-01-06 08:00,2009-01-12 17:00,2009-01-06 08:00,2009-01-12 17:00,,,,,PT_Normal,,,,,w7F6MmdH102Ee/LK6g43WA,,,,N,0,0
3209,85108,829,11651,912,1,20,N,N,N,CP_Drtn,TT_Task,DT_FixedDUR2,RV_OK,TK_Active,7231L44050,Sub-frames,2306,0,0,96,254.4,1017.6,1272,120,576,115.2,460.8,,2008-09-29 08:00,,2008-10-02 08:00,2008-10-15 17:00,,2008-10-02 08:00,2008-10-15 17:00,2008-10-02 08:00,2008-10-15 17:00,2008-09-29 08:00,2008-10-15 17:00,,,,,PT_Normal,,,,,kQwA31Rt9ECWjoBjYQ8Q3g,,,,N,254.4,115.2
3210,85109,829,12676,912,1,100,N,N,N,CP_Drtn,TT_Task,DT_FixedDUR2,RV_OK,TK_Complete,7231L50100,MEP skeleton embedded provisions,2296,0,0,0,512,0,512,72,,,0,,2008-08-03 08:00,2008-08-12 17:00,2008-10-02 08:00,2008-10-01 17:00,,2008-10-02 08:00,2008-10-01 17:00,,,2008-08-03 08:00,2008-08-12 17:00,,,,,PT_Normal,,,,,sMRHIpKiO0uHr97m6r/RgA,,,,N,512,0
3211,85110,829,12678,912,1,5,N,N,N,CP_Drtn,TT_Task,DT_FixedDUR2,RV_OK,TK_Active,7231L52050,A/C duct works,2296,168,88,152,41.56,789.44,831,160,,,,,2008-10-01 08:00,,2008-10-27 08:00,2008-11-17 17:00,,2008-10-02 08:00,2008-10-23 17:00,2008-10-02 08:00,2008-10-23 17:00,2008-10-01 08:00,2008-10-23 17:00,,,,,PT_Normal,,,,,T1o+O4b6x0eWYsDwtVMgJg,,,,N,41.56,0
3212,85111,829,12678,912,1,0,N,N,N,CP_Drtn,TT_Task,DT_FixedDUR2,RV_OK,TK_NotStart,7231L52100,Chilled water pipe works,2296,104,24,72,0,787,787,72,0,0,0,,,,2008-10-29 08:00,2008-11-08 17:00,,2008-10-14 08:00,2008-10-23 17:00,2008-10-14 08:00,2008-10-23 17:00,2008-10-14 08:00,2008-10-23 17:00,,,,,PT_Normal,,,,,5zKIwBKGOEui5p5SP5K1ng,,,,N,0,0
3213,85112,829,12679,912,1,0,N,N,N,CP_Drtn,TT_Task,DT_FixedDUR2,RV_OK,TK_NotStart,7231L52150,FCU's hanging,2296,160,80,64,0,935.2,935.2,64,0,0,0,,,,2008-11-05 08:00,2008-11-13 17:00,,2008-10-13 08:00,2008-10-21 17:00,2008-10-13 08:00,2008-10-21 17:00,2008-10-13 08:00,2008-10-21 17:00,,,,,PT_Normal,,,,,Tu+F92rXL0SrFSlivZ1dFA,,,,N,0,0
3214,85113,829,12679,912,1,0,N,N,N,CP_Drtn,TT_Task,DT_FixedDUR2,RV_OK,TK_NotStart,7231L52300,FCU's assembly & duct connections,2296,80,80,80,0,951.2,951.2,80,0,0,0,,,,2008-11-15 08:00,2008-11-25 17:00,,2008-11-03 08:00,2008-11-13 17:00,2008-11-03 08:00,2008-11-13 17:00,2008-11-03 08:00,2008-11-13 17:00,,,,,PT_Normal,,,,,IKvcvtn7F0y2VTnz2NLQxQ,,,,N,0,0
3215,85114,829,12679,912,1,0,N,N,N,CP_Drtn,TT_Task,DT_FixedDUR2,RV_OK,TK_NotStart,7231L52350,Grills & diffusers,2296,384,160,120,0,912,912,120,0,0,0,,,,2009-02-05 08:00,2009-02-22 17:00,,2008-12-11 08:00,2008-12-28 17:00,2008-12-11 08:00,2008-12-28 17:00,2008-12-11 08:00,2008-12-28 17:00,,,,,PT_Normal,,,,,uGn+/SDMXUmyrFdKGuz9bg,,,,N,0,0
3216,85115,829,12678,912,1,0,N,N,N,CP_Drtn,TT_Task,DT_FixedDUR2,RV_OK,TK_NotStart,7231L52550,A/C duct risers,2296,80,0,64,0,1626,1626,64,0,0,0,,,,2008-10-30 08:00,2008-11-08 17:00,,2008-10-19 08:00,2008-10-27 17:00,2008-10-19 08:00,2008-10-27 17:00,2008-10-19 08:00,2008-10-27 17:00,,,,,PT_Normal,,,,,oFN1RhasSUKFFi5RMhcneQ,,,,N,0,0
3217,85116,829,12681,912,1,6.7,N,N,N,CP_Drtn,TT_Task,DT_FixedDUR2,RV_OK,TK_Active,7231L54050,Chasing & Pex pipe works,2296,192,0,112,26.34,368.66,395,120,,,,,2008-10-01 08:00,,2008-10-30 08:00,2008-11-15 17:00,,2008-10-02 08:00,2008-10-18 17:00,2008-10-02 08:00,2008-10-18 17:00,2008-10-01 08:00,2008-10-18 17:00,,,,,PT_Normal,,,,,2y+JBJtp40WT2FF8yuLu5A,,,,N,26.34,0
3218,85117,829,12681,912,1,0,N,N,N,CP_Drtn,TT_Task,DT_FixedDUR2,RV_OK,TK_NotStart,7231L54100,Over head distribution water pipe network,2296,168,0,64,0,8314,8314,64,0,0,0,,,,2008-11-06 08:00,2008-11-15 17:00,,2008-10-13 08:00,2008-10-21 17:00,2008-10-13 08:00,2008-10-21 17:00,2008-10-13 08:00,2008-10-21 17:00,,,,,PT_Normal,,,,,h9+8AyyRO02sfdNkTv5KwQ,,,,N,0,0
3219,85118,829,12683,912,1,0,N,N,N,CP_Drtn,TT_Task,DT_FixedDUR2,RV_OK,TK_NotStart,7231L54150,Water meter cabinet pipe works,2296,336,176,120,0,340,340,120,0,0,0,,,,2009-01-05 08:00,2009-01-21 17:00,,2008-11-17 08:00,2008-12-03 17:00,2008-11-17 08:00,2008-12-03 17:00,2008-11-17 08:00,2008-12-03 17:00,,,,,PT_Normal,,,,,220hTDqI10G6NyLj/Dzubw,,,,N,0,0
3220,85119,829,12682,912,1,30,N,N,N,CP_Drtn,TT_Task,DT_FixedDUR2,RV_OK,TK_Active,7231L54250,Bathtubs,2296,416,0,56,53.04,191.52,273.6,80,,29.04,,,2008-09-29 08:00,,2008-12-02 08:00,2008-12-09 17:00,,2008-10-02 08:00,2008-10-09 17:00,2008-10-02 08:00,2008-10-09 17:00,2008-09-29 08:00,2008-10-09 17:00,,,,,PT_Normal,,,,,PQvKYO9miEmIXBr1fssKFg,,,,N,53.04,29.04
3221,85120,829,12682,912,1,0,N,N,N,CP_Drtn,TT_Task,DT_FixedDUR2,RV_OK,TK_NotStart,7231L54300,Water heater,2296,160,24,64,0,310.4,310.4,64,0,0,0,,,,2008-11-11 08:00,2008-11-19 17:00,,2008-10-19 08:00,2008-10-27 17:00,2008-10-19 08:00,2008-10-27 17:00,2008-10-19 08:00,2008-10-27 17:00,,,,,PT_Normal,,,,,cTeOfBomuEGDLDSt7OhRqQ,,,,N,0,0
3222,85121,829,12682,912,1,0,N,N,N,CP_Drtn,TT_Task,DT_FixedDUR2,RV_OK,TK_NotStart,7231L54350,Over head pipe assembly & vlave connections,2296,168,168,72,0,237,237,72,0,0,0,,,,2008-11-16 08:00,2008-11-25 17:00,,2008-10-22 08:00,2008-11-01 17:00,2008-10-22 08:00,2008-11-01 17:00,2008-10-22 08:00,2008-11-01 17:00,,,,,PT_Normal,,,,,6QKfIJJn+0uHK6P2QyjHvQ,,,,N,0,0
3223,85122,829,12683,912,1,0,N,N,N,CP_Drtn,TT_Task,DT_FixedDUR2,RV_OK,TK_NotStart,7231L54400,Sanitary fixures,2296,96,0,120,0,516,516,120,0,0,0,,,,2009-01-01 08:00,2009-01-18 17:00,,2008-12-18 08:00,2009-01-04 17:00,2008-12-18 08:00,2009-01-04 17:00,2008-12-18 08:00,2009-01-04 17:00,,,,,PT_Normal,,,,,U4u190jvokWvtLrX30UN1A,,,,N,0,0
3224,85123,829,12683,912,1,0,N,N,N,CP_Drtn,TT_Task,DT_FixedDUR2,RV_OK,TK_NotStart,7231L54450,Mirrors,2296,16,0,120,0,186,186,120,0,0,0,,,,2009-01-05 08:00,2009-01-21 17:00,,2009-01-03 08:00,2009-01-19 17:00,2009-01-03 08:00,2009-01-19 17:00,2009-01-03 08:00,2009-01-19 17:00,,,,,PT_Normal,,,,,jKQt1rM4xEOmD1y0zj5Bfw,,,,N,0,0
3225,85124,829,12682,912,1,30,N,N,N,CP_Drtn,TT_Task,DT_FixedDUR2,RV_OK,TK_Active,7231L54500,Concealed Flushing Cistern,2296,416,416,56,43.8,148.4,212,80,,19.8,,,2008-09-29 08:00,,2008-12-02 08:00,2008-12-09 17:00,,2008-10-02 08:00,2008-10-09 17:00,2008-10-02 08:00,2008-10-09 17:00,2008-09-29 08:00,2008-10-09 17:00,,,,,PT_Normal,,,,,X4BNKpySwEWFveBUTvQ4kQ,,,,N,43.8,19.8
3226,85125,829,12685,912,1,6.7,N,N,N,CP_Drtn,TT_Task,DT_FixedDUR2,RV_OK,TK_Active,7231L56050,Chasing and installation of drainage pipes,2296,184,0,112,19,266,285,120,,,,,2008-10-01 08:00,,2008-10-29 08:00,2008-11-13 17:00,,2008-10-02 08:00,2008-10-18 17:00,2008-10-02 08:00,2008-10-18 17:00,2008-10-01 08:00,2008-10-18 17:00,,,,,PT_Normal,,,,,vGAtiRkKA0WCMWm1ljMnrQ,,,,N,19,0
3227,85126,829,12685,912,1,50,N,N,N,CP_Drtn,TT_Task,DT_FixedDUR2,RV_OK,TK_Active,7231L56100,Drainage riser pipes,2296,280,136,32,142,142,284,64,,,,,2008-09-28 08:00,,2008-11-12 08:00,2008-11-16 17:00,,2008-10-02 08:00,2008-10-06 17:00,2008-10-02 08:00,2008-10-06 17:00,2008-09-28 08:00,2008-10-06 17:00,,,,,PT_Normal,,,,,vouZABP49kyclla0fS2ssg,,,,N,142,0
3228,85127,829,12686,912,1,0,N,N,N,CP_Drtn,TT_Task,DT_FixedDUR2,RV_OK,TK_NotStart,7231L56150,Over head drainage pipe works,2296,144,144,64,0,257.6,257.6,64,0,0,0,,,,2008-11-17 08:00,2008-11-25 17:00,,2008-10-27 08:00,2008-11-04 17:00,2008-10-27 08:00,2008-11-04 17:00,2008-10-27 08:00,2008-11-04 17:00,,,,,PT_Normal,,,,,p159VP6O70qe45uiMy9csg,,,,N,0,0
3229,85128,829,12688,912,1,0,N,N,N,CP_Drtn,TT_Task,DT_FixedDUR2,RV_OK,TK_NotStart,7231L58050,Fire fighting pipe works,2296,216,216,72,0,292,292,72,0,0,0,,,,2008-11-08 08:00,2008-11-17 17:00,,2008-10-07 08:00,2008-10-16 17:00,2008-10-07 08:00,2008-10-16 17:00,2008-10-07 08:00,2008-10-16 17:00,,,,,PT_Normal,,,,,eEt7XDGX1kO/1CMQbM/hsw,,,,N,0,0
3230,85129,829,12689,912,1,0,N,N,N,CP_Drtn,TT_Task,DT_FixedDUR2,RV_OK,TK_NotStart,7231L58200,Fire cabinet complete,2296,248,136,64,0,339,339,64,0,0,0,,,,2009-02-14 08:00,2009-02-22 17:00,,2009-01-08 08:00,2009-01-17 17:00,2009-01-08 08:00,2009-01-17 17:00,2009-01-08 08:00,2009-01-17 17:00,,,,,PT_Normal,,,,,5mZ3P3Z1+kG/5o84tx4NKw,,,,N,0,0
3231,85130,829,12689,912,1,0,N,N,N,CP_Drtn,TT_Task,DT_FixedDUR2,RV_OK,TK_NotStart,7231L58250,Sprinkler heads,2296,328,144,120,0,450,450,120,0,0,0,,,,2009-02-05 08:00,2009-02-22 17:00,,2008-12-20 08:00,2009-01-05 17:00,2008-12-20 08:00,2009-01-05 17:00,2008-12-20 08:00,2009-01-05 17:00,,,,,PT_Normal,,,,,Pue7nlem00KgimPK0h0dIw,,,,N,0,0
3232,85131,829,12691,912,1,0,N,N,N,CP_Drtn,TT_Task,DT_FixedDUR2,RV_OK,TK_NotStart,7231L60050,LPG piping,2296,376,0,72,0,292,292,72,0,0,0,,,,2008-12-24 08:00,2009-01-03 17:00,,2008-10-30 08:00,2008-11-09 17:00,2008-10-30 08:00,2008-11-09 17:00,2008-10-30 08:00,2008-11-09 17:00,,,,,PT_Normal,,,,,8HKXXemBAECVbm2g2LSRiQ,,,,N,0,0
3233,85132,829,12692,912,1,0,N,N,N,CP_Drtn,TT_Task,DT_FixedDUR2,RV_OK,TK_NotStart,7231L60100,Gas meter & leak detector,2296,432,304,72,0,248,248,72,0,0,0,,,,2009-01-12 08:00,2009-01-21 17:00,,2008-11-10 08:00,2008-11-19 17:00,2008-11-10 08:00,2008-11-19 17:00,2008-11-10 08:00,2008-11-19 17:00,,,,,PT_Normal,,,,,1aRJwE/FMkuUoe3qyBfKiw,,,,N,0,0
3234,85133,829,12694,912,1,0,N,N,N,CP_Drtn,TT_Task,DT_FixedDUR2,RV_OK,TK_NotStart,7231L62050,BMS cabling,2296,40,40,64,0,486.4,486.4,64,0,0,0,,,,2008-11-17 08:00,2008-11-25 17:00,,2008-11-11 08:00,2008-11-19 17:00,2008-11-11 08:00,2008-11-19 17:00,2008-11-11 08:00,2008-11-19 17:00,,,,,PT_Normal,,,,,lZofsoPgjkWjJhA6tgAgAQ,,,,N,0,0
3235,85134,829,12695,912,1,0,N,N,N,CP_Drtn,TT_Task,DT_FixedDUR2,RV_OK,TK_NotStart,7231L62100,DGC & cable termination to equipments,2296,240,8,48,0,329.6,329.6,48,0,0,0,,,,2009-02-10 08:00,2009-02-16 17:00,,2009-01-06 08:00,2009-01-12 17:00,2009-01-06 08:00,2009-01-12 17:00,2009-01-06 08:00,2009-01-12 17:00,,,,,PT_Normal,,,,,r1fQpn6LnU6wqgb1oyoAzw,,,,N,0,0
3236,85135,829,12697,912,1,20,N,N,N,CP_Drtn,TT_Task,DT_FixedDUR2,RV_OK,TK_Active,7231L66050,Chasing and installation of conduits,2296,0,0,96,361.92,1447.68,1809.6,120,,,,,2008-09-29 08:00,,2008-10-02 08:00,2008-10-15 17:00,,2008-10-02 08:00,2008-10-15 17:00,2008-10-02 08:00,2008-10-15 17:00,2008-09-29 08:00,2008-10-15 17:00,,,,,PT_Normal,,,,,N2WcelYJwUeIWrwFAHzkzw,,,,N,361.92,0
3237,85136,829,12697,912,1,0,N,N,N,CP_Drtn,TT_Task,DT_FixedDUR2,RV_OK,TK_NotStart,7231L66100,Cable trays & trunking,2296,0,0,120,0,1528,1528,120,0,0,0,,,,2008-10-30 08:00,2008-11-16 17:00,,2008-10-30 08:00,2008-11-16 17:00,2008-10-30 08:00,2008-11-16 17:00,2008-10-30 08:00,2008-11-16 17:00,,,,,PT_Normal,,,,,ICY3jk2EX0uEW9K4ElclPQ,,,,N,0,0
3238,85137,829,12699,912,1,11.1,N,N,N,CP_Drtn,TT_Task,DT_FixedDUR2,RV_OK,TK_Active,7231L68050,Single core wiring,2296,232,232,64,125.34,1002.66,1128,72,,,,,2008-10-01 08:00,,2008-11-05 08:00,2008-11-13 17:00,,2008-10-02 08:00,2008-10-11 17:00,2008-10-02 08:00,2008-10-11 17:00,2008-10-01 08:00,2008-10-11 17:00,,,,,PT_Normal,,,,,gj9nsske5EWnakIFH6Z9iQ,,,,N,125.34,0
3239,85138,829,12700,912,1,0,N,N,N,CP_Drtn,TT_Task,DT_FixedDUR2,RV_OK,TK_NotStart,7231L68100,DB enclosure,2296,56,56,64,0,416,416,64,0,0,0,,,,2008-10-15 08:00,2008-10-23 17:00,,2008-10-07 08:00,2008-10-15 17:00,2008-10-07 08:00,2008-10-15 17:00,2008-10-07 08:00,2008-10-15 17:00,,,,,PT_Normal,,,,,+FRr86b94EW4M2DydznZ6A,,,,N,0,0
3240,85139,829,12700,912,1,0,N,N,N,CP_Drtn,TT_Task,DT_FixedDUR2,RV_OK,TK_NotStart,7231L68150,LV feeder cables,2296,72,40,72,0,2606.4,2606.4,72,0,0,0,,,,2008-11-27 08:00,2008-12-07 17:00,,2008-11-17 08:00,2008-11-26 17:00,2008-11-17 08:00,2008-11-26 17:00,2008-11-17 08:00,2008-11-26 17:00,,,,,PT_Normal,,,,,WQmnPkfg+EKmIRGavxRPhg,,,,N,0,0
3241,85140,829,12701,912,1,0,N,N,N,CP_Drtn,TT_Task,DT_FixedDUR2,RV_OK,TK_NotStart,7231L68250,DB-breakers assembly,2296,160,160,72,0,564.8,564.8,72,0,0,0,,,,2009-01-12 08:00,2009-01-21 17:00,,2008-12-20 08:00,2008-12-29 17:00,2008-12-20 08:00,2008-12-29 17:00,2008-12-20 08:00,2008-12-29 17:00,,,,,PT_Normal,,,,,lGPX4o4FkEKsK3dpRuS50w,,,,N,0,0
3242,85141,829,12701,912,1,0,N,N,N,CP_Drtn,TT_Task,DT_FixedDUR2,RV_OK,TK_NotStart,7231L68300,SMDB,2296,232,0,48,0,1315.2,1315.2,48,0,0,0,,,,2009-02-09 08:00,2009-02-15 17:00,,2009-01-06 08:00,2009-01-12 17:00,2009-01-06 08:00,2009-01-12 17:00,2009-01-06 08:00,2009-01-12 17:00,,,,,PT_Normal,,,,,VTBo6TkE6UGTehxo1K/ftQ,,,,N,0,0
3243,85142,829,12701,912,1,0,N,N,N,CP_Drtn,TT_Task,DT_FixedDUR2,RV_OK,TK_NotStart,7231L68350,Light Fittings,2296,168,168,120,0,1105.6,1105.6,120,0,0,0,,,,2009-01-05 08:00,2009-01-21 17:00,,2008-12-11 08:00,2008-12-28 17:00,2008-12-11 08:00,2008-12-28 17:00,2008-12-11 08:00,2008-12-28 17:00,,,,,PT_Normal,,,,,KsB9BOZyykKEtVYiyjelMQ,,,,N,0,0
3244,85143,829,12701,912,1,0,N,N,N,CP_Drtn,TT_Task,DT_FixedDUR2,RV_OK,TK_NotStart,7231L68400,Lighting Control Panels,2296,264,152,64,0,275.2,275.2,64,0,0,0,,,,2009-02-14 08:00,2009-02-22 17:00,,2009-01-06 08:00,2009-01-14 17:00,2009-01-06 08:00,2009-01-14 17:00,2009-01-06 08:00,2009-01-14 17:00,,,,,PT_Normal,,,,,iypBPvfmEk23tKs7BrNMXw,,,,N,0,0
3245,85144,829,12701,912,1,0,N,N,N,CP_Drtn,TT_Task,DT_FixedDUR2,RV_OK,TK_NotStart,7231L68600,Switches & sockets,2296,160,160,72,0,494.4,494.4,72,0,0,0,,,,2009-01-12 08:00,2009-01-21 17:00,,2008-12-20 08:00,2008-12-29 17:00,2008-12-20 08:00,2008-12-29 17:00,2008-12-20 08:00,2008-12-29 17:00,,,,,PT_Normal,,,,,P0/CZ+1eh0aI5379NAttrw,,,,N,0,0
3246,85145,829,12703,912,1,0,N,N,N,CP_Drtn,TT_Task,DT_FixedDUR2,RV_OK,TK_NotStart,7231L70050,Central Battery cables,2296,200,200,64,0,345.6,345.6,64,0,0,0,,,,2008-11-05 08:00,2008-11-13 17:00,,2008-10-07 08:00,2008-10-15 17:00,2008-10-07 08:00,2008-10-15 17:00,2008-10-07 08:00,2008-10-15 17:00,,,,,PT_Normal,,,,,UHVLIO0GyEOalL4FU4f7WA,,,,N,0,0
3247,85146,829,12704,912,1,0,N,N,N,CP_Drtn,TT_Task,DT_FixedDUR2,RV_OK,TK_NotStart,7231L70150,Emergency & exit light fittings,2296,368,160,48,0,188.8,188.8,48,0,0,0,,,,2009-02-16 08:00,2009-02-22 17:00,,2008-12-24 08:00,2008-12-30 17:00,2008-12-24 08:00,2008-12-30 17:00,2008-12-24 08:00,2008-12-30 17:00,,,,,PT_Normal,,,,,/4Y4iO4/GUy2PTMayfNowg,,,,N,0,0
3248,85147,829,12706,912,1,0,N,N,N,CP_Drtn,TT_Task,DT_FixedDUR2,RV_OK,TK_NotStart,7231L72200,Intercom system cables,2296,24,24,64,0,592,592,64,0,0,0,,,,2008-11-17 08:00,2008-11-25 17:00,,2008-11-13 08:00,2008-11-22 17:00,2008-11-13 08:00,2008-11-22 17:00,2008-11-13 08:00,2008-11-22 17:00,,,,,PT_Normal,,,,,TetGwXVk0UWSSgqI5OEltg,,,,N,0,0
3249,85148,829,12707,912,1,0,N,N,N,CP_Drtn,TT_Task,DT_FixedDUR2,RV_OK,TK_NotStart,7231L72250,Intercom system equipments,2296,144,144,64,0,697.6,697.6,64,0,0,0,,,,2009-01-13 08:00,2009-01-21 17:00,,2008-12-23 08:00,2008-12-31 17:00,2008-12-23 08:00,2008-12-31 17:00,2008-12-23 08:00,2008-12-31 17:00,,,,,PT_Normal,,,,,iCiQjwptzE25m8YR9u49Fg,,,,N,0,0
3250,85149,829,12709,912,1,0,N,N,N,CP_Drtn,TT_Task,DT_FixedDUR2,RV_OK,TK_NotStart,7231L74050,Fire alarm cables,2296,200,200,64,0,380.8,380.8,64,0,0,0,,,,2008-11-05 08:00,2008-11-13 17:00,,2008-10-07 08:00,2008-10-15 17:00,2008-10-07 08:00,2008-10-15 17:00,2008-10-07 08:00,2008-10-15 17:00,,,,,PT_Normal,,,,,hNTPyfuiO0+lPAdFPrEczw,,,,N,0,0
3251,85150,829,12710,912,1,0,N,N,N,CP_Drtn,TT_Task,DT_FixedDUR2,RV_OK,TK_NotStart,7231L74100,Fire alarm fittings,2296,328,160,120,0,172.8,172.8,120,0,0,0,,,,2009-02-05 08:00,2009-02-22 17:00,,2008-12-20 08:00,2009-01-05 17:00,2008-12-20 08:00,2009-01-05 17:00,2008-12-20 08:00,2009-01-05 17:00,,,,,PT_Normal,,,,,gDpq1j3NfEOyCT/uhpgvkw,,,,N,0,0
3252,85151,829,12712,912,1,0,N,N,N,CP_Drtn,TT_Task,DT_FixedDUR2,RV_OK,TK_NotStart,7231L76050,Structured cabling,2296,40,40,64,0,345.6,345.6,64,0,0,0,,,,2008-11-19 08:00,2008-11-27 17:00,,2008-11-13 08:00,2008-11-22 17:00,2008-11-13 08:00,2008-11-22 17:00,2008-11-13 08:00,2008-11-22 17:00,,,,,PT_Normal,,,,,5z4cNIXfOkW7hYQTS6T+7Q,,,,N,0,0
3253,85152,829,12713,912,1,0,N,N,N,CP_Drtn,TT_Task,DT_FixedDUR2,RV_OK,TK_NotStart,7231L76100,Consolidated pionts,2296,0,0,64,0,486.4,486.4,64,0,0,0,,,,2008-11-29 08:00,2008-12-07 17:00,,2008-11-29 08:00,2008-12-07 17:00,2008-11-29 08:00,2008-12-07 17:00,2008-11-29 08:00,2008-12-07 17:00,,,,,PT_Normal,,,,,M3x4t8c3k0ahCGDE2Aii/Q,,,,N,0,0
3254,85153,829,11583,912,1,100,N,N,N,CP_Drtn,TT_Task,DT_FixedDUR2,RV_OK,TK_Complete,7231U12050,Columns & walls 1U to 2L - Part 1,2306,0,0,0,3724.34,0,3724.34,32,111688.16,111688.16,0,,2008-08-19 08:00,2008-08-23 17:00,2008-10-02 08:00,2008-10-01 17:00,,2008-10-02 08:00,2008-10-01 17:00,,,2008-08-19 08:00,2008-08-23 17:00,,,,,PT_Normal,,,,,Hv54D73oaUCIe/xTvXEoxA,,,,N,3724.34,111688.16
3255,85154,829,11583,912,1,100,N,N,N,CP_Drtn,TT_Task,DT_FixedDUR2,RV_OK,TK_Complete,7231U12051,Columns & walls 1U to 2L - Part 2,2306,0,0,0,3724.34,0,3724.34,32,111688.16,111688.16,0,,2008-08-27 08:00,2008-08-31 17:00,2008-10-02 08:00,2008-10-01 17:00,,2008-10-02 08:00,2008-10-01 17:00,,,2008-08-27 08:00,2008-08-31 17:00,,,,,PT_Normal,,,,,eqfFoXtx4UOBZFLecgX3Hw,,,,N,3724.34,111688.16
3256,85155,829,11583,912,1,100,N,N,N,CP_Drtn,TT_Task,DT_FixedDUR2,RV_OK,TK_Complete,7231U12052,Columns & walls 1U to 2L - Middle Part,2306,0,0,0,8020.4,0,8020.4,32,241635.84,241635.84,0,,2008-08-26 08:00,2008-08-30 17:00,2008-10-02 08:00,2008-10-01 17:00,,2008-10-02 08:00,2008-10-01 17:00,,,2008-08-26 08:00,2008-08-30 17:00,,,,,PT_Normal,,,,,CyCY+cOuZkm2A1vBEfC2TA,,,,N,8020.4,241635.84
3257,85156,829,11583,912,1,100,N,N,N,CP_Drtn,TT_Task,DT_FixedDUR2,RV_OK,TK_Complete,7231U12200,Slab @ 2L level - Part 1,2306,0,0,0,4376.76,0,4376.76,56,160277.68,160277.68,0,,2008-08-27 08:00,2008-09-03 17:00,2008-10-02 08:00,2008-10-01 17:00,,2008-10-02 08:00,2008-10-01 17:00,,,2008-08-27 08:00,2008-09-03 17:00,,,,,PT_Normal,,,,,NHHyNXTa8kOcBmJ/Yo5apg,,,,N,4376.76,160277.68
3258,85157,829,11583,912,1,100,N,N,N,CP_Drtn,TT_Task,DT_FixedDUR2,RV_OK,TK_Complete,7231U12201,Slab @ 2L level - Part 2,2306,0,0,0,4376.76,0,4376.76,56,160277.68,160277.68,0,,2008-09-04 08:00,2008-09-11 17:00,2008-10-02 08:00,2008-10-01 17:00,,2008-10-02 08:00,2008-10-01 17:00,,,2008-09-04 08:00,2008-09-11 17:00,,,,,PT_Normal,,,,,6ovyXph4NUmQaC224Ug1MQ,,,,N,4376.76,160277.68
3259,85158,829,11583,912,1,100,N,N,N,CP_Drtn,TT_Task,DT_FixedDUR2,RV_OK,TK_Complete,7231U12202,Slab @ 2L level - Middle Part,2306,0,0,0,6315.78,0,6315.78,56,232201.84,232201.84,0,,2008-09-02 08:00,2008-09-09 17:00,2008-10-02 08:00,2008-10-01 17:00,,2008-10-02 08:00,2008-10-01 17:00,,,2008-09-02 08:00,2008-09-09 17:00,,,,,PT_Normal,,,,,T86LkGN7K0GuJvyEn4UAQQ,,,,N,6315.78,232201.84
3260,85159,829,11583,912,1,100,N,N,N,CP_Drtn,TT_Task,DT_FixedDUR2,RV_OK,TK_Complete,7231U12250,Staircases 1U to 2L,2296,288,0,0,991.88,0,991.88,24,18457.6,18457.6,0,,2008-09-13 08:00,2008-09-15 17:00,2008-11-13 08:00,2008-11-12 17:00,,2008-10-02 08:00,2008-10-01 17:00,,,2008-09-13 08:00,2008-09-15 17:00,,,,,PT_Normal,,,,,95d9Nb40kU6/bqV0snkm2Q,,,,N,991.88,18457.6
3261,85160,829,11862,912,1,20,N,N,N,CP_Drtn,TT_Task,DT_FixedDUR2,RV_OK,TK_Active,7231U14050,Block works,2306,56,0,96,4864.6,24068.4,30085.5,120,18440,4840.5,14752,,2008-09-29 08:00,,2008-10-11 08:00,2008-10-23 17:00,,2008-10-02 08:00,2008-10-15 17:00,2008-10-02 08:00,2008-10-15 17:00,2008-09-29 08:00,2008-10-15 17:00,,,,,PT_Normal,,,,,Y1WxOMFeyUaKlk6Vzom+HA,,,,N,4864.6,4840.5
3262,85161,829,11654,912,1,0,N,N,N,CP_Drtn,TT_Task,DT_FixedDUR2,RV_OK,TK_NotStart,7231U16050,Plaster works,2306,56,0,120,0,24375.8,24375.8,120,19024,0,19024,,,,2008-10-22 08:00,2008-11-08 17:00,,2008-10-14 08:00,2008-10-30 17:00,2008-10-14 08:00,2008-10-30 17:00,2008-10-14 08:00,2008-10-30 17:00,,,,,PT_Normal,,,,,mfAR9iuhy0ieOBwaTHceOA,,,,N,0,0
3263,85162,829,11654,912,1,0,N,N,N,CP_Drtn,TT_Task,DT_FixedDUR2,RV_OK,TK_NotStart,7231U16051,Plaste works behind tiles,2306,192,128,120,0,5424,5424,120,4160,0,4160,,,,2008-11-17 08:00,2008-12-03 17:00,,2008-10-20 08:00,2008-11-05 17:00,2008-10-20 08:00,2008-11-05 17:00,2008-10-20 08:00,2008-11-05 17:00,,,,,PT_Normal,,,,,xN0Hem3UzUWcJerRt0wW2Q,,,,N,0,0
3264,85163,829,11655,912,1,0,N,N,N,CP_Drtn,TT_Task,DT_FixedDUR2,RV_OK,TK_NotStart,7231U18050,Rendering works,2306,80,24,120,0,5683,5683,120,5000,0,5000,,,,2008-10-19 08:00,2008-11-04 17:00,,2008-10-07 08:00,2008-10-23 17:00,2008-10-07 08:00,2008-10-23 17:00,2008-10-07 08:00,2008-10-23 17:00,,,,,PT_Normal,,,,,JeJ+bbV84E6JUIRxPjLHww,,,,N,0,0
3265,85164,829,11655,912,1,0,N,N,N,CP_Drtn,TT_Task,DT_FixedDUR2,RV_OK,TK_NotStart,7231U18100,Paintin1 base coats,2306,56,0,120,0,26546.2,26546.2,120,24024,0,24024,,,,2008-10-30 08:00,2008-11-16 17:00,,2008-10-22 08:00,2008-11-08 17:00,2008-10-22 08:00,2008-11-08 17:00,2008-10-22 08:00,2008-11-08 17:00,,,,,PT_Normal,,,,,bpT9rBhPHEKyy4SVdgCvKQ,,,,N,0,0
3266,85165,829,11655,912,1,0,N,N,N,CP_Drtn,TT_Task,DT_FixedDUR2,RV_OK,TK_NotStart,7231U18150,Painting 1st top coat for apartments,2306,168,0,72,0,17300.2,17300.2,72,16408,0,16408,,,,2009-01-12 08:00,2009-01-21 17:00,,2008-12-18 08:00,2008-12-28 17:00,2008-12-18 08:00,2008-12-28 17:00,2008-12-18 08:00,2008-12-28 17:00,,,,,PT_Normal,,,,,vCjMCgZxlkClDWfiRb5ppA,,,,N,0,0
3267,85166,829,11865,912,1,0,N,N,N,CP_Drtn,TT_Task,DT_FixedDUR2,RV_OK,TK_NotStart,7231U20050,Floor tiles for apartments-dry area,2306,208,16,120,0,9570,9570,120,7000,0,7000,,,,2008-12-01 08:00,2008-12-17 17:00,,2008-11-01 08:00,2008-11-17 17:00,2008-11-01 08:00,2008-11-17 17:00,2008-11-01 08:00,2008-11-17 17:00,,,,,PT_Normal,,,,,48VQkGA5HkKKc8wnK6+o1w,,,,N,0,0
3268,85167,829,11865,912,1,0,N,N,N,CP_Drtn,TT_Task,DT_FixedDUR2,RV_OK,TK_NotStart,7231U20070,Floor tiles for apartments-wet area,2306,64,0,120,0,3835.2,3835.2,120,2752,0,2752,,,,2008-12-18 08:00,2009-01-04 17:00,,2008-12-09 08:00,2008-12-25 17:00,2008-12-09 08:00,2008-12-25 17:00,2008-12-09 08:00,2008-12-25 17:00,,,,,PT_Normal,,,,,MeYB8TJqgUqx96QGHax7gg,,,,N,0,0
3269,85168,829,11865,912,1,0,N,N,N,CP_Drtn,TT_Task,DT_FixedDUR2,RV_OK,TK_NotStart,7231U20110,Wall tiles for apartments-wet area,2306,128,0,120,0,9066,9066,120,5964,0,5964,,,,2008-12-28 08:00,2009-01-13 17:00,,2008-12-09 08:00,2008-12-25 17:00,2008-12-09 08:00,2008-12-25 17:00,2008-12-09 08:00,2008-12-25 17:00,,,,,PT_Normal,,,,,qTHVZKau9kiIr1Xj+tD4lQ,,,,N,0,0
3270,85169,829,11757,912,1,0,N,N,N,CP_Drtn,TT_Task,DT_FixedDUR2,RV_OK,TK_NotStart,7231U22150,W/P for for apartments,2306,160,0,120,0,2980,2980,120,2600,0,2600,,,,2008-11-09 08:00,2008-11-25 17:00,,2008-10-16 08:00,2008-11-02 17:00,2008-10-16 08:00,2008-11-02 17:00,2008-10-16 08:00,2008-11-02 17:00,,,,,PT_Normal,,,,,zXTY8iMHhEi6XusNFka5VQ,,,,N,0,0
3271,85170,829,11867,912,1,0,N,N,N,CP_Drtn,TT_Task,DT_FixedDUR2,RV_OK,TK_NotStart,7231U24050,Aluminium doors & windows,2306,272,152,120,0,1208,1208,120,272,0,272,,,,2008-12-18 08:00,2009-01-04 17:00,,2008-11-09 08:00,2008-11-25 17:00,2008-11-09 08:00,2008-11-25 17:00,2008-11-09 08:00,2008-11-25 17:00,,,,,PT_Normal,,,,,xe6GHbALt0W2d+sln+2LoQ,,,,N,0,0
3272,85171,829,11867,912,1,0,N,N,N,CP_Drtn,TT_Task,DT_FixedDUR2,RV_OK,TK_NotStart,7231U24200,Balcony handrails,2306,0,0,120,0,2192,2192,120,1184,0,1184,,,,2009-01-05 08:00,2009-01-21 17:00,,2009-01-05 08:00,2009-01-21 17:00,2009-01-05 08:00,2009-01-21 17:00,2009-01-05 08:00,2009-01-21 17:00,,,,,PT_Normal,,,,,JJKiKE/jeEWhIbwxQKf2Pg,,,,N,0,0
3273,85172,829,11659,912,1,0,N,N,N,CP_Drtn,TT_Task,DT_FixedDUR2,RV_OK,TK_NotStart,7231U30050,Wooden doors,2306,104,16,176,0,1520,1520,176,384,0,384,,,,2008-12-24 08:00,2009-01-18 17:00,,2008-12-09 08:00,2009-01-03 17:00,2008-12-09 08:00,2009-01-03 17:00,2008-12-09 08:00,2009-01-03 17:00,,,,,PT_Normal,,,,,C+20098cf06Gg84VD8/o0A,,,,N,0,0
3274,85173,829,11869,912,1,0,N,N,N,CP_Drtn,TT_Task,DT_FixedDUR2,RV_OK,TK_NotStart,7231U32100,Vanity counters,2306,16,0,120,0,2232,2232,120,192,0,192,,,,2009-01-05 08:00,2009-01-21 17:00,,2009-01-03 08:00,2009-01-19 17:00,2009-01-03 08:00,2009-01-19 17:00,2009-01-03 08:00,2009-01-19 17:00,,,,,PT_Normal,,,,,76uaaoRD9U6BHfo+LTnm0w,,,,N,0,0
3275,85174,829,11869,912,1,0,N,N,N,CP_Drtn,TT_Task,DT_FixedDUR2,RV_OK,TK_NotStart,7231U32150,Wardrobes,2306,200,200,120,0,6168,6168,120,288,0,288,,,,2009-01-05 08:00,2009-01-21 17:00,,2008-12-07 08:00,2008-12-23 17:00,2008-12-07 08:00,2008-12-23 17:00,2008-12-07 08:00,2008-12-23 17:00,,,,,PT_Normal,,,,,6AxJUFheUkGsSfKiDVw30g,,,,N,0,0
3276,85175,829,11870,912,1,0,N,N,N,CP_Drtn,TT_Task,DT_FixedDUR2,RV_OK,TK_NotStart,7231U34050,False ceiling works for apartments-dry area,2306,168,0,160,0,1525.12,1525.12,160,910.08,0,910.08,,,,2008-12-20 08:00,2009-01-11 17:00,,2008-11-25 08:00,2008-12-17 17:00,2008-11-25 08:00,2008-12-17 17:00,2008-11-25 08:00,2008-12-17 17:00,,,,,PT_Normal,,,,,06SUo/Co506jZQUebgmy5A,,,,N,0,0
3277,85176,829,11870,912,1,0,N,N,N,CP_Drtn,TT_Task,DT_FixedDUR2,RV_OK,TK_NotStart,7231U34070,False ceiling works for apartments-wet area,2306,64,0,160,0,690.88,690.88,160,353.92,0,353.92,,,,2008-12-04 08:00,2008-12-27 17:00,,2008-11-25 08:00,2008-12-17 17:00,2008-11-25 08:00,2008-12-17 17:00,2008-11-25 08:00,2008-12-17 17:00,,,,,PT_Normal,,,,,a8JdHeHxOEC0qMYmT3mtCA,,,,N,0,0
3278,85177,829,11662,912,1,0,N,N,N,CP_Drtn,TT_Task,DT_FixedDUR2,RV_OK,TK_NotStart,7231U36050,Stone finishin1 top,2306,96,96,64,0,344,344,64,160,0,160,,,,2009-01-13 08:00,2009-01-21 17:00,,2008-12-30 08:00,2009-01-07 17:00,2008-12-30 08:00,2009-01-07 17:00,2008-12-30 08:00,2009-01-07 17:00,,,,,PT_Normal,,,,,jr2gvDCmOEmlvZXfBVLqiQ,,,,N,0,0
3279,85178,829,11662,912,1,0,N,N,N,CP_Drtn,TT_Task,DT_FixedDUR2,RV_OK,TK_NotStart,7231U36100,Thresholds,2306,56,56,64,0,520,520,64,304,0,304,,,,2009-01-13 08:00,2009-01-21 17:00,,2009-01-05 08:00,2009-01-13 17:00,2009-01-05 08:00,2009-01-13 17:00,2009-01-05 08:00,2009-01-13 17:00,,,,,PT_Normal,,,,,fvXCtytlcU+74+pT8eAFlQ,,,,N,0,0
3280,85179,829,11872,912,1,0,N,N,N,CP_Drtn,TT_Task,DT_FixedDUR2,RV_OK,TK_NotStart,7231U44050,Sub-frames,2306,56,0,80,0,848,848,80,384,0,384,,,,2008-10-16 08:00,2008-10-27 17:00,,2008-10-08 08:00,2008-10-19 17:00,2008-10-08 08:00,2008-10-19 17:00,2008-10-08 08:00,2008-10-19 17:00,,,,,PT_Normal,,,,,m4gYSJxMCU2lGFBneIOBvw,,,,N,0,0
3281,85180,829,12716,912,1,100,N,N,N,CP_Drtn,TT_Task,DT_FixedDUR2,RV_OK,TK_Complete,7231U50100,MEP skeleton embedded provisions,2296,0,0,0,512,0,512,72,,,0,,2008-08-19 08:00,2008-08-28 17:00,2008-10-02 08:00,2008-10-01 17:00,,2008-10-02 08:00,2008-10-01 17:00,,,2008-08-19 08:00,2008-08-28 17:00,,,,,PT_Normal,,,,,BtWQl0LM4EuNPGoJfjExMw,,,,N,512,0
3282,85181,829,12718,912,1,0,N,N,N,CP_Drtn,TT_Task,DT_FixedDUR2,RV_OK,TK_NotStart,7231U52050,A/C duct works,2296,160,88,160,0,831,831,160,0,0,0,,,,2008-11-03 08:00,2008-11-25 17:00,,2008-10-11 08:00,2008-11-02 17:00,2008-10-11 08:00,2008-11-02 17:00,2008-10-11 08:00,2008-11-02 17:00,,,,,PT_Normal,,,,,r5UVj87+a0uZSGqv7FjjxQ,,,,N,0,0
3283,85182,829,12718,912,1,0,N,N,N,CP_Drtn,TT_Task,DT_FixedDUR2,RV_OK,TK_NotStart,7231U52100,Chilled water pipe works,2296,96,24,72,0,787,787,72,0,0,0,,,,2008-11-06 08:00,2008-11-16 17:00,,2008-10-23 08:00,2008-11-02 17:00,2008-10-23 08:00,2008-11-02 17:00,2008-10-23 08:00,2008-11-02 17:00,,,,,PT_Normal,,,,,zIj7pmYPEkSpEw+NH/Ntlg,,,,N,0,0
3284,85183,829,12719,912,1,0,N,N,N,CP_Drtn,TT_Task,DT_FixedDUR2,RV_OK,TK_NotStart,7231U52150,FCU's hanging,2296,152,80,64,0,935.2,935.2,64,0,0,0,,,,2008-11-13 08:00,2008-11-22 17:00,,2008-10-22 08:00,2008-10-30 17:00,2008-10-22 08:00,2008-10-30 17:00,2008-10-22 08:00,2008-10-30 17:00,,,,,PT_Normal,,,,,AsfwMcEYAUqkkj0UKZJ/xQ,,,,N,0,0
3285,85184,829,12719,912,1,0,N,N,N,CP_Drtn,TT_Task,DT_FixedDUR2,RV_OK,TK_NotStart,7231U52300,FCU's assembly & duct connections,2296,72,8,80,0,951.2,951.2,80,0,0,0,,,,2008-11-23 08:00,2008-12-03 17:00,,2008-11-12 08:00,2008-11-23 17:00,2008-11-12 08:00,2008-11-23 17:00,2008-11-12 08:00,2008-11-23 17:00,,,,,PT_Normal,,,,,rWuWdX9UfkaFywCw+Nw46Q,,,,N,0,0
3286,85185,829,12719,912,1,0,N,N,N,CP_Drtn,TT_Task,DT_FixedDUR2,RV_OK,TK_NotStart,7231U52350,Grills & diffusers,2296,176,168,64,0,856,856,64,0,0,0,,,,2009-01-13 08:00,2009-01-21 17:00,,2008-12-18 08:00,2008-12-27 17:00,2008-12-18 08:00,2008-12-27 17:00,2008-12-18 08:00,2008-12-27 17:00,,,,,PT_Normal,,,,,zt1wHUF7wE+e74QjdKUYWQ,,,,N,0,0
3287,85186,829,12718,912,1,0,N,N,N,CP_Drtn,TT_Task,DT_FixedDUR2,RV_OK,TK_NotStart,7231U52550,A/C duct risers,2296,72,0,64,0,1626,1626,64,0,0,0,,,,2008-11-08 08:00,2008-11-16 17:00,,2008-10-28 08:00,2008-11-05 17:00,2008-10-28 08:00,2008-11-05 17:00,2008-10-28 08:00,2008-11-05 17:00,,,,,PT_Normal,,,,,nHhvN8Ap4Eikx6uZjaKPZQ,,,,N,0,0
3288,85187,829,12721,912,1,0,N,N,N,CP_Drtn,TT_Task,DT_FixedDUR2,RV_OK,TK_NotStart,7231U54050,Chasing & Pex pipe works,2296,192,0,120,0,395,395,120,0,0,0,,,,2008-11-08 08:00,2008-11-24 17:00,,2008-10-11 08:00,2008-10-27 17:00,2008-10-11 08:00,2008-10-27 17:00,2008-10-11 08:00,2008-10-27 17:00,,,,,PT_Normal,,,,,3ZS9webjkkGP6r6dDWPyvw,,,,N,0,0
3289,85188,829,12722,912,1,0,N,N,N,CP_Drtn,TT_Task,DT_FixedDUR2,RV_OK,TK_NotStart,7231U54250,Bathtubs,2296,312,0,80,0,273.6,273.6,80,0,0,0,,,,2008-12-07 08:00,2008-12-17 17:00,,2008-10-22 08:00,2008-11-02 17:00,2008-10-22 08:00,2008-11-02 17:00,2008-10-22 08:00,2008-11-02 17:00,,,,,PT_Normal,,,,,bxxv0Xb84U2Mk02Ktd7sMw,,,,N,0,0
3290,85189,829,12722,912,1,0,N,N,N,CP_Drtn,TT_Task,DT_FixedDUR2,RV_OK,TK_NotStart,7231U54300,Water heater,2296,152,0,64,0,310.4,310.4,64,0,0,0,,,,2008-11-19 08:00,2008-11-27 17:00,,2008-10-28 08:00,2008-11-05 17:00,2008-10-28 08:00,2008-11-05 17:00,2008-10-28 08:00,2008-11-05 17:00,,,,,PT_Normal,,,,,c5LV8upP/U+titVe00rmYA,,,,N,0,0
3291,85190,829,12722,912,1,0,N,N,N,CP_Drtn,TT_Task,DT_FixedDUR2,RV_OK,TK_NotStart,7231U54350,Over head pipe assembly & vlave connections,2296,184,120,64,0,229,229,64,0,0,0,,,,2008-11-25 08:00,2008-12-03 17:00,,2008-10-29 08:00,2008-11-06 17:00,2008-10-29 08:00,2008-11-06 17:00,2008-10-29 08:00,2008-11-06 17:00,,,,,PT_Normal,,,,,BUsb5XU2t0m3OjBb4L1fng,,,,N,0,0
3292,85191,829,12723,912,1,0,N,N,N,CP_Drtn,TT_Task,DT_FixedDUR2,RV_OK,TK_NotStart,7231U54400,Sanitary fixures,2296,128,32,120,0,516,516,120,0,0,0,,,,2009-01-05 08:00,2009-01-21 17:00,,2008-12-17 08:00,2009-01-03 17:00,2008-12-17 08:00,2009-01-03 17:00,2008-12-17 08:00,2009-01-03 17:00,,,,,PT_Normal,,,,,b7BuWx+JTUS4CexLenf0Cw,,,,N,0,0
3293,85192,829,12723,912,1,0,N,N,N,CP_Drtn,TT_Task,DT_FixedDUR2,RV_OK,TK_NotStart,7231U54450,Mirrors,2296,16,16,80,0,146,146,80,0,0,0,,,,2009-01-11 08:00,2009-01-21 17:00,,2009-01-08 08:00,2009-01-19 17:00,2009-01-08 08:00,2009-01-19 17:00,2009-01-08 08:00,2009-01-19 17:00,,,,,PT_Normal,,,,,DJFTKV2hwkmjV9+2GTVzeg,,,,N,0,0
3294,85193,829,12722,912,1,0,N,N,N,CP_Drtn,TT_Task,DT_FixedDUR2,RV_OK,TK_NotStart,7231U54500,Concealed Flushing Cistern,2296,312,248,80,0,212,212,80,0,0,0,,,,2008-12-07 08:00,2008-12-17 17:00,,2008-10-22 08:00,2008-11-02 17:00,2008-10-22 08:00,2008-11-02 17:00,2008-10-22 08:00,2008-11-02 17:00,,,,,PT_Normal,,,,,OtNWDERGKU2BELNXGRjCuA,,,,N,0,0
3295,85194,829,12725,912,1,0,N,N,N,CP_Drtn,TT_Task,DT_FixedDUR2,RV_OK,TK_NotStart,7231U56050,Chasing and installation of drainage pipes,2296,144,0,120,0,285,285,120,0,0,0,,,,2008-11-01 08:00,2008-11-17 17:00,,2008-10-11 08:00,2008-10-27 17:00,2008-10-11 08:00,2008-10-27 17:00,2008-10-11 08:00,2008-10-27 17:00,,,,,PT_Normal,,,,,iOIWyBg6x0CI5+CjCtavlw,,,,N,0,0
3296,85195,829,12725,912,1,0,N,N,N,CP_Drtn,TT_Task,DT_FixedDUR2,RV_OK,TK_NotStart,7231U56100,Drainage riser pipes,2296,272,136,64,0,284,284,64,0,0,0,,,,2008-11-16 08:00,2008-11-24 17:00,,2008-10-07 08:00,2008-10-15 17:00,2008-10-07 08:00,2008-10-15 17:00,2008-10-07 08:00,2008-10-15 17:00,,,,,PT_Normal,,,,,np31twGo7kyF/tc/1RB0bA,,,,N,0,0
3297,85196,829,12726,912,1,0,N,N,N,CP_Drtn,TT_Task,DT_FixedDUR2,RV_OK,TK_NotStart,7231U56150,Over head drainage pipe works,2296,64,0,64,0,257.6,257.6,64,0,0,0,,,,2008-11-25 08:00,2008-12-03 17:00,,2008-11-16 08:00,2008-11-24 17:00,2008-11-16 08:00,2008-11-24 17:00,2008-11-16 08:00,2008-11-24 17:00,,,,,PT_Normal,,,,,CglLYUyl8UalgCVTNL4MnA,,,,N,0,0
3298,85197,829,12728,912,1,0,N,N,N,CP_Drtn,TT_Task,DT_FixedDUR2,RV_OK,TK_NotStart,7231U58050,Fire fighting pipe works,2296,208,144,72,0,292,292,72,0,0,0,,,,2008-11-16 08:00,2008-11-25 17:00,,2008-10-16 08:00,2008-10-26 17:00,2008-10-16 08:00,2008-10-26 17:00,2008-10-16 08:00,2008-10-26 17:00,,,,,PT_Normal,,,,,a6jSC1gc0UWYyaX3aoxVCQ,,,,N,0,0
3299,85198,829,12729,912,1,0,N,N,N,CP_Drtn,TT_Task,DT_FixedDUR2,RV_OK,TK_NotStart,7231U58250,Sprinkler heads,2296,176,176,64,0,394,394,64,0,0,0,,,,2009-01-13 08:00,2009-01-21 17:00,,2008-12-18 08:00,2008-12-27 17:00,2008-12-18 08:00,2008-12-27 17:00,2008-12-18 08:00,2008-12-27 17:00,,,,,PT_Normal,,,,,GnY/IiD+P0KfovSEN4LPsg,,,,N,0,0
3300,85199,829,12731,912,1,0,N,N,N,CP_Drtn,TT_Task,DT_FixedDUR2,RV_OK,TK_NotStart,7231U66050,Chasing and installation of conduits,2296,56,0,120,0,1528,1528,120,0,0,0,,,,2008-10-16 08:00,2008-11-02 17:00,,2008-10-08 08:00,2008-10-25 17:00,2008-10-08 08:00,2008-10-25 17:00,2008-10-08 08:00,2008-10-25 17:00,,,,,PT_Normal,,,,,j+518VaGV02iIP1C3nOQXQ,,,,N,0,0
3301,85200,829,12733,912,1,0,N,N,N,CP_Drtn,TT_Task,DT_FixedDUR2,RV_OK,TK_NotStart,7231U68050,Single core wiring,2296,224,160,72,0,1128,1128,72,0,0,0,,,,2008-11-12 08:00,2008-11-22 17:00,,2008-10-11 08:00,2008-10-20 17:00,2008-10-11 08:00,2008-10-20 17:00,2008-10-11 08:00,2008-10-20 17:00,,,,,PT_Normal,,,,,RJVRZuBTbEaw7ompEFs0ZA,,,,N,0,0
3302,85201,829,12734,912,1,0,N,N,N,CP_Drtn,TT_Task,DT_FixedDUR2,RV_OK,TK_NotStart,7231U68350,Light Fittings,2296,176,176,120,0,1035.2,1035.2,120,0,0,0,,,,2009-01-05 08:00,2009-01-21 17:00,,2008-12-10 08:00,2008-12-27 17:00,2008-12-10 08:00,2008-12-27 17:00,2008-12-10 08:00,2008-12-27 17:00,,,,,PT_Normal,,,,,8o08MV0RyEilFK4kHZMunw,,,,N,0,0
3303,85202,829,12734,912,1,0,N,N,N,CP_Drtn,TT_Task,DT_FixedDUR2,RV_OK,TK_NotStart,7231U68600,Switches & sockets,2296,168,168,72,0,494.4,494.4,72,0,0,0,,,,2009-01-12 08:00,2009-01-21 17:00,,2008-12-18 08:00,2008-12-28 17:00,2008-12-18 08:00,2008-12-28 17:00,2008-12-18 08:00,2008-12-28 17:00,,,,,PT_Normal,,,,,Tn/FcQnus067Elwtgaxm+w,,,,N,0,0
3304,85203,829,12736,912,1,0,N,N,N,CP_Drtn,TT_Task,DT_FixedDUR2,RV_OK,TK_NotStart,7231U74050,Fire alarm cables,2296,192,128,64,0,380.8,380.8,64,0,0,0,,,,2008-11-13 08:00,2008-11-22 17:00,,2008-10-16 08:00,2008-10-25 17:00,2008-10-16 08:00,2008-10-25 17:00,2008-10-16 08:00,2008-10-25 17:00,,,,,PT_Normal,,,,,kQ6EJLTc7kqpp/CCRpVFrw,,,,N,0,0
3305,85204,829,12737,912,1,0,N,N,N,CP_Drtn,TT_Task,DT_FixedDUR2,RV_OK,TK_NotStart,7231U74100,Fire alarm fittings,2296,176,176,64,0,116.8,116.8,64,0,0,0,,,,2009-01-13 08:00,2009-01-21 17:00,,2008-12-18 08:00,2008-12-27 17:00,2008-12-18 08:00,2008-12-27 17:00,2008-12-18 08:00,2008-12-27 17:00,,,,,PT_Normal,,,,,mr/KHf3KCEelotc3ZnWqZw,,,,N,0,0
3306,85205,829,12739,912,1,0,N,N,N,CP_Drtn,TT_Task,DT_FixedDUR2,RV_OK,TK_NotStart,7231U76050,Structured cabling,2296,0,0,64,0,345.6,345.6,64,0,0,0,,,,2008-11-19 08:00,2008-11-27 17:00,,2008-11-19 08:00,2008-11-27 17:00,2008-11-19 08:00,2008-11-27 17:00,2008-11-19 08:00,2008-11-27 17:00,,,,,PT_Normal,,,,,8pHR+iykTkeEEuE4Y7rI9A,,,,N,0,0
3307,85206,829,10663,912,1,0,N,N,N,CP_Drtn,TT_Task,DT_FixedDUR2,RV_OK,TK_NotStart,7232L00000,Pre-Snagging & Disnagging for duplexes,2296,0,0,120,0,420,420,120,0,0,0,,,,2009-02-15 08:00,2009-03-03 17:00,,2009-02-15 08:00,2009-03-03 17:00,2009-02-15 08:00,2009-03-03 17:00,2009-02-15 08:00,2009-03-03 17:00,,,,,PT_Normal,,,,,WfO6HMLCD06wobogIS5gEw,,,,N,0,0
3308,85207,829,10663,912,1,0,N,N,N,CP_Drtn,TT_Task,DT_FixedDUR2,RV_OK,TK_NotStart,7232L00002,Pre-Snagging & Disnagging for corrid & Srv rooms,2296,0,0,64,0,214,214,64,0,0,0,,,,2009-03-07 08:00,2009-03-15 17:00,,2009-03-07 08:00,2009-03-15 17:00,2009-03-07 08:00,2009-03-15 17:00,2009-03-07 08:00,2009-03-15 17:00,,,,,PT_Normal,,,,,W0Virqv/DkGOglH1Aip+zg,,,,N,0,0
3309,85208,829,11376,912,1,100,N,N,N,CP_Drtn,TT_Task,DT_FixedDUR2,RV_OK,TK_Complete,7232L12050,Columns & walls 2L to 2U - Part 1,2306,8,0,0,3506.92,0,3506.92,24,105352.08,105352.08,0,,2008-09-04 08:00,2008-09-07 17:00,2008-10-04 08:00,2008-10-02 17:00,,2008-10-02 08:00,2008-10-01 17:00,,,2008-09-04 08:00,2008-09-07 17:00,,,,,PT_Normal,,,,,LiNY6Xq8d0SJrIhnAATjRg,,,,N,3506.92,105352.08
3310,85209,829,11376,912,1,100,N,N,N,CP_Drtn,TT_Task,DT_FixedDUR2,RV_OK,TK_Complete,7232L12051,Columns & walls 2L to 2U - Part 2,2306,8,0,0,3506.92,0,3506.92,24,105352.08,105352.08,0,,2008-09-13 08:00,2008-09-15 17:00,2008-10-04 08:00,2008-10-02 17:00,,2008-10-02 08:00,2008-10-01 17:00,,,2008-09-13 08:00,2008-09-15 17:00,,,,,PT_Normal,,,,,pjuRuCgGpkmxdZiarSrchA,,,,N,3506.92,105352.08
3311,85210,829,11376,912,1,100,N,N,N,CP_Drtn,TT_Task,DT_FixedDUR2,RV_OK,TK_Complete,7232L12052,Columns & walls 2L to 2U - Middle Part,2306,8,0,0,7218.37,0,7218.37,24,217616.24,217616.24,0,,2008-09-10 08:00,2008-09-13 17:00,2008-10-04 08:00,2008-10-02 17:00,,2008-10-02 08:00,2008-10-01 17:00,,,2008-09-10 08:00,2008-09-13 17:00,,,,,PT_Normal,,,,,vI8s3lq2tUqe2gwpTXo7EA,,,,N,7218.37,217616.24
3312,85211,829,11376,912,1,100,N,N,N,CP_Drtn,TT_Task,DT_FixedDUR2,RV_OK,TK_Complete,7232L12200,Slab @ 2U level - Part 1,2306,8,0,0,3872.99,0,3872.99,56,141659.52,141659.52,0,,2008-09-13 08:00,2008-09-20 17:00,2008-10-04 08:00,2008-10-02 17:00,,2008-10-02 08:00,2008-10-01 17:00,,,2008-09-13 08:00,2008-09-20 17:00,,,,,PT_Normal,,,,,+4kMtHya5EWic503hzyQIA,,,,N,3872.99,141659.52
3313,85212,829,11376,912,1,100,N,N,N,CP_Drtn,TT_Task,DT_FixedDUR2,RV_OK,TK_Complete,7232L12201,Slab @ 2U level - Part 2,2306,8,0,0,3865.79,0,3865.79,56,141318.64,141318.64,0,,2008-09-21 08:00,2008-09-28 17:00,2008-10-04 08:00,2008-10-02 17:00,,2008-10-02 08:00,2008-10-01 17:00,,,2008-09-21 08:00,2008-09-28 17:00,,,,,PT_Normal,,,,,poZXkGEz4U65UxyRjdRPTw,,,,N,3865.79,141318.64
3314,85213,829,11376,912,1,100,N,N,N,CP_Drtn,TT_Task,DT_FixedDUR2,RV_OK,TK_Complete,7232L12202,Slab @ 2U level - Middle Part,2306,8,0,0,5579.54,0,5579.54,56,204883.76,204883.76,0,,2008-09-18 08:00,2008-09-25 17:00,2008-10-04 08:00,2008-10-02 17:00,,2008-10-02 08:00,2008-10-01 17:00,,,2008-09-18 08:00,2008-09-25 17:00,,,,,PT_Normal,,,,,HIyITv0WjUmVxr3xhqOU2Q,,,,N,5579.54,204883.76
3315,85214,829,11376,912,1,100,N,N,N,CP_Drtn,TT_Task,DT_FixedDUR2,RV_OK,TK_Complete,7232L12250,Staircases 2L to 2U,2306,288,0,0,991.88,0,991.88,24,18457.6,18457.6,0,,2008-09-28 08:00,2008-09-30 17:00,2008-11-13 08:00,2008-11-12 17:00,,2008-10-02 08:00,2008-10-01 17:00,,,2008-09-28 08:00,2008-09-30 17:00,,,,,PT_Normal,,,,,78nZgmUkmEyapG3zOATgAQ,,,,N,991.88,18457.6
3316,85215,829,11665,912,1,0,N,N,N,CP_Drtn,TT_Task,DT_FixedDUR2,RV_OK,TK_NotStart,7232L14050,Block works,2306,8,0,120,0,30085.5,30085.5,120,18440,0,18440,,,,2008-10-23 08:00,2008-11-09 17:00,,2008-10-22 08:00,2008-11-08 17:00,2008-10-22 08:00,2008-11-08 17:00,2008-10-22 08:00,2008-11-08 17:00,,,,,PT_Normal,,,,,0JkU2DVGI0GG95gQDyVvuw,,,,N,0,0
3317,85216,829,11875,912,1,0,N,N,N,CP_Drtn,TT_Task,DT_FixedDUR2,RV_OK,TK_NotStart,7232L16050,Plaster works,2306,24,0,120,0,24385.9,24385.9,120,19032,0,19032,,,,2008-11-10 08:00,2008-11-26 17:00,,2008-11-06 08:00,2008-11-23 17:00,2008-11-06 08:00,2008-11-23 17:00,2008-11-06 08:00,2008-11-23 17:00,,,,,PT_Normal,,,,,kxXpsGk5K0esrii8Q8TWrQ,,,,N,0,0
3318,85217,829,11875,912,1,0,N,N,N,CP_Drtn,TT_Task,DT_FixedDUR2,RV_OK,TK_NotStart,7232L16051,Plaste works behind tiles,2306,168,160,120,0,10136.2,10136.2,120,7856,0,7856,,,,2008-12-01 08:00,2008-12-17 17:00,,2008-11-06 08:00,2008-11-23 17:00,2008-11-06 08:00,2008-11-23 17:00,2008-11-06 08:00,2008-11-23 17:00,,,,,PT_Normal,,,,,KSQulWV1a0ecyBYcdsfB0w,,,,N,0,0
3319,85218,829,11458,912,1,0,N,N,N,CP_Drtn,TT_Task,DT_FixedDUR2,RV_OK,TK_NotStart,7232L18050,Rendering works,2306,48,24,120,0,5683,5683,120,5000,0,5000,,,,2008-11-06 08:00,2008-11-23 17:00,,2008-10-30 08:00,2008-11-16 17:00,2008-10-30 08:00,2008-11-16 17:00,2008-10-30 08:00,2008-11-16 17:00,,,,,PT_Normal,,,,,4iBIB4MneEOYVD8eXFxTeg,,,,N,0,0
3320,85219,829,11458,912,1,0,N,N,N,CP_Drtn,TT_Task,DT_FixedDUR2,RV_OK,TK_NotStart,7232L18100,Painting base coats,2306,24,0,120,0,26555.6,26555.6,120,24032,0,24032,,,,2008-11-18 08:00,2008-12-04 17:00,,2008-11-15 08:00,2008-12-01 17:00,2008-11-15 08:00,2008-12-01 17:00,2008-11-15 08:00,2008-12-01 17:00,,,,,PT_Normal,,,,,UTOCJwteHEOpp7qM04SW2w,,,,N,0,0
3321,85220,829,11458,912,1,0,N,N,N,CP_Drtn,TT_Task,DT_FixedDUR2,RV_OK,TK_NotStart,7232L18150,Painting 1st top coat for apartments,2306,120,0,72,0,17300.2,17300.2,72,16408,0,16408,,,,2009-01-27 08:00,2009-02-05 17:00,,2009-01-10 08:00,2009-01-19 17:00,2009-01-10 08:00,2009-01-19 17:00,2009-01-10 08:00,2009-01-19 17:00,,,,,PT_Normal,,,,,uaQMWO/UnkSd5l6adhJc0g,,,,N,0,0
3322,85221,829,11458,912,1,0,N,N,N,CP_Drtn,TT_Task,DT_FixedDUR2,RV_OK,TK_NotStart,7232L18153,Painting 1st top coat for corridors/lobbies,2306,176,0,48,0,14370,14370,48,13640,0,13640,,,,2009-02-17 08:00,2009-02-23 17:00,,2009-01-22 08:00,2009-01-28 17:00,2009-01-22 08:00,2009-01-28 17:00,2009-01-22 08:00,2009-01-28 17:00,,,,,PT_Normal,,,,,Z1Mfiv8XfkeEUylGsaa2zw,,,,N,0,0
3323,85222,829,11458,912,1,0,N,N,N,CP_Drtn,TT_Task,DT_FixedDUR2,RV_OK,TK_NotStart,7232L18155,Painting 1st top coat for service rooms,2306,152,0,48,0,6364.4,6364.4,48,6016,0,6016,,,,2009-02-12 08:00,2009-02-18 17:00,,2009-01-21 08:00,2009-01-27 17:00,2009-01-21 08:00,2009-01-27 17:00,2009-01-21 08:00,2009-01-27 17:00,,,,,PT_Normal,,,,,zfZioru2TkybJaJZib4vPg,,,,N,0,0
3324,85223,829,10663,912,1,0,N,N,N,CP_Drtn,TT_Task,DT_FixedDUR2,RV_OK,TK_NotStart,7232L18200,Painting final top coat,2306,56,56,32,0,25265.8,25265.8,32,24032,0,24032,,,,2009-03-23 08:00,2009-03-26 17:00,,2009-03-15 08:00,2009-03-18 17:00,2009-03-15 08:00,2009-03-18 17:00,2009-03-15 08:00,2009-03-18 17:00,,,,,PT_Normal,,,,,AJW9nTijn0Sn+XivFNoVZQ,,,,N,0,0
3325,85224,829,11877,912,1,0,N,N,N,CP_Drtn,TT_Task,DT_FixedDUR2,RV_OK,TK_NotStart,7232L20050,Floor tiles for apartments-dry area,2306,136,8,120,0,8846.4,8846.4,120,6464,0,6464,,,,2008-12-13 08:00,2008-12-29 17:00,,2008-11-23 08:00,2008-12-09 17:00,2008-11-23 08:00,2008-12-09 17:00,2008-11-23 08:00,2008-12-09 17:00,,,,,PT_Normal,,,,,c5EzBfHL/UCLSZ7yhs37Xw,,,,N,0,0
3326,85225,829,11877,912,1,0,N,N,N,CP_Drtn,TT_Task,DT_FixedDUR2,RV_OK,TK_NotStart,7232L20053,Floor tiles for corridors / lobbies,2306,96,0,48,0,4638,4638,48,3400,0,3400,,,,2009-01-24 08:00,2009-01-29 17:00,,2009-01-10 08:00,2009-01-15 17:00,2009-01-10 08:00,2009-01-15 17:00,2009-01-10 08:00,2009-01-15 17:00,,,,,PT_Normal,,,,,zgg6L0zdYU6AxZY608cOEg,,,,N,0,0
3327,85226,829,11877,912,1,0,N,N,N,CP_Drtn,TT_Task,DT_FixedDUR2,RV_OK,TK_NotStart,7232L20070,Floor tiles for apartments-wet area,2306,8,0,120,0,4062,4062,120,2920,0,2920,,,,2008-12-30 08:00,2009-01-15 17:00,,2008-12-29 08:00,2009-01-14 17:00,2008-12-29 08:00,2009-01-14 17:00,2008-12-29 08:00,2009-01-14 17:00,,,,,PT_Normal,,,,,NFeSUsJyLUuhkxZeyGMR5w,,,,N,0,0
3328,85227,829,11877,912,1,0,N,N,N,CP_Drtn,TT_Task,DT_FixedDUR2,RV_OK,TK_NotStart,7232L20110,Wall tiles for apartments-wet area,2306,32,0,120,0,9159,9159,120,6026,0,6026,,,,2009-01-05 08:00,2009-01-21 17:00,,2008-12-31 08:00,2009-01-17 17:00,2008-12-31 08:00,2009-01-17 17:00,2008-12-31 08:00,2009-01-17 17:00,,,,,PT_Normal,,,,,5RqC7hMqPEyY3ni7rGmUrA,,,,N,0,0
3329,85228,829,11878,912,1,0,N,N,N,CP_Drtn,TT_Task,DT_FixedDUR2,RV_OK,TK_NotStart,7232L22150,W/P for for apartments,2306,232,0,72,0,4832.4,4832.4,72,4328,0,4328,,,,2008-12-13 08:00,2008-12-22 17:00,,2008-11-09 08:00,2008-11-18 17:00,2008-11-09 08:00,2008-11-18 17:00,2008-11-09 08:00,2008-11-18 17:00,,,,,PT_Normal,,,,,fEdkMGSzt06U7BBa1RB+pA,,,,N,0,0
3330,85229,829,11670,912,1,0,N,N,N,CP_Drtn,TT_Task,DT_FixedDUR2,RV_OK,TK_NotStart,7232L24050,Aluminium doors & windows,2306,232,64,120,0,1976,1976,120,464,0,464,,,,2009-01-05 08:00,2009-01-21 17:00,,2008-12-02 08:00,2008-12-18 17:00,2008-12-02 08:00,2008-12-18 17:00,2008-12-02 08:00,2008-12-18 17:00,,,,,PT_Normal,,,,,GkIUuBfM0Uy979QfbuvXTA,,,,N,0,0
3331,85230,829,11670,912,1,0,N,N,N,CP_Drtn,TT_Task,DT_FixedDUR2,RV_OK,TK_NotStart,7232L24200,Balcony handrails,2306,48,0,120,0,2710,2710,120,1480,0,1480,,,,2009-01-22 08:00,2009-02-08 17:00,,2009-01-15 08:00,2009-02-01 17:00,2009-01-15 08:00,2009-02-01 17:00,2009-01-15 08:00,2009-02-01 17:00,,,,,PT_Normal,,,,,/EQ52HAZiUebM+lVrtbNfw,,,,N,0,0
3332,85231,829,11670,912,1,0,N,N,N,CP_Drtn,TT_Task,DT_FixedDUR2,RV_OK,TK_NotStart,7232L24203,Lobby handrails,2306,256,176,64,0,946,946,64,504,0,504,,,,2009-02-23 08:00,2009-03-03 17:00,,2009-01-17 08:00,2009-01-25 17:00,2009-01-17 08:00,2009-01-25 17:00,2009-01-17 08:00,2009-01-25 17:00,,,,,PT_Normal,,,,,RkyBj3mJpkmKE3MNFWIrFw,,,,N,0,0
3333,85232,829,11839,912,1,0,N,N,N,CP_Drtn,TT_Task,DT_FixedDUR2,RV_OK,TK_NotStart,7232L26050,Steel doors,2306,152,0,48,0,368,368,48,64,0,64,,,,2009-02-05 08:00,2009-02-11 17:00,,2009-01-14 08:00,2009-01-20 17:00,2009-01-14 08:00,2009-01-20 17:00,2009-01-14 08:00,2009-01-20 17:00,,,,,PT_Normal,,,,,2EU+eVB0rEOiLRUh1IaQ/g,,,,N,0,0
3334,85233,829,11772,912,1,0,N,N,N,CP_Drtn,TT_Task,DT_FixedDUR2,RV_OK,TK_NotStart,7232L30050,Wooden doors,2306,88,32,176,0,2192,2192,176,576,0,576,,,,2009-01-11 08:00,2009-02-04 17:00,,2008-12-29 08:00,2009-01-22 17:00,2008-12-29 08:00,2009-01-22 17:00,2008-12-29 08:00,2009-01-22 17:00,,,,,PT_Normal,,,,,j1Vzxe8G/U+V70zSP7cuOw,,,,N,0,0
3335,85234,829,11673,912,1,0,N,N,N,CP_Drtn,TT_Task,DT_FixedDUR2,RV_OK,TK_NotStart,7232L32050,Kitchen cabinets,2306,32,32,128,0,3104,3104,128,96,0,96,,,,2009-01-21 08:00,2009-02-08 17:00,,2009-01-17 08:00,2009-02-03 17:00,2009-01-17 08:00,2009-02-03 17:00,2009-01-17 08:00,2009-02-03 17:00,,,,,PT_Normal,,,,,vsxfPCzPUUaqsyb9E/degw,,,,N,0,0
3336,85235,829,11673,912,1,0,N,N,N,CP_Drtn,TT_Task,DT_FixedDUR2,RV_OK,TK_NotStart,7232L32100,Vanity counters,2306,8,0,120,0,1880,1880,120,160,0,160,,,,2009-01-17 08:00,2009-02-02 17:00,,2009-01-15 08:00,2009-02-01 17:00,2009-01-15 08:00,2009-02-01 17:00,2009-01-15 08:00,2009-02-01 17:00,,,,,PT_Normal,,,,,+dp05QbqqEuFWLujt4uUnA,,,,N,0,0
3337,85236,829,11673,912,1,0,N,N,N,CP_Drtn,TT_Task,DT_FixedDUR2,RV_OK,TK_NotStart,7232L32150,Wardrobes,2306,168,168,120,0,4152,4152,120,192,0,192,,,,2009-01-22 08:00,2009-02-08 17:00,,2008-12-29 08:00,2009-01-14 17:00,2008-12-29 08:00,2009-01-14 17:00,2008-12-29 08:00,2009-01-14 17:00,,,,,PT_Normal,,,,,Rfm3Sts6HUWIvj22jc5/wQ,,,,N,0,0
3338,85237,829,11883,912,1,0,N,N,N,CP_Drtn,TT_Task,DT_FixedDUR2,RV_OK,TK_NotStart,7232L34050,False ceiling works for apartments-dry area,2306,112,0,160,0,1506.16,1506.16,160,897.44,0,897.44,,,,2009-01-03 08:00,2009-01-25 17:00,,2008-12-17 08:00,2009-01-08 17:00,2008-12-17 08:00,2009-01-08 17:00,2008-12-17 08:00,2009-01-08 17:00,,,,,PT_Normal,,,,,BCTra+1/xUu/g/TVDSE1AA,,,,N,0,0
3339,85238,829,11883,912,1,0,N,N,N,CP_Drtn,TT_Task,DT_FixedDUR2,RV_OK,TK_NotStart,7232L34053,False ceiling works for corridors/lobbies,2306,96,0,72,0,9876,9876,72,6536,0,6536,,,,2009-01-15 08:00,2009-01-25 17:00,,2009-01-01 08:00,2009-01-11 17:00,2009-01-01 08:00,2009-01-11 17:00,2009-01-01 08:00,2009-01-11 17:00,,,,,PT_Normal,,,,,RFvlKouKYUyU9nPMcLtoQQ,,,,N,0,0
3340,85239,829,11883,912,1,0,N,N,N,CP_Drtn,TT_Task,DT_FixedDUR2,RV_OK,TK_NotStart,7232L34070,False ceiling works for apartments-wet area,2306,8,0,160,0,709.84,709.84,160,366.56,0,366.56,,,,2008-12-18 08:00,2009-01-10 17:00,,2008-12-17 08:00,2009-01-08 17:00,2008-12-17 08:00,2009-01-08 17:00,2008-12-17 08:00,2009-01-08 17:00,,,,,PT_Normal,,,,,G6PW88m0wkKWlBd6JNEkyA,,,,N,0,0
3341,85240,829,11884,912,1,0,N,N,N,CP_Drtn,TT_Task,DT_FixedDUR2,RV_OK,TK_NotStart,7232L36050,Stone finishing top,2306,72,0,64,0,484,484,64,240,0,240,,,,2009-01-27 08:00,2009-02-04 17:00,,2009-01-17 08:00,2009-01-25 17:00,2009-01-17 08:00,2009-01-25 17:00,2009-01-17 08:00,2009-01-25 17:00,,,,,PT_Normal,,,,,R6LIOoPGDE6K3OZACI4Ndg,,,,N,0,0
3342,85241,829,11884,912,1,0,N,N,N,CP_Drtn,TT_Task,DT_FixedDUR2,RV_OK,TK_NotStart,7232L36100,Thresholds,2306,48,0,120,0,924,924,120,536,0,536,,,,2009-01-22 08:00,2009-02-08 17:00,,2009-01-15 08:00,2009-02-01 17:00,2009-01-15 08:00,2009-02-01 17:00,2009-01-15 08:00,2009-02-01 17:00,,,,,PT_Normal,,,,,sxkfRXQUdEanBNgacXCexQ,,,,N,0,0
3343,85242,829,11667,912,1,0,N,N,N,CP_Drtn,TT_Task,DT_FixedDUR2,RV_OK,TK_NotStart,7232L38100,Epoxy coating system,2306,152,72,48,0,816,816,48,640,0,640,,,,2009-02-25 08:00,2009-03-03 17:00,,2009-02-03 08:00,2009-02-09 17:00,2009-02-03 08:00,2009-02-09 17:00,2009-02-03 08:00,2009-02-09 17:00,,,,,PT_Normal,,,,,ILZSOv68J0q/qmmWlMf1hA,,,,N,0,0
3344,85243,829,11886,912,1,0,N,N,N,CP_Drtn,TT_Task,DT_FixedDUR2,RV_OK,TK_NotStart,7232L40050,Duplex apartment stairs,2306,128,0,120,0,3816,3816,120,96,0,96,,,,2008-12-30 08:00,2009-01-15 17:00,,2008-12-11 08:00,2008-12-28 17:00,2008-12-11 08:00,2008-12-28 17:00,2008-12-11 08:00,2008-12-28 17:00,,,,,PT_Normal,,,,,c4QQArNy30mU+ieQGPvb9A,,,,N,0,0
3345,85244,829,11886,912,1,0,N,N,N,CP_Drtn,TT_Task,DT_FixedDUR2,RV_OK,TK_NotStart,7232L40100,Wooden steps for Duplex stairs,2306,128,0,120,0,936,936,120,96,0,96,,,,2009-01-11 08:00,2009-01-27 17:00,,2008-12-23 08:00,2009-01-08 17:00,2008-12-23 08:00,2009-01-08 17:00,2008-12-23 08:00,2009-01-08 17:00,,,,,PT_Normal,,,,,nt+6jDd19E+ZYDa6RuJVTA,,,,N,0,0
3346,85245,829,11886,912,1,0,N,N,N,CP_Drtn,TT_Task,DT_FixedDUR2,RV_OK,TK_NotStart,7232L40150,Duplex stair railings,2306,128,128,120,0,5120,5120,120,2000,0,2000,,,,2009-01-22 08:00,2009-02-08 17:00,,2009-01-04 08:00,2009-01-20 17:00,2009-01-04 08:00,2009-01-20 17:00,2009-01-04 08:00,2009-01-20 17:00,,,,,PT_Normal,,,,,/PEcTCiFpEOtHYnscAw/yQ,,,,N,0,0
3347,85246,829,11887,912,1,0,N,N,N,CP_Drtn,TT_Task,DT_FixedDUR2,RV_OK,TK_NotStart,7232L42050,Signage works,2306,184,104,48,0,153.8,153.8,48,96,0,96,,,,2009-02-25 08:00,2009-03-03 17:00,,2009-01-29 08:00,2009-02-04 17:00,2009-01-29 08:00,2009-02-04 17:00,2009-01-29 08:00,2009-02-04 17:00,,,,,PT_Normal,,,,,ksMQZrgOREuknZjLYYi7rA,,,,N,0,0
3348,85247,829,11888,912,1,0,N,N,N,CP_Drtn,TT_Task,DT_FixedDUR2,RV_OK,TK_NotStart,7232L44050,Sub-frames,2306,24,0,120,0,1272,1272,120,576,0,576,,,,2008-11-04 08:00,2008-11-20 17:00,,2008-11-01 08:00,2008-11-17 17:00,2008-11-01 08:00,2008-11-17 17:00,2008-11-01 08:00,2008-11-17 17:00,,,,,PT_Normal,,,,,HWmCaekaJESb2KLIrvawYA,,,,N,0,0
3349,85248,829,12742,912,1,100,N,N,N,CP_Drtn,TT_Task,DT_FixedDUR2,RV_OK,TK_Complete,7232L50100,MEP skeleton embedded provisions,2296,8,0,0,512,0,512,72,,,0,,2008-09-04 08:00,2008-09-14 17:00,2008-10-04 08:00,2008-10-02 17:00,,2008-10-02 08:00,2008-10-01 17:00,,,2008-09-04 08:00,2008-09-14 17:00,,,,,PT_Normal,,,,,yULQjSXmtE+uCr9fU36C+w,,,,N,512,0
3350,85249,829,12744,912,1,0,N,N,N,CP_Drtn,TT_Task,DT_FixedDUR2,RV_OK,TK_NotStart,7232L52050,A/C duct works,2296,120,112,160,0,831,831,160,0,0,0,,,,2008-11-17 08:00,2008-12-09 17:00,,2008-10-30 08:00,2008-11-22 17:00,2008-10-30 08:00,2008-11-22 17:00,2008-10-30 08:00,2008-11-22 17:00,,,,,PT_Normal,,,,,ZUfKdBCvVUuUQPAsRjcdyw,,,,N,0,0
3351,85250,829,12744,912,1,0,N,N,N,CP_Drtn,TT_Task,DT_FixedDUR2,RV_OK,TK_NotStart,7232L52100,Chilled water pipe works,2296,72,64,72,0,787,787,72,0,0,0,,,,2008-11-20 08:00,2008-11-30 17:00,,2008-11-10 08:00,2008-11-19 17:00,2008-11-10 08:00,2008-11-19 17:00,2008-11-10 08:00,2008-11-19 17:00,,,,,PT_Normal,,,,,HaHJJIBV0kK3UySz01tbSA,,,,N,0,0
3352,85251,829,12745,912,1,0,N,N,N,CP_Drtn,TT_Task,DT_FixedDUR2,RV_OK,TK_NotStart,7232L52150,FCU's hanging,2296,128,120,64,0,935.2,935.2,64,0,0,0,,,,2008-11-27 08:00,2008-12-06 17:00,,2008-11-09 08:00,2008-11-17 17:00,2008-11-09 08:00,2008-11-17 17:00,2008-11-09 08:00,2008-11-17 17:00,,,,,PT_Normal,,,,,OnQoEAQyOEut2+rV+PX39w,,,,N,0,0
3353,85252,829,12745,912,1,0,N,N,N,CP_Drtn,TT_Task,DT_FixedDUR2,RV_OK,TK_NotStart,7232L52300,FCU's assembly & duct connections,2296,8,0,72,0,943.2,943.2,72,0,0,0,,,,2008-12-08 08:00,2008-12-17 17:00,,2008-12-07 08:00,2008-12-16 17:00,2008-12-07 08:00,2008-12-16 17:00,2008-12-07 08:00,2008-12-16 17:00,,,,,PT_Normal,,,,,/j0nE7+DZUagGPGLZIflYw,,,,N,0,0
3354,85253,829,12745,912,1,0,N,N,N,CP_Drtn,TT_Task,DT_FixedDUR2,RV_OK,TK_NotStart,7232L52350,Grills & diffusers,2296,248,0,80,0,872,872,80,0,0,0,,,,2009-02-15 08:00,2009-02-25 17:00,,2009-01-10 08:00,2009-01-20 17:00,2009-01-10 08:00,2009-01-20 17:00,2009-01-10 08:00,2009-01-20 17:00,,,,,PT_Normal,,,,,kMZ9xtN8mkiv681f09WOmQ,,,,N,0,0
3355,85254,829,12744,912,1,0,N,N,N,CP_Drtn,TT_Task,DT_FixedDUR2,RV_OK,TK_NotStart,7232L52550,A/C duct risers,2296,8,0,64,0,1626,1626,64,0,0,0,,,,2008-11-22 08:00,2008-11-30 17:00,,2008-11-20 08:00,2008-11-29 17:00,2008-11-20 08:00,2008-11-29 17:00,2008-11-20 08:00,2008-11-29 17:00,,,,,PT_Normal,,,,,pSzqRrDWjkq37MDaiKdIAg,,,,N,0,0
3356,85255,829,12747,912,1,0,N,N,N,CP_Drtn,TT_Task,DT_FixedDUR2,RV_OK,TK_NotStart,7232L54050,Chasing & Pex pipe works,2296,144,8,120,0,395,395,120,0,0,0,,,,2008-11-20 08:00,2008-12-07 17:00,,2008-10-30 08:00,2008-11-16 17:00,2008-10-30 08:00,2008-11-16 17:00,2008-10-30 08:00,2008-11-16 17:00,,,,,PT_Normal,,,,,pja11mqfZU29rcAIukNgCg,,,,N,0,0
3357,85256,829,12747,912,1,0,N,N,N,CP_Drtn,TT_Task,DT_FixedDUR2,RV_OK,TK_NotStart,7232L54100,Over head distribution water pipe network,2296,80,0,64,0,8314,8314,64,0,0,0,,,,2008-11-26 08:00,2008-12-04 17:00,,2008-11-15 08:00,2008-11-23 17:00,2008-11-15 08:00,2008-11-23 17:00,2008-11-15 08:00,2008-11-23 17:00,,,,,PT_Normal,,,,,vxf8i5SKzUWglFZS0LhJoA,,,,N,0,0
3358,85257,829,12749,912,1,0,N,N,N,CP_Drtn,TT_Task,DT_FixedDUR2,RV_OK,TK_NotStart,7232L54150,Water meter cabinet pipe works,2296,272,152,120,0,340,340,120,0,0,0,,,,2009-01-22 08:00,2009-02-08 17:00,,2008-12-14 08:00,2008-12-30 17:00,2008-12-14 08:00,2008-12-30 17:00,2008-12-14 08:00,2008-12-30 17:00,,,,,PT_Normal,,,,,I1/Vo+JTMEqs5Q7QGQzLSA,,,,N,0,0
3359,85258,829,12748,912,1,0,N,N,N,CP_Drtn,TT_Task,DT_FixedDUR2,RV_OK,TK_NotStart,7232L54250,Bathtubs,2296,232,0,80,0,273.6,273.6,80,0,0,0,,,,2008-12-18 08:00,2008-12-29 17:00,,2008-11-15 08:00,2008-11-25 17:00,2008-11-15 08:00,2008-11-25 17:00,2008-11-15 08:00,2008-11-25 17:00,,,,,PT_Normal,,,,,6EZzg8mACESLWRU7eIGOkw,,,,N,0,0
3360,85259,829,12748,912,1,0,N,N,N,CP_Drtn,TT_Task,DT_FixedDUR2,RV_OK,TK_NotStart,7232L54300,Water heater,2296,112,64,64,0,310.4,310.4,64,0,0,0,,,,2008-12-03 08:00,2008-12-11 17:00,,2008-11-17 08:00,2008-11-25 17:00,2008-11-17 08:00,2008-11-25 17:00,2008-11-17 08:00,2008-11-25 17:00,,,,,PT_Normal,,,,,mJ1dl1pwVka1sUsGxfL6fg,,,,N,0,0
3361,85260,829,12748,912,1,0,N,N,N,CP_Drtn,TT_Task,DT_FixedDUR2,RV_OK,TK_NotStart,7232L54350,Over head pipe assembly & vlave connections,2296,80,72,72,0,237,237,72,0,0,0,,,,2008-12-08 08:00,2008-12-17 17:00,,2008-11-26 08:00,2008-12-06 17:00,2008-11-26 08:00,2008-12-06 17:00,2008-11-26 08:00,2008-12-06 17:00,,,,,PT_Normal,,,,,9ggtcBaQwk+WTQSbWTHEug,,,,N,0,0
3362,85261,829,12749,912,1,0,N,N,N,CP_Drtn,TT_Task,DT_FixedDUR2,RV_OK,TK_NotStart,7232L54400,Sanitary fixures,2296,72,0,120,0,516,516,120,0,0,0,,,,2009-01-19 08:00,2009-02-04 17:00,,2009-01-08 08:00,2009-01-25 17:00,2009-01-08 08:00,2009-01-25 17:00,2009-01-08 08:00,2009-01-25 17:00,,,,,PT_Normal,,,,,wmuQ540jmU+r9aqnDs45rA,,,,N,0,0
3363,85262,829,12749,912,1,0,N,N,N,CP_Drtn,TT_Task,DT_FixedDUR2,RV_OK,TK_NotStart,7232L54450,Mirrors,2296,8,0,120,0,186,186,120,0,0,0,,,,2009-01-22 08:00,2009-02-08 17:00,,2009-01-21 08:00,2009-02-07 17:00,2009-01-21 08:00,2009-02-07 17:00,2009-01-21 08:00,2009-02-07 17:00,,,,,PT_Normal,,,,,YxToN+LyYECM/73VA+C3jQ,,,,N,0,0
3364,85263,829,12748,912,1,0,N,N,N,CP_Drtn,TT_Task,DT_FixedDUR2,RV_OK,TK_NotStart,7232L54500,Concealed Flushing Cistern,2296,232,224,80,0,212,212,80,0,0,0,,,,2008-12-18 08:00,2008-12-29 17:00,,2008-11-15 08:00,2008-11-25 17:00,2008-11-15 08:00,2008-11-25 17:00,2008-11-15 08:00,2008-11-25 17:00,,,,,PT_Normal,,,,,afhdm51gQUi441bvz46TAA,,,,N,0,0
3365,85264,829,12751,912,1,0,N,N,N,CP_Drtn,TT_Task,DT_FixedDUR2,RV_OK,TK_NotStart,7232L56050,Chasing and installation of drainage pipes,2296,64,0,120,0,285,285,120,0,0,0,,,,2008-11-09 08:00,2008-11-25 17:00,,2008-10-30 08:00,2008-11-16 17:00,2008-10-30 08:00,2008-11-16 17:00,2008-10-30 08:00,2008-11-16 17:00,,,,,PT_Normal,,,,,myvrhKYYGEqrTogwkNe3MA,,,,N,0,0
3366,85265,829,12751,912,1,0,N,N,N,CP_Drtn,TT_Task,DT_FixedDUR2,RV_OK,TK_NotStart,7232L56100,Drainage riser pipes,2296,176,72,64,0,284,284,64,0,0,0,,,,2008-11-25 08:00,2008-12-03 17:00,,2008-10-30 08:00,2008-11-08 17:00,2008-10-30 08:00,2008-11-08 17:00,2008-10-30 08:00,2008-11-08 17:00,,,,,PT_Normal,,,,,wSM7F42hTU+RGEDTyPVkww,,,,N,0,0
3367,85266,829,12752,912,1,0,N,N,N,CP_Drtn,TT_Task,DT_FixedDUR2,RV_OK,TK_NotStart,7232L56150,Over head drainage pipe works,2296,136,128,64,0,257.6,257.6,64,0,0,0,,,,2008-12-09 08:00,2008-12-17 17:00,,2008-11-19 08:00,2008-11-27 17:00,2008-11-19 08:00,2008-11-27 17:00,2008-11-19 08:00,2008-11-27 17:00,,,,,PT_Normal,,,,,wEWEUTTTMkWdiR66ny6myA,,,,N,0,0
3368,85267,829,12754,912,1,0,N,N,N,CP_Drtn,TT_Task,DT_FixedDUR2,RV_OK,TK_NotStart,7232L58050,Fire fighting pipe works,2296,144,136,72,0,292,292,72,0,0,0,,,,2008-11-30 08:00,2008-12-09 17:00,,2008-11-09 08:00,2008-11-18 17:00,2008-11-09 08:00,2008-11-18 17:00,2008-11-09 08:00,2008-11-18 17:00,,,,,PT_Normal,,,,,rD0lNFOwQU+v5saybMO3+A,,,,N,0,0
3369,85268,829,12755,912,1,0,N,N,N,CP_Drtn,TT_Task,DT_FixedDUR2,RV_OK,TK_NotStart,7232L58200,Fire cabinet complete,2296,176,0,64,0,339,339,64,0,0,0,,,,2009-02-23 08:00,2009-03-03 17:00,,2009-01-28 08:00,2009-02-05 17:00,2009-01-28 08:00,2009-02-05 17:00,2009-01-28 08:00,2009-02-05 17:00,,,,,PT_Normal,,,,,RhFFucbGFUGTLkl+godsvQ,,,,N,0,0
3370,85269,829,12755,912,1,0,N,N,N,CP_Drtn,TT_Task,DT_FixedDUR2,RV_OK,TK_NotStart,7232L58250,Sprinkler heads,2296,208,0,120,0,450,450,120,0,0,0,,,,2009-02-09 08:00,2009-02-25 17:00,,2009-01-10 08:00,2009-01-26 17:00,2009-01-10 08:00,2009-01-26 17:00,2009-01-10 08:00,2009-01-26 17:00,,,,,PT_Normal,,,,,SwyntdkRAEucA7ubKLrrbw,,,,N,0,0
3371,85270,829,12757,912,1,0,N,N,N,CP_Drtn,TT_Task,DT_FixedDUR2,RV_OK,TK_NotStart,7232L60050,LPG piping,2296,312,0,72,0,292,292,72,0,0,0,,,,2009-01-11 08:00,2009-01-20 17:00,,2008-11-26 08:00,2008-12-06 17:00,2008-11-26 08:00,2008-12-06 17:00,2008-11-26 08:00,2008-12-06 17:00,,,,,PT_Normal,,,,,UM5XXD4KiE2ujjblHlfvcQ,,,,N,0,0
3372,85271,829,12758,912,1,0,N,N,N,CP_Drtn,TT_Task,DT_FixedDUR2,RV_OK,TK_NotStart,7232L60100,Gas meter & leak detector,2296,344,0,72,0,248,248,72,0,0,0,,,,2009-01-26 08:00,2009-02-04 17:00,,2008-12-07 08:00,2008-12-16 17:00,2008-12-07 08:00,2008-12-16 17:00,2008-12-07 08:00,2008-12-16 17:00,,,,,PT_Normal,,,,,Ga00pi4AyEWDM3HJZ/lb5A,,,,N,0,0
3373,85272,829,12760,912,1,0,N,N,N,CP_Drtn,TT_Task,DT_FixedDUR2,RV_OK,TK_NotStart,7232L62050,BMS cabling,2296,64,56,48,0,470.4,470.4,48,0,0,0,,,,2008-12-11 08:00,2008-12-17 17:00,,2008-12-02 08:00,2008-12-08 17:00,2008-12-02 08:00,2008-12-08 17:00,2008-12-02 08:00,2008-12-08 17:00,,,,,PT_Normal,,,,,V22nfi7f60yphZTw6ap7gA,,,,N,0,0
3374,85273,829,12761,912,1,0,N,N,N,CP_Drtn,TT_Task,DT_FixedDUR2,RV_OK,TK_NotStart,7232L62100,DGC & cable termination to equipments,2296,152,0,48,0,329.6,329.6,48,0,0,0,,,,2009-02-19 08:00,2009-02-25 17:00,,2009-01-28 08:00,2009-02-03 17:00,2009-01-28 08:00,2009-02-03 17:00,2009-01-28 08:00,2009-02-03 17:00,,,,,PT_Normal,,,,,Nsz+nlwGH0G75TpIrCE7rw,,,,N,0,0
3375,85274,829,12763,912,1,0,N,N,N,CP_Drtn,TT_Task,DT_FixedDUR2,RV_OK,TK_NotStart,7232L66050,Chasing and installation of conduits,2296,24,0,120,0,1809.6,1809.6,120,0,0,0,,,,2008-11-04 08:00,2008-11-20 17:00,,2008-11-01 08:00,2008-11-17 17:00,2008-11-01 08:00,2008-11-17 17:00,2008-11-01 08:00,2008-11-17 17:00,,,,,PT_Normal,,,,,oalX5QM7PEmcNy5bditaDQ,,,,N,0,0
3376,85275,829,12763,912,1,0,N,N,N,CP_Drtn,TT_Task,DT_FixedDUR2,RV_OK,TK_NotStart,7232L66100,Cable trays & trunking,2296,24,0,64,0,1472,1472,64,0,0,0,,,,2008-11-30 08:00,2008-12-08 17:00,,2008-11-26 08:00,2008-12-04 17:00,2008-11-26 08:00,2008-12-04 17:00,2008-11-26 08:00,2008-12-04 17:00,,,,,PT_Normal,,,,,sIOadW7JGEaeRR5lQHpPeg,,,,N,0,0
3377,85276,829,12765,912,1,0,N,N,N,CP_Drtn,TT_Task,DT_FixedDUR2,RV_OK,TK_NotStart,7232L68050,Single core wiring,2296,160,152,72,0,1128,1128,72,0,0,0,,,,2008-11-26 08:00,2008-12-06 17:00,,2008-11-03 08:00,2008-11-12 17:00,2008-11-03 08:00,2008-11-12 17:00,2008-11-03 08:00,2008-11-12 17:00,,,,,PT_Normal,,,,,U3D6UsU/fUm8tl2y/p8sug,,,,N,0,0
3378,85277,829,12766,912,1,0,N,N,N,CP_Drtn,TT_Task,DT_FixedDUR2,RV_OK,TK_NotStart,7232L68100,DB enclosure,2296,72,48,64,0,416,416,64,0,0,0,,,,2008-11-19 08:00,2008-11-27 17:00,,2008-11-09 08:00,2008-11-17 17:00,2008-11-09 08:00,2008-11-17 17:00,2008-11-09 08:00,2008-11-17 17:00,,,,,PT_Normal,,,,,eRZKtC3MeUS7kOTr6AckoQ,,,,N,0,0
3379,85278,829,12766,912,1,0,N,N,N,CP_Drtn,TT_Task,DT_FixedDUR2,RV_OK,TK_NotStart,7232L68150,LV feeder cables,2296,96,72,72,0,2606.4,2606.4,72,0,0,0,,,,2008-12-20 08:00,2008-12-29 17:00,,2008-12-06 08:00,2008-12-15 17:00,2008-12-06 08:00,2008-12-15 17:00,2008-12-06 08:00,2008-12-15 17:00,,,,,PT_Normal,,,,,ACwFpFVY9UGvn4KS0i2hcQ,,,,N,0,0
3380,85279,829,12767,912,1,0,N,N,N,CP_Drtn,TT_Task,DT_FixedDUR2,RV_OK,TK_NotStart,7232L68250,DB-breakers assembly,2296,136,120,72,0,564.8,564.8,72,0,0,0,,,,2009-01-29 08:00,2009-02-08 17:00,,2009-01-10 08:00,2009-01-19 17:00,2009-01-10 08:00,2009-01-19 17:00,2009-01-10 08:00,2009-01-19 17:00,,,,,PT_Normal,,,,,TO9j6wwaz0i4MLFOp5ti1w,,,,N,0,0
3381,85280,829,12767,912,1,0,N,N,N,CP_Drtn,TT_Task,DT_FixedDUR2,RV_OK,TK_NotStart,7232L68300,SMDB,2296,152,0,48,0,1315.2,1315.2,48,0,0,0,,,,2009-02-18 08:00,2009-02-24 17:00,,2009-01-27 08:00,2009-02-02 17:00,2009-01-27 08:00,2009-02-02 17:00,2009-01-27 08:00,2009-02-02 17:00,,,,,PT_Normal,,,,,/RCqVCdATE+8r1C0M2yv1g,,,,N,0,0
3382,85281,829,12767,912,1,0,N,N,N,CP_Drtn,TT_Task,DT_FixedDUR2,RV_OK,TK_NotStart,7232L68350,Light Fittings,2296,128,112,120,0,1105.6,1105.6,120,0,0,0,,,,2009-01-22 08:00,2009-02-08 17:00,,2009-01-04 08:00,2009-01-20 17:00,2009-01-04 08:00,2009-01-20 17:00,2009-01-04 08:00,2009-01-20 17:00,,,,,PT_Normal,,,,,jdiPrGa4tEO8ShsEAtcKxA,,,,N,0,0
3383,85282,829,12767,912,1,0,N,N,N,CP_Drtn,TT_Task,DT_FixedDUR2,RV_OK,TK_NotStart,7232L68400,Lighting Control Panels,2296,176,0,64,0,275.2,275.2,64,0,0,0,,,,2009-02-23 08:00,2009-03-03 17:00,,2009-01-28 08:00,2009-02-05 17:00,2009-01-28 08:00,2009-02-05 17:00,2009-01-28 08:00,2009-02-05 17:00,,,,,PT_Normal,,,,,nn1PCC/OGUO/pCqjXT5jNQ,,,,N,0,0
3384,85283,829,12767,912,1,0,N,N,N,CP_Drtn,TT_Task,DT_FixedDUR2,RV_OK,TK_NotStart,7232L68600,Switches & sockets,2296,136,120,72,0,494.4,494.4,72,0,0,0,,,,2009-01-29 08:00,2009-02-08 17:00,,2009-01-10 08:00,2009-01-19 17:00,2009-01-10 08:00,2009-01-19 17:00,2009-01-10 08:00,2009-01-19 17:00,,,,,PT_Normal,,,,,l0P4MIu3bUuu5Q7oX4SRaQ,,,,N,0,0
3385,85284,829,12769,912,1,0,N,N,N,CP_Drtn,TT_Task,DT_FixedDUR2,RV_OK,TK_NotStart,7232L70050,Central Battery cables,2296,128,120,64,0,345.6,345.6,64,0,0,0,,,,2008-11-27 08:00,2008-12-06 17:00,,2008-11-09 08:00,2008-11-17 17:00,2008-11-09 08:00,2008-11-17 17:00,2008-11-09 08:00,2008-11-17 17:00,,,,,PT_Normal,,,,,hQQdRu3/G0iLxe32uEIo5A,,,,N,0,0
3386,85285,829,12770,912,1,0,N,N,N,CP_Drtn,TT_Task,DT_FixedDUR2,RV_OK,TK_NotStart,7232L70150,Emergency & exit light fittings,2296,272,0,48,0,188.8,188.8,48,0,0,0,,,,2009-02-25 08:00,2009-03-03 17:00,,2009-01-17 08:00,2009-01-22 17:00,2009-01-17 08:00,2009-01-22 17:00,2009-01-17 08:00,2009-01-22 17:00,,,,,PT_Normal,,,,,Cv88TxPaEkO1OEPWH2MYaQ,,,,N,0,0
3387,85286,829,12772,912,1,0,N,N,N,CP_Drtn,TT_Task,DT_FixedDUR2,RV_OK,TK_NotStart,7232L72200,Intercom system cables,2296,48,40,48,0,576,576,48,0,0,0,,,,2008-12-11 08:00,2008-12-17 17:00,,2008-12-04 08:00,2008-12-10 17:00,2008-12-04 08:00,2008-12-10 17:00,2008-12-04 08:00,2008-12-10 17:00,,,,,PT_Normal,,,,,qDdQsdcQCE2CyFUTEfQ4vQ,,,,N,0,0
3388,85287,829,12773,912,1,0,N,N,N,CP_Drtn,TT_Task,DT_FixedDUR2,RV_OK,TK_NotStart,7232L72250,Intercom system equipments,2296,120,104,64,0,486.4,486.4,64,0,0,0,,,,2009-01-31 08:00,2009-02-08 17:00,,2009-01-13 08:00,2009-01-21 17:00,2009-01-13 08:00,2009-01-21 17:00,2009-01-13 08:00,2009-01-21 17:00,,,,,PT_Normal,,,,,msByvQverUeQK1iwEnGYhA,,,,N,0,0
3389,85288,829,12775,912,1,0,N,N,N,CP_Drtn,TT_Task,DT_FixedDUR2,RV_OK,TK_NotStart,7232L74050,Fire alarm cables,2296,128,120,64,0,380.8,380.8,64,0,0,0,,,,2008-11-27 08:00,2008-12-06 17:00,,2008-11-09 08:00,2008-11-17 17:00,2008-11-09 08:00,2008-11-17 17:00,2008-11-09 08:00,2008-11-17 17:00,,,,,PT_Normal,,,,,xQjo4ncxVEqDK+wQvnDbaw,,,,N,0,0
3390,85289,829,12776,912,1,0,N,N,N,CP_Drtn,TT_Task,DT_FixedDUR2,RV_OK,TK_NotStart,7232L74100,Fire alarm fittings,2296,192,0,80,0,132.8,132.8,80,0,0,0,,,,2009-02-15 08:00,2009-02-25 17:00,,2009-01-18 08:00,2009-01-28 17:00,2009-01-18 08:00,2009-01-28 17:00,2009-01-18 08:00,2009-01-28 17:00,,,,,PT_Normal,,,,,W0hyGCFc1UG2KPekBsTWpw,,,,N,0,0
3391,85290,829,12778,912,1,0,N,N,N,CP_Drtn,TT_Task,DT_FixedDUR2,RV_OK,TK_NotStart,7232L76050,Structured cabling,2296,64,40,64,0,345.6,345.6,64,0,0,0,,,,2008-12-11 08:00,2008-12-20 17:00,,2008-12-02 08:00,2008-12-10 17:00,2008-12-02 08:00,2008-12-10 17:00,2008-12-02 08:00,2008-12-10 17:00,,,,,PT_Normal,,,,,1H0eiekdgk+tESinWRcxOw,,,,N,0,0
3392,85291,829,12779,912,1,0,N,N,N,CP_Drtn,TT_Task,DT_FixedDUR2,RV_OK,TK_NotStart,7232L76100,Consolidated pionts,2296,24,0,64,0,486.4,486.4,64,0,0,0,,,,2008-12-21 08:00,2008-12-29 17:00,,2008-12-17 08:00,2008-12-25 17:00,2008-12-17 08:00,2008-12-25 17:00,2008-12-17 08:00,2008-12-25 17:00,,,,,PT_Normal,,,,,PJW4AxwG8k2Tuq7X+NdZYw,,,,N,0,0
3393,85292,829,11587,912,1,100,N,N,N,CP_Drtn,TT_Task,DT_FixedDUR2,RV_OK,TK_Complete,7232U12050,Columns & walls 2U to Roof - Part 1,2306,32,0,0,3823,0,3823,24,114913.84,114913.84,0,,2008-09-21 08:00,2008-09-23 17:00,2008-10-07 08:00,2008-10-06 17:00,,2008-10-02 08:00,2008-10-01 17:00,,,2008-09-21 08:00,2008-09-23 17:00,,,,,PT_Normal,,,,,YicIxIuHeEKguYL8QgBdYA,,,,N,3823,114913.84
3394,85293,829,11587,912,1,100,N,N,N,CP_Drtn,TT_Task,DT_FixedDUR2,RV_OK,TK_Complete,7232U12051,Columns & walls 2U to Roof - Part 2,2306,32,0,0,3823,0,3823,24,114913.84,114913.84,0,,2008-09-29 08:00,2008-10-01 17:00,2008-10-07 08:00,2008-10-06 17:00,,2008-10-02 08:00,2008-10-01 17:00,,,2008-09-29 08:00,2008-10-01 17:00,,,,,PT_Normal,,,,,eaPWP8i6gEStgUy3ulHPRQ,,,,N,3823,114913.84
3395,85294,829,11587,912,1,100,N,N,N,CP_Drtn,TT_Task,DT_FixedDUR2,RV_OK,TK_Complete,7232U12052,Columns & walls 2U to Roof - Middle Part,2306,48,0,0,8166.64,0,8166.64,24,246301.52,246301.52,0,,2008-09-27 08:00,2008-09-29 17:00,2008-10-09 08:00,2008-10-08 17:00,,2008-10-02 08:00,2008-10-01 17:00,,,2008-09-27 08:00,2008-09-29 17:00,,,,,PT_Normal,,,,,QHVcGUGK/UWBg1JxLjMw3w,,,,N,8166.64,246301.52
3396,85295,829,11587,912,1,42.9,N,N,N,CP_Drtn,TT_Task,DT_FixedDUR2,RV_OK,TK_Active,7232U12200,Slab @ Roof level - Part 1,2306,8,0,32,2028.65,2704.79,4733.44,56,173509.36,74361.2,99148.16,,2008-09-29 08:00,,2008-10-04 08:00,2008-10-07 17:00,,2008-10-02 08:00,2008-10-06 17:00,2008-10-02 08:00,2008-10-06 17:00,2008-09-29 08:00,2008-10-06 17:00,,,,,PT_Normal,,,,,ldbimhUM90CfgFTxRXwA8w,,,,N,2028.65,74361.2
3397,85296,829,11587,912,1,0,N,N,N,CP_Drtn,TT_Task,DT_FixedDUR2,RV_OK,TK_NotStart,7232U12201,Slab @ Roof level - Part 2,2306,8,0,56,0,4733.44,4733.44,56,173509.36,0,173509.36,,,,2008-10-08 08:00,2008-10-15 17:00,,2008-10-07 08:00,2008-10-14 17:00,2008-10-07 08:00,2008-10-14 17:00,2008-10-07 08:00,2008-10-14 17:00,,,,,PT_Normal,,,,,COvTtCO0ck6ktdjJN6i8zg,,,,N,0,0
3398,85297,829,11587,912,1,0,N,N,N,CP_Drtn,TT_Task,DT_FixedDUR2,RV_OK,TK_NotStart,7232U12202,Slab @ Roof level - Middle Part,2306,24,16,56,0,6554.96,6554.96,56,241077.52,0,241077.52,,,,2008-10-08 08:00,2008-10-15 17:00,,2008-10-05 08:00,2008-10-12 17:00,2008-10-05 08:00,2008-10-12 17:00,2008-10-05 08:00,2008-10-12 17:00,,,,,PT_Normal,,,,,e3mTonClPUORKwi8EuzRxQ,,,,N,0,0
3399,85298,829,11587,912,1,0,N,N,N,CP_Drtn,TT_Task,DT_FixedDUR2,RV_OK,TK_NotStart,7232U12250,Staircases 2U to Roof,2306,208,0,24,0,991.88,991.88,24,18457.6,0,18457.6,,,,2008-11-13 08:00,2008-11-16 17:00,,2008-10-14 08:00,2008-10-16 17:00,2008-10-14 08:00,2008-10-16 17:00,2008-10-14 08:00,2008-10-16 17:00,,,,,PT_Normal,,,,,4ylJXaVECkimtTVgBbwcvw,,,,N,0,0
3400,85299,829,11890,912,1,0,N,N,N,CP_Drtn,TT_Task,DT_FixedDUR2,RV_OK,TK_NotStart,7232U14050,Block works,2306,24,0,120,0,30085.5,30085.5,120,18440,0,18440,,,,2008-11-04 08:00,2008-11-20 17:00,,2008-11-01 08:00,2008-11-17 17:00,2008-11-01 08:00,2008-11-17 17:00,2008-11-01 08:00,2008-11-17 17:00,,,,,PT_Normal,,,,,pDceqvCKq0SnWG5ekM+gew,,,,N,0,0
3401,85300,829,11682,912,1,0,N,N,N,CP_Drtn,TT_Task,DT_FixedDUR2,RV_OK,TK_NotStart,7232U16050,Plaster works,2306,40,0,120,0,24375.8,24375.8,120,19024,0,19024,,,,2008-11-22 08:00,2008-12-08 17:00,,2008-11-16 08:00,2008-12-02 17:00,2008-11-16 08:00,2008-12-02 17:00,2008-11-16 08:00,2008-12-02 17:00,,,,,PT_Normal,,,,,50h1RB/YN0ChPKPKhNlK9A,,,,N,0,0
3402,85301,829,11682,912,1,0,N,N,N,CP_Drtn,TT_Task,DT_FixedDUR2,RV_OK,TK_NotStart,7232U16051,Plaste works behind tiles,2306,144,120,120,0,5424,5424,120,4160,0,4160,,,,2008-12-13 08:00,2008-12-29 17:00,,2008-11-22 08:00,2008-12-08 17:00,2008-11-22 08:00,2008-12-08 17:00,2008-11-22 08:00,2008-12-08 17:00,,,,,PT_Normal,,,,,xtF+FzkWI0WbiaTxkfE/lQ,,,,N,0,0
3403,85302,829,11892,912,1,0,N,N,N,CP_Drtn,TT_Task,DT_FixedDUR2,RV_OK,TK_NotStart,7232U18050,Rendering works,2306,64,24,120,0,5683,5683,120,5000,0,5000,,,,2008-11-18 08:00,2008-12-04 17:00,,2008-11-09 08:00,2008-11-25 17:00,2008-11-09 08:00,2008-11-25 17:00,2008-11-09 08:00,2008-11-25 17:00,,,,,PT_Normal,,,,,L9iOBh5PskqWIk81mVCG2A,,,,N,0,0
3404,85303,829,11892,912,1,0,N,N,N,CP_Drtn,TT_Task,DT_FixedDUR2,RV_OK,TK_NotStart,7232U18100,Painting base coats,2306,40,0,120,0,26546.2,26546.2,120,24024,0,24024,,,,2008-11-30 08:00,2008-12-16 17:00,,2008-11-24 08:00,2008-12-10 17:00,2008-11-24 08:00,2008-12-10 17:00,2008-11-24 08:00,2008-12-10 17:00,,,,,PT_Normal,,,,,Yikist7XIkyjkBri7oK8Fg,,,,N,0,0
3405,85304,829,11892,912,1,0,N,N,N,CP_Drtn,TT_Task,DT_FixedDUR2,RV_OK,TK_NotStart,7232U18150,Painting 1st top coat for apartments,2306,80,0,72,0,17300.2,17300.2,72,16408,0,16408,,,,2009-01-31 08:00,2009-02-09 17:00,,2009-01-19 08:00,2009-01-28 17:00,2009-01-19 08:00,2009-01-28 17:00,2009-01-19 08:00,2009-01-28 17:00,,,,,PT_Normal,,,,,3Tgqu1pBK0aDA8eMAeRp0A,,,,N,0,0
3406,85305,829,11684,912,1,0,N,N,N,CP_Drtn,TT_Task,DT_FixedDUR2,RV_OK,TK_NotStart,7232U20050,Floor tiles for apartments-dry area,2306,128,0,120,0,9570,9570,120,7000,0,7000,,,,2008-12-22 08:00,2009-01-07 17:00,,2008-12-03 08:00,2008-12-20 17:00,2008-12-03 08:00,2008-12-20 17:00,2008-12-03 08:00,2008-12-20 17:00,,,,,PT_Normal,,,,,p9PbDCkGqU+R56j3B3a9kw,,,,N,0,0
3407,85306,829,11684,912,1,0,N,N,N,CP_Drtn,TT_Task,DT_FixedDUR2,RV_OK,TK_NotStart,7232U20070,Floor tiles for apartments-wet area,2306,24,0,120,0,3835.2,3835.2,120,2752,0,2752,,,,2009-01-06 08:00,2009-01-22 17:00,,2009-01-03 08:00,2009-01-19 17:00,2009-01-03 08:00,2009-01-19 17:00,2009-01-03 08:00,2009-01-19 17:00,,,,,PT_Normal,,,,,5spjtR2kHEKxlsxM9m3zlA,,,,N,0,0
3408,85307,829,11684,912,1,0,N,N,N,CP_Drtn,TT_Task,DT_FixedDUR2,RV_OK,TK_NotStart,7232U20110,Wall tiles for apartments-wet area,2306,96,0,120,0,9066,9066,120,5964,0,5964,,,,2009-01-18 08:00,2009-02-03 17:00,,2009-01-04 08:00,2009-01-20 17:00,2009-01-04 08:00,2009-01-20 17:00,2009-01-04 08:00,2009-01-20 17:00,,,,,PT_Normal,,,,,JzYV9LSXZEm60yR/qfYoIw,,,,N,0,0
3409,85308,829,11853,912,1,0,N,N,N,CP_Drtn,TT_Task,DT_FixedDUR2,RV_OK,TK_NotStart,7232U22150,W/P for for apartments,2306,88,0,120,0,2980,2980,120,2600,0,2600,,,,2008-12-01 08:00,2008-12-17 17:00,,2008-11-18 08:00,2008-12-04 17:00,2008-11-18 08:00,2008-12-04 17:00,2008-11-18 08:00,2008-12-04 17:00,,,,,PT_Normal,,,,,TsainkagRE6s2HHajx4jow,,,,N,0,0
3410,85309,829,11686,912,1,0,N,N,N,CP_Drtn,TT_Task,DT_FixedDUR2,RV_OK,TK_NotStart,7232U24050,Aluminium doors & windows,2306,128,0,120,0,1208,1208,120,272,0,272,,,,2008-12-30 08:00,2009-01-15 17:00,,2008-12-11 08:00,2008-12-28 17:00,2008-12-11 08:00,2008-12-28 17:00,2008-12-11 08:00,2008-12-28 17:00,,,,,PT_Normal,,,,,xrXESkGyrEWzxc9HiboU8w,,,,N,0,0
3411,85310,829,11686,912,1,0,N,N,N,CP_Drtn,TT_Task,DT_FixedDUR2,RV_OK,TK_NotStart,7232U24200,Balcony handrails,2306,48,48,120,0,2192,2192,120,1184,0,1184,,,,2009-01-22 08:00,2009-02-08 17:00,,2009-01-15 08:00,2009-02-01 17:00,2009-01-15 08:00,2009-02-01 17:00,2009-01-15 08:00,2009-02-01 17:00,,,,,PT_Normal,,,,,uOLE9RTYW0+NN54lLIV7Og,,,,N,0,0
3412,85311,829,11787,912,1,0,N,N,N,CP_Drtn,TT_Task,DT_FixedDUR2,RV_OK,TK_NotStart,7232U30050,Wooden doors,2306,56,8,176,0,1520,1520,176,384,0,384,,,,2009-01-11 08:00,2009-02-04 17:00,,2009-01-03 08:00,2009-01-27 17:00,2009-01-03 08:00,2009-01-27 17:00,2009-01-03 08:00,2009-01-27 17:00,,,,,PT_Normal,,,,,NYa2w1qMIE6mauoxaGc3+Q,,,,N,0,0
3413,85312,829,11897,912,1,0,N,N,N,CP_Drtn,TT_Task,DT_FixedDUR2,RV_OK,TK_NotStart,7232U32100,Vanity counters,2306,16,8,120,0,2232,2232,120,192,0,192,,,,2009-01-24 08:00,2009-02-09 17:00,,2009-01-21 08:00,2009-02-07 17:00,2009-01-21 08:00,2009-02-07 17:00,2009-01-21 08:00,2009-02-07 17:00,,,,,PT_Normal,,,,,+k5pwI04KUmkxjeZn3gntw,,,,N,0,0
3414,85313,829,11897,912,1,0,N,N,N,CP_Drtn,TT_Task,DT_FixedDUR2,RV_OK,TK_NotStart,7232U32150,Wardrobes,2306,104,104,120,0,6168,6168,120,288,0,288,,,,2009-01-22 08:00,2009-02-08 17:00,,2009-01-07 08:00,2009-01-24 17:00,2009-01-07 08:00,2009-01-24 17:00,2009-01-07 08:00,2009-01-24 17:00,,,,,PT_Normal,,,,,agL8n/jFn0yR6fcmoD0y/w,,,,N,0,0
3415,85314,829,11689,912,1,0,N,N,N,CP_Drtn,TT_Task,DT_FixedDUR2,RV_OK,TK_NotStart,7232U34050,False ceiling works for apartments-dry area,2306,80,0,128,0,1493.12,1493.12,128,910.08,0,910.08,,,,2009-01-07 08:00,2009-01-25 17:00,,2008-12-27 08:00,2009-01-13 17:00,2008-12-27 08:00,2009-01-13 17:00,2008-12-27 08:00,2009-01-13 17:00,,,,,PT_Normal,,,,,llCiiGu11EWcI/gLxOp7OQ,,,,N,0,0
3416,85315,829,11689,912,1,0,N,N,N,CP_Drtn,TT_Task,DT_FixedDUR2,RV_OK,TK_NotStart,7232U34070,False ceiling works for apartments-wet area,2306,24,0,128,0,658.88,658.88,128,353.92,0,353.92,,,,2008-12-30 08:00,2009-01-17 17:00,,2008-12-27 08:00,2009-01-13 17:00,2008-12-27 08:00,2009-01-13 17:00,2008-12-27 08:00,2009-01-13 17:00,,,,,PT_Normal,,,,,8Nr8XtQmB0S7Fr/f4rbBDg,,,,N,0,0
3417,85316,829,11899,912,1,0,N,N,N,CP_Drtn,TT_Task,DT_FixedDUR2,RV_OK,TK_NotStart,7232U36050,Stone finishing top,2306,72,72,64,0,344,344,64,160,0,160,,,,2009-01-31 08:00,2009-02-08 17:00,,2009-01-20 08:00,2009-01-28 17:00,2009-01-20 08:00,2009-01-28 17:00,2009-01-20 08:00,2009-01-28 17:00,,,,,PT_Normal,,,,,v8LwteMHxkyfQDvWUM86Lw,,,,N,0,0
3418,85317,829,11899,912,1,0,N,N,N,CP_Drtn,TT_Task,DT_FixedDUR2,RV_OK,TK_NotStart,7232U36100,Thresholds,2306,48,48,64,0,520,520,64,304,0,304,,,,2009-01-31 08:00,2009-02-08 17:00,,2009-01-24 08:00,2009-02-01 17:00,2009-01-24 08:00,2009-02-01 17:00,2009-01-24 08:00,2009-02-01 17:00,,,,,PT_Normal,,,,,dZM6kQfFnkGJZ7fdp9vcBQ,,,,N,0,0
3419,85318,829,11900,912,1,0,N,N,N,CP_Drtn,TT_Task,DT_FixedDUR2,RV_OK,TK_NotStart,7232U44050,Sub-frames,2306,40,0,120,0,888,888,120,384,0,384,,,,2008-11-16 08:00,2008-12-02 17:00,,2008-11-10 08:00,2008-11-26 17:00,2008-11-10 08:00,2008-11-26 17:00,2008-11-10 08:00,2008-11-26 17:00,,,,,PT_Normal,,,,,ciWHlmi3dUaq4VLssHiRIQ,,,,N,0,0
3420,85319,829,12782,912,1,100,N,N,N,CP_Drtn,TT_Task,DT_FixedDUR2,RV_OK,TK_Complete,7232U50100,MEP skeleton embedded provisions,2296,96,0,0,512,0,512,72,,,0,,2008-09-21 08:00,2008-09-30 17:00,2008-10-16 08:00,2008-10-15 17:00,,2008-10-02 08:00,2008-10-01 17:00,,,2008-09-21 08:00,2008-09-30 17:00,,,,,PT_Normal,,,,,8ELLgwJo2Em6RGsieSqm/A,,,,N,512,0
3421,85320,829,12784,912,1,0,N,N,N,CP_Drtn,TT_Task,DT_FixedDUR2,RV_OK,TK_NotStart,7232U52050,A/C duct works,2296,136,112,160,0,831,831,160,0,0,0,,,,2008-11-29 08:00,2008-12-21 17:00,,2008-11-09 08:00,2008-12-01 17:00,2008-11-09 08:00,2008-12-01 17:00,2008-11-09 08:00,2008-12-01 17:00,,,,,PT_Normal,,,,,Lb47ZthF8kmTrfufQLPqOA,,,,N,0,0
3422,85321,829,12784,912,1,0,N,N,N,CP_Drtn,TT_Task,DT_FixedDUR2,RV_OK,TK_NotStart,7232U52100,Chilled water pipe works,2296,88,64,72,0,787,787,72,0,0,0,,,,2008-12-02 08:00,2008-12-11 17:00,,2008-11-19 08:00,2008-11-29 17:00,2008-11-19 08:00,2008-11-29 17:00,2008-11-19 08:00,2008-11-29 17:00,,,,,PT_Normal,,,,,EiiGEMkaT0qez6wv7LAdNg,,,,N,0,0
3423,85322,829,12804,912,1,0,N,N,N,CP_Drtn,TT_Task,DT_FixedDUR2,RV_OK,TK_NotStart,7232U52150,FCU's hanging,2296,144,120,64,0,935.2,935.2,64,0,0,0,,,,2008-12-09 08:00,2008-12-17 17:00,,2008-11-18 08:00,2008-11-26 17:00,2008-11-18 08:00,2008-11-26 17:00,2008-11-18 08:00,2008-11-26 17:00,,,,,PT_Normal,,,,,eg7NUz0t2Uq43XflI0Q8wg,,,,N,0,0
3424,85323,829,12804,912,1,0,N,N,N,CP_Drtn,TT_Task,DT_FixedDUR2,RV_OK,TK_NotStart,7232U52300,FCU's assembly & duct connections,2296,24,0,80,0,951.2,951.2,80,0,0,0,,,,2008-12-18 08:00,2008-12-29 17:00,,2008-12-15 08:00,2008-12-25 17:00,2008-12-15 08:00,2008-12-25 17:00,2008-12-15 08:00,2008-12-25 17:00,,,,,PT_Normal,,,,,/8ff5ssXSku1WqgijLIfvQ,,,,N,0,0
3425,85324,829,12804,912,1,0,N,N,N,CP_Drtn,TT_Task,DT_FixedDUR2,RV_OK,TK_NotStart,7232U52350,Grills & diffusers,2296,128,0,64,0,856,856,64,0,0,0,,,,2009-01-31 08:00,2009-02-08 17:00,,2009-01-12 08:00,2009-01-20 17:00,2009-01-12 08:00,2009-01-20 17:00,2009-01-12 08:00,2009-01-20 17:00,,,,,PT_Normal,,,,,udzxaVqykEqU7UwUzpUrHQ,,,,N,0,0
3426,85325,829,12784,912,1,0,N,N,N,CP_Drtn,TT_Task,DT_FixedDUR2,RV_OK,TK_NotStart,7232U52550,A/C duct risers,2296,24,0,64,0,1626,1626,64,0,0,0,,,,2008-12-03 08:00,2008-12-11 17:00,,2008-11-30 08:00,2008-12-08 17:00,2008-11-30 08:00,2008-12-08 17:00,2008-11-30 08:00,2008-12-08 17:00,,,,,PT_Normal,,,,,wFLBFduONkuSoEf43+KINQ,,,,N,0,0
3427,85326,829,12787,912,1,0,N,N,N,CP_Drtn,TT_Task,DT_FixedDUR2,RV_OK,TK_NotStart,7232U54050,Chasing & Pex pipe works,2296,112,0,120,0,395,395,120,0,0,0,,,,2008-11-25 08:00,2008-12-11 17:00,,2008-11-09 08:00,2008-11-25 17:00,2008-11-09 08:00,2008-11-25 17:00,2008-11-09 08:00,2008-11-25 17:00,,,,,PT_Normal,,,,,zKLqQPsc6ECUcIWQJlVMcw,,,,N,0,0
3428,85327,829,12807,912,1,0,N,N,N,CP_Drtn,TT_Task,DT_FixedDUR2,RV_OK,TK_NotStart,7232U54250,Bathtubs,2296,216,0,80,0,273.6,273.6,80,0,0,0,,,,2008-12-25 08:00,2009-01-05 17:00,,2008-11-24 08:00,2008-12-04 17:00,2008-11-24 08:00,2008-12-04 17:00,2008-11-24 08:00,2008-12-04 17:00,,,,,PT_Normal,,,,,7SfB8sMugEWDkarBZ25aGw,,,,N,0,0
3429,85328,829,12807,912,1,0,N,N,N,CP_Drtn,TT_Task,DT_FixedDUR2,RV_OK,TK_NotStart,7232U54300,Water heater,2296,160,48,64,0,310.4,310.4,64,0,0,0,,,,2008-12-20 08:00,2008-12-28 17:00,,2008-11-26 08:00,2008-12-04 17:00,2008-11-26 08:00,2008-12-04 17:00,2008-11-26 08:00,2008-12-04 17:00,,,,,PT_Normal,,,,,CiQBpeD1IU6J0D+LpaKhkQ,,,,N,0,0
3430,85329,829,12807,912,1,0,N,N,N,CP_Drtn,TT_Task,DT_FixedDUR2,RV_OK,TK_NotStart,7232U54350,Over head pipe assembly & vlave connections,2296,112,64,72,0,237,237,72,0,0,0,,,,2008-12-20 08:00,2008-12-29 17:00,,2008-12-03 08:00,2008-12-13 17:00,2008-12-03 08:00,2008-12-13 17:00,2008-12-03 08:00,2008-12-13 17:00,,,,,PT_Normal,,,,,NZ5Tf0FKl0uOfcOx1nChQQ,,,,N,0,0
3431,85330,829,12789,912,1,0,N,N,N,CP_Drtn,TT_Task,DT_FixedDUR2,RV_OK,TK_NotStart,7232U54400,Sanitary fixures,2296,96,0,80,0,476,476,80,0,0,0,,,,2009-01-28 08:00,2009-02-08 17:00,,2009-01-14 08:00,2009-01-25 17:00,2009-01-14 08:00,2009-01-25 17:00,2009-01-14 08:00,2009-01-25 17:00,,,,,PT_Normal,,,,,gY4+UcIEpUGY+FbGr0uZrQ,,,,N,0,0
3432,85331,829,12789,912,1,0,N,N,N,CP_Drtn,TT_Task,DT_FixedDUR2,RV_OK,TK_NotStart,7232U54450,Mirrors,2296,8,8,72,0,138,138,72,0,0,0,,,,2009-01-29 08:00,2009-02-08 17:00,,2009-01-28 08:00,2009-02-07 17:00,2009-01-28 08:00,2009-02-07 17:00,2009-01-28 08:00,2009-02-07 17:00,,,,,PT_Normal,,,,,zX2Ca0VUyUeYMuym1X5OmQ,,,,N,0,0
3433,85332,829,12807,912,1,0,N,N,N,CP_Drtn,TT_Task,DT_FixedDUR2,RV_OK,TK_NotStart,7232U54500,Concealed Flushing Cistern,2296,216,192,80,0,212,212,80,0,0,0,,,,2008-12-25 08:00,2009-01-05 17:00,,2008-11-24 08:00,2008-12-04 17:00,2008-11-24 08:00,2008-12-04 17:00,2008-11-24 08:00,2008-12-04 17:00,,,,,PT_Normal,,,,,uxsMIWOMFE6Z22mCifB7Gg,,,,N,0,0
3434,85333,829,12791,912,1,0,N,N,N,CP_Drtn,TT_Task,DT_FixedDUR2,RV_OK,TK_NotStart,7232U56050,Chasing and installation of drainage pipes,2296,136,0,80,0,245,245,80,0,0,0,,,,2008-11-29 08:00,2008-12-09 17:00,,2008-11-09 08:00,2008-11-19 17:00,2008-11-09 08:00,2008-11-19 17:00,2008-11-09 08:00,2008-11-19 17:00,,,,,PT_Normal,,,,,TqGi7WSfI0iOo2tu8GdPkw,,,,N,0,0
3435,85334,829,12791,912,1,0,N,N,N,CP_Drtn,TT_Task,DT_FixedDUR2,RV_OK,TK_NotStart,7232U56100,Drainage riser pipes,2296,208,72,64,0,284,284,64,0,0,0,,,,2008-12-09 08:00,2008-12-17 17:00,,2008-11-09 08:00,2008-11-17 17:00,2008-11-09 08:00,2008-11-17 17:00,2008-11-09 08:00,2008-11-17 17:00,,,,,PT_Normal,,,,,p8rDjUh6+0ia7L4bqEeUqw,,,,N,0,0
3436,85335,829,12792,912,1,0,N,N,N,CP_Drtn,TT_Task,DT_FixedDUR2,RV_OK,TK_NotStart,7232U56150,Over head drainage pipe works,2296,40,0,64,0,257.6,257.6,64,0,0,0,,,,2008-12-21 08:00,2008-12-29 17:00,,2008-12-15 08:00,2008-12-23 17:00,2008-12-15 08:00,2008-12-23 17:00,2008-12-15 08:00,2008-12-23 17:00,,,,,PT_Normal,,,,,R9J6SmVRJ0Kmm8L+xSd/pg,,,,N,0,0
3437,85336,829,12794,912,1,0,N,N,N,CP_Drtn,TT_Task,DT_FixedDUR2,RV_OK,TK_NotStart,7232U58050,Fire fighting pipe works,2296,216,144,72,0,292,292,72,0,0,0,,,,2008-12-20 08:00,2008-12-29 17:00,,2008-11-18 08:00,2008-11-27 17:00,2008-11-18 08:00,2008-11-27 17:00,2008-11-18 08:00,2008-11-27 17:00,,,,,PT_Normal,,,,,wVXuiS0EdU67x6qpa50Dww,,,,N,0,0
3438,85337,829,12795,912,1,0,N,N,N,CP_Drtn,TT_Task,DT_FixedDUR2,RV_OK,TK_NotStart,7232U58250,Sprinkler heads,2296,120,32,64,0,394,394,64,0,0,0,,,,2009-01-31 08:00,2009-02-08 17:00,,2009-01-13 08:00,2009-01-21 17:00,2009-01-13 08:00,2009-01-21 17:00,2009-01-13 08:00,2009-01-21 17:00,,,,,PT_Normal,,,,,Zsqny/xGiUOqSdQnACr6VA,,,,N,0,0
3439,85338,829,12797,912,1,0,N,N,N,CP_Drtn,TT_Task,DT_FixedDUR2,RV_OK,TK_NotStart,7232U66050,Chasing and installation of conduits,2296,40,0,120,0,1528,1528,120,0,0,0,,,,2008-11-16 08:00,2008-12-02 17:00,,2008-11-10 08:00,2008-11-26 17:00,2008-11-10 08:00,2008-11-26 17:00,2008-11-10 08:00,2008-11-26 17:00,,,,,PT_Normal,,,,,jtZQL2fdL0ilNy/1JSPaAg,,,,N,0,0
3440,85339,829,12799,912,1,0,N,N,N,CP_Drtn,TT_Task,DT_FixedDUR2,RV_OK,TK_NotStart,7232U68050,Single core wiring,2296,176,152,72,0,1128,1128,72,0,0,0,,,,2008-12-08 08:00,2008-12-17 17:00,,2008-11-12 08:00,2008-11-22 17:00,2008-11-12 08:00,2008-11-22 17:00,2008-11-12 08:00,2008-11-22 17:00,,,,,PT_Normal,,,,,Uf6Gazzpa0OUqcgiBUVAcw,,,,N,0,0
3441,85340,829,12800,912,1,0,N,N,N,CP_Drtn,TT_Task,DT_FixedDUR2,RV_OK,TK_NotStart,7232U68350,Light Fittings,2296,112,96,120,0,1035.2,1035.2,120,0,0,0,,,,2009-01-22 08:00,2009-02-08 17:00,,2009-01-06 08:00,2009-01-22 17:00,2009-01-06 08:00,2009-01-22 17:00,2009-01-06 08:00,2009-01-22 17:00,,,,,PT_Normal,,,,,JoOmwfBjf0+RrVNPM8tKeA,,,,N,0,0
3442,85341,829,12800,912,1,0,N,N,N,CP_Drtn,TT_Task,DT_FixedDUR2,RV_OK,TK_NotStart,7232U68600,Switches & sockets,2296,80,64,64,0,486.4,486.4,64,0,0,0,,,,2009-01-31 08:00,2009-02-08 17:00,,2009-01-19 08:00,2009-01-27 17:00,2009-01-19 08:00,2009-01-27 17:00,2009-01-19 08:00,2009-01-27 17:00,,,,,PT_Normal,,,,,TXhLH91bY06a19k7Ik5lLg,,,,N,0,0
3443,85342,829,12802,912,1,0,N,N,N,CP_Drtn,TT_Task,DT_FixedDUR2,RV_OK,TK_NotStart,7232U74050,Fire alarm cables,2296,144,120,64,0,380.8,380.8,64,0,0,0,,,,2008-12-09 08:00,2008-12-17 17:00,,2008-11-18 08:00,2008-11-26 17:00,2008-11-18 08:00,2008-11-26 17:00,2008-11-18 08:00,2008-11-26 17:00,,,,,PT_Normal,,,,,dCi1ZVzQ+kaIOiyM19bxXQ,,,,N,0,0
3444,85343,829,12803,912,1,0,N,N,N,CP_Drtn,TT_Task,DT_FixedDUR2,RV_OK,TK_NotStart,7232U74100,Fire alarm fittings,2296,136,64,64,0,116.8,116.8,64,0,0,0,,,,2009-01-31 08:00,2009-02-08 17:00,,2009-01-11 08:00,2009-01-19 17:00,2009-01-11 08:00,2009-01-19 17:00,2009-01-11 08:00,2009-01-19 17:00,,,,,PT_Normal,,,,,UK0wWk9dPkq1esYmxoSu2w,,,,N,0,0
3445,85344,829,12805,912,1,0,N,N,N,CP_Drtn,TT_Task,DT_FixedDUR2,RV_OK,TK_NotStart,7232U76050,Structured cabling,2296,24,0,64,0,345.6,345.6,64,0,0,0,,,,2008-12-11 08:00,2008-12-20 17:00,,2008-12-08 08:00,2008-12-16 17:00,2008-12-08 08:00,2008-12-16 17:00,2008-12-08 08:00,2008-12-16 17:00,,,,,PT_Normal,,,,,giN44vfyhUOnYleUZ5kKkA,,,,N,0,0
3446,85345,829,10668,912,1,0,N,N,N,CP_Drtn,TT_Task,DT_FixedDUR2,RV_OK,TK_NotStart,7239946000,Testing & commissioning of Elevators,2296,352,160,120,0,320,320,120,0,0,0,,,,2009-03-08 08:00,2009-03-24 17:00,,2009-01-15 08:00,2009-02-01 17:00,2009-01-15 08:00,2009-02-01 17:00,2009-01-15 08:00,2009-02-01 17:00,,,,,PT_Normal,,,,,u25VLJ1IhEWbXSeF6k2Dsg,,,,N,0,0
3447,85346,829,10668,912,1,0,N,N,N,CP_Drtn,TT_Task,DT_FixedDUR2,RV_OK,TK_NotStart,7239952000,Testing & commissioning of A/C system,2296,248,56,200,0,1400,1400,200,0,0,0,,,,2009-02-26 08:00,2009-03-26 17:00,,2009-01-21 08:00,2009-02-18 17:00,2009-01-21 08:00,2009-02-18 17:00,2009-01-21 08:00,2009-02-18 17:00,,,,,PT_Normal,,,,,kWcCf74QLUKKB9ju0g+/bw,,,,N,0,0
3448,85347,829,10668,912,1,0,N,N,N,CP_Drtn,TT_Task,DT_FixedDUR2,RV_OK,TK_NotStart,7239954000,Testing & commissioning of water supply system,2296,232,40,200,0,700,700,200,0,0,0,,,,2009-03-01 08:00,2009-03-29 17:00,,2009-01-26 08:00,2009-02-23 17:00,2009-01-26 08:00,2009-02-23 17:00,2009-01-26 08:00,2009-02-23 17:00,,,,,PT_Normal,,,,,nZm5PuNEREizl8YsnayW0w,,,,N,0,0
3449,85348,829,10668,912,1,0,N,N,N,CP_Drtn,TT_Task,DT_FixedDUR2,RV_OK,TK_NotStart,7239956000,Testing & commissioning of drainage system,2296,232,40,200,0,1000,1000,200,0,0,0,,,,2009-03-01 08:00,2009-03-29 17:00,,2009-01-26 08:00,2009-02-23 17:00,2009-01-26 08:00,2009-02-23 17:00,2009-01-26 08:00,2009-02-23 17:00,,,,,PT_Normal,,,,,p1SI1XdCiUGegL0JeRZgaw,,,,N,0,0
3450,85349,829,10668,912,1,0,N,N,N,CP_Drtn,TT_Task,DT_FixedDUR2,RV_OK,TK_NotStart,7239958000,Testing & commissioning of Fire Fighting system,2296,208,16,200,0,300,300,200,0,0,0,,,,2009-02-26 08:00,2009-03-26 17:00,,2009-01-27 08:00,2009-02-24 17:00,2009-01-27 08:00,2009-02-24 17:00,2009-01-27 08:00,2009-02-24 17:00,,,,,PT_Normal,,,,,aMfn1Qa5P0mu1sdVpqS4Cg,,,,N,0,0
3451,85350,829,10668,912,1,0,N,N,N,CP_Drtn,TT_Task,DT_FixedDUR2,RV_OK,TK_NotStart,7239960000,Testing & commissioning of LPG system,2296,480,480,120,0,420,420,120,0,0,0,,,,2009-03-15 08:00,2009-03-31 17:00,,2009-01-04 08:00,2009-01-20 17:00,2009-01-04 08:00,2009-01-20 17:00,2009-01-04 08:00,2009-01-20 17:00,,,,,PT_Normal,,,,,FsfnAKw0Lkm68T3rCT67yA,,,,N,0,0
3452,85351,829,10668,912,1,0,N,N,N,CP_Drtn,TT_Task,DT_FixedDUR2,RV_OK,TK_NotStart,7239962000,Testing & commissioning of BMS system,2296,192,192,48,0,248,248,48,0,0,0,,,,2009-03-25 08:00,2009-03-31 17:00,,2009-02-25 08:00,2009-03-03 17:00,2009-02-25 08:00,2009-03-03 17:00,2009-02-25 08:00,2009-03-03 17:00,,,,,PT_Normal,,,,,4GlY3UzyYUO4eofMW0K+3Q,,,,N,0,0
3453,85352,829,10668,912,0,0,N,N,N,CP_Drtn,TT_Mile,DT_FixedDUR2,RV_OK,TK_NotStart,7239968000,Power ready for testing & commissioning,2296,424,0,0,0,0,0,0,0,0,0,,,,2009-02-26 08:00,2009-02-25 17:00,,2008-12-27 08:00,2008-12-25 17:00,2008-12-27 08:00,2008-12-27 08:00,2008-12-27 08:00,2008-12-27 08:00,,,,,PT_Normal,,,,,wAJTh1ZdPkCXDC5WjutEIw,,,,N,0,0
3454,85353,829,10668,912,1,0,N,N,N,CP_Drtn,TT_Task,DT_FixedDUR2,RV_OK,TK_NotStart,7239968002,Testing & commissioning of Power & Lighting,2296,112,112,120,0,820,820,120,0,0,0,,,,2009-03-15 08:00,2009-03-31 17:00,,2009-02-26 08:00,2009-03-15 17:00,2009-02-26 08:00,2009-03-15 17:00,2009-02-26 08:00,2009-03-15 17:00,,,,,PT_Normal,,,,,dRyGg4JGGEqzREKxBhrQcQ,,,,N,0,0
3455,85354,829,10668,912,1,0,N,N,N,CP_Drtn,TT_Task,DT_FixedDUR2,RV_OK,TK_NotStart,7239970000,Testing & commissioning of Central Battery syst.,2296,328,136,120,0,420,420,120,0,0,0,,,,2009-03-12 08:00,2009-03-29 17:00,,2009-01-24 08:00,2009-02-09 17:00,2009-01-24 08:00,2009-02-09 17:00,2009-01-24 08:00,2009-02-09 17:00,,,,,PT_Normal,,,,,rOdFCha+x0CtHXRG+JzlLQ,,,,N,0,0
3456,85355,829,10668,912,1,0,N,N,N,CP_Drtn,TT_Task,DT_FixedDUR2,RV_OK,TK_NotStart,7239972000,Testing & commissioning of security systems,2296,608,608,48,0,248,248,48,0,0,0,,,,2009-03-25 08:00,2009-03-31 17:00,,2008-12-27 08:00,2009-01-01 17:00,2008-12-27 08:00,2009-01-01 17:00,2008-12-27 08:00,2009-01-01 17:00,,,,,PT_Normal,,,,,FGCZIFR6E0SD9q5SUg1WuQ,,,,N,0,0
3457,85356,829,10668,912,1,0,N,N,N,CP_Drtn,TT_Task,DT_FixedDUR2,RV_OK,TK_NotStart,7239974000,Testing & commissioning of Fire Alarm system,2296,192,0,200,0,600,600,200,0,0,0,,,,2009-02-26 08:00,2009-03-26 17:00,,2009-01-29 08:00,2009-02-26 17:00,2009-01-29 08:00,2009-02-26 17:00,2009-01-29 08:00,2009-02-26 17:00,,,,,PT_Normal,,,,,8YC/w41NC0eyVEkLg+8omA,,,,N,0,0
3458,85357,829,10668,912,1,0,N,N,N,CP_Drtn,TT_Task,DT_FixedDUR2,RV_OK,TK_NotStart,7239976000,Testing & commissioning of Tel & Data system,2296,416,416,120,0,320,320,120,0,0,0,,,,2009-03-15 08:00,2009-03-31 17:00,,2009-01-13 08:00,2009-01-29 17:00,2009-01-13 08:00,2009-01-29 17:00,2009-01-13 08:00,2009-01-29 17:00,,,,,PT_Normal,,,,,WSDTao28QUG2lv+NklE2gQ,,,,N,0,0
3459,85358,829,11498,912,1,0,N,N,N,CP_Drtn,TT_Task,DT_FixedDUR2,RV_OK,TK_NotStart,723EV16100,External plaster works,2306,112,0,160,0,101092,101092,160,77640,0,77640,,,,2008-11-23 08:00,2008-12-15 17:00,,2008-11-06 08:00,2008-11-29 17:00,2008-11-06 08:00,2008-11-29 17:00,2008-11-06 08:00,2008-11-29 17:00,,,,,PT_Normal,,,,,Vn//w3a2NU+QJ5eLyFNl8A,,,,N,0,0
3460,85359,829,11935,912,1,0,N,N,N,CP_Drtn,TT_Task,DT_FixedDUR2,RV_OK,TK_NotStart,723EV18100,Painting base coats,2306,112,0,160,0,85564,85564,160,77640,0,77640,,,,2008-12-16 08:00,2009-01-07 17:00,,2008-11-30 08:00,2008-12-22 17:00,2008-11-30 08:00,2008-12-22 17:00,2008-11-30 08:00,2008-12-22 17:00,,,,,PT_Normal,,,,,j0WHI7eMjkOzS6rYoUMtZg,,,,N,0,0
3461,85360,829,11935,912,1,0,N,N,N,CP_Drtn,TT_Task,DT_FixedDUR2,RV_OK,TK_NotStart,723EV18150,Painting 1st top coat,2306,112,0,160,0,81682,81682,160,77640,0,77640,,,,2009-01-20 08:00,2009-02-11 17:00,,2009-01-04 08:00,2009-01-26 17:00,2009-01-04 08:00,2009-01-26 17:00,2009-01-04 08:00,2009-01-26 17:00,,,,,PT_Normal,,,,,1ojCeCzHM0m0UtAmnT626Q,,,,N,0,0
3462,85361,829,11935,912,1,0,N,N,N,CP_Drtn,TT_Task,DT_FixedDUR2,RV_OK,TK_NotStart,723EV18200,Painting final top coat,2306,112,0,160,0,81682,81682,160,77640,0,77640,,,,2009-02-24 08:00,2009-03-18 17:00,,2009-02-08 08:00,2009-03-02 17:00,2009-02-08 08:00,2009-03-02 17:00,2009-02-08 08:00,2009-03-02 17:00,,,,,PT_Normal,,,,,W6+eBdHxek+P35tAii+tlQ,,,,N,0,0
3463,85362,829,11709,912,1,0,N,N,N,CP_Drtn,TT_Task,DT_FixedDUR2,RV_OK,TK_NotStart,723EV28200,Pergola & canopy structures,2306,112,0,160,0,4112,4112,160,152,0,152,,,,2009-02-01 08:00,2009-02-23 17:00,,2009-01-15 08:00,2009-02-07 17:00,2009-01-15 08:00,2009-02-07 17:00,2009-01-15 08:00,2009-02-07 17:00,,,,,PT_Normal,,,,,GA/eVQxCrUq3MCYmqqFAZA,,,,N,0,0
3464,85363,829,11709,912,1,0,N,N,N,CP_Drtn,TT_Task,DT_FixedDUR2,RV_OK,TK_NotStart,723EV28250,Brackets for pergola & canopy structures,2306,112,0,160,0,2592,2592,160,152,0,152,,,,2009-01-08 08:00,2009-01-31 17:00,,2008-12-23 08:00,2009-01-14 17:00,2008-12-23 08:00,2009-01-14 17:00,2008-12-23 08:00,2009-01-14 17:00,,,,,PT_Normal,,,,,rDRwBmb+w0eZ4k8csNxHdA,,,,N,0,0
3465,85364,829,12835,912,1,0,N,N,N,CP_Drtn,TT_Task,DT_FixedDUR2,RV_OK,TK_NotStart,723EV68350,Aviation Light Fittings,2296,112,0,72,0,402,402,72,0,0,0,,,,2009-03-04 08:00,2009-03-14 17:00,,2009-02-16 08:00,2009-02-25 17:00,2009-02-16 08:00,2009-02-25 17:00,2009-02-16 08:00,2009-02-25 17:00,,,,,PT_Normal,,,,,qH/QUzqTlkWadwvDzOA+9Q,,,,N,0,0
3466,85365,829,10692,912,1,0,N,N,N,CP_Drtn,TT_Task,DT_FixedDUR2,RV_OK,TK_NotStart,723GL00000,Pre-Snagging & Disnagging for lofts,2296,0,0,120,0,420,420,120,0,0,0,,,,2009-02-26 08:00,2009-03-15 17:00,,2009-02-26 08:00,2009-03-15 17:00,2009-02-26 08:00,2009-03-15 17:00,2009-02-26 08:00,2009-03-15 17:00,,,,,PT_Normal,,,,,7tF6e+06iUGBr8HbnRpeRg,,,,N,0,0
3467,85366,829,10692,912,1,0,N,N,N,CP_Drtn,TT_Task,DT_FixedDUR2,RV_OK,TK_NotStart,723GL00002,Pre-Snagging & Disnagging for corrid & Srv rooms,2296,0,0,64,0,214,214,64,0,0,0,,,,2009-03-18 08:00,2009-03-26 17:00,,2009-03-18 08:00,2009-03-26 17:00,2009-03-18 08:00,2009-03-26 17:00,2009-03-18 08:00,2009-03-26 17:00,,,,,PT_Normal,,,,,p0KEY64ILUK4PTsai8v86g,,,,N,0,0
3468,85367,829,11577,912,1,100,N,N,N,CP_Drtn,TT_Task,DT_FixedDUR2,RV_OK,TK_Complete,723GL12050,Columns & walls GL to GU - Part 1,2306,0,0,0,5264.24,0,5264.24,48,157672.56,157672.56,0,,2008-06-29 08:00,2008-07-05 17:00,2008-10-02 08:00,2008-10-01 17:00,,2008-10-02 08:00,2008-10-01 17:00,,,2008-06-29 08:00,2008-07-05 17:00,,,,,PT_Normal,,,,,NS9jagnSQ0iF05UPZziuTQ,,,,N,5264.24,157672.56
3469,85368,829,11577,912,1,100,N,N,N,CP_Drtn,TT_Task,DT_FixedDUR2,RV_OK,TK_Complete,723GL12051,Columns & walls GL to GU - Part 2,2306,0,0,0,5264.24,0,5264.24,48,157672.56,157672.56,0,,2008-07-06 08:00,2008-07-12 17:00,2008-10-02 08:00,2008-10-01 17:00,,2008-10-02 08:00,2008-10-01 17:00,,,2008-07-06 08:00,2008-07-12 17:00,,,,,PT_Normal,,,,,c35rg0BJN02ywOk1yF/W5Q,,,,N,5264.24,157672.56
3470,85369,829,11577,912,1,100,N,N,N,CP_Drtn,TT_Task,DT_FixedDUR2,RV_OK,TK_Complete,723GL12052,Columns & walls GL to GU - Middle Part,2306,0,0,0,8034.91,0,8034.91,48,241424.4,241424.4,0,,2008-07-05 08:00,2008-07-10 17:00,2008-10-02 08:00,2008-10-01 17:00,,2008-10-02 08:00,2008-10-01 17:00,,,2008-07-05 08:00,2008-07-10 17:00,,,,,PT_Normal,,,,,x9ABvqSYm0CzHe7Wqy7NOg,,,,N,8034.91,241424.4
3471,85370,829,11577,912,1,100,N,N,N,CP_Drtn,TT_Task,DT_FixedDUR2,RV_OK,TK_Complete,723GL12200,Slab @ GU level - Part 1,2306,0,0,0,4104.78,0,4104.78,64,149880.72,149880.72,0,,2008-07-06 08:00,2008-07-14 17:00,2008-10-02 08:00,2008-10-01 17:00,,2008-10-02 08:00,2008-10-01 17:00,,,2008-07-06 08:00,2008-07-14 17:00,,,,,PT_Normal,,,,,XdoXInEtek26etdM+7WJWQ,,,,N,4104.78,149880.72
3472,85371,829,11577,912,1,100,N,N,N,CP_Drtn,TT_Task,DT_FixedDUR2,RV_OK,TK_Complete,723GL12201,Slab @ GU level - Part 2,2306,0,0,0,4098.76,0,4098.76,64,149570.48,149570.48,0,,2008-07-15 08:00,2008-07-23 17:00,2008-10-02 08:00,2008-10-01 17:00,,2008-10-02 08:00,2008-10-01 17:00,,,2008-07-15 08:00,2008-07-23 17:00,,,,,PT_Normal,,,,,DPzX0ykL6ki9OXiD7xCAUg,,,,N,4098.76,149570.48
3473,85372,829,11577,912,1,100,N,N,N,CP_Drtn,TT_Task,DT_FixedDUR2,RV_OK,TK_Complete,723GL12202,Slab @ GU level - Middle Part,2306,0,0,0,5907.6,0,5907.6,64,216622.72,216622.72,0,,2008-07-14 08:00,2008-07-22 17:00,2008-10-02 08:00,2008-10-01 17:00,,2008-10-02 08:00,2008-10-01 17:00,,,2008-07-14 08:00,2008-07-22 17:00,,,,,PT_Normal,,,,,wegQsy0vy06THioejcQ/kQ,,,,N,5907.6,216622.72
3474,85373,829,11577,912,1,100,N,N,N,CP_Drtn,TT_Task,DT_FixedDUR2,RV_OK,TK_Complete,723GL12250,Staircases GL to GU,2306,288,0,0,999.88,0,999.88,32,18457.6,18457.6,0,,2008-07-24 08:00,2008-07-28 17:00,2008-11-13 08:00,2008-11-12 17:00,,2008-10-02 08:00,2008-10-01 17:00,,,2008-07-24 08:00,2008-07-28 17:00,,,,,PT_Normal,,,,,8ywHgJWowEeFi+LUqfLaNg,,,,N,999.88,18457.6
3475,85374,829,11818,912,1,100,N,N,N,CP_Drtn,TT_Task,DT_FixedDUR2,RV_OK,TK_Complete,723GL14050,Block works,2306,128,0,0,59160,0,66360,120,,7200,0,,2008-08-14 08:00,2008-08-31 17:00,2008-10-21 08:00,2008-10-20 17:00,,2008-10-02 08:00,2008-10-01 17:00,,,2008-08-14 08:00,2008-08-31 17:00,,,,,PT_Normal,,,,,/3rIhDTBUEe4Ykh/gisNGQ,,,,N,59160,7200
3476,85375,829,11819,912,1,100,N,N,N,CP_Drtn,TT_Task,DT_FixedDUR2,RV_OK,TK_Complete,723GL16050,Plaster works,2306,128,0,0,25456.4,0,25456.4,120,19872,19872,0,,2008-08-30 08:00,2008-09-15 17:00,2008-10-21 08:00,2008-10-20 17:00,,2008-10-02 08:00,2008-10-01 17:00,,,2008-08-30 08:00,2008-09-15 17:00,,,,,PT_Normal,,,,,G37aHAxTO0OY66K9OT30Hw,,,,N,25456.4,19872
3477,85376,829,11819,912,1,100,N,N,N,CP_Drtn,TT_Task,DT_FixedDUR2,RV_OK,TK_Complete,723GL16051,Plaste works behind tiles,2306,264,0,0,9810,0,9810,120,7600,7600,0,,2008-09-07 08:00,2008-09-23 17:00,2008-11-10 08:00,2008-11-09 17:00,,2008-10-02 08:00,2008-10-01 17:00,,,2008-09-07 08:00,2008-09-23 17:00,,,,,PT_Normal,,,,,Kp8sDTP5rkuL+h0aLC6fRQ,,,,N,9810,7600
3478,85377,829,11402,912,1,100,N,N,N,CP_Drtn,TT_Task,DT_FixedDUR2,RV_OK,TK_Complete,723GL18050,Rendering works,2306,128,0,0,5700.2,0,5700.2,120,5016,5016,0,,2008-08-24 08:00,2008-09-09 17:00,2008-10-21 08:00,2008-10-20 17:00,,2008-10-02 08:00,2008-10-01 17:00,,,2008-08-24 08:00,2008-09-09 17:00,,,,,PT_Normal,,,,,sZu3YCxY+0a92ddHIBHRyA,,,,N,5700.2,5016
3479,85378,829,11402,912,1,100,N,N,N,CP_Drtn,TT_Task,DT_FixedDUR2,RV_OK,TK_Complete,723GL18100,Painting base coats,2306,128,0,0,27496.4,0,27496.4,120,24888,24888,0,,2008-09-04 08:00,2008-09-21 17:00,2008-10-21 08:00,2008-10-20 17:00,,2008-10-02 08:00,2008-10-01 17:00,,,2008-09-04 08:00,2008-09-21 17:00,,,,,PT_Normal,,,,,EkRZ/NWiCU2Uryny6KLvuw,,,,N,27496.4,24888
3480,85379,829,11402,912,1,0,N,N,N,CP_Drtn,TT_Task,DT_FixedDUR2,RV_OK,TK_NotStart,723GL18150,Painting 1st top coat for apartments,2306,584,0,72,0,17325.8,17325.8,72,16432,0,16432,,,,2009-02-08 08:00,2009-02-17 17:00,,2008-11-15 08:00,2008-11-24 17:00,2008-11-15 08:00,2008-11-24 17:00,2008-11-15 08:00,2008-11-24 17:00,,,,,PT_Normal,,,,,b6Us7uWjAkyNTItmkhYAmQ,,,,N,0,0
3481,85380,829,11402,912,1,0,N,N,N,CP_Drtn,TT_Task,DT_FixedDUR2,RV_OK,TK_NotStart,723GL18153,Painting 1st top coat for corridors/lobbies,2306,560,0,48,0,14386.4,14386.4,48,13656,0,13656,,,,2009-02-19 08:00,2009-02-25 17:00,,2008-11-30 08:00,2008-12-06 17:00,2008-11-30 08:00,2008-12-06 17:00,2008-11-30 08:00,2008-12-06 17:00,,,,,PT_Normal,,,,,Jt/h9SejG0GBicvoRxrMjA,,,,N,0,0
3482,85381,829,11402,912,1,0,N,N,N,CP_Drtn,TT_Task,DT_FixedDUR2,RV_OK,TK_NotStart,723GL18155,Painting 1st top coat for service rooms,2306,624,0,48,0,5508,5508,48,5200,0,5200,,,,2009-02-24 08:00,2009-03-02 17:00,,2008-11-25 08:00,2008-12-01 17:00,2008-11-25 08:00,2008-12-01 17:00,2008-11-25 08:00,2008-12-01 17:00,,,,,PT_Normal,,,,,VF75eN3cr0O/Od1eaPTegw,,,,N,0,0
3483,85382,829,10692,912,1,0,N,N,N,CP_Drtn,TT_Task,DT_FixedDUR2,RV_OK,TK_NotStart,723GL18200,Painting final top coat,2306,0,0,32,0,26164.2,26164.2,32,24888,0,24888,,,,2009-03-28 08:00,2009-03-31 17:00,,2009-03-28 08:00,2009-03-31 17:00,2009-03-28 08:00,2009-03-31 17:00,2009-03-28 08:00,2009-03-31 17:00,,,,,PT_Normal,,,,,tUyTIAAOHEGbDQ9Fj95ECw,,,,N,0,0
3484,85383,829,11821,912,1,100,N,N,N,CP_Drtn,TT_Task,DT_FixedDUR2,RV_OK,TK_Complete,723GL20050,Floor tiles for apartments-dry area,2306,272,0,0,14013.34,0,14013.34,120,10291.36,10291.36,0,,2008-09-10 08:00,2008-09-27 17:00,2008-11-11 08:00,2008-11-10 17:00,,2008-10-02 08:00,2008-10-01 17:00,,,2008-09-10 08:00,2008-09-27 17:00,,,,,PT_Normal,,,,,kqoXdm08aUCh6cvju2M4XA,,,,N,14013.34,10291.36
3485,85384,829,11821,912,1,0,N,N,N,CP_Drtn,TT_Task,DT_FixedDUR2,RV_OK,TK_NotStart,723GL20053,Floor tiles for corridors / lobbies,2306,336,0,48,0,4778.2,4778.2,48,3504,0,3504,,,,2008-12-31 08:00,2009-01-06 17:00,,2008-11-12 08:00,2008-11-18 17:00,2008-11-12 08:00,2008-11-18 17:00,2008-11-12 08:00,2008-11-18 17:00,,,,,PT_Normal,,,,,1LObZow/Ukqblx6SYa9UUg,,,,N,0,0
3486,85385,829,11821,912,1,0,N,N,N,CP_Drtn,TT_Task,DT_FixedDUR2,RV_OK,TK_NotStart,723GL20070,Floor tiles for apartments-wet area,2306,128,0,120,0,5682,5682,120,4120,0,4120,,,,2008-11-24 08:00,2008-12-10 17:00,,2008-11-05 08:00,2008-11-22 17:00,2008-11-05 08:00,2008-11-22 17:00,2008-11-05 08:00,2008-11-22 17:00,,,,,PT_Normal,,,,,Fbpts/QxK0eOH0umb7AxGQ,,,,N,0,0
3487,85386,829,11821,912,1,0,N,N,N,CP_Drtn,TT_Task,DT_FixedDUR2,RV_OK,TK_NotStart,723GL20110,Wall tiles for apartments-wet area,2306,288,0,120,0,9360,9360,120,6160,0,6160,,,,2008-12-17 08:00,2009-01-03 17:00,,2008-11-05 08:00,2008-11-22 17:00,2008-11-05 08:00,2008-11-22 17:00,2008-11-05 08:00,2008-11-22 17:00,,,,,PT_Normal,,,,,ajV6RJkTH0WrnNa421uG5A,,,,N,0,0
3488,85387,829,11822,912,1,100,N,N,N,CP_Drtn,TT_Task,DT_FixedDUR2,RV_OK,TK_Complete,723GL22150,W/P for for apartments,2306,360,0,0,5144.4,0,5144.4,120,4568,4568,0,,2008-09-01 08:00,2008-09-17 17:00,2008-11-24 08:00,2008-11-23 17:00,,2008-10-02 08:00,2008-10-01 17:00,,,2008-09-01 08:00,2008-09-17 17:00,,,,,PT_Normal,,,,,PwKZKVgBYE2ePQqZ+f6L7Q,,,,N,5144.4,4568
3489,85388,829,11822,912,1,0,N,N,N,CP_Drtn,TT_Task,DT_FixedDUR2,RV_OK,TK_NotStart,723GL22151,W/P for open to sky areas,2306,792,480,120,0,47103.6,47103.6,120,42712,0,42712,,,,2009-03-21 08:00,2009-04-06 17:00,,2008-11-25 08:00,2008-12-11 17:00,2008-11-25 08:00,2008-12-11 17:00,2008-11-25 08:00,2008-12-11 17:00,,,,,PT_Normal,,,,,lgRAX+A2pEqdsCi4T74HWg,,,,N,0,0
3490,85389,829,11822,912,1,0,N,N,N,CP_Drtn,TT_Task,DT_FixedDUR2,RV_OK,TK_NotStart,723GL22154,W/P for planter boxes,2306,792,0,64,0,1472,1472,64,1280,0,1280,,,,2009-02-04 08:00,2009-02-12 17:00,,2008-10-12 08:00,2008-10-20 17:00,2008-10-12 08:00,2008-10-20 17:00,2008-10-12 08:00,2008-10-20 17:00,,,,,PT_Normal,,,,,6uP1nu544EC5Y3V59cIEIw,,,,N,0,0
3491,85390,829,11614,912,1,60,N,N,N,CP_Drtn,TT_Task,DT_FixedDUR2,RV_OK,TK_Active,723GL24050,Aluminium doors & windows,2306,432,248,48,1761.6,1174.4,2936,120,704,422.4,281.6,,2008-09-22 08:00,,2008-12-04 08:00,2008-12-10 17:00,,2008-10-02 08:00,2008-10-08 17:00,2008-10-02 08:00,2008-10-08 17:00,2008-09-22 08:00,2008-10-08 17:00,,,,,PT_Normal,,,,,uOfoNiKdP0SmtUUzmO3jSw,,,,N,1761.6,422.4
3492,85391,829,11614,912,1,0,N,N,N,CP_Drtn,TT_Task,DT_FixedDUR2,RV_OK,TK_NotStart,723GL24200,Balcony handrails,2306,128,0,120,0,1520,1520,120,800,0,800,,,,2008-12-11 08:00,2008-12-28 17:00,,2008-11-23 08:00,2008-12-09 17:00,2008-11-23 08:00,2008-12-09 17:00,2008-11-23 08:00,2008-12-09 17:00,,,,,PT_Normal,,,,,URiBVYqf9EulESPNrnmP0w,,,,N,0,0
3493,85392,829,11614,912,1,0,N,N,N,CP_Drtn,TT_Task,DT_FixedDUR2,RV_OK,TK_NotStart,723GL24203,Lobby handrails,2306,536,184,64,0,946,946,64,504,0,504,,,,2009-02-05 08:00,2009-02-14 17:00,,2008-11-19 08:00,2008-11-27 17:00,2008-11-19 08:00,2008-11-27 17:00,2008-11-19 08:00,2008-11-27 17:00,,,,,PT_Normal,,,,,9dti1+XIlUWcn/DmDU4Xcw,,,,N,0,0
3494,85393,829,11824,912,1,0,N,N,N,CP_Drtn,TT_Task,DT_FixedDUR2,RV_OK,TK_NotStart,723GL26050,Steel doors,2306,624,0,48,0,528,528,48,96,0,96,,,,2009-02-17 08:00,2009-02-23 17:00,,2008-11-18 08:00,2008-11-24 17:00,2008-11-18 08:00,2008-11-24 17:00,2008-11-18 08:00,2008-11-24 17:00,,,,,PT_Normal,,,,,hUvU/wpU9kiDKFce8+Lp8g,,,,N,0,0
3495,85394,829,11825,912,1,6.9,N,N,N,CP_Drtn,TT_Task,DT_FixedDUR2,RV_OK,TK_Active,723GL30050,Wooden doors,2306,272,16,432,196.12,2647.88,2844,464,680,46.88,633.12,,2008-09-28 08:00,,2008-11-11 08:00,2009-01-12 17:00,,2008-10-02 08:00,2008-12-03 17:00,2008-10-02 08:00,2008-12-03 17:00,2008-09-28 08:00,2008-12-03 17:00,,,,,PT_Normal,,,,,HICLq2olVEq3U6ofZBghfQ,,,,N,196.12,46.88
3496,85395,829,11617,912,1,0,N,N,N,CP_Drtn,TT_Task,DT_FixedDUR2,RV_OK,TK_NotStart,723GL32050,Kitchen cabinets,2306,496,496,160,0,4376,4376,160,136,0,136,,,,2009-01-28 08:00,2009-02-19 17:00,,2008-11-17 08:00,2008-12-09 17:00,2008-11-17 08:00,2008-12-09 17:00,2008-11-17 08:00,2008-12-09 17:00,,,,,PT_Normal,,,,,M23Z+oJ7bUysf/xWKCKrwg,,,,N,0,0
3497,85396,829,11617,912,1,0,N,N,N,CP_Drtn,TT_Task,DT_FixedDUR2,RV_OK,TK_NotStart,723GL32100,Vanity counters,2306,160,0,120,0,3112,3112,120,272,0,272,,,,2008-12-16 08:00,2009-01-01 17:00,,2008-11-23 08:00,2008-12-09 17:00,2008-11-23 08:00,2008-12-09 17:00,2008-11-23 08:00,2008-12-09 17:00,,,,,PT_Normal,,,,,AzVg0VuFAk2PA3ALH9SBEQ,,,,N,0,0
3498,85397,829,11617,912,1,0,N,N,N,CP_Drtn,TT_Task,DT_FixedDUR2,RV_OK,TK_NotStart,723GL32150,Wardrobes,2306,592,592,160,0,3688,3688,160,168,0,168,,,,2009-01-28 08:00,2009-02-19 17:00,,2008-11-03 08:00,2008-11-25 17:00,2008-11-03 08:00,2008-11-25 17:00,2008-11-03 08:00,2008-11-25 17:00,,,,,PT_Normal,,,,,GBMy9ezJUEe07xt4Tyd7FQ,,,,N,0,0
3499,85398,829,11827,912,1,0,N,N,N,CP_Drtn,TT_Task,DT_FixedDUR2,RV_OK,TK_NotStart,723GL34050,False ceiling works for apartments-dry area,2306,336,0,160,0,1506.16,1506.16,160,897.44,0,897.44,,,,2008-12-10 08:00,2009-01-01 17:00,,2008-10-22 08:00,2008-11-13 17:00,2008-10-22 08:00,2008-11-13 17:00,2008-10-22 08:00,2008-11-13 17:00,,,,,PT_Normal,,,,,0N+3LcndVk2qUMpQbh1tTA,,,,N,0,0
3500,85399,829,11827,912,1,0,N,N,N,CP_Drtn,TT_Task,DT_FixedDUR2,RV_OK,TK_NotStart,723GL34053,False ceiling works for corridors/lobbies,2306,336,0,72,0,9876,9876,72,6536,0,6536,,,,2008-12-23 08:00,2009-01-01 17:00,,2008-11-04 08:00,2008-11-13 17:00,2008-11-04 08:00,2008-11-13 17:00,2008-11-04 08:00,2008-11-13 17:00,,,,,PT_Normal,,,,,/U3SMels+kCaFH+qxEKgCg,,,,N,0,0
3501,85400,829,11827,912,1,0,N,N,N,CP_Drtn,TT_Task,DT_FixedDUR2,RV_OK,TK_NotStart,723GL34070,False ceiling works for apartments-wet area,2306,128,0,160,0,709.84,709.84,160,366.56,0,366.56,,,,2008-11-10 08:00,2008-12-02 17:00,,2008-10-22 08:00,2008-11-13 17:00,2008-10-22 08:00,2008-11-13 17:00,2008-10-22 08:00,2008-11-13 17:00,,,,,PT_Normal,,,,,PUjhY626qk6X+K1gKW+X6g,,,,N,0,0
3502,85401,829,11828,912,1,0,N,N,N,CP_Drtn,TT_Task,DT_FixedDUR2,RV_OK,TK_NotStart,723GL36050,Stone finishing top,2306,288,8,64,0,526,526,64,264,0,264,,,,2009-01-03 08:00,2009-01-11 17:00,,2008-11-22 08:00,2008-11-30 17:00,2008-11-22 08:00,2008-11-30 17:00,2008-11-22 08:00,2008-11-30 17:00,,,,,PT_Normal,,,,,hs3C4kVP+0ahEVE/eUDAMQ,,,,N,0,0
3503,85402,829,11828,912,1,0,N,N,N,CP_Drtn,TT_Task,DT_FixedDUR2,RV_OK,TK_NotStart,723GL36100,Thresholds,2306,256,0,176,0,1016,1016,176,560,0,560,,,,2008-12-22 08:00,2009-01-15 17:00,,2008-11-15 08:00,2008-12-09 17:00,2008-11-15 08:00,2008-12-09 17:00,2008-11-15 08:00,2008-12-09 17:00,,,,,PT_Normal,,,,,9fKr+lKEC0GKbauPA25W8g,,,,N,0,0
3504,85403,829,11620,912,1,0,N,N,N,CP_Drtn,TT_Task,DT_FixedDUR2,RV_OK,TK_NotStart,723GL38100,Epoxy coating system,2306,624,464,48,0,1152,1152,48,920,0,920,,,,2009-03-09 08:00,2009-03-15 17:00,,2008-12-08 08:00,2008-12-14 17:00,2008-12-08 08:00,2008-12-14 17:00,2008-12-08 08:00,2008-12-14 17:00,,,,,PT_Normal,,,,,UxvZz4l74kmusYKMug1jZg,,,,N,0,0
3505,85404,829,11721,912,1,0,N,N,N,CP_Drtn,TT_Task,DT_FixedDUR2,RV_OK,TK_NotStart,723GL40050,Duplex apartment stairs,2306,336,0,120,0,5356,5356,120,136,0,136,,,,2008-12-04 08:00,2008-12-21 17:00,,2008-10-16 08:00,2008-11-02 17:00,2008-10-16 08:00,2008-11-02 17:00,2008-10-16 08:00,2008-11-02 17:00,,,,,PT_Normal,,,,,LVsh15i/PECafzoLe+0Ncw,,,,N,0,0
3506,85405,829,11721,912,1,0,N,N,N,CP_Drtn,TT_Task,DT_FixedDUR2,RV_OK,TK_NotStart,723GL40100,Wooden steps for Duplex staircase,2306,336,0,120,0,1004,1004,120,104,0,104,,,,2008-12-16 08:00,2009-01-01 17:00,,2008-10-28 08:00,2008-11-13 17:00,2008-10-28 08:00,2008-11-13 17:00,2008-10-28 08:00,2008-11-13 17:00,,,,,PT_Normal,,,,,gvlE+6d6tkuSxnJ1XLyknA,,,,N,0,0
3507,85406,829,11721,912,1,0,N,N,N,CP_Drtn,TT_Task,DT_FixedDUR2,RV_OK,TK_NotStart,723GL40150,Duplex stair railings,2306,336,144,120,0,6480,6480,120,2544,0,2544,,,,2008-12-28 08:00,2009-01-13 17:00,,2008-11-09 08:00,2008-11-25 17:00,2008-11-09 08:00,2008-11-25 17:00,2008-11-09 08:00,2008-11-25 17:00,,,,,PT_Normal,,,,,v6uYNpeBQkWb4pbBTe5p/g,,,,N,0,0
3508,85407,829,11831,912,1,0,N,N,N,CP_Drtn,TT_Task,DT_FixedDUR2,RV_OK,TK_NotStart,723GL42050,Signage works,2306,632,472,48,0,197.8,197.8,48,136,0,136,,,,2009-03-09 08:00,2009-03-15 17:00,,2008-12-07 08:00,2008-12-13 17:00,2008-12-07 08:00,2008-12-13 17:00,2008-12-07 08:00,2008-12-13 17:00,,,,,PT_Normal,,,,,e55zHSPF4ECIZ0+53cTwYQ,,,,N,0,0
3509,85408,829,11832,912,1,100,N,N,N,CP_Drtn,TT_Task,DT_FixedDUR2,RV_OK,TK_Complete,723GL44050,Sub-frames,2306,128,0,0,1480,0,1480,120,680,680,0,,2008-08-21 08:00,2008-09-07 17:00,2008-10-21 08:00,2008-10-20 17:00,,2008-10-02 08:00,2008-10-01 17:00,,,2008-08-21 08:00,2008-09-07 17:00,,,,,PT_Normal,,,,,NB5KPuUiU0CZloZQRA11Zw,,,,N,1480,680
3510,85409,829,12610,912,1,100,N,N,N,CP_Drtn,TT_Task,DT_FixedDUR2,RV_OK,TK_Complete,723GL50100,MEP skeleton embedded provisions,2296,0,0,0,512,0,512,72,,,0,,2008-06-29 08:00,2008-07-08 17:00,2008-10-02 08:00,2008-10-01 17:00,,2008-10-02 08:00,2008-10-01 17:00,,,2008-06-29 08:00,2008-07-08 17:00,,,,,PT_Normal,,,,,Qt1xiGnTZ0KAl2QSCGY3Vg,,,,N,512,0
3511,85410,829,12612,912,1,100,N,N,N,CP_Drtn,TT_Task,DT_FixedDUR2,RV_OK,TK_Complete,723GL52050,A/C duct works,2296,264,0,0,831,0,831,160,,,0,,2008-08-26 08:00,2008-09-17 17:00,2008-11-10 08:00,2008-11-09 17:00,,2008-10-02 08:00,2008-10-01 17:00,,,2008-08-26 08:00,2008-09-17 17:00,,,,,PT_Normal,,,,,AuNkqPgSv0q5EbSSUtvKIQ,,,,N,831,0
3512,85411,829,12612,912,1,100,N,N,N,CP_Drtn,TT_Task,DT_FixedDUR2,RV_OK,TK_Complete,723GL52100,Chilled water pipe works,2296,240,0,0,787,0,787,72,,,0,,2008-09-08 08:00,2008-09-17 17:00,2008-11-06 08:00,2008-11-05 17:00,,2008-10-02 08:00,2008-10-01 17:00,,,2008-09-08 08:00,2008-09-17 17:00,,,,,PT_Normal,,,,,yWukLY5Y2k+bplbg+zefUQ,,,,N,787,0
3513,85412,829,12613,912,1,100,N,N,N,CP_Drtn,TT_Task,DT_FixedDUR2,RV_OK,TK_Complete,723GL52150,FCU's hanging,2296,264,0,0,935.2,0,935.2,64,,,0,,2008-09-07 08:00,2008-09-15 17:00,2008-11-10 08:00,2008-11-09 17:00,,2008-10-02 08:00,2008-10-01 17:00,,,2008-09-07 08:00,2008-09-15 17:00,,,,,PT_Normal,,,,,cpK3v9OfQk6G3AjrGlcezQ,,,,N,935.2,0
3514,85413,829,12613,912,1,60,N,N,N,CP_Drtn,TT_Task,DT_FixedDUR2,RV_OK,TK_Active,723GL52300,FCU's assembly & duct connections,2296,216,88,48,594.72,396.48,991.2,120,,,,,2008-09-22 08:00,,2008-11-03 08:00,2008-11-09 17:00,,2008-10-02 08:00,2008-10-08 17:00,2008-10-02 08:00,2008-10-08 17:00,2008-09-22 08:00,2008-10-08 17:00,,,,,PT_Normal,,,,,zcO/07lh/UWEsH33JZ4r1g,,,,N,594.72,0
3515,85414,829,12613,912,1,0,N,N,N,CP_Drtn,TT_Task,DT_FixedDUR2,RV_OK,TK_NotStart,723GL52350,Grills & diffusers,2296,648,400,352,0,1144,1144,352,0,0,0,,,,2009-01-06 08:00,2009-02-25 17:00,,2008-10-04 08:00,2008-11-23 17:00,2008-10-04 08:00,2008-11-23 17:00,2008-10-04 08:00,2008-11-23 17:00,,,,,PT_Normal,,,,,ey4fBhmglEeaXI/Sc9jj1A,,,,N,0,0
3516,85415,829,12612,912,1,100,N,N,N,CP_Drtn,TT_Task,DT_FixedDUR2,RV_OK,TK_Complete,723GL52550,A/C duct risers,2296,216,0,0,1626,0,1626,64,,,0,,2008-09-13 08:00,2008-09-21 17:00,2008-11-03 08:00,2008-11-02 17:00,,2008-10-02 08:00,2008-10-01 17:00,,,2008-09-13 08:00,2008-09-21 17:00,,,,,PT_Normal,,,,,Ro9Jd10jNkuT1kMvjiUTdQ,,,,N,1626,0
3517,85416,829,12615,912,1,100,N,N,N,CP_Drtn,TT_Task,DT_FixedDUR2,RV_OK,TK_Complete,723GL54050,Chasing & Pex pipe works,2296,264,0,0,395,0,395,120,,,0,,2008-08-26 08:00,2008-09-11 17:00,2008-11-10 08:00,2008-11-09 17:00,,2008-10-02 08:00,2008-10-01 17:00,,,2008-08-26 08:00,2008-09-11 17:00,,,,,PT_Normal,,,,,6chAvxV2ZEGZuycgsUEtUg,,,,N,395,0
3518,85417,829,12615,912,1,100,N,N,N,CP_Drtn,TT_Task,DT_FixedDUR2,RV_OK,TK_Complete,723GL54100,Over head distribution water pipe network,2296,264,0,0,8314,0,8314,64,,,0,,2008-09-08 08:00,2008-09-16 17:00,2008-11-10 08:00,2008-11-09 17:00,,2008-10-02 08:00,2008-10-01 17:00,,,2008-09-08 08:00,2008-09-16 17:00,,,,,PT_Normal,,,,,h+va812vaEW6TEjIJURhPw,,,,N,8314,0
3519,85418,829,12617,912,1,0,N,N,N,CP_Drtn,TT_Task,DT_FixedDUR2,RV_OK,TK_NotStart,723GL54150,Water meter cabinet pipe works,2296,832,272,120,0,340,340,120,0,0,0,,,,2009-02-02 08:00,2009-02-18 17:00,,2008-10-04 08:00,2008-10-20 17:00,2008-10-04 08:00,2008-10-20 17:00,2008-10-04 08:00,2008-10-20 17:00,,,,,PT_Normal,,,,,9mY1UTpDN0OQFXVGgILLWA,,,,N,0,0
3520,85419,829,12616,912,1,100,N,N,N,CP_Drtn,TT_Task,DT_FixedDUR2,RV_OK,TK_Complete,723GL54250,Bathtubs,2296,416,0,0,216.8,0,313.6,120,,96.8,0,,2008-09-07 08:00,2008-09-23 17:00,2008-12-02 08:00,2008-12-01 17:00,,2008-10-02 08:00,2008-10-01 17:00,,,2008-09-07 08:00,2008-09-23 17:00,,,,,PT_Normal,,,,,KvGTGe6cMEai3qDNFR7rwQ,,,,N,216.8,96.8
3521,85420,829,12616,912,1,100,N,N,N,CP_Drtn,TT_Task,DT_FixedDUR2,RV_OK,TK_Complete,723GL54300,Water heater,2296,264,0,0,310.4,0,310.4,64,,,0,,2008-09-13 08:00,2008-09-21 17:00,2008-11-10 08:00,2008-11-09 17:00,,2008-10-02 08:00,2008-10-01 17:00,,,2008-09-13 08:00,2008-09-21 17:00,,,,,PT_Normal,,,,,OT+xp/Pw3Eynjv8P7Mn6pA,,,,N,310.4,0
3522,85421,829,12616,912,1,100,N,N,N,CP_Drtn,TT_Task,DT_FixedDUR2,RV_OK,TK_Complete,723GL54350,Over head pipe assembly & vlave connections,2296,264,0,0,237,0,237,72,,,0,,2008-09-17 08:00,2008-09-27 17:00,2008-11-10 08:00,2008-11-09 17:00,,2008-10-02 08:00,2008-10-01 17:00,,,2008-09-17 08:00,2008-09-27 17:00,,,,,PT_Normal,,,,,WCWR9QFYFUevoeepW6p8bw,,,,N,237,0
3523,85422,829,12617,912,1,0,N,N,N,CP_Drtn,TT_Task,DT_FixedDUR2,RV_OK,TK_NotStart,723GL54400,Sanitary fixures,2296,288,0,120,0,516,516,120,0,0,0,,,,2008-12-25 08:00,2009-01-11 17:00,,2008-11-13 08:00,2008-11-30 17:00,2008-11-13 08:00,2008-11-30 17:00,2008-11-13 08:00,2008-11-30 17:00,,,,,PT_Normal,,,,,ehA99fI3lUG1ffi2K23k3w,,,,N,0,0
3524,85423,829,12617,912,1,0,N,N,N,CP_Drtn,TT_Task,DT_FixedDUR2,RV_OK,TK_NotStart,723GL54450,Mirrors,2296,200,40,120,0,186,186,120,0,0,0,,,,2008-12-28 08:00,2009-01-13 17:00,,2008-11-29 08:00,2008-12-15 17:00,2008-11-29 08:00,2008-12-15 17:00,2008-11-29 08:00,2008-12-15 17:00,,,,,PT_Normal,,,,,Zg9ih0P/tEyUqk4+hT0OCg,,,,N,0,0
3525,85424,829,12616,912,1,100,N,N,N,CP_Drtn,TT_Task,DT_FixedDUR2,RV_OK,TK_Complete,723GL54500,Concealed Flushing Cistern,2296,416,0,0,186,0,252,120,,66,0,,2008-09-07 08:00,2008-09-23 17:00,2008-12-02 08:00,2008-12-01 17:00,,2008-10-02 08:00,2008-10-01 17:00,,,2008-09-07 08:00,2008-09-23 17:00,,,,,PT_Normal,,,,,YyYML0zvb0WGmN+EtMBNGQ,,,,N,186,66
3526,85425,829,12619,912,1,100,N,N,N,CP_Drtn,TT_Task,DT_FixedDUR2,RV_OK,TK_Complete,723GL56050,Chasing and installation of drainage pipes,2296,216,0,0,285,0,285,120,,,0,,2008-08-26 08:00,2008-09-11 17:00,2008-11-03 08:00,2008-11-02 17:00,,2008-10-02 08:00,2008-10-01 17:00,,,2008-08-26 08:00,2008-09-11 17:00,,,,,PT_Normal,,,,,wEU/vswp7km7NKlORbRjSw,,,,N,285,0
3527,85426,829,12619,912,1,100,N,N,N,CP_Drtn,TT_Task,DT_FixedDUR2,RV_OK,TK_Complete,723GL56100,Drainage riser pipes,2296,256,0,0,284,0,284,64,,,0,,2008-08-23 08:00,2008-08-31 17:00,2008-11-09 08:00,2008-11-08 17:00,,2008-10-02 08:00,2008-10-01 17:00,,,2008-08-23 08:00,2008-08-31 17:00,,,,,PT_Normal,,,,,7IwDvbx5Z0iSnWrDJBYgUA,,,,N,284,0
3528,85427,829,12620,912,1,87.5,N,N,N,CP_Drtn,TT_Task,DT_FixedDUR2,RV_OK,TK_Active,723GL56150,Over head drainage pipe works,2296,256,128,8,225.4,32.2,257.6,64,,,,,2008-09-24 08:00,,2008-11-09 08:00,2008-11-09 17:00,,2008-10-02 08:00,2008-10-02 17:00,2008-10-02 08:00,2008-10-02 17:00,2008-09-24 08:00,2008-10-02 17:00,,,,,PT_Normal,,,,,RAfrEMLNXUuJ5rqS7pJokg,,,,N,225.4,0
3529,85428,829,12622,912,1,100,N,N,N,CP_Drtn,TT_Task,DT_FixedDUR2,RV_OK,TK_Complete,723GL58050,Fire fighting pipe works,2296,264,0,0,292,0,292,72,,,0,,2008-09-01 08:00,2008-09-10 17:00,2008-11-10 08:00,2008-11-09 17:00,,2008-10-02 08:00,2008-10-01 17:00,,,2008-09-01 08:00,2008-09-10 17:00,,,,,PT_Normal,,,,,lihi7Hlj/0mYAmVCeDxidw,,,,N,292,0
3530,85429,829,12623,912,1,0,N,N,N,CP_Drtn,TT_Task,DT_FixedDUR2,RV_OK,TK_NotStart,723GL58200,Fire cabinet complete,2296,600,344,64,0,339,339,64,0,0,0,,,,2009-03-07 08:00,2009-03-15 17:00,,2008-12-09 08:00,2008-12-17 17:00,2008-12-09 08:00,2008-12-17 17:00,2008-12-09 08:00,2008-12-17 17:00,,,,,PT_Normal,,,,,GfkplvKWEUG3jtEQEppbEQ,,,,N,0,0
3531,85430,829,12623,912,1,0,N,N,N,CP_Drtn,TT_Task,DT_FixedDUR2,RV_OK,TK_NotStart,723GL58250,Sprinkler heads,2296,592,384,120,0,450,450,120,0,0,0,,,,2009-02-09 08:00,2009-02-25 17:00,,2008-11-15 08:00,2008-12-01 17:00,2008-11-15 08:00,2008-12-01 17:00,2008-11-15 08:00,2008-12-01 17:00,,,,,PT_Normal,,,,,OtC3mTE/Z06Lhl+6X3QjQg,,,,N,0,0
3532,85431,829,12625,912,1,77.8,N,N,N,CP_Drtn,TT_Task,DT_FixedDUR2,RV_OK,TK_Active,723GL60050,LPG piping,2296,792,0,16,227.12,64.88,292,72,,,,,2008-09-24 08:00,,2009-01-26 08:00,2009-01-27 17:00,,2008-10-02 08:00,2008-10-04 17:00,2008-10-02 08:00,2008-10-04 17:00,2008-09-24 08:00,2008-10-04 17:00,,,,,PT_Normal,,,,,Dp2DybaYckusJ3YOTO6/+w,,,,N,227.12,0
3533,85432,829,12626,912,1,0,N,N,N,CP_Drtn,TT_Task,DT_FixedDUR2,RV_OK,TK_NotStart,723GL60100,Gas meter & leak detector,2296,880,552,72,0,248,248,72,0,0,0,,,,2009-02-10 08:00,2009-02-19 17:00,,2008-10-05 08:00,2008-10-14 17:00,2008-10-05 08:00,2008-10-14 17:00,2008-10-05 08:00,2008-10-14 17:00,,,,,PT_Normal,,,,,qxR9mVllfkiXkmtXs00j8Q,,,,N,0,0
3534,85433,829,12628,912,1,0,N,N,N,CP_Drtn,TT_Task,DT_FixedDUR2,RV_OK,TK_NotStart,723GL62050,BMS cabling,2296,168,40,64,0,486.4,486.4,64,0,0,0,,,,2008-11-01 08:00,2008-11-09 17:00,,2008-10-07 08:00,2008-10-15 17:00,2008-10-07 08:00,2008-10-15 17:00,2008-10-07 08:00,2008-10-15 17:00,,,,,PT_Normal,,,,,O4CxFrpM/EuPAnHWfPQnrg,,,,N,0,0
3535,85434,829,12629,912,1,0,N,N,N,CP_Drtn,TT_Task,DT_FixedDUR2,RV_OK,TK_NotStart,723GL62100,DGC & cable termination to equipments,2296,624,0,48,0,329.6,329.6,48,0,0,0,,,,2009-03-03 08:00,2009-03-09 17:00,,2008-12-02 08:00,2008-12-08 17:00,2008-12-02 08:00,2008-12-08 17:00,2008-12-02 08:00,2008-12-08 17:00,,,,,PT_Normal,,,,,cemVKGmyvEOACkccY3q46g,,,,N,0,0
3536,85435,829,12631,912,1,100,N,N,N,CP_Drtn,TT_Task,DT_FixedDUR2,RV_OK,TK_Complete,723GL66050,Chasing and installation of conduits,2296,128,0,0,2091.2,0,2091.2,120,,,0,,2008-08-24 08:00,2008-09-09 17:00,2008-10-21 08:00,2008-10-20 17:00,,2008-10-02 08:00,2008-10-01 17:00,,,2008-08-24 08:00,2008-09-09 17:00,,,,,PT_Normal,,,,,Aoe30IpS8USNM6D+Ww/m7w,,,,N,2091.2,0
3537,85436,829,12631,912,1,40,N,N,N,CP_Drtn,TT_Task,DT_FixedDUR2,RV_OK,TK_Active,723GL66100,Cable trays & trunking,2296,128,0,72,611.2,916.8,1528,120,,,,,2008-09-25 08:00,,2008-10-21 08:00,2008-10-30 17:00,,2008-10-02 08:00,2008-10-12 17:00,2008-10-02 08:00,2008-10-12 17:00,2008-09-25 08:00,2008-10-12 17:00,,,,,PT_Normal,,,,,LNrbvNIGk02PzCb1P2v0UA,,,,N,611.2,0
3538,85437,829,12633,912,1,100,N,N,N,CP_Drtn,TT_Task,DT_FixedDUR2,RV_OK,TK_Complete,723GL68050,Single core wiring,2296,264,0,0,1339.2,0,1339.2,72,,,0,,2008-08-26 08:00,2008-09-04 17:00,2008-11-10 08:00,2008-11-09 17:00,,2008-10-02 08:00,2008-10-01 17:00,,,2008-08-26 08:00,2008-09-04 17:00,,,,,PT_Normal,,,,,IfRsVvf780yWAlnwoa4Odw,,,,N,1339.2,0
3539,85438,829,12634,912,1,100,N,N,N,CP_Drtn,TT_Task,DT_FixedDUR2,RV_OK,TK_Complete,723GL68100,DB enclosure,2296,128,0,0,486.4,0,486.4,64,,,0,,2008-09-01 08:00,2008-09-09 17:00,2008-10-21 08:00,2008-10-20 17:00,,2008-10-02 08:00,2008-10-01 17:00,,,2008-09-01 08:00,2008-09-09 17:00,,,,,PT_Normal,,,,,oj3WJQiCzEG+mi/3qxJ/Yg,,,,N,486.4,0
3540,85439,829,12634,912,1,0,N,N,N,CP_Drtn,TT_Task,DT_FixedDUR2,RV_OK,TK_NotStart,723GL68150,LV feeder cables,2296,200,40,72,0,2888,2888,72,0,0,0,,,,2008-11-11 08:00,2008-11-20 17:00,,2008-10-13 08:00,2008-10-22 17:00,2008-10-13 08:00,2008-10-22 17:00,2008-10-13 08:00,2008-10-22 17:00,,,,,PT_Normal,,,,,sd9dmyvwQ0KkTQLUFCGfDw,,,,N,0,0
3541,85440,829,12635,912,1,0,N,N,N,CP_Drtn,TT_Task,DT_FixedDUR2,RV_OK,TK_NotStart,723GL68250,DB-breakers assembly,2296,600,504,72,0,635.2,635.2,72,0,0,0,,,,2009-02-10 08:00,2009-02-19 17:00,,2008-11-15 08:00,2008-11-24 17:00,2008-11-15 08:00,2008-11-24 17:00,2008-11-15 08:00,2008-11-24 17:00,,,,,PT_Normal,,,,,sjtSJW2hS06mT3+FoxHLpA,,,,N,0,0
3542,85441,829,12635,912,1,0,N,N,N,CP_Drtn,TT_Task,DT_FixedDUR2,RV_OK,TK_NotStart,723GL68300,SMDB,2296,624,0,48,0,1456,1456,48,0,0,0,,,,2009-03-02 08:00,2009-03-08 17:00,,2008-12-01 08:00,2008-12-07 17:00,2008-12-01 08:00,2008-12-07 17:00,2008-12-01 08:00,2008-12-07 17:00,,,,,PT_Normal,,,,,V1uUWfYf/UC+dEdjfV01OA,,,,N,0,0
3543,85442,829,12635,912,1,0,N,N,N,CP_Drtn,TT_Task,DT_FixedDUR2,RV_OK,TK_NotStart,723GL68350,Light Fittings,2296,592,496,352,0,1337.6,1337.6,352,0,0,0,,,,2008-12-31 08:00,2009-02-19 17:00,,2008-10-06 08:00,2008-11-25 17:00,2008-10-06 08:00,2008-11-25 17:00,2008-10-06 08:00,2008-11-25 17:00,,,,,PT_Normal,,,,,zPpYIOBQe0+35BrO6XpxTQ,,,,N,0,0
3544,85443,829,12635,912,1,0,N,N,N,CP_Drtn,TT_Task,DT_FixedDUR2,RV_OK,TK_NotStart,723GL68400,Lighting Control Panels,2296,632,384,64,0,275.2,275.2,64,0,0,0,,,,2009-03-05 08:00,2009-03-14 17:00,,2008-12-03 08:00,2008-12-11 17:00,2008-12-03 08:00,2008-12-11 17:00,2008-12-03 08:00,2008-12-11 17:00,,,,,PT_Normal,,,,,aXj+c7+htUC3YkIZLsfQBw,,,,N,0,0
3545,85444,829,12635,912,1,0,N,N,N,CP_Drtn,TT_Task,DT_FixedDUR2,RV_OK,TK_NotStart,723GL68600,Switches & sockets,2296,600,504,72,0,494.4,494.4,72,0,0,0,,,,2009-02-10 08:00,2009-02-19 17:00,,2008-11-15 08:00,2008-11-24 17:00,2008-11-15 08:00,2008-11-24 17:00,2008-11-15 08:00,2008-11-24 17:00,,,,,PT_Normal,,,,,644X0ZfPkkqkKlEW7WvW1A,,,,N,0,0
3546,85445,829,12637,912,1,100,N,N,N,CP_Drtn,TT_Task,DT_FixedDUR2,RV_OK,TK_Complete,723GL70050,Central Battery cables,2296,264,0,0,345.6,0,345.6,64,,,0,,2008-09-01 08:00,2008-09-09 17:00,2008-11-10 08:00,2008-11-09 17:00,,2008-10-02 08:00,2008-10-01 17:00,,,2008-09-01 08:00,2008-09-09 17:00,,,,,PT_Normal,,,,,qdjUgm0gF0qq/a4FGNgxLA,,,,N,345.6,0
3547,85446,829,12638,912,1,0,N,N,N,CP_Drtn,TT_Task,DT_FixedDUR2,RV_OK,TK_NotStart,723GL70150,Emergency & exit light fittings,2296,728,400,48,0,188.8,188.8,48,0,0,0,,,,2009-03-05 08:00,2009-03-11 17:00,,2008-11-19 08:00,2008-11-25 17:00,2008-11-19 08:00,2008-11-25 17:00,2008-11-19 08:00,2008-11-25 17:00,,,,,PT_Normal,,,,,mkEQxoHDREusjD3AGRZbcw,,,,N,0,0
3548,85447,829,12640,912,1,0,N,N,N,CP_Drtn,TT_Task,DT_FixedDUR2,RV_OK,TK_NotStart,723GL72050,CCTV system cables,2296,208,80,64,0,204.8,204.8,64,0,0,0,,,,2008-11-12 08:00,2008-11-20 17:00,,2008-10-13 08:00,2008-10-21 17:00,2008-10-13 08:00,2008-10-21 17:00,2008-10-13 08:00,2008-10-21 17:00,,,,,PT_Normal,,,,,w39ZUzbNR0OvI8F3Dh6Gfw,,,,N,0,0
3549,85448,829,12641,912,1,0,N,N,N,CP_Drtn,TT_Task,DT_FixedDUR2,RV_OK,TK_NotStart,723GL72100,CCTV system equipments,2296,632,88,48,0,118.4,118.4,48,0,0,0,,,,2009-03-09 08:00,2009-03-15 17:00,,2008-12-07 08:00,2008-12-13 17:00,2008-12-07 08:00,2008-12-13 17:00,2008-12-07 08:00,2008-12-13 17:00,,,,,PT_Normal,,,,,upuuR+7KBUWpRO7SO1eIgQ,,,,N,0,0
3550,85449,829,12640,912,1,0,N,N,N,CP_Drtn,TT_Task,DT_FixedDUR2,RV_OK,TK_NotStart,723GL72200,Intercom system cables,2296,128,0,64,0,697.6,697.6,64,0,0,0,,,,2008-11-01 08:00,2008-11-09 17:00,,2008-10-13 08:00,2008-10-21 17:00,2008-10-13 08:00,2008-10-21 17:00,2008-10-13 08:00,2008-10-21 17:00,,,,,PT_Normal,,,,,61OU5F+2ME+0En3bsTDU8A,,,,N,0,0
3551,85450,829,12641,912,1,0,N,N,N,CP_Drtn,TT_Task,DT_FixedDUR2,RV_OK,TK_NotStart,723GL72250,Intercom system equipments,2296,584,200,64,0,908.8,908.8,64,0,0,0,,,,2009-02-11 08:00,2009-02-19 17:00,,2008-11-18 08:00,2008-11-26 17:00,2008-11-18 08:00,2008-11-26 17:00,2008-11-18 08:00,2008-11-26 17:00,,,,,PT_Normal,,,,,7PFYa358E0e/9dooMwW6Zg,,,,N,0,0
3552,85451,829,12643,912,1,100,N,N,N,CP_Drtn,TT_Task,DT_FixedDUR2,RV_OK,TK_Complete,723GL74050,Fire alarm cables,2296,264,0,0,380.8,0,380.8,64,,,0,,2008-09-01 08:00,2008-09-09 17:00,2008-11-10 08:00,2008-11-09 17:00,,2008-10-02 08:00,2008-10-01 17:00,,,2008-09-01 08:00,2008-09-09 17:00,,,,,PT_Normal,,,,,Op+Iqd0RDkOSERc8vIy3QA,,,,N,380.8,0
3553,85452,829,12644,912,1,0,N,N,N,CP_Drtn,TT_Task,DT_FixedDUR2,RV_OK,TK_NotStart,723GL74100,Fire alarm fittings,2296,560,368,352,0,404.8,404.8,352,0,0,0,,,,2009-01-06 08:00,2009-02-25 17:00,,2008-10-16 08:00,2008-12-06 17:00,2008-10-16 08:00,2008-12-06 17:00,2008-10-16 08:00,2008-12-06 17:00,,,,,PT_Normal,,,,,zDppiAh00kGVqYqCvUX45w,,,,N,0,0
3554,85453,829,12644,912,1,0,N,N,N,CP_Drtn,TT_Task,DT_FixedDUR2,RV_OK,TK_NotStart,723GL74150,Fire alarm control panels,2296,560,368,48,0,188.8,188.8,48,0,0,0,,,,2009-02-19 08:00,2009-02-25 17:00,,2008-11-30 08:00,2008-12-06 17:00,2008-11-30 08:00,2008-12-06 17:00,2008-11-30 08:00,2008-12-06 17:00,,,,,PT_Normal,,,,,E9w0QdjRakevQ8FnMy4m2A,,,,N,0,0
3555,85454,829,12646,912,1,0,N,N,N,CP_Drtn,TT_Task,DT_FixedDUR2,RV_OK,TK_NotStart,723GL76050,Structured cabling,2296,168,40,64,0,345.6,345.6,64,0,0,0,,,,2008-11-03 08:00,2008-11-11 17:00,,2008-10-09 08:00,2008-10-18 17:00,2008-10-09 08:00,2008-10-18 17:00,2008-10-09 08:00,2008-10-18 17:00,,,,,PT_Normal,,,,,zA8gwmhfD0GWmSThcFSkMQ,,,,N,0,0
3556,85455,829,12647,912,1,0,N,N,N,CP_Drtn,TT_Task,DT_FixedDUR2,RV_OK,TK_NotStart,723GL76100,Consolidated pionts,2296,128,0,64,0,627.2,627.2,64,0,0,0,,,,2008-11-12 08:00,2008-11-20 17:00,,2008-10-25 08:00,2008-11-02 17:00,2008-10-25 08:00,2008-11-02 17:00,2008-10-25 08:00,2008-11-02 17:00,,,,,PT_Normal,,,,,NHgFmB7VlUWtWV3ACtP1zQ,,,,N,0,0
3557,85456,829,11910,912,1,0,N,N,N,CP_Drtn,TT_Task,DT_FixedDUR2,RV_OK,TK_NotStart,723GR20050,Floor tiles for garbage rooms,2306,312,0,120,0,1254,1254,120,840,0,840,,,,2009-03-09 08:00,2009-03-25 17:00,,2009-01-22 08:00,2009-02-08 17:00,2009-01-22 08:00,2009-02-08 17:00,2009-01-22 08:00,2009-02-08 17:00,,,,,PT_Normal,,,,,jPiSCu3eXkmVlj/piBhFTQ,,,,N,0,0
3558,85457,829,11910,912,1,0,N,N,N,CP_Drtn,TT_Task,DT_FixedDUR2,RV_OK,TK_NotStart,723GR20100,Wall tiles for garbage rooms,2306,312,0,120,0,744,744,120,416,0,416,,,,2009-02-02 08:00,2009-02-18 17:00,,2008-12-18 08:00,2009-01-04 17:00,2008-12-18 08:00,2009-01-04 17:00,2008-12-18 08:00,2009-01-04 17:00,,,,,PT_Normal,,,,,CHY/XhjIUEeWErfr+IfJdQ,,,,N,0,0
3559,85458,829,11802,912,1,0,N,N,N,CP_Drtn,TT_Task,DT_FixedDUR2,RV_OK,TK_NotStart,723GR22150,W/P for garbage room,2306,312,0,120,0,1783.6,1783.6,120,1512,0,1512,,,,2009-02-19 08:00,2009-03-08 17:00,,2009-01-05 08:00,2009-01-21 17:00,2009-01-05 08:00,2009-01-21 17:00,2009-01-05 08:00,2009-01-21 17:00,,,,,PT_Normal,,,,,131d5w0IuEWKwCISCTVZmw,,,,N,0,0
3560,85459,829,11494,912,1,0,N,N,N,CP_Drtn,TT_Task,DT_FixedDUR2,RV_OK,TK_NotStart,723GR48050,Shaft plumpness & chipping,2306,312,0,48,0,256,256,48,8,0,8,,,,2008-12-22 08:00,2008-12-28 17:00,,2008-11-06 08:00,2008-11-12 17:00,2008-11-06 08:00,2008-11-12 17:00,2008-11-06 08:00,2008-11-12 17:00,,,,,PT_Normal,,,,,byxLZQl0ykKS3ibczz/Dkw,,,,N,0,0
3561,85460,829,11494,912,1,0,N,N,N,CP_Drtn,TT_Task,DT_FixedDUR2,RV_OK,TK_NotStart,723GR48100,Brackets,2306,312,0,120,0,268,268,120,8,0,8,,,,2008-12-29 08:00,2009-01-14 17:00,,2008-11-13 08:00,2008-11-30 17:00,2008-11-13 08:00,2008-11-30 17:00,2008-11-13 08:00,2008-11-30 17:00,,,,,PT_Normal,,,,,PNMvhL7hEkyzunE2Yf3/VA,,,,N,0,0
3562,85461,829,11494,912,1,0,N,N,N,CP_Drtn,TT_Task,DT_FixedDUR2,RV_OK,TK_NotStart,723GR48150,Garbage chute installation,2306,312,0,120,0,528,528,120,8,0,8,,,,2009-01-10 08:00,2009-01-26 17:00,,2008-11-25 08:00,2008-12-11 17:00,2008-11-25 08:00,2008-12-11 17:00,2008-11-25 08:00,2008-12-11 17:00,,,,,PT_Normal,,,,,CCRVJlUZa06mP2CENUMWcw,,,,N,0,0
3563,85462,829,11494,912,1,0,N,N,N,CP_Drtn,TT_Task,DT_FixedDUR2,RV_OK,TK_NotStart,723GR48250,Hooper doors & foot bedals,2306,312,0,120,0,264,264,120,24,0,24,,,,2009-03-21 08:00,2009-04-06 17:00,,2009-02-03 08:00,2009-02-19 17:00,2009-02-03 08:00,2009-02-19 17:00,2009-02-03 08:00,2009-02-19 17:00,,,,,PT_Normal,,,,,ZNFHXhbdQkOc/WEMfq/Xhw,,,,N,0,0
3564,85463,829,11494,912,1,0,N,N,N,CP_Drtn,TT_Task,DT_FixedDUR2,RV_OK,TK_NotStart,723GR48350,Compactors & trolleys,2306,312,0,48,0,120,120,48,32,0,32,,,,2009-03-31 08:00,2009-04-06 17:00,,2009-02-14 08:00,2009-02-19 17:00,2009-02-14 08:00,2009-02-19 17:00,2009-02-14 08:00,2009-02-19 17:00,,,,,PT_Normal,,,,,lps6Gyb7/EOy1EkwsZ+i3Q,,,,N,0,0
3565,85464,829,12813,912,1,0,N,N,N,CP_Drtn,TT_Task,DT_FixedDUR2,RV_OK,TK_NotStart,723GR58050,Fire fighting provisions,2296,312,0,120,0,450,450,120,0,0,0,,,,2009-01-10 08:00,2009-01-26 17:00,,2008-11-25 08:00,2008-12-11 17:00,2008-11-25 08:00,2008-12-11 17:00,2008-11-25 08:00,2008-12-11 17:00,,,,,PT_Normal,,,,,OijxPbw7HUqB7SPyZmiVbg,,,,N,0,0
3566,85465,829,11579,912,1,100,N,N,N,CP_Drtn,TT_Task,DT_FixedDUR2,RV_OK,TK_Complete,723GU12050,Columns & walls GU to 1L - Part 1,2306,0,0,0,5587.77,0,5587.77,32,167999.52,167999.52,0,,2008-07-15 08:00,2008-07-19 17:00,2008-10-02 08:00,2008-10-01 17:00,,2008-10-02 08:00,2008-10-01 17:00,,,2008-07-15 08:00,2008-07-19 17:00,,,,,PT_Normal,,,,,7DJh4Qx9U0CY116Utvyf9A,,,,N,5587.77,167999.52
3567,85466,829,11579,912,1,100,N,N,N,CP_Drtn,TT_Task,DT_FixedDUR2,RV_OK,TK_Complete,723GU12051,Columns & walls GU to 1L - Part 2,2306,0,0,0,5587.77,0,5587.77,32,167999.52,167999.52,0,,2008-07-24 08:00,2008-07-28 17:00,2008-10-02 08:00,2008-10-01 17:00,,2008-10-02 08:00,2008-10-01 17:00,,,2008-07-24 08:00,2008-07-28 17:00,,,,,PT_Normal,,,,,f87h8zeHpUWEf0063c40Rg,,,,N,5587.77,167999.52
3568,85467,829,11579,912,1,100,N,N,N,CP_Drtn,TT_Task,DT_FixedDUR2,RV_OK,TK_Complete,723GU12052,Columns & walls GU to 1L - Middle Part,2306,0,0,0,9003.34,0,9003.34,32,271281.92,271281.92,0,,2008-07-23 08:00,2008-07-27 17:00,2008-10-02 08:00,2008-10-01 17:00,,2008-10-02 08:00,2008-10-01 17:00,,,2008-07-23 08:00,2008-07-27 17:00,,,,,PT_Normal,,,,,zN5gU/JoMkGMkqQ1ri3ZCA,,,,N,9003.34,271281.92
3569,85468,829,11579,912,1,100,N,N,N,CP_Drtn,TT_Task,DT_FixedDUR2,RV_OK,TK_Complete,723GU12200,Slab @ 1L level - Part 1,2306,0,0,0,4957,0,4957,56,181794.24,181794.24,0,,2008-07-24 08:00,2008-08-02 17:00,2008-10-02 08:00,2008-10-01 17:00,,2008-10-02 08:00,2008-10-01 17:00,,,2008-07-24 08:00,2008-08-02 17:00,,,,,PT_Normal,,,,,ujUY8+GSukO1JV4CjQcI8w,,,,N,4957,181794.24
3570,85469,829,11579,912,1,100,N,N,N,CP_Drtn,TT_Task,DT_FixedDUR2,RV_OK,TK_Complete,723GU12201,Slab @ 1L level - Part 2,2306,0,0,0,4957,0,4957,56,181794.24,181794.24,0,,2008-08-03 08:00,2008-08-10 17:00,2008-10-02 08:00,2008-10-01 17:00,,2008-10-02 08:00,2008-10-01 17:00,,,2008-08-03 08:00,2008-08-10 17:00,,,,,PT_Normal,,,,,Dym/2Zx82kagPgbKad188A,,,,N,4957,181794.24
3571,85470,829,11579,912,1,100,N,N,N,CP_Drtn,TT_Task,DT_FixedDUR2,RV_OK,TK_Complete,723GU12202,Slab @ 1L level - Middle Part,2306,0,0,0,5868.65,0,5868.65,56,215610,215610,0,,2008-08-02 08:00,2008-08-09 17:00,2008-10-02 08:00,2008-10-01 17:00,,2008-10-02 08:00,2008-10-01 17:00,,,2008-08-02 08:00,2008-08-09 17:00,,,,,PT_Normal,,,,,5IxNBk+I1EuRq3woTvsjPA,,,,N,5868.65,215610
3572,85471,829,11579,912,1,100,N,N,N,CP_Drtn,TT_Task,DT_FixedDUR2,RV_OK,TK_Complete,723GU12250,Staircases GU to 1L,2306,288,0,0,999.88,0,999.88,32,18457.6,18457.6,0,,2008-08-11 08:00,2008-08-14 17:00,2008-11-13 08:00,2008-11-12 17:00,,2008-10-02 08:00,2008-10-01 17:00,,,2008-08-11 08:00,2008-08-14 17:00,,,,,PT_Normal,,,,,4UfTdPilAE+8SvsFxnUlFg,,,,N,999.88,18457.6
3573,85472,829,11625,912,1,100,N,N,N,CP_Drtn,TT_Task,DT_FixedDUR2,RV_OK,TK_Complete,723GU14050,Block works,2306,128,0,0,30371,0,37573.5,120,23048,30250.5,0,,2008-08-27 08:00,2008-09-13 17:00,2008-10-21 08:00,2008-10-20 17:00,,2008-10-02 08:00,2008-10-01 17:00,,,2008-08-27 08:00,2008-09-13 17:00,,,,,PT_Normal,,,,,BLXKFbx7pEGBXr3CbuUbgQ,,,,N,30371,30250.5
3574,85473,829,11626,912,1,86.7,N,N,N,CP_Drtn,TT_Task,DT_FixedDUR2,RV_OK,TK_Active,723GU16050,Plaster works,2306,128,0,16,22071.86,3395.64,25467.5,120,19880,17229.36,2650.64,,2008-09-17 08:00,,2008-10-21 08:00,2008-10-22 17:00,,2008-10-02 08:00,2008-10-04 17:00,2008-10-02 08:00,2008-10-04 17:00,2008-09-17 08:00,2008-10-04 17:00,,,,,PT_Normal,,,,,JcEthaqmx0aJnT13DzzVZQ,,,,N,22071.86,17229.36
3575,85474,829,11626,912,1,73.3,N,N,N,CP_Drtn,TT_Task,DT_FixedDUR2,RV_OK,TK_Active,723GU16051,Plaste works behind tiles,2306,328,136,32,5869.84,2134.46,8004.3,120,6184,4534.96,1649.04,,2008-09-20 08:00,,2008-11-19 08:00,2008-11-23 17:00,,2008-10-02 08:00,2008-10-06 17:00,2008-10-02 08:00,2008-10-06 17:00,2008-09-20 08:00,2008-10-06 17:00,,,,,PT_Normal,,,,,quyVtD6EoEaPtARO9R15fw,,,,N,5869.84,4534.96
3576,85475,829,11627,912,1,100,N,N,N,CP_Drtn,TT_Task,DT_FixedDUR2,RV_OK,TK_Complete,723GU18050,Rendering works,2306,128,0,0,5683,0,5683,120,5000,5000,0,,2008-09-02 08:00,2008-09-18 17:00,2008-10-21 08:00,2008-10-20 17:00,,2008-10-02 08:00,2008-10-01 17:00,,,2008-09-02 08:00,2008-09-18 17:00,,,,,PT_Normal,,,,,+BQVxtHdREeqnThwhZyepg,,,,N,5683,5000
3577,85476,829,11627,912,1,40,N,N,N,CP_Drtn,TT_Task,DT_FixedDUR2,RV_OK,TK_Active,723GU18100,Painting base coats,2306,128,0,72,10995.2,16492.8,27488,120,24880,9952,14928,,2008-09-25 08:00,,2008-10-21 08:00,2008-10-30 17:00,,2008-10-02 08:00,2008-10-12 17:00,2008-10-02 08:00,2008-10-12 17:00,2008-09-25 08:00,2008-10-12 17:00,,,,,PT_Normal,,,,,jEaEfj92ikOfcdE8pTftDw,,,,N,10995.2,9952
3578,85477,829,11627,912,1,0,N,N,N,CP_Drtn,TT_Task,DT_FixedDUR2,RV_OK,TK_NotStart,723GU18150,Painting 1st top coat for apartments,2306,560,0,72,0,17300.2,17300.2,72,16408,0,16408,,,,2009-02-09 08:00,2009-02-18 17:00,,2008-11-19 08:00,2008-11-29 17:00,2008-11-19 08:00,2008-11-29 17:00,2008-11-19 08:00,2008-11-29 17:00,,,,,PT_Normal,,,,,jVPclPHu7kyH0/swMEuaeA,,,,N,0,0
3579,85478,829,11837,912,1,0,N,N,N,CP_Drtn,TT_Task,DT_FixedDUR2,RV_OK,TK_NotStart,723GU20050,Floor tiles for apartments-dry area,2306,336,0,120,0,8036.4,8036.4,120,5864,0,5864,,,,2008-11-23 08:00,2008-12-09 17:00,,2008-10-05 08:00,2008-10-21 17:00,2008-10-05 08:00,2008-10-21 17:00,2008-10-05 08:00,2008-10-21 17:00,,,,,PT_Normal,,,,,AmDERxhwK0eGLJeEU89HAQ,,,,N,0,0
3580,85479,829,11837,912,1,0,N,N,N,CP_Drtn,TT_Task,DT_FixedDUR2,RV_OK,TK_NotStart,723GU20070,Floor tiles for apartments-wet area,2306,192,0,120,0,3014.4,3014.4,120,2144,0,2144,,,,2008-12-02 08:00,2008-12-18 17:00,,2008-11-04 08:00,2008-11-20 17:00,2008-11-04 08:00,2008-11-20 17:00,2008-11-04 08:00,2008-11-20 17:00,,,,,PT_Normal,,,,,ITN2TZBUSE2PeM2fBi2zig,,,,N,0,0
3581,85480,829,11837,912,1,0,N,N,N,CP_Drtn,TT_Task,DT_FixedDUR2,RV_OK,TK_NotStart,723GU20110,Wall tiles for apartments-wet area,2306,320,40,120,0,8103.24,8103.24,120,5322.16,0,5322.16,,,,2008-12-21 08:00,2009-01-06 17:00,,2008-11-04 08:00,2008-11-20 17:00,2008-11-04 08:00,2008-11-20 17:00,2008-11-04 08:00,2008-11-20 17:00,,,,,PT_Normal,,,,,fhThfgb9N0ecUeyc86qChw,,,,N,0,0
3582,85481,829,11629,912,1,100,N,N,N,CP_Drtn,TT_Task,DT_FixedDUR2,RV_OK,TK_Complete,723GU22150,W/P for for apartments,2306,272,0,0,2900.4,0,2900.4,120,2528,2528,0,,2008-09-14 08:00,2008-09-30 17:00,2008-11-11 08:00,2008-11-10 17:00,,2008-10-02 08:00,2008-10-01 17:00,,,2008-09-14 08:00,2008-09-30 17:00,,,,,PT_Normal,,,,,fNXkWiEtxESlcVi9AI8xLQ,,,,N,2900.4,2528
3583,85482,829,11621,912,1,0,N,N,N,CP_Drtn,TT_Task,DT_FixedDUR2,RV_OK,TK_NotStart,723GU24050,Aluminium doors & windows,2306,344,136,120,0,1656,1656,120,384,0,384,,,,2008-12-02 08:00,2008-12-18 17:00,,2008-10-13 08:00,2008-10-29 17:00,2008-10-13 08:00,2008-10-29 17:00,2008-10-13 08:00,2008-10-29 17:00,,,,,PT_Normal,,,,,+WlHBLTtSUShMEhldVX7og,,,,N,0,0
3584,85483,829,11621,912,1,0,N,N,N,CP_Drtn,TT_Task,DT_FixedDUR2,RV_OK,TK_NotStart,723GU24200,Balcony handrails,2306,128,128,120,0,2360,2360,120,1280,0,1280,,,,2008-12-20 08:00,2009-01-05 17:00,,2008-12-01 08:00,2008-12-17 17:00,2008-12-01 08:00,2008-12-17 17:00,2008-12-01 08:00,2008-12-17 17:00,,,,,PT_Normal,,,,,2/oFy+zOP02IC5aJhbJpJg,,,,N,0,0
3585,85484,829,11840,912,1,0,N,N,N,CP_Drtn,TT_Task,DT_FixedDUR2,RV_OK,TK_NotStart,723GU30050,Wooden doors,2306,280,0,120,0,960,960,120,240,0,240,,,,2008-12-23 08:00,2009-01-08 17:00,,2008-11-12 08:00,2008-11-29 17:00,2008-11-12 08:00,2008-11-29 17:00,2008-11-12 08:00,2008-11-29 17:00,,,,,PT_Normal,,,,,CHy5moJaOkufVlXADE2s7g,,,,N,0,0
3586,85485,829,11632,912,1,0,N,N,N,CP_Drtn,TT_Task,DT_FixedDUR2,RV_OK,TK_NotStart,723GU32100,Vanity counters,2306,160,0,120,0,1968,1968,120,168,0,168,,,,2008-12-22 08:00,2009-01-07 17:00,,2008-11-29 08:00,2008-12-15 17:00,2008-11-29 08:00,2008-12-15 17:00,2008-11-29 08:00,2008-12-15 17:00,,,,,PT_Normal,,,,,aW1FQjeYQ0GJ4LLIksU3ww,,,,N,0,0
3587,85486,829,11632,912,1,0,N,N,N,CP_Drtn,TT_Task,DT_FixedDUR2,RV_OK,TK_NotStart,723GU32150,Wardrobes,2306,600,600,120,0,5832,5832,120,272,0,272,,,,2009-02-03 08:00,2009-02-19 17:00,,2008-11-08 08:00,2008-11-24 17:00,2008-11-08 08:00,2008-11-24 17:00,2008-11-08 08:00,2008-11-24 17:00,,,,,PT_Normal,,,,,EBFnrtoJ5Uyfi3Iwh07r+A,,,,N,0,0
3588,85487,829,11842,912,1,0,N,N,N,CP_Drtn,TT_Task,DT_FixedDUR2,RV_OK,TK_NotStart,723GU34050,False ceiling works for apartments-dry area,2306,392,0,120,0,1485.12,1485.12,120,910.08,0,910.08,,,,2008-12-23 08:00,2009-01-08 17:00,,2008-10-27 08:00,2008-11-12 17:00,2008-10-27 08:00,2008-11-12 17:00,2008-10-27 08:00,2008-11-12 17:00,,,,,PT_Normal,,,,,SKiS2aZo9kmmYIwqiWZUTA,,,,N,0,0
3589,85488,829,11842,912,1,0,N,N,N,CP_Drtn,TT_Task,DT_FixedDUR2,RV_OK,TK_NotStart,723GU34070,False ceiling works for apartments-wet area,2306,192,0,120,0,650.88,650.88,120,353.92,0,353.92,,,,2008-11-24 08:00,2008-12-10 17:00,,2008-10-27 08:00,2008-11-12 17:00,2008-10-27 08:00,2008-11-12 17:00,2008-10-27 08:00,2008-11-12 17:00,,,,,PT_Normal,,,,,bbLokqY3qki55e6DxxU4lA,,,,N,0,0
3590,85489,829,11843,912,1,0,N,N,N,CP_Drtn,TT_Task,DT_FixedDUR2,RV_OK,TK_NotStart,723GU36050,Stone finishing top,2306,280,184,64,0,316,316,64,144,0,144,,,,2009-01-06 08:00,2009-01-14 17:00,,2008-11-26 08:00,2008-12-04 17:00,2008-11-26 08:00,2008-12-04 17:00,2008-11-26 08:00,2008-12-04 17:00,,,,,PT_Normal,,,,,IYOg+EZ4n0SdRr9yHLYVkw,,,,N,0,0
3591,85490,829,11843,912,1,0,N,N,N,CP_Drtn,TT_Task,DT_FixedDUR2,RV_OK,TK_NotStart,723GU36100,Thresholds,2306,256,200,64,0,580,580,64,344,0,344,,,,2009-01-07 08:00,2009-01-15 17:00,,2008-12-01 08:00,2008-12-09 17:00,2008-12-01 08:00,2008-12-09 17:00,2008-12-01 08:00,2008-12-09 17:00,,,,,PT_Normal,,,,,kni/NnOD3kO0KYbcT5OJFQ,,,,N,0,0
3592,85491,829,11635,912,1,100,N,N,N,CP_Drtn,TT_Task,DT_FixedDUR2,RV_OK,TK_Complete,723GU44050,Sub-frames,2306,128,0,0,600,0,600,120,240,240,0,,2008-09-06 08:00,2008-09-22 17:00,2008-10-21 08:00,2008-10-20 17:00,,2008-10-02 08:00,2008-10-01 17:00,,,2008-09-06 08:00,2008-09-22 17:00,,,,,PT_Normal,,,,,VC0LnbylSkm3gCASt4GrkQ,,,,N,600,240
3593,85492,829,12650,912,1,100,N,N,N,CP_Drtn,TT_Task,DT_FixedDUR2,RV_OK,TK_Complete,723GU50100,MEP skeleton embedded provisions,2296,0,0,0,512,0,512,72,,,0,,2008-07-15 08:00,2008-07-24 17:00,2008-10-02 08:00,2008-10-01 17:00,,2008-10-02 08:00,2008-10-01 17:00,,,2008-07-15 08:00,2008-07-24 17:00,,,,,PT_Normal,,,,,oVvE0eTEvkSwWUD/S+GtIw,,,,N,512,0
3594,85493,829,12652,912,1,100,N,N,N,CP_Drtn,TT_Task,DT_FixedDUR2,RV_OK,TK_Complete,723GU52050,A/C duct works,2296,312,0,0,831,0,831,160,,,0,,2008-09-08 08:00,2008-09-30 17:00,2008-11-17 08:00,2008-11-16 17:00,,2008-10-02 08:00,2008-10-01 17:00,,,2008-09-08 08:00,2008-09-30 17:00,,,,,PT_Normal,,,,,Ziu3dCVKFUWXkXOpukqbUQ,,,,N,831,0
3595,85494,829,12652,912,1,100,N,N,N,CP_Drtn,TT_Task,DT_FixedDUR2,RV_OK,TK_Complete,723GU52100,Chilled water pipe works,2296,248,0,0,787,0,787,72,,,0,,2008-09-21 08:00,2008-09-30 17:00,2008-11-08 08:00,2008-11-06 17:00,,2008-10-02 08:00,2008-10-01 17:00,,,2008-09-21 08:00,2008-09-30 17:00,,,,,PT_Normal,,,,,HYZDFUwFZEabmdaO0aIOwQ,,,,N,787,0
3596,85495,829,12653,912,1,100,N,N,N,CP_Drtn,TT_Task,DT_FixedDUR2,RV_OK,TK_Complete,723GU52150,FCU's hanging,2296,304,0,0,935.2,0,935.2,64,,,0,,2008-09-20 08:00,2008-09-28 17:00,2008-11-16 08:00,2008-11-15 17:00,,2008-10-02 08:00,2008-10-01 17:00,,,2008-09-20 08:00,2008-09-28 17:00,,,,,PT_Normal,,,,,N/Jr7tAvlE+sk/NwhJl1Rw,,,,N,935.2,0
3597,85496,829,12653,912,1,0,N,N,N,CP_Drtn,TT_Task,DT_FixedDUR2,RV_OK,TK_NotStart,723GU52300,FCU's assembly & duct connections,2296,224,32,120,0,991.2,991.2,120,0,0,0,,,,2008-11-06 08:00,2008-11-23 17:00,,2008-10-05 08:00,2008-10-21 17:00,2008-10-05 08:00,2008-10-21 17:00,2008-10-05 08:00,2008-10-21 17:00,,,,,PT_Normal,,,,,f25dJ/3pyUmLekz+rsB5/w,,,,N,0,0
3598,85497,829,12653,912,1,0,N,N,N,CP_Drtn,TT_Task,DT_FixedDUR2,RV_OK,TK_NotStart,723GU52350,Grills & diffusers,2296,616,408,64,0,856,856,64,0,0,0,,,,2009-02-11 08:00,2009-02-19 17:00,,2008-11-13 08:00,2008-11-22 17:00,2008-11-13 08:00,2008-11-22 17:00,2008-11-13 08:00,2008-11-22 17:00,,,,,PT_Normal,,,,,VXDdcM/y+EOZViL2qdvTYA,,,,N,0,0
3599,85498,829,12652,912,1,75,N,N,N,CP_Drtn,TT_Task,DT_FixedDUR2,RV_OK,TK_Active,723GU52550,A/C duct risers,2296,224,0,16,1219.5,406.5,1626,64,,,,,2008-09-25 08:00,,2008-11-04 08:00,2008-11-05 17:00,,2008-10-02 08:00,2008-10-04 17:00,2008-10-02 08:00,2008-10-04 17:00,2008-09-25 08:00,2008-10-04 17:00,,,,,PT_Normal,,,,,j1Z5eyfZq0mqsJWfigx0Fg,,,,N,1219.5,0
3600,85499,829,12655,912,1,100,N,N,N,CP_Drtn,TT_Task,DT_FixedDUR2,RV_OK,TK_Complete,723GU54050,Chasing & Pex pipe works,2296,328,0,0,395,0,395,120,,,0,,2008-09-08 08:00,2008-09-24 17:00,2008-11-19 08:00,2008-11-18 17:00,,2008-10-02 08:00,2008-10-01 17:00,,,2008-09-08 08:00,2008-09-24 17:00,,,,,PT_Normal,,,,,mz5yZOekNkmgHgt7RtnRmg,,,,N,395,0
3601,85500,829,12656,912,1,73.3,N,N,N,CP_Drtn,TT_Task,DT_FixedDUR2,RV_OK,TK_Active,723GU54250,Bathtubs,2296,384,0,32,158.99,83.62,313.6,120,,70.99,,,2008-09-20 08:00,,2008-11-27 08:00,2008-12-01 17:00,,2008-10-02 08:00,2008-10-06 17:00,2008-10-02 08:00,2008-10-06 17:00,2008-09-20 08:00,2008-10-06 17:00,,,,,PT_Normal,,,,,Z1j5p/nVw06Cvdbcinxqyg,,,,N,158.99,70.99
3602,85501,829,12656,912,1,75,N,N,N,CP_Drtn,TT_Task,DT_FixedDUR2,RV_OK,TK_Active,723GU54300,Water heater,2296,304,0,16,232.8,77.6,310.4,64,,,,,2008-09-25 08:00,,2008-11-16 08:00,2008-11-17 17:00,,2008-10-02 08:00,2008-10-04 17:00,2008-10-02 08:00,2008-10-04 17:00,2008-09-25 08:00,2008-10-04 17:00,,,,,PT_Normal,,,,,0VBKI8St4E+kMGHZ1tZe4Q,,,,N,232.8,0
3603,85502,829,12656,912,1,66.7,N,N,N,CP_Drtn,TT_Task,DT_FixedDUR2,RV_OK,TK_Active,723GU54350,Over head pipe assembly & vlave connections,2296,336,144,24,158,79,237,72,,,,,2008-09-25 08:00,,2008-11-20 08:00,2008-11-23 17:00,,2008-10-02 08:00,2008-10-05 17:00,2008-10-02 08:00,2008-10-05 17:00,2008-09-25 08:00,2008-10-05 17:00,,,,,PT_Normal,,,,,b5O7BGbbq0e0E10imFOm0w,,,,N,158,0
3604,85503,829,12657,912,1,0,N,N,N,CP_Drtn,TT_Task,DT_FixedDUR2,RV_OK,TK_NotStart,723GU54400,Sanitary fixures,2296,280,0,120,0,516,516,120,0,0,0,,,,2008-12-29 08:00,2009-01-14 17:00,,2008-11-18 08:00,2008-12-04 17:00,2008-11-18 08:00,2008-12-04 17:00,2008-11-18 08:00,2008-12-04 17:00,,,,,PT_Normal,,,,,jH6XUiMDEEOO4A2ejPTZ+g,,,,N,0,0
3605,85504,829,12657,912,1,0,N,N,N,CP_Drtn,TT_Task,DT_FixedDUR2,RV_OK,TK_NotStart,723GU54450,Mirrors,2296,160,144,120,0,186,186,120,0,0,0,,,,2008-12-28 08:00,2009-01-13 17:00,,2008-12-04 08:00,2008-12-21 17:00,2008-12-04 08:00,2008-12-21 17:00,2008-12-04 08:00,2008-12-21 17:00,,,,,PT_Normal,,,,,3/Rl4pxamE+oUjxbrNXgRQ,,,,N,0,0
3606,85505,829,12656,912,1,73.3,N,N,N,CP_Drtn,TT_Task,DT_FixedDUR2,RV_OK,TK_Active,723GU54500,Concealed Flushing Cistern,2296,384,192,32,136.4,67.2,252,120,,48.4,,,2008-09-20 08:00,,2008-11-27 08:00,2008-12-01 17:00,,2008-10-02 08:00,2008-10-06 17:00,2008-10-02 08:00,2008-10-06 17:00,2008-09-20 08:00,2008-10-06 17:00,,,,,PT_Normal,,,,,eVBlqfSWF0mA3ZzXwOQ6rQ,,,,N,136.4,48.4
3607,85506,829,12659,912,1,100,N,N,N,CP_Drtn,TT_Task,DT_FixedDUR2,RV_OK,TK_Complete,723GU56050,Chasing and installation of drainage pipes,2296,240,0,0,285,0,285,120,,,0,,2008-09-08 08:00,2008-09-24 17:00,2008-11-06 08:00,2008-11-05 17:00,,2008-10-02 08:00,2008-10-01 17:00,,,2008-09-08 08:00,2008-09-24 17:00,,,,,PT_Normal,,,,,HxQafdAo1UijvNRvftIGYA,,,,N,285,0
3608,85507,829,12659,912,1,100,N,N,N,CP_Drtn,TT_Task,DT_FixedDUR2,RV_OK,TK_Complete,723GU56100,Drainage riser pipes,2296,264,0,0,284,0,284,64,,,0,,2008-09-04 08:00,2008-09-13 17:00,2008-11-10 08:00,2008-11-09 17:00,,2008-10-02 08:00,2008-10-01 17:00,,,2008-09-04 08:00,2008-09-13 17:00,,,,,PT_Normal,,,,,0ZL+oh1CVUKFkE6l+uMr4A,,,,N,284,0
3609,85508,829,12660,912,1,0,N,N,N,CP_Drtn,TT_Task,DT_FixedDUR2,RV_OK,TK_NotStart,723GU56150,Over head drainage pipe works,2296,192,0,64,0,257.6,257.6,64,0,0,0,,,,2008-11-15 08:00,2008-11-23 17:00,,2008-10-18 08:00,2008-10-26 17:00,2008-10-18 08:00,2008-10-26 17:00,2008-10-18 08:00,2008-10-26 17:00,,,,,PT_Normal,,,,,YkMA1aEFTUqG8T/4MBKIXg,,,,N,0,0
3610,85509,829,12662,912,1,100,N,N,N,CP_Drtn,TT_Task,DT_FixedDUR2,RV_OK,TK_Complete,723GU58050,Fire fighting pipe works,2296,360,0,0,292,0,292,72,,,0,,2008-09-14 08:00,2008-09-23 17:00,2008-11-24 08:00,2008-11-23 17:00,,2008-10-02 08:00,2008-10-01 17:00,,,2008-09-14 08:00,2008-09-23 17:00,,,,,PT_Normal,,,,,lFtraTjZ5kGaZWeCVxUzlw,,,,N,292,0
3611,85510,829,12663,912,1,0,N,N,N,CP_Drtn,TT_Task,DT_FixedDUR2,RV_OK,TK_NotStart,723GU58250,Sprinkler heads,2296,616,448,64,0,394,394,64,0,0,0,,,,2009-02-11 08:00,2009-02-19 17:00,,2008-11-13 08:00,2008-11-22 17:00,2008-11-13 08:00,2008-11-22 17:00,2008-11-13 08:00,2008-11-22 17:00,,,,,PT_Normal,,,,,Bns33E1JMUKnzJ91JJ3j/w,,,,N,0,0
3612,85511,829,12665,912,1,100,N,N,N,CP_Drtn,TT_Task,DT_FixedDUR2,RV_OK,TK_Complete,723GU66050,Chasing and installation of conduits,2296,128,0,0,1528,0,1528,120,,,0,,2008-09-06 08:00,2008-09-22 17:00,2008-10-21 08:00,2008-10-20 17:00,,2008-10-02 08:00,2008-10-01 17:00,,,2008-09-06 08:00,2008-09-22 17:00,,,,,PT_Normal,,,,,Cx+yewpeSk+mQ/axAl1Hbw,,,,N,1528,0
3613,85512,829,12667,912,1,100,N,N,N,CP_Drtn,TT_Task,DT_FixedDUR2,RV_OK,TK_Complete,723GU68050,Single core wiring,2296,360,0,0,1339.2,0,1339.2,72,,,0,,2008-09-08 08:00,2008-09-17 17:00,2008-11-24 08:00,2008-11-23 17:00,,2008-10-02 08:00,2008-10-01 17:00,,,2008-09-08 08:00,2008-09-17 17:00,,,,,PT_Normal,,,,,FyWscZ4VVU2qlW0+H3JYgA,,,,N,1339.2,0
3614,85513,829,12668,912,1,0,N,N,N,CP_Drtn,TT_Task,DT_FixedDUR2,RV_OK,TK_NotStart,723GU68350,Light Fittings,2296,600,600,120,0,1035.2,1035.2,120,0,0,0,,,,2009-02-03 08:00,2009-02-19 17:00,,2008-11-08 08:00,2008-11-24 17:00,2008-11-08 08:00,2008-11-24 17:00,2008-11-08 08:00,2008-11-24 17:00,,,,,PT_Normal,,,,,WJz/cKV6kEO7KXVuTG27zg,,,,N,0,0
3615,85514,829,12668,912,1,0,N,N,N,CP_Drtn,TT_Task,DT_FixedDUR2,RV_OK,TK_NotStart,723GU68600,Switches & sockets,2296,568,568,72,0,494.4,494.4,72,0,0,0,,,,2009-02-10 08:00,2009-02-19 17:00,,2008-11-19 08:00,2008-11-29 17:00,2008-11-19 08:00,2008-11-29 17:00,2008-11-19 08:00,2008-11-29 17:00,,,,,PT_Normal,,,,,dYmYXUperUyhpZkEda+FtA,,,,N,0,0
3616,85515,829,12670,912,1,100,N,N,N,CP_Drtn,TT_Task,DT_FixedDUR2,RV_OK,TK_Complete,723GU74050,Fire alarm cables,2296,344,0,0,380.8,0,380.8,64,,,0,,2008-09-14 08:00,2008-09-22 17:00,2008-11-22 08:00,2008-11-20 17:00,,2008-10-02 08:00,2008-10-01 17:00,,,2008-09-14 08:00,2008-09-22 17:00,,,,,PT_Normal,,,,,/3l2Gy+rL0GsuXDefEEHTA,,,,N,380.8,0
3617,85516,829,12671,912,1,0,N,N,N,CP_Drtn,TT_Task,DT_FixedDUR2,RV_OK,TK_NotStart,723GU74100,Fire alarm fittings,2296,600,448,64,0,116.8,116.8,64,0,0,0,,,,2009-02-11 08:00,2009-02-19 17:00,,2008-11-16 08:00,2008-11-24 17:00,2008-11-16 08:00,2008-11-24 17:00,2008-11-16 08:00,2008-11-24 17:00,,,,,PT_Normal,,,,,coyCaD2jOkmFgWa2GnaB8w,,,,N,0,0
3618,85517,829,12673,912,1,0,N,N,N,CP_Drtn,TT_Task,DT_FixedDUR2,RV_OK,TK_NotStart,723GU76050,Structured cabling,2296,128,0,64,0,345.6,345.6,64,0,0,0,,,,2008-11-03 08:00,2008-11-11 17:00,,2008-10-15 08:00,2008-10-23 17:00,2008-10-15 08:00,2008-10-23 17:00,2008-10-15 08:00,2008-10-23 17:00,,,,,PT_Normal,,,,,VajK3HZhz0mg5RbasGUTrA,,,,N,0,0
3619,85518,829,11914,912,1,0,N,N,N,CP_Drtn,TT_Task,DT_FixedDUR2,RV_OK,TK_NotStart,723PE46050,Jambs & headers,2306,352,0,120,0,936,936,120,16,0,16,,,,2008-12-10 08:00,2008-12-27 17:00,,2008-10-20 08:00,2008-11-05 17:00,2008-10-20 08:00,2008-11-05 17:00,2008-10-20 08:00,2008-11-05 17:00,,,,,PT_Normal,,,,,CQDs+OpsLECbo6R+wzgz1w,,,,N,0,0
3620,85519,829,11914,912,1,0,N,N,N,CP_Drtn,TT_Task,DT_FixedDUR2,RV_OK,TK_NotStart,723PE46100,Brackets & seperators,2306,352,0,120,0,536,536,120,16,0,16,,,,2008-12-28 08:00,2009-01-13 17:00,,2008-11-06 08:00,2008-11-23 17:00,2008-11-06 08:00,2008-11-23 17:00,2008-11-06 08:00,2008-11-23 17:00,,,,,PT_Normal,,,,,14JXPCOlAkWf9bzEi59i4w,,,,N,0,0
3621,85520,829,11914,912,1,0,N,N,N,CP_Drtn,TT_Task,DT_FixedDUR2,RV_OK,TK_NotStart,723PE46150,Guide rails,2306,352,0,120,0,536,536,120,16,0,16,,,,2009-01-14 08:00,2009-01-31 17:00,,2008-11-24 08:00,2008-12-10 17:00,2008-11-24 08:00,2008-12-10 17:00,2008-11-24 08:00,2008-12-10 17:00,,,,,PT_Normal,,,,,2xUaDbPCy0KXGo/OhZFJVg,,,,N,0,0
3622,85521,829,11914,912,1,0,N,N,N,CP_Drtn,TT_Task,DT_FixedDUR2,RV_OK,TK_NotStart,723PE46200,Machine room works,2306,352,0,120,0,536,536,120,16,0,16,,,,2009-01-26 08:00,2009-02-11 17:00,,2008-12-06 08:00,2008-12-22 17:00,2008-12-06 08:00,2008-12-22 17:00,2008-12-06 08:00,2008-12-22 17:00,,,,,PT_Normal,,,,,04kN02Zu3UK5tkQiQ/r2EA,,,,N,0,0
3623,85522,829,11914,912,1,0,N,N,N,CP_Drtn,TT_Task,DT_FixedDUR2,RV_OK,TK_NotStart,723PE46250,Cabin works,2306,352,0,120,0,472,472,120,0,0,0,,,,2009-02-07 08:00,2009-02-23 17:00,,2008-12-17 08:00,2009-01-03 17:00,2008-12-17 08:00,2009-01-03 17:00,2008-12-17 08:00,2009-01-03 17:00,,,,,PT_Normal,,,,,Xl3M2EMuJUysZOShykBssQ,,,,N,0,0
3624,85523,829,11914,912,1,0,N,N,N,CP_Drtn,TT_Task,DT_FixedDUR2,RV_OK,TK_NotStart,723PE46300,"Ropping, hatch doors, hoistways & wirring",2306,352,0,120,0,616,616,120,16,0,16,,,,2009-02-18 08:00,2009-03-07 17:00,,2008-12-29 08:00,2009-01-14 17:00,2008-12-29 08:00,2009-01-14 17:00,2008-12-29 08:00,2009-01-14 17:00,,,,,PT_Normal,,,,,RUJ4Jotbc0aEhUYRlCBNvA,,,,N,0,0
3625,85524,829,11589,912,1,0,N,N,N,CP_Drtn,TT_Task,DT_FixedDUR2,RV_OK,TK_NotStart,723RF12350,Roof Parapets,2306,112,0,32,0,8972.4,8972.4,32,99744,0,99744,,,,2008-11-01 08:00,2008-11-04 17:00,,2008-10-15 08:00,2008-10-19 17:00,2008-10-15 08:00,2008-10-19 17:00,2008-10-15 08:00,2008-10-19 17:00,,,,,PT_Normal,,,,,mpf80yLhjkaTwjrzEpH17A,,,,N,0,0
3626,85525,829,12002,912,1,0,N,N,N,CP_Drtn,TT_Task,DT_FixedDUR2,RV_OK,TK_NotStart,723RF22200,Roof light weight concreting & angle fillet,2306,208,0,72,0,17722,17722,72,14120,0,14120,,,,2008-12-08 08:00,2008-12-17 17:00,,2008-11-08 08:00,2008-11-17 17:00,2008-11-08 08:00,2008-11-17 17:00,2008-11-08 08:00,2008-11-17 17:00,,,,,PT_Normal,,,,,r5emDfwQM0iQMgL40gmTBA,,,,N,0,0
3627,85526,829,12002,912,1,0,N,N,N,CP_Drtn,TT_Task,DT_FixedDUR2,RV_OK,TK_NotStart,723RF22250,Roof membrane,2306,208,0,72,0,17016,17016,72,14120,0,14120,,,,2008-12-18 08:00,2008-12-28 17:00,,2008-11-18 08:00,2008-11-27 17:00,2008-11-18 08:00,2008-11-27 17:00,2008-11-18 08:00,2008-11-27 17:00,,,,,PT_Normal,,,,,6zUAKfmaykWoHmFNYU1ngg,,,,N,0,0
3628,85527,829,12002,912,1,0,N,N,N,CP_Drtn,TT_Task,DT_FixedDUR2,RV_OK,TK_NotStart,723RF22300,Polystyrene insulation & seperation layers,2306,432,0,64,0,17008,17008,64,14120,0,14120,,,,2009-01-31 08:00,2009-02-08 17:00,,2008-11-29 08:00,2008-12-07 17:00,2008-11-29 08:00,2008-12-07 17:00,2008-11-29 08:00,2008-12-07 17:00,,,,,PT_Normal,,,,,v0h5SqjL7EOa0M7yDptzWw,,,,N,0,0
3629,85528,829,12002,912,1,0,N,N,N,CP_Drtn,TT_Task,DT_FixedDUR2,RV_OK,TK_NotStart,723RF22350,Concrete tiles,2306,432,0,80,0,16330,16330,80,13000,0,13000,,,,2009-02-08 08:00,2009-02-18 17:00,,2008-12-07 08:00,2008-12-17 17:00,2008-12-07 08:00,2008-12-17 17:00,2008-12-07 08:00,2008-12-17 17:00,,,,,PT_Normal,,,,,saZHjykop0uqZuZJRseanA,,,,N,0,0
3630,85529,829,12002,912,1,0,N,N,N,CP_Drtn,TT_Task,DT_FixedDUR2,RV_OK,TK_NotStart,723RF22400,Gravel fill,2306,704,392,48,0,1280,1280,48,1120,0,1120,,,,2009-03-31 08:00,2009-04-06 17:00,,2008-12-18 08:00,2008-12-24 17:00,2008-12-18 08:00,2008-12-24 17:00,2008-12-18 08:00,2008-12-24 17:00,,,,,PT_Normal,,,,,93Hl/ARYskG3HNyWYAHHpg,,,,N,0,0
3631,85530,829,12002,912,1,0,N,N,N,CP_Drtn,TT_Task,DT_FixedDUR2,RV_OK,TK_NotStart,723RF22450,Aluminium flashing,2306,688,376,64,0,3256.2,3256.2,64,2776,0,2776,,,,2009-03-29 08:00,2009-04-06 17:00,,2008-12-18 08:00,2008-12-27 17:00,2008-12-18 08:00,2008-12-27 17:00,2008-12-18 08:00,2008-12-27 17:00,,,,,PT_Normal,,,,,Qg1sxEZTe0iwBBq0i0dIMQ,,,,N,0,0
3632,85531,829,11694,912,1,0,N,N,N,CP_Drtn,TT_Task,DT_FixedDUR2,RV_OK,TK_NotStart,723RF24300,Aluminium framing for roof towers,2306,688,376,64,0,768,768,64,64,0,64,,,,2009-03-29 08:00,2009-04-06 17:00,,2008-12-18 08:00,2008-12-27 17:00,2008-12-18 08:00,2008-12-27 17:00,2008-12-18 08:00,2008-12-27 17:00,,,,,PT_Normal,,,,,YYWFDMYxRE6yJVdiRpHWpw,,,,N,0,0
3633,85532,829,11695,912,1,0,N,N,N,CP_Drtn,TT_Task,DT_FixedDUR2,RV_OK,TK_NotStart,723RF44250,Roof upstands & equipement foundations,2306,208,0,64,0,3979.76,3979.76,64,608,0,608,,,,2008-11-29 08:00,2008-12-07 17:00,,2008-10-29 08:00,2008-11-06 17:00,2008-10-29 08:00,2008-11-06 17:00,2008-10-29 08:00,2008-11-06 17:00,,,,,PT_Normal,,,,,kKNbcAGpRUSsfRCyhMI6+A,,,,N,0,0
3634,85533,829,11695,912,1,0,N,N,N,CP_Drtn,TT_Task,DT_FixedDUR2,RV_OK,TK_NotStart,723RF44350,Roof tower concrete elements,2306,272,64,64,0,499.6,499.6,64,64,0,64,,,,2008-11-29 08:00,2008-12-07 17:00,,2008-10-20 08:00,2008-10-28 17:00,2008-10-20 08:00,2008-10-28 17:00,2008-10-20 08:00,2008-10-28 17:00,,,,,PT_Normal,,,,,S8mh4Gwrj0mgo9zoOJe/Gg,,,,N,0,0
3635,85534,829,12808,912,1,0,N,N,N,CP_Drtn,TT_Task,DT_FixedDUR2,RV_OK,TK_NotStart,723RF52400,FAHU's & fans,2296,432,184,120,0,1836,1836,120,0,0,0,,,,2009-02-09 08:00,2009-02-25 17:00,,2008-12-08 08:00,2008-12-24 17:00,2008-12-08 08:00,2008-12-24 17:00,2008-12-08 08:00,2008-12-24 17:00,,,,,PT_Normal,,,,,+qkiLc7fYUuDPq5X0MSFFw,,,,N,0,0
3636,85535,829,12810,912,1,0,N,N,N,CP_Drtn,TT_Task,DT_FixedDUR2,RV_OK,TK_NotStart,723RF68800,Lighting protection system,2296,168,56,64,0,328,328,64,0,0,0,,,,2008-12-07 08:00,2008-12-15 17:00,,2008-11-12 08:00,2008-11-20 17:00,2008-11-12 08:00,2008-11-20 17:00,2008-11-12 08:00,2008-11-20 17:00,,,,,PT_Normal,,,,,3KylDmsqzka9uAw6jWCpPQ,,,,N,0,0
3637,85536,829,11797,912,1,0,N,N,N,CP_Drtn,TT_Task,DT_FixedDUR2,RV_OK,TK_NotStart,723ST18150,Painting 1st top coat,2306,336,24,120,0,12972,12972,120,12240,0,12240,,,,2009-03-21 08:00,2009-04-06 17:00,,2009-01-31 08:00,2009-02-16 17:00,2009-01-31 08:00,2009-02-16 17:00,2009-01-31 08:00,2009-02-16 17:00,,,,,PT_Normal,,,,,7T0AKz5xvkKA2xZP4PZ6Vg,,,,N,0,0
3638,85537,829,11698,912,1,0,N,N,N,CP_Drtn,TT_Task,DT_FixedDUR2,RV_OK,TK_NotStart,723ST20050,Floor tiles for staircases,2306,336,0,120,0,1848,1848,120,1280,0,1280,,,,2009-02-02 08:00,2009-02-18 17:00,,2008-12-15 08:00,2008-12-31 17:00,2008-12-15 08:00,2008-12-31 17:00,2008-12-15 08:00,2008-12-31 17:00,,,,,PT_Normal,,,,,naY/CjgcHUKPcJomeATrcA,,,,N,0,0
3639,85538,829,11698,912,1,0,N,N,N,CP_Drtn,TT_Task,DT_FixedDUR2,RV_OK,TK_NotStart,723ST20150,Treads & risers,2306,336,0,120,0,4320,4320,120,2800,0,2800,,,,2009-01-10 08:00,2009-01-26 17:00,,2008-11-22 08:00,2008-12-08 17:00,2008-11-22 08:00,2008-12-08 17:00,2008-11-22 08:00,2008-12-08 17:00,,,,,PT_Normal,,,,,BLtKEbQxLk+O9O12cDxhYA,,,,N,0,0
3640,85539,829,11908,912,1,0,N,N,N,CP_Drtn,TT_Task,DT_FixedDUR2,RV_OK,TK_NotStart,723ST24350,Staircase handrail,2306,336,0,120,0,3578,3578,120,1976,0,1976,,,,2009-02-25 08:00,2009-03-14 17:00,,2009-01-07 08:00,2009-01-24 17:00,2009-01-07 08:00,2009-01-24 17:00,2009-01-07 08:00,2009-01-24 17:00,,,,,PT_Normal,,,,,HvFfp1i0yESpxuoZLjLc0A,,,,N,0,0
3641,85540,829,11242,912,1,0,N,N,N,CP_Drtn,TT_Task,DT_FixedDUR2,RV_OK,TK_NotStart,7250080050,Earth works to makeup levels,2306,216,8,120,0,54405,54405,120,39480,0,39480,,,,2008-12-13 08:00,2008-12-29 17:00,,2008-11-11 08:00,2008-11-27 17:00,2008-11-11 08:00,2008-11-27 17:00,2008-11-11 08:00,2008-11-27 17:00,,,,,PT_Normal,,,,,NMjkp8iKFk6Flq/AFsTOAg,,,,N,0,0
3642,85541,829,11242,912,1,0,N,N,N,CP_Drtn,TT_Task,DT_FixedDUR2,RV_OK,TK_NotStart,7250080100,Sub base,2306,208,0,120,0,6420,6420,120,4200,0,4200,,,,2008-12-29 08:00,2009-01-14 17:00,,2008-11-29 08:00,2008-12-15 17:00,2008-11-29 08:00,2008-12-15 17:00,2008-11-29 08:00,2008-12-15 17:00,,,,,PT_Normal,,,,,OCZS5NPdpkq0osY6qCw89g,,,,N,0,0
3643,85542,829,11242,912,1,0,N,N,N,CP_Drtn,TT_Task,DT_FixedDUR2,RV_OK,TK_NotStart,7250080150,Sub grade,2306,208,0,120,0,3060,3060,120,1960,0,1960,,,,2009-01-10 08:00,2009-01-26 17:00,,2008-12-10 08:00,2008-12-27 17:00,2008-12-10 08:00,2008-12-27 17:00,2008-12-10 08:00,2008-12-27 17:00,,,,,PT_Normal,,,,,pHXrY05KE0uzsRyhPr+E7g,,,,N,0,0
3644,85543,829,11242,912,1,0,N,N,N,CP_Drtn,TT_Task,DT_FixedDUR2,RV_OK,TK_NotStart,7250080200,Kerbs,2306,208,0,120,0,13815,13815,120,9960,0,9960,,,,2009-01-18 08:00,2009-02-03 17:00,,2008-12-18 08:00,2009-01-04 17:00,2008-12-18 08:00,2009-01-04 17:00,2008-12-18 08:00,2009-01-04 17:00,,,,,PT_Normal,,,,,tr2KPuXnUUaRD2d1IoquHA,,,,N,0,0
3645,85544,829,11242,912,1,0,N,N,N,CP_Drtn,TT_Task,DT_FixedDUR2,RV_OK,TK_NotStart,7250080250,Paving,2306,272,0,120,0,43345,43345,120,36400,0,36400,,,,2009-02-08 08:00,2009-02-24 17:00,,2008-12-30 08:00,2009-01-15 17:00,2008-12-30 08:00,2009-01-15 17:00,2008-12-30 08:00,2009-01-15 17:00,,,,,PT_Normal,,,,,KLHZ1oeBF0+LPEDo3dKDJQ,,,,N,0,0
3646,85545,829,11242,912,1,0,N,N,N,CP_Drtn,TT_Task,DT_FixedDUR2,RV_OK,TK_NotStart,7250080300,Jogging path surface finish including bed.,2306,272,64,120,0,4740,4740,120,3360,0,3360,,,,2009-03-03 08:00,2009-03-19 17:00,,2009-01-22 08:00,2009-02-08 17:00,2009-01-22 08:00,2009-02-08 17:00,2009-01-22 08:00,2009-02-08 17:00,,,,,PT_Normal,,,,,80/lvr+rOEeJQSvO0BOs6Q,,,,N,0,0
3647,85546,829,11242,912,1,0,N,N,N,CP_Drtn,TT_Task,DT_FixedDUR2,RV_OK,TK_NotStart,7250080350,Bituminous wearing course,2306,208,0,120,0,10915,10915,120,10160,0,10160,,,,2009-02-04 08:00,2009-02-21 17:00,,2009-01-05 08:00,2009-01-21 17:00,2009-01-05 08:00,2009-01-21 17:00,2009-01-05 08:00,2009-01-21 17:00,,,,,PT_Normal,,,,,tviJ0pNJgEicaB4FAOBX7w,,,,N,0,0
3648,85547,829,11242,912,1,0,N,N,N,CP_Drtn,TT_Task,DT_FixedDUR2,RV_OK,TK_NotStart,7250080400,Bituminous binder course,2306,208,0,120,0,10915,10915,120,10160,0,10160,,,,2009-02-22 08:00,2009-03-10 17:00,,2009-01-22 08:00,2009-02-08 17:00,2009-01-22 08:00,2009-02-08 17:00,2009-01-22 08:00,2009-02-08 17:00,,,,,PT_Normal,,,,,d1QeU3t7qEOpTGlhpfZF8w,,,,N,0,0
3649,85548,829,11242,912,1,0,N,N,N,CP_Drtn,TT_Task,DT_FixedDUR2,RV_OK,TK_NotStart,7250080450,Road marking,2306,208,0,72,0,10359,10359,72,10160,0,10160,,,,2009-03-10 08:00,2009-03-19 17:00,,2009-02-08 08:00,2009-02-17 17:00,2009-02-08 08:00,2009-02-17 17:00,2009-02-08 08:00,2009-02-17 17:00,,,,,PT_Normal,,,,,i9Dn0TTOx02JohZdXrdu2Q,,,,N,0,0
3650,85549,829,11265,912,1,0,N,N,N,CP_Drtn,TT_Task,DT_FixedDUR2,RV_OK,TK_NotStart,7250082050,Excavation for external retaining walls,2306,208,0,72,0,222391,222391,72,187216,0,187216,,,,2008-11-15 08:00,2008-11-24 17:00,,2008-10-15 08:00,2008-10-25 17:00,2008-10-15 08:00,2008-10-25 17:00,2008-10-15 08:00,2008-10-25 17:00,,,,,PT_Normal,,,,,MSsrxVynBkSE1kaTyZcbxQ,,,,N,0,0
3651,85550,829,11265,912,1,0,N,N,N,CP_Drtn,TT_Task,DT_FixedDUR2,RV_OK,TK_NotStart,7250082100,Blinding under external retaining walls,2306,208,0,48,0,846,846,48,760,0,760,,,,2008-11-22 08:00,2008-11-27 17:00,,2008-10-22 08:00,2008-10-28 17:00,2008-10-22 08:00,2008-10-28 17:00,2008-10-22 08:00,2008-10-28 17:00,,,,,PT_Normal,,,,,0SL4h4oHqkmkGEyls+JjuQ,,,,N,0,0
3652,85551,829,11265,912,1,0,N,N,N,CP_Drtn,TT_Task,DT_FixedDUR2,RV_OK,TK_NotStart,7250082150,W/P for blinding of external retaining walls,2306,208,0,48,0,13756,13756,48,11920,0,11920,,,,2008-11-27 08:00,2008-12-03 17:00,,2008-10-28 08:00,2008-11-03 17:00,2008-10-28 08:00,2008-11-03 17:00,2008-10-28 08:00,2008-11-03 17:00,,,,,PT_Normal,,,,,gQtgOaQvhEmLu88pSNVcOg,,,,N,0,0
3653,85552,829,11265,912,1,0,N,N,N,CP_Drtn,TT_Task,DT_FixedDUR2,RV_OK,TK_NotStart,7250082200,Construction of external retaining walls,2306,208,0,120,0,24312,24312,120,5040,0,5040,,,,2008-12-02 08:00,2008-12-18 17:00,,2008-11-02 08:00,2008-11-18 17:00,2008-11-02 08:00,2008-11-18 17:00,2008-11-02 08:00,2008-11-18 17:00,,,,,PT_Normal,,,,,ielITU9LZUW/eiX7ZfJGnQ,,,,N,0,0
3654,85553,829,11265,912,1,0,N,N,N,CP_Drtn,TT_Task,DT_FixedDUR2,RV_OK,TK_NotStart,7250082250,W/P for embedded parts of retaining walls,2306,208,0,72,0,18992,18992,72,17200,0,17200,,,,2008-12-18 08:00,2008-12-28 17:00,,2008-11-18 08:00,2008-11-27 17:00,2008-11-18 08:00,2008-11-27 17:00,2008-11-18 08:00,2008-11-27 17:00,,,,,PT_Normal,,,,,//j12mRHqkCaxe/nhd3PKw,,,,N,0,0
3655,85554,829,11265,912,1,0,N,N,N,CP_Drtn,TT_Task,DT_FixedDUR2,RV_OK,TK_NotStart,7250082300,Back filling for external retaining walls,2306,208,0,72,0,239674,239674,72,174256,0,174256,,,,2008-12-27 08:00,2009-01-05 17:00,,2008-11-26 08:00,2008-12-06 17:00,2008-11-26 08:00,2008-12-06 17:00,2008-11-26 08:00,2008-12-06 17:00,,,,,PT_Normal,,,,,cknSPY8m/kO4oE+3huUxOw,,,,N,0,0
3656,85555,829,11907,912,1,0,N,N,N,CP_Drtn,TT_Task,DT_FixedDUR2,RV_OK,TK_NotStart,7250084050,Excavation for external drainage network,2306,232,0,120,0,1220,1220,120,880,0,880,,,,2008-11-06 08:00,2008-11-23 17:00,,2008-10-04 08:00,2008-10-20 17:00,2008-10-04 08:00,2008-10-20 17:00,2008-10-04 08:00,2008-10-20 17:00,,,,,PT_Normal,,,,,14WC/bsiQkWKSozu7SSSNA,,,,N,0,0
3657,85556,829,11907,912,1,0,N,N,N,CP_Drtn,TT_Task,DT_FixedDUR2,RV_OK,TK_NotStart,7250084100,Construction of R.C.C.drainage trench,2306,272,0,120,0,1260,1260,120,240,0,240,,,,2008-11-26 08:00,2008-12-13 17:00,,2008-10-18 08:00,2008-11-03 17:00,2008-10-18 08:00,2008-11-03 17:00,2008-10-18 08:00,2008-11-03 17:00,,,,,PT_Normal,,,,,NuPHisQZPEO8BM5HK60HJg,,,,N,0,0
3658,85557,829,11907,912,1,0,N,N,N,CP_Drtn,TT_Task,DT_FixedDUR2,RV_OK,TK_NotStart,7250084150,Construction of Manholes,2306,232,0,120,0,354,354,120,24,0,24,,,,2008-11-20 08:00,2008-12-07 17:00,,2008-10-18 08:00,2008-11-03 17:00,2008-10-18 08:00,2008-11-03 17:00,2008-10-18 08:00,2008-11-03 17:00,,,,,PT_Normal,,,,,Nr83GgaY50i2luPWMZvqog,,,,N,0,0
3659,85558,829,11907,912,1,0,N,N,N,CP_Drtn,TT_Task,DT_FixedDUR2,RV_OK,TK_NotStart,7250084170,Water proofing for manholes,2306,232,0,120,0,204,204,120,24,0,24,,,,2008-12-08 08:00,2008-12-24 17:00,,2008-11-04 08:00,2008-11-20 17:00,2008-11-04 08:00,2008-11-20 17:00,2008-11-04 08:00,2008-11-20 17:00,,,,,PT_Normal,,,,,AaAYlMm9YEmWO55kxUQq+A,,,,N,0,0
3660,85559,829,11907,912,1,0,N,N,N,CP_Drtn,TT_Task,DT_FixedDUR2,RV_OK,TK_NotStart,7250084200,External drainage pipe works,2306,272,40,120,0,920,920,120,0,0,0,,,,2008-12-08 08:00,2008-12-24 17:00,,2008-10-29 08:00,2008-11-15 17:00,2008-10-29 08:00,2008-11-15 17:00,2008-10-29 08:00,2008-11-15 17:00,,,,,PT_Normal,,,,,qXLx6bq9oEiAwHw6y0MEfg,,,,N,0,0
3661,85560,829,11907,912,1,0,N,N,N,CP_Drtn,TT_Task,DT_FixedDUR2,RV_OK,TK_NotStart,7250084250,Back filling over external drainage pipes,2306,232,24,120,0,1330,1330,120,880,0,880,,,,2008-12-20 08:00,2009-01-05 17:00,,2008-11-16 08:00,2008-12-02 17:00,2008-11-16 08:00,2008-12-02 17:00,2008-11-16 08:00,2008-12-02 17:00,,,,,PT_Normal,,,,,Q6LH66pVAkSfURdRPb2WyA,,,,N,0,0
3662,85561,829,11262,912,1,0,N,N,N,CP_Drtn,TT_Task,DT_FixedDUR2,RV_OK,TK_NotStart,7250085050,Excavation for external fire fighting network,2306,304,0,120,0,1220,1220,120,880,0,880,,,,2008-12-10 08:00,2008-12-27 17:00,,2008-10-27 08:00,2008-11-12 17:00,2008-10-27 08:00,2008-11-12 17:00,2008-10-27 08:00,2008-11-12 17:00,,,,,PT_Normal,,,,,FMKR37PeMkmxv4V3AbYYsQ,,,,N,0,0
3663,85562,829,11262,912,1,0,N,N,N,CP_Drtn,TT_Task,DT_FixedDUR2,RV_OK,TK_NotStart,7250085100,Fire hydrants,2296,304,0,72,0,372,372,72,0,0,0,,,,2009-02-10 08:00,2009-02-19 17:00,,2008-12-28 08:00,2009-01-06 17:00,2008-12-28 08:00,2009-01-06 17:00,2008-12-28 08:00,2009-01-06 17:00,,,,,PT_Normal,,,,,Arnb4Mk8gUCca/cvz+bWNQ,,,,N,0,0
3664,85563,829,11262,912,1,0,N,N,N,CP_Drtn,TT_Task,DT_FixedDUR2,RV_OK,TK_NotStart,7250085150,Construction of valve chambers,2306,304,0,120,0,354,354,120,24,0,24,,,,2008-12-24 08:00,2009-01-10 17:00,,2008-11-10 08:00,2008-11-26 17:00,2008-11-10 08:00,2008-11-26 17:00,2008-11-10 08:00,2008-11-26 17:00,,,,,PT_Normal,,,,,TRxSZZUP50OVBFs7uMvmzw,,,,N,0,0
3665,85564,829,11262,912,1,0,N,N,N,CP_Drtn,TT_Task,DT_FixedDUR2,RV_OK,TK_NotStart,7250085170,Water proofing for chambers,2306,304,0,120,0,204,204,120,24,0,24,,,,2009-01-11 08:00,2009-01-27 17:00,,2008-11-27 08:00,2008-12-14 17:00,2008-11-27 08:00,2008-12-14 17:00,2008-11-27 08:00,2008-12-14 17:00,,,,,PT_Normal,,,,,7Y8/NBYxtUqDE1Nwedpizw,,,,N,0,0
3666,85565,829,11262,912,1,0,N,N,N,CP_Drtn,TT_Task,DT_FixedDUR2,RV_OK,TK_NotStart,7250085200,External fire fighting pipe works,2306,344,40,120,0,920,920,120,0,0,0,,,,2009-01-11 08:00,2009-01-27 17:00,,2008-11-22 08:00,2008-12-08 17:00,2008-11-22 08:00,2008-12-08 17:00,2008-11-22 08:00,2008-12-08 17:00,,,,,PT_Normal,,,,,Zwet5R3xBUSofg6axrft1g,,,,N,0,0
3667,85566,829,11262,912,1,0,N,N,N,CP_Drtn,TT_Task,DT_FixedDUR2,RV_OK,TK_NotStart,7250085250,Back filling over external fire fighting pipes,2306,304,0,120,0,1330,1330,120,880,0,880,,,,2009-01-22 08:00,2009-02-08 17:00,,2008-12-09 08:00,2008-12-25 17:00,2008-12-09 08:00,2008-12-25 17:00,2008-12-09 08:00,2008-12-25 17:00,,,,,PT_Normal,,,,,/6qGMdzZJ02d21kvDS1Rnw,,,,N,0,0
3668,85567,829,11263,912,1,100,N,N,N,CP_Drtn,TT_Task,DT_FixedDUR2,RV_OK,TK_Complete,7250086000,Landscaping work,2283,1160,0,0,856,0,856,856,,,0,,2007-12-08 08:00,2008-04-15 17:00,2009-03-21 08:00,2009-03-19 17:00,,2008-10-02 08:00,2008-10-01 17:00,,,2007-12-08 08:00,2008-04-15 17:00,,,,,PT_Normal,,,,,iFXlfUs/PEmP8v7IL2g3gg,,,,N,856,0
3669,85568,829,11256,913,1,0,N,N,N,CP_Drtn,TT_Task,DT_FixedDUR2,RV_OK,TK_NotStart,7250090002,Potable water house connection & tie in,2296,400,8,32,0,332,332,32,0,0,0,,,,2009-02-25 08:00,2009-02-28 17:00,,2009-01-06 08:00,2009-01-09 17:00,2009-01-06 08:00,2009-01-09 17:00,2009-01-06 08:00,2009-01-09 17:00,,,,,PT_Normal,,,,,IEJ9RWKRskmsDwfC3xpEgw,,,,N,0,0
3670,85569,829,11256,913,1,0,N,N,N,CP_Drtn,TT_Task,DT_FixedDUR2,RV_OK,TK_NotStart,7250090004,Delivery & commissioning of Transforemers,2296,496,8,80,0,480,480,80,0,0,0,,,,2009-02-16 08:00,2009-02-25 17:00,,2008-12-16 08:00,2008-12-25 17:00,2008-12-16 08:00,2008-12-25 17:00,2008-12-16 08:00,2008-12-25 17:00,,,,,PT_Normal,,,,,IoFtZvCktEW8Bv/cnioHxg,,,,N,0,0
3671,85570,829,11256,913,1,0,N,N,N,CP_Drtn,TT_Task,DT_FixedDUR2,RV_OK,TK_NotStart,7250090006,Telecom house connection & tie in,2296,488,0,32,0,232,232,32,0,0,0,,,,2009-03-11 08:00,2009-03-14 17:00,,2009-01-09 08:00,2009-01-12 17:00,2009-01-09 08:00,2009-01-12 17:00,2009-01-09 08:00,2009-01-12 17:00,,,,,PT_Normal,,,,,S9QllpsPr0m8uNx9MbElgQ,,,,N,0,0
3672,85571,829,11256,913,1,0,N,N,N,CP_Drtn,TT_Task,DT_FixedDUR2,RV_OK,TK_NotStart,7250090008,LPG house connection & tie in,2296,560,0,32,0,232,232,32,0,0,0,,,,2009-03-11 08:00,2009-03-14 17:00,,2008-12-31 08:00,2009-01-03 17:00,2008-12-31 08:00,2009-01-03 17:00,2008-12-31 08:00,2009-01-03 17:00,,,,,PT_Normal,,,,,clq0+uyI7UaG4b7ruqtQNQ,,,,N,0,0
3673,85572,829,11256,913,1,0,N,N,N,CP_Drtn,TT_Task,DT_FixedDUR2,RV_OK,TK_NotStart,7250090010,Chilled water house connection & tie in,2296,352,0,32,0,432,432,32,0,0,0,,,,2009-02-22 08:00,2009-02-25 17:00,,2009-01-09 08:00,2009-01-12 17:00,2009-01-09 08:00,2009-01-12 17:00,2009-01-09 08:00,2009-01-12 17:00,,,,,PT_Normal,,,,,rBR8bugmJUSdNQvuHjR35A,,,,N,0,0
3674,85573,829,11256,913,1,0,N,N,N,CP_Drtn,TT_Task,DT_FixedDUR2,RV_OK,TK_NotStart,7250090012,Drainage house connection & tie in,2296,392,0,32,0,632,632,32,0,0,0,,,,2009-02-25 08:00,2009-02-28 17:00,,2009-01-07 08:00,2009-01-10 17:00,2009-01-07 08:00,2009-01-10 17:00,2009-01-07 08:00,2009-01-10 17:00,,,,,PT_Normal,,,,,BnvwyMruxk+XbgBMaUtdVA,,,,N,0,0
3675,85574,829,11256,912,1,0,N,N,N,CP_Drtn,TT_Task,DT_FixedDUR2,RV_OK,TK_NotStart,7250090018,Fire Fighting house connection & tie in,2283,304,0,32,0,32,32,32,0,0,0,,,,2009-02-22 08:00,2009-02-25 17:00,,2009-01-08 08:00,2009-01-12 17:00,2009-01-08 08:00,2009-01-12 17:00,2009-01-08 08:00,2009-01-12 17:00,,,,,PT_Normal,,,,,tTqvEpRAEEmNjFTiLLbYKg,,,,N,0,0
3676,85575,829,11256,912,1,0,N,N,N,CP_Drtn,TT_Task,DT_FixedDUR2,RV_OK,TK_NotStart,7250090028,Fire Alarm house connection & tie in,2283,304,0,32,0,32,32,32,0,0,0,,,,2009-02-22 08:00,2009-02-25 17:00,,2009-01-08 08:00,2009-01-12 17:00,2009-01-08 08:00,2009-01-12 17:00,2009-01-08 08:00,2009-01-12 17:00,,,,,PT_Normal,,,,,RlWMEohFMEClzLkiOSmmHw,,,,N,0,0
3677,85576,829,11534,912,1,100,N,N,N,CP_Drtn,TT_Task,DT_FixedDUR2,RV_OK,TK_Complete,72S0004050,Excavation & compaction,2296,208,0,0,2212.8,0,2212.8,48,2112,2112,0,,2008-07-26 08:00,2008-08-02 17:00,2008-11-02 08:00,2008-11-01 17:00,,2008-10-02 08:00,2008-10-01 17:00,,,2008-07-26 08:00,2008-08-02 17:00,,,,,PT_Normal,,,,,e/hQHQPwKUu2oQJt9ol79A,,,,N,2212.8,2112
3678,85577,829,11534,912,1,100,N,N,N,CP_Drtn,TT_Task,DT_FixedDUR2,RV_OK,TK_Complete,72S0004150,Engineering fill,2296,208,0,0,1660.02,0,1660.02,64,1520,1520,0,,2008-08-30 08:00,2008-09-07 17:00,2008-11-02 08:00,2008-11-01 17:00,,2008-10-02 08:00,2008-10-01 17:00,,,2008-08-30 08:00,2008-09-07 17:00,,,,,PT_Normal,,,,,Hi8WxIGJL0Syl/H1fNt0lQ,,,,N,1660.02,1520
3679,85578,829,11534,912,1,0,N,N,N,CP_Drtn,TT_Task,DT_FixedDUR2,RV_OK,TK_NotStart,72S0004151,Back filling arround SS,2296,208,0,64,0,2735.2,2735.2,64,2544,0,2544,,,,2008-11-05 08:00,2008-11-13 17:00,,2008-10-06 08:00,2008-10-14 17:00,2008-10-06 08:00,2008-10-14 17:00,2008-10-06 08:00,2008-10-14 17:00,,,,,PT_Normal,,,,,1UloPznc2E2XYwQolGVSyA,,,,N,0,0
3680,85579,829,11535,912,1,100,N,N,N,CP_Drtn,TT_Task,DT_FixedDUR2,RV_OK,TK_Complete,72S0006050,Blinding under raft slab,2296,208,0,0,4719,0,4719,16,4528,4528,0,,2008-08-03 08:00,2008-08-04 17:00,2008-11-02 08:00,2008-11-01 17:00,,2008-10-02 08:00,2008-10-01 17:00,,,2008-08-03 08:00,2008-08-04 17:00,,,,,PT_Normal,,,,,doFKD9WZfkiJ9BhJIepI7Q,,,,N,4719,4528
3681,85580,829,11535,912,1,100,N,N,N,CP_Drtn,TT_Task,DT_FixedDUR2,RV_OK,TK_Complete,72S0006051,Blinding under slab on fill,2296,208,0,0,1761,0,1761,16,1680,1680,0,,2008-09-08 08:00,2008-09-09 17:00,2008-11-02 08:00,2008-11-01 17:00,,2008-10-02 08:00,2008-10-01 17:00,,,2008-09-08 08:00,2008-09-09 17:00,,,,,PT_Normal,,,,,UJe4jNKmuUa/qxZudXK2SQ,,,,N,1761,1680
3682,85581,829,11535,912,1,100,N,N,N,CP_Drtn,TT_Task,DT_FixedDUR2,RV_OK,TK_Complete,72S0006150,Construction of raft slab,2296,208,0,0,2130,0,2130,56,124936,124936,0,,2008-08-17 08:00,2008-08-24 17:00,2008-11-02 08:00,2008-11-01 17:00,,2008-10-02 08:00,2008-10-01 17:00,,,2008-08-17 08:00,2008-08-24 17:00,,,,,PT_Normal,,,,,4aEDutM1DkCK8+zEuhKXjw,,,,N,2130,124936
3683,85582,829,11535,912,1,100,N,N,N,CP_Drtn,TT_Task,DT_FixedDUR2,RV_OK,TK_Complete,72S0006200,Neck columns & walls,2296,208,0,0,2580,0,2580,32,56332,56332,0,,2008-08-25 08:00,2008-08-28 17:00,2008-11-02 08:00,2008-11-01 17:00,,2008-10-02 08:00,2008-10-01 17:00,,,2008-08-25 08:00,2008-08-28 17:00,,,,,PT_Normal,,,,,TlhPnRG2cUqxwp1fQnSVdA,,,,N,2580,56332
3684,85583,829,11535,912,1,100,N,N,N,CP_Drtn,TT_Task,DT_FixedDUR2,RV_OK,TK_Complete,72S0006300,Slab on fill,2296,208,0,0,828,0,828,48,45024,45024,0,,2008-09-10 08:00,2008-09-16 17:00,2008-11-02 08:00,2008-11-01 17:00,,2008-10-02 08:00,2008-10-01 17:00,,,2008-09-10 08:00,2008-09-16 17:00,,,,,PT_Normal,,,,,Y73wGC5ikEWXZjGDZocGBQ,,,,N,828,45024
3685,85584,829,11536,912,1,100,N,N,N,CP_Drtn,TT_Task,DT_FixedDUR2,RV_OK,TK_Complete,72S0008050,Block works as permanent shutters for raft slab,2296,208,0,0,402,0,402,32,296,296,0,,2008-08-05 08:00,2008-08-09 17:00,2008-11-02 08:00,2008-11-01 17:00,,2008-10-02 08:00,2008-10-01 17:00,,,2008-08-05 08:00,2008-08-09 17:00,,,,,PT_Normal,,,,,5CwPxsgA+kSVoaqbN6ZvkA,,,,N,402,296
3686,85585,829,11537,912,1,100,N,N,N,CP_Drtn,TT_Task,DT_FixedDUR2,RV_OK,TK_Complete,72S0010050,W/P for raft slab,2296,208,0,0,5466,0,5466,32,4528,4528,0,,2008-08-10 08:00,2008-08-13 17:00,2008-11-02 08:00,2008-11-01 17:00,,2008-10-02 08:00,2008-10-01 17:00,,,2008-08-10 08:00,2008-08-13 17:00,,,,,PT_Normal,,,,,96fKl/Im5kCiroP0HobzUg,,,,N,5466,4528
3687,85586,829,11537,912,1,0,N,N,N,CP_Drtn,TT_Task,DT_FixedDUR2,RV_OK,TK_NotStart,72S0010100,W/P externally for SS,2296,208,0,24,0,2822,2822,24,2544,0,2544,,,,2008-11-02 08:00,2008-11-04 17:00,,2008-10-02 08:00,2008-10-05 17:00,2008-10-02 08:00,2008-10-05 17:00,2008-10-02 08:00,2008-10-05 17:00,,,,,PT_Normal,,,,,VF/uNVk/m0eXcUXnFhheCA,,,,N,0,0
3688,85587,829,11537,912,1,100,N,N,N,CP_Drtn,TT_Task,DT_FixedDUR2,RV_OK,TK_Complete,72S0010150,Screed protection for W/P of raft slab,2296,208,0,0,4468,0,4468,16,4240,4240,0,,2008-08-14 08:00,2008-08-16 17:00,2008-11-02 08:00,2008-11-01 17:00,,2008-10-02 08:00,2008-10-01 17:00,,,2008-08-14 08:00,2008-08-16 17:00,,,,,PT_Normal,,,,,w9eKqdcSKEC/w3ibDW+1iQ,,,,N,4468,4240
3689,85588,829,11592,912,1,100,N,N,N,CP_Drtn,TT_Task,DT_FixedDUR2,RV_OK,TK_Complete,72S0012050,Columns,2296,208,0,0,1030,0,1030,24,28196,28196,0,,2008-09-17 08:00,2008-09-20 17:00,2008-11-02 08:00,2008-11-01 17:00,,2008-10-02 08:00,2008-10-01 17:00,,,2008-09-17 08:00,2008-09-20 17:00,,,,,PT_Normal,,,,,keeardvVhUKKmG1XiJ0x0w,,,,N,1030,28196
3690,85589,829,11592,912,1,100,N,N,N,CP_Drtn,TT_Task,DT_FixedDUR2,RV_OK,TK_Complete,72S0012200,Slab @ substation roof level,2296,208,0,0,3661,0,3661,56,93224,93224,0,,2008-09-21 08:00,2008-09-28 17:00,2008-11-02 08:00,2008-11-01 17:00,,2008-10-02 08:00,2008-10-01 17:00,,,2008-09-21 08:00,2008-09-28 17:00,,,,,PT_Normal,,,,,jXVT51H5tkyjCDrQP22bYQ,,,,N,3661,93224
3691,85590,829,11592,912,1,100,N,N,N,CP_Drtn,TT_Task,DT_FixedDUR2,RV_OK,TK_Complete,72S0012350,Parapet,2296,208,0,0,448,0,448,24,8604,8604,0,,2008-09-29 08:00,2008-10-01 17:00,2008-11-02 08:00,2008-11-01 17:00,,2008-10-02 08:00,2008-10-01 17:00,,,2008-09-29 08:00,2008-10-01 17:00,,,,,PT_Normal,,,,,LpRd7hZKeE2WUzaMv1dyiA,,,,N,448,8604
3692,85591,829,11771,912,1,0,N,N,N,CP_Drtn,TT_Task,DT_FixedDUR2,RV_OK,TK_NotStart,72S0014050,Block walls,2296,424,0,48,0,2484,2484,48,6496,0,6496,,,,2008-12-16 08:00,2008-12-22 17:00,,2008-10-15 08:00,2008-10-21 17:00,2008-10-15 08:00,2008-10-21 17:00,2008-10-15 08:00,2008-10-21 17:00,,,,,PT_Normal,,,,,T6t1jInJR0+s+L/VqfzY1w,,,,N,0,0
3693,85592,829,11922,912,1,0,N,N,N,CP_Drtn,TT_Task,DT_FixedDUR2,RV_OK,TK_NotStart,72S0016050,Internal plaster works,2296,424,0,48,0,5681,5681,48,4952,0,4952,,,,2008-12-29 08:00,2009-01-04 17:00,,2008-10-28 08:00,2008-11-03 17:00,2008-10-28 08:00,2008-11-03 17:00,2008-10-28 08:00,2008-11-03 17:00,,,,,PT_Normal,,,,,2a/3RArCtkaOUDw2ehFlBg,,,,N,0,0
3694,85593,829,11923,912,1,0,N,N,N,CP_Drtn,TT_Task,DT_FixedDUR2,RV_OK,TK_NotStart,72S0018100,Painting base coats,2296,424,0,48,0,6130,6130,48,5792,0,5792,,,,2009-01-05 08:00,2009-01-11 17:00,,2008-11-04 08:00,2008-11-10 17:00,2008-11-04 08:00,2008-11-10 17:00,2008-11-04 08:00,2008-11-10 17:00,,,,,PT_Normal,,,,,7rXEFdDJ2Eex9LMP+dxTsg,,,,N,0,0
3695,85594,829,11923,912,1,0,N,N,N,CP_Drtn,TT_Task,DT_FixedDUR2,RV_OK,TK_NotStart,72S0018150,Painting 1st top coat,2296,424,0,32,0,6114,6114,32,5792,0,5792,,,,2009-01-19 08:00,2009-01-22 17:00,,2008-11-18 08:00,2008-11-22 17:00,2008-11-18 08:00,2008-11-22 17:00,2008-11-18 08:00,2008-11-22 17:00,,,,,PT_Normal,,,,,wqxOPICGzEu1NIZRJJl3ww,,,,N,0,0
3696,85595,829,11923,912,1,0,N,N,N,CP_Drtn,TT_Task,DT_FixedDUR2,RV_OK,TK_NotStart,72S0018200,Painting final coat,2296,440,0,32,0,6114,6114,32,5792,0,5792,,,,2009-01-26 08:00,2009-01-29 17:00,,2008-11-23 08:00,2008-11-26 17:00,2008-11-23 08:00,2008-11-26 17:00,2008-11-23 08:00,2008-11-26 17:00,,,,,PT_Normal,,,,,wf8UTN/+hUCDM4Sao/QGoA,,,,N,0,0
3697,85596,829,11924,912,1,0,N,N,N,CP_Drtn,TT_Task,DT_FixedDUR2,RV_OK,TK_NotStart,72S0022200,Roof light weight concreting & angle fillet,2296,880,0,48,0,2408,2408,48,1888,0,1888,,,,2009-03-03 08:00,2009-03-09 17:00,,2008-10-26 08:00,2008-11-01 17:00,2008-10-26 08:00,2008-11-01 17:00,2008-10-26 08:00,2008-11-01 17:00,,,,,PT_Normal,,,,,9qAS0g8AhkGJe45SkLoftA,,,,N,0,0
3698,85597,829,11924,912,1,0,N,N,N,CP_Drtn,TT_Task,DT_FixedDUR2,RV_OK,TK_NotStart,72S0022250,Roof membrane,2296,880,0,48,0,2314,2314,48,1888,0,1888,,,,2009-03-10 08:00,2009-03-16 17:00,,2008-11-02 08:00,2008-11-08 17:00,2008-11-02 08:00,2008-11-08 17:00,2008-11-02 08:00,2008-11-08 17:00,,,,,PT_Normal,,,,,JzHVZnrrb0iVWTDHTh7Hxg,,,,N,0,0
3699,85598,829,11924,912,1,0,N,N,N,CP_Drtn,TT_Task,DT_FixedDUR2,RV_OK,TK_NotStart,72S0022300,Polystyrene insulation & seperation layers,2296,880,0,48,0,2125,2125,48,1888,0,1888,,,,2009-03-17 08:00,2009-03-23 17:00,,2008-11-09 08:00,2008-11-15 17:00,2008-11-09 08:00,2008-11-15 17:00,2008-11-09 08:00,2008-11-15 17:00,,,,,PT_Normal,,,,,cVNYzLQoD0CnrxkLkvfGww,,,,N,0,0
3700,85599,829,11924,912,1,0,N,N,N,CP_Drtn,TT_Task,DT_FixedDUR2,RV_OK,TK_NotStart,72S0022400,Gravel fill,2296,880,0,48,0,2030,2030,48,1888,0,1888,,,,2009-03-24 08:00,2009-03-30 17:00,,2008-11-16 08:00,2008-11-22 17:00,2008-11-16 08:00,2008-11-22 17:00,2008-11-16 08:00,2008-11-22 17:00,,,,,PT_Normal,,,,,bG4XQlaLF0+C7snTzyz+nA,,,,N,0,0
3701,85600,829,11924,912,1,0,N,N,N,CP_Drtn,TT_Task,DT_FixedDUR2,RV_OK,TK_NotStart,72S0022450,Aluminium flashing,2296,880,568,48,0,636,636,48,512,0,512,,,,2009-03-31 08:00,2009-04-06 17:00,,2008-11-23 08:00,2008-11-29 17:00,2008-11-23 08:00,2008-11-29 17:00,2008-11-23 08:00,2008-11-29 17:00,,,,,PT_Normal,,,,,R7jRK+3H8ECGLfEyevc8OA,,,,N,0,0
3702,85601,829,11716,912,1,0,N,N,N,CP_Drtn,TT_Task,DT_FixedDUR2,RV_OK,TK_NotStart,72S0024100,Louvers,2296,424,0,48,0,160,160,48,32,0,32,,,,2009-01-12 08:00,2009-01-18 17:00,,2008-11-11 08:00,2008-11-17 17:00,2008-11-11 08:00,2008-11-17 17:00,2008-11-11 08:00,2008-11-17 17:00,,,,,PT_Normal,,,,,RJ8uEY1VJUKoV2S3WV8u5w,,,,N,0,0
3703,85602,829,11817,912,1,0,N,N,N,CP_Drtn,TT_Task,DT_FixedDUR2,RV_OK,TK_NotStart,72S0026050,Steel doors & ironmongery,2306,424,0,32,0,64,64,32,32,0,32,,,,2009-01-12 08:00,2009-01-15 17:00,,2008-11-11 08:00,2008-11-15 17:00,2008-11-11 08:00,2008-11-15 17:00,2008-11-11 08:00,2008-11-15 17:00,,,,,PT_Normal,,,,,H/+MjVSDQUWag+o/Tunkag,,,,N,0,0
3704,85603,829,11927,912,1,0,N,N,N,CP_Drtn,TT_Task,DT_FixedDUR2,RV_OK,TK_NotStart,72S0028300,Chequer plate,2296,424,0,32,0,70,70,32,8,0,8,,,,2009-01-17 08:00,2009-01-20 17:00,,2008-11-16 08:00,2008-11-19 17:00,2008-11-16 08:00,2008-11-19 17:00,2008-11-16 08:00,2008-11-19 17:00,,,,,PT_Normal,,,,,zfRra77gbEeXOP7uiXTuqQ,,,,N,0,0
3705,85604,829,11510,913,1,0,N,N,N,CP_Drtn,TT_Task,DT_FixedDUR2,RV_OK,TK_NotStart,72S0038100,Epoxy coating,2296,1016,648,32,0,2634,2634,32,2168,0,2168,,,,2009-04-03 08:00,2009-04-06 17:00,,2008-11-27 08:00,2008-11-30 17:00,2008-11-27 08:00,2008-11-30 17:00,2008-11-27 08:00,2008-11-30 17:00,,,,,PT_Normal,,,,,S9rO+CiyF0mB/ieIuh3z5w,,,,N,0,0
3706,85605,829,12839,912,1,100,N,N,N,CP_Drtn,TT_Task,DT_FixedDUR2,RV_OK,TK_Complete,72S0050050,MEP structure embedded provisions,2296,208,0,0,112,0,112,24,,,0,,2008-09-20 08:00,2008-09-22 17:00,2008-11-02 08:00,2008-11-01 17:00,,2008-10-02 08:00,2008-10-01 17:00,,,2008-09-20 08:00,2008-09-22 17:00,,,,,PT_Normal,,,,,P+2R9jzFtkGyEWTSMkiiOg,,,,N,112,0
3707,85606,829,12822,912,1,0,N,N,N,CP_Drtn,TT_Task,DT_FixedDUR2,RV_OK,TK_NotStart,72S0052150,FCU/ACCU's installation,2296,432,8,48,0,268,268,48,0,0,0,,,,2009-01-12 08:00,2009-01-18 17:00,,2008-11-10 08:00,2008-11-16 17:00,2008-11-10 08:00,2008-11-16 17:00,2008-11-10 08:00,2008-11-16 17:00,,,,,PT_Normal,,,,,wo5nXpu02EeVrlObHn10bg,,,,N,0,0
3708,85607,829,12824,912,1,0,N,N,N,CP_Drtn,TT_Task,DT_FixedDUR2,RV_OK,TK_NotStart,72S0066050,Chasing and installation of conduits,2296,424,0,48,0,378,378,48,0,0,0,,,,2008-12-22 08:00,2008-12-28 17:00,,2008-10-21 08:00,2008-10-27 17:00,2008-10-21 08:00,2008-10-27 17:00,2008-10-21 08:00,2008-10-27 17:00,,,,,PT_Normal,,,,,BQLh5VfEAEKrNGYgI+c/6w,,,,N,0,0
3709,85608,829,12826,912,1,0,N,N,N,CP_Drtn,TT_Task,DT_FixedDUR2,RV_OK,TK_NotStart,72S0068050,Single core wiring,2296,688,80,48,0,114,114,48,0,0,0,,,,2009-02-12 08:00,2009-02-18 17:00,,2008-11-04 08:00,2008-11-10 17:00,2008-11-04 08:00,2008-11-10 17:00,2008-11-04 08:00,2008-11-10 17:00,,,,,PT_Normal,,,,,rRnTRS6nC0yNu5DY6KIBsA,,,,N,0,0
3710,85609,829,12827,912,1,0,N,N,N,CP_Drtn,TT_Task,DT_FixedDUR2,RV_OK,TK_NotStart,72S0068200,LV panels & capacitor bank,2296,424,0,64,0,1164,1164,64,0,0,0,,,,2009-01-21 08:00,2009-01-29 17:00,,2008-11-20 08:00,2008-11-29 17:00,2008-11-20 08:00,2008-11-29 17:00,2008-11-20 08:00,2008-11-29 17:00,,,,,PT_Normal,,,,,m7HQZOZAcE6NObe2xfxjIg,,,,N,0,0
3711,85610,829,12827,912,1,0,N,N,N,CP_Drtn,TT_Task,DT_FixedDUR2,RV_OK,TK_NotStart,72S0068250,DB assembly,2296,608,184,48,0,114,114,48,0,0,0,,,,2009-02-19 08:00,2009-02-25 17:00,,2008-11-23 08:00,2008-11-29 17:00,2008-11-23 08:00,2008-11-29 17:00,2008-11-23 08:00,2008-11-29 17:00,,,,,PT_Normal,,,,,ma/VjfnLKUOhVkKmXic0PQ,,,,N,0,0
3712,85611,829,12827,912,1,0,N,N,N,CP_Drtn,TT_Task,DT_FixedDUR2,RV_OK,TK_NotStart,72S0068350,Light fittings,2296,720,432,48,0,92,92,48,0,0,0,,,,2009-03-08 08:00,2009-03-14 17:00,,2008-11-23 08:00,2008-11-29 17:00,2008-11-23 08:00,2008-11-29 17:00,2008-11-23 08:00,2008-11-29 17:00,,,,,PT_Normal,,,,,KXqpc4zK20OJNBFwf2Vtaw,,,,N,0,0
3713,85612,829,12827,912,1,0,N,N,N,CP_Drtn,TT_Task,DT_FixedDUR2,RV_OK,TK_NotStart,72S0068450,"Generators, ATS panels & Fuel tanks",2296,424,0,64,0,908.8,908.8,64,0,0,0,,,,2009-01-21 08:00,2009-01-29 17:00,,2008-11-20 08:00,2008-11-29 17:00,2008-11-20 08:00,2008-11-29 17:00,2008-11-20 08:00,2008-11-29 17:00,,,,,PT_Normal,,,,,d0dg8yRbwUm70JqamueSHw,,,,N,0,0
3714,85613,829,12827,912,1,0,N,N,N,CP_Drtn,TT_Task,DT_FixedDUR2,RV_OK,TK_NotStart,72S0068600,Switches & sockets,2296,720,432,48,0,70,70,48,0,0,0,,,,2009-03-08 08:00,2009-03-14 17:00,,2008-11-23 08:00,2008-11-29 17:00,2008-11-23 08:00,2008-11-29 17:00,2008-11-23 08:00,2008-11-29 17:00,,,,,PT_Normal,,,,,3UUi31h1v0G+uY9lcBEP7Q,,,,N,0,0
3715,85614,829,12829,912,1,0,N,N,N,CP_Drtn,TT_Task,DT_FixedDUR2,RV_OK,TK_NotStart,72S0074050,Fire alarm cable,2296,504,80,48,0,136,136,48,0,0,0,,,,2009-01-17 08:00,2009-01-22 17:00,,2008-11-04 08:00,2008-11-10 17:00,2008-11-04 08:00,2008-11-10 17:00,2008-11-04 08:00,2008-11-10 17:00,,,,,PT_Normal,,,,,AMwYXLsyrE2qLrQRID+dmQ,,,,N,0,0
3716,85615,829,12830,912,1,0,N,N,N,CP_Drtn,TT_Task,DT_FixedDUR2,RV_OK,TK_NotStart,72S0074100,Fire alarm fittings,2296,424,0,48,0,64.5,64.5,48,0,0,0,,,,2009-01-24 08:00,2009-01-29 17:00,,2008-11-23 08:00,2008-11-29 17:00,2008-11-23 08:00,2008-11-29 17:00,2008-11-23 08:00,2008-11-29 17:00,,,,,PT_Normal,,,,,KQR2k+V28kCILARcYliMuw,,,,N,0,0
3717,85616,829,11540,912,1,100,N,N,N,CP_Drtn,TT_Task,DT_FixedDUR2,RV_OK,TK_Complete,72X0004050,Excavation & compaction,2296,296,0,0,2196.8,0,2196.8,32,2112,2112,0,,2008-07-26 08:00,2008-07-29 17:00,2008-11-15 08:00,2008-11-13 17:00,,2008-10-02 08:00,2008-10-01 17:00,,,2008-07-26 08:00,2008-07-29 17:00,,,,,PT_Normal,,,,,kPRUoKN7bUeNJNEnlDWOqw,,,,N,2196.8,2112
3718,85617,829,11540,912,1,100,N,N,N,CP_Drtn,TT_Task,DT_FixedDUR2,RV_OK,TK_Complete,72X0004150,Engineering fill,2296,296,0,0,1644.02,0,1644.02,48,1520,1520,0,,2008-08-23 08:00,2008-08-28 17:00,2008-11-15 08:00,2008-11-13 17:00,,2008-10-02 08:00,2008-10-01 17:00,,,2008-08-23 08:00,2008-08-28 17:00,,,,,PT_Normal,,,,,XjHN4vmfKkO+O7Mgg2Laww,,,,N,1644.02,1520
3719,85618,829,11540,912,1,100,N,N,N,CP_Drtn,TT_Task,DT_FixedDUR2,RV_OK,TK_Complete,72X0004151,Back filling arround SS,2296,296,0,0,2719.2,0,2719.2,48,2544,2544,0,,2008-09-25 08:00,2008-10-01 17:00,2008-11-15 08:00,2008-11-13 17:00,,2008-10-02 08:00,2008-10-01 17:00,,,2008-09-25 08:00,2008-10-01 17:00,,,,,PT_Normal,,,,,jmmHeZoSIEmkMPFn1d3grA,,,,N,2719.2,2544
3720,85619,829,11332,912,1,100,N,N,N,CP_Drtn,TT_Task,DT_FixedDUR2,RV_OK,TK_Complete,72X0006050,Blinding under raft slab,2296,296,0,0,4711,0,4711,8,4528,4528,0,,2008-07-30 08:00,2008-07-30 17:00,2008-11-15 08:00,2008-11-13 17:00,,2008-10-02 08:00,2008-10-01 17:00,,,2008-07-30 08:00,2008-07-30 17:00,,,,,PT_Normal,,,,,y8OKgInIDk6IhZiGpnLPEQ,,,,N,4711,4528
3721,85620,829,11332,912,1,100,N,N,N,CP_Drtn,TT_Task,DT_FixedDUR2,RV_OK,TK_Complete,72X0006051,Blinding under slab on fill,2296,296,0,0,1753,0,1753,8,1680,1680,0,,2008-08-30 08:00,2008-08-30 17:00,2008-11-15 08:00,2008-11-13 17:00,,2008-10-02 08:00,2008-10-01 17:00,,,2008-08-30 08:00,2008-08-30 17:00,,,,,PT_Normal,,,,,U9JEKIJVZ0uvBEtvym/sww,,,,N,1753,1680
3722,85621,829,11332,912,1,100,N,N,N,CP_Drtn,TT_Task,DT_FixedDUR2,RV_OK,TK_Complete,72X0006150,Construction of raft slab,2296,296,0,0,2130,0,2130,56,124936,124936,0,,2008-08-10 08:00,2008-08-17 17:00,2008-11-15 08:00,2008-11-13 17:00,,2008-10-02 08:00,2008-10-01 17:00,,,2008-08-10 08:00,2008-08-17 17:00,,,,,PT_Normal,,,,,yc3vL5wv5kG8dWq4MiUOOQ,,,,N,2130,124936
3723,85622,829,11332,912,1,100,N,N,N,CP_Drtn,TT_Task,DT_FixedDUR2,RV_OK,TK_Complete,72X0006200,Neck columns & walls,2296,296,0,0,2580,0,2580,32,56332,56332,0,,2008-08-18 08:00,2008-08-21 17:00,2008-11-15 08:00,2008-11-13 17:00,,2008-10-02 08:00,2008-10-01 17:00,,,2008-08-18 08:00,2008-08-21 17:00,,,,,PT_Normal,,,,,W7ekQ/n+ekGrY2weyBXprA,,,,N,2580,56332
3724,85623,829,11332,912,1,100,N,N,N,CP_Drtn,TT_Task,DT_FixedDUR2,RV_OK,TK_Complete,72X0006300,Slab on fill,2296,296,0,0,828,0,828,48,45024,45024,0,,2008-08-31 08:00,2008-09-06 17:00,2008-11-15 08:00,2008-11-13 17:00,,2008-10-02 08:00,2008-10-01 17:00,,,2008-08-31 08:00,2008-09-06 17:00,,,,,PT_Normal,,,,,3jmDEd8RZUCouUkRNBHDRQ,,,,N,828,45024
3725,85624,829,11333,912,1,100,N,N,N,CP_Drtn,TT_Task,DT_FixedDUR2,RV_OK,TK_Complete,72X0008050,Block works as permanent shutters for raft slab,2296,296,0,0,394,0,394,24,296,296,0,,2008-08-02 08:00,2008-08-04 17:00,2008-11-15 08:00,2008-11-13 17:00,,2008-10-02 08:00,2008-10-01 17:00,,,2008-08-02 08:00,2008-08-04 17:00,,,,,PT_Normal,,,,,NZM6PNMYCUCIukBA1fyVew,,,,N,394,296
3726,85625,829,11543,912,1,100,N,N,N,CP_Drtn,TT_Task,DT_FixedDUR2,RV_OK,TK_Complete,72X0010050,W/P for raft slab,2296,296,0,0,5458,0,5458,24,4528,4528,0,,2008-08-05 08:00,2008-08-07 17:00,2008-11-15 08:00,2008-11-13 17:00,,2008-10-02 08:00,2008-10-01 17:00,,,2008-08-05 08:00,2008-08-07 17:00,,,,,PT_Normal,,,,,SnaadE4ii0+Oj+m+v8cZhA,,,,N,5458,4528
3727,85626,829,11543,912,1,100,N,N,N,CP_Drtn,TT_Task,DT_FixedDUR2,RV_OK,TK_Complete,72X0010100,W/P externally for SS,2296,296,0,0,2822,0,2822,24,2544,2544,0,,2008-09-22 08:00,2008-09-24 17:00,2008-11-15 08:00,2008-11-13 17:00,,2008-10-02 08:00,2008-10-01 17:00,,,2008-09-22 08:00,2008-09-24 17:00,,,,,PT_Normal,,,,,+gnMbkopFEqKUHSufFziLA,,,,N,2822,2544
3728,85627,829,11543,912,1,100,N,N,N,CP_Drtn,TT_Task,DT_FixedDUR2,RV_OK,TK_Complete,72X0010150,Screed protection for W/P of raft slab,2296,296,0,0,4460,0,4460,8,4240,4240,0,,2008-08-09 08:00,2008-08-09 17:00,2008-11-15 08:00,2008-11-13 17:00,,2008-10-02 08:00,2008-10-01 17:00,,,2008-08-09 08:00,2008-08-09 17:00,,,,,PT_Normal,,,,,MzRUpldGQ0eyxn+sW26IJQ,,,,N,4460,4240
3729,85628,829,11595,912,1,100,N,N,N,CP_Drtn,TT_Task,DT_FixedDUR2,RV_OK,TK_Complete,72X0012050,Columns,2296,296,0,0,1030,0,1030,24,28196,28196,0,,2008-09-07 08:00,2008-09-09 17:00,2008-11-15 08:00,2008-11-13 17:00,,2008-10-02 08:00,2008-10-01 17:00,,,2008-09-07 08:00,2008-09-09 17:00,,,,,PT_Normal,,,,,fC0/yPyPe0yBkURDES4SeA,,,,N,1030,28196
3730,85629,829,11595,912,1,100,N,N,N,CP_Drtn,TT_Task,DT_FixedDUR2,RV_OK,TK_Complete,72X0012200,Slab @ substation roof level,2296,296,0,0,3661,0,3661,56,93224,93224,0,,2008-09-10 08:00,2008-09-17 17:00,2008-11-15 08:00,2008-11-13 17:00,,2008-10-02 08:00,2008-10-01 17:00,,,2008-09-10 08:00,2008-09-17 17:00,,,,,PT_Normal,,,,,Hg/BZCR/8EahzCMCKyqWtA,,,,N,3661,93224
3731,85630,829,11595,912,1,100,N,N,N,CP_Drtn,TT_Task,DT_FixedDUR2,RV_OK,TK_Complete,72X0012350,Parapet,2296,296,0,0,448,0,448,24,8604,8604,0,,2008-09-18 08:00,2008-09-21 17:00,2008-11-15 08:00,2008-11-13 17:00,,2008-10-02 08:00,2008-10-01 17:00,,,2008-09-18 08:00,2008-09-21 17:00,,,,,PT_Normal,,,,,yNkx7LCNIkidOFLO34qxgw,,,,N,448,8604
3732,85631,829,11722,912,1,0,N,N,N,CP_Drtn,TT_Task,DT_FixedDUR2,RV_OK,TK_NotStart,72X0014050,Block walls,2296,568,0,48,0,2484,2484,48,6496,0,6496,,,,2008-12-27 08:00,2009-01-01 17:00,,2008-10-05 08:00,2008-10-11 17:00,2008-10-05 08:00,2008-10-11 17:00,2008-10-05 08:00,2008-10-11 17:00,,,,,PT_Normal,,,,,A2wntXrEB0KJTSqe2FbBaQ,,,,N,0,0
3733,85632,829,11723,912,1,0,N,N,N,CP_Drtn,TT_Task,DT_FixedDUR2,RV_OK,TK_NotStart,72X0016050,Internal plaster works,2296,568,0,32,0,5665,5665,32,4952,0,4952,,,,2009-01-05 08:00,2009-01-08 17:00,,2008-10-14 08:00,2008-10-18 17:00,2008-10-14 08:00,2008-10-18 17:00,2008-10-14 08:00,2008-10-18 17:00,,,,,PT_Normal,,,,,QMUkKdTKhE2c+HIx4Dgvag,,,,N,0,0
3734,85633,829,11515,912,1,0,N,N,N,CP_Drtn,TT_Task,DT_FixedDUR2,RV_OK,TK_NotStart,72X0018100,Painting base coats,2296,568,0,32,0,6404,6404,32,5792,0,5792,,,,2009-01-10 08:00,2009-01-13 17:00,,2008-10-19 08:00,2008-10-22 17:00,2008-10-19 08:00,2008-10-22 17:00,2008-10-19 08:00,2008-10-22 17:00,,,,,PT_Normal,,,,,/REkWMxJXEC40GgOkdHI+Q,,,,N,0,0
3735,85634,829,11515,912,1,0,N,N,N,CP_Drtn,TT_Task,DT_FixedDUR2,RV_OK,TK_NotStart,72X0018150,Painting 1st top coat,2296,568,0,32,0,6114,6114,32,5792,0,5792,,,,2009-01-19 08:00,2009-01-22 17:00,,2008-10-28 08:00,2008-11-01 17:00,2008-10-28 08:00,2008-11-01 17:00,2008-10-28 08:00,2008-11-01 17:00,,,,,PT_Normal,,,,,zK8njbbiqU2wHcMDtpvciw,,,,N,0,0
3736,85635,829,11515,912,1,0,N,N,N,CP_Drtn,TT_Task,DT_FixedDUR2,RV_OK,TK_NotStart,72X0018200,Painting final coat,2296,584,0,32,0,6114,6114,32,5792,0,5792,,,,2009-01-26 08:00,2009-01-29 17:00,,2008-11-02 08:00,2008-11-05 17:00,2008-11-02 08:00,2008-11-05 17:00,2008-11-02 08:00,2008-11-05 17:00,,,,,PT_Normal,,,,,FRK5DExs20uNsdRJ2OJ+zw,,,,N,0,0
3737,85636,829,11516,912,1,0,N,N,N,CP_Drtn,TT_Task,DT_FixedDUR2,RV_OK,TK_NotStart,72X0022200,Roof light weight concreting & angle fillet,2296,952,0,48,0,2408,2408,48,1888,0,1888,,,,2009-03-03 08:00,2009-03-09 17:00,,2008-10-15 08:00,2008-10-21 17:00,2008-10-15 08:00,2008-10-21 17:00,2008-10-15 08:00,2008-10-21 17:00,,,,,PT_Normal,,,,,QEYywAvpN0Gzi/+rqag7Hg,,,,N,0,0
3738,85637,829,11516,912,1,0,N,N,N,CP_Drtn,TT_Task,DT_FixedDUR2,RV_OK,TK_NotStart,72X0022250,Roof membrane,2296,952,0,48,0,2314,2314,48,1888,0,1888,,,,2009-03-10 08:00,2009-03-16 17:00,,2008-10-22 08:00,2008-10-28 17:00,2008-10-22 08:00,2008-10-28 17:00,2008-10-22 08:00,2008-10-28 17:00,,,,,PT_Normal,,,,,QeB2tIx4d0Gw9bXzWmfQrg,,,,N,0,0
3739,85638,829,11516,912,1,0,N,N,N,CP_Drtn,TT_Task,DT_FixedDUR2,RV_OK,TK_NotStart,72X0022300,Polystyrene insulation & seperation layers,2296,952,0,48,0,2314,2314,48,1888,0,1888,,,,2009-03-17 08:00,2009-03-23 17:00,,2008-10-29 08:00,2008-11-04 17:00,2008-10-29 08:00,2008-11-04 17:00,2008-10-29 08:00,2008-11-04 17:00,,,,,PT_Normal,,,,,wAmdoo0a9ku9vCn99SMjXQ,,,,N,0,0
3740,85639,829,11516,912,1,0,N,N,N,CP_Drtn,TT_Task,DT_FixedDUR2,RV_OK,TK_NotStart,72X0022400,Gravel fill,2296,952,0,48,0,2124,2124,48,1888,0,1888,,,,2009-03-24 08:00,2009-03-30 17:00,,2008-11-05 08:00,2008-11-11 17:00,2008-11-05 08:00,2008-11-11 17:00,2008-11-05 08:00,2008-11-11 17:00,,,,,PT_Normal,,,,,2yNR1srvC0+PrdFGPUT2VQ,,,,N,0,0
3741,85640,829,11516,912,1,0,N,N,N,CP_Drtn,TT_Task,DT_FixedDUR2,RV_OK,TK_NotStart,72X0022450,Aluminium flashing,2296,952,640,48,0,636,636,48,512,0,512,,,,2009-03-31 08:00,2009-04-06 17:00,,2008-11-12 08:00,2008-11-18 17:00,2008-11-12 08:00,2008-11-18 17:00,2008-11-12 08:00,2008-11-18 17:00,,,,,PT_Normal,,,,,+9S8ldK2M0eEzFzgwJA95w,,,,N,0,0
3742,85641,829,11726,912,1,0,N,N,N,CP_Drtn,TT_Task,DT_FixedDUR2,RV_OK,TK_NotStart,72X0024100,Louvers,2296,568,0,32,0,144,144,32,32,0,32,,,,2009-01-14 08:00,2009-01-18 17:00,,2008-10-23 08:00,2008-10-27 17:00,2008-10-23 08:00,2008-10-27 17:00,2008-10-23 08:00,2008-10-27 17:00,,,,,PT_Normal,,,,,o8j50x/FsUSsjGea2QdYig,,,,N,0,0
3743,85642,829,11936,912,1,0,N,N,N,CP_Drtn,TT_Task,DT_FixedDUR2,RV_OK,TK_NotStart,72X0026050,Steel doors & ironmongery,2306,576,0,24,0,56,56,24,32,0,32,,,,2009-01-15 08:00,2009-01-18 17:00,,2008-10-23 08:00,2008-10-26 17:00,2008-10-23 08:00,2008-10-26 17:00,2008-10-23 08:00,2008-10-26 17:00,,,,,PT_Normal,,,,,VTm/LBFB0kKZwgbwDmPmig,,,,N,0,0
3744,85643,829,11519,912,1,0,N,N,N,CP_Drtn,TT_Task,DT_FixedDUR2,RV_OK,TK_NotStart,72X0028300,Chequer plate,2296,576,0,24,0,62,62,24,8,0,8,,,,2009-01-19 08:00,2009-01-21 17:00,,2008-10-27 08:00,2008-10-29 17:00,2008-10-27 08:00,2008-10-29 17:00,2008-10-27 08:00,2008-10-29 17:00,,,,,PT_Normal,,,,,6Z1exUVGLUyWGq5n0z2nfQ,,,,N,0,0
3745,85644,829,11729,913,1,0,N,N,N,CP_Drtn,TT_Task,DT_FixedDUR2,RV_OK,TK_NotStart,72X0038100,Epoxy coating,2296,1184,816,32,0,2634,2634,32,2168,0,2168,,,,2009-04-03 08:00,2009-04-06 17:00,,2008-11-06 08:00,2008-11-09 17:00,2008-11-06 08:00,2008-11-09 17:00,2008-11-06 08:00,2008-11-09 17:00,,,,,PT_Normal,,,,,biIS3VcFnEm2guu2PGcuSw,,,,N,0,0
3746,85645,829,12834,912,1,100,N,N,N,CP_Drtn,TT_Task,DT_FixedDUR2,RV_OK,TK_Complete,72X0050050,MEP structure embedded provisions,2296,296,0,0,112,0,112,24,,,0,,2008-09-09 08:00,2008-09-11 17:00,2008-11-15 08:00,2008-11-13 17:00,,2008-10-02 08:00,2008-10-01 17:00,,,2008-09-09 08:00,2008-09-11 17:00,,,,,PT_Normal,,,,,rZ5hrustFkmXTPev3ItFQQ,,,,N,112,0
3747,85646,829,12836,912,1,0,N,N,N,CP_Drtn,TT_Task,DT_FixedDUR2,RV_OK,TK_NotStart,72X0052150,FCU/ACCU's installation,2296,568,0,48,0,268,268,48,0,0,0,,,,2009-01-12 08:00,2009-01-18 17:00,,2008-10-21 08:00,2008-10-27 17:00,2008-10-21 08:00,2008-10-27 17:00,2008-10-21 08:00,2008-10-27 17:00,,,,,PT_Normal,,,,,qjlHD4slQUusiyfhh7r4dA,,,,N,0,0
3748,85647,829,12838,912,1,0,N,N,N,CP_Drtn,TT_Task,DT_FixedDUR2,RV_OK,TK_NotStart,72X0066050,Chasing and installation of conduits,2296,568,0,48,0,708,708,48,0,0,0,,,,2009-01-01 08:00,2009-01-07 17:00,,2008-10-11 08:00,2008-10-16 17:00,2008-10-11 08:00,2008-10-16 17:00,2008-10-11 08:00,2008-10-16 17:00,,,,,PT_Normal,,,,,H/bVsE17J0C6VJowINHOOA,,,,N,0,0
3749,85648,829,12840,912,1,0,N,N,N,CP_Drtn,TT_Task,DT_FixedDUR2,RV_OK,TK_NotStart,72X0068050,Single core wiring,2296,800,48,48,0,114,114,48,0,0,0,,,,2009-02-12 08:00,2009-02-18 17:00,,2008-10-19 08:00,2008-10-25 17:00,2008-10-19 08:00,2008-10-25 17:00,2008-10-19 08:00,2008-10-25 17:00,,,,,PT_Normal,,,,,UOtWl7WteE+jBLtWDDZ3dQ,,,,N,0,0
3750,85649,829,12841,912,1,0,N,N,N,CP_Drtn,TT_Task,DT_FixedDUR2,RV_OK,TK_NotStart,72X0068200,LV panels & capacitor bank,2296,576,0,56,0,1156,1156,56,0,0,0,,,,2009-01-22 08:00,2009-01-29 17:00,,2008-10-30 08:00,2008-11-06 17:00,2008-10-30 08:00,2008-11-06 17:00,2008-10-30 08:00,2008-11-06 17:00,,,,,PT_Normal,,,,,n5dbNYlsaUGqdyLBTknwtA,,,,N,0,0
3751,85650,829,12841,912,1,0,N,N,N,CP_Drtn,TT_Task,DT_FixedDUR2,RV_OK,TK_NotStart,72X0068250,DB assembly,2296,752,328,48,0,114,114,48,0,0,0,,,,2009-02-19 08:00,2009-02-25 17:00,,2008-11-02 08:00,2008-11-08 17:00,2008-11-02 08:00,2008-11-08 17:00,2008-11-02 08:00,2008-11-08 17:00,,,,,PT_Normal,,,,,KX/0ZsRcnkC3hYogWQhOJw,,,,N,0,0
3752,85651,829,12841,912,1,0,N,N,N,CP_Drtn,TT_Task,DT_FixedDUR2,RV_OK,TK_NotStart,72X0068350,Light fittings,2296,864,576,48,0,92,92,48,0,0,0,,,,2009-03-08 08:00,2009-03-14 17:00,,2008-11-02 08:00,2008-11-08 17:00,2008-11-02 08:00,2008-11-08 17:00,2008-11-02 08:00,2008-11-08 17:00,,,,,PT_Normal,,,,,9iWR3r24HE23OGz1OSPznQ,,,,N,0,0
3753,85652,829,12841,912,1,0,N,N,N,CP_Drtn,TT_Task,DT_FixedDUR2,RV_OK,TK_NotStart,72X0068450,"Generators, ATS panels & Fuel tanks",2296,576,152,56,0,900.8,900.8,56,0,0,0,,,,2009-01-22 08:00,2009-01-29 17:00,,2008-10-30 08:00,2008-11-06 17:00,2008-10-30 08:00,2008-11-06 17:00,2008-10-30 08:00,2008-11-06 17:00,,,,,PT_Normal,,,,,W6wBn6BEQkKLR8WcoUSbXA,,,,N,0,0
3754,85653,829,12841,912,1,0,N,N,N,CP_Drtn,TT_Task,DT_FixedDUR2,RV_OK,TK_NotStart,72X0068600,Switches & sockets,2296,864,576,48,0,70,70,48,0,0,0,,,,2009-03-08 08:00,2009-03-14 17:00,,2008-11-02 08:00,2008-11-08 17:00,2008-11-02 08:00,2008-11-08 17:00,2008-11-02 08:00,2008-11-08 17:00,,,,,PT_Normal,,,,,AL97VdLyi0icuDKT1hXfdg,,,,N,0,0
3755,85654,829,12843,912,1,0,N,N,N,CP_Drtn,TT_Task,DT_FixedDUR2,RV_OK,TK_NotStart,72X0074050,Fire alarm cable,2296,616,48,48,0,136,136,48,0,0,0,,,,2009-01-17 08:00,2009-01-22 17:00,,2008-10-19 08:00,2008-10-25 17:00,2008-10-19 08:00,2008-10-25 17:00,2008-10-19 08:00,2008-10-25 17:00,,,,,PT_Normal,,,,,brQC8tBTrkqUqaCvz3aftA,,,,N,0,0
3756,85655,829,12872,912,1,0,N,N,N,CP_Drtn,TT_Task,DT_FixedDUR2,RV_OK,TK_NotStart,72X0074100,Fire alarm fittings,2296,568,144,48,0,81,81,48,0,0,0,,,,2009-01-24 08:00,2009-01-29 17:00,,2008-11-02 08:00,2008-11-08 17:00,2008-11-02 08:00,2008-11-08 17:00,2008-11-02 08:00,2008-11-08 17:00,,,,,PT_Normal,,,,,OyhkonCND06qYyd6BwCZYg,,,,N,0,0
3757,85656,829,10527,912,1,0,N,N,N,CP_Drtn,TT_Task,DT_FixedDUR2,RV_OK,TK_NotStart,80000CO100,Structural As-built drawings,2283,584,128,224,0,224,224,224,0,0,0,,,,2009-01-13 08:00,2009-02-14 17:00,,2008-10-20 08:00,2008-11-20 17:00,2008-10-20 08:00,2008-11-20 17:00,2008-10-20 08:00,2008-11-20 17:00,,,,,PT_Normal,,,,,ubwIxc+slUmNA1u0wH2WyA,,,,N,0,0
3758,85657,829,10527,912,1,0,N,N,N,CP_Drtn,TT_Task,DT_FixedDUR2,RV_OK,TK_NotStart,80000CO200,Architectural As-built drawings,2283,456,128,312,0,312,312,312,0,0,0,,,,2009-02-04 08:00,2009-03-21 17:00,,2008-11-30 08:00,2009-01-13 17:00,2008-11-30 08:00,2009-01-13 17:00,2008-11-30 08:00,2009-01-13 17:00,,,,,PT_Normal,,,,,K6GBkUZbTUqFf7gKjsxgOg,,,,N,0,0
3759,85658,829,10527,912,1,0,N,N,N,CP_Drtn,TT_Task,DT_FixedDUR2,RV_OK,TK_NotStart,80000CO300,Mechanical As-built drawings,2283,328,0,312,0,312,312,312,0,0,0,,,,2009-02-12 08:00,2009-03-29 17:00,,2008-12-27 08:00,2009-02-09 17:00,2008-12-27 08:00,2009-02-09 17:00,2008-12-27 08:00,2009-02-09 17:00,,,,,PT_Normal,,,,,/AoGMFS6PEOtijZAsGPdWQ,,,,N,0,0
3760,85659,829,10527,912,1,0,N,N,N,CP_Drtn,TT_Task,DT_FixedDUR2,RV_OK,TK_NotStart,80000CO400,Electrical As-built drawings,2283,328,0,312,0,312,312,312,0,0,0,,,,2009-02-12 08:00,2009-03-29 17:00,,2008-12-27 08:00,2009-02-09 17:00,2008-12-27 08:00,2009-02-09 17:00,2008-12-27 08:00,2009-02-09 17:00,,,,,PT_Normal,,,,,tKLSCQf/qkmzAg038pmdqA,,,,N,0,0
3761,85660,829,10527,912,1,0,N,N,N,CP_Drtn,TT_Task,DT_FixedDUR2,RV_OK,TK_NotStart,80000CO500,Operation Manuals,2283,344,344,120,0,120,120,120,0,0,0,,,,2009-03-15 08:00,2009-03-31 17:00,,2009-01-24 08:00,2009-02-09 17:00,2009-01-24 08:00,2009-02-09 17:00,2009-01-24 08:00,2009-02-09 17:00,,,,,PT_Normal,,,,,yJYO5MROBkqEVzAuI0ISlQ,,,,N,0,0
3762,85661,829,10527,912,1,0,N,N,N,CP_Drtn,TT_Task,DT_FixedDUR2,RV_OK,TK_NotStart,80000CO550,Tower Crane dismantling,2283,400,400,296,0,296,296,296,0,0,0,,,,2009-02-23 08:00,2009-04-06 17:00,,2008-12-27 08:00,2009-02-07 17:00,2008-12-27 08:00,2009-02-07 17:00,2008-12-27 08:00,2009-02-07 17:00,,,,,PT_Normal,,,,,iPKz5hxRN0+L6OeZz+pSGQ,,,,N,0,0
3763,85662,829,10527,912,1,0,N,N,N,CP_Drtn,TT_Task,DT_FixedDUR2,RV_OK,TK_NotStart,80000CO600,Demobilization,2283,40,40,312,0,312,312,312,0,0,0,,,,2009-02-21 08:00,2009-04-06 17:00,,2009-02-15 08:00,2009-03-31 17:00,2009-02-15 08:00,2009-03-31 17:00,2009-02-15 08:00,2009-03-31 17:00,,,,,PT_Normal,,,,,kruIsnlG1Uyn1HjwucC8kQ,,,,N,0,0
