,task_id,proj_id,wbs_id,clndr_id,est_wt,phys_complete_pct,rev_fdbk_flag,lock_plan_flag,auto_compute_act_flag,complete_pct_type,task_type,duration_type,review_type,status_code,task_code,task_name,rsrc_id,total_float_hr_cnt,free_float_hr_cnt,remain_drtn_hr_cnt,act_work_qty,remain_work_qty,target_work_qty,target_drtn_hr_cnt,target_equip_qty,act_equip_qty,remain_equip_qty,cstr_date,act_start_date,act_end_date,late_start_date,late_end_date,expect_end_date,early_start_date,early_end_date,restart_date,reend_date,target_start_date,target_end_date,review_end_date,rem_late_start_date,rem_late_end_date,cstr_type,priority_type,suspend_date,resume_date,float_path,float_path_order,guid,tmpl_guid,cstr_date2,cstr_type2,driving_path_flag,act_this_per_work_qty,act_this_per_equip_qty,external_early_start_date,external_late_end_date,create_date,update_date,create_user,update_user,old_restart_date,old_reend_date,old_remain_drtn_hr_cnt
0,88843,784,11512,841,0,0,N,N,N,CP_Drtn,TT_Mile,DT_FixedDrtn,RV_OK,TK_NotStart,A1000,Project Start,,128,0,0,0,0,0,0,0,0,0,,,,2010-07-10 08:00,2010-07-10 08:00,,2010-06-21 08:00,2010-06-21 08:00,2010-06-21 08:00,2010-06-21 08:00,2010-06-21 08:00,2010-06-21 08:00,,2010-07-10 08:00,2010-07-10 08:00,,PT_Normal,,,,,ST2k6UBJuUGsVUJ52jBpDA,,,,N,0,0,,,2010-08-08 11:54,2010-08-08 19:07,admin,admin,,,
1,88844,784,11512,841,0,0,N,N,N,CP_Drtn,TT_Mile,DT_FixedDrtn,RV_OK,TK_NotStart,A1020,Site Taking Over,,128,0,0,0,0,0,0,0,0,0,,,,2010-07-10 08:00,2010-07-10 08:00,,2010-06-21 08:00,2010-06-21 08:00,2010-06-21 08:00,2010-06-21 08:00,2010-06-21 08:00,2010-06-21 08:00,,2010-07-10 08:00,2010-07-10 08:00,,PT_Normal,,,,,Dq3sMcB1lEKHQfXbg/e/tA,,,,N,0,0,,,2010-08-08 11:54,2010-08-08 19:07,admin,admin,,,
2,88845,784,11514,841,0,0,N,N,N,CP_Drtn,TT_FinMile,DT_FixedDrtn,RV_OK,TK_NotStart,A1280,end project,,0,0,0,0,0,0,0,0,0,0,,,,2010-12-28 16:00,2010-12-28 16:00,,2010-12-28 16:00,2010-12-28 16:00,2010-12-28 16:00,2010-12-28 16:00,2010-12-28 16:00,2010-12-28 16:00,,2010-12-28 16:00,2010-12-28 16:00,,PT_Normal,,,,,304q3GeOyEqHpVbYCfBdeQ,,,,Y,0,0,,,2010-08-08 11:54,2010-08-08 19:41,admin,admin,,,
3,88846,784,11551,841,1,0,N,N,N,CP_Drtn,TT_Task,DT_FixedDUR2,RV_OK,TK_NotStart,A9980,excavation,,128,0,16,0,0,0,16,0,0,0,,,,2010-08-30 08:00,2010-08-31 16:00,,2010-08-11 08:00,2010-08-12 16:00,2010-08-11 08:00,2010-08-12 16:00,2010-08-11 08:00,2010-08-12 16:00,,2010-08-30 08:00,2010-08-31 16:00,,PT_Normal,,,,,1W5pk1lML0+1F5VnNIysZw,pR51kGoI20OO7hCzM8wNEA,,,N,0,0,,,2010-08-08 11:54,2010-08-08 19:07,admin,admin,,,
4,88847,784,11551,841,1,0,N,N,N,CP_Drtn,TT_Task,DT_FixedDUR2,RV_OK,TK_NotStart,A9990,soil replacement,,128,0,96,0,0,0,96,0,0,0,,,,2010-09-01 08:00,2010-09-14 16:00,,2010-08-14 08:00,2010-08-26 16:00,2010-08-14 08:00,2010-08-26 16:00,2010-08-14 08:00,2010-08-26 16:00,,2010-09-01 08:00,2010-09-14 16:00,,PT_Normal,,,,,4bU5U7XAQ0+y3r1Uha5NBw,sAFO1QwZ/Eic/wXDsvwfEg,,,N,0,0,,,2010-08-08 11:54,2010-08-08 19:07,admin,admin,,,
5,88848,784,11546,841,1,0,N,N,N,CP_Drtn,TT_Task,DT_FixedDUR2,RV_OK,TK_NotStart,A10000,Plain Concrete Foundation,,128,0,16,0,0,0,16,0,0,0,,,,2010-09-15 08:00,2010-09-16 16:00,,2010-08-28 08:00,2010-08-29 16:00,2010-08-28 08:00,2010-08-29 16:00,2010-08-28 08:00,2010-08-29 16:00,,2010-09-15 08:00,2010-09-16 16:00,,PT_Normal,,,,,rf8yL+DeykGmOqRRbLqWwQ,ZfdxWPXNKECWVjU8exyb3g,,,N,0,0,,,2010-08-08 11:54,2010-08-08 19:07,admin,admin,,,
6,88849,784,11546,841,1,0,N,N,N,CP_Drtn,TT_Task,DT_FixedDUR2,RV_OK,TK_NotStart,A10010,Reinforced Concrete Foundation,,128,0,56,0,0,0,56,0,0,0,,,,2010-09-21 08:00,2010-09-28 16:00,,2010-09-02 08:00,2010-09-09 16:00,2010-09-02 08:00,2010-09-09 16:00,2010-09-02 08:00,2010-09-09 16:00,,2010-09-21 08:00,2010-09-28 16:00,,PT_Normal,,,,,3RhHsiWvi02Ja8pP3ToLBg,qj4YcRKGZkivqAaS+9+R0Q,,,N,0,0,,,2010-08-08 11:54,2010-08-08 19:07,admin,admin,,,
7,88850,784,11546,841,1,0,N,N,N,CP_Drtn,TT_Task,DT_FixedDUR2,RV_OK,TK_NotStart,A10020,under ground  brick works,,128,0,16,0,0,0,16,0,0,0,,,,2010-10-06 08:00,2010-10-07 16:00,,2010-09-18 08:00,2010-09-19 16:00,2010-09-18 08:00,2010-09-19 16:00,2010-09-18 08:00,2010-09-19 16:00,,2010-10-06 08:00,2010-10-07 16:00,,PT_Normal,,,,,l9XXh/NrekivDtZx3bjyhg,46sDrceNckeaI1w9PG/r5A,,,N,0,0,,,2010-08-08 11:54,2010-08-08 19:07,admin,admin,,,
8,88851,784,11546,841,1,0,N,N,N,CP_Drtn,TT_Task,DT_FixedDUR2,RV_OK,TK_NotStart,A10030,under ground insulation for RC & Brick work,,128,0,16,0,0,0,16,0,0,0,,,,2010-10-09 08:00,2010-10-10 16:00,,2010-09-20 08:00,2010-09-21 16:00,2010-09-20 08:00,2010-09-21 16:00,2010-09-20 08:00,2010-09-21 16:00,,2010-10-09 08:00,2010-10-10 16:00,,PT_Normal,,,,,oVneg3BMlEWfGLjhBd/YAQ,ecjDXTIAuU2mU0c42NSiYw,,,N,0,0,,,2010-08-08 11:54,2010-08-08 19:07,admin,admin,,,
9,88852,784,11546,841,1,0,N,N,N,CP_Drtn,TT_Task,DT_FixedDUR2,RV_OK,TK_NotStart,A10040,backfilling for under ground,,128,0,16,0,0,0,16,0,0,0,,,,2010-10-11 08:00,2010-10-12 16:00,,2010-09-22 08:00,2010-09-23 16:00,2010-09-22 08:00,2010-09-23 16:00,2010-09-22 08:00,2010-09-23 16:00,,2010-10-11 08:00,2010-10-12 16:00,,PT_Normal,,,,,xiYGyjXJp0+sGIck01fxHA,ZrSNVFL7eUWIDD79JyjXfg,,,N,0,0,,,2010-08-08 11:54,2010-08-08 19:07,admin,admin,,,
10,88853,784,11546,841,1,0,N,N,N,CP_Drtn,TT_Task,DT_FixedDUR2,RV_OK,TK_NotStart,A10050,P.C slab on grade 10CM,,192,0,8,0,0,0,8,0,0,0,,,,2010-11-25 08:00,2010-11-25 16:00,,2010-10-24 08:00,2010-10-24 16:00,2010-10-24 08:00,2010-10-24 16:00,2010-10-24 08:00,2010-10-24 16:00,,2010-11-25 08:00,2010-11-25 16:00,,PT_Normal,,,,,LnEEFOkd+kWJ5DEtmkKgIA,16cYLpKRtkmlOFWeCTttwg,,,N,0,0,,,2010-08-08 11:54,2010-08-08 19:07,admin,admin,,,
11,88854,784,11546,841,1,0,N,N,N,CP_Drtn,TT_Task,DT_FixedDUR2,RV_OK,TK_NotStart,A10060,moisture insulation with membrane sheets,,192,0,16,0,0,0,16,0,0,0,,,,2010-11-27 08:00,2010-11-28 16:00,,2010-10-25 08:00,2010-10-26 16:00,2010-10-25 08:00,2010-10-26 16:00,2010-10-25 08:00,2010-10-26 16:00,,2010-11-27 08:00,2010-11-28 16:00,,PT_Normal,,,,,A8SXQEkruEu+i0I86V2VaA,jvHKAv8t70aerVPigkQwog,,,N,0,0,,,2010-08-08 11:54,2010-08-08 19:07,admin,admin,,,
12,88855,784,11546,841,1,0,N,N,N,CP_Drtn,TT_Task,DT_FixedDUR2,RV_OK,TK_NotStart,A10070,R.C slab on grade,,192,0,16,0,0,0,16,0,0,0,,,,2010-11-29 08:00,2010-11-30 16:00,,2010-10-27 08:00,2010-10-28 16:00,2010-10-27 08:00,2010-10-28 16:00,2010-10-27 08:00,2010-10-28 16:00,,2010-11-29 08:00,2010-11-30 16:00,,PT_Normal,,,,,IPig5WIhvUamiGBBoHDYpw,KV1fty9QNUuBPk3UJDVbgw,,,N,0,0,,,2010-08-08 11:54,2010-08-08 19:07,admin,admin,,,
13,88856,784,11560,841,1,0,N,N,N,CP_Drtn,TT_Task,DT_FixedDUR2,RV_OK,TK_NotStart,A10080,columns for ground floor,,128,0,48,0,0,0,48,0,0,0,,,,2010-09-29 08:00,2010-10-05 16:00,,2010-09-11 08:00,2010-09-16 16:00,2010-09-11 08:00,2010-09-16 16:00,2010-09-11 08:00,2010-09-16 16:00,,2010-09-29 08:00,2010-10-05 16:00,,PT_Normal,,,,,/lBVNWwBQ06z8tcpqdiopA,jIQR9FyJ30ypRH/ev7KyLA,,,N,0,0,,,2010-08-08 11:54,2010-08-08 19:07,admin,admin,,,
14,88857,784,11560,841,1,0,N,N,N,CP_Drtn,TT_Task,DT_FixedDUR2,RV_OK,TK_NotStart,A10090,slab for ground floor,,128,0,72,0,0,0,72,0,0,0,,,,2010-10-13 08:00,2010-10-23 16:00,,2010-09-25 08:00,2010-10-04 16:00,2010-09-25 08:00,2010-10-04 16:00,2010-09-25 08:00,2010-10-04 16:00,,2010-10-13 08:00,2010-10-23 16:00,,PT_Normal,,,,,Hpz+9ZIpBEenJQt+XjVTGw,m8HKEf1Y3kWaMRqZkhZDYQ,,,N,0,0,,,2010-08-08 11:54,2010-08-08 19:07,admin,admin,,,
15,88858,784,11560,841,1,0,N,N,N,CP_Drtn,TT_Task,DT_FixedDUR2,RV_OK,TK_NotStart,A10100,columns for 1st floor,,128,0,48,0,0,0,48,0,0,0,,,,2010-10-25 08:00,2010-10-31 16:00,,2010-10-06 08:00,2010-10-12 16:00,2010-10-06 08:00,2010-10-12 16:00,2010-10-06 08:00,2010-10-12 16:00,,2010-10-25 08:00,2010-10-31 16:00,,PT_Normal,,,,,8f8cdwU0R0S+cV2nHB2CLw,O1JSEh5wq0mDR5xsjAs1eA,,,N,0,0,,,2010-08-08 11:54,2010-08-08 19:07,admin,admin,,,
16,88859,784,11560,841,1,0,N,N,N,CP_Drtn,TT_Task,DT_FixedDUR2,RV_OK,TK_NotStart,A10110,slab for 1st floor,,128,0,72,0,0,0,72,0,0,0,,,,2010-11-01 08:00,2010-11-10 16:00,,2010-10-13 08:00,2010-10-23 16:00,2010-10-13 08:00,2010-10-23 16:00,2010-10-13 08:00,2010-10-23 16:00,,2010-11-01 08:00,2010-11-10 16:00,,PT_Normal,,,,,rKilDxiP8EKuatd2l1075g,J3tYc4DQYkmI+MM4r+s7vw,,,N,0,0,,,2010-08-08 11:54,2010-08-08 19:07,admin,admin,,,
17,88860,784,11560,841,1,0,N,N,N,CP_Drtn,TT_Task,DT_FixedDUR2,RV_OK,TK_NotStart,A10120,columns for roof floor,,128,0,32,0,0,0,32,0,0,0,,,,2010-11-20 08:00,2010-11-23 16:00,,2010-10-27 08:00,2010-10-31 16:00,2010-10-27 08:00,2010-10-31 16:00,2010-10-27 08:00,2010-10-31 16:00,,2010-11-20 08:00,2010-11-23 16:00,,PT_Normal,,,,,50kWo9ts9UGjozKZmlVn2A,KXnziB/G2km7100sLmKX6g,,,N,0,0,,,2010-08-08 11:54,2010-08-08 19:07,admin,admin,,,
18,88861,784,11560,841,1,0,N,N,N,CP_Drtn,TT_Task,DT_FixedDUR2,RV_OK,TK_NotStart,A10130,slab for roof floor,,128,0,48,0,0,0,48,0,0,0,,,,2010-11-24 08:00,2010-11-30 16:00,,2010-11-01 08:00,2010-11-07 16:00,2010-11-01 08:00,2010-11-07 16:00,2010-11-01 08:00,2010-11-07 16:00,,2010-11-24 08:00,2010-11-30 16:00,,PT_Normal,,,,,C8sRUd8bzkGZtvuLbhHi+w,rfetPMwheU6qBwrhhpwYJg,,,N,0,0,,,2010-08-08 11:54,2010-08-08 19:07,admin,admin,,,
19,88862,784,11560,841,1,0,N,N,N,CP_Drtn,TT_Task,DT_FixedDUR2,RV_OK,TK_NotStart,A10140,Brick works for ground floor,,192,0,40,0,0,0,40,0,0,0,,,,2010-11-20 08:00,2010-11-24 16:00,,2010-10-18 08:00,2010-10-23 16:00,2010-10-18 08:00,2010-10-23 16:00,2010-10-18 08:00,2010-10-23 16:00,,2010-11-20 08:00,2010-11-24 16:00,,PT_Normal,,,,,L563Cxxy7UCMut7PinFyqQ,qtgTOiAYYUO1AYSNbt1Ojw,,,N,0,0,,,2010-08-08 11:54,2010-08-08 19:07,admin,admin,,,
20,88863,784,11561,841,1,0,N,N,N,CP_Drtn,TT_Task,DT_FixedDrtn,RV_OK,TK_NotStart,A10150,electrical conduits for ground floor's slab,,136,8,16,0,0,0,16,0,0,0,,,,2010-10-19 08:00,2010-10-20 16:00,,2010-09-29 08:00,2010-09-30 16:00,2010-09-29 08:00,2010-09-30 16:00,2010-09-29 08:00,2010-09-30 16:00,,2010-10-19 08:00,2010-10-20 16:00,,PT_Normal,,,,,z13I+EZVtUmo88g+ejeMGw,AwtCgWm9dUq9H6TLXiKVkg,,,N,0,0,,,2010-08-08 11:54,2010-08-08 19:07,admin,admin,,,
21,88864,784,11561,841,1,0,N,N,N,CP_Drtn,TT_Task,DT_FixedDrtn,RV_OK,TK_NotStart,A10160,electrical conduits for 1st floor slab,,136,8,16,0,0,0,16,0,0,0,,,,2010-11-07 08:00,2010-11-08 16:00,,2010-10-18 08:00,2010-10-19 16:00,2010-10-18 08:00,2010-10-19 16:00,2010-10-18 08:00,2010-10-19 16:00,,2010-11-07 08:00,2010-11-08 16:00,,PT_Normal,,,,,wnTLlOq7sUqGYZVrAr3eYg,nfat9bCS4UGMLztsO+AYAw,,,N,0,0,,,2010-08-08 11:54,2010-08-08 19:07,admin,admin,,,
22,88865,784,11561,841,1,0,N,N,N,CP_Drtn,TT_Task,DT_FixedDrtn,RV_OK,TK_NotStart,A10170,electrical conduits for roof slab,,136,8,8,0,0,0,8,0,0,0,,,,2010-11-29 08:00,2010-11-29 16:00,,2010-11-04 08:00,2010-11-04 16:00,2010-11-04 08:00,2010-11-04 16:00,2010-11-04 08:00,2010-11-04 16:00,,2010-11-29 08:00,2010-11-29 16:00,,PT_Normal,,,,,dUHVBgh5JU6a9OqTlt677g,ljYRZZ2Z80irbSuhWR1Jvw,,,N,0,0,,,2010-08-08 11:54,2010-08-08 19:07,admin,admin,,,
23,88866,784,11562,841,1,0,N,N,N,CP_Drtn,TT_Task,DT_FixedDUR2,RV_OK,TK_NotStart,A10190,Internal plastering for ground floor,,192,16,64,0,0,0,64,0,0,0,,,,2010-12-05 08:00,2010-12-13 16:00,,2010-11-02 08:00,2010-11-10 16:00,2010-11-02 08:00,2010-11-10 16:00,2010-11-02 08:00,2010-11-10 16:00,,2010-12-05 08:00,2010-12-13 16:00,,PT_Normal,,,,,zboZwOyLL0uocXldzNCrYw,xtDIeRPhK0OtYDlHtk6U5A,,,N,0,0,,,2010-08-08 11:54,2010-08-08 19:07,admin,admin,,,
24,88867,784,11562,841,1,0,N,N,N,CP_Drtn,TT_Task,DT_FixedDUR2,RV_OK,TK_NotStart,A10200,External plastering,,128,0,80,0,0,0,80,0,0,0,,,,2010-12-18 08:00,2010-12-28 16:00,,2010-11-29 08:00,2010-12-09 16:00,2010-11-29 08:00,2010-12-09 16:00,2010-11-29 08:00,2010-12-09 16:00,,2010-12-18 08:00,2010-12-28 16:00,,PT_Normal,,,,,xQLuWDCnEUWU1ibrqM5ioA,I3bEgrk+40iSgXvI1/jNog,,,N,0,0,,,2010-08-08 11:54,2010-08-08 19:07,admin,admin,,,
25,88868,784,11561,841,1,0,N,N,N,CP_Drtn,TT_Task,DT_FixedDrtn,RV_OK,TK_NotStart,A10210,plumbing connections under slab on grade,,376,184,16,0,0,0,16,0,0,0,,,,2010-11-23 08:00,2010-11-24 16:00,,2010-09-25 08:00,2010-09-26 16:00,2010-09-25 08:00,2010-09-26 16:00,2010-09-25 08:00,2010-09-26 16:00,,2010-11-23 08:00,2010-11-24 16:00,,PT_Normal,,,,,eYbzWfbbukyDrDzZ43it4w,wSjjdCY+Ck6Fuug6zZwEBQ,,,N,0,0,,,2010-08-08 11:54,2010-08-08 19:07,admin,admin,,,
26,88869,784,11554,841,0,0,N,N,N,CP_Drtn,TT_Mile,DT_FixedDrtn,RV_OK,TK_NotStart,A10230,Start Villa construction,,128,0,0,0,0,0,0,0,0,0,,,,2010-08-30 08:00,2010-08-30 08:00,,2010-08-11 08:00,2010-08-11 08:00,2010-08-11 08:00,2010-08-11 08:00,2010-08-11 08:00,2010-08-11 08:00,,2010-08-30 08:00,2010-08-30 08:00,,PT_Normal,,,,,B7/JXLmosU+itVnPDQoEoA,blw9c4/rZkSA8JJdv7j+dw,,,N,0,0,,,2010-08-08 11:54,2010-08-08 19:07,admin,admin,,,
27,88870,784,11554,841,0,0,N,N,N,CP_Drtn,TT_FinMile,DT_FixedDrtn,RV_OK,TK_NotStart,A10240,finish Villa construction,,128,128,0,0,0,0,0,0,0,0,,,,2010-12-28 16:00,2010-12-28 16:00,,2010-12-09 16:00,2010-12-09 16:00,2010-12-09 16:00,2010-12-09 16:00,2010-12-09 16:00,2010-12-09 16:00,,2010-12-28 16:00,2010-12-28 16:00,,PT_Normal,,,,,gjECBgV4H0GS4ipGLxZczg,plphke8dD0epoliS2tZyUQ,,,N,0,0,,,2010-08-08 11:54,2010-08-08 19:07,admin,admin,,,
28,88871,784,11554,841,0,0,N,N,N,CP_Drtn,TT_Mile,DT_FixedDrtn,RV_OK,TK_NotStart,A10250,IFC drawings,,480,352,0,0,0,0,0,0,0,0,,,,2010-08-30 08:00,2010-08-30 08:00,,2010-06-21 08:00,2010-06-21 08:00,2010-06-21 08:00,2010-06-21 08:00,2010-06-21 08:00,2010-06-21 08:00,,2010-08-30 08:00,2010-08-30 08:00,,PT_Normal,,,,,+wCchghE2UeOQB+Db7gnng,AZS2kXhzPE60K970qbZY0g,,,N,0,0,,,2010-08-08 11:54,2010-08-08 19:07,admin,admin,,,
29,88872,784,11560,841,1,0,N,N,N,CP_Drtn,TT_Task,DT_FixedDUR2,RV_OK,TK_NotStart,A10260,pouring for ground floor's slab,,128,0,8,0,0,0,8,0,0,0,,,,2010-10-24 08:00,2010-10-24 16:00,,2010-10-05 08:00,2010-10-05 16:00,2010-10-05 08:00,2010-10-05 16:00,2010-10-05 08:00,2010-10-05 16:00,,2010-10-24 08:00,2010-10-24 16:00,,PT_Normal,,,,,2VFC69+pXU2q/ciZq8VQqg,vK4QYECrhkuoFUCE5nGafA,,,N,0,0,,,2010-08-08 11:54,2010-08-08 19:07,admin,admin,,,
30,88873,784,11560,841,1,0,N,N,N,CP_Drtn,TT_Task,DT_FixedDUR2,RV_OK,TK_NotStart,A10270,pouring for 1st floor's slab,,128,0,8,0,0,0,8,0,0,0,,,,2010-11-11 08:00,2010-11-11 16:00,,2010-10-24 08:00,2010-10-24 16:00,2010-10-24 08:00,2010-10-24 16:00,2010-10-24 08:00,2010-10-24 16:00,,2010-11-11 08:00,2010-11-11 16:00,,PT_Normal,,,,,Cie0ERG9mUap1Hu2n7czaA,pXS5M7KQmEuQm6S3N/rDqA,,,N,0,0,,,2010-08-08 11:54,2010-08-08 19:07,admin,admin,,,
31,88874,784,11560,841,1,0,N,N,N,CP_Drtn,TT_Task,DT_FixedDUR2,RV_OK,TK_NotStart,A10280,pouring for roof floor's slab,,128,0,8,0,0,0,8,0,0,0,,,,2010-12-01 08:00,2010-12-01 16:00,,2010-11-08 08:00,2010-11-08 16:00,2010-11-08 08:00,2010-11-08 16:00,2010-11-08 08:00,2010-11-08 16:00,,2010-12-01 08:00,2010-12-01 16:00,,PT_Normal,,,,,jxLOKr4abUeXt1IP7fddTw,rAlW6OzVIk2IzMoysdv7Vw,,,N,0,0,,,2010-08-08 11:54,2010-08-08 19:07,admin,admin,,,
32,88875,784,11560,841,1,0,N,N,N,CP_Drtn,TT_Task,DT_FixedDrtn,RV_OK,TK_NotStart,A10290,Fence work,,144,16,400,0,0,0,400,0,0,0,,,,2010-10-27 08:00,2010-12-28 16:00,,2010-10-06 08:00,2010-12-07 16:00,2010-10-06 08:00,2010-12-07 16:00,2010-10-06 08:00,2010-12-07 16:00,,2010-10-27 08:00,2010-12-28 16:00,,PT_Normal,,,,,rX/i5eCN8UuUzIOM6PbCww,eGmwX5lIXU6QYDukULNcEA,,,N,0,0,,,2010-08-08 11:54,2010-08-08 19:07,admin,admin,,,
33,88876,784,11554,841,1,0,N,N,N,CP_Drtn,TT_Task,DT_FixedDUR2,RV_OK,TK_NotStart,A10300,Fence Drawings IFC,,440,296,8,0,0,0,8,0,0,0,,,,2010-10-14 08:00,2010-10-14 16:00,,2010-08-11 08:00,2010-08-11 16:00,2010-08-11 08:00,2010-08-11 16:00,2010-08-11 08:00,2010-08-11 16:00,,2010-10-14 08:00,2010-10-14 16:00,,PT_Normal,,,,,hC4qOWQsb0qmCwCEJNXa5g,kZ4VvTjSEk6hCLfSU4mIdg,,,N,0,0,,,2010-08-08 11:54,2010-08-08 19:07,admin,admin,,,
34,88877,784,11546,873,1,0,N,N,N,CP_Drtn,TT_Task,DT_FixedDUR2,RV_OK,TK_NotStart,A10001,backfilling between P.C Foundation,,96,0,16,0,0,0,16,0,0,0,,,,2010-09-19 08:00,2010-09-20 16:00,,2010-08-31 08:00,2010-09-01 16:00,2010-08-31 08:00,2010-09-01 16:00,2010-08-31 08:00,2010-09-01 16:00,,2010-09-19 08:00,2010-09-20 16:00,,PT_Normal,,,,,HT+N0HmjJ0yh+yKP5MAswA,,,,N,0,0,,,2010-08-08 11:54,2010-08-08 19:07,admin,admin,,,
35,88878,784,11560,873,1,0,N,N,N,CP_Drtn,TT_Task,DT_FixedDUR2,RV_OK,TK_NotStart,A10141,Brick works for 1st floor,,208,0,40,0,0,0,40,0,0,0,,,,2010-12-06 08:00,2010-12-11 16:00,,2010-11-06 08:00,2010-11-10 16:00,2010-11-06 08:00,2010-11-10 16:00,2010-11-06 08:00,2010-11-10 16:00,,2010-12-06 08:00,2010-12-11 16:00,,PT_Normal,,,,,ry/QDa/eQ0iMYcmUOSO2QQ,,,,N,0,0,,,2010-08-08 11:54,2010-08-08 19:07,admin,admin,,,
36,88879,784,11560,873,1,0,N,N,N,CP_Drtn,TT_Task,DT_FixedDUR2,RV_OK,TK_NotStart,A10142,Brick works for roof floor,,128,0,40,0,0,0,40,0,0,0,,,,2010-12-12 08:00,2010-12-16 16:00,,2010-11-23 08:00,2010-11-28 16:00,2010-11-23 08:00,2010-11-28 16:00,2010-11-23 08:00,2010-11-28 16:00,,2010-12-12 08:00,2010-12-16 16:00,,PT_Normal,,,,,ZPGGpMUXSkWY95WdWGdY4w,,,,N,0,0,,,2010-08-08 11:54,2010-08-08 19:07,admin,admin,,,
37,88880,784,11562,873,1,0,N,N,N,CP_Drtn,TT_Task,DT_FixedDUR2,RV_OK,TK_NotStart,A10191,Internal plastering for 1st floor,,208,56,64,0,0,0,64,0,0,0,,,,2010-12-14 08:00,2010-12-22 16:00,,2010-11-14 08:00,2010-11-22 16:00,2010-11-14 08:00,2010-11-22 16:00,2010-11-14 08:00,2010-11-22 16:00,,2010-12-14 08:00,2010-12-22 16:00,,PT_Normal,,,,,JWKJErZh3ke6bjZTYzAhLg,,,,N,0,0,,,2010-08-08 11:54,2010-08-08 19:07,admin,admin,,,
38,88881,784,11562,873,1,0,N,N,N,CP_Drtn,TT_Task,DT_FixedDUR2,RV_OK,TK_NotStart,A10192,Internal plastering for roof floor,,152,24,40,0,0,0,40,0,0,0,,,,2010-12-23 08:00,2010-12-28 16:00,,2010-12-01 08:00,2010-12-06 16:00,2010-12-01 08:00,2010-12-06 16:00,2010-12-01 08:00,2010-12-06 16:00,,2010-12-23 08:00,2010-12-28 16:00,,PT_Normal,,,,,sIWHLZHUakiuFST2O0MuOQ,,,,N,0,0,,,2010-08-08 11:54,2010-08-08 19:07,admin,admin,,,
39,88882,784,11561,873,1,0,N,N,N,CP_Drtn,TT_Task,DT_FixedDUR2,RV_OK,TK_NotStart,A10171,electrical conduits for ground floor walls,,224,0,16,0,0,0,16,0,0,0,,,,2010-12-02 08:00,2010-12-04 16:00,,2010-10-31 08:00,2010-11-01 16:00,2010-10-31 08:00,2010-11-01 16:00,2010-10-31 08:00,2010-11-01 16:00,,2010-12-02 08:00,2010-12-04 16:00,,PT_Normal,,,,,7SeiEs/6EEOFwBcWVoVZpw,,,,N,0,0,,,2010-08-08 11:54,2010-08-08 19:07,admin,admin,,,
40,88883,784,11561,873,1,0,N,N,N,CP_Drtn,TT_Task,DT_FixedDUR2,RV_OK,TK_NotStart,A10172,electrical conduits for 1st floor walls,,208,0,16,0,0,0,16,0,0,0,,,,2010-12-12 08:00,2010-12-13 16:00,,2010-11-11 08:00,2010-11-13 16:00,2010-11-11 08:00,2010-11-13 16:00,2010-11-11 08:00,2010-11-13 16:00,,2010-12-12 08:00,2010-12-13 16:00,,PT_Normal,,,,,j4pyHSIeV0S8hrOi/tbCvA,,,,N,0,0,,,2010-08-08 11:54,2010-08-08 19:07,admin,admin,,,
41,88884,784,11561,873,1,0,N,N,N,CP_Drtn,TT_Task,DT_FixedDUR2,RV_OK,TK_NotStart,A10173,electrical conduits for roof floor walls,,152,0,16,0,0,0,16,0,0,0,,,,2010-12-21 08:00,2010-12-22 16:00,,2010-11-29 08:00,2010-11-30 16:00,2010-11-29 08:00,2010-11-30 16:00,2010-11-29 08:00,2010-11-30 16:00,,2010-12-21 08:00,2010-12-22 16:00,,PT_Normal,,,,,2kopHGNvm0GGdG4HdM1H+w,,,,N,0,0,,,2010-08-08 11:54,2010-08-08 19:07,admin,admin,,,
42,88885,784,11568,841,1,0,N,N,N,CP_Drtn,TT_Task,DT_FixedDUR2,RV_OK,TK_NotStart,A10310,excavation,,344,0,8,0,0,0,8,0,0,0,,,,2010-08-22 08:00,2010-08-22 16:00,,2010-07-03 08:00,2010-07-03 16:00,2010-07-03 08:00,2010-07-03 16:00,2010-07-03 08:00,2010-07-03 16:00,,2010-08-22 08:00,2010-08-22 16:00,,PT_Normal,,,,,+4I5eobEMkWhKyX3Lib2OA,w00juhqOnEaAjO+PyXKITg,,,N,0,0,,,2010-08-08 11:54,2010-08-08 11:54,admin,admin,,,
43,88886,784,11568,841,1,0,N,N,N,CP_Drtn,TT_Task,DT_FixedDUR2,RV_OK,TK_NotStart,A10320,soil replacement,,344,0,0,0,0,0,0,0,0,0,,,,2010-08-22 16:00,2010-08-22 16:00,,2010-07-04 08:00,2010-07-04 08:00,2010-07-04 08:00,2010-07-04 08:00,2010-07-04 08:00,2010-07-04 08:00,,2010-08-22 16:00,2010-08-22 16:00,,PT_Normal,,,,,hvQAu+4sk0Cbyh9W+zH4Dw,OfwvHaUMwU2nZNH/KRhRQg,,,N,0,0,,,2010-08-08 11:54,2010-08-08 11:54,admin,admin,,,
44,88887,784,11569,841,1,0,N,N,N,CP_Drtn,TT_Task,DT_FixedDUR2,RV_OK,TK_NotStart,A10330,Plain Concrete Foundation,,344,0,16,0,0,0,16,0,0,0,,,,2010-08-24 08:00,2010-08-25 16:00,,2010-07-05 08:00,2010-07-06 16:00,2010-07-05 08:00,2010-07-06 16:00,2010-07-05 08:00,2010-07-06 16:00,,2010-08-24 08:00,2010-08-25 16:00,,PT_Normal,,,,,fkFW6lD4xkO85Vn3/l3Ctg,w7k7lbi3MUmrDvdQzHi9PQ,,,N,0,0,,,2010-08-08 11:54,2010-08-08 11:54,admin,admin,,,
45,88888,784,11569,841,1,0,N,N,N,CP_Drtn,TT_Task,DT_FixedDUR2,RV_OK,TK_NotStart,A10340,Reinforced Concrete Foundation,,368,0,56,0,0,0,56,0,0,0,,,,2010-09-12 08:00,2010-09-19 16:00,,2010-07-20 08:00,2010-07-27 16:00,2010-07-20 08:00,2010-07-27 16:00,2010-07-20 08:00,2010-07-27 16:00,,2010-09-12 08:00,2010-09-19 16:00,,PT_Normal,,,,,7WkvOjRql0Gelxd/dcPPGA,ovpMN20jskiFhLK5kNQeZw,,,N,0,0,,,2010-08-08 11:54,2010-08-08 11:54,admin,admin,,,
46,88889,784,11569,841,1,0,N,N,N,CP_Drtn,TT_Task,DT_FixedDUR2,RV_OK,TK_NotStart,A10350,under ground  brick works,,368,0,16,0,0,0,16,0,0,0,,,,2010-10-04 08:00,2010-10-05 16:00,,2010-08-11 08:00,2010-08-12 16:00,2010-08-11 08:00,2010-08-12 16:00,2010-08-11 08:00,2010-08-12 16:00,,2010-10-04 08:00,2010-10-05 16:00,,PT_Normal,,,,,64lvLe2bMkawXxLSbdPzMQ,AynKXs2EYk64UCpxIrPcUg,,,N,0,0,,,2010-08-08 11:54,2010-08-08 11:54,admin,admin,,,
47,88890,784,11569,841,1,0,N,N,N,CP_Drtn,TT_Task,DT_FixedDUR2,RV_OK,TK_NotStart,A10360,under ground insulation for RC & Brick work,,368,0,16,0,0,0,16,0,0,0,,,,2010-10-06 08:00,2010-10-07 16:00,,2010-08-14 08:00,2010-08-15 16:00,2010-08-14 08:00,2010-08-15 16:00,2010-08-14 08:00,2010-08-15 16:00,,2010-10-06 08:00,2010-10-07 16:00,,PT_Normal,,,,,UGJKLkf2nUGcoUUduZWYMA,iVGv2xlSAEqBTJfmaJKP3A,,,N,0,0,,,2010-08-08 11:54,2010-08-08 11:54,admin,admin,,,
48,88891,784,11569,841,1,0,N,N,N,CP_Drtn,TT_Task,DT_FixedDUR2,RV_OK,TK_NotStart,A10370,backfilling for under ground,,368,0,32,0,0,0,32,0,0,0,,,,2010-10-09 08:00,2010-10-12 16:00,,2010-08-16 08:00,2010-08-19 16:00,2010-08-16 08:00,2010-08-19 16:00,2010-08-16 08:00,2010-08-19 16:00,,2010-10-09 08:00,2010-10-12 16:00,,PT_Normal,,,,,rVu/wB8ZxkyEFkP3hQLkDA,wsTP8cQHmkat/McfT7rsRA,,,N,0,0,,,2010-08-08 11:54,2010-08-08 11:54,admin,admin,,,
49,88892,784,11569,841,1,0,N,N,N,CP_Drtn,TT_Task,DT_FixedDUR2,RV_OK,TK_NotStart,A10380,P.C slab on grade 10CM,,432,0,8,0,0,0,8,0,0,0,,,,2010-11-25 08:00,2010-11-25 16:00,,2010-09-19 08:00,2010-09-19 16:00,2010-09-19 08:00,2010-09-19 16:00,2010-09-19 08:00,2010-09-19 16:00,,2010-11-25 08:00,2010-11-25 16:00,,PT_Normal,,,,,m2UK/d+h6kaE8VcVx0lYvQ,+ZqHZD7jY062KDwA7p+W9A,,,N,0,0,,,2010-08-08 11:54,2010-08-08 11:54,admin,admin,,,
50,88893,784,11569,841,1,0,N,N,N,CP_Drtn,TT_Task,DT_FixedDUR2,RV_OK,TK_NotStart,A10390,moisture insulation with membrane sheets,,432,0,16,0,0,0,16,0,0,0,,,,2010-11-27 08:00,2010-11-28 16:00,,2010-09-20 08:00,2010-09-21 16:00,2010-09-20 08:00,2010-09-21 16:00,2010-09-20 08:00,2010-09-21 16:00,,2010-11-27 08:00,2010-11-28 16:00,,PT_Normal,,,,,XpvJjCWJTUOAnET+8E7M3w,w239f8dFDUmNOeiQflxhOA,,,N,0,0,,,2010-08-08 11:54,2010-08-08 11:54,admin,admin,,,
51,88894,784,11569,841,1,0,N,N,N,CP_Drtn,TT_Task,DT_FixedDUR2,RV_OK,TK_NotStart,A10400,R.C slab on grade,,432,0,16,0,0,0,16,0,0,0,,,,2010-11-29 08:00,2010-11-30 16:00,,2010-09-22 08:00,2010-09-23 16:00,2010-09-22 08:00,2010-09-23 16:00,2010-09-22 08:00,2010-09-23 16:00,,2010-11-29 08:00,2010-11-30 16:00,,PT_Normal,,,,,tB2v30EsjEGsE698fbL+Ag,obZ1gJKsT0a4BfjVgESU/Q,,,N,0,0,,,2010-08-08 11:54,2010-08-08 11:54,admin,admin,,,
52,88895,784,11553,841,1,0,N,N,N,CP_Drtn,TT_Task,DT_FixedDUR2,RV_OK,TK_NotStart,A10410,columns for ground floor,,368,0,48,0,0,0,48,0,0,0,,,,2010-09-27 08:00,2010-10-03 16:00,,2010-08-04 08:00,2010-08-10 16:00,2010-08-04 08:00,2010-08-10 16:00,2010-08-04 08:00,2010-08-10 16:00,,2010-09-27 08:00,2010-10-03 16:00,,PT_Normal,,,,,TQFZQeXTSE2W8heGLXCfrQ,w3pI+EDPVk6DYy+5L5SK0w,,,N,0,0,,,2010-08-08 11:54,2010-08-08 11:54,admin,admin,,,
53,88896,784,11553,841,1,0,N,N,N,CP_Drtn,TT_Task,DT_FixedDUR2,RV_OK,TK_NotStart,A10420,slab for ground floor,,368,0,72,0,0,0,72,0,0,0,,,,2010-10-13 08:00,2010-10-23 16:00,,2010-08-21 08:00,2010-08-30 16:00,2010-08-21 08:00,2010-08-30 16:00,2010-08-21 08:00,2010-08-30 16:00,,2010-10-13 08:00,2010-10-23 16:00,,PT_Normal,,,,,P3gDT/Jn7kaCvrDOpErxDA,NDQRolU3mkieCagFXybNFQ,,,N,0,0,,,2010-08-08 11:54,2010-08-08 11:54,admin,admin,,,
54,88897,784,11553,841,1,0,N,N,N,CP_Drtn,TT_Task,DT_FixedDUR2,RV_OK,TK_NotStart,A10430,columns for 1st floor,,368,0,48,0,0,0,48,0,0,0,,,,2010-10-25 08:00,2010-10-31 16:00,,2010-09-01 08:00,2010-09-07 16:00,2010-09-01 08:00,2010-09-07 16:00,2010-09-01 08:00,2010-09-07 16:00,,2010-10-25 08:00,2010-10-31 16:00,,PT_Normal,,,,,4OcdCJ1JuEyvV10SeHqrJA,nO23ED1qjU6aRLWSGGiSog,,,N,0,0,,,2010-08-08 11:54,2010-08-08 11:54,admin,admin,,,
55,88898,784,11553,841,1,0,N,N,N,CP_Drtn,TT_Task,DT_FixedDUR2,RV_OK,TK_NotStart,A10440,slab for 1st floor,,368,0,72,0,0,0,72,0,0,0,,,,2010-11-01 08:00,2010-11-10 16:00,,2010-09-08 08:00,2010-09-18 16:00,2010-09-08 08:00,2010-09-18 16:00,2010-09-08 08:00,2010-09-18 16:00,,2010-11-01 08:00,2010-11-10 16:00,,PT_Normal,,,,,eJQcc31DiEOAcHJ5wBblQw,WVuyh59Gd0qDfhgYky9c5Q,,,N,0,0,,,2010-08-08 11:54,2010-08-08 11:54,admin,admin,,,
56,88899,784,11553,841,1,0,N,N,N,CP_Drtn,TT_Task,DT_FixedDUR2,RV_OK,TK_NotStart,A10450,columns for roof floor,,368,0,32,0,0,0,32,0,0,0,,,,2010-11-20 08:00,2010-11-23 16:00,,2010-09-22 08:00,2010-09-26 16:00,2010-09-22 08:00,2010-09-26 16:00,2010-09-22 08:00,2010-09-26 16:00,,2010-11-20 08:00,2010-11-23 16:00,,PT_Normal,,,,,YeBErWv1MkqD35F6kRIrVw,fRbsRIbtNUCVUhRnRIUTuA,,,N,0,0,,,2010-08-08 11:54,2010-08-08 11:54,admin,admin,,,
57,88900,784,11553,841,1,0,N,N,N,CP_Drtn,TT_Task,DT_FixedDUR2,RV_OK,TK_NotStart,A10460,slab for roof floor,,368,0,48,0,0,0,48,0,0,0,,,,2010-11-24 08:00,2010-11-30 16:00,,2010-09-27 08:00,2010-10-03 16:00,2010-09-27 08:00,2010-10-03 16:00,2010-09-27 08:00,2010-10-03 16:00,,2010-11-24 08:00,2010-11-30 16:00,,PT_Normal,,,,,20Hfx/Ch50i0HWedQI3bsg,SJplJ2EYCkeIErcijUnhIg,,,N,0,0,,,2010-08-08 11:54,2010-08-08 11:54,admin,admin,,,
58,88901,784,11553,841,1,0,N,N,N,CP_Drtn,TT_Task,DT_FixedDUR2,RV_OK,TK_NotStart,A10470,Brick works for ground floor,,432,0,40,0,0,0,40,0,0,0,,,,2010-11-20 08:00,2010-11-24 16:00,,2010-09-13 08:00,2010-09-18 16:00,2010-09-13 08:00,2010-09-18 16:00,2010-09-13 08:00,2010-09-18 16:00,,2010-11-20 08:00,2010-11-24 16:00,,PT_Normal,,,,,s92BVcpSQ0C+CdiRBQFRMg,ikbkwfgHKE6t36bwCKBOxg,,,N,0,0,,,2010-08-08 11:54,2010-08-08 11:54,admin,admin,,,
59,88902,784,11549,841,1,0,N,N,N,CP_Drtn,TT_Task,DT_FixedDrtn,RV_OK,TK_NotStart,A10480,electrical conduits for ground floor's slab,,376,8,16,0,0,0,16,0,0,0,,,,2010-10-19 08:00,2010-10-20 16:00,,2010-08-25 08:00,2010-08-26 16:00,2010-08-25 08:00,2010-08-26 16:00,2010-08-25 08:00,2010-08-26 16:00,,2010-10-19 08:00,2010-10-20 16:00,,PT_Normal,,,,,NEEg2z1PkUaZMoQsRvH3BQ,Sg0JIVoJD06IAKMCFJj0tw,,,N,0,0,,,2010-08-08 11:54,2010-08-08 11:54,admin,admin,,,
60,88903,784,11549,841,1,0,N,N,N,CP_Drtn,TT_Task,DT_FixedDrtn,RV_OK,TK_NotStart,A10490,electrical conduits for 1st floor slab,,376,8,16,0,0,0,16,0,0,0,,,,2010-11-07 08:00,2010-11-08 16:00,,2010-09-13 08:00,2010-09-14 16:00,2010-09-13 08:00,2010-09-14 16:00,2010-09-13 08:00,2010-09-14 16:00,,2010-11-07 08:00,2010-11-08 16:00,,PT_Normal,,,,,N9NHX+14rUmRUrHm5x3Nlg,EmA4rSmWRUO8bBfxI2za2A,,,N,0,0,,,2010-08-08 11:54,2010-08-08 11:54,admin,admin,,,
61,88904,784,11549,841,1,0,N,N,N,CP_Drtn,TT_Task,DT_FixedDrtn,RV_OK,TK_NotStart,A10500,electrical conduits for roof slab,,376,8,8,0,0,0,8,0,0,0,,,,2010-11-29 08:00,2010-11-29 16:00,,2010-09-30 08:00,2010-09-30 16:00,2010-09-30 08:00,2010-09-30 16:00,2010-09-30 08:00,2010-09-30 16:00,,2010-11-29 08:00,2010-11-29 16:00,,PT_Normal,,,,,LroxqdzaGkKScqVqRHoBZw,zggIJ2V3b0iN6h5UhlIvmw,,,N,0,0,,,2010-08-08 11:54,2010-08-08 11:54,admin,admin,,,
62,88905,784,11542,841,1,0,N,N,N,CP_Drtn,TT_Task,DT_FixedDUR2,RV_OK,TK_NotStart,A10510,Internal plastering for ground floor,,432,16,64,0,0,0,64,0,0,0,,,,2010-12-05 08:00,2010-12-13 16:00,,2010-09-28 08:00,2010-10-06 16:00,2010-09-28 08:00,2010-10-06 16:00,2010-09-28 08:00,2010-10-06 16:00,,2010-12-05 08:00,2010-12-13 16:00,,PT_Normal,,,,,shurNkm/yEmr7u+wJZwuzA,RRvMVLyM8Um0gNcg5aAkKA,,,N,0,0,,,2010-08-08 11:54,2010-08-08 11:54,admin,admin,,,
63,88906,784,11542,841,1,0,N,N,N,CP_Drtn,TT_Task,DT_FixedDUR2,RV_OK,TK_NotStart,A10520,External plastering,,368,0,80,0,0,0,80,0,0,0,,,,2010-12-18 08:00,2010-12-28 16:00,,2010-10-20 08:00,2010-10-31 16:00,2010-10-20 08:00,2010-10-31 16:00,2010-10-20 08:00,2010-10-31 16:00,,2010-12-18 08:00,2010-12-28 16:00,,PT_Normal,,,,,rB38LEJaz0KGpPCcXO0VXQ,Dpjm1gusKUikby6WEkIHMw,,,N,0,0,,,2010-08-08 11:54,2010-08-08 11:54,admin,admin,,,
64,88907,784,11549,841,1,0,N,N,N,CP_Drtn,TT_Task,DT_FixedDrtn,RV_OK,TK_NotStart,A10530,plumbing connections under slab on grade,,616,184,16,0,0,0,16,0,0,0,,,,2010-11-23 08:00,2010-11-24 16:00,,2010-08-21 08:00,2010-08-22 16:00,2010-08-21 08:00,2010-08-22 16:00,2010-08-21 08:00,2010-08-22 16:00,,2010-11-23 08:00,2010-11-24 16:00,,PT_Normal,,,,,/YLPJmcHrkC7zMWqH1GWmw,6P2DFPjXMEqvxFBMio0IyQ,,,N,0,0,,,2010-08-08 11:54,2010-08-08 11:54,admin,admin,,,
65,88908,784,11567,841,0,0,N,N,N,CP_Drtn,TT_Mile,DT_FixedDrtn,RV_OK,TK_NotStart,A10540,Start Villa construction,,344,0,0,0,0,0,0,0,0,0,,,,2010-08-22 08:00,2010-08-22 08:00,,2010-07-03 08:00,2010-07-03 08:00,2010-07-03 08:00,2010-07-03 08:00,2010-07-03 08:00,2010-07-03 08:00,,2010-08-22 08:00,2010-08-22 08:00,,PT_Normal,,,,,jDF5ugF9ZU61B4d//ps+Bg,Cf7OYCLmA0m1nG2jkAprsw,,,N,0,0,,,2010-08-08 11:54,2010-08-08 11:54,admin,admin,,,
66,88909,784,11567,841,0,0,N,N,N,CP_Drtn,TT_FinMile,DT_FixedDrtn,RV_OK,TK_NotStart,A10550,finish Villa construction,,368,368,0,0,0,0,0,0,0,0,,,,2010-12-28 16:00,2010-12-28 16:00,,2010-10-31 16:00,2010-10-31 16:00,2010-10-31 16:00,2010-10-31 16:00,2010-10-31 16:00,2010-10-31 16:00,,2010-12-28 16:00,2010-12-28 16:00,,PT_Normal,,,,,Ae5B6/bK90OpretZcc9ocg,FuOde62ttUOnqpumMTLVCg,,,N,0,0,,,2010-08-08 11:54,2010-08-08 11:54,admin,admin,,,
67,88910,784,11567,841,0,0,N,N,N,CP_Drtn,TT_Mile,DT_FixedDrtn,RV_OK,TK_NotStart,A10560,IFC drawings,,344,0,0,0,0,0,0,0,0,0,,,,2010-08-10 08:00,2010-08-10 08:00,,2010-06-21 08:00,2010-06-21 08:00,2010-06-21 08:00,2010-06-21 08:00,2010-06-21 08:00,2010-06-21 08:00,,2010-08-10 08:00,2010-08-10 08:00,,PT_Normal,,,,,TPyMSZeuNkO3CSpYT5+/Fw,paLhTEjiLUmn9ZhRERLzsg,,,N,0,0,,,2010-08-08 11:54,2010-08-08 11:54,admin,admin,,,
68,88911,784,11553,841,1,0,N,N,N,CP_Drtn,TT_Task,DT_FixedDUR2,RV_OK,TK_NotStart,A10570,pouring for ground floor's slab,,368,0,8,0,0,0,8,0,0,0,,,,2010-10-24 08:00,2010-10-24 16:00,,2010-08-31 08:00,2010-08-31 16:00,2010-08-31 08:00,2010-08-31 16:00,2010-08-31 08:00,2010-08-31 16:00,,2010-10-24 08:00,2010-10-24 16:00,,PT_Normal,,,,,+BwhpA3JrkOk7xNrCQ/8wA,rkHX0gLJu06MmHJWaPEYyA,,,N,0,0,,,2010-08-08 11:54,2010-08-08 11:54,admin,admin,,,
69,88912,784,11553,841,1,0,N,N,N,CP_Drtn,TT_Task,DT_FixedDUR2,RV_OK,TK_NotStart,A10580,pouring for 1st floor's slab,,368,0,8,0,0,0,8,0,0,0,,,,2010-11-11 08:00,2010-11-11 16:00,,2010-09-19 08:00,2010-09-19 16:00,2010-09-19 08:00,2010-09-19 16:00,2010-09-19 08:00,2010-09-19 16:00,,2010-11-11 08:00,2010-11-11 16:00,,PT_Normal,,,,,6GGmuQwijUa1JU7cdFjEeg,pREhT23pg0O650onZ/m75w,,,N,0,0,,,2010-08-08 11:54,2010-08-08 11:54,admin,admin,,,
70,88913,784,11553,841,1,0,N,N,N,CP_Drtn,TT_Task,DT_FixedDUR2,RV_OK,TK_NotStart,A10590,pouring for roof floor's slab,,368,0,8,0,0,0,8,0,0,0,,,,2010-12-01 08:00,2010-12-01 16:00,,2010-10-04 08:00,2010-10-04 16:00,2010-10-04 08:00,2010-10-04 16:00,2010-10-04 08:00,2010-10-04 16:00,,2010-12-01 08:00,2010-12-01 16:00,,PT_Normal,,,,,p5wsLizEO0yvU92YpPhzCA,CLbJCMkWRUGa7ISIXW7gSA,,,N,0,0,,,2010-08-08 11:54,2010-08-08 11:54,admin,admin,,,
71,88914,784,11553,841,1,0,N,N,N,CP_Drtn,TT_Task,DT_FixedDrtn,RV_OK,TK_NotStart,A10600,Fence work,,384,16,400,0,0,0,400,0,0,0,,,,2010-10-27 08:00,2010-12-28 16:00,,2010-09-01 08:00,2010-10-28 16:00,2010-09-01 08:00,2010-10-28 16:00,2010-09-01 08:00,2010-10-28 16:00,,2010-10-27 08:00,2010-12-28 16:00,,PT_Normal,,,,,VQRnS4L0L0ujTAMjLTOlFw,kQLfBqADlESecTnkUN3eYg,,,N,0,0,,,2010-08-08 11:54,2010-08-08 11:54,admin,admin,,,
72,88915,784,11567,841,1,0,N,N,N,CP_Drtn,TT_Task,DT_FixedDUR2,RV_OK,TK_NotStart,A10610,Fence Drawings IFC,,712,328,8,0,0,0,8,0,0,0,,,,2010-10-14 08:00,2010-10-14 16:00,,2010-07-03 08:00,2010-07-03 16:00,2010-07-03 08:00,2010-07-03 16:00,2010-07-03 08:00,2010-07-03 16:00,,2010-10-14 08:00,2010-10-14 16:00,,PT_Normal,,,,,2uHfD9XHoEWuDG1hOwDJGQ,AgJYHaoCTEqqVEpujxZQtg,,,N,0,0,,,2010-08-08 11:54,2010-08-08 11:54,admin,admin,,,
73,88916,784,11569,873,1,0,N,N,N,CP_Drtn,TT_Task,DT_FixedDUR2,RV_OK,TK_NotStart,A10620,backfilling between P.C Foundation,,344,0,32,0,0,0,32,0,0,0,,,,2010-08-31 08:00,2010-09-04 16:00,,2010-07-12 08:00,2010-07-15 16:00,2010-07-12 08:00,2010-07-15 16:00,2010-07-12 08:00,2010-07-15 16:00,,2010-08-31 08:00,2010-09-04 16:00,,PT_Normal,,,,,mMKJ27rIdEGHtdIFPBAcDw,s2gESojSkk++pI2pDzsr4A,,,N,0,0,,,2010-08-08 11:54,2010-08-08 11:54,admin,admin,,,
74,88917,784,11553,873,1,0,N,N,N,CP_Drtn,TT_Task,DT_FixedDUR2,RV_OK,TK_NotStart,A10640,Brick works for 1st floor,,448,0,40,0,0,0,40,0,0,0,,,,2010-12-06 08:00,2010-12-11 16:00,,2010-10-02 08:00,2010-10-06 16:00,2010-10-02 08:00,2010-10-06 16:00,2010-10-02 08:00,2010-10-06 16:00,,2010-12-06 08:00,2010-12-11 16:00,,PT_Normal,,,,,mtFJYGXpBEC2KJ/TdLu12Q,gWAkVitp30GQrlG2D6Rm8A,,,N,0,0,,,2010-08-08 11:54,2010-08-08 11:54,admin,admin,,,
75,88918,784,11553,873,1,0,N,N,N,CP_Drtn,TT_Task,DT_FixedDUR2,RV_OK,TK_NotStart,A10650,Brick works for roof floor,,400,0,40,0,0,0,40,0,0,0,,,,2010-12-12 08:00,2010-12-16 16:00,,2010-10-14 08:00,2010-10-19 16:00,2010-10-14 08:00,2010-10-19 16:00,2010-10-14 08:00,2010-10-19 16:00,,2010-12-12 08:00,2010-12-16 16:00,,PT_Normal,,,,,K5TU2UnsEU27RESp5GYQAg,xhmL3kAwc0CobGJtqORJow,,,N,0,0,,,2010-08-08 11:54,2010-08-08 11:54,admin,admin,,,
76,88919,784,11542,873,1,0,N,N,N,CP_Drtn,TT_Task,DT_FixedDUR2,RV_OK,TK_NotStart,A10660,Internal plastering for 1st floor,,448,24,64,0,0,0,64,0,0,0,,,,2010-12-14 08:00,2010-12-22 16:00,,2010-10-10 08:00,2010-10-18 16:00,2010-10-10 08:00,2010-10-18 16:00,2010-10-10 08:00,2010-10-18 16:00,,2010-12-14 08:00,2010-12-22 16:00,,PT_Normal,,,,,vXO72JFnV0yvwmSi6i0/SQ,3ZVBuMa7kU+K0SYoWR8iVw,,,N,0,0,,,2010-08-08 11:54,2010-08-08 11:54,admin,admin,,,
77,88920,784,11542,873,1,0,N,N,N,CP_Drtn,TT_Task,DT_FixedDUR2,RV_OK,TK_NotStart,A10670,Internal plastering for roof floor,,424,24,40,0,0,0,40,0,0,0,,,,2010-12-23 08:00,2010-12-28 16:00,,2010-10-23 08:00,2010-10-27 16:00,2010-10-23 08:00,2010-10-27 16:00,2010-10-23 08:00,2010-10-27 16:00,,2010-12-23 08:00,2010-12-28 16:00,,PT_Normal,,,,,uNB8hcP7C0OpBMiumTq2Aw,obb0sowi/k6hM6VWVsgQtg,,,N,0,0,,,2010-08-08 11:54,2010-08-08 11:54,admin,admin,,,
78,88921,784,11549,873,1,0,N,N,N,CP_Drtn,TT_Task,DT_FixedDUR2,RV_OK,TK_NotStart,A10680,electrical conduits for ground floor walls,,464,0,16,0,0,0,16,0,0,0,,,,2010-12-02 08:00,2010-12-04 16:00,,2010-09-26 08:00,2010-09-27 16:00,2010-09-26 08:00,2010-09-27 16:00,2010-09-26 08:00,2010-09-27 16:00,,2010-12-02 08:00,2010-12-04 16:00,,PT_Normal,,,,,a9elz+OZwEiglq9AvDMg6w,8xHg6ZUA4EGB8RQoSy1Lyw,,,N,0,0,,,2010-08-08 11:54,2010-08-08 11:54,admin,admin,,,
79,88922,784,11549,873,1,0,N,N,N,CP_Drtn,TT_Task,DT_FixedDUR2,RV_OK,TK_NotStart,A10690,electrical conduits for 1st floor walls,,448,0,16,0,0,0,16,0,0,0,,,,2010-12-12 08:00,2010-12-13 16:00,,2010-10-07 08:00,2010-10-09 16:00,2010-10-07 08:00,2010-10-09 16:00,2010-10-07 08:00,2010-10-09 16:00,,2010-12-12 08:00,2010-12-13 16:00,,PT_Normal,,,,,BiBJt8QgK06ZvsyKfA5/+Q,ZfzwFYJ4zUemElqyQynfjQ,,,N,0,0,,,2010-08-08 11:54,2010-08-08 11:54,admin,admin,,,
80,88923,784,11549,873,1,0,N,N,N,CP_Drtn,TT_Task,DT_FixedDUR2,RV_OK,TK_NotStart,A10700,electrical conduits for roof floor walls,,424,0,16,0,0,0,16,0,0,0,,,,2010-12-21 08:00,2010-12-22 16:00,,2010-10-20 08:00,2010-10-21 16:00,2010-10-20 08:00,2010-10-21 16:00,2010-10-20 08:00,2010-10-21 16:00,,2010-12-21 08:00,2010-12-22 16:00,,PT_Normal,,,,,YFkbhm+i9ky/+IhSoP+J/g,ybbpQGkYiEaYhNhyk1gMAA,,,N,0,0,,,2010-08-08 11:54,2010-08-08 11:54,admin,admin,,,
81,88924,784,11575,841,1,0,N,N,N,CP_Drtn,TT_Task,DT_FixedDUR2,RV_OK,TK_NotStart,A10710,excavation,,448,0,8,0,0,0,8,0,0,0,,,,2010-08-28 08:00,2010-08-28 16:00,,2010-06-23 08:00,2010-06-23 16:00,2010-06-23 08:00,2010-06-23 16:00,2010-06-23 08:00,2010-06-23 16:00,,2010-08-28 08:00,2010-08-28 16:00,,PT_Normal,,,,,CqU6sE0kT060F7TnnRgrLw,ng8shaW9FESCVPieb4P8CA,,,N,0,0,,,2010-08-08 11:54,2010-08-08 11:54,admin,admin,,,
82,88925,784,11575,841,1,0,N,N,N,CP_Drtn,TT_Task,DT_FixedDUR2,RV_OK,TK_NotStart,A10720,soil replacement,,448,0,96,0,0,0,96,0,0,0,,,,2010-08-29 08:00,2010-09-11 16:00,,2010-06-24 08:00,2010-07-07 16:00,2010-06-24 08:00,2010-07-07 16:00,2010-06-24 08:00,2010-07-07 16:00,,2010-08-29 08:00,2010-09-11 16:00,,PT_Normal,,,,,Uu1uGujv9Emf0sRLuT8odw,4Qk8+L/BSkCkprNI1ZYWuw,,,N,0,0,,,2010-08-08 11:54,2010-08-08 11:54,admin,admin,,,
83,88926,784,11576,841,1,0,N,N,N,CP_Drtn,TT_Task,DT_FixedDUR2,RV_OK,TK_NotStart,A10730,Plain Concrete Foundation,,448,0,16,0,0,0,16,0,0,0,,,,2010-09-13 08:00,2010-09-14 16:00,,2010-07-10 08:00,2010-07-11 16:00,2010-07-10 08:00,2010-07-11 16:00,2010-07-10 08:00,2010-07-11 16:00,,2010-09-13 08:00,2010-09-14 16:00,,PT_Normal,,,,,rlvYkrtqZUygY0ouUdQ9ag,p1jplYl8KUOxxxWMkcqYMA,,,N,0,0,,,2010-08-08 11:54,2010-08-08 11:54,admin,admin,,,
84,88927,784,11576,841,1,0,N,N,N,CP_Drtn,TT_Task,DT_FixedDUR2,RV_OK,TK_NotStart,A10740,Reinforced Concrete Foundation,,448,0,56,0,0,0,56,0,0,0,,,,2010-09-19 08:00,2010-09-26 16:00,,2010-07-15 08:00,2010-07-22 16:00,2010-07-15 08:00,2010-07-22 16:00,2010-07-15 08:00,2010-07-22 16:00,,2010-09-19 08:00,2010-09-26 16:00,,PT_Normal,,,,,oF9g3xhtb0qmnkz9gcBCwA,OouzYJgbKEu48pVPxeIiIA,,,N,0,0,,,2010-08-08 11:54,2010-08-08 11:54,admin,admin,,,
85,88928,784,11576,841,1,0,N,N,N,CP_Drtn,TT_Task,DT_FixedDUR2,RV_OK,TK_NotStart,A10750,under ground  brick works,,448,0,16,0,0,0,16,0,0,0,,,,2010-10-04 08:00,2010-10-05 16:00,,2010-07-31 08:00,2010-08-01 16:00,2010-07-31 08:00,2010-08-01 16:00,2010-07-31 08:00,2010-08-01 16:00,,2010-10-04 08:00,2010-10-05 16:00,,PT_Normal,,,,,vixDGGLuqkG8mGMVkJsOgA,FUKefw86v0aWi/uZ8jkVKw,,,N,0,0,,,2010-08-08 11:54,2010-08-08 11:54,admin,admin,,,
86,88929,784,11576,841,1,0,N,N,N,CP_Drtn,TT_Task,DT_FixedDUR2,RV_OK,TK_NotStart,A10760,under ground insulation for RC & Brick work,,448,0,16,0,0,0,16,0,0,0,,,,2010-10-06 08:00,2010-10-07 16:00,,2010-08-02 08:00,2010-08-03 16:00,2010-08-02 08:00,2010-08-03 16:00,2010-08-02 08:00,2010-08-03 16:00,,2010-10-06 08:00,2010-10-07 16:00,,PT_Normal,,,,,sHqtpYBNoUaApRN2gVPxMA,/WTSmyTP1ESTYmJAVhgz4g,,,N,0,0,,,2010-08-08 11:54,2010-08-08 11:54,admin,admin,,,
87,88930,784,11576,841,1,0,N,N,N,CP_Drtn,TT_Task,DT_FixedDUR2,RV_OK,TK_NotStart,A10770,backfilling for under ground,,448,0,32,0,0,0,32,0,0,0,,,,2010-10-09 08:00,2010-10-12 16:00,,2010-08-04 08:00,2010-08-08 16:00,2010-08-04 08:00,2010-08-08 16:00,2010-08-04 08:00,2010-08-08 16:00,,2010-10-09 08:00,2010-10-12 16:00,,PT_Normal,,,,,nrhoitdWpU++t8YwUicUtw,7kEvWe46HUiw84mBskQr1Q,,,N,0,0,,,2010-08-08 11:54,2010-08-08 11:54,admin,admin,,,
88,88931,784,11576,841,1,0,N,N,N,CP_Drtn,TT_Task,DT_FixedDUR2,RV_OK,TK_NotStart,A10780,P.C slab on grade 10CM,,512,0,8,0,0,0,8,0,0,0,,,,2010-11-25 08:00,2010-11-25 16:00,,2010-09-07 08:00,2010-09-07 16:00,2010-09-07 08:00,2010-09-07 16:00,2010-09-07 08:00,2010-09-07 16:00,,2010-11-25 08:00,2010-11-25 16:00,,PT_Normal,,,,,a0NKmvxrY0O3Knb3Hjq82Q,61SmK7jW40Si60nHqZBPIQ,,,N,0,0,,,2010-08-08 11:54,2010-08-08 11:54,admin,admin,,,
89,88932,784,11576,841,1,0,N,N,N,CP_Drtn,TT_Task,DT_FixedDUR2,RV_OK,TK_NotStart,A10790,moisture insulation with membrane sheets,,512,0,16,0,0,0,16,0,0,0,,,,2010-11-27 08:00,2010-11-28 16:00,,2010-09-08 08:00,2010-09-09 16:00,2010-09-08 08:00,2010-09-09 16:00,2010-09-08 08:00,2010-09-09 16:00,,2010-11-27 08:00,2010-11-28 16:00,,PT_Normal,,,,,Wmi3hNYb1UefU18eZ0d9XQ,6X7Oz7l2zEeuVqshoN9Kqw,,,N,0,0,,,2010-08-08 11:54,2010-08-08 11:54,admin,admin,,,
90,88933,784,11576,841,1,0,N,N,N,CP_Drtn,TT_Task,DT_FixedDUR2,RV_OK,TK_NotStart,A10800,R.C slab on grade,,512,0,16,0,0,0,16,0,0,0,,,,2010-11-29 08:00,2010-11-30 16:00,,2010-09-11 08:00,2010-09-12 16:00,2010-09-11 08:00,2010-09-12 16:00,2010-09-11 08:00,2010-09-12 16:00,,2010-11-29 08:00,2010-11-30 16:00,,PT_Normal,,,,,tBAglx83GESS5a81L830zA,eX5CcH33eUC6ONhHnLAyiA,,,N,0,0,,,2010-08-08 11:54,2010-08-08 11:54,admin,admin,,,
91,88934,784,11555,841,1,0,N,N,N,CP_Drtn,TT_Task,DT_FixedDUR2,RV_OK,TK_NotStart,A10810,columns for ground floor,,448,0,48,0,0,0,48,0,0,0,,,,2010-09-27 08:00,2010-10-03 16:00,,2010-07-24 08:00,2010-07-29 16:00,2010-07-24 08:00,2010-07-29 16:00,2010-07-24 08:00,2010-07-29 16:00,,2010-09-27 08:00,2010-10-03 16:00,,PT_Normal,,,,,mWJzlBMiZk6lQR/FiQ8oHQ,9aP1FaFtwEGKCrsqYw65bQ,,,N,0,0,,,2010-08-08 11:54,2010-08-08 11:54,admin,admin,,,
92,88935,784,11555,841,1,0,N,N,N,CP_Drtn,TT_Task,DT_FixedDUR2,RV_OK,TK_NotStart,A10820,slab for ground floor,,448,0,72,0,0,0,72,0,0,0,,,,2010-10-13 08:00,2010-10-23 16:00,,2010-08-09 08:00,2010-08-18 16:00,2010-08-09 08:00,2010-08-18 16:00,2010-08-09 08:00,2010-08-18 16:00,,2010-10-13 08:00,2010-10-23 16:00,,PT_Normal,,,,,H4nyKhgOvEKxK5Gs/p9CQg,tS+z5Yi8WEq5ZEmUBMsAFg,,,N,0,0,,,2010-08-08 11:54,2010-08-08 11:54,admin,admin,,,
93,88936,784,11555,841,1,0,N,N,N,CP_Drtn,TT_Task,DT_FixedDUR2,RV_OK,TK_NotStart,A10830,columns for 1st floor,,448,0,48,0,0,0,48,0,0,0,,,,2010-10-25 08:00,2010-10-31 16:00,,2010-08-21 08:00,2010-08-26 16:00,2010-08-21 08:00,2010-08-26 16:00,2010-08-21 08:00,2010-08-26 16:00,,2010-10-25 08:00,2010-10-31 16:00,,PT_Normal,,,,,V2Isb6Kgukmh2LBPTlMhYg,yo+Z+eg7xEm4qThxWgCf0g,,,N,0,0,,,2010-08-08 11:54,2010-08-08 11:54,admin,admin,,,
94,88937,784,11555,841,1,0,N,N,N,CP_Drtn,TT_Task,DT_FixedDUR2,RV_OK,TK_NotStart,A10840,slab for 1st floor,,448,0,72,0,0,0,72,0,0,0,,,,2010-11-01 08:00,2010-11-10 16:00,,2010-08-28 08:00,2010-09-06 16:00,2010-08-28 08:00,2010-09-06 16:00,2010-08-28 08:00,2010-09-06 16:00,,2010-11-01 08:00,2010-11-10 16:00,,PT_Normal,,,,,eeK22lLVHE+IcKkJujMWOQ,owf4tOO85Uq0rios65uxXQ,,,N,0,0,,,2010-08-08 11:54,2010-08-08 11:54,admin,admin,,,
95,88938,784,11555,841,1,0,N,N,N,CP_Drtn,TT_Task,DT_FixedDUR2,RV_OK,TK_NotStart,A10850,columns for roof floor,,448,0,32,0,0,0,32,0,0,0,,,,2010-11-20 08:00,2010-11-23 16:00,,2010-09-11 08:00,2010-09-14 16:00,2010-09-11 08:00,2010-09-14 16:00,2010-09-11 08:00,2010-09-14 16:00,,2010-11-20 08:00,2010-11-23 16:00,,PT_Normal,,,,,ezB+x7HVwkyZc5yjiBB04Q,HgE48giV2UiW4eTQ+lqbrA,,,N,0,0,,,2010-08-08 11:54,2010-08-08 11:54,admin,admin,,,
96,88939,784,11555,841,1,0,N,N,N,CP_Drtn,TT_Task,DT_FixedDUR2,RV_OK,TK_NotStart,A10860,slab for roof floor,,448,0,48,0,0,0,48,0,0,0,,,,2010-11-24 08:00,2010-11-30 16:00,,2010-09-15 08:00,2010-09-21 16:00,2010-09-15 08:00,2010-09-21 16:00,2010-09-15 08:00,2010-09-21 16:00,,2010-11-24 08:00,2010-11-30 16:00,,PT_Normal,,,,,/G12qx+6g0uaVNyIFeccBQ,defMwlsnck6AbXQIdM7TPA,,,N,0,0,,,2010-08-08 11:54,2010-08-08 11:54,admin,admin,,,
97,88940,784,11555,841,1,0,N,N,N,CP_Drtn,TT_Task,DT_FixedDUR2,RV_OK,TK_NotStart,A10870,Brick works for ground floor,,512,0,40,0,0,0,40,0,0,0,,,,2010-11-20 08:00,2010-11-24 16:00,,2010-09-01 08:00,2010-09-06 16:00,2010-09-01 08:00,2010-09-06 16:00,2010-09-01 08:00,2010-09-06 16:00,,2010-11-20 08:00,2010-11-24 16:00,,PT_Normal,,,,,ZLYWHBvSpEO4kVWOJ8ASTw,cvyWtBlCK0W0e0vdXHznpQ,,,N,0,0,,,2010-08-08 11:54,2010-08-08 11:54,admin,admin,,,
98,88941,784,11547,841,1,0,N,N,N,CP_Drtn,TT_Task,DT_FixedDrtn,RV_OK,TK_NotStart,A10880,electrical conduits for ground floor's slab,,456,8,16,0,0,0,16,0,0,0,,,,2010-10-19 08:00,2010-10-20 16:00,,2010-08-14 08:00,2010-08-15 16:00,2010-08-14 08:00,2010-08-15 16:00,2010-08-14 08:00,2010-08-15 16:00,,2010-10-19 08:00,2010-10-20 16:00,,PT_Normal,,,,,Yzy3+72RI0ypOvh1iR1vsw,OrXdWNZtl0OZY55AMylxJg,,,N,0,0,,,2010-08-08 11:54,2010-08-08 11:54,admin,admin,,,
99,88942,784,11547,841,1,0,N,N,N,CP_Drtn,TT_Task,DT_FixedDrtn,RV_OK,TK_NotStart,A10890,electrical conduits for 1st floor slab,,456,8,16,0,0,0,16,0,0,0,,,,2010-11-07 08:00,2010-11-08 16:00,,2010-09-01 08:00,2010-09-02 16:00,2010-09-01 08:00,2010-09-02 16:00,2010-09-01 08:00,2010-09-02 16:00,,2010-11-07 08:00,2010-11-08 16:00,,PT_Normal,,,,,WCH7ch4gYUiXyjgpv6HfvA,+JDL9IKxcEKBrOR8TdasKQ,,,N,0,0,,,2010-08-08 11:54,2010-08-08 11:54,admin,admin,,,
100,88943,784,11547,841,1,0,N,N,N,CP_Drtn,TT_Task,DT_FixedDrtn,RV_OK,TK_NotStart,A10900,electrical conduits for roof slab,,456,8,8,0,0,0,8,0,0,0,,,,2010-11-29 08:00,2010-11-29 16:00,,2010-09-19 08:00,2010-09-19 16:00,2010-09-19 08:00,2010-09-19 16:00,2010-09-19 08:00,2010-09-19 16:00,,2010-11-29 08:00,2010-11-29 16:00,,PT_Normal,,,,,lcdmbssgF0GlBMKw9TkQbw,pUUq0IoVCEaub0BBrdx4Hg,,,N,0,0,,,2010-08-08 11:54,2010-08-08 11:54,admin,admin,,,
101,88944,784,11543,841,1,0,N,N,N,CP_Drtn,TT_Task,DT_FixedDUR2,RV_OK,TK_NotStart,A10910,Internal plastering for ground floor,,512,16,64,0,0,0,64,0,0,0,,,,2010-12-05 08:00,2010-12-13 16:00,,2010-09-16 08:00,2010-09-25 16:00,2010-09-16 08:00,2010-09-25 16:00,2010-09-16 08:00,2010-09-25 16:00,,2010-12-05 08:00,2010-12-13 16:00,,PT_Normal,,,,,fRLzAEx4f0CNjjg31y2G7w,QdKggyZ6WUeyAO/NjKV3Vw,,,N,0,0,,,2010-08-08 11:54,2010-08-08 11:54,admin,admin,,,
102,88945,784,11543,841,1,0,N,N,N,CP_Drtn,TT_Task,DT_FixedDUR2,RV_OK,TK_NotStart,A10920,External plastering,,448,0,80,0,0,0,80,0,0,0,,,,2010-12-18 08:00,2010-12-28 16:00,,2010-10-09 08:00,2010-10-19 16:00,2010-10-09 08:00,2010-10-19 16:00,2010-10-09 08:00,2010-10-19 16:00,,2010-12-18 08:00,2010-12-28 16:00,,PT_Normal,,,,,B52jw/Sq8UutywqDMpzYhg,DN7tDjiGbkixKIdQKzK5TA,,,N,0,0,,,2010-08-08 11:54,2010-08-08 11:54,admin,admin,,,
103,88946,784,11547,841,1,0,N,N,N,CP_Drtn,TT_Task,DT_FixedDrtn,RV_OK,TK_NotStart,A10930,plumbing connections under slab on grade,,696,184,16,0,0,0,16,0,0,0,,,,2010-11-23 08:00,2010-11-24 16:00,,2010-08-09 08:00,2010-08-10 16:00,2010-08-09 08:00,2010-08-10 16:00,2010-08-09 08:00,2010-08-10 16:00,,2010-11-23 08:00,2010-11-24 16:00,,PT_Normal,,,,,QTj52hcOKEC+rsUUIU1mYg,CxI1lM/cW0GhkyUl7ZEUrA,,,N,0,0,,,2010-08-08 11:54,2010-08-08 11:54,admin,admin,,,
104,88947,784,11574,841,0,0,N,N,N,CP_Drtn,TT_Mile,DT_FixedDrtn,RV_OK,TK_NotStart,A10940,Start Villa construction,,448,0,0,0,0,0,0,0,0,0,,,,2010-08-28 08:00,2010-08-28 08:00,,2010-06-23 08:00,2010-06-23 08:00,2010-06-23 08:00,2010-06-23 08:00,2010-06-23 08:00,2010-06-23 08:00,,2010-08-28 08:00,2010-08-28 08:00,,PT_Normal,,,,,48QWxYr3gUWaCmaS5bW46A,T4JEiXOUZkyy5FfAz16NHQ,,,N,0,0,,,2010-08-08 11:54,2010-08-08 19:39,admin,admin,,,
105,88948,784,11574,841,0,0,N,N,N,CP_Drtn,TT_FinMile,DT_FixedDrtn,RV_OK,TK_NotStart,A10950,finish Villa construction,,448,448,0,0,0,0,0,0,0,0,,,,2010-12-28 16:00,2010-12-28 16:00,,2010-10-19 16:00,2010-10-19 16:00,2010-10-19 16:00,2010-10-19 16:00,2010-10-19 16:00,2010-10-19 16:00,,2010-12-28 16:00,2010-12-28 16:00,,PT_Normal,,,,,1/43jkJXcke02xk978e66Q,e8WIaj6UlUy8nMjdblzVUA,,,N,0,0,,,2010-08-08 11:54,2010-08-08 11:54,admin,admin,,,
106,88949,784,11574,841,0,0,N,N,N,CP_Drtn,TT_Mile,DT_FixedDrtn,RV_OK,TK_NotStart,A10960,IFC drawings,,448,0,0,0,0,0,0,0,0,0,,,,2010-08-25 08:00,2010-08-25 08:00,,2010-06-21 08:00,2010-06-21 08:00,2010-06-21 08:00,2010-06-21 08:00,2010-06-21 08:00,2010-06-21 08:00,,2010-08-25 08:00,2010-08-25 08:00,,PT_Normal,,,,,/LNiYWWhLUmrniRRAD2J6A,z1W7JUGPbEewTErNPmeSGg,,,N,0,0,,,2010-08-08 11:54,2010-08-08 11:54,admin,admin,,,
107,88950,784,11555,841,1,0,N,N,N,CP_Drtn,TT_Task,DT_FixedDUR2,RV_OK,TK_NotStart,A10970,pouring for ground floor's slab,,448,0,8,0,0,0,8,0,0,0,,,,2010-10-24 08:00,2010-10-24 16:00,,2010-08-19 08:00,2010-08-19 16:00,2010-08-19 08:00,2010-08-19 16:00,2010-08-19 08:00,2010-08-19 16:00,,2010-10-24 08:00,2010-10-24 16:00,,PT_Normal,,,,,+QodcDX8WUWLeH03Vzem/w,d+pE6uDpI0aqjIUksHl20Q,,,N,0,0,,,2010-08-08 11:54,2010-08-08 11:54,admin,admin,,,
108,88951,784,11555,841,1,0,N,N,N,CP_Drtn,TT_Task,DT_FixedDUR2,RV_OK,TK_NotStart,A10980,pouring for 1st floor's slab,,448,0,8,0,0,0,8,0,0,0,,,,2010-11-11 08:00,2010-11-11 16:00,,2010-09-07 08:00,2010-09-07 16:00,2010-09-07 08:00,2010-09-07 16:00,2010-09-07 08:00,2010-09-07 16:00,,2010-11-11 08:00,2010-11-11 16:00,,PT_Normal,,,,,BB5lbwvwOUCEx78KRtVA3A,W6PMa66IPkyD6PvSN0rfxQ,,,N,0,0,,,2010-08-08 11:54,2010-08-08 11:54,admin,admin,,,
109,88952,784,11555,841,1,0,N,N,N,CP_Drtn,TT_Task,DT_FixedDUR2,RV_OK,TK_NotStart,A10990,pouring for roof floor's slab,,448,0,8,0,0,0,8,0,0,0,,,,2010-12-01 08:00,2010-12-01 16:00,,2010-09-22 08:00,2010-09-22 16:00,2010-09-22 08:00,2010-09-22 16:00,2010-09-22 08:00,2010-09-22 16:00,,2010-12-01 08:00,2010-12-01 16:00,,PT_Normal,,,,,pBQL4cbhE068VqAkRy5Eog,MJW+EYrZo0SMGsBq72ETyQ,,,N,0,0,,,2010-08-08 11:54,2010-08-08 11:54,admin,admin,,,
110,88953,784,11555,841,1,0,N,N,N,CP_Drtn,TT_Task,DT_FixedDrtn,RV_OK,TK_NotStart,A11000,Fence work,,464,16,400,0,0,0,400,0,0,0,,,,2010-10-27 08:00,2010-12-28 16:00,,2010-08-21 08:00,2010-10-17 16:00,2010-08-21 08:00,2010-10-17 16:00,2010-08-21 08:00,2010-10-17 16:00,,2010-10-27 08:00,2010-12-28 16:00,,PT_Normal,,,,,kYXUTY7DlEGZJVUgP9QBUw,aUeUwqlKaE+KE93jRojYqw,,,N,0,0,,,2010-08-08 11:54,2010-08-08 11:54,admin,admin,,,
111,88954,784,11574,841,1,0,N,N,N,CP_Drtn,TT_Task,DT_FixedDUR2,RV_OK,TK_NotStart,A11010,Fence Drawings IFC,,776,312,8,0,0,0,8,0,0,0,,,,2010-10-14 08:00,2010-10-14 16:00,,2010-06-23 08:00,2010-06-23 16:00,2010-06-23 08:00,2010-06-23 16:00,2010-06-23 08:00,2010-06-23 16:00,,2010-10-14 08:00,2010-10-14 16:00,,PT_Normal,,,,,M7c28cGr4kG1/Jo9Noeb9w,zoynR0gg60utPV7M3IOHZw,,,N,0,0,,,2010-08-08 11:54,2010-08-08 19:39,admin,admin,,,
112,88955,784,11576,873,1,0,N,N,N,CP_Drtn,TT_Task,DT_FixedDUR2,RV_OK,TK_NotStart,A11020,backfilling between P.C Foundation,,416,0,16,0,0,0,16,0,0,0,,,,2010-09-16 08:00,2010-09-18 16:00,,2010-07-13 08:00,2010-07-14 16:00,2010-07-13 08:00,2010-07-14 16:00,2010-07-13 08:00,2010-07-14 16:00,,2010-09-16 08:00,2010-09-18 16:00,,PT_Normal,,,,,H1S7eLyeoUG/xglPU5g+1w,d/rJUJlEcUepPD+8r6GhXQ,,,N,0,0,,,2010-08-08 11:54,2010-08-08 11:54,admin,admin,,,
113,88956,784,11555,873,1,0,N,N,N,CP_Drtn,TT_Task,DT_FixedDUR2,RV_OK,TK_NotStart,A11040,Brick works for 1st floor,,528,0,40,0,0,0,40,0,0,0,,,,2010-12-06 08:00,2010-12-11 16:00,,2010-09-20 08:00,2010-09-25 16:00,2010-09-20 08:00,2010-09-25 16:00,2010-09-20 08:00,2010-09-25 16:00,,2010-12-06 08:00,2010-12-11 16:00,,PT_Normal,,,,,svVpFmTF40ymfrnwgaxWXg,+72wrztbN06fZr4b5vVfRg,,,N,0,0,,,2010-08-08 11:54,2010-08-08 11:54,admin,admin,,,
114,88957,784,11555,873,1,0,N,N,N,CP_Drtn,TT_Task,DT_FixedDUR2,RV_OK,TK_NotStart,A11050,Brick works for roof floor,,480,0,40,0,0,0,40,0,0,0,,,,2010-12-12 08:00,2010-12-16 16:00,,2010-10-03 08:00,2010-10-07 16:00,2010-10-03 08:00,2010-10-07 16:00,2010-10-03 08:00,2010-10-07 16:00,,2010-12-12 08:00,2010-12-16 16:00,,PT_Normal,,,,,W/vV0YEQf0ShLzUOF8zd4Q,bs7T4beOzkCzbumz1QouDQ,,,N,0,0,,,2010-08-08 11:54,2010-08-08 11:54,admin,admin,,,
115,88958,784,11543,873,1,0,N,N,N,CP_Drtn,TT_Task,DT_FixedDUR2,RV_OK,TK_NotStart,A11060,Internal plastering for 1st floor,,528,24,64,0,0,0,64,0,0,0,,,,2010-12-14 08:00,2010-12-22 16:00,,2010-09-28 08:00,2010-10-06 16:00,2010-09-28 08:00,2010-10-06 16:00,2010-09-28 08:00,2010-10-06 16:00,,2010-12-14 08:00,2010-12-22 16:00,,PT_Normal,,,,,0mnWH08tlEi4YLgkG3UQVw,l0fCeYdsdkOHYGYBwsRCXw,,,N,0,0,,,2010-08-08 11:54,2010-08-08 11:54,admin,admin,,,
116,88959,784,11543,873,1,0,N,N,N,CP_Drtn,TT_Task,DT_FixedDUR2,RV_OK,TK_NotStart,A11070,Internal plastering for roof floor,,504,24,40,0,0,0,40,0,0,0,,,,2010-12-23 08:00,2010-12-28 16:00,,2010-10-11 08:00,2010-10-16 16:00,2010-10-11 08:00,2010-10-16 16:00,2010-10-11 08:00,2010-10-16 16:00,,2010-12-23 08:00,2010-12-28 16:00,,PT_Normal,,,,,QZre1N8CCES073uWqvjyjw,gc+DB8DDOUKEX9/O6RCxOw,,,N,0,0,,,2010-08-08 11:54,2010-08-08 11:54,admin,admin,,,
117,88960,784,11547,873,1,0,N,N,N,CP_Drtn,TT_Task,DT_FixedDUR2,RV_OK,TK_NotStart,A11080,electrical conduits for ground floor walls,,544,0,16,0,0,0,16,0,0,0,,,,2010-12-02 08:00,2010-12-04 16:00,,2010-09-14 08:00,2010-09-15 16:00,2010-09-14 08:00,2010-09-15 16:00,2010-09-14 08:00,2010-09-15 16:00,,2010-12-02 08:00,2010-12-04 16:00,,PT_Normal,,,,,NeE4NVOT1068nuYxf+46Zw,xbB0JFzG9EOK00Xyosu8Pw,,,N,0,0,,,2010-08-08 11:54,2010-08-08 11:54,admin,admin,,,
118,88961,784,11547,873,1,0,N,N,N,CP_Drtn,TT_Task,DT_FixedDUR2,RV_OK,TK_NotStart,A11090,electrical conduits for 1st floor walls,,528,0,16,0,0,0,16,0,0,0,,,,2010-12-12 08:00,2010-12-13 16:00,,2010-09-26 08:00,2010-09-27 16:00,2010-09-26 08:00,2010-09-27 16:00,2010-09-26 08:00,2010-09-27 16:00,,2010-12-12 08:00,2010-12-13 16:00,,PT_Normal,,,,,SRJKZ15FL0i0nrvajec/Zw,Fc+j4qQ5uESO6H1VG+Hc+g,,,N,0,0,,,2010-08-08 11:54,2010-08-08 11:54,admin,admin,,,
119,88962,784,11547,873,1,0,N,N,N,CP_Drtn,TT_Task,DT_FixedDUR2,RV_OK,TK_NotStart,A11100,electrical conduits for roof floor walls,,504,0,16,0,0,0,16,0,0,0,,,,2010-12-21 08:00,2010-12-22 16:00,,2010-10-09 08:00,2010-10-10 16:00,2010-10-09 08:00,2010-10-10 16:00,2010-10-09 08:00,2010-10-10 16:00,,2010-12-21 08:00,2010-12-22 16:00,,PT_Normal,,,,,UzcscIR9Y0yAZIc/Q7B6+Q,KkpJBMd7fEmLbOurPx9Umw,,,N,0,0,,,2010-08-08 11:54,2010-08-08 11:54,admin,admin,,,
120,88963,784,11582,841,1,0,N,N,N,CP_Drtn,TT_Task,DT_FixedDUR2,RV_OK,TK_NotStart,A11110,excavation,,456,0,0,0,0,0,0,0,0,0,,,,2010-08-28 16:00,2010-08-28 16:00,,2010-06-23 08:00,2010-06-23 08:00,2010-06-23 08:00,2010-06-23 08:00,2010-06-23 08:00,2010-06-23 08:00,,2010-08-28 16:00,2010-08-28 16:00,,PT_Normal,,,,,ktm5/zIjgk6BcteAIWQDNQ,LzN/BNS4PUCITg/1IQe7Og,,,N,0,0,,,2010-08-08 11:54,2010-08-08 11:54,admin,admin,,,
121,88964,784,11582,841,1,0,N,N,N,CP_Drtn,TT_Task,DT_FixedDUR2,RV_OK,TK_NotStart,A11120,soil replacement,,456,0,96,0,0,0,96,0,0,0,,,,2010-08-29 08:00,2010-09-11 16:00,,2010-06-23 08:00,2010-07-06 16:00,2010-06-23 08:00,2010-07-06 16:00,2010-06-23 08:00,2010-07-06 16:00,,2010-08-29 08:00,2010-09-11 16:00,,PT_Normal,,,,,LnFAWPwsfkqJWsvIWBTCBw,afq6vct970CmGDFnGrGoSQ,,,N,0,0,,,2010-08-08 11:54,2010-08-08 11:54,admin,admin,,,
122,88965,784,11583,841,1,0,N,N,N,CP_Drtn,TT_Task,DT_FixedDUR2,RV_OK,TK_NotStart,A11130,Plain Concrete Foundation,,456,0,16,0,0,0,16,0,0,0,,,,2010-09-12 08:00,2010-09-13 16:00,,2010-07-07 08:00,2010-07-08 16:00,2010-07-07 08:00,2010-07-08 16:00,2010-07-07 08:00,2010-07-08 16:00,,2010-09-12 08:00,2010-09-13 16:00,,PT_Normal,,,,,AIJbgudYaE6uX4ZM/SuG5w,aFrUXlFen02f4oO8X0zCfQ,,,N,0,0,,,2010-08-08 11:54,2010-08-08 11:54,admin,admin,,,
123,88966,784,11583,841,1,0,N,N,N,CP_Drtn,TT_Task,DT_FixedDUR2,RV_OK,TK_NotStart,A11140,Reinforced Concrete Foundation,,456,0,56,0,0,0,56,0,0,0,,,,2010-09-18 08:00,2010-09-25 16:00,,2010-07-13 08:00,2010-07-20 16:00,2010-07-13 08:00,2010-07-20 16:00,2010-07-13 08:00,2010-07-20 16:00,,2010-09-18 08:00,2010-09-25 16:00,,PT_Normal,,,,,4lWViURH8kKg2Iuja1XARA,gwXyTukgAEy/wZ/ps8lXrw,,,N,0,0,,,2010-08-08 11:54,2010-08-08 11:54,admin,admin,,,
124,88967,784,11583,841,1,0,N,N,N,CP_Drtn,TT_Task,DT_FixedDUR2,RV_OK,TK_NotStart,A11150,under ground  brick works,,456,0,16,0,0,0,16,0,0,0,,,,2010-10-04 08:00,2010-10-05 16:00,,2010-07-29 08:00,2010-07-31 16:00,2010-07-29 08:00,2010-07-31 16:00,2010-07-29 08:00,2010-07-31 16:00,,2010-10-04 08:00,2010-10-05 16:00,,PT_Normal,,,,,TOKStnwSTEaj6zQ0Z6kE9A,o6ETLYBWakWrO8qj44I7Iw,,,N,0,0,,,2010-08-08 11:54,2010-08-08 11:54,admin,admin,,,
125,88968,784,11583,841,1,0,N,N,N,CP_Drtn,TT_Task,DT_FixedDUR2,RV_OK,TK_NotStart,A11160,under ground insulation for RC & Brick work,,456,0,16,0,0,0,16,0,0,0,,,,2010-10-06 08:00,2010-10-07 16:00,,2010-08-01 08:00,2010-08-02 16:00,2010-08-01 08:00,2010-08-02 16:00,2010-08-01 08:00,2010-08-02 16:00,,2010-10-06 08:00,2010-10-07 16:00,,PT_Normal,,,,,v/560HoM4UK6ifRbKkNQRw,z+BOkxKth06MUXVtSBZ+BQ,,,N,0,0,,,2010-08-08 11:54,2010-08-08 11:54,admin,admin,,,
126,88969,784,11583,841,1,0,N,N,N,CP_Drtn,TT_Task,DT_FixedDUR2,RV_OK,TK_NotStart,A11170,backfilling for under ground,,456,0,32,0,0,0,32,0,0,0,,,,2010-10-09 08:00,2010-10-12 16:00,,2010-08-03 08:00,2010-08-07 16:00,2010-08-03 08:00,2010-08-07 16:00,2010-08-03 08:00,2010-08-07 16:00,,2010-10-09 08:00,2010-10-12 16:00,,PT_Normal,,,,,3IuK+ywt1kuqWOHbkydanw,v7+bbYc0BEavBaNGARvWew,,,N,0,0,,,2010-08-08 11:54,2010-08-08 11:54,admin,admin,,,
127,88970,784,11583,841,1,0,N,N,N,CP_Drtn,TT_Task,DT_FixedDUR2,RV_OK,TK_NotStart,A11180,P.C slab on grade 10CM,,520,0,8,0,0,0,8,0,0,0,,,,2010-11-25 08:00,2010-11-25 16:00,,2010-09-06 08:00,2010-09-06 16:00,2010-09-06 08:00,2010-09-06 16:00,2010-09-06 08:00,2010-09-06 16:00,,2010-11-25 08:00,2010-11-25 16:00,,PT_Normal,,,,,ype9DZaalk6nT1U9FFv/aA,s0XwKtmqgkSH0IgROcXmJA,,,N,0,0,,,2010-08-08 11:54,2010-08-08 11:54,admin,admin,,,
128,88971,784,11583,841,1,0,N,N,N,CP_Drtn,TT_Task,DT_FixedDUR2,RV_OK,TK_NotStart,A11190,moisture insulation with membrane sheets,,520,0,16,0,0,0,16,0,0,0,,,,2010-11-27 08:00,2010-11-28 16:00,,2010-09-07 08:00,2010-09-08 16:00,2010-09-07 08:00,2010-09-08 16:00,2010-09-07 08:00,2010-09-08 16:00,,2010-11-27 08:00,2010-11-28 16:00,,PT_Normal,,,,,mAnYOxb5FkGn+C59Pq/jVw,mGhSMjYnuU2A/r87nm+mNw,,,N,0,0,,,2010-08-08 11:54,2010-08-08 11:54,admin,admin,,,
129,88972,784,11583,841,1,0,N,N,N,CP_Drtn,TT_Task,DT_FixedDUR2,RV_OK,TK_NotStart,A11200,R.C slab on grade,,520,0,16,0,0,0,16,0,0,0,,,,2010-11-29 08:00,2010-11-30 16:00,,2010-09-09 08:00,2010-09-11 16:00,2010-09-09 08:00,2010-09-11 16:00,2010-09-09 08:00,2010-09-11 16:00,,2010-11-29 08:00,2010-11-30 16:00,,PT_Normal,,,,,HCVjvWgKhk2twYy6Wn52pQ,0DdWAs8ZZkyfHtN00DofzQ,,,N,0,0,,,2010-08-08 11:54,2010-08-08 11:54,admin,admin,,,
130,88973,784,11548,841,1,0,N,N,N,CP_Drtn,TT_Task,DT_FixedDUR2,RV_OK,TK_NotStart,A11210,columns for ground floor,,456,0,48,0,0,0,48,0,0,0,,,,2010-09-27 08:00,2010-10-03 16:00,,2010-07-22 08:00,2010-07-28 16:00,2010-07-22 08:00,2010-07-28 16:00,2010-07-22 08:00,2010-07-28 16:00,,2010-09-27 08:00,2010-10-03 16:00,,PT_Normal,,,,,m8HhHcNRqU6o4krCVO+KTA,6LCH4iDgGEu2TKOaWbWzdw,,,N,0,0,,,2010-08-08 11:54,2010-08-08 11:54,admin,admin,,,
131,88974,784,11548,841,1,0,N,N,N,CP_Drtn,TT_Task,DT_FixedDUR2,RV_OK,TK_NotStart,A11220,slab for ground floor,,456,0,72,0,0,0,72,0,0,0,,,,2010-10-13 08:00,2010-10-23 16:00,,2010-08-08 08:00,2010-08-17 16:00,2010-08-08 08:00,2010-08-17 16:00,2010-08-08 08:00,2010-08-17 16:00,,2010-10-13 08:00,2010-10-23 16:00,,PT_Normal,,,,,yCWtTQ9Jd0GfO9Rq6n8R4Q,Q2vTD/TFNESVC+NCD5CqKw,,,N,0,0,,,2010-08-08 11:54,2010-08-08 11:54,admin,admin,,,
132,88975,784,11548,841,1,0,N,N,N,CP_Drtn,TT_Task,DT_FixedDUR2,RV_OK,TK_NotStart,A11230,columns for 1st floor,,456,0,48,0,0,0,48,0,0,0,,,,2010-10-25 08:00,2010-10-31 16:00,,2010-08-19 08:00,2010-08-25 16:00,2010-08-19 08:00,2010-08-25 16:00,2010-08-19 08:00,2010-08-25 16:00,,2010-10-25 08:00,2010-10-31 16:00,,PT_Normal,,,,,WGa0Nah4cEKwAx0wcQQuSg,THpuqjk0kkK0CDcGqQ7wSQ,,,N,0,0,,,2010-08-08 11:54,2010-08-08 11:54,admin,admin,,,
133,88976,784,11548,841,1,0,N,N,N,CP_Drtn,TT_Task,DT_FixedDUR2,RV_OK,TK_NotStart,A11240,slab for 1st floor,,456,0,72,0,0,0,72,0,0,0,,,,2010-11-01 08:00,2010-11-10 16:00,,2010-08-26 08:00,2010-09-05 16:00,2010-08-26 08:00,2010-09-05 16:00,2010-08-26 08:00,2010-09-05 16:00,,2010-11-01 08:00,2010-11-10 16:00,,PT_Normal,,,,,8QUe84Y0kUWv/AsNdjS45g,ENdJq/V8cEmotYl8OfD16A,,,N,0,0,,,2010-08-08 11:54,2010-08-08 11:54,admin,admin,,,
134,88977,784,11548,841,1,0,N,N,N,CP_Drtn,TT_Task,DT_FixedDUR2,RV_OK,TK_NotStart,A11250,columns for roof floor,,456,0,32,0,0,0,32,0,0,0,,,,2010-11-20 08:00,2010-11-23 16:00,,2010-09-09 08:00,2010-09-13 16:00,2010-09-09 08:00,2010-09-13 16:00,2010-09-09 08:00,2010-09-13 16:00,,2010-11-20 08:00,2010-11-23 16:00,,PT_Normal,,,,,+vs4g4ur4U6Cg+19gFdqWg,d7bHiWzJ2UG2vp9MZtrQkw,,,N,0,0,,,2010-08-08 11:54,2010-08-08 11:54,admin,admin,,,
135,88978,784,11548,841,1,0,N,N,N,CP_Drtn,TT_Task,DT_FixedDUR2,RV_OK,TK_NotStart,A11260,slab for roof floor,,456,0,48,0,0,0,48,0,0,0,,,,2010-11-24 08:00,2010-11-30 16:00,,2010-09-14 08:00,2010-09-20 16:00,2010-09-14 08:00,2010-09-20 16:00,2010-09-14 08:00,2010-09-20 16:00,,2010-11-24 08:00,2010-11-30 16:00,,PT_Normal,,,,,nkpE6u9oS02KtXliBmg0BQ,OI5dcq6UjkWYda8ygOdqSg,,,N,0,0,,,2010-08-08 11:54,2010-08-08 11:54,admin,admin,,,
136,88979,784,11548,841,1,0,N,N,N,CP_Drtn,TT_Task,DT_FixedDUR2,RV_OK,TK_NotStart,A11270,Brick works for ground floor,,520,0,40,0,0,0,40,0,0,0,,,,2010-11-20 08:00,2010-11-24 16:00,,2010-08-31 08:00,2010-09-05 16:00,2010-08-31 08:00,2010-09-05 16:00,2010-08-31 08:00,2010-09-05 16:00,,2010-11-20 08:00,2010-11-24 16:00,,PT_Normal,,,,,yMvb6X5g2E+5qokxY+fr/A,/TlfDDIFb0ijYNaTrhijlA,,,N,0,0,,,2010-08-08 11:54,2010-08-08 11:54,admin,admin,,,
137,88980,784,11544,841,1,0,N,N,N,CP_Drtn,TT_Task,DT_FixedDrtn,RV_OK,TK_NotStart,A11280,electrical conduits for ground floor's slab,,464,8,16,0,0,0,16,0,0,0,,,,2010-10-19 08:00,2010-10-20 16:00,,2010-08-12 08:00,2010-08-14 16:00,2010-08-12 08:00,2010-08-14 16:00,2010-08-12 08:00,2010-08-14 16:00,,2010-10-19 08:00,2010-10-20 16:00,,PT_Normal,,,,,0fUrI7onD0GGt0qmMjcxsg,pDFhwm+LH0mVTHiqnPOrDw,,,N,0,0,,,2010-08-08 11:54,2010-08-08 11:54,admin,admin,,,
138,88981,784,11544,841,1,0,N,N,N,CP_Drtn,TT_Task,DT_FixedDrtn,RV_OK,TK_NotStart,A11290,electrical conduits for 1st floor slab,,464,8,16,0,0,0,16,0,0,0,,,,2010-11-07 08:00,2010-11-08 16:00,,2010-08-31 08:00,2010-09-01 16:00,2010-08-31 08:00,2010-09-01 16:00,2010-08-31 08:00,2010-09-01 16:00,,2010-11-07 08:00,2010-11-08 16:00,,PT_Normal,,,,,bQLrxjsKVEO45EB4s9xZnw,xHIaLSosYEKgb5Cruwa2Jg,,,N,0,0,,,2010-08-08 11:54,2010-08-08 11:54,admin,admin,,,
139,88982,784,11544,841,1,0,N,N,N,CP_Drtn,TT_Task,DT_FixedDrtn,RV_OK,TK_NotStart,A11300,electrical conduits for roof slab,,464,8,8,0,0,0,8,0,0,0,,,,2010-11-29 08:00,2010-11-29 16:00,,2010-09-18 08:00,2010-09-18 16:00,2010-09-18 08:00,2010-09-18 16:00,2010-09-18 08:00,2010-09-18 16:00,,2010-11-29 08:00,2010-11-29 16:00,,PT_Normal,,,,,wa7Hmh2w8EWrpSdxZCVTfg,srPHi23H/kyt7z4Vw3oQqw,,,N,0,0,,,2010-08-08 11:54,2010-08-08 11:54,admin,admin,,,
140,88983,784,11545,841,1,0,N,N,N,CP_Drtn,TT_Task,DT_FixedDUR2,RV_OK,TK_NotStart,A11310,Internal plastering for ground floor,,520,16,64,0,0,0,64,0,0,0,,,,2010-12-05 08:00,2010-12-13 16:00,,2010-09-15 08:00,2010-09-23 16:00,2010-09-15 08:00,2010-09-23 16:00,2010-09-15 08:00,2010-09-23 16:00,,2010-12-05 08:00,2010-12-13 16:00,,PT_Normal,,,,,C5pyClO110iL1qkhmOvYcw,tbV9EO02WEOjhSyDxsxq0A,,,N,0,0,,,2010-08-08 11:54,2010-08-08 11:54,admin,admin,,,
141,88984,784,11545,841,1,0,N,N,N,CP_Drtn,TT_Task,DT_FixedDUR2,RV_OK,TK_NotStart,A11320,External plastering,,456,0,80,0,0,0,80,0,0,0,,,,2010-12-18 08:00,2010-12-28 16:00,,2010-10-07 08:00,2010-10-18 16:00,2010-10-07 08:00,2010-10-18 16:00,2010-10-07 08:00,2010-10-18 16:00,,2010-12-18 08:00,2010-12-28 16:00,,PT_Normal,,,,,K7bS2zu93UWiY2pXzn3Kng,p8OlSwc/q0qT7E7KAMQ20Q,,,N,0,0,,,2010-08-08 11:54,2010-08-08 11:54,admin,admin,,,
142,88985,784,11544,841,1,0,N,N,N,CP_Drtn,TT_Task,DT_FixedDrtn,RV_OK,TK_NotStart,A11330,plumbing connections under slab on grade,,704,184,16,0,0,0,16,0,0,0,,,,2010-11-23 08:00,2010-11-24 16:00,,2010-08-08 08:00,2010-08-09 16:00,2010-08-08 08:00,2010-08-09 16:00,2010-08-08 08:00,2010-08-09 16:00,,2010-11-23 08:00,2010-11-24 16:00,,PT_Normal,,,,,tWa1DucNekycAZTnwwtilQ,vo9q/kwtoEiUq2K8g56+zQ,,,N,0,0,,,2010-08-08 11:54,2010-08-08 11:54,admin,admin,,,
143,88986,784,11581,841,0,0,N,N,N,CP_Drtn,TT_Mile,DT_FixedDrtn,RV_OK,TK_NotStart,A11340,Start Villa construction,,456,0,0,0,0,0,0,0,0,0,,,,2010-08-26 08:00,2010-08-26 08:00,,2010-06-21 08:00,2010-06-21 08:00,2010-06-21 08:00,2010-06-21 08:00,2010-06-21 08:00,2010-06-21 08:00,,2010-08-26 08:00,2010-08-26 08:00,,PT_Normal,,,,,HswwbgmOH0K2cXMu0Dp5Jg,aQdtKNtOX0S+88JBkZQAqQ,,,N,0,0,,,2010-08-08 11:54,2010-08-08 19:39,admin,admin,,,
144,88987,784,11581,841,0,0,N,N,N,CP_Drtn,TT_FinMile,DT_FixedDrtn,RV_OK,TK_NotStart,A11350,finish Villa construction,,456,456,0,0,0,0,0,0,0,0,,,,2010-12-28 16:00,2010-12-28 16:00,,2010-10-18 16:00,2010-10-18 16:00,2010-10-18 16:00,2010-10-18 16:00,2010-10-18 16:00,2010-10-18 16:00,,2010-12-28 16:00,2010-12-28 16:00,,PT_Normal,,,,,mTYW7Q+Ywkiu7uTqFXzkmQ,JDUHU6xTM0iXUWpi7LQ9og,,,N,0,0,,,2010-08-08 11:54,2010-08-08 11:54,admin,admin,,,
145,88988,784,11581,841,0,0,N,N,N,CP_Drtn,TT_Mile,DT_FixedDrtn,RV_OK,TK_NotStart,A11360,IFC drawings,,456,0,0,0,0,0,0,0,0,0,,,,2010-08-26 08:00,2010-08-26 08:00,,2010-06-21 08:00,2010-06-21 08:00,2010-06-21 08:00,2010-06-21 08:00,2010-06-21 08:00,2010-06-21 08:00,,2010-08-26 08:00,2010-08-26 08:00,,PT_Normal,,,,,tXYKOkUAVUCGiqt1X6h4GA,Xh+8Zgdc2EWGyuPyyD/dxg,,,N,0,0,,,2010-08-08 11:54,2010-08-08 11:54,admin,admin,,,
146,88989,784,11548,841,1,0,N,N,N,CP_Drtn,TT_Task,DT_FixedDUR2,RV_OK,TK_NotStart,A11370,pouring for ground floor's slab,,456,0,8,0,0,0,8,0,0,0,,,,2010-10-24 08:00,2010-10-24 16:00,,2010-08-18 08:00,2010-08-18 16:00,2010-08-18 08:00,2010-08-18 16:00,2010-08-18 08:00,2010-08-18 16:00,,2010-10-24 08:00,2010-10-24 16:00,,PT_Normal,,,,,dkndjAGq8EqMDWIn6u44Bg,VZ9ab0ES0UOu8blbKI9a9A,,,N,0,0,,,2010-08-08 11:54,2010-08-08 11:54,admin,admin,,,
147,88990,784,11548,841,1,0,N,N,N,CP_Drtn,TT_Task,DT_FixedDUR2,RV_OK,TK_NotStart,A11380,pouring for 1st floor's slab,,456,0,8,0,0,0,8,0,0,0,,,,2010-11-11 08:00,2010-11-11 16:00,,2010-09-06 08:00,2010-09-06 16:00,2010-09-06 08:00,2010-09-06 16:00,2010-09-06 08:00,2010-09-06 16:00,,2010-11-11 08:00,2010-11-11 16:00,,PT_Normal,,,,,oOAfHv2O7EmOV50ul52JOA,4C2yP02Jr0uqgH+4KTzg2g,,,N,0,0,,,2010-08-08 11:54,2010-08-08 11:54,admin,admin,,,
148,88991,784,11548,841,1,0,N,N,N,CP_Drtn,TT_Task,DT_FixedDUR2,RV_OK,TK_NotStart,A11390,pouring for roof floor's slab,,456,0,8,0,0,0,8,0,0,0,,,,2010-12-01 08:00,2010-12-01 16:00,,2010-09-21 08:00,2010-09-21 16:00,2010-09-21 08:00,2010-09-21 16:00,2010-09-21 08:00,2010-09-21 16:00,,2010-12-01 08:00,2010-12-01 16:00,,PT_Normal,,,,,gpwNIajMFEaK/nnngCgSMQ,7B+8QaaWF0W/YJ5664jSPw,,,N,0,0,,,2010-08-08 11:54,2010-08-08 11:54,admin,admin,,,
149,88992,784,11548,841,1,0,N,N,N,CP_Drtn,TT_Task,DT_FixedDrtn,RV_OK,TK_NotStart,A11400,Fence work,,472,16,400,0,0,0,400,0,0,0,,,,2010-10-27 08:00,2010-12-28 16:00,,2010-08-19 08:00,2010-10-16 16:00,2010-08-19 08:00,2010-10-16 16:00,2010-08-19 08:00,2010-10-16 16:00,,2010-10-27 08:00,2010-12-28 16:00,,PT_Normal,,,,,Q2pJQFG17EiAVQXJKRLzgg,cr9hPNkd/UuLTIs/HOJknQ,,,N,0,0,,,2010-08-08 11:54,2010-08-08 11:54,admin,admin,,,
150,88993,784,11581,841,1,0,N,N,N,CP_Drtn,TT_Task,DT_FixedDUR2,RV_OK,TK_NotStart,A11410,Fence Drawings IFC,,792,320,8,0,0,0,8,0,0,0,,,,2010-10-14 08:00,2010-10-14 16:00,,2010-06-21 08:00,2010-06-21 16:00,2010-06-21 08:00,2010-06-21 16:00,2010-06-21 08:00,2010-06-21 16:00,,2010-10-14 08:00,2010-10-14 16:00,,PT_Normal,,,,,IbMbgDHzIUePIM4cLLxLLA,8Se0kHkWVUeC+3+mRVzVfA,,,N,0,0,,,2010-08-08 11:54,2010-08-08 19:39,admin,admin,,,
151,88994,784,11583,873,1,0,N,N,N,CP_Drtn,TT_Task,DT_FixedDUR2,RV_OK,TK_NotStart,A11420,backfilling between P.C Foundation,,424,0,16,0,0,0,16,0,0,0,,,,2010-09-15 08:00,2010-09-16 16:00,,2010-07-11 08:00,2010-07-12 16:00,2010-07-11 08:00,2010-07-12 16:00,2010-07-11 08:00,2010-07-12 16:00,,2010-09-15 08:00,2010-09-16 16:00,,PT_Normal,,,,,MxDNf2CkgUCENBXKcYJxJA,hAWqKnrPW0iP+GH0U9U3+g,,,N,0,0,,,2010-08-08 11:54,2010-08-08 11:54,admin,admin,,,
152,88995,784,11548,873,1,0,N,N,N,CP_Drtn,TT_Task,DT_FixedDUR2,RV_OK,TK_NotStart,A11440,Brick works for 1st floor,,536,0,40,0,0,0,40,0,0,0,,,,2010-12-06 08:00,2010-12-11 16:00,,2010-09-19 08:00,2010-09-23 16:00,2010-09-19 08:00,2010-09-23 16:00,2010-09-19 08:00,2010-09-23 16:00,,2010-12-06 08:00,2010-12-11 16:00,,PT_Normal,,,,,6iOo/+rNuEiWMrdzYEE1xw,t1BpC1I1okuZu9/xVTuHtg,,,N,0,0,,,2010-08-08 11:54,2010-08-08 11:54,admin,admin,,,
153,88996,784,11548,873,1,0,N,N,N,CP_Drtn,TT_Task,DT_FixedDUR2,RV_OK,TK_NotStart,A11450,Brick works for roof floor,,488,0,40,0,0,0,40,0,0,0,,,,2010-12-12 08:00,2010-12-16 16:00,,2010-10-02 08:00,2010-10-06 16:00,2010-10-02 08:00,2010-10-06 16:00,2010-10-02 08:00,2010-10-06 16:00,,2010-12-12 08:00,2010-12-16 16:00,,PT_Normal,,,,,gEESISRG8UuAxn1vFGnBLw,1+VdaCGsYEmTsgdWbbtGSg,,,N,0,0,,,2010-08-08 11:54,2010-08-08 11:54,admin,admin,,,
154,88997,784,11545,873,1,0,N,N,N,CP_Drtn,TT_Task,DT_FixedDUR2,RV_OK,TK_NotStart,A11460,Internal plastering for 1st floor,,536,24,64,0,0,0,64,0,0,0,,,,2010-12-14 08:00,2010-12-22 16:00,,2010-09-27 08:00,2010-10-05 16:00,2010-09-27 08:00,2010-10-05 16:00,2010-09-27 08:00,2010-10-05 16:00,,2010-12-14 08:00,2010-12-22 16:00,,PT_Normal,,,,,0pjp4TiT80iOPGsJzvEgsg,7X5gWEArgkKNM8MyCjyNew,,,N,0,0,,,2010-08-08 11:54,2010-08-08 11:54,admin,admin,,,
155,88998,784,11545,873,1,0,N,N,N,CP_Drtn,TT_Task,DT_FixedDUR2,RV_OK,TK_NotStart,A11470,Internal plastering for roof floor,,512,24,40,0,0,0,40,0,0,0,,,,2010-12-23 08:00,2010-12-28 16:00,,2010-10-10 08:00,2010-10-14 16:00,2010-10-10 08:00,2010-10-14 16:00,2010-10-10 08:00,2010-10-14 16:00,,2010-12-23 08:00,2010-12-28 16:00,,PT_Normal,,,,,GP316FrKdk6NkgyHOIRsPA,NZsUs7frCk+Gceqj1oQBRA,,,N,0,0,,,2010-08-08 11:54,2010-08-08 11:54,admin,admin,,,
156,88999,784,11544,873,1,0,N,N,N,CP_Drtn,TT_Task,DT_FixedDUR2,RV_OK,TK_NotStart,A11480,electrical conduits for ground floor walls,,552,0,16,0,0,0,16,0,0,0,,,,2010-12-02 08:00,2010-12-04 16:00,,2010-09-13 08:00,2010-09-14 16:00,2010-09-13 08:00,2010-09-14 16:00,2010-09-13 08:00,2010-09-14 16:00,,2010-12-02 08:00,2010-12-04 16:00,,PT_Normal,,,,,Y71letlJa0i8HiOncYXUwg,7XeBdcmCik2oiAw+6rkjUQ,,,N,0,0,,,2010-08-08 11:54,2010-08-08 11:54,admin,admin,,,
157,89000,784,11544,873,1,0,N,N,N,CP_Drtn,TT_Task,DT_FixedDUR2,RV_OK,TK_NotStart,A11490,electrical conduits for 1st floor walls,,536,0,16,0,0,0,16,0,0,0,,,,2010-12-12 08:00,2010-12-13 16:00,,2010-09-25 08:00,2010-09-26 16:00,2010-09-25 08:00,2010-09-26 16:00,2010-09-25 08:00,2010-09-26 16:00,,2010-12-12 08:00,2010-12-13 16:00,,PT_Normal,,,,,yYK9ZC1ky0ub7Svpi+ygag,esf8YibRkE+movPeN0+Yvg,,,N,0,0,,,2010-08-08 11:54,2010-08-08 11:54,admin,admin,,,
158,89001,784,11544,873,1,0,N,N,N,CP_Drtn,TT_Task,DT_FixedDUR2,RV_OK,TK_NotStart,A11500,electrical conduits for roof floor walls,,512,0,16,0,0,0,16,0,0,0,,,,2010-12-21 08:00,2010-12-22 16:00,,2010-10-07 08:00,2010-10-09 16:00,2010-10-07 08:00,2010-10-09 16:00,2010-10-07 08:00,2010-10-09 16:00,,2010-12-21 08:00,2010-12-22 16:00,,PT_Normal,,,,,DKqqAGGie0WbWJQbLkguvg,inJWK8qFzkWqNJZTTUr8tQ,,,N,0,0,,,2010-08-08 11:54,2010-08-08 11:54,admin,admin,,,
159,89002,784,11589,841,1,0,N,N,N,CP_Drtn,TT_Task,DT_FixedDUR2,RV_OK,TK_NotStart,A11510,excavation,,352,0,0,0,0,0,0,0,0,0,,,,2010-08-18 16:00,2010-08-18 16:00,,2010-06-29 08:00,2010-06-29 08:00,2010-06-29 08:00,2010-06-29 08:00,2010-06-29 08:00,2010-06-29 08:00,,2010-08-18 16:00,2010-08-18 16:00,,PT_Normal,,,,,EpnRPQp+X06QgBlLMjQ69Q,297eDYemqkSUFPtCon8JMw,,,N,0,0,,,2010-08-08 11:54,2010-08-08 11:54,admin,admin,,,
160,89003,784,11589,841,1,0,N,N,N,CP_Drtn,TT_Task,DT_FixedDUR2,RV_OK,TK_NotStart,A11520,soil replacement,,352,0,96,0,0,0,96,0,0,0,,,,2010-08-19 08:00,2010-09-01 16:00,,2010-06-29 08:00,2010-07-12 16:00,2010-06-29 08:00,2010-07-12 16:00,2010-06-29 08:00,2010-07-12 16:00,,2010-08-19 08:00,2010-09-01 16:00,,PT_Normal,,,,,Fb0HV5RyFUiB753ASxT5iw,YWMslkVVVEuszIM/HQP3VQ,,,N,0,0,,,2010-08-08 11:54,2010-08-08 11:54,admin,admin,,,
161,89004,784,11590,841,1,0,N,N,N,CP_Drtn,TT_Task,DT_FixedDUR2,RV_OK,TK_NotStart,A11530,Plain Concrete Foundation,,352,0,16,0,0,0,16,0,0,0,,,,2010-09-02 08:00,2010-09-04 16:00,,2010-07-13 08:00,2010-07-14 16:00,2010-07-13 08:00,2010-07-14 16:00,2010-07-13 08:00,2010-07-14 16:00,,2010-09-02 08:00,2010-09-04 16:00,,PT_Normal,,,,,l/Sy1cyg8kyuIBTuvuUZqg,0S8e02Y+aEafZg6vTCwNnA,,,N,0,0,,,2010-08-08 11:54,2010-08-08 11:54,admin,admin,,,
162,89005,784,11590,841,1,0,N,N,N,CP_Drtn,TT_Task,DT_FixedDUR2,RV_OK,TK_NotStart,A11540,Reinforced Concrete Foundation,,376,0,104,0,0,0,104,0,0,0,,,,2010-09-12 08:00,2010-09-26 16:00,,2010-07-19 08:00,2010-08-02 16:00,2010-07-19 08:00,2010-08-02 16:00,2010-07-19 08:00,2010-08-02 16:00,,2010-09-12 08:00,2010-09-26 16:00,,PT_Normal,,,,,PoC+MdN+IEWy1/bNF8p55w,bt65tRy9lUmS8CcH/sUuaw,,,N,0,0,,,2010-08-08 11:54,2010-08-08 11:54,admin,admin,,,
163,89006,784,11590,841,1,0,N,N,N,CP_Drtn,TT_Task,DT_FixedDUR2,RV_OK,TK_NotStart,A11550,under ground  brick works,,376,0,16,0,0,0,16,0,0,0,,,,2010-10-04 08:00,2010-10-05 16:00,,2010-08-10 08:00,2010-08-11 16:00,2010-08-10 08:00,2010-08-11 16:00,2010-08-10 08:00,2010-08-11 16:00,,2010-10-04 08:00,2010-10-05 16:00,,PT_Normal,,,,,iaFfD76QiUqW3QKBpY298Q,whLHlPIV0km4Dg1UGr/Jbw,,,N,0,0,,,2010-08-08 11:54,2010-08-08 11:54,admin,admin,,,
164,89007,784,11590,841,1,0,N,N,N,CP_Drtn,TT_Task,DT_FixedDUR2,RV_OK,TK_NotStart,A11560,under ground insulation for RC & Brick work,,376,0,16,0,0,0,16,0,0,0,,,,2010-10-06 08:00,2010-10-07 16:00,,2010-08-12 08:00,2010-08-14 16:00,2010-08-12 08:00,2010-08-14 16:00,2010-08-12 08:00,2010-08-14 16:00,,2010-10-06 08:00,2010-10-07 16:00,,PT_Normal,,,,,aq1B34oyyEGcmRkNGUadYQ,FsXPG3rPpU6Y/oNMUWKt6Q,,,N,0,0,,,2010-08-08 11:54,2010-08-08 11:54,admin,admin,,,
165,89008,784,11590,841,1,0,N,N,N,CP_Drtn,TT_Task,DT_FixedDUR2,RV_OK,TK_NotStart,A11570,backfilling for under ground,,376,0,32,0,0,0,32,0,0,0,,,,2010-10-09 08:00,2010-10-12 16:00,,2010-08-15 08:00,2010-08-18 16:00,2010-08-15 08:00,2010-08-18 16:00,2010-08-15 08:00,2010-08-18 16:00,,2010-10-09 08:00,2010-10-12 16:00,,PT_Normal,,,,,WFo4AbixfUuLnz2Y2IR79Q,hstk5qXh0UuGlAGFG2oXcA,,,N,0,0,,,2010-08-08 11:54,2010-08-08 11:54,admin,admin,,,
166,89009,784,11590,841,1,0,N,N,N,CP_Drtn,TT_Task,DT_FixedDUR2,RV_OK,TK_NotStart,A11580,P.C slab on grade 10CM,,440,0,8,0,0,0,8,0,0,0,,,,2010-11-25 08:00,2010-11-25 16:00,,2010-09-18 08:00,2010-09-18 16:00,2010-09-18 08:00,2010-09-18 16:00,2010-09-18 08:00,2010-09-18 16:00,,2010-11-25 08:00,2010-11-25 16:00,,PT_Normal,,,,,XmAqNqsMRkK+dtXfquw1Cg,j+N/cSckvEm3BLKxwrRbEw,,,N,0,0,,,2010-08-08 11:54,2010-08-08 11:54,admin,admin,,,
167,89010,784,11590,841,1,0,N,N,N,CP_Drtn,TT_Task,DT_FixedDUR2,RV_OK,TK_NotStart,A11590,moisture insulation with membrane sheets,,440,0,16,0,0,0,16,0,0,0,,,,2010-11-27 08:00,2010-11-28 16:00,,2010-09-19 08:00,2010-09-20 16:00,2010-09-19 08:00,2010-09-20 16:00,2010-09-19 08:00,2010-09-20 16:00,,2010-11-27 08:00,2010-11-28 16:00,,PT_Normal,,,,,DYRyvakXYUGNqbYIEX+Jrw,/gnNqtbKUEWYTf8xhaO2Pw,,,N,0,0,,,2010-08-08 11:54,2010-08-08 11:54,admin,admin,,,
168,89011,784,11590,841,1,0,N,N,N,CP_Drtn,TT_Task,DT_FixedDUR2,RV_OK,TK_NotStart,A11600,R.C slab on grade,,440,0,16,0,0,0,16,0,0,0,,,,2010-11-29 08:00,2010-11-30 16:00,,2010-09-21 08:00,2010-09-22 16:00,2010-09-21 08:00,2010-09-22 16:00,2010-09-21 08:00,2010-09-22 16:00,,2010-11-29 08:00,2010-11-30 16:00,,PT_Normal,,,,,MOmp0VWB40WqjvQnyw2IMQ,Aj50L02maUuvpjl7VNRnLQ,,,N,0,0,,,2010-08-08 11:54,2010-08-08 11:54,admin,admin,,,
169,89012,784,11550,841,1,0,N,N,N,CP_Drtn,TT_Task,DT_FixedDUR2,RV_OK,TK_NotStart,A11610,columns for ground floor,,376,0,48,0,0,0,48,0,0,0,,,,2010-09-27 08:00,2010-10-03 16:00,,2010-08-03 08:00,2010-08-09 16:00,2010-08-03 08:00,2010-08-09 16:00,2010-08-03 08:00,2010-08-09 16:00,,2010-09-27 08:00,2010-10-03 16:00,,PT_Normal,,,,,VpdLd1KPXkqV0Bcj48hNtg,tRut1XpHnkm8jNi+g48BCA,,,N,0,0,,,2010-08-08 11:54,2010-08-08 11:54,admin,admin,,,
170,89013,784,11550,841,1,0,N,N,N,CP_Drtn,TT_Task,DT_FixedDUR2,RV_OK,TK_NotStart,A11620,slab for ground floor,,376,0,72,0,0,0,72,0,0,0,,,,2010-10-13 08:00,2010-10-23 16:00,,2010-08-19 08:00,2010-08-29 16:00,2010-08-19 08:00,2010-08-29 16:00,2010-08-19 08:00,2010-08-29 16:00,,2010-10-13 08:00,2010-10-23 16:00,,PT_Normal,,,,,HdjBWP3At02QqG9qtPu3zA,qD2MbKanS0yJWIb0dqOSCA,,,N,0,0,,,2010-08-08 11:54,2010-08-08 11:54,admin,admin,,,
171,89014,784,11550,841,1,0,N,N,N,CP_Drtn,TT_Task,DT_FixedDUR2,RV_OK,TK_NotStart,A11630,columns for 1st floor,,376,0,48,0,0,0,48,0,0,0,,,,2010-10-25 08:00,2010-10-31 16:00,,2010-08-31 08:00,2010-09-06 16:00,2010-08-31 08:00,2010-09-06 16:00,2010-08-31 08:00,2010-09-06 16:00,,2010-10-25 08:00,2010-10-31 16:00,,PT_Normal,,,,,P8uahg6/qEmeAl1muQR+OQ,jeyrWKiRtEmZDmIh1fy6rg,,,N,0,0,,,2010-08-08 11:54,2010-08-08 11:54,admin,admin,,,
172,89015,784,11550,841,1,0,N,N,N,CP_Drtn,TT_Task,DT_FixedDUR2,RV_OK,TK_NotStart,A11640,slab for 1st floor,,376,0,72,0,0,0,72,0,0,0,,,,2010-11-01 08:00,2010-11-10 16:00,,2010-09-07 08:00,2010-09-16 16:00,2010-09-07 08:00,2010-09-16 16:00,2010-09-07 08:00,2010-09-16 16:00,,2010-11-01 08:00,2010-11-10 16:00,,PT_Normal,,,,,l8P6rtwnNEGkzecDACQGNw,lgr7vmg+UEWVcQWtqXXLww,,,N,0,0,,,2010-08-08 11:54,2010-08-08 11:54,admin,admin,,,
173,89016,784,11550,841,1,0,N,N,N,CP_Drtn,TT_Task,DT_FixedDUR2,RV_OK,TK_NotStart,A11650,columns for roof floor,,376,0,32,0,0,0,32,0,0,0,,,,2010-11-20 08:00,2010-11-23 16:00,,2010-09-21 08:00,2010-09-25 16:00,2010-09-21 08:00,2010-09-25 16:00,2010-09-21 08:00,2010-09-25 16:00,,2010-11-20 08:00,2010-11-23 16:00,,PT_Normal,,,,,nboz+qynL0WqqvocxF+wiQ,IZkzKIhxiEOQKIJ3wSYVkA,,,N,0,0,,,2010-08-08 11:54,2010-08-08 11:54,admin,admin,,,
174,89017,784,11550,841,1,0,N,N,N,CP_Drtn,TT_Task,DT_FixedDUR2,RV_OK,TK_NotStart,A11660,slab for roof floor,,376,0,48,0,0,0,48,0,0,0,,,,2010-11-24 08:00,2010-11-30 16:00,,2010-09-26 08:00,2010-10-02 16:00,2010-09-26 08:00,2010-10-02 16:00,2010-09-26 08:00,2010-10-02 16:00,,2010-11-24 08:00,2010-11-30 16:00,,PT_Normal,,,,,VKFvc32sukiPLU69N8XmFg,gi6cI0FAK0aaFVb7i0uLpw,,,N,0,0,,,2010-08-08 11:54,2010-08-08 11:54,admin,admin,,,
175,89018,784,11550,841,1,0,N,N,N,CP_Drtn,TT_Task,DT_FixedDUR2,RV_OK,TK_NotStart,A11670,Brick works for ground floor,,440,0,40,0,0,0,40,0,0,0,,,,2010-11-20 08:00,2010-11-24 16:00,,2010-09-12 08:00,2010-09-16 16:00,2010-09-12 08:00,2010-09-16 16:00,2010-09-12 08:00,2010-09-16 16:00,,2010-11-20 08:00,2010-11-24 16:00,,PT_Normal,,,,,Jf3XT2FOJk63qQqDYlxsTQ,pzE18glC0UC7nv2hTF4Yhw,,,N,0,0,,,2010-08-08 11:54,2010-08-08 11:54,admin,admin,,,
176,89019,784,11556,841,1,0,N,N,N,CP_Drtn,TT_Task,DT_FixedDrtn,RV_OK,TK_NotStart,A11680,electrical conduits for ground floor's slab,,384,8,16,0,0,0,16,0,0,0,,,,2010-10-19 08:00,2010-10-20 16:00,,2010-08-24 08:00,2010-08-25 16:00,2010-08-24 08:00,2010-08-25 16:00,2010-08-24 08:00,2010-08-25 16:00,,2010-10-19 08:00,2010-10-20 16:00,,PT_Normal,,,,,T8C7+kQ0FkmexdLVsP6kgw,aaSMphoBjEaRIn2uF4ZuYQ,,,N,0,0,,,2010-08-08 11:54,2010-08-08 11:54,admin,admin,,,
177,89020,784,11556,841,1,0,N,N,N,CP_Drtn,TT_Task,DT_FixedDrtn,RV_OK,TK_NotStart,A11690,electrical conduits for 1st floor slab,,384,8,16,0,0,0,16,0,0,0,,,,2010-11-07 08:00,2010-11-08 16:00,,2010-09-12 08:00,2010-09-13 16:00,2010-09-12 08:00,2010-09-13 16:00,2010-09-12 08:00,2010-09-13 16:00,,2010-11-07 08:00,2010-11-08 16:00,,PT_Normal,,,,,I+ti9k7wtE+C6RcLv2ZHZw,BN0guBs3AEuT0chM2zqoAQ,,,N,0,0,,,2010-08-08 11:54,2010-08-08 11:54,admin,admin,,,
178,89021,784,11556,841,1,0,N,N,N,CP_Drtn,TT_Task,DT_FixedDrtn,RV_OK,TK_NotStart,A11700,electrical conduits for roof slab,,384,8,8,0,0,0,8,0,0,0,,,,2010-11-29 08:00,2010-11-29 16:00,,2010-09-29 08:00,2010-09-29 16:00,2010-09-29 08:00,2010-09-29 16:00,2010-09-29 08:00,2010-09-29 16:00,,2010-11-29 08:00,2010-11-29 16:00,,PT_Normal,,,,,dJyEHCVv+k+kMJm2G/NjPQ,5KSaF2DreEiZdh3smHFZ5w,,,N,0,0,,,2010-08-08 11:54,2010-08-08 11:54,admin,admin,,,
179,89022,784,11552,841,1,0,N,N,N,CP_Drtn,TT_Task,DT_FixedDUR2,RV_OK,TK_NotStart,A11710,Internal plastering for ground floor,,440,16,64,0,0,0,64,0,0,0,,,,2010-12-05 08:00,2010-12-13 16:00,,2010-09-27 08:00,2010-10-05 16:00,2010-09-27 08:00,2010-10-05 16:00,2010-09-27 08:00,2010-10-05 16:00,,2010-12-05 08:00,2010-12-13 16:00,,PT_Normal,,,,,PwklnMfuWkGXH0X2xJI8cg,zVTPrTjUJU6X3IjFZnYe5w,,,N,0,0,,,2010-08-08 11:54,2010-08-08 11:54,admin,admin,,,
180,89023,784,11552,841,1,0,N,N,N,CP_Drtn,TT_Task,DT_FixedDUR2,RV_OK,TK_NotStart,A11720,External plastering,,376,0,80,0,0,0,80,0,0,0,,,,2010-12-18 08:00,2010-12-28 16:00,,2010-10-19 08:00,2010-10-30 16:00,2010-10-19 08:00,2010-10-30 16:00,2010-10-19 08:00,2010-10-30 16:00,,2010-12-18 08:00,2010-12-28 16:00,,PT_Normal,,,,,q7Kir0VmSkyIQnKZ52DwMg,IzBMDf1480e1DUVsMtlqJw,,,N,0,0,,,2010-08-08 11:54,2010-08-08 11:54,admin,admin,,,
181,89024,784,11556,841,1,0,N,N,N,CP_Drtn,TT_Task,DT_FixedDrtn,RV_OK,TK_NotStart,A11730,plumbing connections under slab on grade,,624,184,16,0,0,0,16,0,0,0,,,,2010-11-23 08:00,2010-11-24 16:00,,2010-08-19 08:00,2010-08-21 16:00,2010-08-19 08:00,2010-08-21 16:00,2010-08-19 08:00,2010-08-21 16:00,,2010-11-23 08:00,2010-11-24 16:00,,PT_Normal,,,,,jd3N52huF0WhqYCKTFEYcw,Q1WuR5VSsU66rlwdKDG+Sw,,,N,0,0,,,2010-08-08 11:54,2010-08-08 11:54,admin,admin,,,
182,89025,784,11588,841,0,0,N,N,N,CP_Drtn,TT_Mile,DT_FixedDrtn,RV_OK,TK_NotStart,A11740,Start Villa construction,,352,0,0,0,0,0,0,0,0,0,,,,2010-08-17 08:00,2010-08-17 08:00,,2010-06-27 08:00,2010-06-27 08:00,2010-06-27 08:00,2010-06-27 08:00,2010-06-27 08:00,2010-06-27 08:00,,2010-08-17 08:00,2010-08-17 08:00,,PT_Normal,,,,,DLBub9EF90aMFt/sLp/1Sg,Qkc3WYTcP0ipHTdzaTOA/g,,,N,0,0,,,2010-08-08 11:54,2010-08-08 11:54,admin,admin,,,
183,89026,784,11588,841,0,0,N,N,N,CP_Drtn,TT_FinMile,DT_FixedDrtn,RV_OK,TK_NotStart,A11750,finish Villa construction,,376,376,0,0,0,0,0,0,0,0,,,,2010-12-28 16:00,2010-12-28 16:00,,2010-10-30 16:00,2010-10-30 16:00,2010-10-30 16:00,2010-10-30 16:00,2010-10-30 16:00,2010-10-30 16:00,,2010-12-28 16:00,2010-12-28 16:00,,PT_Normal,,,,,Mfz0GQcUkEuPSSjazhQ9cg,WifAFoBfR0STJnega25blQ,,,N,0,0,,,2010-08-08 11:54,2010-08-08 11:54,admin,admin,,,
184,89027,784,11588,841,0,0,N,N,N,CP_Drtn,TT_Mile,DT_FixedDrtn,RV_OK,TK_NotStart,A11760,IFC drawings,,352,0,0,0,0,0,0,0,0,0,,,,2010-08-11 08:00,2010-08-11 08:00,,2010-06-21 08:00,2010-06-21 08:00,2010-06-21 08:00,2010-06-21 08:00,2010-06-21 08:00,2010-06-21 08:00,,2010-08-11 08:00,2010-08-11 08:00,,PT_Normal,,,,,EL+VZO0yZU6i8EJCoE6sdw,oj8qMatmlkmOtpuPC4KoZQ,,,N,0,0,,,2010-08-08 11:54,2010-08-08 11:54,admin,admin,,,
185,89028,784,11550,841,1,0,N,N,N,CP_Drtn,TT_Task,DT_FixedDUR2,RV_OK,TK_NotStart,A11770,pouring for ground floor's slab,,376,0,8,0,0,0,8,0,0,0,,,,2010-10-24 08:00,2010-10-24 16:00,,2010-08-30 08:00,2010-08-30 16:00,2010-08-30 08:00,2010-08-30 16:00,2010-08-30 08:00,2010-08-30 16:00,,2010-10-24 08:00,2010-10-24 16:00,,PT_Normal,,,,,coBaNY1/XUCKAEuSkVYWNw,noHYLFM0+0mGUHh/tNv2oQ,,,N,0,0,,,2010-08-08 11:54,2010-08-08 11:54,admin,admin,,,
186,89029,784,11550,841,1,0,N,N,N,CP_Drtn,TT_Task,DT_FixedDUR2,RV_OK,TK_NotStart,A11780,pouring for 1st floor's slab,,376,0,8,0,0,0,8,0,0,0,,,,2010-11-11 08:00,2010-11-11 16:00,,2010-09-18 08:00,2010-09-18 16:00,2010-09-18 08:00,2010-09-18 16:00,2010-09-18 08:00,2010-09-18 16:00,,2010-11-11 08:00,2010-11-11 16:00,,PT_Normal,,,,,rtEABDcCSkKlruqvxJJjlw,lK5YedPIAkGELVxDtydGJQ,,,N,0,0,,,2010-08-08 11:54,2010-08-08 11:54,admin,admin,,,
187,89030,784,11550,841,1,0,N,N,N,CP_Drtn,TT_Task,DT_FixedDUR2,RV_OK,TK_NotStart,A11790,pouring for roof floor's slab,,376,0,8,0,0,0,8,0,0,0,,,,2010-12-01 08:00,2010-12-01 16:00,,2010-10-03 08:00,2010-10-03 16:00,2010-10-03 08:00,2010-10-03 16:00,2010-10-03 08:00,2010-10-03 16:00,,2010-12-01 08:00,2010-12-01 16:00,,PT_Normal,,,,,rxHOqvvmR0CbQ8gW+rpGlw,Y+xbv+F6UUePh1CwpktBXA,,,N,0,0,,,2010-08-08 11:54,2010-08-08 11:54,admin,admin,,,
188,89031,784,11550,841,1,0,N,N,N,CP_Drtn,TT_Task,DT_FixedDrtn,RV_OK,TK_NotStart,A11800,Fence work,,392,16,400,0,0,0,400,0,0,0,,,,2010-10-27 08:00,2010-12-28 16:00,,2010-08-31 08:00,2010-10-27 16:00,2010-08-31 08:00,2010-10-27 16:00,2010-08-31 08:00,2010-10-27 16:00,,2010-10-27 08:00,2010-12-28 16:00,,PT_Normal,,,,,0SMit6/OCESgjxx3XB4ykw,KOBjEGoydka6U3TWgUw1cg,,,N,0,0,,,2010-08-08 11:54,2010-08-08 11:54,admin,admin,,,
189,89032,784,11588,841,1,0,N,N,N,CP_Drtn,TT_Task,DT_FixedDUR2,RV_OK,TK_NotStart,A11810,Fence Drawings IFC,,752,360,8,0,0,0,8,0,0,0,,,,2010-10-14 08:00,2010-10-14 16:00,,2010-06-27 08:00,2010-06-27 16:00,2010-06-27 08:00,2010-06-27 16:00,2010-06-27 08:00,2010-06-27 16:00,,2010-10-14 08:00,2010-10-14 16:00,,PT_Normal,,,,,jkNe2T+nQEWsYlLbPDCE7g,yCIdHJ+JoUed1TWes3lkOQ,,,N,0,0,,,2010-08-08 11:54,2010-08-08 11:54,admin,admin,,,
190,89033,784,11590,873,1,0,N,N,N,CP_Drtn,TT_Task,DT_FixedDUR2,RV_OK,TK_NotStart,A11820,backfilling between P.C Foundation,,352,0,16,0,0,0,16,0,0,0,,,,2010-09-06 08:00,2010-09-07 16:00,,2010-07-17 08:00,2010-07-18 16:00,2010-07-17 08:00,2010-07-18 16:00,2010-07-17 08:00,2010-07-18 16:00,,2010-09-06 08:00,2010-09-07 16:00,,PT_Normal,,,,,oi2PP5DmSUCowAnTc+V/MA,EHPpQiO0uEOmjnm8+DRJQg,,,N,0,0,,,2010-08-08 11:54,2010-08-08 11:54,admin,admin,,,
191,89034,784,11550,873,1,0,N,N,N,CP_Drtn,TT_Task,DT_FixedDUR2,RV_OK,TK_NotStart,A11840,Brick works for 1st floor,,456,0,40,0,0,0,40,0,0,0,,,,2010-12-06 08:00,2010-12-11 16:00,,2010-09-30 08:00,2010-10-05 16:00,2010-09-30 08:00,2010-10-05 16:00,2010-09-30 08:00,2010-10-05 16:00,,2010-12-06 08:00,2010-12-11 16:00,,PT_Normal,,,,,ySloAd0xeku7HLZ6NTHDVQ,s7luMZMyBEmRlQF6T8zGFQ,,,N,0,0,,,2010-08-08 11:54,2010-08-08 11:54,admin,admin,,,
192,89035,784,11550,873,1,0,N,N,N,CP_Drtn,TT_Task,DT_FixedDUR2,RV_OK,TK_NotStart,A11850,Brick works for roof floor,,408,0,40,0,0,0,40,0,0,0,,,,2010-12-12 08:00,2010-12-16 16:00,,2010-10-13 08:00,2010-10-18 16:00,2010-10-13 08:00,2010-10-18 16:00,2010-10-13 08:00,2010-10-18 16:00,,2010-12-12 08:00,2010-12-16 16:00,,PT_Normal,,,,,QKDdj3wbf0GeWmttzuB/vg,v6wkfpWm/Umwqp+2hsJbgA,,,N,0,0,,,2010-08-08 11:54,2010-08-08 11:54,admin,admin,,,
193,89036,784,11552,873,1,0,N,N,N,CP_Drtn,TT_Task,DT_FixedDUR2,RV_OK,TK_NotStart,A11860,Internal plastering for 1st floor,,456,24,64,0,0,0,64,0,0,0,,,,2010-12-14 08:00,2010-12-22 16:00,,2010-10-09 08:00,2010-10-17 16:00,2010-10-09 08:00,2010-10-17 16:00,2010-10-09 08:00,2010-10-17 16:00,,2010-12-14 08:00,2010-12-22 16:00,,PT_Normal,,,,,R8mUDnOByE6vapSg7Y/rOw,WBXOffytMU6UqFiYblrVng,,,N,0,0,,,2010-08-08 11:54,2010-08-08 11:54,admin,admin,,,
194,89037,784,11552,873,1,0,N,N,N,CP_Drtn,TT_Task,DT_FixedDUR2,RV_OK,TK_NotStart,A11870,Internal plastering for roof floor,,432,24,40,0,0,0,40,0,0,0,,,,2010-12-23 08:00,2010-12-28 16:00,,2010-10-21 08:00,2010-10-26 16:00,2010-10-21 08:00,2010-10-26 16:00,2010-10-21 08:00,2010-10-26 16:00,,2010-12-23 08:00,2010-12-28 16:00,,PT_Normal,,,,,SbXi3AMgvUKMA8cAwwXpQw,T8+sFb8bOk6zawF3eVuf2w,,,N,0,0,,,2010-08-08 11:54,2010-08-08 11:54,admin,admin,,,
195,89038,784,11556,873,1,0,N,N,N,CP_Drtn,TT_Task,DT_FixedDUR2,RV_OK,TK_NotStart,A11880,electrical conduits for ground floor walls,,472,0,16,0,0,0,16,0,0,0,,,,2010-12-02 08:00,2010-12-04 16:00,,2010-09-25 08:00,2010-09-26 16:00,2010-09-25 08:00,2010-09-26 16:00,2010-09-25 08:00,2010-09-26 16:00,,2010-12-02 08:00,2010-12-04 16:00,,PT_Normal,,,,,C3T0WdvIQUWejcN05c5vRg,Vl6IeymF7UizmAexZY3AMw,,,N,0,0,,,2010-08-08 11:54,2010-08-08 11:54,admin,admin,,,
196,89039,784,11556,873,1,0,N,N,N,CP_Drtn,TT_Task,DT_FixedDUR2,RV_OK,TK_NotStart,A11890,electrical conduits for 1st floor walls,,456,0,16,0,0,0,16,0,0,0,,,,2010-12-12 08:00,2010-12-13 16:00,,2010-10-06 08:00,2010-10-07 16:00,2010-10-06 08:00,2010-10-07 16:00,2010-10-06 08:00,2010-10-07 16:00,,2010-12-12 08:00,2010-12-13 16:00,,PT_Normal,,,,,esyoYcgYtEiwJhVZC++QCw,9OVTf0PgIUeYvje9JoHVew,,,N,0,0,,,2010-08-08 11:54,2010-08-08 11:54,admin,admin,,,
197,89040,784,11556,873,1,0,N,N,N,CP_Drtn,TT_Task,DT_FixedDUR2,RV_OK,TK_NotStart,A11900,electrical conduits for roof floor walls,,432,0,16,0,0,0,16,0,0,0,,,,2010-12-21 08:00,2010-12-22 16:00,,2010-10-19 08:00,2010-10-20 16:00,2010-10-19 08:00,2010-10-20 16:00,2010-10-19 08:00,2010-10-20 16:00,,2010-12-21 08:00,2010-12-22 16:00,,PT_Normal,,,,,tdDxX86sdkm+cB/FgjbwJA,c9uLFWurY0OSF8HJjBbfyQ,,,N,0,0,,,2010-08-08 11:54,2010-08-08 11:54,admin,admin,,,
198,89041,784,11596,841,1,0,N,N,N,CP_Drtn,TT_Task,DT_FixedDUR2,RV_OK,TK_NotStart,A11910,excavation,,328,0,0,0,0,0,0,0,0,0,,,,2010-08-12 16:00,2010-08-12 16:00,,2010-06-27 08:00,2010-06-27 08:00,2010-06-27 08:00,2010-06-27 08:00,2010-06-27 08:00,2010-06-27 08:00,,2010-08-12 16:00,2010-08-12 16:00,,PT_Normal,,,,,daxWzhfCp0uFDalen9erkA,ln4w7Nw8TE2mApqf6eWS1g,,,N,0,0,,,2010-08-08 11:54,2010-08-08 11:54,admin,admin,,,
199,89042,784,11596,841,1,0,N,N,N,CP_Drtn,TT_Task,DT_FixedDUR2,RV_OK,TK_NotStart,A11920,soil replacement,,328,0,96,0,0,0,96,0,0,0,,,,2010-08-15 08:00,2010-08-28 16:00,,2010-06-28 08:00,2010-07-11 16:00,2010-06-28 08:00,2010-07-11 16:00,2010-06-28 08:00,2010-07-11 16:00,,2010-08-15 08:00,2010-08-28 16:00,,PT_Normal,,,,,59p+iRg6oU6EOvGcZnGxEQ,mYRJ5CetSUKPVLtIRsJepw,,,N,0,0,,,2010-08-08 11:54,2010-08-08 11:54,admin,admin,,,
200,89043,784,11597,841,1,0,N,N,N,CP_Drtn,TT_Task,DT_FixedDUR2,RV_OK,TK_NotStart,A11930,Plain Concrete Foundation,,328,0,16,0,0,0,16,0,0,0,,,,2010-09-02 08:00,2010-09-04 16:00,,2010-07-17 08:00,2010-07-18 16:00,2010-07-17 08:00,2010-07-18 16:00,2010-07-17 08:00,2010-07-18 16:00,,2010-09-02 08:00,2010-09-04 16:00,,PT_Normal,,,,,XDsjtmCrAUq3WiJiVlTJug,rrs/5LnXj0W2nDkYhxhLbg,,,N,0,0,,,2010-08-08 11:54,2010-08-08 11:54,admin,admin,,,
201,89044,784,11597,841,1,0,N,N,N,CP_Drtn,TT_Task,DT_FixedDUR2,RV_OK,TK_NotStart,A11940,Reinforced Concrete Foundation,,352,0,104,0,0,0,104,0,0,0,,,,2010-09-12 08:00,2010-09-26 16:00,,2010-07-22 08:00,2010-08-05 16:00,2010-07-22 08:00,2010-08-05 16:00,2010-07-22 08:00,2010-08-05 16:00,,2010-09-12 08:00,2010-09-26 16:00,,PT_Normal,,,,,6QjVP4pVVEaBYiBOWoPTNQ,Q7qgn6R9Jk+Srr0PLRYfSQ,,,N,0,0,,,2010-08-08 11:54,2010-08-08 11:54,admin,admin,,,
202,89045,784,11597,841,1,0,N,N,N,CP_Drtn,TT_Task,DT_FixedDUR2,RV_OK,TK_NotStart,A11950,under ground  brick works,,352,0,16,0,0,0,16,0,0,0,,,,2010-10-04 08:00,2010-10-05 16:00,,2010-08-14 08:00,2010-08-15 16:00,2010-08-14 08:00,2010-08-15 16:00,2010-08-14 08:00,2010-08-15 16:00,,2010-10-04 08:00,2010-10-05 16:00,,PT_Normal,,,,,qFr6948BIkWM9aDier+8sw,6dKuxjgrgEG+FgmSI91z9g,,,N,0,0,,,2010-08-08 11:54,2010-08-08 11:54,admin,admin,,,
203,89046,784,11597,841,1,0,N,N,N,CP_Drtn,TT_Task,DT_FixedDUR2,RV_OK,TK_NotStart,A11960,under ground insulation for RC & Brick work,,352,0,16,0,0,0,16,0,0,0,,,,2010-10-06 08:00,2010-10-07 16:00,,2010-08-16 08:00,2010-08-17 16:00,2010-08-16 08:00,2010-08-17 16:00,2010-08-16 08:00,2010-08-17 16:00,,2010-10-06 08:00,2010-10-07 16:00,,PT_Normal,,,,,Q6nNdjNB6UiGeF5cly8aJA,Na+lJ4jdAUeLzSWKWnsWYA,,,N,0,0,,,2010-08-08 11:54,2010-08-08 11:54,admin,admin,,,
204,89047,784,11597,841,1,0,N,N,N,CP_Drtn,TT_Task,DT_FixedDUR2,RV_OK,TK_NotStart,A11970,backfilling for under ground,,352,0,32,0,0,0,32,0,0,0,,,,2010-10-09 08:00,2010-10-12 16:00,,2010-08-18 08:00,2010-08-22 16:00,2010-08-18 08:00,2010-08-22 16:00,2010-08-18 08:00,2010-08-22 16:00,,2010-10-09 08:00,2010-10-12 16:00,,PT_Normal,,,,,Wrse6jTjOkavgxVLzod9zQ,0TfQhVF1yk62P19hgcRxXg,,,N,0,0,,,2010-08-08 11:54,2010-08-08 11:54,admin,admin,,,
205,89048,784,11597,841,1,0,N,N,N,CP_Drtn,TT_Task,DT_FixedDUR2,RV_OK,TK_NotStart,A11980,P.C slab on grade 10CM,,416,0,8,0,0,0,8,0,0,0,,,,2010-11-25 08:00,2010-11-25 16:00,,2010-09-21 08:00,2010-09-21 16:00,2010-09-21 08:00,2010-09-21 16:00,2010-09-21 08:00,2010-09-21 16:00,,2010-11-25 08:00,2010-11-25 16:00,,PT_Normal,,,,,bwjgPHuj6UClaHvUaiz5yg,u0AIaZYzOEaTFPMhtJWwFA,,,N,0,0,,,2010-08-08 11:54,2010-08-08 11:54,admin,admin,,,
206,89049,784,11597,841,1,0,N,N,N,CP_Drtn,TT_Task,DT_FixedDUR2,RV_OK,TK_NotStart,A11990,moisture insulation with membrane sheets,,416,0,16,0,0,0,16,0,0,0,,,,2010-11-27 08:00,2010-11-28 16:00,,2010-09-22 08:00,2010-09-23 16:00,2010-09-22 08:00,2010-09-23 16:00,2010-09-22 08:00,2010-09-23 16:00,,2010-11-27 08:00,2010-11-28 16:00,,PT_Normal,,,,,dB2jpIB7X0qigHiHQT1SBw,fRz3KqqzH0qJhIymOWCKyA,,,N,0,0,,,2010-08-08 11:54,2010-08-08 11:54,admin,admin,,,
207,89050,784,11597,841,1,0,N,N,N,CP_Drtn,TT_Task,DT_FixedDUR2,RV_OK,TK_NotStart,A12000,R.C slab on grade,,416,0,16,0,0,0,16,0,0,0,,,,2010-11-29 08:00,2010-11-30 16:00,,2010-09-25 08:00,2010-09-26 16:00,2010-09-25 08:00,2010-09-26 16:00,2010-09-25 08:00,2010-09-26 16:00,,2010-11-29 08:00,2010-11-30 16:00,,PT_Normal,,,,,c7dkWXcoE0i9TcOroAwOAw,4quTuFXUBEuz+M6Z5OiQuQ,,,N,0,0,,,2010-08-08 11:54,2010-08-08 11:54,admin,admin,,,
208,89051,784,11557,841,1,0,N,N,N,CP_Drtn,TT_Task,DT_FixedDUR2,RV_OK,TK_NotStart,A12010,columns for ground floor,,352,0,48,0,0,0,48,0,0,0,,,,2010-09-27 08:00,2010-10-03 16:00,,2010-08-07 08:00,2010-08-12 16:00,2010-08-07 08:00,2010-08-12 16:00,2010-08-07 08:00,2010-08-12 16:00,,2010-09-27 08:00,2010-10-03 16:00,,PT_Normal,,,,,iaT1t5DjD06oBA8Ru0dB5A,r53gl0+HMk6GtA7cnAlF3Q,,,N,0,0,,,2010-08-08 11:54,2010-08-08 11:54,admin,admin,,,
209,89052,784,11557,841,1,0,N,N,N,CP_Drtn,TT_Task,DT_FixedDUR2,RV_OK,TK_NotStart,A12020,slab for ground floor,,352,0,72,0,0,0,72,0,0,0,,,,2010-10-13 08:00,2010-10-23 16:00,,2010-08-23 08:00,2010-09-01 16:00,2010-08-23 08:00,2010-09-01 16:00,2010-08-23 08:00,2010-09-01 16:00,,2010-10-13 08:00,2010-10-23 16:00,,PT_Normal,,,,,ag1JDfRE3kiqfBj3ZBtiWQ,/4A+d14AXUWuzwykcs5VFA,,,N,0,0,,,2010-08-08 11:54,2010-08-08 11:54,admin,admin,,,
210,89053,784,11557,841,1,0,N,N,N,CP_Drtn,TT_Task,DT_FixedDUR2,RV_OK,TK_NotStart,A12030,columns for 1st floor,,352,0,48,0,0,0,48,0,0,0,,,,2010-10-25 08:00,2010-10-31 16:00,,2010-09-04 08:00,2010-09-09 16:00,2010-09-04 08:00,2010-09-09 16:00,2010-09-04 08:00,2010-09-09 16:00,,2010-10-25 08:00,2010-10-31 16:00,,PT_Normal,,,,,N+ab5RgwM061zy7GvZBKkQ,keZZCQ/n20KCYN6xUQzAlg,,,N,0,0,,,2010-08-08 11:54,2010-08-08 11:54,admin,admin,,,
211,89054,784,11557,841,1,0,N,N,N,CP_Drtn,TT_Task,DT_FixedDUR2,RV_OK,TK_NotStart,A12040,slab for 1st floor,,352,0,72,0,0,0,72,0,0,0,,,,2010-11-01 08:00,2010-11-10 16:00,,2010-09-11 08:00,2010-09-20 16:00,2010-09-11 08:00,2010-09-20 16:00,2010-09-11 08:00,2010-09-20 16:00,,2010-11-01 08:00,2010-11-10 16:00,,PT_Normal,,,,,Wqh1B5rDqU6bDy4tzoji8A,Vd6JTRUd2UazS17k0thQ+g,,,N,0,0,,,2010-08-08 11:54,2010-08-08 11:54,admin,admin,,,
212,89055,784,11557,841,1,0,N,N,N,CP_Drtn,TT_Task,DT_FixedDUR2,RV_OK,TK_NotStart,A12050,columns for roof floor,,352,0,32,0,0,0,32,0,0,0,,,,2010-11-20 08:00,2010-11-23 16:00,,2010-09-25 08:00,2010-09-28 16:00,2010-09-25 08:00,2010-09-28 16:00,2010-09-25 08:00,2010-09-28 16:00,,2010-11-20 08:00,2010-11-23 16:00,,PT_Normal,,,,,Ck6BU4Hunk6Ynquj6thcvw,JBNBtEASIUyouSQX6msEMA,,,N,0,0,,,2010-08-08 11:54,2010-08-08 11:54,admin,admin,,,
213,89056,784,11557,841,1,0,N,N,N,CP_Drtn,TT_Task,DT_FixedDUR2,RV_OK,TK_NotStart,A12060,slab for roof floor,,352,0,48,0,0,0,48,0,0,0,,,,2010-11-24 08:00,2010-11-30 16:00,,2010-09-29 08:00,2010-10-05 16:00,2010-09-29 08:00,2010-10-05 16:00,2010-09-29 08:00,2010-10-05 16:00,,2010-11-24 08:00,2010-11-30 16:00,,PT_Normal,,,,,6y5p8c/GukKd5pG5BNkMFw,Ukql1lj8e0OyhNrVR9GWxQ,,,N,0,0,,,2010-08-08 11:54,2010-08-08 11:54,admin,admin,,,
214,89057,784,11557,841,1,0,N,N,N,CP_Drtn,TT_Task,DT_FixedDUR2,RV_OK,TK_NotStart,A12070,Brick works for ground floor,,416,0,40,0,0,0,40,0,0,0,,,,2010-11-20 08:00,2010-11-24 16:00,,2010-09-15 08:00,2010-09-20 16:00,2010-09-15 08:00,2010-09-20 16:00,2010-09-15 08:00,2010-09-20 16:00,,2010-11-20 08:00,2010-11-24 16:00,,PT_Normal,,,,,sUML5pY3zk+f/zGC5GIDMw,vjZcZkMYT0qLvfsDpLVIqw,,,N,0,0,,,2010-08-08 11:54,2010-08-08 11:54,admin,admin,,,
215,89058,784,11558,841,1,0,N,N,N,CP_Drtn,TT_Task,DT_FixedDrtn,RV_OK,TK_NotStart,A12080,electrical conduits for ground floor's slab,,360,8,16,0,0,0,16,0,0,0,,,,2010-10-19 08:00,2010-10-20 16:00,,2010-08-28 08:00,2010-08-29 16:00,2010-08-28 08:00,2010-08-29 16:00,2010-08-28 08:00,2010-08-29 16:00,,2010-10-19 08:00,2010-10-20 16:00,,PT_Normal,,,,,pjsNfLtAnU6o39ACIbwaeA,EgpjY3zsyUaP9qWSm53vBg,,,N,0,0,,,2010-08-08 11:54,2010-08-08 11:54,admin,admin,,,
216,89059,784,11558,841,1,0,N,N,N,CP_Drtn,TT_Task,DT_FixedDrtn,RV_OK,TK_NotStart,A12090,electrical conduits for 1st floor slab,,360,8,16,0,0,0,16,0,0,0,,,,2010-11-07 08:00,2010-11-08 16:00,,2010-09-15 08:00,2010-09-16 16:00,2010-09-15 08:00,2010-09-16 16:00,2010-09-15 08:00,2010-09-16 16:00,,2010-11-07 08:00,2010-11-08 16:00,,PT_Normal,,,,,ohuYznnON0Kqrv0VoXliIg,y1VMgvQZEE+FD15GI+K2Vg,,,N,0,0,,,2010-08-08 11:54,2010-08-08 11:54,admin,admin,,,
217,89060,784,11558,841,1,0,N,N,N,CP_Drtn,TT_Task,DT_FixedDrtn,RV_OK,TK_NotStart,A12100,electrical conduits for roof slab,,360,8,8,0,0,0,8,0,0,0,,,,2010-11-29 08:00,2010-11-29 16:00,,2010-10-03 08:00,2010-10-03 16:00,2010-10-03 08:00,2010-10-03 16:00,2010-10-03 08:00,2010-10-03 16:00,,2010-11-29 08:00,2010-11-29 16:00,,PT_Normal,,,,,O1A5TCOOHkmwP/abFEevwg,IZjD7/766kWNYAFKhBOAuQ,,,N,0,0,,,2010-08-08 11:54,2010-08-08 11:54,admin,admin,,,
218,89061,784,11559,841,1,0,N,N,N,CP_Drtn,TT_Task,DT_FixedDUR2,RV_OK,TK_NotStart,A12110,Internal plastering for ground floor,,416,16,64,0,0,0,64,0,0,0,,,,2010-12-05 08:00,2010-12-13 16:00,,2010-09-30 08:00,2010-10-09 16:00,2010-09-30 08:00,2010-10-09 16:00,2010-09-30 08:00,2010-10-09 16:00,,2010-12-05 08:00,2010-12-13 16:00,,PT_Normal,,,,,Yf3lGAnos0yw10f1p0DOow,ONeTpLfv2kCcBQXGcp2uDQ,,,N,0,0,,,2010-08-08 11:54,2010-08-08 11:54,admin,admin,,,
219,89062,784,11559,841,1,0,N,N,N,CP_Drtn,TT_Task,DT_FixedDUR2,RV_OK,TK_NotStart,A12120,External plastering,,352,0,80,0,0,0,80,0,0,0,,,,2010-12-18 08:00,2010-12-28 16:00,,2010-10-23 08:00,2010-11-02 16:00,2010-10-23 08:00,2010-11-02 16:00,2010-10-23 08:00,2010-11-02 16:00,,2010-12-18 08:00,2010-12-28 16:00,,PT_Normal,,,,,GaZv2kMU+kmRPeivpccf9w,/Ku6+63IHUet/Lczs1GDmg,,,N,0,0,,,2010-08-08 11:54,2010-08-08 11:54,admin,admin,,,
220,89063,784,11558,841,1,0,N,N,N,CP_Drtn,TT_Task,DT_FixedDrtn,RV_OK,TK_NotStart,A12130,plumbing connections under slab on grade,,600,184,16,0,0,0,16,0,0,0,,,,2010-11-23 08:00,2010-11-24 16:00,,2010-08-23 08:00,2010-08-24 16:00,2010-08-23 08:00,2010-08-24 16:00,2010-08-23 08:00,2010-08-24 16:00,,2010-11-23 08:00,2010-11-24 16:00,,PT_Normal,,,,,mLYwvobYekKWfn/iaKwLdA,NKQuThH/7EuXtEq1/UJIVg,,,N,0,0,,,2010-08-08 11:54,2010-08-08 11:54,admin,admin,,,
221,89064,784,11595,841,0,0,N,N,N,CP_Drtn,TT_Mile,DT_FixedDrtn,RV_OK,TK_NotStart,A12140,Start Villa construction,,328,0,0,0,0,0,0,0,0,0,,,,2010-08-08 08:00,2010-08-08 08:00,,2010-06-21 08:00,2010-06-21 08:00,2010-06-21 08:00,2010-06-21 08:00,2010-06-21 08:00,2010-06-21 08:00,,2010-08-08 08:00,2010-08-08 08:00,,PT_Normal,,,,,+UE/hExJPkuZUyB0EiLKBA,pp3oojicr0eZ/8sqGvNNhg,,,N,0,0,,,2010-08-08 11:54,2010-08-08 11:54,admin,admin,,,
222,89065,784,11595,841,0,0,N,N,N,CP_Drtn,TT_FinMile,DT_FixedDrtn,RV_OK,TK_NotStart,A12150,finish Villa construction,,352,352,0,0,0,0,0,0,0,0,,,,2010-12-28 16:00,2010-12-28 16:00,,2010-11-02 16:00,2010-11-02 16:00,2010-11-02 16:00,2010-11-02 16:00,2010-11-02 16:00,2010-11-02 16:00,,2010-12-28 16:00,2010-12-28 16:00,,PT_Normal,,,,,cg2b/F7BekO0iuXBI4tRqQ,Br4uMEm4oEu8hYuPZcD7hg,,,N,0,0,,,2010-08-08 11:54,2010-08-08 11:54,admin,admin,,,
223,89066,784,11595,841,0,0,N,N,N,CP_Drtn,TT_Mile,DT_FixedDrtn,RV_OK,TK_NotStart,A12160,IFC drawings,,328,0,0,0,0,0,0,0,0,0,,,,2010-08-08 08:00,2010-08-08 08:00,,2010-06-21 08:00,2010-06-21 08:00,2010-06-21 08:00,2010-06-21 08:00,2010-06-21 08:00,2010-06-21 08:00,,2010-08-08 08:00,2010-08-08 08:00,,PT_Normal,,,,,g9XC00/wrE+DiYQ2Wb2DHw,sYznmiFgsk+UhGgnTLqBCA,,,N,0,0,,,2010-08-08 11:54,2010-08-08 11:54,admin,admin,,,
224,89067,784,11557,841,1,0,N,N,N,CP_Drtn,TT_Task,DT_FixedDUR2,RV_OK,TK_NotStart,A12170,pouring for ground floor's slab,,352,0,8,0,0,0,8,0,0,0,,,,2010-10-24 08:00,2010-10-24 16:00,,2010-09-02 08:00,2010-09-02 16:00,2010-09-02 08:00,2010-09-02 16:00,2010-09-02 08:00,2010-09-02 16:00,,2010-10-24 08:00,2010-10-24 16:00,,PT_Normal,,,,,+s19OS76gkyPIjzhM/ow+g,+eDXoQjy2UqkpPA7NXrnvg,,,N,0,0,,,2010-08-08 11:54,2010-08-08 11:54,admin,admin,,,
225,89068,784,11557,841,1,0,N,N,N,CP_Drtn,TT_Task,DT_FixedDUR2,RV_OK,TK_NotStart,A12180,pouring for 1st floor's slab,,352,0,8,0,0,0,8,0,0,0,,,,2010-11-11 08:00,2010-11-11 16:00,,2010-09-21 08:00,2010-09-21 16:00,2010-09-21 08:00,2010-09-21 16:00,2010-09-21 08:00,2010-09-21 16:00,,2010-11-11 08:00,2010-11-11 16:00,,PT_Normal,,,,,qqZdMaDqPE6a7I1yYyEGTg,ycYM/YrRYEuwwC7lQRigDw,,,N,0,0,,,2010-08-08 11:54,2010-08-08 11:54,admin,admin,,,
226,89069,784,11557,841,1,0,N,N,N,CP_Drtn,TT_Task,DT_FixedDUR2,RV_OK,TK_NotStart,A12190,pouring for roof floor's slab,,352,0,8,0,0,0,8,0,0,0,,,,2010-12-01 08:00,2010-12-01 16:00,,2010-10-06 08:00,2010-10-06 16:00,2010-10-06 08:00,2010-10-06 16:00,2010-10-06 08:00,2010-10-06 16:00,,2010-12-01 08:00,2010-12-01 16:00,,PT_Normal,,,,,7oVoahZ740y5Gxotp8SfGw,c43KzQSBnE2RsHHrDlo/0A,,,N,0,0,,,2010-08-08 11:54,2010-08-08 11:54,admin,admin,,,
227,89070,784,11557,841,1,0,N,N,N,CP_Drtn,TT_Task,DT_FixedDrtn,RV_OK,TK_NotStart,A12200,Fence work,,368,16,400,0,0,0,400,0,0,0,,,,2010-10-27 08:00,2010-12-28 16:00,,2010-09-04 08:00,2010-10-31 16:00,2010-09-04 08:00,2010-10-31 16:00,2010-09-04 08:00,2010-10-31 16:00,,2010-10-27 08:00,2010-12-28 16:00,,PT_Normal,,,,,ACxIMwH+hEiQDsyHMlpQOA,opD33MwjZUmrJZy8pua5Yg,,,N,0,0,,,2010-08-08 11:54,2010-08-08 11:54,admin,admin,,,
228,89071,784,11595,841,1,0,N,N,N,CP_Drtn,TT_Task,DT_FixedDUR2,RV_OK,TK_NotStart,A12210,Fence Drawings IFC,,792,424,8,0,0,0,8,0,0,0,,,,2010-10-14 08:00,2010-10-14 16:00,,2010-06-21 08:00,2010-06-21 16:00,2010-06-21 08:00,2010-06-21 16:00,2010-06-21 08:00,2010-06-21 16:00,,2010-10-14 08:00,2010-10-14 16:00,,PT_Normal,,,,,pXeJsR9Z/kiRWANnVHnYcw,tEn5p0y550S6mRpcA0F/2g,,,N,0,0,,,2010-08-08 11:54,2010-08-08 11:54,admin,admin,,,
229,89072,784,11597,873,1,0,N,N,N,CP_Drtn,TT_Task,DT_FixedDUR2,RV_OK,TK_NotStart,A12220,backfilling between P.C Foundation,,328,0,16,0,0,0,16,0,0,0,,,,2010-09-06 08:00,2010-09-07 16:00,,2010-07-20 08:00,2010-07-21 16:00,2010-07-20 08:00,2010-07-21 16:00,2010-07-20 08:00,2010-07-21 16:00,,2010-09-06 08:00,2010-09-07 16:00,,PT_Normal,,,,,rxNUKrJYhUiVtACbdR6sPw,fLDIAl4gEUuLi0Q3TlPyjg,,,N,0,0,,,2010-08-08 11:54,2010-08-08 11:54,admin,admin,,,
230,89073,784,11557,873,1,0,N,N,N,CP_Drtn,TT_Task,DT_FixedDUR2,RV_OK,TK_NotStart,A12240,Brick works for 1st floor,,432,0,40,0,0,0,40,0,0,0,,,,2010-12-06 08:00,2010-12-11 16:00,,2010-10-04 08:00,2010-10-09 16:00,2010-10-04 08:00,2010-10-09 16:00,2010-10-04 08:00,2010-10-09 16:00,,2010-12-06 08:00,2010-12-11 16:00,,PT_Normal,,,,,2x1zJhsBukmMOYryAMNSUQ,kOCYeDnAmU+jAepIX1uK9w,,,N,0,0,,,2010-08-08 11:54,2010-08-08 11:54,admin,admin,,,
231,89074,784,11557,873,1,0,N,N,N,CP_Drtn,TT_Task,DT_FixedDUR2,RV_OK,TK_NotStart,A12250,Brick works for roof floor,,384,0,40,0,0,0,40,0,0,0,,,,2010-12-12 08:00,2010-12-16 16:00,,2010-10-17 08:00,2010-10-21 16:00,2010-10-17 08:00,2010-10-21 16:00,2010-10-17 08:00,2010-10-21 16:00,,2010-12-12 08:00,2010-12-16 16:00,,PT_Normal,,,,,zs29PbQx9k6rRE0EwbdZ5w,EJ7nWL43c0WxEHdvEGhK+A,,,N,0,0,,,2010-08-08 11:54,2010-08-08 11:54,admin,admin,,,
232,89075,784,11559,873,1,0,N,N,N,CP_Drtn,TT_Task,DT_FixedDUR2,RV_OK,TK_NotStart,A12260,Internal plastering for 1st floor,,432,24,64,0,0,0,64,0,0,0,,,,2010-12-14 08:00,2010-12-22 16:00,,2010-10-12 08:00,2010-10-20 16:00,2010-10-12 08:00,2010-10-20 16:00,2010-10-12 08:00,2010-10-20 16:00,,2010-12-14 08:00,2010-12-22 16:00,,PT_Normal,,,,,MbS9eaO35kaL7xG7JNnZrw,OZYDVQCr+Ue1p+gBAlxr1Q,,,N,0,0,,,2010-08-08 11:54,2010-08-08 11:54,admin,admin,,,
233,89076,784,11559,873,1,0,N,N,N,CP_Drtn,TT_Task,DT_FixedDUR2,RV_OK,TK_NotStart,A12270,Internal plastering for roof floor,,408,24,40,0,0,0,40,0,0,0,,,,2010-12-23 08:00,2010-12-28 16:00,,2010-10-25 08:00,2010-10-30 16:00,2010-10-25 08:00,2010-10-30 16:00,2010-10-25 08:00,2010-10-30 16:00,,2010-12-23 08:00,2010-12-28 16:00,,PT_Normal,,,,,492AYdUnCUCxYimBJZXePQ,m9CEVuHcyEi6o5PfiNvJnA,,,N,0,0,,,2010-08-08 11:54,2010-08-08 11:54,admin,admin,,,
234,89077,784,11558,873,1,0,N,N,N,CP_Drtn,TT_Task,DT_FixedDUR2,RV_OK,TK_NotStart,A12280,electrical conduits for ground floor walls,,448,0,16,0,0,0,16,0,0,0,,,,2010-12-02 08:00,2010-12-04 16:00,,2010-09-28 08:00,2010-09-29 16:00,2010-09-28 08:00,2010-09-29 16:00,2010-09-28 08:00,2010-09-29 16:00,,2010-12-02 08:00,2010-12-04 16:00,,PT_Normal,,,,,hCnwoVBK30uP+xSYzaMVLQ,6FAJK9njWUuK/wPtpMyTWw,,,N,0,0,,,2010-08-08 11:54,2010-08-08 11:54,admin,admin,,,
235,89078,784,11558,873,1,0,N,N,N,CP_Drtn,TT_Task,DT_FixedDUR2,RV_OK,TK_NotStart,A12290,electrical conduits for 1st floor walls,,432,0,16,0,0,0,16,0,0,0,,,,2010-12-12 08:00,2010-12-13 16:00,,2010-10-10 08:00,2010-10-11 16:00,2010-10-10 08:00,2010-10-11 16:00,2010-10-10 08:00,2010-10-11 16:00,,2010-12-12 08:00,2010-12-13 16:00,,PT_Normal,,,,,YKU1yAOiJEa4kTzH0jB08A,eXHqLB1ar0ufI1j9zd8ERQ,,,N,0,0,,,2010-08-08 11:54,2010-08-08 11:54,admin,admin,,,
236,89079,784,11558,873,1,0,N,N,N,CP_Drtn,TT_Task,DT_FixedDUR2,RV_OK,TK_NotStart,A12300,electrical conduits for roof floor walls,,408,0,16,0,0,0,16,0,0,0,,,,2010-12-21 08:00,2010-12-22 16:00,,2010-10-23 08:00,2010-10-24 16:00,2010-10-23 08:00,2010-10-24 16:00,2010-10-23 08:00,2010-10-24 16:00,,2010-12-21 08:00,2010-12-22 16:00,,PT_Normal,,,,,ljZEFDP3ckCrrxDDpApW6g,M5dub5Nu70+BLDE/Y7xR3w,,,N,0,0,,,2010-08-08 11:54,2010-08-08 11:54,admin,admin,,,
237,89080,784,11603,841,1,0,N,N,N,CP_Drtn,TT_Task,DT_FixedDUR2,RV_OK,TK_NotStart,A12310,excavation,,136,0,16,0,0,0,16,0,0,0,,,,2010-09-01 08:00,2010-09-02 16:00,,2010-08-12 08:00,2010-08-14 16:00,2010-08-12 08:00,2010-08-14 16:00,2010-08-12 08:00,2010-08-14 16:00,,2010-09-01 08:00,2010-09-02 16:00,,PT_Normal,,,,,fN/h1OJ37E2ANzZmdg7ezA,zNzSu00BkEyS5IG8AmH21A,,,N,0,0,,,2010-08-08 11:54,2010-08-08 19:07,admin,admin,,,
238,89081,784,11603,841,1,0,N,N,N,CP_Drtn,TT_Task,DT_FixedDUR2,RV_OK,TK_NotStart,A12320,soil replacement,,136,0,96,0,0,0,96,0,0,0,,,,2010-09-04 08:00,2010-09-16 16:00,,2010-08-15 08:00,2010-08-28 16:00,2010-08-15 08:00,2010-08-28 16:00,2010-08-15 08:00,2010-08-28 16:00,,2010-09-04 08:00,2010-09-16 16:00,,PT_Normal,,,,,kFO2Yb/ZnUatg1maThfR4g,FDaoUP1DeE6zgRneURQzdg,,,N,0,0,,,2010-08-08 11:54,2010-08-08 19:07,admin,admin,,,
239,89082,784,11563,841,1,0,N,N,N,CP_Drtn,TT_Task,DT_FixedDUR2,RV_OK,TK_NotStart,A12330,Plain Concrete Foundation,,136,0,16,0,0,0,16,0,0,0,,,,2010-09-18 08:00,2010-09-19 16:00,,2010-08-29 08:00,2010-08-30 16:00,2010-08-29 08:00,2010-08-30 16:00,2010-08-29 08:00,2010-08-30 16:00,,2010-09-18 08:00,2010-09-19 16:00,,PT_Normal,,,,,UdTtdBTiiEGru7AB151p+g,CaDMj8OolEqQZsD5YEoTXA,,,N,0,0,,,2010-08-08 11:54,2010-08-08 19:07,admin,admin,,,
240,89083,784,11563,841,1,0,N,N,N,CP_Drtn,TT_Task,DT_FixedDUR2,RV_OK,TK_NotStart,A12340,Reinforced Concrete Foundation,,136,0,56,0,0,0,56,0,0,0,,,,2010-09-23 08:00,2010-09-30 16:00,,2010-09-04 08:00,2010-09-11 16:00,2010-09-04 08:00,2010-09-11 16:00,2010-09-04 08:00,2010-09-11 16:00,,2010-09-23 08:00,2010-09-30 16:00,,PT_Normal,,,,,O2Y1cFb8xkqsVIassWnZdA,L5N/mbiYVkWZQvGm7LFsgA,,,N,0,0,,,2010-08-08 11:54,2010-08-08 19:07,admin,admin,,,
241,89084,784,11563,841,1,0,N,N,N,CP_Drtn,TT_Task,DT_FixedDUR2,RV_OK,TK_NotStart,A12350,under ground  brick works,,136,0,16,0,0,0,16,0,0,0,,,,2010-10-09 08:00,2010-10-10 16:00,,2010-09-19 08:00,2010-09-20 16:00,2010-09-19 08:00,2010-09-20 16:00,2010-09-19 08:00,2010-09-20 16:00,,2010-10-09 08:00,2010-10-10 16:00,,PT_Normal,,,,,glRFRpca4kONniRX9E4u1Q,/LBa4drJMUWh/Eh3vagE1Q,,,N,0,0,,,2010-08-08 11:54,2010-08-08 19:07,admin,admin,,,
242,89085,784,11563,841,1,0,N,N,N,CP_Drtn,TT_Task,DT_FixedDUR2,RV_OK,TK_NotStart,A12360,under ground insulation for RC & Brick work,,136,0,16,0,0,0,16,0,0,0,,,,2010-10-11 08:00,2010-10-12 16:00,,2010-09-21 08:00,2010-09-22 16:00,2010-09-21 08:00,2010-09-22 16:00,2010-09-21 08:00,2010-09-22 16:00,,2010-10-11 08:00,2010-10-12 16:00,,PT_Normal,,,,,cVi6Jr0qgkOHAHT5zjb6BQ,e5v+99N+E0Klq2DbpX14TA,,,N,0,0,,,2010-08-08 11:54,2010-08-08 19:07,admin,admin,,,
243,89086,784,11563,841,1,0,N,N,N,CP_Drtn,TT_Task,DT_FixedDUR2,RV_OK,TK_NotStart,A12370,backfilling for under ground,,136,0,16,0,0,0,16,0,0,0,,,,2010-10-13 08:00,2010-10-14 16:00,,2010-09-23 08:00,2010-09-25 16:00,2010-09-23 08:00,2010-09-25 16:00,2010-09-23 08:00,2010-09-25 16:00,,2010-10-13 08:00,2010-10-14 16:00,,PT_Normal,,,,,ySolNakM9EWXzx/Ih7UX4A,TuSDKnycsE2eZ2/SRyp/jA,,,N,0,0,,,2010-08-08 11:54,2010-08-08 19:07,admin,admin,,,
244,89087,784,11563,841,1,0,N,N,N,CP_Drtn,TT_Task,DT_FixedDUR2,RV_OK,TK_NotStart,A12380,P.C slab on grade 10CM,,184,0,8,0,0,0,8,0,0,0,,,,2010-11-25 08:00,2010-11-25 16:00,,2010-10-25 08:00,2010-10-25 16:00,2010-10-25 08:00,2010-10-25 16:00,2010-10-25 08:00,2010-10-25 16:00,,2010-11-25 08:00,2010-11-25 16:00,,PT_Normal,,,,,+oBeXdPkt0qwNhubMGUcqw,+pz/XWu0P0+99kXYHunfWw,,,N,0,0,,,2010-08-08 11:54,2010-08-08 19:07,admin,admin,,,
245,89088,784,11563,841,1,0,N,N,N,CP_Drtn,TT_Task,DT_FixedDUR2,RV_OK,TK_NotStart,A12390,moisture insulation with membrane sheets,,184,0,16,0,0,0,16,0,0,0,,,,2010-11-27 08:00,2010-11-28 16:00,,2010-10-26 08:00,2010-10-27 16:00,2010-10-26 08:00,2010-10-27 16:00,2010-10-26 08:00,2010-10-27 16:00,,2010-11-27 08:00,2010-11-28 16:00,,PT_Normal,,,,,OU+91PLT40SJOBUiHxoc0w,HQwYSvcRV022ZMndecWuxQ,,,N,0,0,,,2010-08-08 11:54,2010-08-08 19:07,admin,admin,,,
246,89089,784,11563,841,1,0,N,N,N,CP_Drtn,TT_Task,DT_FixedDUR2,RV_OK,TK_NotStart,A12400,R.C slab on grade,,184,0,16,0,0,0,16,0,0,0,,,,2010-11-29 08:00,2010-11-30 16:00,,2010-10-28 08:00,2010-10-30 16:00,2010-10-28 08:00,2010-10-30 16:00,2010-10-28 08:00,2010-10-30 16:00,,2010-11-29 08:00,2010-11-30 16:00,,PT_Normal,,,,,3noGYq41rESQ3v0cy99NJQ,8fJIxMtRhEKgdu7frQP9Dg,,,N,0,0,,,2010-08-08 11:54,2010-08-08 19:07,admin,admin,,,
247,89090,784,11564,841,1,0,N,N,N,CP_Drtn,TT_Task,DT_FixedDUR2,RV_OK,TK_NotStart,A12410,columns for ground floor,,136,0,48,0,0,0,48,0,0,0,,,,2010-10-02 08:00,2010-10-07 16:00,,2010-09-12 08:00,2010-09-18 16:00,2010-09-12 08:00,2010-09-18 16:00,2010-09-12 08:00,2010-09-18 16:00,,2010-10-02 08:00,2010-10-07 16:00,,PT_Normal,,,,,jjlbKlprdkWDuXeP/KYGVw,HRBZmHNgd0Sja7qjeqaTVw,,,N,0,0,,,2010-08-08 11:54,2010-08-08 19:07,admin,admin,,,
248,89091,784,11564,841,1,0,N,N,N,CP_Drtn,TT_Task,DT_FixedDUR2,RV_OK,TK_NotStart,A12420,slab for ground floor,,136,0,72,0,0,0,72,0,0,0,,,,2010-10-16 08:00,2010-10-25 16:00,,2010-09-26 08:00,2010-10-05 16:00,2010-09-26 08:00,2010-10-05 16:00,2010-09-26 08:00,2010-10-05 16:00,,2010-10-16 08:00,2010-10-25 16:00,,PT_Normal,,,,,yLF4NdKShk2A9nPq8Q/ZJw,3zur18JZm0WQwosfsDqiMw,,,N,0,0,,,2010-08-08 11:54,2010-08-08 19:07,admin,admin,,,
249,89092,784,11564,841,1,0,N,N,N,CP_Drtn,TT_Task,DT_FixedDUR2,RV_OK,TK_NotStart,A12430,columns for 1st floor,,136,0,48,0,0,0,48,0,0,0,,,,2010-10-27 08:00,2010-11-02 16:00,,2010-10-07 08:00,2010-10-13 16:00,2010-10-07 08:00,2010-10-13 16:00,2010-10-07 08:00,2010-10-13 16:00,,2010-10-27 08:00,2010-11-02 16:00,,PT_Normal,,,,,iwkVY78uGkORJR7A7rk68A,pVu2O/JfYECuZCkFpc50Fg,,,N,0,0,,,2010-08-08 11:54,2010-08-08 19:07,admin,admin,,,
250,89093,784,11564,841,1,0,N,N,N,CP_Drtn,TT_Task,DT_FixedDUR2,RV_OK,TK_NotStart,A12440,slab for 1st floor,,136,0,72,0,0,0,72,0,0,0,,,,2010-11-03 08:00,2010-11-13 16:00,,2010-10-14 08:00,2010-10-24 16:00,2010-10-14 08:00,2010-10-24 16:00,2010-10-14 08:00,2010-10-24 16:00,,2010-11-03 08:00,2010-11-13 16:00,,PT_Normal,,,,,o1DVKVDAPk2Z1DXQGjU2mw,haHuash5GUC0fXbbKbJjlA,,,N,0,0,,,2010-08-08 11:54,2010-08-08 19:07,admin,admin,,,
251,89094,784,11564,841,1,0,N,N,N,CP_Drtn,TT_Task,DT_FixedDUR2,RV_OK,TK_NotStart,A12450,columns for roof floor,,136,0,32,0,0,0,32,0,0,0,,,,2010-11-22 08:00,2010-11-25 16:00,,2010-10-28 08:00,2010-11-01 16:00,2010-10-28 08:00,2010-11-01 16:00,2010-10-28 08:00,2010-11-01 16:00,,2010-11-22 08:00,2010-11-25 16:00,,PT_Normal,,,,,5ZyHuwX1D0aEQt27WgiofQ,WA9639ZiTEGtnf8q81+xSw,,,N,0,0,,,2010-08-08 11:54,2010-08-08 19:07,admin,admin,,,
252,89095,784,11564,841,1,0,N,N,N,CP_Drtn,TT_Task,DT_FixedDUR2,RV_OK,TK_NotStart,A12460,slab for roof floor,,136,0,48,0,0,0,48,0,0,0,,,,2010-11-27 08:00,2010-12-02 16:00,,2010-11-02 08:00,2010-11-08 16:00,2010-11-02 08:00,2010-11-08 16:00,2010-11-02 08:00,2010-11-08 16:00,,2010-11-27 08:00,2010-12-02 16:00,,PT_Normal,,,,,/aXylc9fTUKflovDYSJCaw,+F5GXoKtZ0CeJmZCIo48+A,,,N,0,0,,,2010-08-08 11:54,2010-08-08 19:07,admin,admin,,,
253,89096,784,11564,841,1,0,N,N,N,CP_Drtn,TT_Task,DT_FixedDUR2,RV_OK,TK_NotStart,A12470,Brick works for ground floor,,184,0,40,0,0,0,40,0,0,0,,,,2010-11-20 08:00,2010-11-24 16:00,,2010-10-19 08:00,2010-10-24 16:00,2010-10-19 08:00,2010-10-24 16:00,2010-10-19 08:00,2010-10-24 16:00,,2010-11-20 08:00,2010-11-24 16:00,,PT_Normal,,,,,YqDMB5KkaE2r+7V2OBsTJg,EhwHnFQxm0edKR03BZ/5Aw,,,N,0,0,,,2010-08-08 11:54,2010-08-08 19:07,admin,admin,,,
254,89097,784,11565,841,1,0,N,N,N,CP_Drtn,TT_Task,DT_FixedDrtn,RV_OK,TK_NotStart,A12480,electrical conduits for ground floor's slab,,144,8,16,0,0,0,16,0,0,0,,,,2010-10-21 08:00,2010-10-23 16:00,,2010-09-30 08:00,2010-10-02 16:00,2010-09-30 08:00,2010-10-02 16:00,2010-09-30 08:00,2010-10-02 16:00,,2010-10-21 08:00,2010-10-23 16:00,,PT_Normal,,,,,EZgWz1pekked6GzGooITzQ,cUR0ERrfJUyY/5uYeJYWBw,,,N,0,0,,,2010-08-08 11:54,2010-08-08 19:07,admin,admin,,,
255,89098,784,11565,841,1,0,N,N,N,CP_Drtn,TT_Task,DT_FixedDrtn,RV_OK,TK_NotStart,A12490,electrical conduits for 1st floor slab,,144,8,16,0,0,0,16,0,0,0,,,,2010-11-09 08:00,2010-11-10 16:00,,2010-10-19 08:00,2010-10-20 16:00,2010-10-19 08:00,2010-10-20 16:00,2010-10-19 08:00,2010-10-20 16:00,,2010-11-09 08:00,2010-11-10 16:00,,PT_Normal,,,,,xI4uWzMPKkO/0RfS1WZBfg,2g4ksIr9cU+Lep2LZlJgig,,,N,0,0,,,2010-08-08 11:54,2010-08-08 19:07,admin,admin,,,
256,89099,784,11565,841,1,0,N,N,N,CP_Drtn,TT_Task,DT_FixedDrtn,RV_OK,TK_NotStart,A12500,electrical conduits for roof slab,,144,8,8,0,0,0,8,0,0,0,,,,2010-12-01 08:00,2010-12-01 16:00,,2010-11-06 08:00,2010-11-06 16:00,2010-11-06 08:00,2010-11-06 16:00,2010-11-06 08:00,2010-11-06 16:00,,2010-12-01 08:00,2010-12-01 16:00,,PT_Normal,,,,,Q4dn9ioMikWwztTahYedWw,FaAsm8w4f0iWMvdS0gP8mQ,,,N,0,0,,,2010-08-08 11:54,2010-08-08 19:07,admin,admin,,,
257,89100,784,11566,841,1,0,N,N,N,CP_Drtn,TT_Task,DT_FixedDUR2,RV_OK,TK_NotStart,A12510,Internal plastering for ground floor,,184,16,64,0,0,0,64,0,0,0,,,,2010-12-05 08:00,2010-12-13 16:00,,2010-11-03 08:00,2010-11-11 16:00,2010-11-03 08:00,2010-11-11 16:00,2010-11-03 08:00,2010-11-11 16:00,,2010-12-05 08:00,2010-12-13 16:00,,PT_Normal,,,,,LOV9vqDgQ0WKDJrh8mWcxA,2DcbL733c0+tcLFx4d9M7Q,,,N,0,0,,,2010-08-08 11:54,2010-08-08 19:07,admin,admin,,,
258,89101,784,11566,841,1,0,N,N,N,CP_Drtn,TT_Task,DT_FixedDUR2,RV_OK,TK_NotStart,A12520,External plastering,,136,0,64,0,0,0,64,0,0,0,,,,2010-12-20 08:00,2010-12-28 16:00,,2010-11-30 08:00,2010-12-08 16:00,2010-11-30 08:00,2010-12-08 16:00,2010-11-30 08:00,2010-12-08 16:00,,2010-12-20 08:00,2010-12-28 16:00,,PT_Normal,,,,,dPp2I2NWYESm41sbJg2Ivg,2deEIcJRx0WlKUOwyVde7Q,,,N,0,0,,,2010-08-08 11:54,2010-08-08 19:07,admin,admin,,,
259,89102,784,11565,841,1,0,N,N,N,CP_Drtn,TT_Task,DT_FixedDrtn,RV_OK,TK_NotStart,A12530,plumbing connections under slab on grade,,368,184,16,0,0,0,16,0,0,0,,,,2010-11-23 08:00,2010-11-24 16:00,,2010-09-26 08:00,2010-09-27 16:00,2010-09-26 08:00,2010-09-27 16:00,2010-09-26 08:00,2010-09-27 16:00,,2010-11-23 08:00,2010-11-24 16:00,,PT_Normal,,,,,Cjgtgo6cqE+yEdEXraUuwA,PIi60t9f9EigUqbWF9jOuA,,,N,0,0,,,2010-08-08 11:54,2010-08-08 19:07,admin,admin,,,
260,89103,784,11602,841,0,0,N,N,N,CP_Drtn,TT_Mile,DT_FixedDrtn,RV_OK,TK_NotStart,A12540,Start Villa construction,,136,0,0,0,0,0,0,0,0,0,,,,2010-08-30 08:00,2010-08-30 08:00,,2010-08-10 08:00,2010-08-10 08:00,2010-08-10 08:00,2010-08-10 08:00,2010-08-10 08:00,2010-08-10 08:00,,2010-08-30 08:00,2010-08-30 08:00,,PT_Normal,,,,,UWMolLOtYUqAMskmglGNaQ,Pp3AtUNpokaa7ijDGqFqPg,,,N,0,0,,,2010-08-08 11:54,2010-08-08 19:07,admin,admin,,,
261,89104,784,11602,841,0,0,N,N,N,CP_Drtn,TT_FinMile,DT_FixedDrtn,RV_OK,TK_NotStart,A12550,finish Villa construction,,136,136,0,0,0,0,0,0,0,0,,,,2010-12-28 16:00,2010-12-28 16:00,,2010-12-08 16:00,2010-12-08 16:00,2010-12-08 16:00,2010-12-08 16:00,2010-12-08 16:00,2010-12-08 16:00,,2010-12-28 16:00,2010-12-28 16:00,,PT_Normal,,,,,AZbHz5FSWEm3aTFDJ9wbnQ,i5HedUQQfkWBXoHFTlIaQQ,,,N,0,0,,,2010-08-08 11:54,2010-08-08 19:07,admin,admin,,,
262,89105,784,11602,841,0,0,N,N,N,CP_Drtn,TT_Mile,DT_FixedDrtn,RV_OK,TK_NotStart,A12560,IFC drawings,,136,0,0,0,0,0,0,0,0,0,,,,2010-07-11 08:00,2010-07-11 08:00,,2010-06-21 08:00,2010-06-21 08:00,2010-06-21 08:00,2010-06-21 08:00,2010-06-21 08:00,2010-06-21 08:00,,2010-07-11 08:00,2010-07-11 08:00,,PT_Normal,,,,,2IzOW3kmqUa5eeP6kUZYkw,s8do7i3qcUqJClqF4GVsFQ,,,N,0,0,,,2010-08-08 11:54,2010-08-08 19:07,admin,admin,,,
263,89106,784,11564,841,1,0,N,N,N,CP_Drtn,TT_Task,DT_FixedDUR2,RV_OK,TK_NotStart,A12570,pouring for ground floor's slab,,136,0,8,0,0,0,8,0,0,0,,,,2010-10-26 08:00,2010-10-26 16:00,,2010-10-06 08:00,2010-10-06 16:00,2010-10-06 08:00,2010-10-06 16:00,2010-10-06 08:00,2010-10-06 16:00,,2010-10-26 08:00,2010-10-26 16:00,,PT_Normal,,,,,5snH1LZ8PEar67ap8q2JDw,gCZl0Yd3B0u/1602qQHG6g,,,N,0,0,,,2010-08-08 11:54,2010-08-08 19:07,admin,admin,,,
264,89107,784,11564,841,1,0,N,N,N,CP_Drtn,TT_Task,DT_FixedDUR2,RV_OK,TK_NotStart,A12580,pouring for 1st floor's slab,,136,0,8,0,0,0,8,0,0,0,,,,2010-11-14 08:00,2010-11-14 16:00,,2010-10-25 08:00,2010-10-25 16:00,2010-10-25 08:00,2010-10-25 16:00,2010-10-25 08:00,2010-10-25 16:00,,2010-11-14 08:00,2010-11-14 16:00,,PT_Normal,,,,,Ew10sA7U3keLd6OiBypP5Q,1IWZttG2MEu7pU9PfOUhsA,,,N,0,0,,,2010-08-08 11:54,2010-08-08 19:07,admin,admin,,,
265,89108,784,11564,841,1,0,N,N,N,CP_Drtn,TT_Task,DT_FixedDUR2,RV_OK,TK_NotStart,A12590,pouring for roof floor's slab,,136,0,8,0,0,0,8,0,0,0,,,,2010-12-04 08:00,2010-12-04 16:00,,2010-11-09 08:00,2010-11-09 16:00,2010-11-09 08:00,2010-11-09 16:00,2010-11-09 08:00,2010-11-09 16:00,,2010-12-04 08:00,2010-12-04 16:00,,PT_Normal,,,,,zK+UaWYFyUSHDiZZBJZVbg,yEn0B0HmOESCYf8Z5C0O8Q,,,N,0,0,,,2010-08-08 11:54,2010-08-08 19:07,admin,admin,,,
266,89109,784,11564,841,1,0,N,N,N,CP_Drtn,TT_Task,DT_FixedDrtn,RV_OK,TK_NotStart,A12600,Fence work,,136,0,400,0,0,0,400,0,0,0,,,,2010-10-27 08:00,2010-12-28 16:00,,2010-10-07 08:00,2010-12-08 16:00,2010-10-07 08:00,2010-12-08 16:00,2010-10-07 08:00,2010-12-08 16:00,,2010-10-27 08:00,2010-12-28 16:00,,PT_Normal,,,,,p3cgv1Fv4UqFy+JiAnZNzw,jeKd0yDmjE+DPqpqOMpWKA,,,N,0,0,,,2010-08-08 11:54,2010-08-08 19:07,admin,admin,,,
267,89110,784,11602,841,1,0,N,N,N,CP_Drtn,TT_Task,DT_FixedDUR2,RV_OK,TK_NotStart,A12610,Fence Drawings IFC,,448,312,8,0,0,0,8,0,0,0,,,,2010-10-14 08:00,2010-10-14 16:00,,2010-08-10 08:00,2010-08-10 16:00,2010-08-10 08:00,2010-08-10 16:00,2010-08-10 08:00,2010-08-10 16:00,,2010-10-14 08:00,2010-10-14 16:00,,PT_Normal,,,,,lEIAq5zI8EqjXotgd9Od4g,GG8aZzmzIkCQFZnfqlzaAQ,,,N,0,0,,,2010-08-08 11:54,2010-08-08 19:07,admin,admin,,,
268,89111,784,11563,873,1,0,N,N,N,CP_Drtn,TT_Task,DT_FixedDUR2,RV_OK,TK_NotStart,A12620,backfilling between P.C Foundation,,104,0,16,0,0,0,16,0,0,0,,,,2010-09-21 08:00,2010-09-22 16:00,,2010-09-01 08:00,2010-09-02 16:00,2010-09-01 08:00,2010-09-02 16:00,2010-09-01 08:00,2010-09-02 16:00,,2010-09-21 08:00,2010-09-22 16:00,,PT_Normal,,,,,k/NlG6++tU+IkBpJJxEb5g,Dr686zDX5kqymBGXm7j29A,,,N,0,0,,,2010-08-08 11:54,2010-08-08 19:07,admin,admin,,,
269,89112,784,11564,873,1,0,N,N,N,CP_Drtn,TT_Task,DT_FixedDUR2,RV_OK,TK_NotStart,A12640,Brick works for 1st floor,,200,0,40,0,0,0,40,0,0,0,,,,2010-12-06 08:00,2010-12-11 16:00,,2010-11-07 08:00,2010-11-11 16:00,2010-11-07 08:00,2010-11-11 16:00,2010-11-07 08:00,2010-11-11 16:00,,2010-12-06 08:00,2010-12-11 16:00,,PT_Normal,,,,,7sZ9OCLtI0K9UR6qWJfCTw,IRjpwHOueEGAfGoS7PF5Ow,,,N,0,0,,,2010-08-08 11:54,2010-08-08 19:07,admin,admin,,,
270,89113,784,11564,873,1,0,N,N,N,CP_Drtn,TT_Task,DT_FixedDUR2,RV_OK,TK_NotStart,A12650,Brick works for roof floor,,136,0,40,0,0,0,40,0,0,0,,,,2010-12-14 08:00,2010-12-19 16:00,,2010-11-24 08:00,2010-11-29 16:00,2010-11-24 08:00,2010-11-29 16:00,2010-11-24 08:00,2010-11-29 16:00,,2010-12-14 08:00,2010-12-19 16:00,,PT_Normal,,,,,Q5MaxwLFF0S6xGGYAQueDA,qjG+29/hBEi8ths6j2Vwmg,,,N,0,0,,,2010-08-08 11:54,2010-08-08 19:07,admin,admin,,,
271,89114,784,11566,873,1,0,N,N,N,CP_Drtn,TT_Task,DT_FixedDUR2,RV_OK,TK_NotStart,A12660,Internal plastering for 1st floor,,200,56,64,0,0,0,64,0,0,0,,,,2010-12-14 08:00,2010-12-22 16:00,,2010-11-15 08:00,2010-11-23 16:00,2010-11-15 08:00,2010-11-23 16:00,2010-11-15 08:00,2010-11-23 16:00,,2010-12-14 08:00,2010-12-22 16:00,,PT_Normal,,,,,vAGIACCmVkOjLAPc2oDsFw,JeiVv37HcE6j2/W7RfvhiA,,,N,0,0,,,2010-08-08 11:54,2010-08-08 19:07,admin,admin,,,
272,89115,784,11566,873,1,0,N,N,N,CP_Drtn,TT_Task,DT_FixedDUR2,RV_OK,TK_NotStart,A12670,Internal plastering for roof floor,,144,8,40,0,0,0,40,0,0,0,,,,2010-12-23 08:00,2010-12-28 16:00,,2010-12-02 08:00,2010-12-07 16:00,2010-12-02 08:00,2010-12-07 16:00,2010-12-02 08:00,2010-12-07 16:00,,2010-12-23 08:00,2010-12-28 16:00,,PT_Normal,,,,,kG4QBr17vEu7SyoxbPYuHg,8B2hmb56wEiJs5LDlLY/Ng,,,N,0,0,,,2010-08-08 11:54,2010-08-08 19:07,admin,admin,,,
273,89116,784,11565,873,1,0,N,N,N,CP_Drtn,TT_Task,DT_FixedDUR2,RV_OK,TK_NotStart,A12680,electrical conduits for ground floor walls,,216,0,16,0,0,0,16,0,0,0,,,,2010-12-02 08:00,2010-12-04 16:00,,2010-11-01 08:00,2010-11-02 16:00,2010-11-01 08:00,2010-11-02 16:00,2010-11-01 08:00,2010-11-02 16:00,,2010-12-02 08:00,2010-12-04 16:00,,PT_Normal,,,,,F6ll0brTrkCNvinu5+IrHA,sWiMI/xVkUmBmYy/MpKVMg,,,N,0,0,,,2010-08-08 11:54,2010-08-08 19:07,admin,admin,,,
274,89117,784,11565,873,1,0,N,N,N,CP_Drtn,TT_Task,DT_FixedDUR2,RV_OK,TK_NotStart,A12690,electrical conduits for 1st floor walls,,200,0,16,0,0,0,16,0,0,0,,,,2010-12-12 08:00,2010-12-13 16:00,,2010-11-13 08:00,2010-11-14 16:00,2010-11-13 08:00,2010-11-14 16:00,2010-11-13 08:00,2010-11-14 16:00,,2010-12-12 08:00,2010-12-13 16:00,,PT_Normal,,,,,EIvg3zGXt0aMxkMHyJv1lA,8gOggm+rAkaWxSQ9LBrOJQ,,,N,0,0,,,2010-08-08 11:54,2010-08-08 19:07,admin,admin,,,
275,89118,784,11565,873,1,0,N,N,N,CP_Drtn,TT_Task,DT_FixedDUR2,RV_OK,TK_NotStart,A12700,electrical conduits for roof floor walls,,144,0,16,0,0,0,16,0,0,0,,,,2010-12-21 08:00,2010-12-22 16:00,,2010-11-30 08:00,2010-12-01 16:00,2010-11-30 08:00,2010-12-01 16:00,2010-11-30 08:00,2010-12-01 16:00,,2010-12-21 08:00,2010-12-22 16:00,,PT_Normal,,,,,5LJd6iMxSk2/59rp2cuBhA,KHaiZIDdhkGp7Cseu+hNcA,,,N,0,0,,,2010-08-08 11:54,2010-08-08 19:07,admin,admin,,,
276,89119,784,11610,841,1,0,N,N,N,CP_Drtn,TT_Task,DT_FixedDUR2,RV_OK,TK_NotStart,A12710,excavation,,136,0,16,0,0,0,16,0,0,0,,,,2010-09-01 08:00,2010-09-02 16:00,,2010-08-12 08:00,2010-08-14 16:00,2010-08-12 08:00,2010-08-14 16:00,2010-08-12 08:00,2010-08-14 16:00,,2010-09-01 08:00,2010-09-02 16:00,,PT_Normal,,,,,HiM1UD/fX0i8K0h9kJkEVw,XwKu+rMM+0WpYtfdKc9/qw,,,N,0,0,,,2010-08-08 11:54,2010-08-08 19:07,admin,admin,,,
277,89120,784,11610,841,1,0,N,N,N,CP_Drtn,TT_Task,DT_FixedDUR2,RV_OK,TK_NotStart,A12720,soil replacement,,136,0,96,0,0,0,96,0,0,0,,,,2010-09-04 08:00,2010-09-16 16:00,,2010-08-15 08:00,2010-08-28 16:00,2010-08-15 08:00,2010-08-28 16:00,2010-08-15 08:00,2010-08-28 16:00,,2010-09-04 08:00,2010-09-16 16:00,,PT_Normal,,,,,exZnhty2aU2P4gY03FjXAw,BTFQ2Hxc00KF77xuVI8hCA,,,N,0,0,,,2010-08-08 11:54,2010-08-08 19:07,admin,admin,,,
278,89121,784,11570,841,1,0,N,N,N,CP_Drtn,TT_Task,DT_FixedDUR2,RV_OK,TK_NotStart,A12730,Plain Concrete Foundation,,136,0,16,0,0,0,16,0,0,0,,,,2010-09-18 08:00,2010-09-19 16:00,,2010-08-29 08:00,2010-08-30 16:00,2010-08-29 08:00,2010-08-30 16:00,2010-08-29 08:00,2010-08-30 16:00,,2010-09-18 08:00,2010-09-19 16:00,,PT_Normal,,,,,brEoBtJiZE275fdWngf2jQ,YZA2axZR5UuAzy4jqzZgkw,,,N,0,0,,,2010-08-08 11:54,2010-08-08 19:07,admin,admin,,,
279,89122,784,11570,841,1,0,N,N,N,CP_Drtn,TT_Task,DT_FixedDUR2,RV_OK,TK_NotStart,A12740,Reinforced Concrete Foundation,,136,0,56,0,0,0,56,0,0,0,,,,2010-09-23 08:00,2010-09-30 16:00,,2010-09-04 08:00,2010-09-11 16:00,2010-09-04 08:00,2010-09-11 16:00,2010-09-04 08:00,2010-09-11 16:00,,2010-09-23 08:00,2010-09-30 16:00,,PT_Normal,,,,,SSZ2wzeHcUmIOBAf+L4sOg,uxOZtbGMEUuWCg0SZl/ldA,,,N,0,0,,,2010-08-08 11:54,2010-08-08 19:07,admin,admin,,,
280,89123,784,11570,841,1,0,N,N,N,CP_Drtn,TT_Task,DT_FixedDUR2,RV_OK,TK_NotStart,A12750,under ground  brick works,,136,0,16,0,0,0,16,0,0,0,,,,2010-10-09 08:00,2010-10-10 16:00,,2010-09-19 08:00,2010-09-20 16:00,2010-09-19 08:00,2010-09-20 16:00,2010-09-19 08:00,2010-09-20 16:00,,2010-10-09 08:00,2010-10-10 16:00,,PT_Normal,,,,,PfTFdPw6l0uBsz40ygOpyQ,fksrMmN380+P9L9LcRMl0g,,,N,0,0,,,2010-08-08 11:54,2010-08-08 19:07,admin,admin,,,
281,89124,784,11570,841,1,0,N,N,N,CP_Drtn,TT_Task,DT_FixedDUR2,RV_OK,TK_NotStart,A12760,under ground insulation for RC & Brick work,,136,0,16,0,0,0,16,0,0,0,,,,2010-10-11 08:00,2010-10-12 16:00,,2010-09-21 08:00,2010-09-22 16:00,2010-09-21 08:00,2010-09-22 16:00,2010-09-21 08:00,2010-09-22 16:00,,2010-10-11 08:00,2010-10-12 16:00,,PT_Normal,,,,,nvYQGheHLE2RJKn8qxmMUw,OR5GhISf8UOfIOgOUZax1A,,,N,0,0,,,2010-08-08 11:54,2010-08-08 19:07,admin,admin,,,
282,89125,784,11570,841,1,0,N,N,N,CP_Drtn,TT_Task,DT_FixedDUR2,RV_OK,TK_NotStart,A12770,backfilling for under ground,,136,0,16,0,0,0,16,0,0,0,,,,2010-10-13 08:00,2010-10-14 16:00,,2010-09-23 08:00,2010-09-25 16:00,2010-09-23 08:00,2010-09-25 16:00,2010-09-23 08:00,2010-09-25 16:00,,2010-10-13 08:00,2010-10-14 16:00,,PT_Normal,,,,,4RP4j6RGU0i/hSGLvIFVIA,/48+gpzLJUWpRAWx1kqceQ,,,N,0,0,,,2010-08-08 11:54,2010-08-08 19:07,admin,admin,,,
283,89126,784,11570,841,1,0,N,N,N,CP_Drtn,TT_Task,DT_FixedDUR2,RV_OK,TK_NotStart,A12780,P.C slab on grade 10CM,,184,0,8,0,0,0,8,0,0,0,,,,2010-11-25 08:00,2010-11-25 16:00,,2010-10-25 08:00,2010-10-25 16:00,2010-10-25 08:00,2010-10-25 16:00,2010-10-25 08:00,2010-10-25 16:00,,2010-11-25 08:00,2010-11-25 16:00,,PT_Normal,,,,,HnUdQd8okUCKkPzzWcLarQ,WsvcwIAxoUCphpa/M0cLLw,,,N,0,0,,,2010-08-08 11:54,2010-08-08 19:07,admin,admin,,,
284,89127,784,11570,841,1,0,N,N,N,CP_Drtn,TT_Task,DT_FixedDUR2,RV_OK,TK_NotStart,A12790,moisture insulation with membrane sheets,,184,0,16,0,0,0,16,0,0,0,,,,2010-11-27 08:00,2010-11-28 16:00,,2010-10-26 08:00,2010-10-27 16:00,2010-10-26 08:00,2010-10-27 16:00,2010-10-26 08:00,2010-10-27 16:00,,2010-11-27 08:00,2010-11-28 16:00,,PT_Normal,,,,,ziFT+553wUGYLsWzkipjcA,HTxO2Ckib0SHLqZXrxsZRw,,,N,0,0,,,2010-08-08 11:54,2010-08-08 19:07,admin,admin,,,
285,89128,784,11570,841,1,0,N,N,N,CP_Drtn,TT_Task,DT_FixedDUR2,RV_OK,TK_NotStart,A12800,R.C slab on grade,,184,0,16,0,0,0,16,0,0,0,,,,2010-11-29 08:00,2010-11-30 16:00,,2010-10-28 08:00,2010-10-30 16:00,2010-10-28 08:00,2010-10-30 16:00,2010-10-28 08:00,2010-10-30 16:00,,2010-11-29 08:00,2010-11-30 16:00,,PT_Normal,,,,,oLrJe1gVn0SkoRUMXXs3Nw,W95mqSNEgUy12+Cxv4X+Gw,,,N,0,0,,,2010-08-08 11:54,2010-08-08 19:07,admin,admin,,,
286,89129,784,11571,841,1,0,N,N,N,CP_Drtn,TT_Task,DT_FixedDUR2,RV_OK,TK_NotStart,A12810,columns for ground floor,,136,0,48,0,0,0,48,0,0,0,,,,2010-10-02 08:00,2010-10-07 16:00,,2010-09-12 08:00,2010-09-18 16:00,2010-09-12 08:00,2010-09-18 16:00,2010-09-12 08:00,2010-09-18 16:00,,2010-10-02 08:00,2010-10-07 16:00,,PT_Normal,,,,,n1rscHOsTEyqAMTRGC87Aw,GyLT5RSnhkGhXtWNwVv80g,,,N,0,0,,,2010-08-08 11:54,2010-08-08 19:07,admin,admin,,,
287,89130,784,11571,841,1,0,N,N,N,CP_Drtn,TT_Task,DT_FixedDUR2,RV_OK,TK_NotStart,A12820,slab for ground floor,,136,0,72,0,0,0,72,0,0,0,,,,2010-10-16 08:00,2010-10-25 16:00,,2010-09-26 08:00,2010-10-05 16:00,2010-09-26 08:00,2010-10-05 16:00,2010-09-26 08:00,2010-10-05 16:00,,2010-10-16 08:00,2010-10-25 16:00,,PT_Normal,,,,,SPaN8HP9Ok+ej8ZulBoIgg,txezDK22YUSNYSmia/FV6g,,,N,0,0,,,2010-08-08 11:54,2010-08-08 19:07,admin,admin,,,
288,89131,784,11571,841,1,0,N,N,N,CP_Drtn,TT_Task,DT_FixedDUR2,RV_OK,TK_NotStart,A12830,columns for 1st floor,,136,0,48,0,0,0,48,0,0,0,,,,2010-10-27 08:00,2010-11-02 16:00,,2010-10-07 08:00,2010-10-13 16:00,2010-10-07 08:00,2010-10-13 16:00,2010-10-07 08:00,2010-10-13 16:00,,2010-10-27 08:00,2010-11-02 16:00,,PT_Normal,,,,,1PKQITWSikOLGX66lXTuwg,zZn+Nrtoikyq/pE+5TB/iA,,,N,0,0,,,2010-08-08 11:54,2010-08-08 19:07,admin,admin,,,
289,89132,784,11571,841,1,0,N,N,N,CP_Drtn,TT_Task,DT_FixedDUR2,RV_OK,TK_NotStart,A12840,slab for 1st floor,,136,0,72,0,0,0,72,0,0,0,,,,2010-11-03 08:00,2010-11-13 16:00,,2010-10-14 08:00,2010-10-24 16:00,2010-10-14 08:00,2010-10-24 16:00,2010-10-14 08:00,2010-10-24 16:00,,2010-11-03 08:00,2010-11-13 16:00,,PT_Normal,,,,,SDvCXTCg4Uy9iSYZw9iWig,o9cSeinKL0ahHV4LfVVW1w,,,N,0,0,,,2010-08-08 11:54,2010-08-08 19:07,admin,admin,,,
290,89133,784,11571,841,1,0,N,N,N,CP_Drtn,TT_Task,DT_FixedDUR2,RV_OK,TK_NotStart,A12850,columns for roof floor,,136,0,32,0,0,0,32,0,0,0,,,,2010-11-22 08:00,2010-11-25 16:00,,2010-10-28 08:00,2010-11-01 16:00,2010-10-28 08:00,2010-11-01 16:00,2010-10-28 08:00,2010-11-01 16:00,,2010-11-22 08:00,2010-11-25 16:00,,PT_Normal,,,,,FI8B8FvLpkSqWIq589spyw,9DWLHYP3m0CAYcQQ+OVD1Q,,,N,0,0,,,2010-08-08 11:54,2010-08-08 19:07,admin,admin,,,
291,89134,784,11571,841,1,0,N,N,N,CP_Drtn,TT_Task,DT_FixedDUR2,RV_OK,TK_NotStart,A12860,slab for roof floor,,136,0,48,0,0,0,48,0,0,0,,,,2010-11-27 08:00,2010-12-02 16:00,,2010-11-02 08:00,2010-11-08 16:00,2010-11-02 08:00,2010-11-08 16:00,2010-11-02 08:00,2010-11-08 16:00,,2010-11-27 08:00,2010-12-02 16:00,,PT_Normal,,,,,NFW72VcimEeUNEhPfOP8IQ,15Nc5ZcY8E2qhi5HbU99UQ,,,N,0,0,,,2010-08-08 11:54,2010-08-08 19:07,admin,admin,,,
292,89135,784,11571,841,1,0,N,N,N,CP_Drtn,TT_Task,DT_FixedDUR2,RV_OK,TK_NotStart,A12870,Brick works for ground floor,,184,0,40,0,0,0,40,0,0,0,,,,2010-11-20 08:00,2010-11-24 16:00,,2010-10-19 08:00,2010-10-24 16:00,2010-10-19 08:00,2010-10-24 16:00,2010-10-19 08:00,2010-10-24 16:00,,2010-11-20 08:00,2010-11-24 16:00,,PT_Normal,,,,,Qv39eNxEME+eoAsHpaUAWA,MB4INp+ZtkuEs4bjy4Q/cA,,,N,0,0,,,2010-08-08 11:54,2010-08-08 19:07,admin,admin,,,
293,89136,784,11572,841,1,0,N,N,N,CP_Drtn,TT_Task,DT_FixedDrtn,RV_OK,TK_NotStart,A12880,electrical conduits for ground floor's slab,,144,8,16,0,0,0,16,0,0,0,,,,2010-10-21 08:00,2010-10-23 16:00,,2010-09-30 08:00,2010-10-02 16:00,2010-09-30 08:00,2010-10-02 16:00,2010-09-30 08:00,2010-10-02 16:00,,2010-10-21 08:00,2010-10-23 16:00,,PT_Normal,,,,,0s7d2OACD0+tLWi8AclPpQ,J73eIPbwZEaWlDVeMCFCig,,,N,0,0,,,2010-08-08 11:54,2010-08-08 19:07,admin,admin,,,
294,89137,784,11572,841,1,0,N,N,N,CP_Drtn,TT_Task,DT_FixedDrtn,RV_OK,TK_NotStart,A12890,electrical conduits for 1st floor slab,,144,8,16,0,0,0,16,0,0,0,,,,2010-11-09 08:00,2010-11-10 16:00,,2010-10-19 08:00,2010-10-20 16:00,2010-10-19 08:00,2010-10-20 16:00,2010-10-19 08:00,2010-10-20 16:00,,2010-11-09 08:00,2010-11-10 16:00,,PT_Normal,,,,,cecO2JWN8E+niYRL+JVS8A,/fOIYhFGf0uPnnpEhlJqKA,,,N,0,0,,,2010-08-08 11:54,2010-08-08 19:07,admin,admin,,,
295,89138,784,11572,841,1,0,N,N,N,CP_Drtn,TT_Task,DT_FixedDrtn,RV_OK,TK_NotStart,A12900,electrical conduits for roof slab,,144,8,8,0,0,0,8,0,0,0,,,,2010-12-01 08:00,2010-12-01 16:00,,2010-11-06 08:00,2010-11-06 16:00,2010-11-06 08:00,2010-11-06 16:00,2010-11-06 08:00,2010-11-06 16:00,,2010-12-01 08:00,2010-12-01 16:00,,PT_Normal,,,,,JeL7gwrLMkebo1/gw3dYEA,TMTjSAXv+k+JV9zYOi1VUQ,,,N,0,0,,,2010-08-08 11:54,2010-08-08 19:07,admin,admin,,,
296,89139,784,11573,841,1,0,N,N,N,CP_Drtn,TT_Task,DT_FixedDUR2,RV_OK,TK_NotStart,A12910,Internal plastering for ground floor,,184,16,64,0,0,0,64,0,0,0,,,,2010-12-05 08:00,2010-12-13 16:00,,2010-11-03 08:00,2010-11-11 16:00,2010-11-03 08:00,2010-11-11 16:00,2010-11-03 08:00,2010-11-11 16:00,,2010-12-05 08:00,2010-12-13 16:00,,PT_Normal,,,,,9IuW8/CFr0GDDdveT6VuBg,s5dCuKE51EiF0TjFEPUO3g,,,N,0,0,,,2010-08-08 11:54,2010-08-08 19:07,admin,admin,,,
297,89140,784,11573,841,1,0,N,N,N,CP_Drtn,TT_Task,DT_FixedDUR2,RV_OK,TK_NotStart,A12920,External plastering,,136,0,64,0,0,0,64,0,0,0,,,,2010-12-20 08:00,2010-12-28 16:00,,2010-11-30 08:00,2010-12-08 16:00,2010-11-30 08:00,2010-12-08 16:00,2010-11-30 08:00,2010-12-08 16:00,,2010-12-20 08:00,2010-12-28 16:00,,PT_Normal,,,,,aFipsAHN/0OSPrQivOTugQ,+ZlDdNyHfEqRKoyQ4OMQJQ,,,N,0,0,,,2010-08-08 11:54,2010-08-08 19:07,admin,admin,,,
298,89141,784,11572,841,1,0,N,N,N,CP_Drtn,TT_Task,DT_FixedDrtn,RV_OK,TK_NotStart,A12930,plumbing connections under slab on grade,,368,184,16,0,0,0,16,0,0,0,,,,2010-11-23 08:00,2010-11-24 16:00,,2010-09-26 08:00,2010-09-27 16:00,2010-09-26 08:00,2010-09-27 16:00,2010-09-26 08:00,2010-09-27 16:00,,2010-11-23 08:00,2010-11-24 16:00,,PT_Normal,,,,,d7ROAX7CSU+HBx9bsYV2pg,P7MLtDD7+0qXN5cPkuVN0w,,,N,0,0,,,2010-08-08 11:54,2010-08-08 19:07,admin,admin,,,
299,89142,784,11609,841,0,0,N,N,N,CP_Drtn,TT_Mile,DT_FixedDrtn,RV_OK,TK_NotStart,A12940,Start Villa construction,,136,0,0,0,0,0,0,0,0,0,,,,2010-08-30 08:00,2010-08-30 08:00,,2010-08-10 08:00,2010-08-10 08:00,2010-08-10 08:00,2010-08-10 08:00,2010-08-10 08:00,2010-08-10 08:00,,2010-08-30 08:00,2010-08-30 08:00,,PT_Normal,,,,,PBW6eoYhSEmPAgjNd9sY1A,8o/6gy37OE2MPSkWwkXIfA,,,N,0,0,,,2010-08-08 11:54,2010-08-08 19:07,admin,admin,,,
300,89143,784,11609,841,0,0,N,N,N,CP_Drtn,TT_FinMile,DT_FixedDrtn,RV_OK,TK_NotStart,A12950,finish Villa construction,,136,136,0,0,0,0,0,0,0,0,,,,2010-12-28 16:00,2010-12-28 16:00,,2010-12-08 16:00,2010-12-08 16:00,2010-12-08 16:00,2010-12-08 16:00,2010-12-08 16:00,2010-12-08 16:00,,2010-12-28 16:00,2010-12-28 16:00,,PT_Normal,,,,,mDTXsvhurEWHJq1RGOCOfA,ARnSLy0ROU2d3oProFnP8Q,,,N,0,0,,,2010-08-08 11:54,2010-08-08 19:07,admin,admin,,,
301,89144,784,11609,841,0,0,N,N,N,CP_Drtn,TT_Mile,DT_FixedDrtn,RV_OK,TK_NotStart,A12960,IFC drawings,,136,0,0,0,0,0,0,0,0,0,,,,2010-07-11 08:00,2010-07-11 08:00,,2010-06-21 08:00,2010-06-21 08:00,2010-06-21 08:00,2010-06-21 08:00,2010-06-21 08:00,2010-06-21 08:00,,2010-07-11 08:00,2010-07-11 08:00,,PT_Normal,,,,,mTwChJw7rE26PZqoGPPHOQ,KKCAr57vM0KCnXwzIAcLWQ,,,N,0,0,,,2010-08-08 11:54,2010-08-08 19:07,admin,admin,,,
302,89145,784,11571,841,1,0,N,N,N,CP_Drtn,TT_Task,DT_FixedDUR2,RV_OK,TK_NotStart,A12970,pouring for ground floor's slab,,136,0,8,0,0,0,8,0,0,0,,,,2010-10-26 08:00,2010-10-26 16:00,,2010-10-06 08:00,2010-10-06 16:00,2010-10-06 08:00,2010-10-06 16:00,2010-10-06 08:00,2010-10-06 16:00,,2010-10-26 08:00,2010-10-26 16:00,,PT_Normal,,,,,fZoGdUM/ukq58z44HYNi6g,qIxmwHcHDE2o3li0mZPaMA,,,N,0,0,,,2010-08-08 11:54,2010-08-08 19:07,admin,admin,,,
303,89146,784,11571,841,1,0,N,N,N,CP_Drtn,TT_Task,DT_FixedDUR2,RV_OK,TK_NotStart,A12980,pouring for 1st floor's slab,,136,0,8,0,0,0,8,0,0,0,,,,2010-11-14 08:00,2010-11-14 16:00,,2010-10-25 08:00,2010-10-25 16:00,2010-10-25 08:00,2010-10-25 16:00,2010-10-25 08:00,2010-10-25 16:00,,2010-11-14 08:00,2010-11-14 16:00,,PT_Normal,,,,,8SMvcoYxbE2nDS2IG5qtng,NYNSKnhEzkSPDdgNAzbalg,,,N,0,0,,,2010-08-08 11:54,2010-08-08 19:07,admin,admin,,,
304,89147,784,11571,841,1,0,N,N,N,CP_Drtn,TT_Task,DT_FixedDUR2,RV_OK,TK_NotStart,A12990,pouring for roof floor's slab,,136,0,8,0,0,0,8,0,0,0,,,,2010-12-04 08:00,2010-12-04 16:00,,2010-11-09 08:00,2010-11-09 16:00,2010-11-09 08:00,2010-11-09 16:00,2010-11-09 08:00,2010-11-09 16:00,,2010-12-04 08:00,2010-12-04 16:00,,PT_Normal,,,,,KIe1XePQbkCnHoIDRMZiyA,XTM5kI6/CEWi6b4fGrbPiw,,,N,0,0,,,2010-08-08 11:54,2010-08-08 19:07,admin,admin,,,
305,89148,784,11571,841,1,0,N,N,N,CP_Drtn,TT_Task,DT_FixedDrtn,RV_OK,TK_NotStart,A13000,Fence work,,136,0,400,0,0,0,400,0,0,0,,,,2010-10-27 08:00,2010-12-28 16:00,,2010-10-07 08:00,2010-12-08 16:00,2010-10-07 08:00,2010-12-08 16:00,2010-10-07 08:00,2010-12-08 16:00,,2010-10-27 08:00,2010-12-28 16:00,,PT_Normal,,,,,ICyrQLIpv0CNJKRVqp752A,vx5aDDsZpEi0GvnojgMHPg,,,N,0,0,,,2010-08-08 11:54,2010-08-08 19:07,admin,admin,,,
306,89149,784,11609,841,1,0,N,N,N,CP_Drtn,TT_Task,DT_FixedDUR2,RV_OK,TK_NotStart,A13010,Fence Drawings IFC,,448,312,8,0,0,0,8,0,0,0,,,,2010-10-14 08:00,2010-10-14 16:00,,2010-08-10 08:00,2010-08-10 16:00,2010-08-10 08:00,2010-08-10 16:00,2010-08-10 08:00,2010-08-10 16:00,,2010-10-14 08:00,2010-10-14 16:00,,PT_Normal,,,,,qS/w3aQ9zUywXvQbwbNCJg,Ewk2vGsPUUK9Dw4M84USkg,,,N,0,0,,,2010-08-08 11:54,2010-08-08 19:07,admin,admin,,,
307,89150,784,11570,873,1,0,N,N,N,CP_Drtn,TT_Task,DT_FixedDUR2,RV_OK,TK_NotStart,A13020,backfilling between P.C Foundation,,104,0,16,0,0,0,16,0,0,0,,,,2010-09-21 08:00,2010-09-22 16:00,,2010-09-01 08:00,2010-09-02 16:00,2010-09-01 08:00,2010-09-02 16:00,2010-09-01 08:00,2010-09-02 16:00,,2010-09-21 08:00,2010-09-22 16:00,,PT_Normal,,,,,7f/kT/7bGEeOaxPjaBaw8w,bpqjLW3GNUyMWdEDC3296w,,,N,0,0,,,2010-08-08 11:54,2010-08-08 19:07,admin,admin,,,
308,89151,784,11571,873,1,0,N,N,N,CP_Drtn,TT_Task,DT_FixedDUR2,RV_OK,TK_NotStart,A13040,Brick works for 1st floor,,200,0,40,0,0,0,40,0,0,0,,,,2010-12-06 08:00,2010-12-11 16:00,,2010-11-07 08:00,2010-11-11 16:00,2010-11-07 08:00,2010-11-11 16:00,2010-11-07 08:00,2010-11-11 16:00,,2010-12-06 08:00,2010-12-11 16:00,,PT_Normal,,,,,aS67ITvJkkei/zNm2NW3Zg,4SE6xW4pkkyXhajWw5cPYg,,,N,0,0,,,2010-08-08 11:54,2010-08-08 19:07,admin,admin,,,
309,89152,784,11571,873,1,0,N,N,N,CP_Drtn,TT_Task,DT_FixedDUR2,RV_OK,TK_NotStart,A13050,Brick works for roof floor,,136,0,40,0,0,0,40,0,0,0,,,,2010-12-14 08:00,2010-12-19 16:00,,2010-11-24 08:00,2010-11-29 16:00,2010-11-24 08:00,2010-11-29 16:00,2010-11-24 08:00,2010-11-29 16:00,,2010-12-14 08:00,2010-12-19 16:00,,PT_Normal,,,,,I2mfvoIFPUmskBOCs0AbEg,JdmALZkIikOz0VdSkmzJRA,,,N,0,0,,,2010-08-08 11:54,2010-08-08 19:07,admin,admin,,,
310,89153,784,11573,873,1,0,N,N,N,CP_Drtn,TT_Task,DT_FixedDUR2,RV_OK,TK_NotStart,A13060,Internal plastering for 1st floor,,200,56,64,0,0,0,64,0,0,0,,,,2010-12-14 08:00,2010-12-22 16:00,,2010-11-15 08:00,2010-11-23 16:00,2010-11-15 08:00,2010-11-23 16:00,2010-11-15 08:00,2010-11-23 16:00,,2010-12-14 08:00,2010-12-22 16:00,,PT_Normal,,,,,XlYq3HH210GvzfgVo/cXDw,D3d+1OJiT0qaHNO9f3X6hg,,,N,0,0,,,2010-08-08 11:54,2010-08-08 19:07,admin,admin,,,
311,89154,784,11573,873,1,0,N,N,N,CP_Drtn,TT_Task,DT_FixedDUR2,RV_OK,TK_NotStart,A13070,Internal plastering for roof floor,,144,8,40,0,0,0,40,0,0,0,,,,2010-12-23 08:00,2010-12-28 16:00,,2010-12-02 08:00,2010-12-07 16:00,2010-12-02 08:00,2010-12-07 16:00,2010-12-02 08:00,2010-12-07 16:00,,2010-12-23 08:00,2010-12-28 16:00,,PT_Normal,,,,,jzE/843XfkimvUctEMrynQ,vDHKilJ9mESzfcvqRMVN7w,,,N,0,0,,,2010-08-08 11:54,2010-08-08 19:07,admin,admin,,,
312,89155,784,11572,873,1,0,N,N,N,CP_Drtn,TT_Task,DT_FixedDUR2,RV_OK,TK_NotStart,A13080,electrical conduits for ground floor walls,,216,0,16,0,0,0,16,0,0,0,,,,2010-12-02 08:00,2010-12-04 16:00,,2010-11-01 08:00,2010-11-02 16:00,2010-11-01 08:00,2010-11-02 16:00,2010-11-01 08:00,2010-11-02 16:00,,2010-12-02 08:00,2010-12-04 16:00,,PT_Normal,,,,,p5oH7Av2v029O8GluHM4+Q,IHVMktZ2wkaxba+GfwatGg,,,N,0,0,,,2010-08-08 11:54,2010-08-08 19:07,admin,admin,,,
313,89156,784,11572,873,1,0,N,N,N,CP_Drtn,TT_Task,DT_FixedDUR2,RV_OK,TK_NotStart,A13090,electrical conduits for 1st floor walls,,200,0,16,0,0,0,16,0,0,0,,,,2010-12-12 08:00,2010-12-13 16:00,,2010-11-13 08:00,2010-11-14 16:00,2010-11-13 08:00,2010-11-14 16:00,2010-11-13 08:00,2010-11-14 16:00,,2010-12-12 08:00,2010-12-13 16:00,,PT_Normal,,,,,Sm3lE+LiHUmkXRQZCD+seQ,y0pv2t7o9UmDj9aqwxvZdQ,,,N,0,0,,,2010-08-08 11:54,2010-08-08 19:07,admin,admin,,,
314,89157,784,11572,873,1,0,N,N,N,CP_Drtn,TT_Task,DT_FixedDUR2,RV_OK,TK_NotStart,A13100,electrical conduits for roof floor walls,,144,0,16,0,0,0,16,0,0,0,,,,2010-12-21 08:00,2010-12-22 16:00,,2010-11-30 08:00,2010-12-01 16:00,2010-11-30 08:00,2010-12-01 16:00,2010-11-30 08:00,2010-12-01 16:00,,2010-12-21 08:00,2010-12-22 16:00,,PT_Normal,,,,,SuGLg2zdW06TW9RtnsLZUw,qjYl5MpHrUSJDj9O74+/rg,,,N,0,0,,,2010-08-08 11:54,2010-08-08 19:07,admin,admin,,,
315,89158,784,11617,841,1,0,N,N,N,CP_Drtn,TT_Task,DT_FixedDUR2,RV_OK,TK_NotStart,A13110,excavation,,352,0,16,0,0,0,16,0,0,0,,,,2010-08-28 08:00,2010-08-29 16:00,,2010-07-07 08:00,2010-07-08 16:00,2010-07-07 08:00,2010-07-08 16:00,2010-07-07 08:00,2010-07-08 16:00,,2010-08-28 08:00,2010-08-29 16:00,,PT_Normal,,,,,NDeAHQrhXEiHbYwL266kiw,R3TNM3yzdUO76dQMhf/3Qw,,,N,0,0,,,2010-08-08 11:54,2010-08-08 11:54,admin,admin,,,
316,89159,784,11617,841,1,0,N,N,N,CP_Drtn,TT_Task,DT_FixedDUR2,RV_OK,TK_NotStart,A13120,soil replacement,,352,0,96,0,0,0,96,0,0,0,,,,2010-08-30 08:00,2010-09-12 16:00,,2010-07-10 08:00,2010-07-22 16:00,2010-07-10 08:00,2010-07-22 16:00,2010-07-10 08:00,2010-07-22 16:00,,2010-08-30 08:00,2010-09-12 16:00,,PT_Normal,,,,,qEJEPpFfakKNlRqSspFR3Q,olbk3N9Gi06NPrYsp9x03w,,,N,0,0,,,2010-08-08 11:54,2010-08-08 11:54,admin,admin,,,
317,89160,784,11577,841,1,0,N,N,N,CP_Drtn,TT_Task,DT_FixedDUR2,RV_OK,TK_NotStart,A13130,Plain Concrete Foundation,,352,0,16,0,0,0,16,0,0,0,,,,2010-09-13 08:00,2010-09-14 16:00,,2010-07-24 08:00,2010-07-25 16:00,2010-07-24 08:00,2010-07-25 16:00,2010-07-24 08:00,2010-07-25 16:00,,2010-09-13 08:00,2010-09-14 16:00,,PT_Normal,,,,,AIiBaFJOGUa5cSjKh9JADg,hGn66stRRU26I1qNTSI0Iw,,,N,0,0,,,2010-08-08 11:54,2010-08-08 11:54,admin,admin,,,
318,89161,784,11577,841,1,0,N,N,N,CP_Drtn,TT_Task,DT_FixedDUR2,RV_OK,TK_NotStart,A13140,Reinforced Concrete Foundation,,352,0,56,0,0,0,56,0,0,0,,,,2010-09-19 08:00,2010-09-26 16:00,,2010-07-29 08:00,2010-08-05 16:00,2010-07-29 08:00,2010-08-05 16:00,2010-07-29 08:00,2010-08-05 16:00,,2010-09-19 08:00,2010-09-26 16:00,,PT_Normal,,,,,TzqLbRqTfkCJF37eb4K7fg,DvGEJc+/vUuA0sZS0a7UJw,,,N,0,0,,,2010-08-08 11:54,2010-08-08 11:54,admin,admin,,,
319,89162,784,11577,841,1,0,N,N,N,CP_Drtn,TT_Task,DT_FixedDUR2,RV_OK,TK_NotStart,A13150,under ground  brick works,,352,0,16,0,0,0,16,0,0,0,,,,2010-10-04 08:00,2010-10-05 16:00,,2010-08-14 08:00,2010-08-15 16:00,2010-08-14 08:00,2010-08-15 16:00,2010-08-14 08:00,2010-08-15 16:00,,2010-10-04 08:00,2010-10-05 16:00,,PT_Normal,,,,,gfHL+NghYkSv//6nJj9iog,JNwW+g/EO0uoJ0R4gOJzSg,,,N,0,0,,,2010-08-08 11:54,2010-08-08 11:54,admin,admin,,,
320,89163,784,11577,841,1,0,N,N,N,CP_Drtn,TT_Task,DT_FixedDUR2,RV_OK,TK_NotStart,A13160,under ground insulation for RC & Brick work,,352,0,16,0,0,0,16,0,0,0,,,,2010-10-06 08:00,2010-10-07 16:00,,2010-08-16 08:00,2010-08-17 16:00,2010-08-16 08:00,2010-08-17 16:00,2010-08-16 08:00,2010-08-17 16:00,,2010-10-06 08:00,2010-10-07 16:00,,PT_Normal,,,,,yFOMhbv3fE68qh/WX9ArUw,90nY4pHAJ0+MgRqBtxlrng,,,N,0,0,,,2010-08-08 11:54,2010-08-08 11:54,admin,admin,,,
321,89164,784,11577,841,1,0,N,N,N,CP_Drtn,TT_Task,DT_FixedDUR2,RV_OK,TK_NotStart,A13170,backfilling for under ground,,352,0,32,0,0,0,32,0,0,0,,,,2010-10-09 08:00,2010-10-12 16:00,,2010-08-18 08:00,2010-08-22 16:00,2010-08-18 08:00,2010-08-22 16:00,2010-08-18 08:00,2010-08-22 16:00,,2010-10-09 08:00,2010-10-12 16:00,,PT_Normal,,,,,DjTc6f2yzU2vlfGI6+DUVA,GpWSRcCfzEuVNfadvOmIeQ,,,N,0,0,,,2010-08-08 11:54,2010-08-08 11:54,admin,admin,,,
322,89165,784,11577,841,1,0,N,N,N,CP_Drtn,TT_Task,DT_FixedDUR2,RV_OK,TK_NotStart,A13180,P.C slab on grade 10CM,,416,0,8,0,0,0,8,0,0,0,,,,2010-11-25 08:00,2010-11-25 16:00,,2010-09-21 08:00,2010-09-21 16:00,2010-09-21 08:00,2010-09-21 16:00,2010-09-21 08:00,2010-09-21 16:00,,2010-11-25 08:00,2010-11-25 16:00,,PT_Normal,,,,,ZNdiz/zLGUu63I8rvuhRlg,cOPUN0PoHUqR6tQ+ljWEEw,,,N,0,0,,,2010-08-08 11:54,2010-08-08 11:54,admin,admin,,,
323,89166,784,11577,841,1,0,N,N,N,CP_Drtn,TT_Task,DT_FixedDUR2,RV_OK,TK_NotStart,A13190,moisture insulation with membrane sheets,,416,0,16,0,0,0,16,0,0,0,,,,2010-11-27 08:00,2010-11-28 16:00,,2010-09-22 08:00,2010-09-23 16:00,2010-09-22 08:00,2010-09-23 16:00,2010-09-22 08:00,2010-09-23 16:00,,2010-11-27 08:00,2010-11-28 16:00,,PT_Normal,,,,,OlldL3BCHEKe88QW4rv/SA,p9dlsWItDEeGY+LrjE9diA,,,N,0,0,,,2010-08-08 11:54,2010-08-08 11:54,admin,admin,,,
324,89167,784,11577,841,1,0,N,N,N,CP_Drtn,TT_Task,DT_FixedDUR2,RV_OK,TK_NotStart,A13200,R.C slab on grade,,416,0,16,0,0,0,16,0,0,0,,,,2010-11-29 08:00,2010-11-30 16:00,,2010-09-25 08:00,2010-09-26 16:00,2010-09-25 08:00,2010-09-26 16:00,2010-09-25 08:00,2010-09-26 16:00,,2010-11-29 08:00,2010-11-30 16:00,,PT_Normal,,,,,MxvqSDnhB0OKN4Zmdf6qBQ,lyQlXuoagkmp7YuXCdiU8A,,,N,0,0,,,2010-08-08 11:54,2010-08-08 11:54,admin,admin,,,
325,89168,784,11578,841,1,0,N,N,N,CP_Drtn,TT_Task,DT_FixedDUR2,RV_OK,TK_NotStart,A13210,columns for ground floor,,352,0,48,0,0,0,48,0,0,0,,,,2010-09-27 08:00,2010-10-03 16:00,,2010-08-07 08:00,2010-08-12 16:00,2010-08-07 08:00,2010-08-12 16:00,2010-08-07 08:00,2010-08-12 16:00,,2010-09-27 08:00,2010-10-03 16:00,,PT_Normal,,,,,7sKqCa8cgECMG0yU1tfhpA,DYvU2MVPFk+0PMDQud24ww,,,N,0,0,,,2010-08-08 11:54,2010-08-08 11:54,admin,admin,,,
326,89169,784,11578,841,1,0,N,N,N,CP_Drtn,TT_Task,DT_FixedDUR2,RV_OK,TK_NotStart,A13220,slab for ground floor,,352,0,72,0,0,0,72,0,0,0,,,,2010-10-13 08:00,2010-10-23 16:00,,2010-08-23 08:00,2010-09-01 16:00,2010-08-23 08:00,2010-09-01 16:00,2010-08-23 08:00,2010-09-01 16:00,,2010-10-13 08:00,2010-10-23 16:00,,PT_Normal,,,,,uIzOCEt8sEiY1zCGExVl5Q,W+KtvF2ZJka4pcFRjmlGHQ,,,N,0,0,,,2010-08-08 11:54,2010-08-08 11:54,admin,admin,,,
327,89170,784,11578,841,1,0,N,N,N,CP_Drtn,TT_Task,DT_FixedDUR2,RV_OK,TK_NotStart,A13230,columns for 1st floor,,352,0,48,0,0,0,48,0,0,0,,,,2010-10-25 08:00,2010-10-31 16:00,,2010-09-04 08:00,2010-09-09 16:00,2010-09-04 08:00,2010-09-09 16:00,2010-09-04 08:00,2010-09-09 16:00,,2010-10-25 08:00,2010-10-31 16:00,,PT_Normal,,,,,t68a0DUjkUyCGWGJ1LbL8g,C+sCg2EM5E+cjP1C+SHrhg,,,N,0,0,,,2010-08-08 11:54,2010-08-08 11:54,admin,admin,,,
328,89171,784,11578,841,1,0,N,N,N,CP_Drtn,TT_Task,DT_FixedDUR2,RV_OK,TK_NotStart,A13240,slab for 1st floor,,352,0,72,0,0,0,72,0,0,0,,,,2010-11-01 08:00,2010-11-10 16:00,,2010-09-11 08:00,2010-09-20 16:00,2010-09-11 08:00,2010-09-20 16:00,2010-09-11 08:00,2010-09-20 16:00,,2010-11-01 08:00,2010-11-10 16:00,,PT_Normal,,,,,dd0orInJmEyELHFGEtqECw,OSG26RUpp0WENFHxpX/i8g,,,N,0,0,,,2010-08-08 11:54,2010-08-08 11:54,admin,admin,,,
329,89172,784,11578,841,1,0,N,N,N,CP_Drtn,TT_Task,DT_FixedDUR2,RV_OK,TK_NotStart,A13250,columns for roof floor,,352,0,32,0,0,0,32,0,0,0,,,,2010-11-20 08:00,2010-11-23 16:00,,2010-09-25 08:00,2010-09-28 16:00,2010-09-25 08:00,2010-09-28 16:00,2010-09-25 08:00,2010-09-28 16:00,,2010-11-20 08:00,2010-11-23 16:00,,PT_Normal,,,,,WOifCdDzx0Gfpwm5FFeFTQ,CIA1H2lF1Eipy2/3R4jSZg,,,N,0,0,,,2010-08-08 11:54,2010-08-08 11:54,admin,admin,,,
330,89173,784,11578,841,1,0,N,N,N,CP_Drtn,TT_Task,DT_FixedDUR2,RV_OK,TK_NotStart,A13260,slab for roof floor,,352,0,48,0,0,0,48,0,0,0,,,,2010-11-24 08:00,2010-11-30 16:00,,2010-09-29 08:00,2010-10-05 16:00,2010-09-29 08:00,2010-10-05 16:00,2010-09-29 08:00,2010-10-05 16:00,,2010-11-24 08:00,2010-11-30 16:00,,PT_Normal,,,,,ZnXS3kY9Z0e+Eh58Q+N0/A,hPu25p5PeEieAgio9RotTw,,,N,0,0,,,2010-08-08 11:54,2010-08-08 11:54,admin,admin,,,
331,89174,784,11578,841,1,0,N,N,N,CP_Drtn,TT_Task,DT_FixedDUR2,RV_OK,TK_NotStart,A13270,Brick works for ground floor,,416,0,40,0,0,0,40,0,0,0,,,,2010-11-20 08:00,2010-11-24 16:00,,2010-09-15 08:00,2010-09-20 16:00,2010-09-15 08:00,2010-09-20 16:00,2010-09-15 08:00,2010-09-20 16:00,,2010-11-20 08:00,2010-11-24 16:00,,PT_Normal,,,,,Dmmjjj8xhke37klsGPE2+w,82VQjNyoGUG4lvrTA+8q5A,,,N,0,0,,,2010-08-08 11:54,2010-08-08 11:54,admin,admin,,,
332,89175,784,11579,841,1,0,N,N,N,CP_Drtn,TT_Task,DT_FixedDrtn,RV_OK,TK_NotStart,A13280,electrical conduits for ground floor's slab,,360,8,16,0,0,0,16,0,0,0,,,,2010-10-19 08:00,2010-10-20 16:00,,2010-08-28 08:00,2010-08-29 16:00,2010-08-28 08:00,2010-08-29 16:00,2010-08-28 08:00,2010-08-29 16:00,,2010-10-19 08:00,2010-10-20 16:00,,PT_Normal,,,,,EsXB8H0qi0WPkWncss7+9A,JH14ZrZa5EKYF7uKV7Xznw,,,N,0,0,,,2010-08-08 11:54,2010-08-08 11:54,admin,admin,,,
333,89176,784,11579,841,1,0,N,N,N,CP_Drtn,TT_Task,DT_FixedDrtn,RV_OK,TK_NotStart,A13290,electrical conduits for 1st floor slab,,360,8,16,0,0,0,16,0,0,0,,,,2010-11-07 08:00,2010-11-08 16:00,,2010-09-15 08:00,2010-09-16 16:00,2010-09-15 08:00,2010-09-16 16:00,2010-09-15 08:00,2010-09-16 16:00,,2010-11-07 08:00,2010-11-08 16:00,,PT_Normal,,,,,77Rweo7e5UeyWOFV95R13A,74Iqj17s10STe9TEsidkcw,,,N,0,0,,,2010-08-08 11:54,2010-08-08 11:54,admin,admin,,,
334,89177,784,11579,841,1,0,N,N,N,CP_Drtn,TT_Task,DT_FixedDrtn,RV_OK,TK_NotStart,A13300,electrical conduits for roof slab,,360,8,8,0,0,0,8,0,0,0,,,,2010-11-29 08:00,2010-11-29 16:00,,2010-10-03 08:00,2010-10-03 16:00,2010-10-03 08:00,2010-10-03 16:00,2010-10-03 08:00,2010-10-03 16:00,,2010-11-29 08:00,2010-11-29 16:00,,PT_Normal,,,,,VTNJwQc9IEuY9sV8HVEB5w,jlDGG74onUehTH9YWfhjuw,,,N,0,0,,,2010-08-08 11:54,2010-08-08 11:54,admin,admin,,,
335,89178,784,11580,841,1,0,N,N,N,CP_Drtn,TT_Task,DT_FixedDUR2,RV_OK,TK_NotStart,A13310,Internal plastering for ground floor,,416,16,64,0,0,0,64,0,0,0,,,,2010-12-05 08:00,2010-12-13 16:00,,2010-09-30 08:00,2010-10-09 16:00,2010-09-30 08:00,2010-10-09 16:00,2010-09-30 08:00,2010-10-09 16:00,,2010-12-05 08:00,2010-12-13 16:00,,PT_Normal,,,,,oooRb1AFrkCZVvuipEq+DQ,f3jeNT1nJE+c5lm3M0mkFQ,,,N,0,0,,,2010-08-08 11:54,2010-08-08 11:54,admin,admin,,,
336,89179,784,11580,841,1,0,N,N,N,CP_Drtn,TT_Task,DT_FixedDUR2,RV_OK,TK_NotStart,A13320,External plastering,,352,0,80,0,0,0,80,0,0,0,,,,2010-12-18 08:00,2010-12-28 16:00,,2010-10-23 08:00,2010-11-02 16:00,2010-10-23 08:00,2010-11-02 16:00,2010-10-23 08:00,2010-11-02 16:00,,2010-12-18 08:00,2010-12-28 16:00,,PT_Normal,,,,,8EH5UkbVb0K9G2gI5svy1A,1t5xH0Z8XkS/Dq2jauSd5A,,,N,0,0,,,2010-08-08 11:54,2010-08-08 11:54,admin,admin,,,
337,89180,784,11579,841,1,0,N,N,N,CP_Drtn,TT_Task,DT_FixedDrtn,RV_OK,TK_NotStart,A13330,plumbing connections under slab on grade,,600,184,16,0,0,0,16,0,0,0,,,,2010-11-23 08:00,2010-11-24 16:00,,2010-08-23 08:00,2010-08-24 16:00,2010-08-23 08:00,2010-08-24 16:00,2010-08-23 08:00,2010-08-24 16:00,,2010-11-23 08:00,2010-11-24 16:00,,PT_Normal,,,,,NwjKdiUaWU+GQGPTyqs9sQ,MdefTGyqL0mv2GPYK5Xqeg,,,N,0,0,,,2010-08-08 11:54,2010-08-08 11:54,admin,admin,,,
338,89181,784,11616,841,0,0,N,N,N,CP_Drtn,TT_Mile,DT_FixedDrtn,RV_OK,TK_NotStart,A13340,Start Villa construction,,352,0,0,0,0,0,0,0,0,0,,,,2010-08-11 08:00,2010-08-11 08:00,,2010-06-21 08:00,2010-06-21 08:00,2010-06-21 08:00,2010-06-21 08:00,2010-06-21 08:00,2010-06-21 08:00,,2010-08-11 08:00,2010-08-11 08:00,,PT_Normal,,,,,pJ/y7wXTe02hIIpFfVBZHA,P+mx5C6tjE+3haelspixPQ,,,N,0,0,,,2010-08-08 11:54,2010-08-08 11:54,admin,admin,,,
339,89182,784,11616,841,0,0,N,N,N,CP_Drtn,TT_FinMile,DT_FixedDrtn,RV_OK,TK_NotStart,A13350,finish Villa construction,,352,352,0,0,0,0,0,0,0,0,,,,2010-12-28 16:00,2010-12-28 16:00,,2010-11-02 16:00,2010-11-02 16:00,2010-11-02 16:00,2010-11-02 16:00,2010-11-02 16:00,2010-11-02 16:00,,2010-12-28 16:00,2010-12-28 16:00,,PT_Normal,,,,,sZ1gqptM8kqmJ98x4eLc+Q,8eDhE+m6z0unUmlGDdpvZg,,,N,0,0,,,2010-08-08 11:54,2010-08-08 11:54,admin,admin,,,
340,89183,784,11616,841,0,0,N,N,N,CP_Drtn,TT_Mile,DT_FixedDrtn,RV_OK,TK_NotStart,A13360,IFC drawings,,352,0,0,0,0,0,0,0,0,0,,,,2010-08-11 08:00,2010-08-11 08:00,,2010-06-21 08:00,2010-06-21 08:00,2010-06-21 08:00,2010-06-21 08:00,2010-06-21 08:00,2010-06-21 08:00,,2010-08-11 08:00,2010-08-11 08:00,,PT_Normal,,,,,DqvDKDKufk2K//ln9Hb/5Q,PSZ6WAYfhUKMCgZbuMqjng,,,N,0,0,,,2010-08-08 11:54,2010-08-08 11:54,admin,admin,,,
341,89184,784,11578,841,1,0,N,N,N,CP_Drtn,TT_Task,DT_FixedDUR2,RV_OK,TK_NotStart,A13370,pouring for ground floor's slab,,352,0,8,0,0,0,8,0,0,0,,,,2010-10-24 08:00,2010-10-24 16:00,,2010-09-02 08:00,2010-09-02 16:00,2010-09-02 08:00,2010-09-02 16:00,2010-09-02 08:00,2010-09-02 16:00,,2010-10-24 08:00,2010-10-24 16:00,,PT_Normal,,,,,JNbYqEfD3Ued8aSapRVHzA,jr7OwDGe+0q9Izf8AZpEVg,,,N,0,0,,,2010-08-08 11:54,2010-08-08 11:54,admin,admin,,,
342,89185,784,11578,841,1,0,N,N,N,CP_Drtn,TT_Task,DT_FixedDUR2,RV_OK,TK_NotStart,A13380,pouring for 1st floor's slab,,352,0,8,0,0,0,8,0,0,0,,,,2010-11-11 08:00,2010-11-11 16:00,,2010-09-21 08:00,2010-09-21 16:00,2010-09-21 08:00,2010-09-21 16:00,2010-09-21 08:00,2010-09-21 16:00,,2010-11-11 08:00,2010-11-11 16:00,,PT_Normal,,,,,is79QvmRm0W0RiqeRNGd5A,ojkd5ORbYEm5JasxAPXQRQ,,,N,0,0,,,2010-08-08 11:54,2010-08-08 11:54,admin,admin,,,
343,89186,784,11578,841,1,0,N,N,N,CP_Drtn,TT_Task,DT_FixedDUR2,RV_OK,TK_NotStart,A13390,pouring for roof floor's slab,,352,0,8,0,0,0,8,0,0,0,,,,2010-12-01 08:00,2010-12-01 16:00,,2010-10-06 08:00,2010-10-06 16:00,2010-10-06 08:00,2010-10-06 16:00,2010-10-06 08:00,2010-10-06 16:00,,2010-12-01 08:00,2010-12-01 16:00,,PT_Normal,,,,,KSm1CgyXCU+GMuRITGjZsQ,SACJHqMoB0iyjXHyz3mrqA,,,N,0,0,,,2010-08-08 11:54,2010-08-08 11:54,admin,admin,,,
344,89187,784,11578,841,1,0,N,N,N,CP_Drtn,TT_Task,DT_FixedDrtn,RV_OK,TK_NotStart,A13400,Fence work,,368,16,400,0,0,0,400,0,0,0,,,,2010-10-27 08:00,2010-12-28 16:00,,2010-09-04 08:00,2010-10-31 16:00,2010-09-04 08:00,2010-10-31 16:00,2010-09-04 08:00,2010-10-31 16:00,,2010-10-27 08:00,2010-12-28 16:00,,PT_Normal,,,,,Wp8qlTJF0EuTtyMKvNv7xQ,pj49oOZlwkSEU6ApSkmhVQ,,,N,0,0,,,2010-08-08 11:54,2010-08-08 11:54,admin,admin,,,
345,89188,784,11616,841,1,0,N,N,N,CP_Drtn,TT_Task,DT_FixedDUR2,RV_OK,TK_NotStart,A13410,Fence Drawings IFC,,792,424,8,0,0,0,8,0,0,0,,,,2010-10-14 08:00,2010-10-14 16:00,,2010-06-21 08:00,2010-06-21 16:00,2010-06-21 08:00,2010-06-21 16:00,2010-06-21 08:00,2010-06-21 16:00,,2010-10-14 08:00,2010-10-14 16:00,,PT_Normal,,,,,QRyKsqY8iEyu45GqZt75ew,TZp1iY5VGk2DPlVArCc85g,,,N,0,0,,,2010-08-08 11:54,2010-08-08 11:54,admin,admin,,,
346,89189,784,11577,873,1,0,N,N,N,CP_Drtn,TT_Task,DT_FixedDUR2,RV_OK,TK_NotStart,A13420,backfilling between P.C Foundation,,320,0,16,0,0,0,16,0,0,0,,,,2010-09-16 08:00,2010-09-18 16:00,,2010-07-27 08:00,2010-07-28 16:00,2010-07-27 08:00,2010-07-28 16:00,2010-07-27 08:00,2010-07-28 16:00,,2010-09-16 08:00,2010-09-18 16:00,,PT_Normal,,,,,2L9mJ5AMDEiOYN2A14h55w,0UEJlEeWJEqbWGYtMaSNeQ,,,N,0,0,,,2010-08-08 11:54,2010-08-08 11:54,admin,admin,,,
347,89190,784,11578,873,1,0,N,N,N,CP_Drtn,TT_Task,DT_FixedDUR2,RV_OK,TK_NotStart,A13440,Brick works for 1st floor,,432,0,40,0,0,0,40,0,0,0,,,,2010-12-06 08:00,2010-12-11 16:00,,2010-10-04 08:00,2010-10-09 16:00,2010-10-04 08:00,2010-10-09 16:00,2010-10-04 08:00,2010-10-09 16:00,,2010-12-06 08:00,2010-12-11 16:00,,PT_Normal,,,,,3iWboXU2D0i1rniQBcwHjg,M8VTYmjp1UeeDye6NQLPCg,,,N,0,0,,,2010-08-08 11:54,2010-08-08 11:54,admin,admin,,,
348,89191,784,11578,873,1,0,N,N,N,CP_Drtn,TT_Task,DT_FixedDUR2,RV_OK,TK_NotStart,A13450,Brick works for roof floor,,384,0,40,0,0,0,40,0,0,0,,,,2010-12-12 08:00,2010-12-16 16:00,,2010-10-17 08:00,2010-10-21 16:00,2010-10-17 08:00,2010-10-21 16:00,2010-10-17 08:00,2010-10-21 16:00,,2010-12-12 08:00,2010-12-16 16:00,,PT_Normal,,,,,3U+jZ7TSS0a74vp8Hh3IKw,I5Z+AbVfOka0zQnFc7P2og,,,N,0,0,,,2010-08-08 11:54,2010-08-08 11:54,admin,admin,,,
349,89192,784,11580,873,1,0,N,N,N,CP_Drtn,TT_Task,DT_FixedDUR2,RV_OK,TK_NotStart,A13460,Internal plastering for 1st floor,,432,24,64,0,0,0,64,0,0,0,,,,2010-12-14 08:00,2010-12-22 16:00,,2010-10-12 08:00,2010-10-20 16:00,2010-10-12 08:00,2010-10-20 16:00,2010-10-12 08:00,2010-10-20 16:00,,2010-12-14 08:00,2010-12-22 16:00,,PT_Normal,,,,,9XanpKzqaEWMNfomjXOF3w,lXcx/TrK5EGc+3utfL7ufw,,,N,0,0,,,2010-08-08 11:54,2010-08-08 11:54,admin,admin,,,
350,89193,784,11580,873,1,0,N,N,N,CP_Drtn,TT_Task,DT_FixedDUR2,RV_OK,TK_NotStart,A13470,Internal plastering for roof floor,,408,24,40,0,0,0,40,0,0,0,,,,2010-12-23 08:00,2010-12-28 16:00,,2010-10-25 08:00,2010-10-30 16:00,2010-10-25 08:00,2010-10-30 16:00,2010-10-25 08:00,2010-10-30 16:00,,2010-12-23 08:00,2010-12-28 16:00,,PT_Normal,,,,,Pek7cDf8ZkC6RvB3/RSrDQ,IyaVAAbbGUm0BtRqJfbW6w,,,N,0,0,,,2010-08-08 11:54,2010-08-08 11:54,admin,admin,,,
351,89194,784,11579,873,1,0,N,N,N,CP_Drtn,TT_Task,DT_FixedDUR2,RV_OK,TK_NotStart,A13480,electrical conduits for ground floor walls,,448,0,16,0,0,0,16,0,0,0,,,,2010-12-02 08:00,2010-12-04 16:00,,2010-09-28 08:00,2010-09-29 16:00,2010-09-28 08:00,2010-09-29 16:00,2010-09-28 08:00,2010-09-29 16:00,,2010-12-02 08:00,2010-12-04 16:00,,PT_Normal,,,,,GhDnT808zkyDQkOxlXng3w,qIWWuwOWOU2tc71T+/HxZg,,,N,0,0,,,2010-08-08 11:54,2010-08-08 11:54,admin,admin,,,
352,89195,784,11579,873,1,0,N,N,N,CP_Drtn,TT_Task,DT_FixedDUR2,RV_OK,TK_NotStart,A13490,electrical conduits for 1st floor walls,,432,0,16,0,0,0,16,0,0,0,,,,2010-12-12 08:00,2010-12-13 16:00,,2010-10-10 08:00,2010-10-11 16:00,2010-10-10 08:00,2010-10-11 16:00,2010-10-10 08:00,2010-10-11 16:00,,2010-12-12 08:00,2010-12-13 16:00,,PT_Normal,,,,,S8t02limIUasQy2pY3MKDA,z0Xhfc2z8EKfnXY6gJnZmg,,,N,0,0,,,2010-08-08 11:54,2010-08-08 11:54,admin,admin,,,
353,89196,784,11579,873,1,0,N,N,N,CP_Drtn,TT_Task,DT_FixedDUR2,RV_OK,TK_NotStart,A13500,electrical conduits for roof floor walls,,408,0,16,0,0,0,16,0,0,0,,,,2010-12-21 08:00,2010-12-22 16:00,,2010-10-23 08:00,2010-10-24 16:00,2010-10-23 08:00,2010-10-24 16:00,2010-10-23 08:00,2010-10-24 16:00,,2010-12-21 08:00,2010-12-22 16:00,,PT_Normal,,,,,U+vGgr7sPEa5q2yn8HWX5g,8c2RU0mgxU6E+A+HTvIAvg,,,N,0,0,,,2010-08-08 11:54,2010-08-08 11:54,admin,admin,,,
354,89197,784,11624,841,1,0,N,N,N,CP_Drtn,TT_Task,DT_FixedDUR2,RV_OK,TK_NotStart,A13510,excavation,,1008,0,0,0,0,0,0,0,0,0,,,,2010-12-06 16:00,2010-12-06 16:00,,2010-07-08 08:00,2010-07-08 08:00,2010-07-08 08:00,2010-07-08 08:00,2010-07-08 08:00,2010-07-08 08:00,,2010-12-06 16:00,2010-12-06 16:00,,PT_Normal,,,,,KAwlt31sWUWAHjfseLgdlg,AII/mqfHlEG1z9TiqijJlQ,,,N,0,0,,,2010-08-08 11:54,2010-08-08 11:54,admin,admin,,,
355,89198,784,11624,841,1,0,N,N,N,CP_Drtn,TT_Task,DT_FixedDUR2,RV_OK,TK_NotStart,A13520,soil replacement,,1008,0,112,0,0,0,112,0,0,0,,,,2010-12-07 08:00,2010-12-22 16:00,,2010-07-08 08:00,2010-07-24 16:00,2010-07-08 08:00,2010-07-24 16:00,2010-07-08 08:00,2010-07-24 16:00,,2010-12-07 08:00,2010-12-22 16:00,,PT_Normal,,,,,yXw9Cw5GyUqZ/z5bgLfZsg,eEOQNFmwyk2ZCvRHlMKsvw,,,N,0,0,,,2010-08-08 11:54,2010-08-08 11:54,admin,admin,,,
356,89199,784,11584,841,1,0,N,N,N,CP_Drtn,TT_Task,DT_FixedDUR2,RV_OK,TK_NotStart,A13530,Plain Concrete Foundation,,1008,0,16,0,0,0,16,0,0,0,,,,2010-12-23 08:00,2010-12-25 16:00,,2010-07-25 08:00,2010-07-26 16:00,2010-07-25 08:00,2010-07-26 16:00,2010-07-25 08:00,2010-07-26 16:00,,2010-12-23 08:00,2010-12-25 16:00,,PT_Normal,,,,,mMiXQn5uU0GN27eFCtRM2A,0uDrUp2lUE6XOMFr2A33qg,,,N,0,0,,,2010-08-08 11:54,2010-08-08 11:54,admin,admin,,,
357,89200,784,11584,841,1,0,N,N,N,CP_Drtn,TT_Task,DT_FixedDUR2,RV_OK,TK_NotStart,A13540,Reinforced Concrete Foundation,,616,0,56,0,0,0,56,0,0,0,,,,2010-09-19 08:00,2010-09-26 16:00,,2010-06-21 08:00,2010-06-28 16:00,2010-06-21 08:00,2010-06-28 16:00,2010-06-21 08:00,2010-06-28 16:00,,2010-09-19 08:00,2010-09-26 16:00,,PT_Normal,,,,,CsfwjkJhvUeS152fUjc7CA,XHIVQP19K0W3rmpFVhxO5g,,,N,0,0,,,2010-08-08 11:54,2010-08-08 11:54,admin,admin,,,
358,89201,784,11584,841,1,0,N,N,N,CP_Drtn,TT_Task,DT_FixedDUR2,RV_OK,TK_NotStart,A13550,under ground  brick works,,616,0,16,0,0,0,16,0,0,0,,,,2010-10-04 08:00,2010-10-05 16:00,,2010-07-06 08:00,2010-07-07 16:00,2010-07-06 08:00,2010-07-07 16:00,2010-07-06 08:00,2010-07-07 16:00,,2010-10-04 08:00,2010-10-05 16:00,,PT_Normal,,,,,NL+SqeXAQUSlHXIcfO6LlA,hD7fhCY9skmGdDK3iA1bMg,,,N,0,0,,,2010-08-08 11:54,2010-08-08 11:54,admin,admin,,,
359,89202,784,11584,841,1,0,N,N,N,CP_Drtn,TT_Task,DT_FixedDUR2,RV_OK,TK_NotStart,A13560,under ground insulation for RC & Brick work,,616,0,16,0,0,0,16,0,0,0,,,,2010-10-06 08:00,2010-10-07 16:00,,2010-07-08 08:00,2010-07-10 16:00,2010-07-08 08:00,2010-07-10 16:00,2010-07-08 08:00,2010-07-10 16:00,,2010-10-06 08:00,2010-10-07 16:00,,PT_Normal,,,,,GSSkUyR1lkmtBIYfCeZvRg,bdDxtV8M302PjCLrrUMvqA,,,N,0,0,,,2010-08-08 11:54,2010-08-08 11:54,admin,admin,,,
360,89203,784,11584,841,1,0,N,N,N,CP_Drtn,TT_Task,DT_FixedDUR2,RV_OK,TK_NotStart,A13570,backfilling for under ground,,616,0,32,0,0,0,32,0,0,0,,,,2010-10-09 08:00,2010-10-12 16:00,,2010-07-11 08:00,2010-07-14 16:00,2010-07-11 08:00,2010-07-14 16:00,2010-07-11 08:00,2010-07-14 16:00,,2010-10-09 08:00,2010-10-12 16:00,,PT_Normal,,,,,fp0lqj1XI0+yvaJL+Gb/Dg,rO0FiPuMX0iPufGgW7dxIg,,,N,0,0,,,2010-08-08 11:54,2010-08-08 11:54,admin,admin,,,
361,89204,784,11584,841,1,0,N,N,N,CP_Drtn,TT_Task,DT_FixedDUR2,RV_OK,TK_NotStart,A13580,P.C slab on grade 10CM,,680,0,8,0,0,0,8,0,0,0,,,,2010-11-25 08:00,2010-11-25 16:00,,2010-08-14 08:00,2010-08-14 16:00,2010-08-14 08:00,2010-08-14 16:00,2010-08-14 08:00,2010-08-14 16:00,,2010-11-25 08:00,2010-11-25 16:00,,PT_Normal,,,,,d/hv3EqizUCHOi9zer17Ig,LEWfIFgPAkuTZkCvHznUtA,,,N,0,0,,,2010-08-08 11:54,2010-08-08 11:54,admin,admin,,,
362,89205,784,11584,841,1,0,N,N,N,CP_Drtn,TT_Task,DT_FixedDUR2,RV_OK,TK_NotStart,A13590,moisture insulation with membrane sheets,,680,0,16,0,0,0,16,0,0,0,,,,2010-11-27 08:00,2010-11-28 16:00,,2010-08-15 08:00,2010-08-16 16:00,2010-08-15 08:00,2010-08-16 16:00,2010-08-15 08:00,2010-08-16 16:00,,2010-11-27 08:00,2010-11-28 16:00,,PT_Normal,,,,,Y8Po9sRMtkyXRljVo3UGbQ,0KAe2gFWSkG44E2dApWJgg,,,N,0,0,,,2010-08-08 11:54,2010-08-08 11:54,admin,admin,,,
363,89206,784,11584,841,1,0,N,N,N,CP_Drtn,TT_Task,DT_FixedDUR2,RV_OK,TK_NotStart,A13600,R.C slab on grade,,680,0,16,0,0,0,16,0,0,0,,,,2010-11-29 08:00,2010-11-30 16:00,,2010-08-17 08:00,2010-08-18 16:00,2010-08-17 08:00,2010-08-18 16:00,2010-08-17 08:00,2010-08-18 16:00,,2010-11-29 08:00,2010-11-30 16:00,,PT_Normal,,,,,PXTX1Usqo02j10/PrfWTkQ,EUyO56q9X0KwB48f0INPJQ,,,N,0,0,,,2010-08-08 11:54,2010-08-08 11:54,admin,admin,,,
364,89207,784,11585,841,1,0,N,N,N,CP_Drtn,TT_Task,DT_FixedDUR2,RV_OK,TK_NotStart,A13610,columns for ground floor,,616,0,48,0,0,0,48,0,0,0,,,,2010-09-27 08:00,2010-10-03 16:00,,2010-06-29 08:00,2010-07-05 16:00,2010-06-29 08:00,2010-07-05 16:00,2010-06-29 08:00,2010-07-05 16:00,,2010-09-27 08:00,2010-10-03 16:00,,PT_Normal,,,,,7exOR6fooEyTFG585164Qg,WZLY/VLYsUu/HSP7Xs4rWg,,,N,0,0,,,2010-08-08 11:54,2010-08-08 11:54,admin,admin,,,
365,89208,784,11585,841,1,0,N,N,N,CP_Drtn,TT_Task,DT_FixedDUR2,RV_OK,TK_NotStart,A13620,slab for ground floor,,616,0,72,0,0,0,72,0,0,0,,,,2010-10-13 08:00,2010-10-23 16:00,,2010-07-15 08:00,2010-07-25 16:00,2010-07-15 08:00,2010-07-25 16:00,2010-07-15 08:00,2010-07-25 16:00,,2010-10-13 08:00,2010-10-23 16:00,,PT_Normal,,,,,1Mzw9JpdyUCVGcaBdll3rQ,hiEqHLAR+EuGtoWHBrMVXw,,,N,0,0,,,2010-08-08 11:54,2010-08-08 11:54,admin,admin,,,
366,89209,784,11585,841,1,0,N,N,N,CP_Drtn,TT_Task,DT_FixedDUR2,RV_OK,TK_NotStart,A13630,columns for 1st floor,,616,0,48,0,0,0,48,0,0,0,,,,2010-10-25 08:00,2010-10-31 16:00,,2010-07-27 08:00,2010-08-02 16:00,2010-07-27 08:00,2010-08-02 16:00,2010-07-27 08:00,2010-08-02 16:00,,2010-10-25 08:00,2010-10-31 16:00,,PT_Normal,,,,,gTmkdbExXUuyMBRH9y1D4w,2404/r+0G0yu/4M/ZtuxKw,,,N,0,0,,,2010-08-08 11:54,2010-08-08 11:54,admin,admin,,,
367,89210,784,11585,841,1,0,N,N,N,CP_Drtn,TT_Task,DT_FixedDUR2,RV_OK,TK_NotStart,A13640,slab for 1st floor,,616,0,72,0,0,0,72,0,0,0,,,,2010-11-01 08:00,2010-11-10 16:00,,2010-08-03 08:00,2010-08-12 16:00,2010-08-03 08:00,2010-08-12 16:00,2010-08-03 08:00,2010-08-12 16:00,,2010-11-01 08:00,2010-11-10 16:00,,PT_Normal,,,,,iZBMo/XEKkyxXEErirVqrw,gyoPI+QC6UW4lehrjuy17Q,,,N,0,0,,,2010-08-08 11:54,2010-08-08 11:54,admin,admin,,,
368,89211,784,11585,841,1,0,N,N,N,CP_Drtn,TT_Task,DT_FixedDUR2,RV_OK,TK_NotStart,A13650,columns for roof floor,,616,0,32,0,0,0,32,0,0,0,,,,2010-11-20 08:00,2010-11-23 16:00,,2010-08-17 08:00,2010-08-21 16:00,2010-08-17 08:00,2010-08-21 16:00,2010-08-17 08:00,2010-08-21 16:00,,2010-11-20 08:00,2010-11-23 16:00,,PT_Normal,,,,,hmRiqdv8JUybFVnkE7/Wog,4QSawfaE80WwVBTmi/PcIQ,,,N,0,0,,,2010-08-08 11:54,2010-08-08 11:54,admin,admin,,,
369,89212,784,11585,841,1,0,N,N,N,CP_Drtn,TT_Task,DT_FixedDUR2,RV_OK,TK_NotStart,A13660,slab for roof floor,,616,0,48,0,0,0,48,0,0,0,,,,2010-11-24 08:00,2010-11-30 16:00,,2010-08-22 08:00,2010-08-28 16:00,2010-08-22 08:00,2010-08-28 16:00,2010-08-22 08:00,2010-08-28 16:00,,2010-11-24 08:00,2010-11-30 16:00,,PT_Normal,,,,,zSCjtWrR5UKXVtBc8Sh7kw,dWXZwua9HkqK5AxbiOY5xw,,,N,0,0,,,2010-08-08 11:54,2010-08-08 11:54,admin,admin,,,
370,89213,784,11585,841,1,0,N,N,N,CP_Drtn,TT_Task,DT_FixedDUR2,RV_OK,TK_NotStart,A13670,Brick works for ground floor,,680,0,40,0,0,0,40,0,0,0,,,,2010-11-20 08:00,2010-11-24 16:00,,2010-08-08 08:00,2010-08-12 16:00,2010-08-08 08:00,2010-08-12 16:00,2010-08-08 08:00,2010-08-12 16:00,,2010-11-20 08:00,2010-11-24 16:00,,PT_Normal,,,,,0bWvSdymXEq11/XINz/9KA,eWbshw0Q2UCb0Lj2gh3lyg,,,N,0,0,,,2010-08-08 11:54,2010-08-08 11:54,admin,admin,,,
371,89214,784,11586,841,1,0,N,N,N,CP_Drtn,TT_Task,DT_FixedDrtn,RV_OK,TK_NotStart,A13680,electrical conduits for ground floor's slab,,624,8,16,0,0,0,16,0,0,0,,,,2010-10-19 08:00,2010-10-20 16:00,,2010-07-20 08:00,2010-07-21 16:00,2010-07-20 08:00,2010-07-21 16:00,2010-07-20 08:00,2010-07-21 16:00,,2010-10-19 08:00,2010-10-20 16:00,,PT_Normal,,,,,aDzbp4GwuE6e5rUtz0ih1A,lYH/y9IXi0yKkYCgwvRtmA,,,N,0,0,,,2010-08-08 11:54,2010-08-08 11:54,admin,admin,,,
372,89215,784,11586,841,1,0,N,N,N,CP_Drtn,TT_Task,DT_FixedDrtn,RV_OK,TK_NotStart,A13690,electrical conduits for 1st floor slab,,624,8,16,0,0,0,16,0,0,0,,,,2010-11-07 08:00,2010-11-08 16:00,,2010-08-08 08:00,2010-08-09 16:00,2010-08-08 08:00,2010-08-09 16:00,2010-08-08 08:00,2010-08-09 16:00,,2010-11-07 08:00,2010-11-08 16:00,,PT_Normal,,,,,wKXmUb+mpU2hBpkLap74Vw,WZwh12UYG06YQjso7Ut+1g,,,N,0,0,,,2010-08-08 11:54,2010-08-08 11:54,admin,admin,,,
373,89216,784,11586,841,1,0,N,N,N,CP_Drtn,TT_Task,DT_FixedDrtn,RV_OK,TK_NotStart,A13700,electrical conduits for roof slab,,624,8,8,0,0,0,8,0,0,0,,,,2010-11-29 08:00,2010-11-29 16:00,,2010-08-25 08:00,2010-08-25 16:00,2010-08-25 08:00,2010-08-25 16:00,2010-08-25 08:00,2010-08-25 16:00,,2010-11-29 08:00,2010-11-29 16:00,,PT_Normal,,,,,pUgIOLBfe024IK+rI5VUwg,IqNp+oh6AkCT6bueOrs4lw,,,N,0,0,,,2010-08-08 11:54,2010-08-08 11:54,admin,admin,,,
374,89217,784,11587,841,1,0,N,N,N,CP_Drtn,TT_Task,DT_FixedDUR2,RV_OK,TK_NotStart,A13710,Internal plastering for ground floor,,680,16,64,0,0,0,64,0,0,0,,,,2010-12-05 08:00,2010-12-13 16:00,,2010-08-23 08:00,2010-08-31 16:00,2010-08-23 08:00,2010-08-31 16:00,2010-08-23 08:00,2010-08-31 16:00,,2010-12-05 08:00,2010-12-13 16:00,,PT_Normal,,,,,Mv3RSPfbFkaVSovF4i/sGQ,EP0hg+PCMEyY/11V1HszCA,,,N,0,0,,,2010-08-08 11:54,2010-08-08 11:54,admin,admin,,,
375,89218,784,11587,841,1,0,N,N,N,CP_Drtn,TT_Task,DT_FixedDUR2,RV_OK,TK_NotStart,A13720,External plastering,,584,0,80,0,0,0,80,0,0,0,,,,2010-12-18 08:00,2010-12-28 16:00,,2010-09-19 08:00,2010-09-29 16:00,2010-09-19 08:00,2010-09-29 16:00,2010-09-19 08:00,2010-09-29 16:00,,2010-12-18 08:00,2010-12-28 16:00,,PT_Normal,,,,,UlkFhE+BHkWqHkH4HizZoA,h1+O6XwkOUaEuVScqAcaFA,,,N,0,0,,,2010-08-08 11:54,2010-08-08 11:54,admin,admin,,,
376,89219,784,11586,841,1,0,N,N,N,CP_Drtn,TT_Task,DT_FixedDrtn,RV_OK,TK_NotStart,A13730,plumbing connections under slab on grade,,864,184,16,0,0,0,16,0,0,0,,,,2010-11-23 08:00,2010-11-24 16:00,,2010-07-15 08:00,2010-07-17 16:00,2010-07-15 08:00,2010-07-17 16:00,2010-07-15 08:00,2010-07-17 16:00,,2010-11-23 08:00,2010-11-24 16:00,,PT_Normal,,,,,6ZAhP5QO7kOMdx2r/LFqpQ,pOd7FW4y2EmyQMIhF0Ng8w,,,N,0,0,,,2010-08-08 11:54,2010-08-08 11:54,admin,admin,,,
377,89220,784,11623,841,0,0,N,N,N,CP_Drtn,TT_Mile,DT_FixedDrtn,RV_OK,TK_NotStart,A13740,Start Villa construction,,672,0,0,0,0,0,0,0,0,0,,,,2010-10-14 08:00,2010-10-14 08:00,,2010-07-08 08:00,2010-07-08 08:00,2010-07-08 08:00,2010-07-08 08:00,2010-07-08 08:00,2010-07-08 08:00,,2010-10-14 08:00,2010-10-14 08:00,,PT_Normal,,,,,2OItawLnCUyGIl1LfssXrQ,oW5j7VabIEW4aLPsE2Ph9g,,,N,0,0,,,2010-08-08 11:54,2010-08-08 19:39,admin,admin,,,
378,89221,784,11623,841,0,0,N,N,N,CP_Drtn,TT_FinMile,DT_FixedDrtn,RV_OK,TK_NotStart,A13750,finish Villa construction,,584,584,0,0,0,0,0,0,0,0,,,,2010-12-28 16:00,2010-12-28 16:00,,2010-09-29 16:00,2010-09-29 16:00,2010-09-29 16:00,2010-09-29 16:00,2010-09-29 16:00,2010-09-29 16:00,,2010-12-28 16:00,2010-12-28 16:00,,PT_Normal,,,,,IiNHMiwr7UyXn4Mq/bfrTg,5FQxYTeHR0K4FNWbLTXXGA,,,N,0,0,,,2010-08-08 11:54,2010-08-08 11:54,admin,admin,,,
379,89222,784,11623,841,0,0,N,N,N,CP_Drtn,TT_Mile,DT_FixedDrtn,RV_OK,TK_NotStart,A13760,IFC drawings,,672,0,0,0,0,0,0,0,0,0,,,,2010-09-27 08:00,2010-09-27 08:00,,2010-06-21 08:00,2010-06-21 08:00,2010-06-21 08:00,2010-06-21 08:00,2010-06-21 08:00,2010-06-21 08:00,,2010-09-27 08:00,2010-09-27 08:00,,PT_Normal,,,,,f9y1Z0byWUGGaH50y8Gvsg,xMeb0Kz1A0ay9nFlAD4SzQ,,,N,0,0,,,2010-08-08 11:54,2010-08-08 19:39,admin,admin,,,
380,89223,784,11585,841,1,0,N,N,N,CP_Drtn,TT_Task,DT_FixedDUR2,RV_OK,TK_NotStart,A13770,pouring for ground floor's slab,,616,0,8,0,0,0,8,0,0,0,,,,2010-10-24 08:00,2010-10-24 16:00,,2010-07-26 08:00,2010-07-26 16:00,2010-07-26 08:00,2010-07-26 16:00,2010-07-26 08:00,2010-07-26 16:00,,2010-10-24 08:00,2010-10-24 16:00,,PT_Normal,,,,,7/t2oyWa4E2x+74jU97NaQ,MLzGOim1q0+4pHFcg6ySfQ,,,N,0,0,,,2010-08-08 11:54,2010-08-08 11:54,admin,admin,,,
381,89224,784,11585,841,1,0,N,N,N,CP_Drtn,TT_Task,DT_FixedDUR2,RV_OK,TK_NotStart,A13780,pouring for 1st floor's slab,,616,0,8,0,0,0,8,0,0,0,,,,2010-11-11 08:00,2010-11-11 16:00,,2010-08-14 08:00,2010-08-14 16:00,2010-08-14 08:00,2010-08-14 16:00,2010-08-14 08:00,2010-08-14 16:00,,2010-11-11 08:00,2010-11-11 16:00,,PT_Normal,,,,,QWoo+P/0XEGi6pYx7gJ4AQ,Yv183K5Bt0WybfPlTeAGzw,,,N,0,0,,,2010-08-08 11:54,2010-08-08 11:54,admin,admin,,,
382,89225,784,11585,841,1,0,N,N,N,CP_Drtn,TT_Task,DT_FixedDUR2,RV_OK,TK_NotStart,A13790,pouring for roof floor's slab,,616,32,8,0,0,0,8,0,0,0,,,,2010-12-01 08:00,2010-12-01 16:00,,2010-08-29 08:00,2010-08-29 16:00,2010-08-29 08:00,2010-08-29 16:00,2010-08-29 08:00,2010-08-29 16:00,,2010-12-01 08:00,2010-12-01 16:00,,PT_Normal,,,,,PY0Kzsw/4kittKkNoyU4EQ,HdklaBI1uEW1r+4gu+LOPA,,,N,0,0,,,2010-08-08 11:54,2010-08-08 11:54,admin,admin,,,
383,89226,784,11585,841,1,0,N,N,N,CP_Drtn,TT_Task,DT_FixedDrtn,RV_OK,TK_NotStart,A13800,Fence work,,632,48,400,0,0,0,400,0,0,0,,,,2010-10-27 08:00,2010-12-28 16:00,,2010-07-27 08:00,2010-09-22 16:00,2010-07-27 08:00,2010-09-22 16:00,2010-07-27 08:00,2010-09-22 16:00,,2010-10-27 08:00,2010-12-28 16:00,,PT_Normal,,,,,a3Yq9J3sZ0qV3MeskCpbBQ,K7NJnH3zv0O7tQXkak4kLA,,,N,0,0,,,2010-08-08 11:54,2010-08-08 11:54,admin,admin,,,
384,89227,784,11623,841,1,0,N,N,N,CP_Drtn,TT_Task,DT_FixedDUR2,RV_OK,TK_NotStart,A13810,Fence Drawings IFC,,672,40,8,0,0,0,8,0,0,0,,,,2010-10-14 08:00,2010-10-14 16:00,,2010-07-08 08:00,2010-07-08 16:00,2010-07-08 08:00,2010-07-08 16:00,2010-07-08 08:00,2010-07-08 16:00,,2010-10-14 08:00,2010-10-14 16:00,,PT_Normal,,,,,Y0z74OgULEq62XJuuV6Qug,WgnieKSS0UqpVY2jMWhE1Q,,,N,0,0,,,2010-08-08 11:54,2010-08-08 19:39,admin,admin,,,
385,89228,784,11584,873,1,0,N,N,N,CP_Drtn,TT_Task,DT_FixedDUR2,RV_OK,TK_NotStart,A13820,backfilling between P.C Foundation,,1008,1008,16,0,0,0,16,0,0,0,,,,2010-12-27 08:00,2010-12-28 16:00,,2010-07-28 08:00,2010-07-29 16:00,2010-07-28 08:00,2010-07-29 16:00,2010-07-28 08:00,2010-07-29 16:00,,2010-12-27 08:00,2010-12-28 16:00,,PT_Normal,,,,,qqssB1IBUk2D7QIfR+ZfWg,KyEOMaCKhUWnMX0PIMU1OQ,,,N,0,0,,,2010-08-08 11:54,2010-08-08 11:54,admin,admin,,,
386,89229,784,11585,873,1,0,N,N,N,CP_Drtn,TT_Task,DT_FixedDUR2,RV_OK,TK_NotStart,A13840,Brick works for 1st floor,,664,0,40,0,0,0,40,0,0,0,,,,2010-12-06 08:00,2010-12-11 16:00,,2010-08-26 08:00,2010-08-31 16:00,2010-08-26 08:00,2010-08-31 16:00,2010-08-26 08:00,2010-08-31 16:00,,2010-12-06 08:00,2010-12-11 16:00,,PT_Normal,,,,,q8zTblaVR0aTwcTFIuc9Vg,gxhE8hv7cEi1U67GGFSJUA,,,N,0,0,,,2010-08-08 11:54,2010-08-08 11:54,admin,admin,,,
387,89230,784,11585,873,1,0,N,N,N,CP_Drtn,TT_Task,DT_FixedDUR2,RV_OK,TK_NotStart,A13850,Brick works for roof floor,,616,0,40,0,0,0,40,0,0,0,,,,2010-12-12 08:00,2010-12-16 16:00,,2010-09-13 08:00,2010-09-18 16:00,2010-09-13 08:00,2010-09-18 16:00,2010-09-13 08:00,2010-09-18 16:00,,2010-12-12 08:00,2010-12-16 16:00,,PT_Normal,,,,,VVhcQPVvQEmSADJt1vkjNg,2GX5IGYN3UGIJ3vkhJbB1A,,,N,0,0,,,2010-08-08 11:54,2010-08-08 11:54,admin,admin,,,
388,89231,784,11587,873,1,0,N,N,N,CP_Drtn,TT_Task,DT_FixedDUR2,RV_OK,TK_NotStart,A13860,Internal plastering for 1st floor,,664,24,64,0,0,0,64,0,0,0,,,,2010-12-14 08:00,2010-12-22 16:00,,2010-09-04 08:00,2010-09-16 16:00,2010-09-04 08:00,2010-09-16 16:00,2010-09-04 08:00,2010-09-16 16:00,,2010-12-14 08:00,2010-12-22 16:00,,PT_Normal,,,,,W7C4qKlf8Uqdi36+5KSVFw,FZ+BZ/6CT0iFbE5fyvVr+w,,,N,0,0,,,2010-08-08 11:54,2010-08-08 11:54,admin,admin,,,
389,89232,784,11587,873,1,0,N,N,N,CP_Drtn,TT_Task,DT_FixedDUR2,RV_OK,TK_NotStart,A13870,Internal plastering for roof floor,,640,24,40,0,0,0,40,0,0,0,,,,2010-12-23 08:00,2010-12-28 16:00,,2010-09-21 08:00,2010-09-26 16:00,2010-09-21 08:00,2010-09-26 16:00,2010-09-21 08:00,2010-09-26 16:00,,2010-12-23 08:00,2010-12-28 16:00,,PT_Normal,,,,,5Gz4Wxg8uEmgAqqI29Arfw,aTS593o6k0uFHhHBv5rvcA,,,N,0,0,,,2010-08-08 11:54,2010-08-08 11:54,admin,admin,,,
390,89233,784,11586,873,1,0,N,N,N,CP_Drtn,TT_Task,DT_FixedDUR2,RV_OK,TK_NotStart,A13880,electrical conduits for ground floor walls,,680,0,16,0,0,0,16,0,0,0,,,,2010-12-02 08:00,2010-12-04 16:00,,2010-08-21 08:00,2010-08-22 16:00,2010-08-21 08:00,2010-08-22 16:00,2010-08-21 08:00,2010-08-22 16:00,,2010-12-02 08:00,2010-12-04 16:00,,PT_Normal,,,,,xNJE6qlkRES+bveijqeQeA,H361bLZx10uIqrF0BkckSA,,,N,0,0,,,2010-08-08 11:54,2010-08-08 11:54,admin,admin,,,
391,89234,784,11586,873,1,0,N,N,N,CP_Drtn,TT_Task,DT_FixedDUR2,RV_OK,TK_NotStart,A13890,electrical conduits for 1st floor walls,,664,0,16,0,0,0,16,0,0,0,,,,2010-12-12 08:00,2010-12-13 16:00,,2010-09-01 08:00,2010-09-02 16:00,2010-09-01 08:00,2010-09-02 16:00,2010-09-01 08:00,2010-09-02 16:00,,2010-12-12 08:00,2010-12-13 16:00,,PT_Normal,,,,,/3kx/TjJkUWqmpekwdQJdA,qBEcOuv2dEOLAdc4N+jwGQ,,,N,0,0,,,2010-08-08 11:54,2010-08-08 11:54,admin,admin,,,
392,89235,784,11586,873,1,0,N,N,N,CP_Drtn,TT_Task,DT_FixedDUR2,RV_OK,TK_NotStart,A13900,electrical conduits for roof floor walls,,640,0,16,0,0,0,16,0,0,0,,,,2010-12-21 08:00,2010-12-22 16:00,,2010-09-19 08:00,2010-09-20 16:00,2010-09-19 08:00,2010-09-20 16:00,2010-09-19 08:00,2010-09-20 16:00,,2010-12-21 08:00,2010-12-22 16:00,,PT_Normal,,,,,2LwgxnJuDEOT54S9qxTYiQ,D+YF0QDf6kKxhL9/8BQcag,,,N,0,0,,,2010-08-08 11:54,2010-08-08 11:54,admin,admin,,,
393,89236,784,11631,841,1,0,N,N,N,CP_Drtn,TT_Task,DT_FixedDUR2,RV_OK,TK_NotStart,A13910,excavation,,336,0,16,0,0,0,16,0,0,0,,,,2010-08-28 08:00,2010-08-29 16:00,,2010-07-10 08:00,2010-07-11 16:00,2010-07-10 08:00,2010-07-11 16:00,2010-07-10 08:00,2010-07-11 16:00,,2010-08-28 08:00,2010-08-29 16:00,,PT_Normal,,,,,BUtFsQdwzkSmc7uZ/98x0Q,2m90Sl3qz0W4FBiMh6gpVw,,,N,0,0,,,2010-08-08 11:54,2010-08-08 11:54,admin,admin,,,
394,89237,784,11631,841,1,0,N,N,N,CP_Drtn,TT_Task,DT_FixedDUR2,RV_OK,TK_NotStart,A13920,soil replacement,,336,0,96,0,0,0,96,0,0,0,,,,2010-08-30 08:00,2010-09-12 16:00,,2010-07-12 08:00,2010-07-25 16:00,2010-07-12 08:00,2010-07-25 16:00,2010-07-12 08:00,2010-07-25 16:00,,2010-08-30 08:00,2010-09-12 16:00,,PT_Normal,,,,,aMyc3v/8NkOcMb3IWTVtUQ,HxXEqdZThkW7dr7YxDW1FA,,,N,0,0,,,2010-08-08 11:54,2010-08-08 11:54,admin,admin,,,
395,89238,784,11591,841,1,0,N,N,N,CP_Drtn,TT_Task,DT_FixedDUR2,RV_OK,TK_NotStart,A13930,Plain Concrete Foundation,,336,0,16,0,0,0,16,0,0,0,,,,2010-09-13 08:00,2010-09-14 16:00,,2010-07-26 08:00,2010-07-27 16:00,2010-07-26 08:00,2010-07-27 16:00,2010-07-26 08:00,2010-07-27 16:00,,2010-09-13 08:00,2010-09-14 16:00,,PT_Normal,,,,,8imFCmZAnEKTLa9VUOdf8g,NClZS67vj0CiCVDxHm8AxA,,,N,0,0,,,2010-08-08 11:54,2010-08-08 11:54,admin,admin,,,
396,89239,784,11591,841,1,0,N,N,N,CP_Drtn,TT_Task,DT_FixedDUR2,RV_OK,TK_NotStart,A13940,Reinforced Concrete Foundation,,336,0,56,0,0,0,56,0,0,0,,,,2010-09-19 08:00,2010-09-26 16:00,,2010-08-01 08:00,2010-08-08 16:00,2010-08-01 08:00,2010-08-08 16:00,2010-08-01 08:00,2010-08-08 16:00,,2010-09-19 08:00,2010-09-26 16:00,,PT_Normal,,,,,RXjVT4iKzkW4dFTeeOTP+w,mvQyYCVAb0imLVIffsioeA,,,N,0,0,,,2010-08-08 11:54,2010-08-08 11:54,admin,admin,,,
397,89240,784,11591,841,1,0,N,N,N,CP_Drtn,TT_Task,DT_FixedDUR2,RV_OK,TK_NotStart,A13950,under ground  brick works,,336,0,16,0,0,0,16,0,0,0,,,,2010-10-04 08:00,2010-10-05 16:00,,2010-08-16 08:00,2010-08-17 16:00,2010-08-16 08:00,2010-08-17 16:00,2010-08-16 08:00,2010-08-17 16:00,,2010-10-04 08:00,2010-10-05 16:00,,PT_Normal,,,,,94ATonNBo0SlofXJmyxFEw,L60fjOhxQ0SW4kUp0Xt1jg,,,N,0,0,,,2010-08-08 11:54,2010-08-08 11:54,admin,admin,,,
398,89241,784,11591,841,1,0,N,N,N,CP_Drtn,TT_Task,DT_FixedDUR2,RV_OK,TK_NotStart,A13960,under ground insulation for RC & Brick work,,336,0,16,0,0,0,16,0,0,0,,,,2010-10-06 08:00,2010-10-07 16:00,,2010-08-18 08:00,2010-08-19 16:00,2010-08-18 08:00,2010-08-19 16:00,2010-08-18 08:00,2010-08-19 16:00,,2010-10-06 08:00,2010-10-07 16:00,,PT_Normal,,,,,9kW9W1U1lU22ZJh/CdFFrg,5GRRUVUh30mAxR5rbvm1HQ,,,N,0,0,,,2010-08-08 11:54,2010-08-08 11:54,admin,admin,,,
399,89242,784,11591,841,1,0,N,N,N,CP_Drtn,TT_Task,DT_FixedDUR2,RV_OK,TK_NotStart,A13970,backfilling for under ground,,336,0,32,0,0,0,32,0,0,0,,,,2010-10-09 08:00,2010-10-12 16:00,,2010-08-21 08:00,2010-08-24 16:00,2010-08-21 08:00,2010-08-24 16:00,2010-08-21 08:00,2010-08-24 16:00,,2010-10-09 08:00,2010-10-12 16:00,,PT_Normal,,,,,CiF9ci4TRUKLuBuAvfNvbw,+Es3J6c4OEqp86v2z0hPNg,,,N,0,0,,,2010-08-08 11:54,2010-08-08 11:54,admin,admin,,,
400,89243,784,11591,841,1,0,N,N,N,CP_Drtn,TT_Task,DT_FixedDUR2,RV_OK,TK_NotStart,A13980,P.C slab on grade 10CM,,400,0,8,0,0,0,8,0,0,0,,,,2010-11-25 08:00,2010-11-25 16:00,,2010-09-23 08:00,2010-09-23 16:00,2010-09-23 08:00,2010-09-23 16:00,2010-09-23 08:00,2010-09-23 16:00,,2010-11-25 08:00,2010-11-25 16:00,,PT_Normal,,,,,nXGvkQmuMEuOgT3uBL+nbg,WVvK5XK5KEOjb9g2qWvPNg,,,N,0,0,,,2010-08-08 11:54,2010-08-08 11:54,admin,admin,,,
401,89244,784,11591,841,1,0,N,N,N,CP_Drtn,TT_Task,DT_FixedDUR2,RV_OK,TK_NotStart,A13990,moisture insulation with membrane sheets,,400,0,16,0,0,0,16,0,0,0,,,,2010-11-27 08:00,2010-11-28 16:00,,2010-09-25 08:00,2010-09-26 16:00,2010-09-25 08:00,2010-09-26 16:00,2010-09-25 08:00,2010-09-26 16:00,,2010-11-27 08:00,2010-11-28 16:00,,PT_Normal,,,,,cN/qv5jp1UiP6niz0ZG4bw,NNsp+J8ur0qa6d8xVD+xKQ,,,N,0,0,,,2010-08-08 11:54,2010-08-08 11:54,admin,admin,,,
402,89245,784,11591,841,1,0,N,N,N,CP_Drtn,TT_Task,DT_FixedDUR2,RV_OK,TK_NotStart,A14000,R.C slab on grade,,400,0,16,0,0,0,16,0,0,0,,,,2010-11-29 08:00,2010-11-30 16:00,,2010-09-27 08:00,2010-09-28 16:00,2010-09-27 08:00,2010-09-28 16:00,2010-09-27 08:00,2010-09-28 16:00,,2010-11-29 08:00,2010-11-30 16:00,,PT_Normal,,,,,6ZgI8wULgk2YSeryJ8roPQ,PPFkve0pDU29E5q5QLeRAQ,,,N,0,0,,,2010-08-08 11:54,2010-08-08 11:54,admin,admin,,,
403,89246,784,11592,841,1,0,N,N,N,CP_Drtn,TT_Task,DT_FixedDUR2,RV_OK,TK_NotStart,A14010,columns for ground floor,,336,0,48,0,0,0,48,0,0,0,,,,2010-09-27 08:00,2010-10-03 16:00,,2010-08-09 08:00,2010-08-15 16:00,2010-08-09 08:00,2010-08-15 16:00,2010-08-09 08:00,2010-08-15 16:00,,2010-09-27 08:00,2010-10-03 16:00,,PT_Normal,,,,,5VXd/VF+zUaSYtwvQnN4WA,RPrSL4YI+0aUyRGn5oEVfA,,,N,0,0,,,2010-08-08 11:54,2010-08-08 11:54,admin,admin,,,
404,89247,784,11592,841,1,0,N,N,N,CP_Drtn,TT_Task,DT_FixedDUR2,RV_OK,TK_NotStart,A14020,slab for ground floor,,336,0,72,0,0,0,72,0,0,0,,,,2010-10-13 08:00,2010-10-23 16:00,,2010-08-25 08:00,2010-09-04 16:00,2010-08-25 08:00,2010-09-04 16:00,2010-08-25 08:00,2010-09-04 16:00,,2010-10-13 08:00,2010-10-23 16:00,,PT_Normal,,,,,yvrfquCZ+024wCNB1azuCA,Q+Zg+MJfBUOsUXaHoTKGiQ,,,N,0,0,,,2010-08-08 11:54,2010-08-08 11:54,admin,admin,,,
405,89248,784,11592,841,1,0,N,N,N,CP_Drtn,TT_Task,DT_FixedDUR2,RV_OK,TK_NotStart,A14030,columns for 1st floor,,336,0,48,0,0,0,48,0,0,0,,,,2010-10-25 08:00,2010-10-31 16:00,,2010-09-06 08:00,2010-09-12 16:00,2010-09-06 08:00,2010-09-12 16:00,2010-09-06 08:00,2010-09-12 16:00,,2010-10-25 08:00,2010-10-31 16:00,,PT_Normal,,,,,K5NoNJIIyUWDdBI3UUxMxw,VZQgFVxTK0eIgllpsX7jzw,,,N,0,0,,,2010-08-08 11:54,2010-08-08 11:54,admin,admin,,,
406,89249,784,11592,841,1,0,N,N,N,CP_Drtn,TT_Task,DT_FixedDUR2,RV_OK,TK_NotStart,A14040,slab for 1st floor,,336,0,72,0,0,0,72,0,0,0,,,,2010-11-01 08:00,2010-11-10 16:00,,2010-09-13 08:00,2010-09-22 16:00,2010-09-13 08:00,2010-09-22 16:00,2010-09-13 08:00,2010-09-22 16:00,,2010-11-01 08:00,2010-11-10 16:00,,PT_Normal,,,,,g/lqr93CRk+rzxmvPF8V1Q,QpT5qNNkOEmDjyQPuEaeLg,,,N,0,0,,,2010-08-08 11:54,2010-08-08 11:54,admin,admin,,,
407,89250,784,11592,841,1,0,N,N,N,CP_Drtn,TT_Task,DT_FixedDUR2,RV_OK,TK_NotStart,A14050,columns for roof floor,,336,0,32,0,0,0,32,0,0,0,,,,2010-11-20 08:00,2010-11-23 16:00,,2010-09-27 08:00,2010-09-30 16:00,2010-09-27 08:00,2010-09-30 16:00,2010-09-27 08:00,2010-09-30 16:00,,2010-11-20 08:00,2010-11-23 16:00,,PT_Normal,,,,,pAbkGrKs80G8Zd4GcBouXA,v9kUUZ0KEU+e+m/giSH16w,,,N,0,0,,,2010-08-08 11:54,2010-08-08 11:54,admin,admin,,,
408,89251,784,11592,841,1,0,N,N,N,CP_Drtn,TT_Task,DT_FixedDUR2,RV_OK,TK_NotStart,A14060,slab for roof floor,,336,0,48,0,0,0,48,0,0,0,,,,2010-11-24 08:00,2010-11-30 16:00,,2010-10-02 08:00,2010-10-07 16:00,2010-10-02 08:00,2010-10-07 16:00,2010-10-02 08:00,2010-10-07 16:00,,2010-11-24 08:00,2010-11-30 16:00,,PT_Normal,,,,,QIICcngWO0Cc5Qz3o6pZ+A,C/H1ezUhMUabSjBSFg9a1Q,,,N,0,0,,,2010-08-08 11:54,2010-08-08 11:54,admin,admin,,,
409,89252,784,11592,841,1,0,N,N,N,CP_Drtn,TT_Task,DT_FixedDUR2,RV_OK,TK_NotStart,A14070,Brick works for ground floor,,400,0,40,0,0,0,40,0,0,0,,,,2010-11-20 08:00,2010-11-24 16:00,,2010-09-18 08:00,2010-09-22 16:00,2010-09-18 08:00,2010-09-22 16:00,2010-09-18 08:00,2010-09-22 16:00,,2010-11-20 08:00,2010-11-24 16:00,,PT_Normal,,,,,cjCWWtG0ekSLkBbL1PMmhA,ZS/qXWUsQEqjOsr2BOb1Dw,,,N,0,0,,,2010-08-08 11:54,2010-08-08 11:54,admin,admin,,,
410,89253,784,11593,841,1,0,N,N,N,CP_Drtn,TT_Task,DT_FixedDrtn,RV_OK,TK_NotStart,A14080,electrical conduits for ground floor's slab,,344,8,16,0,0,0,16,0,0,0,,,,2010-10-19 08:00,2010-10-20 16:00,,2010-08-30 08:00,2010-08-31 16:00,2010-08-30 08:00,2010-08-31 16:00,2010-08-30 08:00,2010-08-31 16:00,,2010-10-19 08:00,2010-10-20 16:00,,PT_Normal,,,,,xtguut6tXUqw0+8aW43B5g,iLybe42ckkSFQJvSH/Rg8Q,,,N,0,0,,,2010-08-08 11:54,2010-08-08 11:54,admin,admin,,,
411,89254,784,11593,841,1,0,N,N,N,CP_Drtn,TT_Task,DT_FixedDrtn,RV_OK,TK_NotStart,A14090,electrical conduits for 1st floor slab,,344,8,16,0,0,0,16,0,0,0,,,,2010-11-07 08:00,2010-11-08 16:00,,2010-09-18 08:00,2010-09-19 16:00,2010-09-18 08:00,2010-09-19 16:00,2010-09-18 08:00,2010-09-19 16:00,,2010-11-07 08:00,2010-11-08 16:00,,PT_Normal,,,,,XIosrye0iUe7E0HOJkwgpw,FAJi3siJFkqUYjOOdbdbWA,,,N,0,0,,,2010-08-08 11:54,2010-08-08 11:54,admin,admin,,,
412,89255,784,11593,841,1,0,N,N,N,CP_Drtn,TT_Task,DT_FixedDrtn,RV_OK,TK_NotStart,A14100,electrical conduits for roof slab,,344,8,8,0,0,0,8,0,0,0,,,,2010-11-29 08:00,2010-11-29 16:00,,2010-10-05 08:00,2010-10-05 16:00,2010-10-05 08:00,2010-10-05 16:00,2010-10-05 08:00,2010-10-05 16:00,,2010-11-29 08:00,2010-11-29 16:00,,PT_Normal,,,,,dqt8Sp2s2UmYr+sEsk67jg,2lxX2kCcVkmcECLtxkj/gw,,,N,0,0,,,2010-08-08 11:54,2010-08-08 11:54,admin,admin,,,
413,89256,784,11594,841,1,0,N,N,N,CP_Drtn,TT_Task,DT_FixedDUR2,RV_OK,TK_NotStart,A14110,Internal plastering for ground floor,,400,16,64,0,0,0,64,0,0,0,,,,2010-12-05 08:00,2010-12-13 16:00,,2010-10-03 08:00,2010-10-11 16:00,2010-10-03 08:00,2010-10-11 16:00,2010-10-03 08:00,2010-10-11 16:00,,2010-12-05 08:00,2010-12-13 16:00,,PT_Normal,,,,,kBekfUdmTUimpd2RUurwUA,59SeepcU20Kc7krzJtypfw,,,N,0,0,,,2010-08-08 11:54,2010-08-08 11:54,admin,admin,,,
414,89257,784,11594,841,1,0,N,N,N,CP_Drtn,TT_Task,DT_FixedDUR2,RV_OK,TK_NotStart,A14120,External plastering,,336,0,80,0,0,0,80,0,0,0,,,,2010-12-18 08:00,2010-12-28 16:00,,2010-10-25 08:00,2010-11-04 16:00,2010-10-25 08:00,2010-11-04 16:00,2010-10-25 08:00,2010-11-04 16:00,,2010-12-18 08:00,2010-12-28 16:00,,PT_Normal,,,,,jrGwQjMDJ0Ws2NdcICj3BQ,op0LXyzumkmh6EX/PdYnMA,,,N,0,0,,,2010-08-08 11:54,2010-08-08 11:54,admin,admin,,,
415,89258,784,11593,841,1,0,N,N,N,CP_Drtn,TT_Task,DT_FixedDrtn,RV_OK,TK_NotStart,A14130,plumbing connections under slab on grade,,584,184,16,0,0,0,16,0,0,0,,,,2010-11-23 08:00,2010-11-24 16:00,,2010-08-25 08:00,2010-08-26 16:00,2010-08-25 08:00,2010-08-26 16:00,2010-08-25 08:00,2010-08-26 16:00,,2010-11-23 08:00,2010-11-24 16:00,,PT_Normal,,,,,OxCPEOtew0+C8IcZqN96SA,gyU8bEzc+EGTG5VHpAXi8w,,,N,0,0,,,2010-08-08 11:54,2010-08-08 11:54,admin,admin,,,
416,89259,784,11630,841,0,0,N,N,N,CP_Drtn,TT_Mile,DT_FixedDrtn,RV_OK,TK_NotStart,A14140,Start Villa construction,,336,0,0,0,0,0,0,0,0,0,,,,2010-08-28 08:00,2010-08-28 08:00,,2010-07-10 08:00,2010-07-10 08:00,2010-07-10 08:00,2010-07-10 08:00,2010-07-10 08:00,2010-07-10 08:00,,2010-08-28 08:00,2010-08-28 08:00,,PT_Normal,,,,,VFU5CPuwk0CqsnQX1pFonw,UFQv49ZrCkqFYWVfh8doAA,,,N,0,0,,,2010-08-08 11:54,2010-08-08 19:39,admin,admin,,,
417,89260,784,11630,841,0,0,N,N,N,CP_Drtn,TT_FinMile,DT_FixedDrtn,RV_OK,TK_NotStart,A14150,finish Villa construction,,336,336,0,0,0,0,0,0,0,0,,,,2010-12-28 16:00,2010-12-28 16:00,,2010-11-04 16:00,2010-11-04 16:00,2010-11-04 16:00,2010-11-04 16:00,2010-11-04 16:00,2010-11-04 16:00,,2010-12-28 16:00,2010-12-28 16:00,,PT_Normal,,,,,zDtaEBmxIUOVKM/9sqdUQg,Rb3cIictOkWRl6hel5nUzA,,,N,0,0,,,2010-08-08 11:54,2010-08-08 11:54,admin,admin,,,
418,89261,784,11630,841,0,0,N,N,N,CP_Drtn,TT_Mile,DT_FixedDrtn,RV_OK,TK_NotStart,A14160,IFC drawings,,336,0,0,0,0,0,0,0,0,0,,,,2010-08-09 08:00,2010-08-09 08:00,,2010-06-21 08:00,2010-06-21 08:00,2010-06-21 08:00,2010-06-21 08:00,2010-06-21 08:00,2010-06-21 08:00,,2010-08-09 08:00,2010-08-09 08:00,,PT_Normal,,,,,GbbczZcEDke7gvFJsdZuxg,FzNgGuPo0kCXxr7o4UtCXw,,,N,0,0,,,2010-08-08 11:54,2010-08-08 11:54,admin,admin,,,
419,89262,784,11592,841,1,0,N,N,N,CP_Drtn,TT_Task,DT_FixedDUR2,RV_OK,TK_NotStart,A14170,pouring for ground floor's slab,,336,0,8,0,0,0,8,0,0,0,,,,2010-10-24 08:00,2010-10-24 16:00,,2010-09-05 08:00,2010-09-05 16:00,2010-09-05 08:00,2010-09-05 16:00,2010-09-05 08:00,2010-09-05 16:00,,2010-10-24 08:00,2010-10-24 16:00,,PT_Normal,,,,,r1J9hOUcl0OmQeUelzkrIQ,fDJzWhiI6E2TgJlzEltmNw,,,N,0,0,,,2010-08-08 11:54,2010-08-08 11:54,admin,admin,,,
420,89263,784,11592,841,1,0,N,N,N,CP_Drtn,TT_Task,DT_FixedDUR2,RV_OK,TK_NotStart,A14180,pouring for 1st floor's slab,,336,0,8,0,0,0,8,0,0,0,,,,2010-11-11 08:00,2010-11-11 16:00,,2010-09-23 08:00,2010-09-23 16:00,2010-09-23 08:00,2010-09-23 16:00,2010-09-23 08:00,2010-09-23 16:00,,2010-11-11 08:00,2010-11-11 16:00,,PT_Normal,,,,,DUNMo71+3kaRqSbaz6H6Sg,jN9sOFetbUazVZXoAzVH6g,,,N,0,0,,,2010-08-08 11:54,2010-08-08 11:54,admin,admin,,,
421,89264,784,11592,841,1,0,N,N,N,CP_Drtn,TT_Task,DT_FixedDUR2,RV_OK,TK_NotStart,A14190,pouring for roof floor's slab,,336,0,8,0,0,0,8,0,0,0,,,,2010-12-01 08:00,2010-12-01 16:00,,2010-10-09 08:00,2010-10-09 16:00,2010-10-09 08:00,2010-10-09 16:00,2010-10-09 08:00,2010-10-09 16:00,,2010-12-01 08:00,2010-12-01 16:00,,PT_Normal,,,,,gLjvdRGgB0eUBQ+CyjRmDA,cCEmbIaL9k2yyy5QIDc4AQ,,,N,0,0,,,2010-08-08 11:54,2010-08-08 11:54,admin,admin,,,
422,89265,784,11592,841,1,0,N,N,N,CP_Drtn,TT_Task,DT_FixedDrtn,RV_OK,TK_NotStart,A14200,Fence work,,352,16,400,0,0,0,400,0,0,0,,,,2010-10-27 08:00,2010-12-28 16:00,,2010-09-06 08:00,2010-11-02 16:00,2010-09-06 08:00,2010-11-02 16:00,2010-09-06 08:00,2010-11-02 16:00,,2010-10-27 08:00,2010-12-28 16:00,,PT_Normal,,,,,GdUSsKM/YUStjLUQVeJ91Q,UAJ5+W1W4kClSIZ5fss7Jg,,,N,0,0,,,2010-08-08 11:54,2010-08-08 11:54,admin,admin,,,
423,89266,784,11630,841,1,0,N,N,N,CP_Drtn,TT_Task,DT_FixedDUR2,RV_OK,TK_NotStart,A14210,Fence Drawings IFC,,664,312,8,0,0,0,8,0,0,0,,,,2010-10-14 08:00,2010-10-14 16:00,,2010-07-10 08:00,2010-07-10 16:00,2010-07-10 08:00,2010-07-10 16:00,2010-07-10 08:00,2010-07-10 16:00,,2010-10-14 08:00,2010-10-14 16:00,,PT_Normal,,,,,C3x3TwFCRU6DoK1MmWo3/Q,4L423wECokm/PvjbQw2w9A,,,N,0,0,,,2010-08-08 11:54,2010-08-08 19:39,admin,admin,,,
424,89267,784,11591,873,1,0,N,N,N,CP_Drtn,TT_Task,DT_FixedDUR2,RV_OK,TK_NotStart,A14220,backfilling between P.C Foundation,,304,0,16,0,0,0,16,0,0,0,,,,2010-09-16 08:00,2010-09-18 16:00,,2010-07-29 08:00,2010-07-31 16:00,2010-07-29 08:00,2010-07-31 16:00,2010-07-29 08:00,2010-07-31 16:00,,2010-09-16 08:00,2010-09-18 16:00,,PT_Normal,,,,,VDS+EsvaO0CkGVBCUJzX9w,+YpQqsDgDUeDRDtpd3zoNQ,,,N,0,0,,,2010-08-08 11:54,2010-08-08 11:54,admin,admin,,,
425,89268,784,11592,873,1,0,N,N,N,CP_Drtn,TT_Task,DT_FixedDUR2,RV_OK,TK_NotStart,A14240,Brick works for 1st floor,,416,0,40,0,0,0,40,0,0,0,,,,2010-12-06 08:00,2010-12-11 16:00,,2010-10-06 08:00,2010-10-11 16:00,2010-10-06 08:00,2010-10-11 16:00,2010-10-06 08:00,2010-10-11 16:00,,2010-12-06 08:00,2010-12-11 16:00,,PT_Normal,,,,,eu7hDviCXEGsQkJJrwYVjw,zxJXlGbSpEqWBkSSMsfvxQ,,,N,0,0,,,2010-08-08 11:54,2010-08-08 11:54,admin,admin,,,
426,89269,784,11592,873,1,0,N,N,N,CP_Drtn,TT_Task,DT_FixedDUR2,RV_OK,TK_NotStart,A14250,Brick works for roof floor,,368,0,40,0,0,0,40,0,0,0,,,,2010-12-12 08:00,2010-12-16 16:00,,2010-10-19 08:00,2010-10-24 16:00,2010-10-19 08:00,2010-10-24 16:00,2010-10-19 08:00,2010-10-24 16:00,,2010-12-12 08:00,2010-12-16 16:00,,PT_Normal,,,,,nWyhWLj56U6T/8DXZXje+A,pSChgxsEfECRgVNOx05vXw,,,N,0,0,,,2010-08-08 11:54,2010-08-08 11:54,admin,admin,,,
427,89270,784,11594,873,1,0,N,N,N,CP_Drtn,TT_Task,DT_FixedDUR2,RV_OK,TK_NotStart,A14260,Internal plastering for 1st floor,,416,24,64,0,0,0,64,0,0,0,,,,2010-12-14 08:00,2010-12-22 16:00,,2010-10-14 08:00,2010-10-23 16:00,2010-10-14 08:00,2010-10-23 16:00,2010-10-14 08:00,2010-10-23 16:00,,2010-12-14 08:00,2010-12-22 16:00,,PT_Normal,,,,,x72TeH8REkiuo1hdUW5npA,BGb6arqHbkiDOwFNSGmEXA,,,N,0,0,,,2010-08-08 11:54,2010-08-08 11:54,admin,admin,,,
428,89271,784,11594,873,1,0,N,N,N,CP_Drtn,TT_Task,DT_FixedDUR2,RV_OK,TK_NotStart,A14270,Internal plastering for roof floor,,392,24,40,0,0,0,40,0,0,0,,,,2010-12-23 08:00,2010-12-28 16:00,,2010-10-27 08:00,2010-11-01 16:00,2010-10-27 08:00,2010-11-01 16:00,2010-10-27 08:00,2010-11-01 16:00,,2010-12-23 08:00,2010-12-28 16:00,,PT_Normal,,,,,y8nQAYMnE0ehFa8KWZxBgA,+/bDQEQqJUejUIgljSD2Gw,,,N,0,0,,,2010-08-08 11:54,2010-08-08 11:54,admin,admin,,,
429,89272,784,11593,873,1,0,N,N,N,CP_Drtn,TT_Task,DT_FixedDUR2,RV_OK,TK_NotStart,A14280,electrical conduits for ground floor walls,,432,0,16,0,0,0,16,0,0,0,,,,2010-12-02 08:00,2010-12-04 16:00,,2010-09-30 08:00,2010-10-02 16:00,2010-09-30 08:00,2010-10-02 16:00,2010-09-30 08:00,2010-10-02 16:00,,2010-12-02 08:00,2010-12-04 16:00,,PT_Normal,,,,,yBp5MR78Y0S+6ufEXor6/A,FBtd3tYE2kGCB++FrZHHtg,,,N,0,0,,,2010-08-08 11:54,2010-08-08 11:54,admin,admin,,,
430,89273,784,11593,873,1,0,N,N,N,CP_Drtn,TT_Task,DT_FixedDUR2,RV_OK,TK_NotStart,A14290,electrical conduits for 1st floor walls,,416,0,16,0,0,0,16,0,0,0,,,,2010-12-12 08:00,2010-12-13 16:00,,2010-10-12 08:00,2010-10-13 16:00,2010-10-12 08:00,2010-10-13 16:00,2010-10-12 08:00,2010-10-13 16:00,,2010-12-12 08:00,2010-12-13 16:00,,PT_Normal,,,,,FHrLb140nkq7pJNDTr1AzA,SH7q9rK0w0u4PXOqXgDaDw,,,N,0,0,,,2010-08-08 11:54,2010-08-08 11:54,admin,admin,,,
431,89274,784,11593,873,1,0,N,N,N,CP_Drtn,TT_Task,DT_FixedDUR2,RV_OK,TK_NotStart,A14300,electrical conduits for roof floor walls,,392,0,16,0,0,0,16,0,0,0,,,,2010-12-21 08:00,2010-12-22 16:00,,2010-10-25 08:00,2010-10-26 16:00,2010-10-25 08:00,2010-10-26 16:00,2010-10-25 08:00,2010-10-26 16:00,,2010-12-21 08:00,2010-12-22 16:00,,PT_Normal,,,,,hkkX7GpnsEGWvk/aYijFyw,HGvmVr9l/EyGc94sx8tbsA,,,N,0,0,,,2010-08-08 11:54,2010-08-08 11:54,admin,admin,,,
432,89275,784,11638,841,1,0,N,N,N,CP_Drtn,TT_Task,DT_FixedDUR2,RV_OK,TK_NotStart,A14310,excavation,,328,0,16,0,0,0,16,0,0,0,,,,2010-08-28 08:00,2010-08-29 16:00,,2010-07-11 08:00,2010-07-12 16:00,2010-07-11 08:00,2010-07-12 16:00,2010-07-11 08:00,2010-07-12 16:00,,2010-08-28 08:00,2010-08-29 16:00,,PT_Normal,,,,,5wusXAemFkOfgc0bxLMOpQ,VxwBtm7Qr02+DoNpRcctfA,,,N,0,0,,,2010-08-08 11:54,2010-08-08 11:54,admin,admin,,,
433,89276,784,11638,841,1,0,N,N,N,CP_Drtn,TT_Task,DT_FixedDUR2,RV_OK,TK_NotStart,A14320,soil replacement,,328,0,96,0,0,0,96,0,0,0,,,,2010-08-30 08:00,2010-09-12 16:00,,2010-07-13 08:00,2010-07-26 16:00,2010-07-13 08:00,2010-07-26 16:00,2010-07-13 08:00,2010-07-26 16:00,,2010-08-30 08:00,2010-09-12 16:00,,PT_Normal,,,,,q2WJE8/UlEqQhyiVQDPNZA,w1YGFFH9cEKv7mWPfMU26g,,,N,0,0,,,2010-08-08 11:54,2010-08-08 11:54,admin,admin,,,
434,89277,784,11598,841,1,0,N,N,N,CP_Drtn,TT_Task,DT_FixedDUR2,RV_OK,TK_NotStart,A14330,Plain Concrete Foundation,,328,0,16,0,0,0,16,0,0,0,,,,2010-09-13 08:00,2010-09-14 16:00,,2010-07-27 08:00,2010-07-28 16:00,2010-07-27 08:00,2010-07-28 16:00,2010-07-27 08:00,2010-07-28 16:00,,2010-09-13 08:00,2010-09-14 16:00,,PT_Normal,,,,,BrKViJe5CkuybgLHb08fRA,kg1PoEWHZUeNVxz1/Di/FQ,,,N,0,0,,,2010-08-08 11:54,2010-08-08 11:54,admin,admin,,,
435,89278,784,11598,841,1,0,N,N,N,CP_Drtn,TT_Task,DT_FixedDUR2,RV_OK,TK_NotStart,A14340,Reinforced Concrete Foundation,,328,0,56,0,0,0,56,0,0,0,,,,2010-09-19 08:00,2010-09-26 16:00,,2010-08-02 08:00,2010-08-09 16:00,2010-08-02 08:00,2010-08-09 16:00,2010-08-02 08:00,2010-08-09 16:00,,2010-09-19 08:00,2010-09-26 16:00,,PT_Normal,,,,,DVcuQvRqFU6+wBBMveqfbQ,6xRTtyRlWUu5DJi19PpHNg,,,N,0,0,,,2010-08-08 11:54,2010-08-08 11:54,admin,admin,,,
436,89279,784,11598,841,1,0,N,N,N,CP_Drtn,TT_Task,DT_FixedDUR2,RV_OK,TK_NotStart,A14350,under ground  brick works,,328,0,16,0,0,0,16,0,0,0,,,,2010-10-04 08:00,2010-10-05 16:00,,2010-08-17 08:00,2010-08-18 16:00,2010-08-17 08:00,2010-08-18 16:00,2010-08-17 08:00,2010-08-18 16:00,,2010-10-04 08:00,2010-10-05 16:00,,PT_Normal,,,,,Dkr6L1JKt0C+FFR/zUK3KA,7Vymva1g3UWLeaGECLRdPQ,,,N,0,0,,,2010-08-08 11:54,2010-08-08 11:54,admin,admin,,,
437,89280,784,11598,841,1,0,N,N,N,CP_Drtn,TT_Task,DT_FixedDUR2,RV_OK,TK_NotStart,A14360,under ground insulation for RC & Brick work,,328,0,16,0,0,0,16,0,0,0,,,,2010-10-06 08:00,2010-10-07 16:00,,2010-08-19 08:00,2010-08-21 16:00,2010-08-19 08:00,2010-08-21 16:00,2010-08-19 08:00,2010-08-21 16:00,,2010-10-06 08:00,2010-10-07 16:00,,PT_Normal,,,,,Qx18iWPXmEK0l8QDLj10mw,eDMaMboB/UKBuELOCVKqAw,,,N,0,0,,,2010-08-08 11:54,2010-08-08 11:54,admin,admin,,,
438,89281,784,11598,841,1,0,N,N,N,CP_Drtn,TT_Task,DT_FixedDUR2,RV_OK,TK_NotStart,A14370,backfilling for under ground,,328,0,32,0,0,0,32,0,0,0,,,,2010-10-09 08:00,2010-10-12 16:00,,2010-08-22 08:00,2010-08-25 16:00,2010-08-22 08:00,2010-08-25 16:00,2010-08-22 08:00,2010-08-25 16:00,,2010-10-09 08:00,2010-10-12 16:00,,PT_Normal,,,,,EyG7BpmglEiGkSzNr09Gyg,TygJN3uXtEiw0LzMqXejgg,,,N,0,0,,,2010-08-08 11:54,2010-08-08 11:54,admin,admin,,,
439,89282,784,11598,841,1,0,N,N,N,CP_Drtn,TT_Task,DT_FixedDUR2,RV_OK,TK_NotStart,A14380,P.C slab on grade 10CM,,392,0,8,0,0,0,8,0,0,0,,,,2010-11-25 08:00,2010-11-25 16:00,,2010-09-25 08:00,2010-09-25 16:00,2010-09-25 08:00,2010-09-25 16:00,2010-09-25 08:00,2010-09-25 16:00,,2010-11-25 08:00,2010-11-25 16:00,,PT_Normal,,,,,jC2xaoj9lUyTlOXzuclnFg,1JEykNaWh0yN/cXJeaGDCg,,,N,0,0,,,2010-08-08 11:54,2010-08-08 11:54,admin,admin,,,
440,89283,784,11598,841,1,0,N,N,N,CP_Drtn,TT_Task,DT_FixedDUR2,RV_OK,TK_NotStart,A14390,moisture insulation with membrane sheets,,392,0,16,0,0,0,16,0,0,0,,,,2010-11-27 08:00,2010-11-28 16:00,,2010-09-26 08:00,2010-09-27 16:00,2010-09-26 08:00,2010-09-27 16:00,2010-09-26 08:00,2010-09-27 16:00,,2010-11-27 08:00,2010-11-28 16:00,,PT_Normal,,,,,bi7ogWH4Uk2mbpnPJpEjTg,/7JlwSfB5EOEwMx19kk8Ig,,,N,0,0,,,2010-08-08 11:54,2010-08-08 11:54,admin,admin,,,
441,89284,784,11598,841,1,0,N,N,N,CP_Drtn,TT_Task,DT_FixedDUR2,RV_OK,TK_NotStart,A14400,R.C slab on grade,,392,0,16,0,0,0,16,0,0,0,,,,2010-11-29 08:00,2010-11-30 16:00,,2010-09-28 08:00,2010-09-29 16:00,2010-09-28 08:00,2010-09-29 16:00,2010-09-28 08:00,2010-09-29 16:00,,2010-11-29 08:00,2010-11-30 16:00,,PT_Normal,,,,,XlZ2k9dwVku6HFEBeq76cA,5OyMMzsqck2ytMNUYFzfWg,,,N,0,0,,,2010-08-08 11:54,2010-08-08 11:54,admin,admin,,,
442,89285,784,11599,841,1,0,N,N,N,CP_Drtn,TT_Task,DT_FixedDUR2,RV_OK,TK_NotStart,A14410,columns for ground floor,,328,0,48,0,0,0,48,0,0,0,,,,2010-09-27 08:00,2010-10-03 16:00,,2010-08-10 08:00,2010-08-16 16:00,2010-08-10 08:00,2010-08-16 16:00,2010-08-10 08:00,2010-08-16 16:00,,2010-09-27 08:00,2010-10-03 16:00,,PT_Normal,,,,,8IKlbigUw0Os+Np9+tLE+w,VwK13sKHPE2aTkR2/S/N6g,,,N,0,0,,,2010-08-08 11:54,2010-08-08 11:54,admin,admin,,,
443,89286,784,11599,841,1,0,N,N,N,CP_Drtn,TT_Task,DT_FixedDUR2,RV_OK,TK_NotStart,A14420,slab for ground floor,,328,0,72,0,0,0,72,0,0,0,,,,2010-10-13 08:00,2010-10-23 16:00,,2010-08-26 08:00,2010-09-05 16:00,2010-08-26 08:00,2010-09-05 16:00,2010-08-26 08:00,2010-09-05 16:00,,2010-10-13 08:00,2010-10-23 16:00,,PT_Normal,,,,,0XU++h+oPEKKqcqAJgx2Ww,TIJQxfBkckGR0AVbYzX0pw,,,N,0,0,,,2010-08-08 11:54,2010-08-08 11:54,admin,admin,,,
444,89287,784,11599,841,1,0,N,N,N,CP_Drtn,TT_Task,DT_FixedDUR2,RV_OK,TK_NotStart,A14430,columns for 1st floor,,328,0,48,0,0,0,48,0,0,0,,,,2010-10-25 08:00,2010-10-31 16:00,,2010-09-07 08:00,2010-09-13 16:00,2010-09-07 08:00,2010-09-13 16:00,2010-09-07 08:00,2010-09-13 16:00,,2010-10-25 08:00,2010-10-31 16:00,,PT_Normal,,,,,4vJS3AGd5kKVQ47cdcKtxQ,R6/xLJ/cFkCe7KFzNx7dmQ,,,N,0,0,,,2010-08-08 11:54,2010-08-08 11:54,admin,admin,,,
445,89288,784,11599,841,1,0,N,N,N,CP_Drtn,TT_Task,DT_FixedDUR2,RV_OK,TK_NotStart,A14440,slab for 1st floor,,328,0,72,0,0,0,72,0,0,0,,,,2010-11-01 08:00,2010-11-10 16:00,,2010-09-14 08:00,2010-09-23 16:00,2010-09-14 08:00,2010-09-23 16:00,2010-09-14 08:00,2010-09-23 16:00,,2010-11-01 08:00,2010-11-10 16:00,,PT_Normal,,,,,XPhVLC/H+0GDIT9tWmAPjw,kHImqFpg/kudVNwk1XMh3A,,,N,0,0,,,2010-08-08 11:54,2010-08-08 11:54,admin,admin,,,
446,89289,784,11599,841,1,0,N,N,N,CP_Drtn,TT_Task,DT_FixedDUR2,RV_OK,TK_NotStart,A14450,columns for roof floor,,328,0,32,0,0,0,32,0,0,0,,,,2010-11-20 08:00,2010-11-23 16:00,,2010-09-28 08:00,2010-10-02 16:00,2010-09-28 08:00,2010-10-02 16:00,2010-09-28 08:00,2010-10-02 16:00,,2010-11-20 08:00,2010-11-23 16:00,,PT_Normal,,,,,3Ckyk2JW+UieHxG8uuZJ7A,5L5iB/pyAUCXrW7rfOFpEQ,,,N,0,0,,,2010-08-08 11:54,2010-08-08 11:54,admin,admin,,,
447,89290,784,11599,841,1,0,N,N,N,CP_Drtn,TT_Task,DT_FixedDUR2,RV_OK,TK_NotStart,A14460,slab for roof floor,,328,0,48,0,0,0,48,0,0,0,,,,2010-11-24 08:00,2010-11-30 16:00,,2010-10-03 08:00,2010-10-09 16:00,2010-10-03 08:00,2010-10-09 16:00,2010-10-03 08:00,2010-10-09 16:00,,2010-11-24 08:00,2010-11-30 16:00,,PT_Normal,,,,,MjhpDFUwU02ph+tS11D2NA,3FBRzUfR+0Gk7Sw/TH5+2Q,,,N,0,0,,,2010-08-08 11:54,2010-08-08 11:54,admin,admin,,,
448,89291,784,11599,841,1,0,N,N,N,CP_Drtn,TT_Task,DT_FixedDUR2,RV_OK,TK_NotStart,A14470,Brick works for ground floor,,392,0,40,0,0,0,40,0,0,0,,,,2010-11-20 08:00,2010-11-24 16:00,,2010-09-19 08:00,2010-09-23 16:00,2010-09-19 08:00,2010-09-23 16:00,2010-09-19 08:00,2010-09-23 16:00,,2010-11-20 08:00,2010-11-24 16:00,,PT_Normal,,,,,PWf9XJ6pqUuHT4zoDQ6Fqw,alvY5weq/0OiUkvWq+A1Ag,,,N,0,0,,,2010-08-08 11:54,2010-08-08 11:54,admin,admin,,,
449,89292,784,11600,841,1,0,N,N,N,CP_Drtn,TT_Task,DT_FixedDrtn,RV_OK,TK_NotStart,A14480,electrical conduits for ground floor's slab,,336,8,16,0,0,0,16,0,0,0,,,,2010-10-19 08:00,2010-10-20 16:00,,2010-08-31 08:00,2010-09-01 16:00,2010-08-31 08:00,2010-09-01 16:00,2010-08-31 08:00,2010-09-01 16:00,,2010-10-19 08:00,2010-10-20 16:00,,PT_Normal,,,,,ELfeyp+YWEeQgNls67TmRg,W69o0K57W0q6JG5bLgG8uw,,,N,0,0,,,2010-08-08 11:54,2010-08-08 11:54,admin,admin,,,
450,89293,784,11600,841,1,0,N,N,N,CP_Drtn,TT_Task,DT_FixedDrtn,RV_OK,TK_NotStart,A14490,electrical conduits for 1st floor slab,,336,8,16,0,0,0,16,0,0,0,,,,2010-11-07 08:00,2010-11-08 16:00,,2010-09-19 08:00,2010-09-20 16:00,2010-09-19 08:00,2010-09-20 16:00,2010-09-19 08:00,2010-09-20 16:00,,2010-11-07 08:00,2010-11-08 16:00,,PT_Normal,,,,,7J1V8rycBEeg2tndAL7VJQ,jl5rQOqH1E6Q34W/ojGH5w,,,N,0,0,,,2010-08-08 11:54,2010-08-08 11:54,admin,admin,,,
451,89294,784,11600,841,1,0,N,N,N,CP_Drtn,TT_Task,DT_FixedDrtn,RV_OK,TK_NotStart,A14500,electrical conduits for roof slab,,336,8,8,0,0,0,8,0,0,0,,,,2010-11-29 08:00,2010-11-29 16:00,,2010-10-06 08:00,2010-10-06 16:00,2010-10-06 08:00,2010-10-06 16:00,2010-10-06 08:00,2010-10-06 16:00,,2010-11-29 08:00,2010-11-29 16:00,,PT_Normal,,,,,klKbwGvb4Ua2vxSsIyPhXA,LZjAKFeOLEirxSWBxF3IBQ,,,N,0,0,,,2010-08-08 11:54,2010-08-08 11:54,admin,admin,,,
452,89295,784,11601,841,1,0,N,N,N,CP_Drtn,TT_Task,DT_FixedDUR2,RV_OK,TK_NotStart,A14510,Internal plastering for ground floor,,392,16,64,0,0,0,64,0,0,0,,,,2010-12-05 08:00,2010-12-13 16:00,,2010-10-04 08:00,2010-10-12 16:00,2010-10-04 08:00,2010-10-12 16:00,2010-10-04 08:00,2010-10-12 16:00,,2010-12-05 08:00,2010-12-13 16:00,,PT_Normal,,,,,gcyd3lEw5Eyvw8E87BOO4w,CcZ149Y0E060itIUJhxSLQ,,,N,0,0,,,2010-08-08 11:54,2010-08-08 11:54,admin,admin,,,
453,89296,784,11601,841,1,0,N,N,N,CP_Drtn,TT_Task,DT_FixedDUR2,RV_OK,TK_NotStart,A14520,External plastering,,328,0,80,0,0,0,80,0,0,0,,,,2010-12-18 08:00,2010-12-28 16:00,,2010-10-26 08:00,2010-11-06 16:00,2010-10-26 08:00,2010-11-06 16:00,2010-10-26 08:00,2010-11-06 16:00,,2010-12-18 08:00,2010-12-28 16:00,,PT_Normal,,,,,JjgMPiH+Gka55jB6H14ysQ,uJtc/hgqUkCFMNa0I4WgTQ,,,N,0,0,,,2010-08-08 11:54,2010-08-08 11:54,admin,admin,,,
454,89297,784,11600,841,1,0,N,N,N,CP_Drtn,TT_Task,DT_FixedDrtn,RV_OK,TK_NotStart,A14530,plumbing connections under slab on grade,,576,184,16,0,0,0,16,0,0,0,,,,2010-11-23 08:00,2010-11-24 16:00,,2010-08-26 08:00,2010-08-28 16:00,2010-08-26 08:00,2010-08-28 16:00,2010-08-26 08:00,2010-08-28 16:00,,2010-11-23 08:00,2010-11-24 16:00,,PT_Normal,,,,,/WABkalVlUqabW6H4w43HA,/X7yQ2Fm9Eia0K8NhkMOGw,,,N,0,0,,,2010-08-08 11:54,2010-08-08 11:54,admin,admin,,,
455,89298,784,11637,841,0,0,N,N,N,CP_Drtn,TT_Mile,DT_FixedDrtn,RV_OK,TK_NotStart,A14540,Start Villa construction,,328,0,0,0,0,0,0,0,0,0,,,,2010-08-28 08:00,2010-08-28 08:00,,2010-07-11 08:00,2010-07-11 08:00,2010-07-11 08:00,2010-07-11 08:00,2010-07-11 08:00,2010-07-11 08:00,,2010-08-28 08:00,2010-08-28 08:00,,PT_Normal,,,,,ThnBEP6ysEqhaLgPmcjYng,HhV9zClD7UacIo3ANWSQ9w,,,N,0,0,,,2010-08-08 11:54,2010-08-08 19:39,admin,admin,,,
456,89299,784,11637,841,0,0,N,N,N,CP_Drtn,TT_FinMile,DT_FixedDrtn,RV_OK,TK_NotStart,A14550,finish Villa construction,,328,328,0,0,0,0,0,0,0,0,,,,2010-12-28 16:00,2010-12-28 16:00,,2010-11-06 16:00,2010-11-06 16:00,2010-11-06 16:00,2010-11-06 16:00,2010-11-06 16:00,2010-11-06 16:00,,2010-12-28 16:00,2010-12-28 16:00,,PT_Normal,,,,,HfaQaNU8N0anNnNbLxhI0Q,Ya3cKnqfxUap51RYTiRxtA,,,N,0,0,,,2010-08-08 11:54,2010-08-08 11:54,admin,admin,,,
457,89300,784,11637,841,0,0,N,N,N,CP_Drtn,TT_Mile,DT_FixedDrtn,RV_OK,TK_NotStart,A14560,IFC drawings,,328,0,0,0,0,0,0,0,0,0,,,,2010-08-08 08:00,2010-08-08 08:00,,2010-06-21 08:00,2010-06-21 08:00,2010-06-21 08:00,2010-06-21 08:00,2010-06-21 08:00,2010-06-21 08:00,,2010-08-08 08:00,2010-08-08 08:00,,PT_Normal,,,,,+GpGlWDqKUiPpcmD0rEa6Q,EQRuTZ5ZrkS2FotWaEbqJw,,,N,0,0,,,2010-08-08 11:54,2010-08-08 11:54,admin,admin,,,
458,89301,784,11599,841,1,0,N,N,N,CP_Drtn,TT_Task,DT_FixedDUR2,RV_OK,TK_NotStart,A14570,pouring for ground floor's slab,,328,0,8,0,0,0,8,0,0,0,,,,2010-10-24 08:00,2010-10-24 16:00,,2010-09-06 08:00,2010-09-06 16:00,2010-09-06 08:00,2010-09-06 16:00,2010-09-06 08:00,2010-09-06 16:00,,2010-10-24 08:00,2010-10-24 16:00,,PT_Normal,,,,,meO2zzpGzk6W32y3pbU3Zw,WyGsAf+Uf06wwj355hzIyA,,,N,0,0,,,2010-08-08 11:54,2010-08-08 11:54,admin,admin,,,
459,89302,784,11599,841,1,0,N,N,N,CP_Drtn,TT_Task,DT_FixedDUR2,RV_OK,TK_NotStart,A14580,pouring for 1st floor's slab,,328,0,8,0,0,0,8,0,0,0,,,,2010-11-11 08:00,2010-11-11 16:00,,2010-09-25 08:00,2010-09-25 16:00,2010-09-25 08:00,2010-09-25 16:00,2010-09-25 08:00,2010-09-25 16:00,,2010-11-11 08:00,2010-11-11 16:00,,PT_Normal,,,,,V9z0MBbwxUS99DFIEMi7kA,jxjms2BLsUCiE8y2NtiQsA,,,N,0,0,,,2010-08-08 11:54,2010-08-08 11:54,admin,admin,,,
460,89303,784,11599,841,1,0,N,N,N,CP_Drtn,TT_Task,DT_FixedDUR2,RV_OK,TK_NotStart,A14590,pouring for roof floor's slab,,328,0,8,0,0,0,8,0,0,0,,,,2010-12-01 08:00,2010-12-01 16:00,,2010-10-10 08:00,2010-10-10 16:00,2010-10-10 08:00,2010-10-10 16:00,2010-10-10 08:00,2010-10-10 16:00,,2010-12-01 08:00,2010-12-01 16:00,,PT_Normal,,,,,fWy65je1xkq6cIg8pnrilA,Q6xRm/n/P0CefyT73Kc5ew,,,N,0,0,,,2010-08-08 11:54,2010-08-08 11:54,admin,admin,,,
461,89304,784,11599,841,1,0,N,N,N,CP_Drtn,TT_Task,DT_FixedDrtn,RV_OK,TK_NotStart,A14600,Fence work,,344,16,400,0,0,0,400,0,0,0,,,,2010-10-27 08:00,2010-12-28 16:00,,2010-09-07 08:00,2010-11-03 16:00,2010-09-07 08:00,2010-11-03 16:00,2010-09-07 08:00,2010-11-03 16:00,,2010-10-27 08:00,2010-12-28 16:00,,PT_Normal,,,,,cWMdg1//K06uZ9eTvNhX7A,P3vjFmOb9UGhi8gTitUbgw,,,N,0,0,,,2010-08-08 11:54,2010-08-08 11:54,admin,admin,,,
462,89305,784,11637,841,1,0,N,N,N,CP_Drtn,TT_Task,DT_FixedDUR2,RV_OK,TK_NotStart,A14610,Fence Drawings IFC,,656,312,8,0,0,0,8,0,0,0,,,,2010-10-14 08:00,2010-10-14 16:00,,2010-07-11 08:00,2010-07-11 16:00,2010-07-11 08:00,2010-07-11 16:00,2010-07-11 08:00,2010-07-11 16:00,,2010-10-14 08:00,2010-10-14 16:00,,PT_Normal,,,,,5DBMk0gelUCSftkPRnEnSg,8B3OdyGfZUq1Qlv8jFMb2g,,,N,0,0,,,2010-08-08 11:54,2010-08-08 19:39,admin,admin,,,
463,89306,784,11598,873,1,0,N,N,N,CP_Drtn,TT_Task,DT_FixedDUR2,RV_OK,TK_NotStart,A14620,backfilling between P.C Foundation,,296,0,16,0,0,0,16,0,0,0,,,,2010-09-16 08:00,2010-09-18 16:00,,2010-07-31 08:00,2010-08-01 16:00,2010-07-31 08:00,2010-08-01 16:00,2010-07-31 08:00,2010-08-01 16:00,,2010-09-16 08:00,2010-09-18 16:00,,PT_Normal,,,,,m5i9fO9aE0mpPLbXz8roXw,086riDaba0WW0eVU8QtBDw,,,N,0,0,,,2010-08-08 11:54,2010-08-08 11:54,admin,admin,,,
464,89307,784,11599,873,1,0,N,N,N,CP_Drtn,TT_Task,DT_FixedDUR2,RV_OK,TK_NotStart,A14640,Brick works for 1st floor,,408,0,40,0,0,0,40,0,0,0,,,,2010-12-06 08:00,2010-12-11 16:00,,2010-10-07 08:00,2010-10-12 16:00,2010-10-07 08:00,2010-10-12 16:00,2010-10-07 08:00,2010-10-12 16:00,,2010-12-06 08:00,2010-12-11 16:00,,PT_Normal,,,,,jX+i/jODwESL63EPoYY5bA,jxI8gY0Ox06fZpSIx0qOxQ,,,N,0,0,,,2010-08-08 11:54,2010-08-08 11:54,admin,admin,,,
465,89308,784,11599,873,1,0,N,N,N,CP_Drtn,TT_Task,DT_FixedDUR2,RV_OK,TK_NotStart,A14650,Brick works for roof floor,,360,0,40,0,0,0,40,0,0,0,,,,2010-12-12 08:00,2010-12-16 16:00,,2010-10-20 08:00,2010-10-25 16:00,2010-10-20 08:00,2010-10-25 16:00,2010-10-20 08:00,2010-10-25 16:00,,2010-12-12 08:00,2010-12-16 16:00,,PT_Normal,,,,,UzGFV6ZiNEaeU60fWR61pw,N/MN6kbHJkmzwaSzPSLuXQ,,,N,0,0,,,2010-08-08 11:54,2010-08-08 11:54,admin,admin,,,
466,89309,784,11601,873,1,0,N,N,N,CP_Drtn,TT_Task,DT_FixedDUR2,RV_OK,TK_NotStart,A14660,Internal plastering for 1st floor,,408,24,64,0,0,0,64,0,0,0,,,,2010-12-14 08:00,2010-12-22 16:00,,2010-10-16 08:00,2010-10-24 16:00,2010-10-16 08:00,2010-10-24 16:00,2010-10-16 08:00,2010-10-24 16:00,,2010-12-14 08:00,2010-12-22 16:00,,PT_Normal,,,,,ZIj4QL63+k6X2BgoASeQKQ,FJtH/UIW2EeDq/rYkG5rQw,,,N,0,0,,,2010-08-08 11:54,2010-08-08 11:54,admin,admin,,,
467,89310,784,11601,873,1,0,N,N,N,CP_Drtn,TT_Task,DT_FixedDUR2,RV_OK,TK_NotStart,A14670,Internal plastering for roof floor,,384,24,40,0,0,0,40,0,0,0,,,,2010-12-23 08:00,2010-12-28 16:00,,2010-10-28 08:00,2010-11-02 16:00,2010-10-28 08:00,2010-11-02 16:00,2010-10-28 08:00,2010-11-02 16:00,,2010-12-23 08:00,2010-12-28 16:00,,PT_Normal,,,,,ePxPR+07y0GQoMqANQdL7w,d11ZuFuJsEGcKOKg4qONxw,,,N,0,0,,,2010-08-08 11:54,2010-08-08 11:54,admin,admin,,,
468,89311,784,11600,873,1,0,N,N,N,CP_Drtn,TT_Task,DT_FixedDUR2,RV_OK,TK_NotStart,A14680,electrical conduits for ground floor walls,,424,0,16,0,0,0,16,0,0,0,,,,2010-12-02 08:00,2010-12-04 16:00,,2010-10-02 08:00,2010-10-03 16:00,2010-10-02 08:00,2010-10-03 16:00,2010-10-02 08:00,2010-10-03 16:00,,2010-12-02 08:00,2010-12-04 16:00,,PT_Normal,,,,,aeuJ7kq35kCnWxZcWJaWWw,72TF+LTDLU6Cy9P/aBOMLw,,,N,0,0,,,2010-08-08 11:54,2010-08-08 11:54,admin,admin,,,
469,89312,784,11600,873,1,0,N,N,N,CP_Drtn,TT_Task,DT_FixedDUR2,RV_OK,TK_NotStart,A14690,electrical conduits for 1st floor walls,,408,0,16,0,0,0,16,0,0,0,,,,2010-12-12 08:00,2010-12-13 16:00,,2010-10-13 08:00,2010-10-14 16:00,2010-10-13 08:00,2010-10-14 16:00,2010-10-13 08:00,2010-10-14 16:00,,2010-12-12 08:00,2010-12-13 16:00,,PT_Normal,,,,,NxhwPUZj10OepGy1iUVeOQ,SWo5DOg/dUSmf+J4cxFb0g,,,N,0,0,,,2010-08-08 11:54,2010-08-08 11:54,admin,admin,,,
470,89313,784,11600,873,1,0,N,N,N,CP_Drtn,TT_Task,DT_FixedDUR2,RV_OK,TK_NotStart,A14700,electrical conduits for roof floor walls,,384,0,16,0,0,0,16,0,0,0,,,,2010-12-21 08:00,2010-12-22 16:00,,2010-10-26 08:00,2010-10-27 16:00,2010-10-26 08:00,2010-10-27 16:00,2010-10-26 08:00,2010-10-27 16:00,,2010-12-21 08:00,2010-12-22 16:00,,PT_Normal,,,,,vMizf8CaD0GBTnOnCA58ZA,Qd3oa5UwaE+pqwoZ6xkgpg,,,N,0,0,,,2010-08-08 11:54,2010-08-08 11:54,admin,admin,,,
471,89314,784,11604,841,1,0,N,N,N,CP_Drtn,TT_Task,DT_FixedDUR2,RV_OK,TK_NotStart,A14710,excavation,,320,0,0,0,0,0,0,0,0,0,,,,2010-08-26 16:00,2010-08-26 16:00,,2010-07-12 08:00,2010-07-12 08:00,2010-07-12 08:00,2010-07-12 08:00,2010-07-12 08:00,2010-07-12 08:00,,2010-08-26 16:00,2010-08-26 16:00,,PT_Normal,,,,,qHVkDef8B02igoeevg4lNQ,HTdEg68JmkuKxmh4Yc4FQA,,,N,0,0,,,2010-08-08 11:54,2010-08-08 11:54,admin,admin,,,
472,89315,784,11604,841,1,0,N,N,N,CP_Drtn,TT_Task,DT_FixedDUR2,RV_OK,TK_NotStart,A14720,soil replacement,,320,0,112,0,0,0,112,0,0,0,,,,2010-08-28 08:00,2010-09-12 16:00,,2010-07-12 08:00,2010-07-27 16:00,2010-07-12 08:00,2010-07-27 16:00,2010-07-12 08:00,2010-07-27 16:00,,2010-08-28 08:00,2010-09-12 16:00,,PT_Normal,,,,,fQ+0qZPlrkWrNJ38EljcpQ,gK7MA1C+MUmz0zjuNZuu2g,,,N,0,0,,,2010-08-08 11:54,2010-08-08 11:54,admin,admin,,,
473,89316,784,11605,841,1,0,N,N,N,CP_Drtn,TT_Task,DT_FixedDUR2,RV_OK,TK_NotStart,A14730,Plain Concrete Foundation,,320,0,16,0,0,0,16,0,0,0,,,,2010-09-13 08:00,2010-09-14 16:00,,2010-07-28 08:00,2010-07-29 16:00,2010-07-28 08:00,2010-07-29 16:00,2010-07-28 08:00,2010-07-29 16:00,,2010-09-13 08:00,2010-09-14 16:00,,PT_Normal,,,,,+TGMGd6bcUGfPba6Jrsurw,cV/PSAzmiEi094kDnNHHnw,,,N,0,0,,,2010-08-08 11:54,2010-08-08 11:54,admin,admin,,,
474,89317,784,11605,841,1,0,N,N,N,CP_Drtn,TT_Task,DT_FixedDUR2,RV_OK,TK_NotStart,A14740,Reinforced Concrete Foundation,,320,0,56,0,0,0,56,0,0,0,,,,2010-09-19 08:00,2010-09-26 16:00,,2010-08-03 08:00,2010-08-10 16:00,2010-08-03 08:00,2010-08-10 16:00,2010-08-03 08:00,2010-08-10 16:00,,2010-09-19 08:00,2010-09-26 16:00,,PT_Normal,,,,,aI91dkM1SUeGkGMx3umZbQ,4E/6pLketUeGeEGhhluk8Q,,,N,0,0,,,2010-08-08 11:54,2010-08-08 11:54,admin,admin,,,
475,89318,784,11605,841,1,0,N,N,N,CP_Drtn,TT_Task,DT_FixedDUR2,RV_OK,TK_NotStart,A14750,under ground  brick works,,320,0,16,0,0,0,16,0,0,0,,,,2010-10-04 08:00,2010-10-05 16:00,,2010-08-18 08:00,2010-08-19 16:00,2010-08-18 08:00,2010-08-19 16:00,2010-08-18 08:00,2010-08-19 16:00,,2010-10-04 08:00,2010-10-05 16:00,,PT_Normal,,,,,9rTbzCFr9EOHIa7110d8ag,6Waps6IJNES7E6oIJUvsVA,,,N,0,0,,,2010-08-08 11:54,2010-08-08 11:54,admin,admin,,,
476,89319,784,11605,841,1,0,N,N,N,CP_Drtn,TT_Task,DT_FixedDUR2,RV_OK,TK_NotStart,A14760,under ground insulation for RC & Brick work,,320,0,16,0,0,0,16,0,0,0,,,,2010-10-06 08:00,2010-10-07 16:00,,2010-08-21 08:00,2010-08-22 16:00,2010-08-21 08:00,2010-08-22 16:00,2010-08-21 08:00,2010-08-22 16:00,,2010-10-06 08:00,2010-10-07 16:00,,PT_Normal,,,,,gnwI47kuZ0qwo/KDE9wRkg,xT8wr+27RkOocIfAHp0Cag,,,N,0,0,,,2010-08-08 11:54,2010-08-08 11:54,admin,admin,,,
477,89320,784,11605,841,1,0,N,N,N,CP_Drtn,TT_Task,DT_FixedDUR2,RV_OK,TK_NotStart,A14770,backfilling for under ground,,320,0,32,0,0,0,32,0,0,0,,,,2010-10-09 08:00,2010-10-12 16:00,,2010-08-23 08:00,2010-08-26 16:00,2010-08-23 08:00,2010-08-26 16:00,2010-08-23 08:00,2010-08-26 16:00,,2010-10-09 08:00,2010-10-12 16:00,,PT_Normal,,,,,4VpM34f70UO0oV0y99ppTA,x4Kn4XZ490Ge3HHxHO8yMA,,,N,0,0,,,2010-08-08 11:54,2010-08-08 11:54,admin,admin,,,
478,89321,784,11605,841,1,0,N,N,N,CP_Drtn,TT_Task,DT_FixedDUR2,RV_OK,TK_NotStart,A14780,P.C slab on grade 10CM,,384,0,8,0,0,0,8,0,0,0,,,,2010-11-25 08:00,2010-11-25 16:00,,2010-09-26 08:00,2010-09-26 16:00,2010-09-26 08:00,2010-09-26 16:00,2010-09-26 08:00,2010-09-26 16:00,,2010-11-25 08:00,2010-11-25 16:00,,PT_Normal,,,,,swtwYg6ScU6GToSltOdb2w,6Ro4RwzGeEGggp1znSZDBg,,,N,0,0,,,2010-08-08 11:54,2010-08-08 11:54,admin,admin,,,
479,89322,784,11605,841,1,0,N,N,N,CP_Drtn,TT_Task,DT_FixedDUR2,RV_OK,TK_NotStart,A14790,moisture insulation with membrane sheets,,384,0,16,0,0,0,16,0,0,0,,,,2010-11-27 08:00,2010-11-28 16:00,,2010-09-27 08:00,2010-09-28 16:00,2010-09-27 08:00,2010-09-28 16:00,2010-09-27 08:00,2010-09-28 16:00,,2010-11-27 08:00,2010-11-28 16:00,,PT_Normal,,,,,EkQ2atf+cE+mdPjIKHF1XA,5MQttXcViUOBHrBij9FfFw,,,N,0,0,,,2010-08-08 11:54,2010-08-08 11:54,admin,admin,,,
480,89323,784,11605,841,1,0,N,N,N,CP_Drtn,TT_Task,DT_FixedDUR2,RV_OK,TK_NotStart,A14800,R.C slab on grade,,384,0,16,0,0,0,16,0,0,0,,,,2010-11-29 08:00,2010-11-30 16:00,,2010-09-29 08:00,2010-09-30 16:00,2010-09-29 08:00,2010-09-30 16:00,2010-09-29 08:00,2010-09-30 16:00,,2010-11-29 08:00,2010-11-30 16:00,,PT_Normal,,,,,65TDGpPNd0yh54BDj6Rslw,qYBMYQbTaEC6bnvnmuD/pA,,,N,0,0,,,2010-08-08 11:54,2010-08-08 11:54,admin,admin,,,
481,89324,784,11606,841,1,0,N,N,N,CP_Drtn,TT_Task,DT_FixedDUR2,RV_OK,TK_NotStart,A14810,columns for ground floor,,320,0,48,0,0,0,48,0,0,0,,,,2010-09-27 08:00,2010-10-03 16:00,,2010-08-11 08:00,2010-08-17 16:00,2010-08-11 08:00,2010-08-17 16:00,2010-08-11 08:00,2010-08-17 16:00,,2010-09-27 08:00,2010-10-03 16:00,,PT_Normal,,,,,8rp7fnS8lk2ZU6Va5+A6xA,LOKSBWw6iEOjVhCWpNDkUw,,,N,0,0,,,2010-08-08 11:54,2010-08-08 11:54,admin,admin,,,
482,89325,784,11606,841,1,0,N,N,N,CP_Drtn,TT_Task,DT_FixedDUR2,RV_OK,TK_NotStart,A14820,slab for ground floor,,320,0,72,0,0,0,72,0,0,0,,,,2010-10-13 08:00,2010-10-23 16:00,,2010-08-28 08:00,2010-09-06 16:00,2010-08-28 08:00,2010-09-06 16:00,2010-08-28 08:00,2010-09-06 16:00,,2010-10-13 08:00,2010-10-23 16:00,,PT_Normal,,,,,l8N6GPpLPEiVDGAJj2m4ZA,Ba14inbBkEidtv2URw0S3Q,,,N,0,0,,,2010-08-08 11:54,2010-08-08 11:54,admin,admin,,,
483,89326,784,11606,841,1,0,N,N,N,CP_Drtn,TT_Task,DT_FixedDUR2,RV_OK,TK_NotStart,A14830,columns for 1st floor,,320,0,48,0,0,0,48,0,0,0,,,,2010-10-25 08:00,2010-10-31 16:00,,2010-09-08 08:00,2010-09-14 16:00,2010-09-08 08:00,2010-09-14 16:00,2010-09-08 08:00,2010-09-14 16:00,,2010-10-25 08:00,2010-10-31 16:00,,PT_Normal,,,,,29rkH3bOLEKdDh3DICx4hA,AES5fglGJkq9tZr6cMCfdA,,,N,0,0,,,2010-08-08 11:54,2010-08-08 11:54,admin,admin,,,
484,89327,784,11606,841,1,0,N,N,N,CP_Drtn,TT_Task,DT_FixedDUR2,RV_OK,TK_NotStart,A14840,slab for 1st floor,,320,0,72,0,0,0,72,0,0,0,,,,2010-11-01 08:00,2010-11-10 16:00,,2010-09-15 08:00,2010-09-25 16:00,2010-09-15 08:00,2010-09-25 16:00,2010-09-15 08:00,2010-09-25 16:00,,2010-11-01 08:00,2010-11-10 16:00,,PT_Normal,,,,,/FD6MLI12Uq+J0S+c9bO4A,PtbaWLc7+0aKl9nk1TFKsQ,,,N,0,0,,,2010-08-08 11:54,2010-08-08 11:54,admin,admin,,,
485,89328,784,11606,841,1,0,N,N,N,CP_Drtn,TT_Task,DT_FixedDUR2,RV_OK,TK_NotStart,A14850,columns for roof floor,,320,0,32,0,0,0,32,0,0,0,,,,2010-11-20 08:00,2010-11-23 16:00,,2010-09-29 08:00,2010-10-03 16:00,2010-09-29 08:00,2010-10-03 16:00,2010-09-29 08:00,2010-10-03 16:00,,2010-11-20 08:00,2010-11-23 16:00,,PT_Normal,,,,,pYd8y9qLqEiTVq2DbljIeQ,V0LRwCE92kmSkSce93HueA,,,N,0,0,,,2010-08-08 11:54,2010-08-08 11:54,admin,admin,,,
486,89329,784,11606,841,1,0,N,N,N,CP_Drtn,TT_Task,DT_FixedDUR2,RV_OK,TK_NotStart,A14860,slab for roof floor,,320,0,48,0,0,0,48,0,0,0,,,,2010-11-24 08:00,2010-11-30 16:00,,2010-10-04 08:00,2010-10-10 16:00,2010-10-04 08:00,2010-10-10 16:00,2010-10-04 08:00,2010-10-10 16:00,,2010-11-24 08:00,2010-11-30 16:00,,PT_Normal,,,,,vMhf4+Q1tkK/6trBp0Ki8w,8mp7XTy3YkOM5g1z7PRb6Q,,,N,0,0,,,2010-08-08 11:54,2010-08-08 11:54,admin,admin,,,
487,89330,784,11606,841,1,0,N,N,N,CP_Drtn,TT_Task,DT_FixedDUR2,RV_OK,TK_NotStart,A14870,Brick works for ground floor,,384,0,40,0,0,0,40,0,0,0,,,,2010-11-20 08:00,2010-11-24 16:00,,2010-09-20 08:00,2010-09-25 16:00,2010-09-20 08:00,2010-09-25 16:00,2010-09-20 08:00,2010-09-25 16:00,,2010-11-20 08:00,2010-11-24 16:00,,PT_Normal,,,,,HGSdIyqKKE+WvQ0FF8w7gA,tCBpaFHNlEaLrzGDqikSJA,,,N,0,0,,,2010-08-08 11:54,2010-08-08 11:54,admin,admin,,,
488,89331,784,11607,841,1,0,N,N,N,CP_Drtn,TT_Task,DT_FixedDrtn,RV_OK,TK_NotStart,A14880,electrical conduits for ground floor's slab,,328,8,16,0,0,0,16,0,0,0,,,,2010-10-19 08:00,2010-10-20 16:00,,2010-09-01 08:00,2010-09-02 16:00,2010-09-01 08:00,2010-09-02 16:00,2010-09-01 08:00,2010-09-02 16:00,,2010-10-19 08:00,2010-10-20 16:00,,PT_Normal,,,,,XtptPX0exUeBPJkGLZSGiQ,3jI1C4mzMEaLNsWaFjnYZA,,,N,0,0,,,2010-08-08 11:54,2010-08-08 11:54,admin,admin,,,
489,89332,784,11607,841,1,0,N,N,N,CP_Drtn,TT_Task,DT_FixedDrtn,RV_OK,TK_NotStart,A14890,electrical conduits for 1st floor slab,,328,8,16,0,0,0,16,0,0,0,,,,2010-11-07 08:00,2010-11-08 16:00,,2010-09-20 08:00,2010-09-21 16:00,2010-09-20 08:00,2010-09-21 16:00,2010-09-20 08:00,2010-09-21 16:00,,2010-11-07 08:00,2010-11-08 16:00,,PT_Normal,,,,,Iurior1f1UaNuEduV4+CcA,E8DNjXrd5EKyS7QaWNF6jw,,,N,0,0,,,2010-08-08 11:54,2010-08-08 11:54,admin,admin,,,
490,89333,784,11607,841,1,0,N,N,N,CP_Drtn,TT_Task,DT_FixedDrtn,RV_OK,TK_NotStart,A14900,electrical conduits for roof slab,,328,8,8,0,0,0,8,0,0,0,,,,2010-11-29 08:00,2010-11-29 16:00,,2010-10-07 08:00,2010-10-07 16:00,2010-10-07 08:00,2010-10-07 16:00,2010-10-07 08:00,2010-10-07 16:00,,2010-11-29 08:00,2010-11-29 16:00,,PT_Normal,,,,,/jlncM3MeEuuIWKFLuhDgA,sGAH7hFuUE6Item6KNbDTA,,,N,0,0,,,2010-08-08 11:54,2010-08-08 11:54,admin,admin,,,
491,89334,784,11608,841,1,0,N,N,N,CP_Drtn,TT_Task,DT_FixedDUR2,RV_OK,TK_NotStart,A14910,Internal plastering for ground floor,,384,16,64,0,0,0,64,0,0,0,,,,2010-12-05 08:00,2010-12-13 16:00,,2010-10-05 08:00,2010-10-13 16:00,2010-10-05 08:00,2010-10-13 16:00,2010-10-05 08:00,2010-10-13 16:00,,2010-12-05 08:00,2010-12-13 16:00,,PT_Normal,,,,,7HIIFPgXg020sPLxQINBrw,kU1Sv/4YtUeGtOwJ0/ZPzA,,,N,0,0,,,2010-08-08 11:54,2010-08-08 11:54,admin,admin,,,
492,89335,784,11608,841,1,0,N,N,N,CP_Drtn,TT_Task,DT_FixedDUR2,RV_OK,TK_NotStart,A14920,External plastering,,320,0,80,0,0,0,80,0,0,0,,,,2010-12-18 08:00,2010-12-28 16:00,,2010-10-27 08:00,2010-11-07 16:00,2010-10-27 08:00,2010-11-07 16:00,2010-10-27 08:00,2010-11-07 16:00,,2010-12-18 08:00,2010-12-28 16:00,,PT_Normal,,,,,i8q20h3yY0mx+W309ve56A,fC2Ijhbo4kSWXRqKyl/xcg,,,N,0,0,,,2010-08-08 11:54,2010-08-08 11:54,admin,admin,,,
493,89336,784,11607,841,1,0,N,N,N,CP_Drtn,TT_Task,DT_FixedDrtn,RV_OK,TK_NotStart,A14930,plumbing connections under slab on grade,,568,184,16,0,0,0,16,0,0,0,,,,2010-11-23 08:00,2010-11-24 16:00,,2010-08-28 08:00,2010-08-29 16:00,2010-08-28 08:00,2010-08-29 16:00,2010-08-28 08:00,2010-08-29 16:00,,2010-11-23 08:00,2010-11-24 16:00,,PT_Normal,,,,,5/gGXSCfykSP8EZBgwhoBQ,MspAADh270upJK2o8exxqw,,,N,0,0,,,2010-08-08 11:54,2010-08-08 11:54,admin,admin,,,
494,89337,784,11644,841,0,0,N,N,N,CP_Drtn,TT_Mile,DT_FixedDrtn,RV_OK,TK_NotStart,A14940,Start Villa construction,,319.983333,0,0,0,0,0,0,0,0,0,,,,2010-08-26 15:59,2010-08-26 15:59,,2010-07-12 08:00,2010-07-12 08:00,2010-07-12 08:00,2010-07-12 08:00,2010-07-12 08:00,2010-07-12 08:00,,2010-08-26 15:59,2010-08-26 15:59,,PT_Normal,,,,,Uq8R/naXDUu2kH/821VAEA,3TJfjNTtd0+vRDC21X5iPA,,,N,0,0,,,2010-08-08 11:54,2010-08-08 19:39,admin,admin,,,
495,89338,784,11644,841,0,0,N,N,N,CP_Drtn,TT_FinMile,DT_FixedDrtn,RV_OK,TK_NotStart,A14950,finish Villa construction,,320,320,0,0,0,0,0,0,0,0,,,,2010-12-28 16:00,2010-12-28 16:00,,2010-11-07 16:00,2010-11-07 16:00,2010-11-07 16:00,2010-11-07 16:00,2010-11-07 16:00,2010-11-07 16:00,,2010-12-28 16:00,2010-12-28 16:00,,PT_Normal,,,,,GF/QQRh/XkSKjOP5ebExrQ,X0Nnjuf6PUyqFQBhdafDlA,,,N,0,0,,,2010-08-08 11:54,2010-08-08 11:54,admin,admin,,,
496,89339,784,11644,841,0,0,N,N,N,CP_Drtn,TT_Mile,DT_FixedDrtn,RV_OK,TK_NotStart,A14960,IFC drawings,,319.983333,0,0,0,0,0,0,0,0,0,,,,2010-08-05 15:59,2010-08-05 15:59,,2010-06-21 08:00,2010-06-21 08:00,2010-06-21 08:00,2010-06-21 08:00,2010-06-21 08:00,2010-06-21 08:00,,2010-08-05 15:59,2010-08-05 15:59,,PT_Normal,,,,,8TmgLLE9JE6jxGBXfYH54g,CzBRYb2fKEm7PRwsIA1DAw,,,N,0,0,,,2010-08-08 11:54,2010-08-08 19:39,admin,admin,,,
497,89340,784,11606,841,1,0,N,N,N,CP_Drtn,TT_Task,DT_FixedDUR2,RV_OK,TK_NotStart,A14970,pouring for ground floor's slab,,320,0,8,0,0,0,8,0,0,0,,,,2010-10-24 08:00,2010-10-24 16:00,,2010-09-07 08:00,2010-09-07 16:00,2010-09-07 08:00,2010-09-07 16:00,2010-09-07 08:00,2010-09-07 16:00,,2010-10-24 08:00,2010-10-24 16:00,,PT_Normal,,,,,T5Wj2WHaaUG4jS+scymoqA,aIc7YxhwEkqP4MSQ3sFIKA,,,N,0,0,,,2010-08-08 11:54,2010-08-08 11:54,admin,admin,,,
498,89341,784,11606,841,1,0,N,N,N,CP_Drtn,TT_Task,DT_FixedDUR2,RV_OK,TK_NotStart,A14980,pouring for 1st floor's slab,,320,0,8,0,0,0,8,0,0,0,,,,2010-11-11 08:00,2010-11-11 16:00,,2010-09-26 08:00,2010-09-26 16:00,2010-09-26 08:00,2010-09-26 16:00,2010-09-26 08:00,2010-09-26 16:00,,2010-11-11 08:00,2010-11-11 16:00,,PT_Normal,,,,,jh5vzaWYu02gnni4iSOKog,FPaD4/bR4EGwgqfjRGrPAw,,,N,0,0,,,2010-08-08 11:54,2010-08-08 11:54,admin,admin,,,
499,89342,784,11606,841,1,0,N,N,N,CP_Drtn,TT_Task,DT_FixedDUR2,RV_OK,TK_NotStart,A14990,pouring for roof floor's slab,,320,0,8,0,0,0,8,0,0,0,,,,2010-12-01 08:00,2010-12-01 16:00,,2010-10-11 08:00,2010-10-11 16:00,2010-10-11 08:00,2010-10-11 16:00,2010-10-11 08:00,2010-10-11 16:00,,2010-12-01 08:00,2010-12-01 16:00,,PT_Normal,,,,,UYri4XnBEEiwnCYSWtB4jw,g8hA6GL7E068Vprc1cj1eQ,,,N,0,0,,,2010-08-08 11:54,2010-08-08 11:54,admin,admin,,,
500,89343,784,11606,841,1,0,N,N,N,CP_Drtn,TT_Task,DT_FixedDrtn,RV_OK,TK_NotStart,A15000,Fence work,,336,16,400,0,0,0,400,0,0,0,,,,2010-10-27 08:00,2010-12-28 16:00,,2010-09-08 08:00,2010-11-04 16:00,2010-09-08 08:00,2010-11-04 16:00,2010-09-08 08:00,2010-11-04 16:00,,2010-10-27 08:00,2010-12-28 16:00,,PT_Normal,,,,,/T6QSFAwPESmDElb7Mb0XA,sFRm1vupLEmBxZfrG+hO2w,,,N,0,0,,,2010-08-08 11:54,2010-08-08 11:54,admin,admin,,,
501,89344,784,11644,841,1,0,N,N,N,CP_Drtn,TT_Task,DT_FixedDUR2,RV_OK,TK_NotStart,A15010,Fence Drawings IFC,,648,312,8,0,0,0,8,0,0,0,,,,2010-10-14 08:00,2010-10-14 16:00,,2010-07-12 08:00,2010-07-12 16:00,2010-07-12 08:00,2010-07-12 16:00,2010-07-12 08:00,2010-07-12 16:00,,2010-10-14 08:00,2010-10-14 16:00,,PT_Normal,,,,,3op8MhXFJkyTYOjnIL6jpA,SJ7H5fTmkEislZCa8kUx7Q,,,N,0,0,,,2010-08-08 11:54,2010-08-08 19:39,admin,admin,,,
502,89345,784,11605,873,1,0,N,N,N,CP_Drtn,TT_Task,DT_FixedDUR2,RV_OK,TK_NotStart,A15020,backfilling between P.C Foundation,,288,0,16,0,0,0,16,0,0,0,,,,2010-09-16 08:00,2010-09-18 16:00,,2010-08-01 08:00,2010-08-02 16:00,2010-08-01 08:00,2010-08-02 16:00,2010-08-01 08:00,2010-08-02 16:00,,2010-09-16 08:00,2010-09-18 16:00,,PT_Normal,,,,,RCHTGWICaUWVtSRQX3kpjA,CLBaWs8z3ky10ONsYOt32Q,,,N,0,0,,,2010-08-08 11:54,2010-08-08 11:54,admin,admin,,,
503,89346,784,11606,873,1,0,N,N,N,CP_Drtn,TT_Task,DT_FixedDUR2,RV_OK,TK_NotStart,A15040,Brick works for 1st floor,,400,0,40,0,0,0,40,0,0,0,,,,2010-12-06 08:00,2010-12-11 16:00,,2010-10-09 08:00,2010-10-13 16:00,2010-10-09 08:00,2010-10-13 16:00,2010-10-09 08:00,2010-10-13 16:00,,2010-12-06 08:00,2010-12-11 16:00,,PT_Normal,,,,,qTVF0hJ+oEqIKc7bwtHrxA,z7Q/g38H9US9bwL6l006Ig,,,N,0,0,,,2010-08-08 11:54,2010-08-08 11:54,admin,admin,,,
504,89347,784,11606,873,1,0,N,N,N,CP_Drtn,TT_Task,DT_FixedDUR2,RV_OK,TK_NotStart,A15050,Brick works for roof floor,,352,0,40,0,0,0,40,0,0,0,,,,2010-12-12 08:00,2010-12-16 16:00,,2010-10-21 08:00,2010-10-26 16:00,2010-10-21 08:00,2010-10-26 16:00,2010-10-21 08:00,2010-10-26 16:00,,2010-12-12 08:00,2010-12-16 16:00,,PT_Normal,,,,,z2p5BqNnA0mluk5gGvVLlA,a274PAaJl06OYu0jccZ8BA,,,N,0,0,,,2010-08-08 11:54,2010-08-08 11:54,admin,admin,,,
505,89348,784,11608,873,1,0,N,N,N,CP_Drtn,TT_Task,DT_FixedDUR2,RV_OK,TK_NotStart,A15060,Internal plastering for 1st floor,,400,24,64,0,0,0,64,0,0,0,,,,2010-12-14 08:00,2010-12-22 16:00,,2010-10-17 08:00,2010-10-25 16:00,2010-10-17 08:00,2010-10-25 16:00,2010-10-17 08:00,2010-10-25 16:00,,2010-12-14 08:00,2010-12-22 16:00,,PT_Normal,,,,,u5++4u1I+U+EbhOCkSRaEA,/d/DXSBMN0uPnwsFg05otw,,,N,0,0,,,2010-08-08 11:54,2010-08-08 11:54,admin,admin,,,
506,89349,784,11608,873,1,0,N,N,N,CP_Drtn,TT_Task,DT_FixedDUR2,RV_OK,TK_NotStart,A15070,Internal plastering for roof floor,,376,24,40,0,0,0,40,0,0,0,,,,2010-12-23 08:00,2010-12-28 16:00,,2010-10-30 08:00,2010-11-03 16:00,2010-10-30 08:00,2010-11-03 16:00,2010-10-30 08:00,2010-11-03 16:00,,2010-12-23 08:00,2010-12-28 16:00,,PT_Normal,,,,,/qWbYxC96UCh2A+HIXNNdA,Je9RT6iVC0ihXbCYx3eeHw,,,N,0,0,,,2010-08-08 11:54,2010-08-08 11:54,admin,admin,,,
507,89350,784,11607,873,1,0,N,N,N,CP_Drtn,TT_Task,DT_FixedDUR2,RV_OK,TK_NotStart,A15080,electrical conduits for ground floor walls,,416,0,16,0,0,0,16,0,0,0,,,,2010-12-02 08:00,2010-12-04 16:00,,2010-10-03 08:00,2010-10-04 16:00,2010-10-03 08:00,2010-10-04 16:00,2010-10-03 08:00,2010-10-04 16:00,,2010-12-02 08:00,2010-12-04 16:00,,PT_Normal,,,,,fhhEAKgoSEWIs3WmBc2JDQ,96OIvWAXrUuHPpIQBe+PKg,,,N,0,0,,,2010-08-08 11:54,2010-08-08 11:54,admin,admin,,,
508,89351,784,11607,873,1,0,N,N,N,CP_Drtn,TT_Task,DT_FixedDUR2,RV_OK,TK_NotStart,A15090,electrical conduits for 1st floor walls,,400,0,16,0,0,0,16,0,0,0,,,,2010-12-12 08:00,2010-12-13 16:00,,2010-10-14 08:00,2010-10-16 16:00,2010-10-14 08:00,2010-10-16 16:00,2010-10-14 08:00,2010-10-16 16:00,,2010-12-12 08:00,2010-12-13 16:00,,PT_Normal,,,,,btdtnPi/90SlJHoXf51big,A8oJIDC/xUO/0ZeSFTpcdw,,,N,0,0,,,2010-08-08 11:54,2010-08-08 11:54,admin,admin,,,
509,89352,784,11607,873,1,0,N,N,N,CP_Drtn,TT_Task,DT_FixedDUR2,RV_OK,TK_NotStart,A15100,electrical conduits for roof floor walls,,376,0,16,0,0,0,16,0,0,0,,,,2010-12-21 08:00,2010-12-22 16:00,,2010-10-27 08:00,2010-10-28 16:00,2010-10-27 08:00,2010-10-28 16:00,2010-10-27 08:00,2010-10-28 16:00,,2010-12-21 08:00,2010-12-22 16:00,,PT_Normal,,,,,LDhTtLqY2kqoAnmVvhnwCw,S1p+ZbDY8EufYOkA/yYujA,,,N,0,0,,,2010-08-08 11:54,2010-08-08 11:54,admin,admin,,,
510,89353,784,11611,841,1,0,N,N,N,CP_Drtn,TT_Task,DT_FixedDUR2,RV_OK,TK_NotStart,A15110,excavation,,312,0,0,0,0,0,0,0,0,0,,,,2010-08-26 16:00,2010-08-26 16:00,,2010-07-13 08:00,2010-07-13 08:00,2010-07-13 08:00,2010-07-13 08:00,2010-07-13 08:00,2010-07-13 08:00,,2010-08-26 16:00,2010-08-26 16:00,,PT_Normal,,,,,ZkuQQAqkCESZfg6OA6lH+A,gjnl46IS90WIhjiXQUCy3w,,,N,0,0,,,2010-08-08 11:54,2010-08-08 11:54,admin,admin,,,
511,89354,784,11611,841,1,0,N,N,N,CP_Drtn,TT_Task,DT_FixedDUR2,RV_OK,TK_NotStart,A15120,soil replacement,,312,0,112,0,0,0,112,0,0,0,,,,2010-08-28 08:00,2010-09-12 16:00,,2010-07-13 08:00,2010-07-28 16:00,2010-07-13 08:00,2010-07-28 16:00,2010-07-13 08:00,2010-07-28 16:00,,2010-08-28 08:00,2010-09-12 16:00,,PT_Normal,,,,,2D1FacJGwEa5y4kq3W+fBg,ht14OhR+3USvqcdgUY0lXQ,,,N,0,0,,,2010-08-08 11:54,2010-08-08 11:54,admin,admin,,,
512,89355,784,11612,841,1,0,N,N,N,CP_Drtn,TT_Task,DT_FixedDUR2,RV_OK,TK_NotStart,A15130,Plain Concrete Foundation,,312,0,16,0,0,0,16,0,0,0,,,,2010-09-13 08:00,2010-09-14 16:00,,2010-07-29 08:00,2010-07-31 16:00,2010-07-29 08:00,2010-07-31 16:00,2010-07-29 08:00,2010-07-31 16:00,,2010-09-13 08:00,2010-09-14 16:00,,PT_Normal,,,,,Oe7qK4rGc0Ksr/PjnDsdvg,r14fOqwEzEuP3hZycfmNmQ,,,N,0,0,,,2010-08-08 11:54,2010-08-08 11:54,admin,admin,,,
513,89356,784,11612,841,1,0,N,N,N,CP_Drtn,TT_Task,DT_FixedDUR2,RV_OK,TK_NotStart,A15140,Reinforced Concrete Foundation,,312,0,56,0,0,0,56,0,0,0,,,,2010-09-19 08:00,2010-09-26 16:00,,2010-08-04 08:00,2010-08-11 16:00,2010-08-04 08:00,2010-08-11 16:00,2010-08-04 08:00,2010-08-11 16:00,,2010-09-19 08:00,2010-09-26 16:00,,PT_Normal,,,,,031AzTsd1Ual6Z1pMFC3aA,cT7hjIjcikKlUh0pq+VMmg,,,N,0,0,,,2010-08-08 11:54,2010-08-08 11:54,admin,admin,,,
514,89357,784,11612,841,1,0,N,N,N,CP_Drtn,TT_Task,DT_FixedDUR2,RV_OK,TK_NotStart,A15150,under ground  brick works,,312,0,16,0,0,0,16,0,0,0,,,,2010-10-04 08:00,2010-10-05 16:00,,2010-08-19 08:00,2010-08-21 16:00,2010-08-19 08:00,2010-08-21 16:00,2010-08-19 08:00,2010-08-21 16:00,,2010-10-04 08:00,2010-10-05 16:00,,PT_Normal,,,,,1bYmvLfFDkSEauwfn9fS9w,I5rmTprRMESL3H9GL8wPHw,,,N,0,0,,,2010-08-08 11:54,2010-08-08 11:54,admin,admin,,,
515,89358,784,11612,841,1,0,N,N,N,CP_Drtn,TT_Task,DT_FixedDUR2,RV_OK,TK_NotStart,A15160,under ground insulation for RC & Brick work,,312,0,16,0,0,0,16,0,0,0,,,,2010-10-06 08:00,2010-10-07 16:00,,2010-08-22 08:00,2010-08-23 16:00,2010-08-22 08:00,2010-08-23 16:00,2010-08-22 08:00,2010-08-23 16:00,,2010-10-06 08:00,2010-10-07 16:00,,PT_Normal,,,,,UAwuBD0bZU+UkUZNVQYydA,nw0NqgFssEqkN0H5W0czIg,,,N,0,0,,,2010-08-08 11:54,2010-08-08 11:54,admin,admin,,,
516,89359,784,11612,841,1,0,N,N,N,CP_Drtn,TT_Task,DT_FixedDUR2,RV_OK,TK_NotStart,A15170,backfilling for under ground,,312,0,32,0,0,0,32,0,0,0,,,,2010-10-09 08:00,2010-10-12 16:00,,2010-08-24 08:00,2010-08-28 16:00,2010-08-24 08:00,2010-08-28 16:00,2010-08-24 08:00,2010-08-28 16:00,,2010-10-09 08:00,2010-10-12 16:00,,PT_Normal,,,,,oAPJ73xkOkGueQq9DpZHrg,RFKsF6FFKUuwzRDqqZhhDg,,,N,0,0,,,2010-08-08 11:54,2010-08-08 11:54,admin,admin,,,
517,89360,784,11612,841,1,0,N,N,N,CP_Drtn,TT_Task,DT_FixedDUR2,RV_OK,TK_NotStart,A15180,P.C slab on grade 10CM,,376,0,8,0,0,0,8,0,0,0,,,,2010-11-25 08:00,2010-11-25 16:00,,2010-09-27 08:00,2010-09-27 16:00,2010-09-27 08:00,2010-09-27 16:00,2010-09-27 08:00,2010-09-27 16:00,,2010-11-25 08:00,2010-11-25 16:00,,PT_Normal,,,,,YF+f1PBjCUeyZCRgvu5GZQ,bGQKy3+ASUqr/tUTRYb/RA,,,N,0,0,,,2010-08-08 11:54,2010-08-08 11:54,admin,admin,,,
518,89361,784,11612,841,1,0,N,N,N,CP_Drtn,TT_Task,DT_FixedDUR2,RV_OK,TK_NotStart,A15190,moisture insulation with membrane sheets,,376,0,16,0,0,0,16,0,0,0,,,,2010-11-27 08:00,2010-11-28 16:00,,2010-09-28 08:00,2010-09-29 16:00,2010-09-28 08:00,2010-09-29 16:00,2010-09-28 08:00,2010-09-29 16:00,,2010-11-27 08:00,2010-11-28 16:00,,PT_Normal,,,,,kuWS5cIcTkuhZLZJt4rEsw,YT87NfWnykeZnnXZOmO2XA,,,N,0,0,,,2010-08-08 11:54,2010-08-08 11:54,admin,admin,,,
519,89362,784,11612,841,1,0,N,N,N,CP_Drtn,TT_Task,DT_FixedDUR2,RV_OK,TK_NotStart,A15200,R.C slab on grade,,376,0,16,0,0,0,16,0,0,0,,,,2010-11-29 08:00,2010-11-30 16:00,,2010-09-30 08:00,2010-10-02 16:00,2010-09-30 08:00,2010-10-02 16:00,2010-09-30 08:00,2010-10-02 16:00,,2010-11-29 08:00,2010-11-30 16:00,,PT_Normal,,,,,Z73onP8iBEukhgGkq0NCzg,ZaeDBbeeCUyIoFLb4MFVZw,,,N,0,0,,,2010-08-08 11:54,2010-08-08 11:54,admin,admin,,,
520,89363,784,11613,841,1,0,N,N,N,CP_Drtn,TT_Task,DT_FixedDUR2,RV_OK,TK_NotStart,A15210,columns for ground floor,,312,0,48,0,0,0,48,0,0,0,,,,2010-09-27 08:00,2010-10-03 16:00,,2010-08-12 08:00,2010-08-18 16:00,2010-08-12 08:00,2010-08-18 16:00,2010-08-12 08:00,2010-08-18 16:00,,2010-09-27 08:00,2010-10-03 16:00,,PT_Normal,,,,,cVgkL82wWECKj67rKM/nbg,MWaWhsEJHESldi/SfmnvtQ,,,N,0,0,,,2010-08-08 11:54,2010-08-08 11:54,admin,admin,,,
521,89364,784,11613,841,1,0,N,N,N,CP_Drtn,TT_Task,DT_FixedDUR2,RV_OK,TK_NotStart,A15220,slab for ground floor,,312,0,72,0,0,0,72,0,0,0,,,,2010-10-13 08:00,2010-10-23 16:00,,2010-08-29 08:00,2010-09-07 16:00,2010-08-29 08:00,2010-09-07 16:00,2010-08-29 08:00,2010-09-07 16:00,,2010-10-13 08:00,2010-10-23 16:00,,PT_Normal,,,,,XHK5c4UdtkaEZwzV+zxNuQ,disbAZgPEkylyqB8pn8a2A,,,N,0,0,,,2010-08-08 11:54,2010-08-08 11:54,admin,admin,,,
522,89365,784,11613,841,1,0,N,N,N,CP_Drtn,TT_Task,DT_FixedDUR2,RV_OK,TK_NotStart,A15230,columns for 1st floor,,312,0,48,0,0,0,48,0,0,0,,,,2010-10-25 08:00,2010-10-31 16:00,,2010-09-09 08:00,2010-09-15 16:00,2010-09-09 08:00,2010-09-15 16:00,2010-09-09 08:00,2010-09-15 16:00,,2010-10-25 08:00,2010-10-31 16:00,,PT_Normal,,,,,vFQArJUogUSvqI8IrsnpAA,sUYXH6Z5gUCPzUvNj++E3A,,,N,0,0,,,2010-08-08 11:54,2010-08-08 11:54,admin,admin,,,
523,89366,784,11613,841,1,0,N,N,N,CP_Drtn,TT_Task,DT_FixedDUR2,RV_OK,TK_NotStart,A15240,slab for 1st floor,,312,0,72,0,0,0,72,0,0,0,,,,2010-11-01 08:00,2010-11-10 16:00,,2010-09-16 08:00,2010-09-26 16:00,2010-09-16 08:00,2010-09-26 16:00,2010-09-16 08:00,2010-09-26 16:00,,2010-11-01 08:00,2010-11-10 16:00,,PT_Normal,,,,,xv/pmDW320eC6U+QhVgv3g,dwQIuFKfbkeLwupXj1s4zQ,,,N,0,0,,,2010-08-08 11:54,2010-08-08 11:54,admin,admin,,,
524,89367,784,11613,841,1,0,N,N,N,CP_Drtn,TT_Task,DT_FixedDUR2,RV_OK,TK_NotStart,A15250,columns for roof floor,,312,0,32,0,0,0,32,0,0,0,,,,2010-11-20 08:00,2010-11-23 16:00,,2010-09-30 08:00,2010-10-04 16:00,2010-09-30 08:00,2010-10-04 16:00,2010-09-30 08:00,2010-10-04 16:00,,2010-11-20 08:00,2010-11-23 16:00,,PT_Normal,,,,,XkqkYfvzQkOW9HSzaZ1hvA,n5mEcOUaYEiZlBtVlAg3Mg,,,N,0,0,,,2010-08-08 11:54,2010-08-08 11:54,admin,admin,,,
525,89368,784,11613,841,1,0,N,N,N,CP_Drtn,TT_Task,DT_FixedDUR2,RV_OK,TK_NotStart,A15260,slab for roof floor,,312,0,48,0,0,0,48,0,0,0,,,,2010-11-24 08:00,2010-11-30 16:00,,2010-10-05 08:00,2010-10-11 16:00,2010-10-05 08:00,2010-10-11 16:00,2010-10-05 08:00,2010-10-11 16:00,,2010-11-24 08:00,2010-11-30 16:00,,PT_Normal,,,,,Qr7wxaJw8U65zEz4iV0Ogg,+knOImiHZ0i+dhZX/ZFHzA,,,N,0,0,,,2010-08-08 11:54,2010-08-08 11:54,admin,admin,,,
526,89369,784,11613,841,1,0,N,N,N,CP_Drtn,TT_Task,DT_FixedDUR2,RV_OK,TK_NotStart,A15270,Brick works for ground floor,,376,0,40,0,0,0,40,0,0,0,,,,2010-11-20 08:00,2010-11-24 16:00,,2010-09-21 08:00,2010-09-26 16:00,2010-09-21 08:00,2010-09-26 16:00,2010-09-21 08:00,2010-09-26 16:00,,2010-11-20 08:00,2010-11-24 16:00,,PT_Normal,,,,,pkPZbZm8j0+kl3wGY+Mzxg,tPW5D+1810yk+Tw6aN5lbQ,,,N,0,0,,,2010-08-08 11:54,2010-08-08 11:54,admin,admin,,,
527,89370,784,11614,841,1,0,N,N,N,CP_Drtn,TT_Task,DT_FixedDrtn,RV_OK,TK_NotStart,A15280,electrical conduits for ground floor's slab,,320,8,16,0,0,0,16,0,0,0,,,,2010-10-19 08:00,2010-10-20 16:00,,2010-09-02 08:00,2010-09-04 16:00,2010-09-02 08:00,2010-09-04 16:00,2010-09-02 08:00,2010-09-04 16:00,,2010-10-19 08:00,2010-10-20 16:00,,PT_Normal,,,,,UQVK9ToGbEO80w6KyZROhw,P0wYYmgdAEi9Eg7zXcSrUA,,,N,0,0,,,2010-08-08 11:54,2010-08-08 11:54,admin,admin,,,
528,89371,784,11614,841,1,0,N,N,N,CP_Drtn,TT_Task,DT_FixedDrtn,RV_OK,TK_NotStart,A15290,electrical conduits for 1st floor slab,,320,8,16,0,0,0,16,0,0,0,,,,2010-11-07 08:00,2010-11-08 16:00,,2010-09-21 08:00,2010-09-22 16:00,2010-09-21 08:00,2010-09-22 16:00,2010-09-21 08:00,2010-09-22 16:00,,2010-11-07 08:00,2010-11-08 16:00,,PT_Normal,,,,,R4SV05mDtESgFldJJWnPCw,KApd//h4kUK8RUomeWnW+Q,,,N,0,0,,,2010-08-08 11:54,2010-08-08 11:54,admin,admin,,,
529,89372,784,11614,841,1,0,N,N,N,CP_Drtn,TT_Task,DT_FixedDrtn,RV_OK,TK_NotStart,A15300,electrical conduits for roof slab,,320,8,8,0,0,0,8,0,0,0,,,,2010-11-29 08:00,2010-11-29 16:00,,2010-10-09 08:00,2010-10-09 16:00,2010-10-09 08:00,2010-10-09 16:00,2010-10-09 08:00,2010-10-09 16:00,,2010-11-29 08:00,2010-11-29 16:00,,PT_Normal,,,,,dgKA7tjGE0eyQ3QReItqng,lR1P6e4RK0SgK/X3y3+k7g,,,N,0,0,,,2010-08-08 11:54,2010-08-08 11:54,admin,admin,,,
530,89373,784,11615,841,1,0,N,N,N,CP_Drtn,TT_Task,DT_FixedDUR2,RV_OK,TK_NotStart,A15310,Internal plastering for ground floor,,376,16,64,0,0,0,64,0,0,0,,,,2010-12-05 08:00,2010-12-13 16:00,,2010-10-06 08:00,2010-10-14 16:00,2010-10-06 08:00,2010-10-14 16:00,2010-10-06 08:00,2010-10-14 16:00,,2010-12-05 08:00,2010-12-13 16:00,,PT_Normal,,,,,fplEj5GoQUukBKP3ggwX9Q,MSRPI2oDfUOv4kiptN+yNw,,,N,0,0,,,2010-08-08 11:54,2010-08-08 11:54,admin,admin,,,
531,89374,784,11615,841,1,0,N,N,N,CP_Drtn,TT_Task,DT_FixedDUR2,RV_OK,TK_NotStart,A15320,External plastering,,312,0,80,0,0,0,80,0,0,0,,,,2010-12-18 08:00,2010-12-28 16:00,,2010-10-28 08:00,2010-11-08 16:00,2010-10-28 08:00,2010-11-08 16:00,2010-10-28 08:00,2010-11-08 16:00,,2010-12-18 08:00,2010-12-28 16:00,,PT_Normal,,,,,o1mshWbZREi1/4iy42R2Ew,03EzYkGIJ0iQ/VBkcopgYA,,,N,0,0,,,2010-08-08 11:54,2010-08-08 11:54,admin,admin,,,
532,89375,784,11614,841,1,0,N,N,N,CP_Drtn,TT_Task,DT_FixedDrtn,RV_OK,TK_NotStart,A15330,plumbing connections under slab on grade,,560,184,16,0,0,0,16,0,0,0,,,,2010-11-23 08:00,2010-11-24 16:00,,2010-08-29 08:00,2010-08-30 16:00,2010-08-29 08:00,2010-08-30 16:00,2010-08-29 08:00,2010-08-30 16:00,,2010-11-23 08:00,2010-11-24 16:00,,PT_Normal,,,,,7BZM07t/8kOYbaRvo9BsTA,OYUdT6X6Skan+PPgR8qd3w,,,N,0,0,,,2010-08-08 11:54,2010-08-08 11:54,admin,admin,,,
533,89376,784,11651,841,0,0,N,N,N,CP_Drtn,TT_Mile,DT_FixedDrtn,RV_OK,TK_NotStart,A15340,Start Villa construction,,311.983333,0,0,0,0,0,0,0,0,0,,,,2010-08-26 15:59,2010-08-26 15:59,,2010-07-13 08:00,2010-07-13 08:00,2010-07-13 08:00,2010-07-13 08:00,2010-07-13 08:00,2010-07-13 08:00,,2010-08-26 15:59,2010-08-26 15:59,,PT_Normal,,,,,3TelaxDfq06X+K17+kM2fA,nXdC/JZI00KJ5QwDiYXdAg,,,N,0,0,,,2010-08-08 11:54,2010-08-08 19:39,admin,admin,,,
534,89377,784,11651,841,0,0,N,N,N,CP_Drtn,TT_FinMile,DT_FixedDrtn,RV_OK,TK_NotStart,A15350,finish Villa construction,,312,312,0,0,0,0,0,0,0,0,,,,2010-12-28 16:00,2010-12-28 16:00,,2010-11-08 16:00,2010-11-08 16:00,2010-11-08 16:00,2010-11-08 16:00,2010-11-08 16:00,2010-11-08 16:00,,2010-12-28 16:00,2010-12-28 16:00,,PT_Normal,,,,,6yw5h2cEfE+xV9D77rw5og,PqHaf7BEBUmvpCXhZvBbtQ,,,N,0,0,,,2010-08-08 11:54,2010-08-08 11:54,admin,admin,,,
535,89378,784,11651,841,0,0,N,N,N,CP_Drtn,TT_Mile,DT_FixedDrtn,RV_OK,TK_NotStart,A15360,IFC drawings,,311.983333,0,0,0,0,0,0,0,0,0,,,,2010-08-04 15:59,2010-08-04 15:59,,2010-06-21 08:00,2010-06-21 08:00,2010-06-21 08:00,2010-06-21 08:00,2010-06-21 08:00,2010-06-21 08:00,,2010-08-04 15:59,2010-08-04 15:59,,PT_Normal,,,,,tS++HewJ7kWcmJ6mONrSYg,hD+reLjOCUa50hyjIUQcnw,,,N,0,0,,,2010-08-08 11:54,2010-08-08 19:39,admin,admin,,,
536,89379,784,11613,841,1,0,N,N,N,CP_Drtn,TT_Task,DT_FixedDUR2,RV_OK,TK_NotStart,A15370,pouring for ground floor's slab,,312,0,8,0,0,0,8,0,0,0,,,,2010-10-24 08:00,2010-10-24 16:00,,2010-09-08 08:00,2010-09-08 16:00,2010-09-08 08:00,2010-09-08 16:00,2010-09-08 08:00,2010-09-08 16:00,,2010-10-24 08:00,2010-10-24 16:00,,PT_Normal,,,,,NfHOgMCOPUC51nRfMnLceg,1X2DfRwnDkuddFPzJ0VyOw,,,N,0,0,,,2010-08-08 11:54,2010-08-08 11:54,admin,admin,,,
537,89380,784,11613,841,1,0,N,N,N,CP_Drtn,TT_Task,DT_FixedDUR2,RV_OK,TK_NotStart,A15380,pouring for 1st floor's slab,,312,0,8,0,0,0,8,0,0,0,,,,2010-11-11 08:00,2010-11-11 16:00,,2010-09-27 08:00,2010-09-27 16:00,2010-09-27 08:00,2010-09-27 16:00,2010-09-27 08:00,2010-09-27 16:00,,2010-11-11 08:00,2010-11-11 16:00,,PT_Normal,,,,,kRq9w1k68kWLGz7VOxTHKQ,Ned47nHZv0KFhn+g8C67sw,,,N,0,0,,,2010-08-08 11:54,2010-08-08 11:54,admin,admin,,,
538,89381,784,11613,841,1,0,N,N,N,CP_Drtn,TT_Task,DT_FixedDUR2,RV_OK,TK_NotStart,A15390,pouring for roof floor's slab,,312,0,8,0,0,0,8,0,0,0,,,,2010-12-01 08:00,2010-12-01 16:00,,2010-10-12 08:00,2010-10-12 16:00,2010-10-12 08:00,2010-10-12 16:00,2010-10-12 08:00,2010-10-12 16:00,,2010-12-01 08:00,2010-12-01 16:00,,PT_Normal,,,,,vKBBuyW4v0OfOZ88fqeh0g,6TtnoPS5xkCaULwqkYn2UA,,,N,0,0,,,2010-08-08 11:54,2010-08-08 11:54,admin,admin,,,
539,89382,784,11613,841,1,0,N,N,N,CP_Drtn,TT_Task,DT_FixedDrtn,RV_OK,TK_NotStart,A15400,Fence work,,328,16,400,0,0,0,400,0,0,0,,,,2010-10-27 08:00,2010-12-28 16:00,,2010-09-09 08:00,2010-11-06 16:00,2010-09-09 08:00,2010-11-06 16:00,2010-09-09 08:00,2010-11-06 16:00,,2010-10-27 08:00,2010-12-28 16:00,,PT_Normal,,,,,XW3zRIezxkqegnXV8sDicA,MJIvRlq+CEOu+lN0ROxmbA,,,N,0,0,,,2010-08-08 11:54,2010-08-08 11:54,admin,admin,,,
540,89383,784,11651,841,1,0,N,N,N,CP_Drtn,TT_Task,DT_FixedDUR2,RV_OK,TK_NotStart,A15410,Fence Drawings IFC,,640,312,8,0,0,0,8,0,0,0,,,,2010-10-14 08:00,2010-10-14 16:00,,2010-07-13 08:00,2010-07-13 16:00,2010-07-13 08:00,2010-07-13 16:00,2010-07-13 08:00,2010-07-13 16:00,,2010-10-14 08:00,2010-10-14 16:00,,PT_Normal,,,,,Kcpa0ZoMrUq+WIC0MYOsKA,GC31y4wyI0Wfu+egTOy8nQ,,,N,0,0,,,2010-08-08 11:54,2010-08-08 19:39,admin,admin,,,
541,89384,784,11612,873,1,0,N,N,N,CP_Drtn,TT_Task,DT_FixedDUR2,RV_OK,TK_NotStart,A15420,backfilling between P.C Foundation,,280,0,16,0,0,0,16,0,0,0,,,,2010-09-16 08:00,2010-09-18 16:00,,2010-08-02 08:00,2010-08-03 16:00,2010-08-02 08:00,2010-08-03 16:00,2010-08-02 08:00,2010-08-03 16:00,,2010-09-16 08:00,2010-09-18 16:00,,PT_Normal,,,,,QGgE+sqccUGy51NTkcyqvA,xXhSerHVvkysgbVgWFZNtQ,,,N,0,0,,,2010-08-08 11:54,2010-08-08 11:54,admin,admin,,,
542,89385,784,11613,873,1,0,N,N,N,CP_Drtn,TT_Task,DT_FixedDUR2,RV_OK,TK_NotStart,A15440,Brick works for 1st floor,,392,0,40,0,0,0,40,0,0,0,,,,2010-12-06 08:00,2010-12-11 16:00,,2010-10-10 08:00,2010-10-14 16:00,2010-10-10 08:00,2010-10-14 16:00,2010-10-10 08:00,2010-10-14 16:00,,2010-12-06 08:00,2010-12-11 16:00,,PT_Normal,,,,,eZyerEUCTUqQdC9fx5grow,XBinRbYBek2xGmJdR8186g,,,N,0,0,,,2010-08-08 11:54,2010-08-08 11:54,admin,admin,,,
543,89386,784,11613,873,1,0,N,N,N,CP_Drtn,TT_Task,DT_FixedDUR2,RV_OK,TK_NotStart,A15450,Brick works for roof floor,,344,0,40,0,0,0,40,0,0,0,,,,2010-12-12 08:00,2010-12-16 16:00,,2010-10-23 08:00,2010-10-27 16:00,2010-10-23 08:00,2010-10-27 16:00,2010-10-23 08:00,2010-10-27 16:00,,2010-12-12 08:00,2010-12-16 16:00,,PT_Normal,,,,,4igktBHWekuTho7G3hmRdA,gCQrllyYP0+602uCLO5TkA,,,N,0,0,,,2010-08-08 11:54,2010-08-08 11:54,admin,admin,,,
544,89387,784,11615,873,1,0,N,N,N,CP_Drtn,TT_Task,DT_FixedDUR2,RV_OK,TK_NotStart,A15460,Internal plastering for 1st floor,,392,24,64,0,0,0,64,0,0,0,,,,2010-12-14 08:00,2010-12-22 16:00,,2010-10-18 08:00,2010-10-26 16:00,2010-10-18 08:00,2010-10-26 16:00,2010-10-18 08:00,2010-10-26 16:00,,2010-12-14 08:00,2010-12-22 16:00,,PT_Normal,,,,,Gl1MArSQXUulrlVPvLct9Q,iGyjlJVJMEuqNPsDAs3zzg,,,N,0,0,,,2010-08-08 11:54,2010-08-08 11:54,admin,admin,,,
545,89388,784,11615,873,1,0,N,N,N,CP_Drtn,TT_Task,DT_FixedDUR2,RV_OK,TK_NotStart,A15470,Internal plastering for roof floor,,368,24,40,0,0,0,40,0,0,0,,,,2010-12-23 08:00,2010-12-28 16:00,,2010-10-31 08:00,2010-11-04 16:00,2010-10-31 08:00,2010-11-04 16:00,2010-10-31 08:00,2010-11-04 16:00,,2010-12-23 08:00,2010-12-28 16:00,,PT_Normal,,,,,DZD4L5wO8UWFILbOmSOwSg,6TEDXsxFoEm2c5/ehkUEGA,,,N,0,0,,,2010-08-08 11:54,2010-08-08 11:54,admin,admin,,,
546,89389,784,11614,873,1,0,N,N,N,CP_Drtn,TT_Task,DT_FixedDUR2,RV_OK,TK_NotStart,A15480,electrical conduits for ground floor walls,,408,0,16,0,0,0,16,0,0,0,,,,2010-12-02 08:00,2010-12-04 16:00,,2010-10-04 08:00,2010-10-05 16:00,2010-10-04 08:00,2010-10-05 16:00,2010-10-04 08:00,2010-10-05 16:00,,2010-12-02 08:00,2010-12-04 16:00,,PT_Normal,,,,,ol0CcfkMHk6BrwF5Z+Xu6A,QEXmylWvQUaYSdgv50pzpw,,,N,0,0,,,2010-08-08 11:54,2010-08-08 11:54,admin,admin,,,
547,89390,784,11614,873,1,0,N,N,N,CP_Drtn,TT_Task,DT_FixedDUR2,RV_OK,TK_NotStart,A15490,electrical conduits for 1st floor walls,,392,0,16,0,0,0,16,0,0,0,,,,2010-12-12 08:00,2010-12-13 16:00,,2010-10-16 08:00,2010-10-17 16:00,2010-10-16 08:00,2010-10-17 16:00,2010-10-16 08:00,2010-10-17 16:00,,2010-12-12 08:00,2010-12-13 16:00,,PT_Normal,,,,,GZL+gu2wkkmo/IZPwgx5Mg,V7zvC6ZQHU6T5K7kDVHXQw,,,N,0,0,,,2010-08-08 11:54,2010-08-08 11:54,admin,admin,,,
548,89391,784,11614,873,1,0,N,N,N,CP_Drtn,TT_Task,DT_FixedDUR2,RV_OK,TK_NotStart,A15500,electrical conduits for roof floor walls,,368,0,16,0,0,0,16,0,0,0,,,,2010-12-21 08:00,2010-12-22 16:00,,2010-10-28 08:00,2010-10-30 16:00,2010-10-28 08:00,2010-10-30 16:00,2010-10-28 08:00,2010-10-30 16:00,,2010-12-21 08:00,2010-12-22 16:00,,PT_Normal,,,,,nIzbGZKkHkq9sEKhShrbKQ,vm2Ep/eUqEe0g75Wk4zCiA,,,N,0,0,,,2010-08-08 11:54,2010-08-08 11:54,admin,admin,,,
549,89392,784,11618,841,1,0,N,N,N,CP_Drtn,TT_Task,DT_FixedDUR2,RV_OK,TK_NotStart,A15510,excavation,,320,0,16,0,0,0,16,0,0,0,,,,2010-08-28 08:00,2010-08-29 16:00,,2010-07-12 08:00,2010-07-13 16:00,2010-07-12 08:00,2010-07-13 16:00,2010-07-12 08:00,2010-07-13 16:00,,2010-08-28 08:00,2010-08-29 16:00,,PT_Normal,,,,,ZiXSvt4b2kan4WHEOfkTnA,AClEWpaIhEmsuYVS1NTBPw,,,N,0,0,,,2010-08-08 11:54,2010-08-08 11:54,admin,admin,,,
550,89393,784,11618,841,1,0,N,N,N,CP_Drtn,TT_Task,DT_FixedDUR2,RV_OK,TK_NotStart,A15520,soil replacement,,320,0,96,0,0,0,96,0,0,0,,,,2010-08-30 08:00,2010-09-12 16:00,,2010-07-14 08:00,2010-07-27 16:00,2010-07-14 08:00,2010-07-27 16:00,2010-07-14 08:00,2010-07-27 16:00,,2010-08-30 08:00,2010-09-12 16:00,,PT_Normal,,,,,NanvUJ8FCkqveexf0/mK6w,WRFWiqXkMUWIhtit++5Jsg,,,N,0,0,,,2010-08-08 11:54,2010-08-08 11:54,admin,admin,,,
551,89394,784,11619,841,1,0,N,N,N,CP_Drtn,TT_Task,DT_FixedDUR2,RV_OK,TK_NotStart,A15530,Plain Concrete Foundation,,320,0,16,0,0,0,16,0,0,0,,,,2010-09-13 08:00,2010-09-14 16:00,,2010-07-28 08:00,2010-07-29 16:00,2010-07-28 08:00,2010-07-29 16:00,2010-07-28 08:00,2010-07-29 16:00,,2010-09-13 08:00,2010-09-14 16:00,,PT_Normal,,,,,p+LHsC1uyE6MOZbF7wib5Q,dpY+zaALyUywuPyZpM3Jdg,,,N,0,0,,,2010-08-08 11:54,2010-08-08 11:54,admin,admin,,,
552,89395,784,11619,841,1,0,N,N,N,CP_Drtn,TT_Task,DT_FixedDUR2,RV_OK,TK_NotStart,A15540,Reinforced Concrete Foundation,,320,0,56,0,0,0,56,0,0,0,,,,2010-09-19 08:00,2010-09-26 16:00,,2010-08-03 08:00,2010-08-10 16:00,2010-08-03 08:00,2010-08-10 16:00,2010-08-03 08:00,2010-08-10 16:00,,2010-09-19 08:00,2010-09-26 16:00,,PT_Normal,,,,,RIQHhRuVVU6chgKhDeo0Gg,ae+Cu5E3s0alg0NJCjCxUA,,,N,0,0,,,2010-08-08 11:54,2010-08-08 11:54,admin,admin,,,
553,89396,784,11619,841,1,0,N,N,N,CP_Drtn,TT_Task,DT_FixedDUR2,RV_OK,TK_NotStart,A15550,under ground  brick works,,320,0,16,0,0,0,16,0,0,0,,,,2010-10-04 08:00,2010-10-05 16:00,,2010-08-18 08:00,2010-08-19 16:00,2010-08-18 08:00,2010-08-19 16:00,2010-08-18 08:00,2010-08-19 16:00,,2010-10-04 08:00,2010-10-05 16:00,,PT_Normal,,,,,5Gf4HWz0/EmDNGupRi3U2A,4MGDo1ggCUuSZGV+7gTdFQ,,,N,0,0,,,2010-08-08 11:54,2010-08-08 11:54,admin,admin,,,
554,89397,784,11619,841,1,0,N,N,N,CP_Drtn,TT_Task,DT_FixedDUR2,RV_OK,TK_NotStart,A15560,under ground insulation for RC & Brick work,,320,0,16,0,0,0,16,0,0,0,,,,2010-10-06 08:00,2010-10-07 16:00,,2010-08-21 08:00,2010-08-22 16:00,2010-08-21 08:00,2010-08-22 16:00,2010-08-21 08:00,2010-08-22 16:00,,2010-10-06 08:00,2010-10-07 16:00,,PT_Normal,,,,,4BvhW+7EwE2aQljCWmTQsw,Wm0k+JLcB0qGvaxcmX+WcA,,,N,0,0,,,2010-08-08 11:54,2010-08-08 11:54,admin,admin,,,
555,89398,784,11619,841,1,0,N,N,N,CP_Drtn,TT_Task,DT_FixedDUR2,RV_OK,TK_NotStart,A15570,backfilling for under ground,,320,0,32,0,0,0,32,0,0,0,,,,2010-10-09 08:00,2010-10-12 16:00,,2010-08-23 08:00,2010-08-26 16:00,2010-08-23 08:00,2010-08-26 16:00,2010-08-23 08:00,2010-08-26 16:00,,2010-10-09 08:00,2010-10-12 16:00,,PT_Normal,,,,,5aI3u1kwy0S8QpGbwPuo5w,Azii2ZjA8EKjwhUm1koPqw,,,N,0,0,,,2010-08-08 11:54,2010-08-08 11:54,admin,admin,,,
556,89399,784,11619,841,1,0,N,N,N,CP_Drtn,TT_Task,DT_FixedDUR2,RV_OK,TK_NotStart,A15580,P.C slab on grade 10CM,,384,0,8,0,0,0,8,0,0,0,,,,2010-11-25 08:00,2010-11-25 16:00,,2010-09-26 08:00,2010-09-26 16:00,2010-09-26 08:00,2010-09-26 16:00,2010-09-26 08:00,2010-09-26 16:00,,2010-11-25 08:00,2010-11-25 16:00,,PT_Normal,,,,,+D5Psnn150qvz+B6rIKEQg,ivOwBjDSlkunB5PIX07BRQ,,,N,0,0,,,2010-08-08 11:54,2010-08-08 11:54,admin,admin,,,
557,89400,784,11619,841,1,0,N,N,N,CP_Drtn,TT_Task,DT_FixedDUR2,RV_OK,TK_NotStart,A15590,moisture insulation with membrane sheets,,384,0,16,0,0,0,16,0,0,0,,,,2010-11-27 08:00,2010-11-28 16:00,,2010-09-27 08:00,2010-09-28 16:00,2010-09-27 08:00,2010-09-28 16:00,2010-09-27 08:00,2010-09-28 16:00,,2010-11-27 08:00,2010-11-28 16:00,,PT_Normal,,,,,pGb5NzRwaUW6Uu3Ubnffew,wE2qao6JdkWHqOyCAqT3+g,,,N,0,0,,,2010-08-08 11:54,2010-08-08 11:54,admin,admin,,,
558,89401,784,11619,841,1,0,N,N,N,CP_Drtn,TT_Task,DT_FixedDUR2,RV_OK,TK_NotStart,A15600,R.C slab on grade,,384,0,16,0,0,0,16,0,0,0,,,,2010-11-29 08:00,2010-11-30 16:00,,2010-09-29 08:00,2010-09-30 16:00,2010-09-29 08:00,2010-09-30 16:00,2010-09-29 08:00,2010-09-30 16:00,,2010-11-29 08:00,2010-11-30 16:00,,PT_Normal,,,,,cS5Izj1rZk+9hkVQ1ijX6A,yqIzlVA4DkOJxEZif56kfA,,,N,0,0,,,2010-08-08 11:54,2010-08-08 11:54,admin,admin,,,
559,89402,784,11620,841,1,0,N,N,N,CP_Drtn,TT_Task,DT_FixedDUR2,RV_OK,TK_NotStart,A15610,columns for ground floor,,320,0,48,0,0,0,48,0,0,0,,,,2010-09-27 08:00,2010-10-03 16:00,,2010-08-11 08:00,2010-08-17 16:00,2010-08-11 08:00,2010-08-17 16:00,2010-08-11 08:00,2010-08-17 16:00,,2010-09-27 08:00,2010-10-03 16:00,,PT_Normal,,,,,zy5rRvGRrUi+e0UMGzJv4w,KoGZ5EdTK0KmyeqaiLD3lA,,,N,0,0,,,2010-08-08 11:54,2010-08-08 11:54,admin,admin,,,
560,89403,784,11620,841,1,0,N,N,N,CP_Drtn,TT_Task,DT_FixedDUR2,RV_OK,TK_NotStart,A15620,slab for ground floor,,320,0,72,0,0,0,72,0,0,0,,,,2010-10-13 08:00,2010-10-23 16:00,,2010-08-28 08:00,2010-09-06 16:00,2010-08-28 08:00,2010-09-06 16:00,2010-08-28 08:00,2010-09-06 16:00,,2010-10-13 08:00,2010-10-23 16:00,,PT_Normal,,,,,zYjTfNtdJk+vstvVQiqlrw,Rkmy/yjsOEmlh8PTCxZVVg,,,N,0,0,,,2010-08-08 11:54,2010-08-08 11:54,admin,admin,,,
561,89404,784,11620,841,1,0,N,N,N,CP_Drtn,TT_Task,DT_FixedDUR2,RV_OK,TK_NotStart,A15630,columns for 1st floor,,320,0,48,0,0,0,48,0,0,0,,,,2010-10-25 08:00,2010-10-31 16:00,,2010-09-08 08:00,2010-09-14 16:00,2010-09-08 08:00,2010-09-14 16:00,2010-09-08 08:00,2010-09-14 16:00,,2010-10-25 08:00,2010-10-31 16:00,,PT_Normal,,,,,RgY2Gpact0qDpkT+IeUXQw,teiw2GMYXU68sel5ZATHsw,,,N,0,0,,,2010-08-08 11:54,2010-08-08 11:54,admin,admin,,,
562,89405,784,11620,841,1,0,N,N,N,CP_Drtn,TT_Task,DT_FixedDUR2,RV_OK,TK_NotStart,A15640,slab for 1st floor,,320,0,72,0,0,0,72,0,0,0,,,,2010-11-01 08:00,2010-11-10 16:00,,2010-09-15 08:00,2010-09-25 16:00,2010-09-15 08:00,2010-09-25 16:00,2010-09-15 08:00,2010-09-25 16:00,,2010-11-01 08:00,2010-11-10 16:00,,PT_Normal,,,,,79sIhZ6/A0qlGBNMxM6e0g,RAk+gFuQYkS17VMgEMd55g,,,N,0,0,,,2010-08-08 11:54,2010-08-08 11:54,admin,admin,,,
563,89406,784,11620,841,1,0,N,N,N,CP_Drtn,TT_Task,DT_FixedDUR2,RV_OK,TK_NotStart,A15650,columns for roof floor,,320,0,32,0,0,0,32,0,0,0,,,,2010-11-20 08:00,2010-11-23 16:00,,2010-09-29 08:00,2010-10-03 16:00,2010-09-29 08:00,2010-10-03 16:00,2010-09-29 08:00,2010-10-03 16:00,,2010-11-20 08:00,2010-11-23 16:00,,PT_Normal,,,,,yEFcZOu80Ey1WM2bzYemXQ,pAWeS1rNWUKsmXXmcI7g8g,,,N,0,0,,,2010-08-08 11:54,2010-08-08 11:54,admin,admin,,,
564,89407,784,11620,841,1,0,N,N,N,CP_Drtn,TT_Task,DT_FixedDUR2,RV_OK,TK_NotStart,A15660,slab for roof floor,,320,0,48,0,0,0,48,0,0,0,,,,2010-11-24 08:00,2010-11-30 16:00,,2010-10-04 08:00,2010-10-10 16:00,2010-10-04 08:00,2010-10-10 16:00,2010-10-04 08:00,2010-10-10 16:00,,2010-11-24 08:00,2010-11-30 16:00,,PT_Normal,,,,,IrxgHHns2ECh8bqvR/PczQ,BjlJO31jfUG4oXL4hNjKAw,,,N,0,0,,,2010-08-08 11:54,2010-08-08 11:54,admin,admin,,,
565,89408,784,11620,841,1,0,N,N,N,CP_Drtn,TT_Task,DT_FixedDUR2,RV_OK,TK_NotStart,A15670,Brick works for ground floor,,384,0,40,0,0,0,40,0,0,0,,,,2010-11-20 08:00,2010-11-24 16:00,,2010-09-20 08:00,2010-09-25 16:00,2010-09-20 08:00,2010-09-25 16:00,2010-09-20 08:00,2010-09-25 16:00,,2010-11-20 08:00,2010-11-24 16:00,,PT_Normal,,,,,cTzoOXZVWUi/MywT9NVZbA,hSlEJls6NU+TdMksO63DJA,,,N,0,0,,,2010-08-08 11:54,2010-08-08 11:54,admin,admin,,,
566,89409,784,11621,841,1,0,N,N,N,CP_Drtn,TT_Task,DT_FixedDrtn,RV_OK,TK_NotStart,A15680,electrical conduits for ground floor's slab,,328,8,16,0,0,0,16,0,0,0,,,,2010-10-19 08:00,2010-10-20 16:00,,2010-09-01 08:00,2010-09-02 16:00,2010-09-01 08:00,2010-09-02 16:00,2010-09-01 08:00,2010-09-02 16:00,,2010-10-19 08:00,2010-10-20 16:00,,PT_Normal,,,,,Y/F1DpkhW0eaGBkvDFi+kg,GHw6RGDcy0ChAd0cPj2miQ,,,N,0,0,,,2010-08-08 11:54,2010-08-08 11:54,admin,admin,,,
567,89410,784,11621,841,1,0,N,N,N,CP_Drtn,TT_Task,DT_FixedDrtn,RV_OK,TK_NotStart,A15690,electrical conduits for 1st floor slab,,328,8,16,0,0,0,16,0,0,0,,,,2010-11-07 08:00,2010-11-08 16:00,,2010-09-20 08:00,2010-09-21 16:00,2010-09-20 08:00,2010-09-21 16:00,2010-09-20 08:00,2010-09-21 16:00,,2010-11-07 08:00,2010-11-08 16:00,,PT_Normal,,,,,4WZHvC2yVk6Nx7Ds4OZKeA,Qd/Ol3XBn0WEjvZi11gYlQ,,,N,0,0,,,2010-08-08 11:54,2010-08-08 11:54,admin,admin,,,
568,89411,784,11621,841,1,0,N,N,N,CP_Drtn,TT_Task,DT_FixedDrtn,RV_OK,TK_NotStart,A15700,electrical conduits for roof slab,,328,8,8,0,0,0,8,0,0,0,,,,2010-11-29 08:00,2010-11-29 16:00,,2010-10-07 08:00,2010-10-07 16:00,2010-10-07 08:00,2010-10-07 16:00,2010-10-07 08:00,2010-10-07 16:00,,2010-11-29 08:00,2010-11-29 16:00,,PT_Normal,,,,,FS54/AX96U2c5H3qNz6Ivg,oCqOoDYe7EmRkbi4ju5URA,,,N,0,0,,,2010-08-08 11:54,2010-08-08 11:54,admin,admin,,,
569,89412,784,11622,841,1,0,N,N,N,CP_Drtn,TT_Task,DT_FixedDUR2,RV_OK,TK_NotStart,A15710,Internal plastering for ground floor,,384,16,64,0,0,0,64,0,0,0,,,,2010-12-05 08:00,2010-12-13 16:00,,2010-10-05 08:00,2010-10-13 16:00,2010-10-05 08:00,2010-10-13 16:00,2010-10-05 08:00,2010-10-13 16:00,,2010-12-05 08:00,2010-12-13 16:00,,PT_Normal,,,,,/O6/F7G/IkqfpHftV6IylQ,0cH9BwUYD0e8EUoq30Ffrg,,,N,0,0,,,2010-08-08 11:54,2010-08-08 11:54,admin,admin,,,
570,89413,784,11622,841,1,0,N,N,N,CP_Drtn,TT_Task,DT_FixedDUR2,RV_OK,TK_NotStart,A15720,External plastering,,320,0,80,0,0,0,80,0,0,0,,,,2010-12-18 08:00,2010-12-28 16:00,,2010-10-27 08:00,2010-11-07 16:00,2010-10-27 08:00,2010-11-07 16:00,2010-10-27 08:00,2010-11-07 16:00,,2010-12-18 08:00,2010-12-28 16:00,,PT_Normal,,,,,O5xV8uTiQEe4Xw1sPs80tQ,5I6EzmGJ0EOVbQ6SEhtnzA,,,N,0,0,,,2010-08-08 11:54,2010-08-08 11:54,admin,admin,,,
571,89414,784,11621,841,1,0,N,N,N,CP_Drtn,TT_Task,DT_FixedDrtn,RV_OK,TK_NotStart,A15730,plumbing connections under slab on grade,,568,184,16,0,0,0,16,0,0,0,,,,2010-11-23 08:00,2010-11-24 16:00,,2010-08-28 08:00,2010-08-29 16:00,2010-08-28 08:00,2010-08-29 16:00,2010-08-28 08:00,2010-08-29 16:00,,2010-11-23 08:00,2010-11-24 16:00,,PT_Normal,,,,,DV2iOBOrtkqQe5nXgX12dg,s5Y56OM6D02I6eJ7eg5Z5Q,,,N,0,0,,,2010-08-08 11:54,2010-08-08 11:54,admin,admin,,,
572,89415,784,11658,841,0,0,N,N,N,CP_Drtn,TT_Mile,DT_FixedDrtn,RV_OK,TK_NotStart,A15740,Start Villa construction,,320,0,0,0,0,0,0,0,0,0,,,,2010-08-28 08:00,2010-08-28 08:00,,2010-07-12 08:00,2010-07-12 08:00,2010-07-12 08:00,2010-07-12 08:00,2010-07-12 08:00,2010-07-12 08:00,,2010-08-28 08:00,2010-08-28 08:00,,PT_Normal,,,,,f1e9M7MiDEmrpZNbSM9oQw,byG9qUsnlku4Cjs6H6TZWw,,,N,0,0,,,2010-08-08 11:54,2010-08-08 19:40,admin,admin,,,
573,89416,784,11658,841,0,0,N,N,N,CP_Drtn,TT_FinMile,DT_FixedDrtn,RV_OK,TK_NotStart,A15750,finish Villa construction,,320,320,0,0,0,0,0,0,0,0,,,,2010-12-28 16:00,2010-12-28 16:00,,2010-11-07 16:00,2010-11-07 16:00,2010-11-07 16:00,2010-11-07 16:00,2010-11-07 16:00,2010-11-07 16:00,,2010-12-28 16:00,2010-12-28 16:00,,PT_Normal,,,,,2Qv0/O3ueEKHvJr5i4gMKg,Y9BXSlCVFUm9QzPNe3h4pQ,,,N,0,0,,,2010-08-08 11:54,2010-08-08 11:54,admin,admin,,,
574,89417,784,11658,841,0,0,N,N,N,CP_Drtn,TT_Mile,DT_FixedDrtn,RV_OK,TK_NotStart,A15760,IFC drawings,,320,0,0,0,0,0,0,0,0,0,,,,2010-08-07 08:00,2010-08-07 08:00,,2010-06-21 08:00,2010-06-21 08:00,2010-06-21 08:00,2010-06-21 08:00,2010-06-21 08:00,2010-06-21 08:00,,2010-08-07 08:00,2010-08-07 08:00,,PT_Normal,,,,,XYJfNoYuq0e6KWznLlVihw,fJJQLs21U0W7rr9lMMr5+A,,,N,0,0,,,2010-08-08 11:54,2010-08-08 11:54,admin,admin,,,
575,89418,784,11620,841,1,0,N,N,N,CP_Drtn,TT_Task,DT_FixedDUR2,RV_OK,TK_NotStart,A15770,pouring for ground floor's slab,,320,0,8,0,0,0,8,0,0,0,,,,2010-10-24 08:00,2010-10-24 16:00,,2010-09-07 08:00,2010-09-07 16:00,2010-09-07 08:00,2010-09-07 16:00,2010-09-07 08:00,2010-09-07 16:00,,2010-10-24 08:00,2010-10-24 16:00,,PT_Normal,,,,,yPkazp+XI0CtWQ83bNVwbg,N+upNZIgVEytoCBEutk+Zw,,,N,0,0,,,2010-08-08 11:54,2010-08-08 11:54,admin,admin,,,
576,89419,784,11620,841,1,0,N,N,N,CP_Drtn,TT_Task,DT_FixedDUR2,RV_OK,TK_NotStart,A15780,pouring for 1st floor's slab,,320,0,8,0,0,0,8,0,0,0,,,,2010-11-11 08:00,2010-11-11 16:00,,2010-09-26 08:00,2010-09-26 16:00,2010-09-26 08:00,2010-09-26 16:00,2010-09-26 08:00,2010-09-26 16:00,,2010-11-11 08:00,2010-11-11 16:00,,PT_Normal,,,,,8r0f1JN+ME+FR/YD/Cmsaw,huDUDO07/Eil37KjpH/Wvw,,,N,0,0,,,2010-08-08 11:54,2010-08-08 11:54,admin,admin,,,
577,89420,784,11620,841,1,0,N,N,N,CP_Drtn,TT_Task,DT_FixedDUR2,RV_OK,TK_NotStart,A15790,pouring for roof floor's slab,,320,0,8,0,0,0,8,0,0,0,,,,2010-12-01 08:00,2010-12-01 16:00,,2010-10-11 08:00,2010-10-11 16:00,2010-10-11 08:00,2010-10-11 16:00,2010-10-11 08:00,2010-10-11 16:00,,2010-12-01 08:00,2010-12-01 16:00,,PT_Normal,,,,,oBXofvbrMEqusx3/CFol/Q,RlaqUtbus0eQTlEAUgwkeA,,,N,0,0,,,2010-08-08 11:54,2010-08-08 11:54,admin,admin,,,
578,89421,784,11620,841,1,0,N,N,N,CP_Drtn,TT_Task,DT_FixedDrtn,RV_OK,TK_NotStart,A15800,Fence work,,336,16,400,0,0,0,400,0,0,0,,,,2010-10-27 08:00,2010-12-28 16:00,,2010-09-08 08:00,2010-11-04 16:00,2010-09-08 08:00,2010-11-04 16:00,2010-09-08 08:00,2010-11-04 16:00,,2010-10-27 08:00,2010-12-28 16:00,,PT_Normal,,,,,4/IKzzVuokagC4iMkMK4Ng,/+oL5YjnFESpDvJ/L75FnA,,,N,0,0,,,2010-08-08 11:54,2010-08-08 11:54,admin,admin,,,
579,89422,784,11658,841,1,0,N,N,N,CP_Drtn,TT_Task,DT_FixedDUR2,RV_OK,TK_NotStart,A15810,Fence Drawings IFC,,648,312,8,0,0,0,8,0,0,0,,,,2010-10-14 08:00,2010-10-14 16:00,,2010-07-12 08:00,2010-07-12 16:00,2010-07-12 08:00,2010-07-12 16:00,2010-07-12 08:00,2010-07-12 16:00,,2010-10-14 08:00,2010-10-14 16:00,,PT_Normal,,,,,fxCEc+Hw5EmdpF1arHiz/A,7XX9inT6wk2dvTtLJgT6Og,,,N,0,0,,,2010-08-08 11:54,2010-08-08 19:40,admin,admin,,,
580,89423,784,11619,873,1,0,N,N,N,CP_Drtn,TT_Task,DT_FixedDUR2,RV_OK,TK_NotStart,A15820,backfilling between P.C Foundation,,288,0,16,0,0,0,16,0,0,0,,,,2010-09-16 08:00,2010-09-18 16:00,,2010-08-01 08:00,2010-08-02 16:00,2010-08-01 08:00,2010-08-02 16:00,2010-08-01 08:00,2010-08-02 16:00,,2010-09-16 08:00,2010-09-18 16:00,,PT_Normal,,,,,AIPlu5U1QUaydkYsPtQ72Q,YkAxgpUlT0mB9uyVOsKsAA,,,N,0,0,,,2010-08-08 11:54,2010-08-08 11:54,admin,admin,,,
581,89424,784,11620,873,1,0,N,N,N,CP_Drtn,TT_Task,DT_FixedDUR2,RV_OK,TK_NotStart,A15840,Brick works for 1st floor,,400,0,40,0,0,0,40,0,0,0,,,,2010-12-06 08:00,2010-12-11 16:00,,2010-10-09 08:00,2010-10-13 16:00,2010-10-09 08:00,2010-10-13 16:00,2010-10-09 08:00,2010-10-13 16:00,,2010-12-06 08:00,2010-12-11 16:00,,PT_Normal,,,,,6bHyJq4kIUCewNlJw8gu0w,qh/438fwMkGy6IOHe+yckg,,,N,0,0,,,2010-08-08 11:54,2010-08-08 11:54,admin,admin,,,
582,89425,784,11620,873,1,0,N,N,N,CP_Drtn,TT_Task,DT_FixedDUR2,RV_OK,TK_NotStart,A15850,Brick works for roof floor,,352,0,40,0,0,0,40,0,0,0,,,,2010-12-12 08:00,2010-12-16 16:00,,2010-10-21 08:00,2010-10-26 16:00,2010-10-21 08:00,2010-10-26 16:00,2010-10-21 08:00,2010-10-26 16:00,,2010-12-12 08:00,2010-12-16 16:00,,PT_Normal,,,,,AodsCPaxOUm8M3dH9JscWg,qVYPM81S4EaE4mYToW94/A,,,N,0,0,,,2010-08-08 11:54,2010-08-08 11:54,admin,admin,,,
583,89426,784,11622,873,1,0,N,N,N,CP_Drtn,TT_Task,DT_FixedDUR2,RV_OK,TK_NotStart,A15860,Internal plastering for 1st floor,,400,24,64,0,0,0,64,0,0,0,,,,2010-12-14 08:00,2010-12-22 16:00,,2010-10-17 08:00,2010-10-25 16:00,2010-10-17 08:00,2010-10-25 16:00,2010-10-17 08:00,2010-10-25 16:00,,2010-12-14 08:00,2010-12-22 16:00,,PT_Normal,,,,,m/oHjvnZB0KegTL1jTGfPw,o69oYtf7wk6Mbsc2Ui26KA,,,N,0,0,,,2010-08-08 11:54,2010-08-08 11:54,admin,admin,,,
584,89427,784,11622,873,1,0,N,N,N,CP_Drtn,TT_Task,DT_FixedDUR2,RV_OK,TK_NotStart,A15870,Internal plastering for roof floor,,376,24,40,0,0,0,40,0,0,0,,,,2010-12-23 08:00,2010-12-28 16:00,,2010-10-30 08:00,2010-11-03 16:00,2010-10-30 08:00,2010-11-03 16:00,2010-10-30 08:00,2010-11-03 16:00,,2010-12-23 08:00,2010-12-28 16:00,,PT_Normal,,,,,aQKOoGPB8kahF0c+zGtgIA,eD1vFzfRLUKq2yc+RcgXsA,,,N,0,0,,,2010-08-08 11:54,2010-08-08 11:54,admin,admin,,,
585,89428,784,11621,873,1,0,N,N,N,CP_Drtn,TT_Task,DT_FixedDUR2,RV_OK,TK_NotStart,A15880,electrical conduits for ground floor walls,,416,0,16,0,0,0,16,0,0,0,,,,2010-12-02 08:00,2010-12-04 16:00,,2010-10-03 08:00,2010-10-04 16:00,2010-10-03 08:00,2010-10-04 16:00,2010-10-03 08:00,2010-10-04 16:00,,2010-12-02 08:00,2010-12-04 16:00,,PT_Normal,,,,,syFm6GYaU0GUVA/i7pncvA,3WThaKhJZkel+MtnIZQspw,,,N,0,0,,,2010-08-08 11:54,2010-08-08 11:54,admin,admin,,,
586,89429,784,11621,873,1,0,N,N,N,CP_Drtn,TT_Task,DT_FixedDUR2,RV_OK,TK_NotStart,A15890,electrical conduits for 1st floor walls,,400,0,16,0,0,0,16,0,0,0,,,,2010-12-12 08:00,2010-12-13 16:00,,2010-10-14 08:00,2010-10-16 16:00,2010-10-14 08:00,2010-10-16 16:00,2010-10-14 08:00,2010-10-16 16:00,,2010-12-12 08:00,2010-12-13 16:00,,PT_Normal,,,,,5JDracQXCEuiiNRHJZePhA,ZI+QY1u+W0+xw7pRHfnGvg,,,N,0,0,,,2010-08-08 11:54,2010-08-08 11:54,admin,admin,,,
587,89430,784,11621,873,1,0,N,N,N,CP_Drtn,TT_Task,DT_FixedDUR2,RV_OK,TK_NotStart,A15900,electrical conduits for roof floor walls,,376,0,16,0,0,0,16,0,0,0,,,,2010-12-21 08:00,2010-12-22 16:00,,2010-10-27 08:00,2010-10-28 16:00,2010-10-27 08:00,2010-10-28 16:00,2010-10-27 08:00,2010-10-28 16:00,,2010-12-21 08:00,2010-12-22 16:00,,PT_Normal,,,,,VSSNCxMQGEuU8p4djlkSjg,aHlHfxD8rUSX/rVjLwmAig,,,N,0,0,,,2010-08-08 11:54,2010-08-08 11:54,admin,admin,,,
588,89431,784,11625,841,1,0,N,N,N,CP_Drtn,TT_Task,DT_FixedDUR2,RV_OK,TK_NotStart,A15910,excavation,,280,0,16,0,0,0,16,0,0,0,,,,2010-08-28 08:00,2010-08-29 16:00,,2010-07-18 08:00,2010-07-19 16:00,2010-07-18 08:00,2010-07-19 16:00,2010-07-18 08:00,2010-07-19 16:00,,2010-08-28 08:00,2010-08-29 16:00,,PT_Normal,,,,,KXC7//UWSUCC1gbJ5zoqmQ,30JDZL4kLU2Pgny/Z425SA,,,N,0,0,,,2010-08-08 11:54,2010-08-08 11:54,admin,admin,,,
589,89432,784,11625,841,1,0,N,N,N,CP_Drtn,TT_Task,DT_FixedDUR2,RV_OK,TK_NotStart,A15920,soil replacement,,280,0,96,0,0,0,96,0,0,0,,,,2010-08-30 08:00,2010-09-12 16:00,,2010-07-20 08:00,2010-08-02 16:00,2010-07-20 08:00,2010-08-02 16:00,2010-07-20 08:00,2010-08-02 16:00,,2010-08-30 08:00,2010-09-12 16:00,,PT_Normal,,,,,4z2F4nd/2Earsyqx+dYY0g,mY7QOxDLS0Sym/k5hnRgrg,,,N,0,0,,,2010-08-08 11:54,2010-08-08 11:54,admin,admin,,,
590,89433,784,11626,841,1,0,N,N,N,CP_Drtn,TT_Task,DT_FixedDUR2,RV_OK,TK_NotStart,A15930,Plain Concrete Foundation,,280,0,16,0,0,0,16,0,0,0,,,,2010-09-13 08:00,2010-09-14 16:00,,2010-08-03 08:00,2010-08-04 16:00,2010-08-03 08:00,2010-08-04 16:00,2010-08-03 08:00,2010-08-04 16:00,,2010-09-13 08:00,2010-09-14 16:00,,PT_Normal,,,,,h1JjfzmF5k6cSrHjB1pOfQ,sv4J9zMZDU+G4oRcVaH9Lw,,,N,0,0,,,2010-08-08 11:54,2010-08-08 11:54,admin,admin,,,
591,89434,784,11626,841,1,0,N,N,N,CP_Drtn,TT_Task,DT_FixedDUR2,RV_OK,TK_NotStart,A15940,Reinforced Concrete Foundation,,280,0,56,0,0,0,56,0,0,0,,,,2010-09-19 08:00,2010-09-26 16:00,,2010-08-09 08:00,2010-08-16 16:00,2010-08-09 08:00,2010-08-16 16:00,2010-08-09 08:00,2010-08-16 16:00,,2010-09-19 08:00,2010-09-26 16:00,,PT_Normal,,,,,vpEUNySUa0G/OQw5bEkNHg,CLXWXT0dyEKhQtfbXKXFaw,,,N,0,0,,,2010-08-08 11:54,2010-08-08 11:54,admin,admin,,,
592,89435,784,11626,841,1,0,N,N,N,CP_Drtn,TT_Task,DT_FixedDUR2,RV_OK,TK_NotStart,A15950,under ground  brick works,,280,0,16,0,0,0,16,0,0,0,,,,2010-10-04 08:00,2010-10-05 16:00,,2010-08-24 08:00,2010-08-25 16:00,2010-08-24 08:00,2010-08-25 16:00,2010-08-24 08:00,2010-08-25 16:00,,2010-10-04 08:00,2010-10-05 16:00,,PT_Normal,,,,,8QG6T/LfQ02VogHhgH4Uvg,w0hEUJ5kn0O/TTtFx6PWIQ,,,N,0,0,,,2010-08-08 11:54,2010-08-08 11:54,admin,admin,,,
593,89436,784,11626,841,1,0,N,N,N,CP_Drtn,TT_Task,DT_FixedDUR2,RV_OK,TK_NotStart,A15960,under ground insulation for RC & Brick work,,280,0,16,0,0,0,16,0,0,0,,,,2010-10-06 08:00,2010-10-07 16:00,,2010-08-26 08:00,2010-08-28 16:00,2010-08-26 08:00,2010-08-28 16:00,2010-08-26 08:00,2010-08-28 16:00,,2010-10-06 08:00,2010-10-07 16:00,,PT_Normal,,,,,zu0Kp8b20EeOBrFzsS8IBw,61immPaakka2hzMIuB72IA,,,N,0,0,,,2010-08-08 11:54,2010-08-08 11:54,admin,admin,,,
594,89437,784,11626,841,1,0,N,N,N,CP_Drtn,TT_Task,DT_FixedDUR2,RV_OK,TK_NotStart,A15970,backfilling for under ground,,280,0,32,0,0,0,32,0,0,0,,,,2010-10-09 08:00,2010-10-12 16:00,,2010-08-29 08:00,2010-09-01 16:00,2010-08-29 08:00,2010-09-01 16:00,2010-08-29 08:00,2010-09-01 16:00,,2010-10-09 08:00,2010-10-12 16:00,,PT_Normal,,,,,YoM0JObfoE2WxjENnW/q5w,Lkf12CpFWUOhrgUWXlOoNA,,,N,0,0,,,2010-08-08 11:54,2010-08-08 11:54,admin,admin,,,
595,89438,784,11626,841,1,0,N,N,N,CP_Drtn,TT_Task,DT_FixedDUR2,RV_OK,TK_NotStart,A15980,P.C slab on grade 10CM,,344,0,8,0,0,0,8,0,0,0,,,,2010-11-25 08:00,2010-11-25 16:00,,2010-10-02 08:00,2010-10-02 16:00,2010-10-02 08:00,2010-10-02 16:00,2010-10-02 08:00,2010-10-02 16:00,,2010-11-25 08:00,2010-11-25 16:00,,PT_Normal,,,,,j25wXnhnBkq293WxjNa8Iw,Ye+e+80GWEqqLT6pHuGirw,,,N,0,0,,,2010-08-08 11:54,2010-08-08 11:54,admin,admin,,,
596,89439,784,11626,841,1,0,N,N,N,CP_Drtn,TT_Task,DT_FixedDUR2,RV_OK,TK_NotStart,A15990,moisture insulation with membrane sheets,,344,0,16,0,0,0,16,0,0,0,,,,2010-11-27 08:00,2010-11-28 16:00,,2010-10-03 08:00,2010-10-04 16:00,2010-10-03 08:00,2010-10-04 16:00,2010-10-03 08:00,2010-10-04 16:00,,2010-11-27 08:00,2010-11-28 16:00,,PT_Normal,,,,,F7pBQMURCUa3nYZq5/1UUA,YMMjvloI8UWKJfvKrr3VbQ,,,N,0,0,,,2010-08-08 11:54,2010-08-08 11:54,admin,admin,,,
597,89440,784,11626,841,1,0,N,N,N,CP_Drtn,TT_Task,DT_FixedDUR2,RV_OK,TK_NotStart,A16000,R.C slab on grade,,344,0,16,0,0,0,16,0,0,0,,,,2010-11-29 08:00,2010-11-30 16:00,,2010-10-05 08:00,2010-10-06 16:00,2010-10-05 08:00,2010-10-06 16:00,2010-10-05 08:00,2010-10-06 16:00,,2010-11-29 08:00,2010-11-30 16:00,,PT_Normal,,,,,8gET+fQLp0e8ZSVjG91B/Q,2bgJFYDV+kqeCcA6ionNZw,,,N,0,0,,,2010-08-08 11:54,2010-08-08 11:54,admin,admin,,,
598,89441,784,11627,841,1,0,N,N,N,CP_Drtn,TT_Task,DT_FixedDUR2,RV_OK,TK_NotStart,A16010,columns for ground floor,,280,0,48,0,0,0,48,0,0,0,,,,2010-09-27 08:00,2010-10-03 16:00,,2010-08-17 08:00,2010-08-23 16:00,2010-08-17 08:00,2010-08-23 16:00,2010-08-17 08:00,2010-08-23 16:00,,2010-09-27 08:00,2010-10-03 16:00,,PT_Normal,,,,,u9o3G3ENvkKmVaRNe9pBgA,IJyvdQEHO0qk/KJTOeTqaQ,,,N,0,0,,,2010-08-08 11:54,2010-08-08 11:54,admin,admin,,,
599,89442,784,11627,841,1,0,N,N,N,CP_Drtn,TT_Task,DT_FixedDUR2,RV_OK,TK_NotStart,A16020,slab for ground floor,,280,0,72,0,0,0,72,0,0,0,,,,2010-10-13 08:00,2010-10-23 16:00,,2010-09-02 08:00,2010-09-12 16:00,2010-09-02 08:00,2010-09-12 16:00,2010-09-02 08:00,2010-09-12 16:00,,2010-10-13 08:00,2010-10-23 16:00,,PT_Normal,,,,,wc3PAh1dTEW0kPG1k+foXQ,d31a+66cwUqoNirBtSqv0g,,,N,0,0,,,2010-08-08 11:54,2010-08-08 11:54,admin,admin,,,
600,89443,784,11627,841,1,0,N,N,N,CP_Drtn,TT_Task,DT_FixedDUR2,RV_OK,TK_NotStart,A16030,columns for 1st floor,,280,0,48,0,0,0,48,0,0,0,,,,2010-10-25 08:00,2010-10-31 16:00,,2010-09-14 08:00,2010-09-20 16:00,2010-09-14 08:00,2010-09-20 16:00,2010-09-14 08:00,2010-09-20 16:00,,2010-10-25 08:00,2010-10-31 16:00,,PT_Normal,,,,,htgX4JcG006zTRHaW1QQ7g,/nIRy6gGqECjLHfP5Co3kQ,,,N,0,0,,,2010-08-08 11:54,2010-08-08 11:54,admin,admin,,,
601,89444,784,11627,841,1,0,N,N,N,CP_Drtn,TT_Task,DT_FixedDUR2,RV_OK,TK_NotStart,A16040,slab for 1st floor,,280,0,72,0,0,0,72,0,0,0,,,,2010-11-01 08:00,2010-11-10 16:00,,2010-09-21 08:00,2010-09-30 16:00,2010-09-21 08:00,2010-09-30 16:00,2010-09-21 08:00,2010-09-30 16:00,,2010-11-01 08:00,2010-11-10 16:00,,PT_Normal,,,,,UrpJWUG0Q0qVvjjW99QOkg,xbAvmMv3uESFDgAWkFp80g,,,N,0,0,,,2010-08-08 11:54,2010-08-08 11:54,admin,admin,,,
602,89445,784,11627,841,1,0,N,N,N,CP_Drtn,TT_Task,DT_FixedDUR2,RV_OK,TK_NotStart,A16050,columns for roof floor,,280,0,32,0,0,0,32,0,0,0,,,,2010-11-20 08:00,2010-11-23 16:00,,2010-10-05 08:00,2010-10-09 16:00,2010-10-05 08:00,2010-10-09 16:00,2010-10-05 08:00,2010-10-09 16:00,,2010-11-20 08:00,2010-11-23 16:00,,PT_Normal,,,,,vCJJbAc1aUiS2J2NqV8IBA,qeeqSl1XYEWcuT1cbmvxJg,,,N,0,0,,,2010-08-08 11:54,2010-08-08 11:54,admin,admin,,,
603,89446,784,11627,841,1,0,N,N,N,CP_Drtn,TT_Task,DT_FixedDUR2,RV_OK,TK_NotStart,A16060,slab for roof floor,,280,0,48,0,0,0,48,0,0,0,,,,2010-11-24 08:00,2010-11-30 16:00,,2010-10-10 08:00,2010-10-16 16:00,2010-10-10 08:00,2010-10-16 16:00,2010-10-10 08:00,2010-10-16 16:00,,2010-11-24 08:00,2010-11-30 16:00,,PT_Normal,,,,,myjPbiXqHUSDQqq7B7rXpQ,AhucCY3eiEWLdmjJdrNfGQ,,,N,0,0,,,2010-08-08 11:54,2010-08-08 11:54,admin,admin,,,
604,89447,784,11627,841,1,0,N,N,N,CP_Drtn,TT_Task,DT_FixedDUR2,RV_OK,TK_NotStart,A16070,Brick works for ground floor,,344,0,40,0,0,0,40,0,0,0,,,,2010-11-20 08:00,2010-11-24 16:00,,2010-09-26 08:00,2010-09-30 16:00,2010-09-26 08:00,2010-09-30 16:00,2010-09-26 08:00,2010-09-30 16:00,,2010-11-20 08:00,2010-11-24 16:00,,PT_Normal,,,,,FL/IVqLap0u0zHCvt0xG3Q,x0tOL6ez3ky/Pfhx2LfmNA,,,N,0,0,,,2010-08-08 11:54,2010-08-08 11:54,admin,admin,,,
605,89448,784,11628,841,1,0,N,N,N,CP_Drtn,TT_Task,DT_FixedDrtn,RV_OK,TK_NotStart,A16080,electrical conduits for ground floor's slab,,288,8,16,0,0,0,16,0,0,0,,,,2010-10-19 08:00,2010-10-20 16:00,,2010-09-07 08:00,2010-09-08 16:00,2010-09-07 08:00,2010-09-08 16:00,2010-09-07 08:00,2010-09-08 16:00,,2010-10-19 08:00,2010-10-20 16:00,,PT_Normal,,,,,CumJrmWfwEqWiM3FetFw5g,3cr4FNRTm0y+s7LZH54Uug,,,N,0,0,,,2010-08-08 11:54,2010-08-08 11:54,admin,admin,,,
606,89449,784,11628,841,1,0,N,N,N,CP_Drtn,TT_Task,DT_FixedDrtn,RV_OK,TK_NotStart,A16090,electrical conduits for 1st floor slab,,288,8,16,0,0,0,16,0,0,0,,,,2010-11-07 08:00,2010-11-08 16:00,,2010-09-26 08:00,2010-09-27 16:00,2010-09-26 08:00,2010-09-27 16:00,2010-09-26 08:00,2010-09-27 16:00,,2010-11-07 08:00,2010-11-08 16:00,,PT_Normal,,,,,x2WGRv7uY0Wk8usto8uRtQ,nsPvy4mX0UaBzbYLeVRQnQ,,,N,0,0,,,2010-08-08 11:54,2010-08-08 11:54,admin,admin,,,
607,89450,784,11628,841,1,0,N,N,N,CP_Drtn,TT_Task,DT_FixedDrtn,RV_OK,TK_NotStart,A16100,electrical conduits for roof slab,,288,8,8,0,0,0,8,0,0,0,,,,2010-11-29 08:00,2010-11-29 16:00,,2010-10-13 08:00,2010-10-13 16:00,2010-10-13 08:00,2010-10-13 16:00,2010-10-13 08:00,2010-10-13 16:00,,2010-11-29 08:00,2010-11-29 16:00,,PT_Normal,,,,,YYA/N0K4zE2v7NgwIOTZTA,sr2vBobhXkSpHrJ9WsrKgw,,,N,0,0,,,2010-08-08 11:54,2010-08-08 11:54,admin,admin,,,
608,89451,784,11629,841,1,0,N,N,N,CP_Drtn,TT_Task,DT_FixedDUR2,RV_OK,TK_NotStart,A16110,Internal plastering for ground floor,,344,16,64,0,0,0,64,0,0,0,,,,2010-12-05 08:00,2010-12-13 16:00,,2010-10-11 08:00,2010-10-19 16:00,2010-10-11 08:00,2010-10-19 16:00,2010-10-11 08:00,2010-10-19 16:00,,2010-12-05 08:00,2010-12-13 16:00,,PT_Normal,,,,,vmXcshBgRE6uaniZvAl3FA,YW0J/ftJBkyYU8wdAjy5Qw,,,N,0,0,,,2010-08-08 11:54,2010-08-08 11:54,admin,admin,,,
609,89452,784,11629,841,1,0,N,N,N,CP_Drtn,TT_Task,DT_FixedDUR2,RV_OK,TK_NotStart,A16120,External plastering,,280,0,80,0,0,0,80,0,0,0,,,,2010-12-18 08:00,2010-12-28 16:00,,2010-11-02 08:00,2010-11-13 16:00,2010-11-02 08:00,2010-11-13 16:00,2010-11-02 08:00,2010-11-13 16:00,,2010-12-18 08:00,2010-12-28 16:00,,PT_Normal,,,,,eikMvwSTPEO0CiuiXBgKZw,YT4/i64bkEmzK62Ror6EJQ,,,N,0,0,,,2010-08-08 11:54,2010-08-08 11:54,admin,admin,,,
610,89453,784,11628,841,1,0,N,N,N,CP_Drtn,TT_Task,DT_FixedDrtn,RV_OK,TK_NotStart,A16130,plumbing connections under slab on grade,,528,184,16,0,0,0,16,0,0,0,,,,2010-11-23 08:00,2010-11-24 16:00,,2010-09-02 08:00,2010-09-04 16:00,2010-09-02 08:00,2010-09-04 16:00,2010-09-02 08:00,2010-09-04 16:00,,2010-11-23 08:00,2010-11-24 16:00,,PT_Normal,,,,,hsSW9dr8PUa4kjlnmiN5Bw,ILg6t0R2Ckeu2pIa9+iMng,,,N,0,0,,,2010-08-08 11:54,2010-08-08 11:54,admin,admin,,,
611,89454,784,11665,841,0,0,N,N,N,CP_Drtn,TT_Mile,DT_FixedDrtn,RV_OK,TK_NotStart,A16140,Start Villa construction,,280,0,0,0,0,0,0,0,0,0,,,,2010-08-28 08:00,2010-08-28 08:00,,2010-07-18 08:00,2010-07-18 08:00,2010-07-18 08:00,2010-07-18 08:00,2010-07-18 08:00,2010-07-18 08:00,,2010-08-28 08:00,2010-08-28 08:00,,PT_Normal,,,,,4fo/HOUGRk2lVAeBJIkR5w,YYFrjx8TxUCSNIDYXJLZYQ,,,N,0,0,,,2010-08-08 11:54,2010-08-08 19:41,admin,admin,,,
612,89455,784,11665,841,0,0,N,N,N,CP_Drtn,TT_FinMile,DT_FixedDrtn,RV_OK,TK_NotStart,A16150,finish Villa construction,,280,280,0,0,0,0,0,0,0,0,,,,2010-12-28 16:00,2010-12-28 16:00,,2010-11-13 16:00,2010-11-13 16:00,2010-11-13 16:00,2010-11-13 16:00,2010-11-13 16:00,2010-11-13 16:00,,2010-12-28 16:00,2010-12-28 16:00,,PT_Normal,,,,,hoPlDDNsAUSHHy77/BoCfA,WORc7UtAxE+56uz6IVRf6w,,,N,0,0,,,2010-08-08 11:54,2010-08-08 11:54,admin,admin,,,
613,89456,784,11665,841,0,0,N,N,N,CP_Drtn,TT_Mile,DT_FixedDrtn,RV_OK,TK_NotStart,A16160,IFC drawings,,280,0,0,0,0,0,0,0,0,0,,,,2010-08-01 08:00,2010-08-01 08:00,,2010-06-21 08:00,2010-06-21 08:00,2010-06-21 08:00,2010-06-21 08:00,2010-06-21 08:00,2010-06-21 08:00,,2010-08-01 08:00,2010-08-01 08:00,,PT_Normal,,,,,rA00Jm9fvk2/YK3CF7iTXA,yzMPhziIp0mt4y40qT1toQ,,,N,0,0,,,2010-08-08 11:54,2010-08-08 11:54,admin,admin,,,
614,89457,784,11627,841,1,0,N,N,N,CP_Drtn,TT_Task,DT_FixedDUR2,RV_OK,TK_NotStart,A16170,pouring for ground floor's slab,,280,0,8,0,0,0,8,0,0,0,,,,2010-10-24 08:00,2010-10-24 16:00,,2010-09-13 08:00,2010-09-13 16:00,2010-09-13 08:00,2010-09-13 16:00,2010-09-13 08:00,2010-09-13 16:00,,2010-10-24 08:00,2010-10-24 16:00,,PT_Normal,,,,,k8obDUF5o0+0i+PhIwPnAQ,i/WJ0iTDc0Ou9b6+p84yYQ,,,N,0,0,,,2010-08-08 11:54,2010-08-08 11:54,admin,admin,,,
615,89458,784,11627,841,1,0,N,N,N,CP_Drtn,TT_Task,DT_FixedDUR2,RV_OK,TK_NotStart,A16180,pouring for 1st floor's slab,,280,0,8,0,0,0,8,0,0,0,,,,2010-11-11 08:00,2010-11-11 16:00,,2010-10-02 08:00,2010-10-02 16:00,2010-10-02 08:00,2010-10-02 16:00,2010-10-02 08:00,2010-10-02 16:00,,2010-11-11 08:00,2010-11-11 16:00,,PT_Normal,,,,,/94ZTGWL90WVQneG8Dx6Dg,mP0SkWAddkSIaWuW1J0hhg,,,N,0,0,,,2010-08-08 11:54,2010-08-08 11:54,admin,admin,,,
616,89459,784,11627,841,1,0,N,N,N,CP_Drtn,TT_Task,DT_FixedDUR2,RV_OK,TK_NotStart,A16190,pouring for roof floor's slab,,280,0,8,0,0,0,8,0,0,0,,,,2010-12-01 08:00,2010-12-01 16:00,,2010-10-17 08:00,2010-10-17 16:00,2010-10-17 08:00,2010-10-17 16:00,2010-10-17 08:00,2010-10-17 16:00,,2010-12-01 08:00,2010-12-01 16:00,,PT_Normal,,,,,Za0Qx3YiNk2LZzL0RiUq/Q,Se9LX3slK0mazcdJxie72A,,,N,0,0,,,2010-08-08 11:54,2010-08-08 11:54,admin,admin,,,
617,89460,784,11627,841,1,0,N,N,N,CP_Drtn,TT_Task,DT_FixedDrtn,RV_OK,TK_NotStart,A16200,Fence work,,296,16,400,0,0,0,400,0,0,0,,,,2010-10-27 08:00,2010-12-28 16:00,,2010-09-14 08:00,2010-11-10 16:00,2010-09-14 08:00,2010-11-10 16:00,2010-09-14 08:00,2010-11-10 16:00,,2010-10-27 08:00,2010-12-28 16:00,,PT_Normal,,,,,FTZKnxeao0OZ1+j3Aatbdg,kVHAtj0vqkSdcNIO5988CQ,,,N,0,0,,,2010-08-08 11:54,2010-08-08 11:54,admin,admin,,,
618,89461,784,11665,841,1,0,N,N,N,CP_Drtn,TT_Task,DT_FixedDUR2,RV_OK,TK_NotStart,A16210,Fence Drawings IFC,,608,312,8,0,0,0,8,0,0,0,,,,2010-10-14 08:00,2010-10-14 16:00,,2010-07-18 08:00,2010-07-18 16:00,2010-07-18 08:00,2010-07-18 16:00,2010-07-18 08:00,2010-07-18 16:00,,2010-10-14 08:00,2010-10-14 16:00,,PT_Normal,,,,,yPfGuP3x20myDUTf224gsg,TFPlMVQUHkCe+HmvDs9hEg,,,N,0,0,,,2010-08-08 11:54,2010-08-08 19:41,admin,admin,,,
619,89462,784,11626,873,1,0,N,N,N,CP_Drtn,TT_Task,DT_FixedDUR2,RV_OK,TK_NotStart,A16220,backfilling between P.C Foundation,,248,0,16,0,0,0,16,0,0,0,,,,2010-09-16 08:00,2010-09-18 16:00,,2010-08-07 08:00,2010-08-08 16:00,2010-08-07 08:00,2010-08-08 16:00,2010-08-07 08:00,2010-08-08 16:00,,2010-09-16 08:00,2010-09-18 16:00,,PT_Normal,,,,,D8W+trJJtU6+z7D5AZo7Fw,lDlMl5pMxkWgCuEslfjS7w,,,N,0,0,,,2010-08-08 11:54,2010-08-08 11:54,admin,admin,,,
620,89463,784,11627,873,1,0,N,N,N,CP_Drtn,TT_Task,DT_FixedDUR2,RV_OK,TK_NotStart,A16240,Brick works for 1st floor,,360,0,40,0,0,0,40,0,0,0,,,,2010-12-06 08:00,2010-12-11 16:00,,2010-10-14 08:00,2010-10-19 16:00,2010-10-14 08:00,2010-10-19 16:00,2010-10-14 08:00,2010-10-19 16:00,,2010-12-06 08:00,2010-12-11 16:00,,PT_Normal,,,,,TFS/mPwUIUyrvuzF87yw1w,u5VunnHqwkysR1MRaAEgmw,,,N,0,0,,,2010-08-08 11:54,2010-08-08 11:54,admin,admin,,,
621,89464,784,11627,873,1,0,N,N,N,CP_Drtn,TT_Task,DT_FixedDUR2,RV_OK,TK_NotStart,A16250,Brick works for roof floor,,312,0,40,0,0,0,40,0,0,0,,,,2010-12-12 08:00,2010-12-16 16:00,,2010-10-27 08:00,2010-11-01 16:00,2010-10-27 08:00,2010-11-01 16:00,2010-10-27 08:00,2010-11-01 16:00,,2010-12-12 08:00,2010-12-16 16:00,,PT_Normal,,,,,kEyY2+6VbUKaLEx1+LPRCg,40KWkXCU9EibGlxw7N0raQ,,,N,0,0,,,2010-08-08 11:54,2010-08-08 11:54,admin,admin,,,
622,89465,784,11629,873,1,0,N,N,N,CP_Drtn,TT_Task,DT_FixedDUR2,RV_OK,TK_NotStart,A16260,Internal plastering for 1st floor,,360,24,64,0,0,0,64,0,0,0,,,,2010-12-14 08:00,2010-12-22 16:00,,2010-10-23 08:00,2010-10-31 16:00,2010-10-23 08:00,2010-10-31 16:00,2010-10-23 08:00,2010-10-31 16:00,,2010-12-14 08:00,2010-12-22 16:00,,PT_Normal,,,,,RvVvWETGPkiEB7YKdRZ0PA,BMno0IuMfEO/VyF1LUJvSg,,,N,0,0,,,2010-08-08 11:54,2010-08-08 11:54,admin,admin,,,
623,89466,784,11629,873,1,0,N,N,N,CP_Drtn,TT_Task,DT_FixedDUR2,RV_OK,TK_NotStart,A16270,Internal plastering for roof floor,,336,24,40,0,0,0,40,0,0,0,,,,2010-12-23 08:00,2010-12-28 16:00,,2010-11-04 08:00,2010-11-09 16:00,2010-11-04 08:00,2010-11-09 16:00,2010-11-04 08:00,2010-11-09 16:00,,2010-12-23 08:00,2010-12-28 16:00,,PT_Normal,,,,,lbpJli9GhEKk76anQpCkFw,qYpGyWH8SEiMZAqn9R+XPQ,,,N,0,0,,,2010-08-08 11:54,2010-08-08 11:54,admin,admin,,,
624,89467,784,11628,873,1,0,N,N,N,CP_Drtn,TT_Task,DT_FixedDUR2,RV_OK,TK_NotStart,A16280,electrical conduits for ground floor walls,,376,0,16,0,0,0,16,0,0,0,,,,2010-12-02 08:00,2010-12-04 16:00,,2010-10-09 08:00,2010-10-10 16:00,2010-10-09 08:00,2010-10-10 16:00,2010-10-09 08:00,2010-10-10 16:00,,2010-12-02 08:00,2010-12-04 16:00,,PT_Normal,,,,,pu8mu3bvnkaZm4Ui6yetGA,4CfV0+Xzlk2Q8YCzIOkb5Q,,,N,0,0,,,2010-08-08 11:54,2010-08-08 11:54,admin,admin,,,
625,89468,784,11628,873,1,0,N,N,N,CP_Drtn,TT_Task,DT_FixedDUR2,RV_OK,TK_NotStart,A16290,electrical conduits for 1st floor walls,,360,0,16,0,0,0,16,0,0,0,,,,2010-12-12 08:00,2010-12-13 16:00,,2010-10-20 08:00,2010-10-21 16:00,2010-10-20 08:00,2010-10-21 16:00,2010-10-20 08:00,2010-10-21 16:00,,2010-12-12 08:00,2010-12-13 16:00,,PT_Normal,,,,,+YcjYiR/NUuu34Pg7RpkYw,kKL2mejwpU23RMNKdWTiaw,,,N,0,0,,,2010-08-08 11:54,2010-08-08 11:54,admin,admin,,,
626,89469,784,11628,873,1,0,N,N,N,CP_Drtn,TT_Task,DT_FixedDUR2,RV_OK,TK_NotStart,A16300,electrical conduits for roof floor walls,,336,0,16,0,0,0,16,0,0,0,,,,2010-12-21 08:00,2010-12-22 16:00,,2010-11-02 08:00,2010-11-03 16:00,2010-11-02 08:00,2010-11-03 16:00,2010-11-02 08:00,2010-11-03 16:00,,2010-12-21 08:00,2010-12-22 16:00,,PT_Normal,,,,,EBgSUt4EnkKFCxHK0Lz8YQ,f2dvMKRB+0+6DMEl60hfFw,,,N,0,0,,,2010-08-08 11:54,2010-08-08 11:54,admin,admin,,,
627,89470,784,11632,841,1,0,N,N,N,CP_Drtn,TT_Task,DT_FixedDUR2,RV_OK,TK_NotStart,A16310,excavation,,288,0,16,0,0,0,16,0,0,0,,,,2010-08-28 08:00,2010-08-29 16:00,,2010-07-17 08:00,2010-07-18 16:00,2010-07-17 08:00,2010-07-18 16:00,2010-07-17 08:00,2010-07-18 16:00,,2010-08-28 08:00,2010-08-29 16:00,,PT_Normal,,,,,VVpEuAXl00WQcZRlD0l1Jw,yUd2TRJ6bEeXT8g+kNMiBA,,,N,0,0,,,2010-08-08 11:54,2010-08-08 11:54,admin,admin,,,
628,89471,784,11632,841,1,0,N,N,N,CP_Drtn,TT_Task,DT_FixedDUR2,RV_OK,TK_NotStart,A16320,soil replacement,,288,0,96,0,0,0,96,0,0,0,,,,2010-08-30 08:00,2010-09-12 16:00,,2010-07-19 08:00,2010-08-01 16:00,2010-07-19 08:00,2010-08-01 16:00,2010-07-19 08:00,2010-08-01 16:00,,2010-08-30 08:00,2010-09-12 16:00,,PT_Normal,,,,,B7Xw/dM+pUK9U2I97EwGmQ,OuPH8jXhCUyoMpIJNe4uSA,,,N,0,0,,,2010-08-08 11:54,2010-08-08 11:54,admin,admin,,,
629,89472,784,11633,841,1,0,N,N,N,CP_Drtn,TT_Task,DT_FixedDUR2,RV_OK,TK_NotStart,A16330,Plain Concrete Foundation,,288,0,16,0,0,0,16,0,0,0,,,,2010-09-13 08:00,2010-09-14 16:00,,2010-08-02 08:00,2010-08-03 16:00,2010-08-02 08:00,2010-08-03 16:00,2010-08-02 08:00,2010-08-03 16:00,,2010-09-13 08:00,2010-09-14 16:00,,PT_Normal,,,,,8jv/8DA2WkOYxOkkK/9WSg,8mnJ4JBE2Eaa+lrndWMPLQ,,,N,0,0,,,2010-08-08 11:54,2010-08-08 11:54,admin,admin,,,
630,89473,784,11633,841,1,0,N,N,N,CP_Drtn,TT_Task,DT_FixedDUR2,RV_OK,TK_NotStart,A16340,Reinforced Concrete Foundation,,288,0,56,0,0,0,56,0,0,0,,,,2010-09-19 08:00,2010-09-26 16:00,,2010-08-08 08:00,2010-08-15 16:00,2010-08-08 08:00,2010-08-15 16:00,2010-08-08 08:00,2010-08-15 16:00,,2010-09-19 08:00,2010-09-26 16:00,,PT_Normal,,,,,+uD+ehfyG0y0oRgXKd37Sg,cpCMR0xPeE+uN8Vj5NSODg,,,N,0,0,,,2010-08-08 11:54,2010-08-08 11:54,admin,admin,,,
631,89474,784,11633,841,1,0,N,N,N,CP_Drtn,TT_Task,DT_FixedDUR2,RV_OK,TK_NotStart,A16350,under ground  brick works,,288,0,16,0,0,0,16,0,0,0,,,,2010-10-04 08:00,2010-10-05 16:00,,2010-08-23 08:00,2010-08-24 16:00,2010-08-23 08:00,2010-08-24 16:00,2010-08-23 08:00,2010-08-24 16:00,,2010-10-04 08:00,2010-10-05 16:00,,PT_Normal,,,,,JcKbaOXBnUqjhV3G+RUFRg,EH9walp2eEqsOZY6pGCXwQ,,,N,0,0,,,2010-08-08 11:54,2010-08-08 11:54,admin,admin,,,
632,89475,784,11633,841,1,0,N,N,N,CP_Drtn,TT_Task,DT_FixedDUR2,RV_OK,TK_NotStart,A16360,under ground insulation for RC & Brick work,,288,0,16,0,0,0,16,0,0,0,,,,2010-10-06 08:00,2010-10-07 16:00,,2010-08-25 08:00,2010-08-26 16:00,2010-08-25 08:00,2010-08-26 16:00,2010-08-25 08:00,2010-08-26 16:00,,2010-10-06 08:00,2010-10-07 16:00,,PT_Normal,,,,,Q+BTn+u2r0e8I4wMvtsKQQ,zY2NH+TaaUaKhgaZy0FNkQ,,,N,0,0,,,2010-08-08 11:54,2010-08-08 11:54,admin,admin,,,
633,89476,784,11633,841,1,0,N,N,N,CP_Drtn,TT_Task,DT_FixedDUR2,RV_OK,TK_NotStart,A16370,backfilling for under ground,,288,0,32,0,0,0,32,0,0,0,,,,2010-10-09 08:00,2010-10-12 16:00,,2010-08-28 08:00,2010-08-31 16:00,2010-08-28 08:00,2010-08-31 16:00,2010-08-28 08:00,2010-08-31 16:00,,2010-10-09 08:00,2010-10-12 16:00,,PT_Normal,,,,,EfkErzOF50aOEtleVRVruA,U+NOJ9TMRkqd2dnmXNl8KQ,,,N,0,0,,,2010-08-08 11:54,2010-08-08 11:54,admin,admin,,,
634,89477,784,11633,841,1,0,N,N,N,CP_Drtn,TT_Task,DT_FixedDUR2,RV_OK,TK_NotStart,A16380,P.C slab on grade 10CM,,352,0,8,0,0,0,8,0,0,0,,,,2010-11-25 08:00,2010-11-25 16:00,,2010-09-30 08:00,2010-09-30 16:00,2010-09-30 08:00,2010-09-30 16:00,2010-09-30 08:00,2010-09-30 16:00,,2010-11-25 08:00,2010-11-25 16:00,,PT_Normal,,,,,usZbNTWvQEaIAsGMV/ce0Q,R0GEpjrDpEqGDZ6oo1oORg,,,N,0,0,,,2010-08-08 11:54,2010-08-08 11:54,admin,admin,,,
635,89478,784,11633,841,1,0,N,N,N,CP_Drtn,TT_Task,DT_FixedDUR2,RV_OK,TK_NotStart,A16390,moisture insulation with membrane sheets,,352,0,16,0,0,0,16,0,0,0,,,,2010-11-27 08:00,2010-11-28 16:00,,2010-10-02 08:00,2010-10-03 16:00,2010-10-02 08:00,2010-10-03 16:00,2010-10-02 08:00,2010-10-03 16:00,,2010-11-27 08:00,2010-11-28 16:00,,PT_Normal,,,,,2mp+waPsJE+mjV3a9kpzsg,mQuCvqtWikqC4DlavF4JIg,,,N,0,0,,,2010-08-08 11:54,2010-08-08 11:54,admin,admin,,,
636,89479,784,11633,841,1,0,N,N,N,CP_Drtn,TT_Task,DT_FixedDUR2,RV_OK,TK_NotStart,A16400,R.C slab on grade,,352,0,16,0,0,0,16,0,0,0,,,,2010-11-29 08:00,2010-11-30 16:00,,2010-10-04 08:00,2010-10-05 16:00,2010-10-04 08:00,2010-10-05 16:00,2010-10-04 08:00,2010-10-05 16:00,,2010-11-29 08:00,2010-11-30 16:00,,PT_Normal,,,,,O4Oe+eEeN0+jlXQ6jO8UpA,+uMixz//iE6eVNzLnisEXw,,,N,0,0,,,2010-08-08 11:54,2010-08-08 11:54,admin,admin,,,
637,89480,784,11634,841,1,0,N,N,N,CP_Drtn,TT_Task,DT_FixedDUR2,RV_OK,TK_NotStart,A16410,columns for ground floor,,288,0,48,0,0,0,48,0,0,0,,,,2010-09-27 08:00,2010-10-03 16:00,,2010-08-16 08:00,2010-08-22 16:00,2010-08-16 08:00,2010-08-22 16:00,2010-08-16 08:00,2010-08-22 16:00,,2010-09-27 08:00,2010-10-03 16:00,,PT_Normal,,,,,8LpV5pQ9VUaCWDIB/yjmvw,780SKICtvU+HORrKShRmRg,,,N,0,0,,,2010-08-08 11:54,2010-08-08 11:54,admin,admin,,,
638,89481,784,11634,841,1,0,N,N,N,CP_Drtn,TT_Task,DT_FixedDUR2,RV_OK,TK_NotStart,A16420,slab for ground floor,,288,0,72,0,0,0,72,0,0,0,,,,2010-10-13 08:00,2010-10-23 16:00,,2010-09-01 08:00,2010-09-11 16:00,2010-09-01 08:00,2010-09-11 16:00,2010-09-01 08:00,2010-09-11 16:00,,2010-10-13 08:00,2010-10-23 16:00,,PT_Normal,,,,,BDXuqgr7S0WjhaIC1YCf2g,YdJ8BYxjCUG/eNr1hLgARg,,,N,0,0,,,2010-08-08 11:54,2010-08-08 11:54,admin,admin,,,
639,89482,784,11634,841,1,0,N,N,N,CP_Drtn,TT_Task,DT_FixedDUR2,RV_OK,TK_NotStart,A16430,columns for 1st floor,,288,0,48,0,0,0,48,0,0,0,,,,2010-10-25 08:00,2010-10-31 16:00,,2010-09-13 08:00,2010-09-19 16:00,2010-09-13 08:00,2010-09-19 16:00,2010-09-13 08:00,2010-09-19 16:00,,2010-10-25 08:00,2010-10-31 16:00,,PT_Normal,,,,,+L9a7PG+S0+qlnNvFIV1Jw,Krf/w8wsjUC2tfJAVz4d5g,,,N,0,0,,,2010-08-08 11:54,2010-08-08 11:54,admin,admin,,,
640,89483,784,11634,841,1,0,N,N,N,CP_Drtn,TT_Task,DT_FixedDUR2,RV_OK,TK_NotStart,A16440,slab for 1st floor,,288,0,72,0,0,0,72,0,0,0,,,,2010-11-01 08:00,2010-11-10 16:00,,2010-09-20 08:00,2010-09-29 16:00,2010-09-20 08:00,2010-09-29 16:00,2010-09-20 08:00,2010-09-29 16:00,,2010-11-01 08:00,2010-11-10 16:00,,PT_Normal,,,,,+FVvD3kX1EGALpAlKCsNkA,3nhjQBpvVk2Sb8ERttpnjQ,,,N,0,0,,,2010-08-08 11:54,2010-08-08 11:54,admin,admin,,,
641,89484,784,11634,841,1,0,N,N,N,CP_Drtn,TT_Task,DT_FixedDUR2,RV_OK,TK_NotStart,A16450,columns for roof floor,,288,0,32,0,0,0,32,0,0,0,,,,2010-11-20 08:00,2010-11-23 16:00,,2010-10-04 08:00,2010-10-07 16:00,2010-10-04 08:00,2010-10-07 16:00,2010-10-04 08:00,2010-10-07 16:00,,2010-11-20 08:00,2010-11-23 16:00,,PT_Normal,,,,,rOa4OxVXOEaHvRQxnFVhjA,0yake6xitUWHPMoWu2Q8vg,,,N,0,0,,,2010-08-08 11:54,2010-08-08 11:54,admin,admin,,,
642,89485,784,11634,841,1,0,N,N,N,CP_Drtn,TT_Task,DT_FixedDUR2,RV_OK,TK_NotStart,A16460,slab for roof floor,,288,0,48,0,0,0,48,0,0,0,,,,2010-11-24 08:00,2010-11-30 16:00,,2010-10-09 08:00,2010-10-14 16:00,2010-10-09 08:00,2010-10-14 16:00,2010-10-09 08:00,2010-10-14 16:00,,2010-11-24 08:00,2010-11-30 16:00,,PT_Normal,,,,,jyrPuj22jUGSsShRNwtc0A,AAGtuuNdAU6C0yDphmr9CQ,,,N,0,0,,,2010-08-08 11:54,2010-08-08 11:54,admin,admin,,,
643,89486,784,11634,841,1,0,N,N,N,CP_Drtn,TT_Task,DT_FixedDUR2,RV_OK,TK_NotStart,A16470,Brick works for ground floor,,352,0,40,0,0,0,40,0,0,0,,,,2010-11-20 08:00,2010-11-24 16:00,,2010-09-25 08:00,2010-09-29 16:00,2010-09-25 08:00,2010-09-29 16:00,2010-09-25 08:00,2010-09-29 16:00,,2010-11-20 08:00,2010-11-24 16:00,,PT_Normal,,,,,t6qaDs9ojUCZydoCjbeWzA,SEigFZaeskmYVi/1PXz28A,,,N,0,0,,,2010-08-08 11:54,2010-08-08 11:54,admin,admin,,,
644,89487,784,11635,841,1,0,N,N,N,CP_Drtn,TT_Task,DT_FixedDrtn,RV_OK,TK_NotStart,A16480,electrical conduits for ground floor's slab,,296,8,16,0,0,0,16,0,0,0,,,,2010-10-19 08:00,2010-10-20 16:00,,2010-09-06 08:00,2010-09-07 16:00,2010-09-06 08:00,2010-09-07 16:00,2010-09-06 08:00,2010-09-07 16:00,,2010-10-19 08:00,2010-10-20 16:00,,PT_Normal,,,,,Ygse6jXVJEuK+rfDE3fHhA,G6f8BQqqS06lKcP0xmWWbw,,,N,0,0,,,2010-08-08 11:54,2010-08-08 11:54,admin,admin,,,
645,89488,784,11635,841,1,0,N,N,N,CP_Drtn,TT_Task,DT_FixedDrtn,RV_OK,TK_NotStart,A16490,electrical conduits for 1st floor slab,,296,8,16,0,0,0,16,0,0,0,,,,2010-11-07 08:00,2010-11-08 16:00,,2010-09-25 08:00,2010-09-26 16:00,2010-09-25 08:00,2010-09-26 16:00,2010-09-25 08:00,2010-09-26 16:00,,2010-11-07 08:00,2010-11-08 16:00,,PT_Normal,,,,,2qh0cxrWwU67eIKLuzIeeQ,01KcvK7JUkW3Bu53IDO2Iw,,,N,0,0,,,2010-08-08 11:54,2010-08-08 11:54,admin,admin,,,
646,89489,784,11635,841,1,0,N,N,N,CP_Drtn,TT_Task,DT_FixedDrtn,RV_OK,TK_NotStart,A16500,electrical conduits for roof slab,,296,8,8,0,0,0,8,0,0,0,,,,2010-11-29 08:00,2010-11-29 16:00,,2010-10-12 08:00,2010-10-12 16:00,2010-10-12 08:00,2010-10-12 16:00,2010-10-12 08:00,2010-10-12 16:00,,2010-11-29 08:00,2010-11-29 16:00,,PT_Normal,,,,,FbQy5QY4RE69mV/yDmz0qQ,1k569ymOt0+1aaihtY6oWg,,,N,0,0,,,2010-08-08 11:54,2010-08-08 11:54,admin,admin,,,
647,89490,784,11636,841,1,0,N,N,N,CP_Drtn,TT_Task,DT_FixedDUR2,RV_OK,TK_NotStart,A16510,Internal plastering for ground floor,,352,16,64,0,0,0,64,0,0,0,,,,2010-12-05 08:00,2010-12-13 16:00,,2010-10-10 08:00,2010-10-18 16:00,2010-10-10 08:00,2010-10-18 16:00,2010-10-10 08:00,2010-10-18 16:00,,2010-12-05 08:00,2010-12-13 16:00,,PT_Normal,,,,,WjOQjBmwq06XLzXNZcq1+g,9WCYjCDqWEGEbwnhpWBtew,,,N,0,0,,,2010-08-08 11:54,2010-08-08 11:54,admin,admin,,,
648,89491,784,11636,841,1,0,N,N,N,CP_Drtn,TT_Task,DT_FixedDUR2,RV_OK,TK_NotStart,A16520,External plastering,,288,0,80,0,0,0,80,0,0,0,,,,2010-12-18 08:00,2010-12-28 16:00,,2010-11-01 08:00,2010-11-11 16:00,2010-11-01 08:00,2010-11-11 16:00,2010-11-01 08:00,2010-11-11 16:00,,2010-12-18 08:00,2010-12-28 16:00,,PT_Normal,,,,,e/Ya8blnuk+VBByUE8aN3w,J0nXKQhoJUGyokIUxZHgtw,,,N,0,0,,,2010-08-08 11:54,2010-08-08 11:54,admin,admin,,,
649,89492,784,11635,841,1,0,N,N,N,CP_Drtn,TT_Task,DT_FixedDrtn,RV_OK,TK_NotStart,A16530,plumbing connections under slab on grade,,536,184,16,0,0,0,16,0,0,0,,,,2010-11-23 08:00,2010-11-24 16:00,,2010-09-01 08:00,2010-09-02 16:00,2010-09-01 08:00,2010-09-02 16:00,2010-09-01 08:00,2010-09-02 16:00,,2010-11-23 08:00,2010-11-24 16:00,,PT_Normal,,,,,RpBv1acRVUmir1Ioa/NH2g,kyT5ycIn3EmcQo3I8fMsIQ,,,N,0,0,,,2010-08-08 11:54,2010-08-08 11:54,admin,admin,,,
650,89493,784,11672,841,0,0,N,N,N,CP_Drtn,TT_Mile,DT_FixedDrtn,RV_OK,TK_NotStart,A16540,Start Villa construction,,288,0,0,0,0,0,0,0,0,0,,,,2010-08-28 08:00,2010-08-28 08:00,,2010-07-17 08:00,2010-07-17 08:00,2010-07-17 08:00,2010-07-17 08:00,2010-07-17 08:00,2010-07-17 08:00,,2010-08-28 08:00,2010-08-28 08:00,,PT_Normal,,,,,+5t1uSHa10qToJjy5l01dg,K8HOj6KI90WcOyEsHpGUFg,,,N,0,0,,,2010-08-08 11:54,2010-08-08 19:41,admin,admin,,,
651,89494,784,11672,841,0,0,N,N,N,CP_Drtn,TT_FinMile,DT_FixedDrtn,RV_OK,TK_NotStart,A16550,finish Villa construction,,288,288,0,0,0,0,0,0,0,0,,,,2010-12-28 16:00,2010-12-28 16:00,,2010-11-11 16:00,2010-11-11 16:00,2010-11-11 16:00,2010-11-11 16:00,2010-11-11 16:00,2010-11-11 16:00,,2010-12-28 16:00,2010-12-28 16:00,,PT_Normal,,,,,+hVJvicAakqftYngV4au7A,/wYNoSR65U2n3A8yJpTiJA,,,N,0,0,,,2010-08-08 11:54,2010-08-08 11:54,admin,admin,,,
652,89495,784,11672,841,0,0,N,N,N,CP_Drtn,TT_Mile,DT_FixedDrtn,RV_OK,TK_NotStart,A16560,IFC drawings,,288,0,0,0,0,0,0,0,0,0,,,,2010-08-02 08:00,2010-08-02 08:00,,2010-06-21 08:00,2010-06-21 08:00,2010-06-21 08:00,2010-06-21 08:00,2010-06-21 08:00,2010-06-21 08:00,,2010-08-02 08:00,2010-08-02 08:00,,PT_Normal,,,,,djo7JIsrqkORsmZvXGPXpw,yAdLKFAN/0GX792PCDHGFg,,,N,0,0,,,2010-08-08 11:54,2010-08-08 11:54,admin,admin,,,
653,89496,784,11634,841,1,0,N,N,N,CP_Drtn,TT_Task,DT_FixedDUR2,RV_OK,TK_NotStart,A16570,pouring for ground floor's slab,,288,0,8,0,0,0,8,0,0,0,,,,2010-10-24 08:00,2010-10-24 16:00,,2010-09-12 08:00,2010-09-12 16:00,2010-09-12 08:00,2010-09-12 16:00,2010-09-12 08:00,2010-09-12 16:00,,2010-10-24 08:00,2010-10-24 16:00,,PT_Normal,,,,,LadAuhDtm026SVbBE6W7rA,lH9xlVQrBU2N9cc6D2nJjw,,,N,0,0,,,2010-08-08 11:54,2010-08-08 11:54,admin,admin,,,
654,89497,784,11634,841,1,0,N,N,N,CP_Drtn,TT_Task,DT_FixedDUR2,RV_OK,TK_NotStart,A16580,pouring for 1st floor's slab,,288,0,8,0,0,0,8,0,0,0,,,,2010-11-11 08:00,2010-11-11 16:00,,2010-09-30 08:00,2010-09-30 16:00,2010-09-30 08:00,2010-09-30 16:00,2010-09-30 08:00,2010-09-30 16:00,,2010-11-11 08:00,2010-11-11 16:00,,PT_Normal,,,,,kvGgVXTDOEyO+rBQlF6AGg,j7BLZk/q+EO+1yVm2W+9SQ,,,N,0,0,,,2010-08-08 11:54,2010-08-08 11:54,admin,admin,,,
655,89498,784,11634,841,1,0,N,N,N,CP_Drtn,TT_Task,DT_FixedDUR2,RV_OK,TK_NotStart,A16590,pouring for roof floor's slab,,288,0,8,0,0,0,8,0,0,0,,,,2010-12-01 08:00,2010-12-01 16:00,,2010-10-16 08:00,2010-10-16 16:00,2010-10-16 08:00,2010-10-16 16:00,2010-10-16 08:00,2010-10-16 16:00,,2010-12-01 08:00,2010-12-01 16:00,,PT_Normal,,,,,oS93JYVWd06eVz0wT1Memg,TK9LqPoFMECHkfmLE4uE6g,,,N,0,0,,,2010-08-08 11:54,2010-08-08 11:54,admin,admin,,,
656,89499,784,11634,841,1,0,N,N,N,CP_Drtn,TT_Task,DT_FixedDrtn,RV_OK,TK_NotStart,A16600,Fence work,,304,16,400,0,0,0,400,0,0,0,,,,2010-10-27 08:00,2010-12-28 16:00,,2010-09-13 08:00,2010-11-09 16:00,2010-09-13 08:00,2010-11-09 16:00,2010-09-13 08:00,2010-11-09 16:00,,2010-10-27 08:00,2010-12-28 16:00,,PT_Normal,,,,,4GJHIkg8G0+O4o2SX7Rltg,rRlsl9Hda0WVGOcfWlcAjw,,,N,0,0,,,2010-08-08 11:54,2010-08-08 11:54,admin,admin,,,
657,89500,784,11672,841,1,0,N,N,N,CP_Drtn,TT_Task,DT_FixedDUR2,RV_OK,TK_NotStart,A16610,Fence Drawings IFC,,616,312,8,0,0,0,8,0,0,0,,,,2010-10-14 08:00,2010-10-14 16:00,,2010-07-17 08:00,2010-07-17 16:00,2010-07-17 08:00,2010-07-17 16:00,2010-07-17 08:00,2010-07-17 16:00,,2010-10-14 08:00,2010-10-14 16:00,,PT_Normal,,,,,22w2Qu45W0WGfEesCFVpNQ,8HPh2Cs3jU2QC0CZ8203xQ,,,N,0,0,,,2010-08-08 11:54,2010-08-08 19:41,admin,admin,,,
658,89501,784,11633,873,1,0,N,N,N,CP_Drtn,TT_Task,DT_FixedDUR2,RV_OK,TK_NotStart,A16620,backfilling between P.C Foundation,,256,0,16,0,0,0,16,0,0,0,,,,2010-09-16 08:00,2010-09-18 16:00,,2010-08-05 08:00,2010-08-07 16:00,2010-08-05 08:00,2010-08-07 16:00,2010-08-05 08:00,2010-08-07 16:00,,2010-09-16 08:00,2010-09-18 16:00,,PT_Normal,,,,,y0ZBu4haLEqRqNBlDmGsOQ,10orelaC7kinHI/YRuKrQw,,,N,0,0,,,2010-08-08 11:54,2010-08-08 11:54,admin,admin,,,
659,89502,784,11634,873,1,0,N,N,N,CP_Drtn,TT_Task,DT_FixedDUR2,RV_OK,TK_NotStart,A16640,Brick works for 1st floor,,368,0,40,0,0,0,40,0,0,0,,,,2010-12-06 08:00,2010-12-11 16:00,,2010-10-13 08:00,2010-10-18 16:00,2010-10-13 08:00,2010-10-18 16:00,2010-10-13 08:00,2010-10-18 16:00,,2010-12-06 08:00,2010-12-11 16:00,,PT_Normal,,,,,k0SujNKxrkKVkVQSaHKgyg,9cJIiKLD+UyW3wxrJA9JEw,,,N,0,0,,,2010-08-08 11:54,2010-08-08 11:54,admin,admin,,,
660,89503,784,11634,873,1,0,N,N,N,CP_Drtn,TT_Task,DT_FixedDUR2,RV_OK,TK_NotStart,A16650,Brick works for roof floor,,320,0,40,0,0,0,40,0,0,0,,,,2010-12-12 08:00,2010-12-16 16:00,,2010-10-26 08:00,2010-10-31 16:00,2010-10-26 08:00,2010-10-31 16:00,2010-10-26 08:00,2010-10-31 16:00,,2010-12-12 08:00,2010-12-16 16:00,,PT_Normal,,,,,RnxrS1pjyEqhv19c3DPjqw,qpVi8UP8eEuXwhFhIG4HVg,,,N,0,0,,,2010-08-08 11:54,2010-08-08 11:54,admin,admin,,,
661,89504,784,11636,873,1,0,N,N,N,CP_Drtn,TT_Task,DT_FixedDUR2,RV_OK,TK_NotStart,A16660,Internal plastering for 1st floor,,368,24,64,0,0,0,64,0,0,0,,,,2010-12-14 08:00,2010-12-22 16:00,,2010-10-21 08:00,2010-10-30 16:00,2010-10-21 08:00,2010-10-30 16:00,2010-10-21 08:00,2010-10-30 16:00,,2010-12-14 08:00,2010-12-22 16:00,,PT_Normal,,,,,2SDKujKPmU+OwfJ3ie6LYA,GX0m1l0snUqmR93xW/6V9g,,,N,0,0,,,2010-08-08 11:54,2010-08-08 11:54,admin,admin,,,
662,89505,784,11636,873,1,0,N,N,N,CP_Drtn,TT_Task,DT_FixedDUR2,RV_OK,TK_NotStart,A16670,Internal plastering for roof floor,,344,24,40,0,0,0,40,0,0,0,,,,2010-12-23 08:00,2010-12-28 16:00,,2010-11-03 08:00,2010-11-08 16:00,2010-11-03 08:00,2010-11-08 16:00,2010-11-03 08:00,2010-11-08 16:00,,2010-12-23 08:00,2010-12-28 16:00,,PT_Normal,,,,,S8IVN3vVtUWqLXosZvEH4g,UJQ3mzhEDkKpDtcJZbTCTg,,,N,0,0,,,2010-08-08 11:54,2010-08-08 11:54,admin,admin,,,
663,89506,784,11635,873,1,0,N,N,N,CP_Drtn,TT_Task,DT_FixedDUR2,RV_OK,TK_NotStart,A16680,electrical conduits for ground floor walls,,384,0,16,0,0,0,16,0,0,0,,,,2010-12-02 08:00,2010-12-04 16:00,,2010-10-07 08:00,2010-10-09 16:00,2010-10-07 08:00,2010-10-09 16:00,2010-10-07 08:00,2010-10-09 16:00,,2010-12-02 08:00,2010-12-04 16:00,,PT_Normal,,,,,Cr30D7cz/023fczxKqAXyQ,ddr4BFXtvkWZ+KP52CO8eA,,,N,0,0,,,2010-08-08 11:54,2010-08-08 11:54,admin,admin,,,
664,89507,784,11635,873,1,0,N,N,N,CP_Drtn,TT_Task,DT_FixedDUR2,RV_OK,TK_NotStart,A16690,electrical conduits for 1st floor walls,,368,0,16,0,0,0,16,0,0,0,,,,2010-12-12 08:00,2010-12-13 16:00,,2010-10-19 08:00,2010-10-20 16:00,2010-10-19 08:00,2010-10-20 16:00,2010-10-19 08:00,2010-10-20 16:00,,2010-12-12 08:00,2010-12-13 16:00,,PT_Normal,,,,,JzswUmI73E+20gyBj3GU/g,cuJwPbwGxkmTqeb7ljOAFw,,,N,0,0,,,2010-08-08 11:54,2010-08-08 11:54,admin,admin,,,
665,89508,784,11635,873,1,0,N,N,N,CP_Drtn,TT_Task,DT_FixedDUR2,RV_OK,TK_NotStart,A16700,electrical conduits for roof floor walls,,344,0,16,0,0,0,16,0,0,0,,,,2010-12-21 08:00,2010-12-22 16:00,,2010-11-01 08:00,2010-11-02 16:00,2010-11-01 08:00,2010-11-02 16:00,2010-11-01 08:00,2010-11-02 16:00,,2010-12-21 08:00,2010-12-22 16:00,,PT_Normal,,,,,C0yrXElQFE6HAyYQkEZzDA,qp8a04WIjUiMl9UEjqWBUg,,,N,0,0,,,2010-08-08 11:54,2010-08-08 11:54,admin,admin,,,
666,89509,784,11639,841,1,0,N,N,N,CP_Drtn,TT_Task,DT_FixedDUR2,RV_OK,TK_NotStart,A16710,excavation,,96,0,16,0,0,0,16,0,0,0,,,,2010-08-28 08:00,2010-08-29 16:00,,2010-08-14 08:00,2010-08-15 16:00,2010-08-14 08:00,2010-08-15 16:00,2010-08-14 08:00,2010-08-15 16:00,,2010-08-28 08:00,2010-08-29 16:00,,PT_Normal,,,,,xcr7tN6XEUSMYWCiu7g01Q,tunMlJLy6Ueqzkw+w28eSQ,,,N,0,0,,,2010-08-08 11:54,2010-08-08 19:23,admin,admin,,,
667,89510,784,11639,841,1,0,N,N,N,CP_Drtn,TT_Task,DT_FixedDUR2,RV_OK,TK_NotStart,A16720,soil replacement,,96,0,96,0,0,0,96,0,0,0,,,,2010-08-30 08:00,2010-09-12 16:00,,2010-08-16 08:00,2010-08-29 16:00,2010-08-16 08:00,2010-08-29 16:00,2010-08-16 08:00,2010-08-29 16:00,,2010-08-30 08:00,2010-09-12 16:00,,PT_Normal,,,,,do7AhuiCAEmuhmfhvlgXtw,xHzU6oYt20mXEQga0bs2hA,,,N,0,0,,,2010-08-08 11:54,2010-08-08 19:23,admin,admin,,,
668,89511,784,11640,841,1,0,N,N,N,CP_Drtn,TT_Task,DT_FixedDUR2,RV_OK,TK_NotStart,A16730,Plain Concrete Foundation,,96,0,16,0,0,0,16,0,0,0,,,,2010-09-13 08:00,2010-09-14 16:00,,2010-08-30 08:00,2010-08-31 16:00,2010-08-30 08:00,2010-08-31 16:00,2010-08-30 08:00,2010-08-31 16:00,,2010-09-13 08:00,2010-09-14 16:00,,PT_Normal,,,,,EYlDKCSyy0ekQWqUDdtqAQ,uUpjdmFUrUepW2NbRNZ4WA,,,N,0,0,,,2010-08-08 11:54,2010-08-08 19:23,admin,admin,,,
669,89512,784,11640,841,1,0,N,N,N,CP_Drtn,TT_Task,DT_FixedDUR2,RV_OK,TK_NotStart,A16740,Reinforced Concrete Foundation,,96,0,56,0,0,0,56,0,0,0,,,,2010-09-19 08:00,2010-09-26 16:00,,2010-09-05 08:00,2010-09-12 16:00,2010-09-05 08:00,2010-09-12 16:00,2010-09-05 08:00,2010-09-12 16:00,,2010-09-19 08:00,2010-09-26 16:00,,PT_Normal,,,,,DoRRvjMuJk6VXCUDFk84AQ,62KH4/wX6UWcAb2kWl2Tug,,,N,0,0,,,2010-08-08 11:54,2010-08-08 19:23,admin,admin,,,
670,89513,784,11640,841,1,0,N,N,N,CP_Drtn,TT_Task,DT_FixedDUR2,RV_OK,TK_NotStart,A16750,under ground  brick works,,96,0,16,0,0,0,16,0,0,0,,,,2010-10-04 08:00,2010-10-05 16:00,,2010-09-20 08:00,2010-09-21 16:00,2010-09-20 08:00,2010-09-21 16:00,2010-09-20 08:00,2010-09-21 16:00,,2010-10-04 08:00,2010-10-05 16:00,,PT_Normal,,,,,h0FejQjDSEqKr1PwwNaQ5g,mFhxWTVPw0yN2BXu22WMYQ,,,N,0,0,,,2010-08-08 11:54,2010-08-08 19:23,admin,admin,,,
671,89514,784,11640,841,1,0,N,N,N,CP_Drtn,TT_Task,DT_FixedDUR2,RV_OK,TK_NotStart,A16760,under ground insulation for RC & Brick work,,96,0,16,0,0,0,16,0,0,0,,,,2010-10-06 08:00,2010-10-07 16:00,,2010-09-22 08:00,2010-09-23 16:00,2010-09-22 08:00,2010-09-23 16:00,2010-09-22 08:00,2010-09-23 16:00,,2010-10-06 08:00,2010-10-07 16:00,,PT_Normal,,,,,DNX/Xv409Ui6iAT7yp7h8Q,oHYiKDY1R0OdAcvikZ6pAg,,,N,0,0,,,2010-08-08 11:54,2010-08-08 19:23,admin,admin,,,
672,89515,784,11640,841,1,0,N,N,N,CP_Drtn,TT_Task,DT_FixedDUR2,RV_OK,TK_NotStart,A16770,backfilling for under ground,,96,0,32,0,0,0,32,0,0,0,,,,2010-10-09 08:00,2010-10-12 16:00,,2010-09-25 08:00,2010-09-28 16:00,2010-09-25 08:00,2010-09-28 16:00,2010-09-25 08:00,2010-09-28 16:00,,2010-10-09 08:00,2010-10-12 16:00,,PT_Normal,,,,,qdIolyy4DEGp4SoLd5d8rw,tVuKHvWIHEaiDiIPrlXU0w,,,N,0,0,,,2010-08-08 11:54,2010-08-08 19:23,admin,admin,,,
673,89516,784,11640,841,1,0,N,N,N,CP_Drtn,TT_Task,DT_FixedDUR2,RV_OK,TK_NotStart,A16780,P.C slab on grade 10CM,,160,0,8,0,0,0,8,0,0,0,,,,2010-11-25 08:00,2010-11-25 16:00,,2010-10-28 08:00,2010-10-28 16:00,2010-10-28 08:00,2010-10-28 16:00,2010-10-28 08:00,2010-10-28 16:00,,2010-11-25 08:00,2010-11-25 16:00,,PT_Normal,,,,,j9tza1Fad0WFb5HD7fMwjQ,GhbTxxiFUkG1NE8EoEX1SA,,,N,0,0,,,2010-08-08 11:54,2010-08-08 19:23,admin,admin,,,
674,89517,784,11640,841,1,0,N,N,N,CP_Drtn,TT_Task,DT_FixedDUR2,RV_OK,TK_NotStart,A16790,moisture insulation with membrane sheets,,160,0,16,0,0,0,16,0,0,0,,,,2010-11-27 08:00,2010-11-28 16:00,,2010-10-30 08:00,2010-10-31 16:00,2010-10-30 08:00,2010-10-31 16:00,2010-10-30 08:00,2010-10-31 16:00,,2010-11-27 08:00,2010-11-28 16:00,,PT_Normal,,,,,LYXdL0fsJ0qQLFbr6mPesA,SX5qnhZH4kWAucYgKRBqYA,,,N,0,0,,,2010-08-08 11:54,2010-08-08 19:23,admin,admin,,,
675,89518,784,11640,841,1,0,N,N,N,CP_Drtn,TT_Task,DT_FixedDUR2,RV_OK,TK_NotStart,A16800,R.C slab on grade,,160,0,16,0,0,0,16,0,0,0,,,,2010-11-29 08:00,2010-11-30 16:00,,2010-11-01 08:00,2010-11-02 16:00,2010-11-01 08:00,2010-11-02 16:00,2010-11-01 08:00,2010-11-02 16:00,,2010-11-29 08:00,2010-11-30 16:00,,PT_Normal,,,,,EuTx2yvnM06mgPVLLe+bWw,B7jz4EbfRE+MvDJ+5BPlKw,,,N,0,0,,,2010-08-08 11:54,2010-08-08 19:23,admin,admin,,,
676,89519,784,11641,841,1,0,N,N,N,CP_Drtn,TT_Task,DT_FixedDUR2,RV_OK,TK_NotStart,A16810,columns for ground floor,,96,0,48,0,0,0,48,0,0,0,,,,2010-09-27 08:00,2010-10-03 16:00,,2010-09-13 08:00,2010-09-19 16:00,2010-09-13 08:00,2010-09-19 16:00,2010-09-13 08:00,2010-09-19 16:00,,2010-09-27 08:00,2010-10-03 16:00,,PT_Normal,,,,,FmA24RplT0SvWR9OXHH26Q,gKT7ZBAbU06MvAUlA2JUzg,,,N,0,0,,,2010-08-08 11:54,2010-08-08 19:23,admin,admin,,,
677,89520,784,11641,841,1,0,N,N,N,CP_Drtn,TT_Task,DT_FixedDUR2,RV_OK,TK_NotStart,A16820,slab for ground floor,,96,0,72,0,0,0,72,0,0,0,,,,2010-10-13 08:00,2010-10-23 16:00,,2010-09-29 08:00,2010-10-09 16:00,2010-09-29 08:00,2010-10-09 16:00,2010-09-29 08:00,2010-10-09 16:00,,2010-10-13 08:00,2010-10-23 16:00,,PT_Normal,,,,,ihvdamIzM0mkeQSr7UAjPg,PK5wXdu/GUyXF6wLQ34uGQ,,,N,0,0,,,2010-08-08 11:54,2010-08-08 19:23,admin,admin,,,
678,89521,784,11641,841,1,0,N,N,N,CP_Drtn,TT_Task,DT_FixedDUR2,RV_OK,TK_NotStart,A16830,columns for 1st floor,,96,0,48,0,0,0,48,0,0,0,,,,2010-10-25 08:00,2010-10-31 16:00,,2010-10-11 08:00,2010-10-17 16:00,2010-10-11 08:00,2010-10-17 16:00,2010-10-11 08:00,2010-10-17 16:00,,2010-10-25 08:00,2010-10-31 16:00,,PT_Normal,,,,,aWBVmY34j0aNKzVizn2VYw,RbMrEMLTcEuJgJgsUaWmWQ,,,N,0,0,,,2010-08-08 11:54,2010-08-08 19:23,admin,admin,,,
679,89522,784,11641,841,1,0,N,N,N,CP_Drtn,TT_Task,DT_FixedDUR2,RV_OK,TK_NotStart,A16840,slab for 1st floor,,96,0,72,0,0,0,72,0,0,0,,,,2010-11-01 08:00,2010-11-10 16:00,,2010-10-18 08:00,2010-10-27 16:00,2010-10-18 08:00,2010-10-27 16:00,2010-10-18 08:00,2010-10-27 16:00,,2010-11-01 08:00,2010-11-10 16:00,,PT_Normal,,,,,ZipMAnpBqEiafIIR6H+7dw,L5eFzOuPuECCnmNAi0nizQ,,,N,0,0,,,2010-08-08 11:54,2010-08-08 19:23,admin,admin,,,
680,89523,784,11641,841,1,0,N,N,N,CP_Drtn,TT_Task,DT_FixedDUR2,RV_OK,TK_NotStart,A16850,columns for roof floor,,96,0,32,0,0,0,32,0,0,0,,,,2010-11-20 08:00,2010-11-23 16:00,,2010-11-01 08:00,2010-11-04 16:00,2010-11-01 08:00,2010-11-04 16:00,2010-11-01 08:00,2010-11-04 16:00,,2010-11-20 08:00,2010-11-23 16:00,,PT_Normal,,,,,UODc/ZHbpUa3CEv8+KMYhQ,4RhS0kPHAUqxmfrEOwkVdg,,,N,0,0,,,2010-08-08 11:54,2010-08-08 19:23,admin,admin,,,
681,89524,784,11641,841,1,0,N,N,N,CP_Drtn,TT_Task,DT_FixedDUR2,RV_OK,TK_NotStart,A16860,slab for roof floor,,96,0,48,0,0,0,48,0,0,0,,,,2010-11-24 08:00,2010-11-30 16:00,,2010-11-06 08:00,2010-11-11 16:00,2010-11-06 08:00,2010-11-11 16:00,2010-11-06 08:00,2010-11-11 16:00,,2010-11-24 08:00,2010-11-30 16:00,,PT_Normal,,,,,C+SVEq6vLUuoRqKD8iAlvw,xY8+m5M03kiMhNDMaBGIdw,,,N,0,0,,,2010-08-08 11:54,2010-08-08 19:23,admin,admin,,,
682,89525,784,11641,841,1,0,N,N,N,CP_Drtn,TT_Task,DT_FixedDUR2,RV_OK,TK_NotStart,A16870,Brick works for ground floor,,160,0,40,0,0,0,40,0,0,0,,,,2010-11-20 08:00,2010-11-24 16:00,,2010-10-23 08:00,2010-10-27 16:00,2010-10-23 08:00,2010-10-27 16:00,2010-10-23 08:00,2010-10-27 16:00,,2010-11-20 08:00,2010-11-24 16:00,,PT_Normal,,,,,AU3HFKLf3kWK9ozz5t5cAg,mANq9CHxlEuub3nJndFF1Q,,,N,0,0,,,2010-08-08 11:54,2010-08-08 19:23,admin,admin,,,
683,89526,784,11642,841,1,0,N,N,N,CP_Drtn,TT_Task,DT_FixedDrtn,RV_OK,TK_NotStart,A16880,electrical conduits for ground floor's slab,,104,8,16,0,0,0,16,0,0,0,,,,2010-10-19 08:00,2010-10-20 16:00,,2010-10-04 08:00,2010-10-05 16:00,2010-10-04 08:00,2010-10-05 16:00,2010-10-04 08:00,2010-10-05 16:00,,2010-10-19 08:00,2010-10-20 16:00,,PT_Normal,,,,,vxSZNLi+ykSiZ+mVG2hvtA,qkaghGuGs0y8xDVp9MNAIg,,,N,0,0,,,2010-08-08 11:54,2010-08-08 19:23,admin,admin,,,
684,89527,784,11642,841,1,0,N,N,N,CP_Drtn,TT_Task,DT_FixedDrtn,RV_OK,TK_NotStart,A16890,electrical conduits for 1st floor slab,,104,8,16,0,0,0,16,0,0,0,,,,2010-11-07 08:00,2010-11-08 16:00,,2010-10-23 08:00,2010-10-24 16:00,2010-10-23 08:00,2010-10-24 16:00,2010-10-23 08:00,2010-10-24 16:00,,2010-11-07 08:00,2010-11-08 16:00,,PT_Normal,,,,,zVhra/aL2UyZTCjVddP7BQ,tNoo/+NPg0O+X3OM6oTFUQ,,,N,0,0,,,2010-08-08 11:54,2010-08-08 19:23,admin,admin,,,
685,89528,784,11642,841,1,0,N,N,N,CP_Drtn,TT_Task,DT_FixedDrtn,RV_OK,TK_NotStart,A16900,electrical conduits for roof slab,,104,8,8,0,0,0,8,0,0,0,,,,2010-11-29 08:00,2010-11-29 16:00,,2010-11-09 08:00,2010-11-09 16:00,2010-11-09 08:00,2010-11-09 16:00,2010-11-09 08:00,2010-11-09 16:00,,2010-11-29 08:00,2010-11-29 16:00,,PT_Normal,,,,,6U2rS7yQHUuNPPN+Fi2ejg,HI0eoljNhEq1gUOP32e2/A,,,N,0,0,,,2010-08-08 11:54,2010-08-08 19:23,admin,admin,,,
686,89529,784,11643,841,1,0,N,N,N,CP_Drtn,TT_Task,DT_FixedDUR2,RV_OK,TK_NotStart,A16910,Internal plastering for ground floor,,160,0,64,0,0,0,64,0,0,0,,,,2010-12-05 08:00,2010-12-13 16:00,,2010-11-07 08:00,2010-11-20 16:00,2010-11-07 08:00,2010-11-20 16:00,2010-11-07 08:00,2010-11-20 16:00,,2010-12-05 08:00,2010-12-13 16:00,,PT_Normal,,,,,b7IikM8dnkCpg+d1Kj8toA,7LYO3LG2rUeGZNJxjbaRYQ,,,N,0,0,,,2010-08-08 11:54,2010-08-08 19:23,admin,admin,,,
687,89530,784,11643,841,1,0,N,N,N,CP_Drtn,TT_Task,DT_FixedDUR2,RV_OK,TK_NotStart,A16920,External plastering,,96,0,80,0,0,0,80,0,0,0,,,,2010-12-18 08:00,2010-12-28 16:00,,2010-12-04 08:00,2010-12-14 16:00,2010-12-04 08:00,2010-12-14 16:00,2010-12-04 08:00,2010-12-14 16:00,,2010-12-18 08:00,2010-12-28 16:00,,PT_Normal,,,,,NqDB3VCS9k68x6NHZZfkCw,ICL0UVpcIUudpw/80lsfyw,,,N,0,0,,,2010-08-08 11:54,2010-08-08 19:23,admin,admin,,,
688,89531,784,11642,841,1,0,N,N,N,CP_Drtn,TT_Task,DT_FixedDrtn,RV_OK,TK_NotStart,A16930,plumbing connections under slab on grade,,344,184,16,0,0,0,16,0,0,0,,,,2010-11-23 08:00,2010-11-24 16:00,,2010-09-29 08:00,2010-09-30 16:00,2010-09-29 08:00,2010-09-30 16:00,2010-09-29 08:00,2010-09-30 16:00,,2010-11-23 08:00,2010-11-24 16:00,,PT_Normal,,,,,D8kGsr9Tnkah4fK0GN476Q,NyjwbqaKJkGtNX9JVwLQrQ,,,N,0,0,,,2010-08-08 11:54,2010-08-08 19:23,admin,admin,,,
689,89532,784,11679,841,0,0,N,N,N,CP_Drtn,TT_Mile,DT_FixedDrtn,RV_OK,TK_NotStart,A16940,Start Villa construction,,96,0,0,0,0,0,0,0,0,0,,,,2010-08-28 08:00,2010-08-28 08:00,,2010-08-14 08:00,2010-08-14 08:00,2010-08-14 08:00,2010-08-14 08:00,2010-08-14 08:00,2010-08-14 08:00,,2010-08-28 08:00,2010-08-28 08:00,,PT_Normal,,,,,I2uVRlpNNUaeSIHUEGatwA,qn9EkcxsDEq7Prxg//SrvA,,,N,0,0,,,2010-08-08 11:54,2010-08-08 19:31,admin,admin,,,
690,89533,784,11679,841,0,0,N,N,N,CP_Drtn,TT_FinMile,DT_FixedDrtn,RV_OK,TK_NotStart,A16950,finish Villa construction,,96,96,0,0,0,0,0,0,0,0,,,,2010-12-28 16:00,2010-12-28 16:00,,2010-12-14 16:00,2010-12-14 16:00,2010-12-14 16:00,2010-12-14 16:00,2010-12-14 16:00,2010-12-14 16:00,,2010-12-28 16:00,2010-12-28 16:00,,PT_Normal,,,,,bFJihmTtJ0ugdCLE45GlhQ,75JdUJQ0O02z/3t+L++1RQ,,,N,0,0,,,2010-08-08 11:54,2010-08-08 19:23,admin,admin,,,
691,89534,784,11679,841,0,0,N,N,N,CP_Drtn,TT_Mile,DT_FixedDrtn,RV_OK,TK_NotStart,A16960,IFC drawings,,96,0,0,0,0,0,0,0,0,0,,,,2010-07-05 08:00,2010-07-05 08:00,,2010-06-21 08:00,2010-06-21 08:00,2010-06-21 08:00,2010-06-21 08:00,2010-06-21 08:00,2010-06-21 08:00,,2010-07-05 08:00,2010-07-05 08:00,,PT_Normal,,,,,XU43a3qGZU+IkQVXgFSHkA,2HDVsExtq0e1u5qMLN6ELA,,,N,0,0,,,2010-08-08 11:54,2010-08-08 19:23,admin,admin,,,
692,89535,784,11641,841,1,0,N,N,N,CP_Drtn,TT_Task,DT_FixedDUR2,RV_OK,TK_NotStart,A16970,pouring for ground floor's slab,,96,0,8,0,0,0,8,0,0,0,,,,2010-10-24 08:00,2010-10-24 16:00,,2010-10-10 08:00,2010-10-10 16:00,2010-10-10 08:00,2010-10-10 16:00,2010-10-10 08:00,2010-10-10 16:00,,2010-10-24 08:00,2010-10-24 16:00,,PT_Normal,,,,,ACIH3xhZaUOVgL2y8K329A,qTvs2Hr5Tkiev/9vswcoAw,,,N,0,0,,,2010-08-08 11:54,2010-08-08 19:23,admin,admin,,,
693,89536,784,11641,841,1,0,N,N,N,CP_Drtn,TT_Task,DT_FixedDUR2,RV_OK,TK_NotStart,A16980,pouring for 1st floor's slab,,96,0,8,0,0,0,8,0,0,0,,,,2010-11-11 08:00,2010-11-11 16:00,,2010-10-28 08:00,2010-10-28 16:00,2010-10-28 08:00,2010-10-28 16:00,2010-10-28 08:00,2010-10-28 16:00,,2010-11-11 08:00,2010-11-11 16:00,,PT_Normal,,,,,8pXsMb30fU2BSssEBZECNQ,ledZYFyG8kGg8HJfsgJgCA,,,N,0,0,,,2010-08-08 11:54,2010-08-08 19:23,admin,admin,,,
694,89537,784,11641,841,1,0,N,N,N,CP_Drtn,TT_Task,DT_FixedDUR2,RV_OK,TK_NotStart,A16990,pouring for roof floor's slab,,96,0,8,0,0,0,8,0,0,0,,,,2010-12-01 08:00,2010-12-01 16:00,,2010-11-13 08:00,2010-11-13 16:00,2010-11-13 08:00,2010-11-13 16:00,2010-11-13 08:00,2010-11-13 16:00,,2010-12-01 08:00,2010-12-01 16:00,,PT_Normal,,,,,b/1tZRZCKkS/W4Obxg2Ycw,M9893zCY2kCy1DW+X47xCQ,,,N,0,0,,,2010-08-08 11:54,2010-08-08 19:23,admin,admin,,,
695,89538,784,11641,841,1,0,N,N,N,CP_Drtn,TT_Task,DT_FixedDrtn,RV_OK,TK_NotStart,A17000,Fence work,,112,16,400,0,0,0,400,0,0,0,,,,2010-10-27 08:00,2010-12-28 16:00,,2010-10-11 08:00,2010-12-12 16:00,2010-10-11 08:00,2010-12-12 16:00,2010-10-11 08:00,2010-12-12 16:00,,2010-10-27 08:00,2010-12-28 16:00,,PT_Normal,,,,,hxBAckJNt0u4Fkg5vebDcw,PUd0XcLXP06VoV2srJu2fA,,,N,0,0,,,2010-08-08 11:54,2010-08-08 19:23,admin,admin,,,
696,89539,784,11679,841,1,0,N,N,N,CP_Drtn,TT_Task,DT_FixedDUR2,RV_OK,TK_NotStart,A17010,Fence Drawings IFC,,424,312,8,0,0,0,8,0,0,0,,,,2010-10-14 08:00,2010-10-14 16:00,,2010-08-14 08:00,2010-08-14 16:00,2010-08-14 08:00,2010-08-14 16:00,2010-08-14 08:00,2010-08-14 16:00,,2010-10-14 08:00,2010-10-14 16:00,,PT_Normal,,,,,xVlFrUJ2C06UyetZZWmSgw,Gp+eoIeVoUaAyIX/lXkfSA,,,N,0,0,,,2010-08-08 11:54,2010-08-08 19:31,admin,admin,,,
697,89540,784,11640,873,1,0,N,N,N,CP_Drtn,TT_Task,DT_FixedDUR2,RV_OK,TK_NotStart,A17020,backfilling between P.C Foundation,,64,0,16,0,0,0,16,0,0,0,,,,2010-09-16 08:00,2010-09-18 16:00,,2010-09-02 08:00,2010-09-04 16:00,2010-09-02 08:00,2010-09-04 16:00,2010-09-02 08:00,2010-09-04 16:00,,2010-09-16 08:00,2010-09-18 16:00,,PT_Normal,,,,,5UznFDvISUi2p5qkbGebrg,puHSZL/n0U6BLnZUjer/Pw,,,N,0,0,,,2010-08-08 11:54,2010-08-08 19:23,admin,admin,,,
698,89541,784,11641,873,1,0,N,N,N,CP_Drtn,TT_Task,DT_FixedDUR2,RV_OK,TK_NotStart,A17040,Brick works for 1st floor,,176,0,40,0,0,0,40,0,0,0,,,,2010-12-06 08:00,2010-12-11 16:00,,2010-11-10 08:00,2010-11-15 16:00,2010-11-10 08:00,2010-11-15 16:00,2010-11-10 08:00,2010-11-15 16:00,,2010-12-06 08:00,2010-12-11 16:00,,PT_Normal,,,,,tTb9G+5MsEijEl/ZMUwVbw,mwlwVq1zB0mZYXFWcqe9bw,,,N,0,0,,,2010-08-08 11:54,2010-08-08 19:23,admin,admin,,,
699,89542,784,11641,873,1,0,N,N,N,CP_Drtn,TT_Task,DT_FixedDUR2,RV_OK,TK_NotStart,A17050,Brick works for roof floor,,96,0,40,0,0,0,40,0,0,0,,,,2010-12-12 08:00,2010-12-16 16:00,,2010-11-28 08:00,2010-12-02 16:00,2010-11-28 08:00,2010-12-02 16:00,2010-11-28 08:00,2010-12-02 16:00,,2010-12-12 08:00,2010-12-16 16:00,,PT_Normal,,,,,1ultjEYy8Ei6rfmuei9FlA,mLQS+UkpLkOKqebXcXCMFw,,,N,0,0,,,2010-08-08 11:54,2010-08-08 19:23,admin,admin,,,
700,89543,784,11643,873,1,0,N,N,N,CP_Drtn,TT_Task,DT_FixedDUR2,RV_OK,TK_NotStart,A17060,Internal plastering for 1st floor,,160,40,64,0,0,0,64,0,0,0,,,,2010-12-14 08:00,2010-12-22 16:00,,2010-11-21 08:00,2010-11-29 16:00,2010-11-21 08:00,2010-11-29 16:00,2010-11-21 08:00,2010-11-29 16:00,,2010-12-14 08:00,2010-12-22 16:00,,PT_Normal,,,,,UB5Z5mS1L0S6V3RVdrVF9A,4usfBrmreESKmsjS3yKTeg,,,N,0,0,,,2010-08-08 11:54,2010-08-08 19:23,admin,admin,,,
701,89544,784,11643,873,1,0,N,N,N,CP_Drtn,TT_Task,DT_FixedDUR2,RV_OK,TK_NotStart,A17070,Internal plastering for roof floor,,120,24,40,0,0,0,40,0,0,0,,,,2010-12-23 08:00,2010-12-28 16:00,,2010-12-06 08:00,2010-12-11 16:00,2010-12-06 08:00,2010-12-11 16:00,2010-12-06 08:00,2010-12-11 16:00,,2010-12-23 08:00,2010-12-28 16:00,,PT_Normal,,,,,YP6LeIXg+UKZzWSfnE7iQw,wpqax4d/lkSsNS/3R6RFcQ,,,N,0,0,,,2010-08-08 11:54,2010-08-08 19:23,admin,admin,,,
702,89545,784,11642,873,1,0,N,N,N,CP_Drtn,TT_Task,DT_FixedDUR2,RV_OK,TK_NotStart,A17080,electrical conduits for ground floor walls,,192,0,16,0,0,0,16,0,0,0,,,,2010-12-02 08:00,2010-12-04 16:00,,2010-11-04 08:00,2010-11-06 16:00,2010-11-04 08:00,2010-11-06 16:00,2010-11-04 08:00,2010-11-06 16:00,,2010-12-02 08:00,2010-12-04 16:00,,PT_Normal,,,,,82WxfpfAdkC47hk5hDEv+w,GqxzRXTw50WhgeOsWqay1Q,,,N,0,0,,,2010-08-08 11:54,2010-08-08 19:23,admin,admin,,,
703,89546,784,11642,873,1,0,N,N,N,CP_Drtn,TT_Task,DT_FixedDUR2,RV_OK,TK_NotStart,A17090,electrical conduits for 1st floor walls,,176,16,16,0,0,0,16,0,0,0,,,,2010-12-12 08:00,2010-12-13 16:00,,2010-11-16 08:00,2010-11-17 16:00,2010-11-16 08:00,2010-11-17 16:00,2010-11-16 08:00,2010-11-17 16:00,,2010-12-12 08:00,2010-12-13 16:00,,PT_Normal,,,,,IHqaVktLg0eOAlSLa1+p3A,DYD7I1uJ1EaaVzuO/Arxrw,,,N,0,0,,,2010-08-08 11:54,2010-08-08 19:23,admin,admin,,,
704,89547,784,11642,873,1,0,N,N,N,CP_Drtn,TT_Task,DT_FixedDUR2,RV_OK,TK_NotStart,A17100,electrical conduits for roof floor walls,,120,0,16,0,0,0,16,0,0,0,,,,2010-12-21 08:00,2010-12-22 16:00,,2010-12-04 08:00,2010-12-05 16:00,2010-12-04 08:00,2010-12-05 16:00,2010-12-04 08:00,2010-12-05 16:00,,2010-12-21 08:00,2010-12-22 16:00,,PT_Normal,,,,,wpor91G3mUCBTLEz43U+0A,9FyEVWb44Uq3KXFnN73aPw,,,N,0,0,,,2010-08-08 11:54,2010-08-08 19:23,admin,admin,,,
705,89548,784,11646,841,1,0,N,N,N,CP_Drtn,TT_Task,DT_FixedDUR2,RV_OK,TK_NotStart,A17110,excavation,,0,0,80,0,0,0,80,0,0,0,,,,2010-08-18 08:00,2010-08-29 16:00,,2010-08-18 08:00,2010-08-29 16:00,2010-08-18 08:00,2010-08-29 16:00,2010-08-18 08:00,2010-08-29 16:00,,2010-08-18 08:00,2010-08-29 16:00,,PT_Normal,,,,,itbvsFOVtkGVA9bhn9sAAA,xpIrArW2LkeP6Md9A5acuw,,,Y,0,0,,,2010-08-08 11:54,2010-08-08 19:41,admin,admin,,,
706,89549,784,11646,841,1,0,N,N,N,CP_Drtn,TT_Task,DT_FixedDUR2,RV_OK,TK_NotStart,A17120,soil replacement,,0,0,96,0,0,0,96,0,0,0,,,,2010-08-30 08:00,2010-09-12 16:00,,2010-08-30 08:00,2010-09-12 16:00,2010-08-30 08:00,2010-09-12 16:00,2010-08-30 08:00,2010-09-12 16:00,,2010-08-30 08:00,2010-09-12 16:00,,PT_Normal,,,,,41NNiArvUke+ty6X74jysw,Wrp+uILxS0KONhsAk7Caxw,,,Y,0,0,,,2010-08-08 11:54,2010-08-08 19:41,admin,admin,,,
707,89550,784,11647,841,1,0,N,N,N,CP_Drtn,TT_Task,DT_FixedDUR2,RV_OK,TK_NotStart,A17130,Plain Concrete Foundation,,0,0,16,0,0,0,16,0,0,0,,,,2010-09-13 08:00,2010-09-14 16:00,,2010-09-13 08:00,2010-09-14 16:00,2010-09-13 08:00,2010-09-14 16:00,2010-09-13 08:00,2010-09-14 16:00,,2010-09-13 08:00,2010-09-14 16:00,,PT_Normal,,,,,t4whVgHAnUqB7zyCi4WU6g,5P/qRrn8G0KGtvZlZvi7Rw,,,Y,0,0,,,2010-08-08 11:54,2010-08-08 19:41,admin,admin,,,
708,89551,784,11647,841,1,0,N,N,N,CP_Drtn,TT_Task,DT_FixedDUR2,RV_OK,TK_NotStart,A17140,Reinforced Concrete Foundation,,0,0,56,0,0,0,56,0,0,0,,,,2010-09-19 08:00,2010-09-26 16:00,,2010-09-19 08:00,2010-09-26 16:00,2010-09-19 08:00,2010-09-26 16:00,2010-09-19 08:00,2010-09-26 16:00,,2010-09-19 08:00,2010-09-26 16:00,,PT_Normal,,,,,Jo47ZhOQhEaktp7KD5TPnA,1KpFclH2jE+5N0OtVbpNUA,,,Y,0,0,,,2010-08-08 11:54,2010-08-08 19:41,admin,admin,,,
709,89552,784,11647,841,1,0,N,N,N,CP_Drtn,TT_Task,DT_FixedDUR2,RV_OK,TK_NotStart,A17150,under ground  brick works,,0,0,16,0,0,0,16,0,0,0,,,,2010-10-04 08:00,2010-10-05 16:00,,2010-10-04 08:00,2010-10-05 16:00,2010-10-04 08:00,2010-10-05 16:00,2010-10-04 08:00,2010-10-05 16:00,,2010-10-04 08:00,2010-10-05 16:00,,PT_Normal,,,,,Urxo1UsBnke3rq/8II8PTw,7mHNdJlkskGxu6/jgE8Syw,,,Y,0,0,,,2010-08-08 11:54,2010-08-08 19:41,admin,admin,,,
710,89553,784,11647,841,1,0,N,N,N,CP_Drtn,TT_Task,DT_FixedDUR2,RV_OK,TK_NotStart,A17160,under ground insulation for RC & Brick work,,0,0,16,0,0,0,16,0,0,0,,,,2010-10-06 08:00,2010-10-07 16:00,,2010-10-06 08:00,2010-10-07 16:00,2010-10-06 08:00,2010-10-07 16:00,2010-10-06 08:00,2010-10-07 16:00,,2010-10-06 08:00,2010-10-07 16:00,,PT_Normal,,,,,HSFbnvZX+EOuAa8iyoVPSw,Aw7cDPRsgkqvOFMt3z7ceA,,,Y,0,0,,,2010-08-08 11:54,2010-08-08 19:41,admin,admin,,,
711,89554,784,11647,841,1,0,N,N,N,CP_Drtn,TT_Task,DT_FixedDUR2,RV_OK,TK_NotStart,A17170,backfilling for under ground,,0,0,32,0,0,0,32,0,0,0,,,,2010-10-09 08:00,2010-10-12 16:00,,2010-10-09 08:00,2010-10-12 16:00,2010-10-09 08:00,2010-10-12 16:00,2010-10-09 08:00,2010-10-12 16:00,,2010-10-09 08:00,2010-10-12 16:00,,PT_Normal,,,,,kP5aJkMWcUizGF0OMfgLSA,TAm/kp7CMU+ZsA6s8gaGwQ,,,Y,0,0,,,2010-08-08 11:54,2010-08-08 19:41,admin,admin,,,
712,89555,784,11647,841,1,0,N,N,N,CP_Drtn,TT_Task,DT_FixedDUR2,RV_OK,TK_NotStart,A17180,P.C slab on grade 10CM,,64,0,8,0,0,0,8,0,0,0,,,,2010-11-25 08:00,2010-11-25 16:00,,2010-11-11 08:00,2010-11-11 16:00,2010-11-11 08:00,2010-11-11 16:00,2010-11-11 08:00,2010-11-11 16:00,,2010-11-25 08:00,2010-11-25 16:00,,PT_Normal,,,,,tw5jhcTFLkeun8brhsTbyw,t/h1vrvLCUC1Nwb1N2cMpw,,,N,0,0,,,2010-08-08 11:54,2010-08-08 11:54,admin,admin,,,
713,89556,784,11647,841,1,0,N,N,N,CP_Drtn,TT_Task,DT_FixedDUR2,RV_OK,TK_NotStart,A17190,moisture insulation with membrane sheets,,64,0,16,0,0,0,16,0,0,0,,,,2010-11-27 08:00,2010-11-28 16:00,,2010-11-13 08:00,2010-11-14 16:00,2010-11-13 08:00,2010-11-14 16:00,2010-11-13 08:00,2010-11-14 16:00,,2010-11-27 08:00,2010-11-28 16:00,,PT_Normal,,,,,N00iGpaUg0aG84ca5lnbxw,W05Kz15h00CCtrqxF9ThmQ,,,N,0,0,,,2010-08-08 11:54,2010-08-08 11:54,admin,admin,,,
714,89557,784,11647,841,1,0,N,N,N,CP_Drtn,TT_Task,DT_FixedDUR2,RV_OK,TK_NotStart,A17200,R.C slab on grade,,64,0,16,0,0,0,16,0,0,0,,,,2010-11-29 08:00,2010-11-30 16:00,,2010-11-20 08:00,2010-11-21 16:00,2010-11-20 08:00,2010-11-21 16:00,2010-11-20 08:00,2010-11-21 16:00,,2010-11-29 08:00,2010-11-30 16:00,,PT_Normal,,,,,ZbFOLkwSp0aJuY6c3L3y+g,Xf3dWA/Z4kazRKTEoJbU1Q,,,N,0,0,,,2010-08-08 11:54,2010-08-08 11:54,admin,admin,,,
715,89558,784,11648,841,1,0,N,N,N,CP_Drtn,TT_Task,DT_FixedDUR2,RV_OK,TK_NotStart,A17210,columns for ground floor,,0,0,48,0,0,0,48,0,0,0,,,,2010-09-27 08:00,2010-10-03 16:00,,2010-09-27 08:00,2010-10-03 16:00,2010-09-27 08:00,2010-10-03 16:00,2010-09-27 08:00,2010-10-03 16:00,,2010-09-27 08:00,2010-10-03 16:00,,PT_Normal,,,,,fjM35CUL10O58i0SY8lxLg,zvqE06Ax80+FDqIdXC8lhg,,,Y,0,0,,,2010-08-08 11:54,2010-08-08 19:41,admin,admin,,,
716,89559,784,11648,841,1,0,N,N,N,CP_Drtn,TT_Task,DT_FixedDUR2,RV_OK,TK_NotStart,A17220,slab for ground floor,,0,0,72,0,0,0,72,0,0,0,,,,2010-10-13 08:00,2010-10-23 16:00,,2010-10-13 08:00,2010-10-23 16:00,2010-10-13 08:00,2010-10-23 16:00,2010-10-13 08:00,2010-10-23 16:00,,2010-10-13 08:00,2010-10-23 16:00,,PT_Normal,,,,,4Zh4XDQY+0GZZ9A+r10nSA,b6VgE5AxHUK6VuwTj7w6AQ,,,Y,0,0,,,2010-08-08 11:54,2010-08-08 19:41,admin,admin,,,
717,89560,784,11648,841,1,0,N,N,N,CP_Drtn,TT_Task,DT_FixedDUR2,RV_OK,TK_NotStart,A17230,columns for 1st floor,,0,0,48,0,0,0,48,0,0,0,,,,2010-10-25 08:00,2010-10-31 16:00,,2010-10-25 08:00,2010-10-31 16:00,2010-10-25 08:00,2010-10-31 16:00,2010-10-25 08:00,2010-10-31 16:00,,2010-10-25 08:00,2010-10-31 16:00,,PT_Normal,,,,,X7KhRd9ezE2e/EQc2I6viw,XNPaD7XszkameGKcs/u5Lg,,,Y,0,0,,,2010-08-08 11:54,2010-08-08 19:41,admin,admin,,,
718,89561,784,11648,841,1,0,N,N,N,CP_Drtn,TT_Task,DT_FixedDUR2,RV_OK,TK_NotStart,A17240,slab for 1st floor,,0,0,72,0,0,0,72,0,0,0,,,,2010-11-01 08:00,2010-11-10 16:00,,2010-11-01 08:00,2010-11-10 16:00,2010-11-01 08:00,2010-11-10 16:00,2010-11-01 08:00,2010-11-10 16:00,,2010-11-01 08:00,2010-11-10 16:00,,PT_Normal,,,,,TXe1Kn4XhkWDocjw1ZaJPw,7uQU7/ePskeeZnsotjj3HA,,,Y,0,0,,,2010-08-08 11:54,2010-08-08 19:41,admin,admin,,,
719,89562,784,11648,841,1,0,N,N,N,CP_Drtn,TT_Task,DT_FixedDUR2,RV_OK,TK_NotStart,A17250,columns for roof floor,,0,0,32,0,0,0,32,0,0,0,,,,2010-11-20 08:00,2010-11-23 16:00,,2010-11-20 08:00,2010-11-23 16:00,2010-11-20 08:00,2010-11-23 16:00,2010-11-20 08:00,2010-11-23 16:00,,2010-11-20 08:00,2010-11-23 16:00,,PT_Normal,,,,,knezxDfRGEuX9oFdsKARFQ,3KkhoU2ZzEuG5iL2V7K0MQ,,,Y,0,0,,,2010-08-08 11:54,2010-08-08 19:41,admin,admin,,,
720,89563,784,11648,841,1,0,N,N,N,CP_Drtn,TT_Task,DT_FixedDUR2,RV_OK,TK_NotStart,A17260,slab for roof floor,,0,0,48,0,0,0,48,0,0,0,,,,2010-11-24 08:00,2010-11-30 16:00,,2010-11-24 08:00,2010-11-30 16:00,2010-11-24 08:00,2010-11-30 16:00,2010-11-24 08:00,2010-11-30 16:00,,2010-11-24 08:00,2010-11-30 16:00,,PT_Normal,,,,,BnLac7i6KkmSjFwjJwTh5Q,M9tBQnmhV0yfHErzKn87Ew,,,Y,0,0,,,2010-08-08 11:54,2010-08-08 19:41,admin,admin,,,
721,89564,784,11648,841,1,0,N,N,N,CP_Drtn,TT_Task,DT_FixedDUR2,RV_OK,TK_NotStart,A17270,Brick works for ground floor,,64,0,40,0,0,0,40,0,0,0,,,,2010-11-20 08:00,2010-11-24 16:00,,2010-11-06 08:00,2010-11-10 16:00,2010-11-06 08:00,2010-11-10 16:00,2010-11-06 08:00,2010-11-10 16:00,,2010-11-20 08:00,2010-11-24 16:00,,PT_Normal,,,,,Ac86vbd6BkSs3t7dJ/oUxw,QGQqPobFt0CpF1wkhmqXkA,,,N,0,0,,,2010-08-08 11:54,2010-08-08 11:54,admin,admin,,,
722,89565,784,11649,841,1,0,N,N,N,CP_Drtn,TT_Task,DT_FixedDrtn,RV_OK,TK_NotStart,A17280,electrical conduits for ground floor's slab,,8,8,16,0,0,0,16,0,0,0,,,,2010-10-19 08:00,2010-10-20 16:00,,2010-10-18 08:00,2010-10-19 16:00,2010-10-18 08:00,2010-10-19 16:00,2010-10-18 08:00,2010-10-19 16:00,,2010-10-19 08:00,2010-10-20 16:00,,PT_Normal,,,,,rMmSQgsRKkKDWU1XwbSojQ,46okozi8WEGH2+MU1N/mzQ,,,N,0,0,,,2010-08-08 11:54,2010-08-08 11:54,admin,admin,,,
723,89566,784,11649,841,1,0,N,N,N,CP_Drtn,TT_Task,DT_FixedDrtn,RV_OK,TK_NotStart,A17290,electrical conduits for 1st floor slab,,8,8,16,0,0,0,16,0,0,0,,,,2010-11-07 08:00,2010-11-08 16:00,,2010-11-06 08:00,2010-11-07 16:00,2010-11-06 08:00,2010-11-07 16:00,2010-11-06 08:00,2010-11-07 16:00,,2010-11-07 08:00,2010-11-08 16:00,,PT_Normal,,,,,TMQb/G0n6kKDnOblO84noQ,5lOsXnpbZEOrQXwJwsSzBw,,,N,0,0,,,2010-08-08 11:54,2010-08-08 11:54,admin,admin,,,
724,89567,784,11649,841,1,0,N,N,N,CP_Drtn,TT_Task,DT_FixedDrtn,RV_OK,TK_NotStart,A17300,electrical conduits for roof slab,,8,8,8,0,0,0,8,0,0,0,,,,2010-11-29 08:00,2010-11-29 16:00,,2010-11-28 08:00,2010-11-28 16:00,2010-11-28 08:00,2010-11-28 16:00,2010-11-28 08:00,2010-11-28 16:00,,2010-11-29 08:00,2010-11-29 16:00,,PT_Normal,,,,,l+jRxkNbgEG8PCfY8f2Qcw,av9K10b8oEWwpMijtCiqWg,,,N,0,0,,,2010-08-08 11:54,2010-08-08 11:54,admin,admin,,,
725,89568,784,11650,841,1,0,N,N,N,CP_Drtn,TT_Task,DT_FixedDUR2,RV_OK,TK_NotStart,A17310,Internal plastering for ground floor,,64,16,64,0,0,0,64,0,0,0,,,,2010-12-05 08:00,2010-12-13 16:00,,2010-11-25 08:00,2010-12-04 16:00,2010-11-25 08:00,2010-12-04 16:00,2010-11-25 08:00,2010-12-04 16:00,,2010-12-05 08:00,2010-12-13 16:00,,PT_Normal,,,,,6q0qLMpCC0WCuWDNvG0VEw,uPJIOExc20K62UL/ZKS9aQ,,,N,0,0,,,2010-08-08 11:54,2010-08-08 11:54,admin,admin,,,
726,89569,784,11650,841,1,0,N,N,N,CP_Drtn,TT_Task,DT_FixedDUR2,RV_OK,TK_NotStart,A17320,External plastering,,0,0,80,0,0,0,80,0,0,0,,,,2010-12-18 08:00,2010-12-28 16:00,,2010-12-18 08:00,2010-12-28 16:00,2010-12-18 08:00,2010-12-28 16:00,2010-12-18 08:00,2010-12-28 16:00,,2010-12-18 08:00,2010-12-28 16:00,,PT_Normal,,,,,whWkBMsbEkS5VOhxNEvFGA,FvRR4yePN0mH/wxUyRPdhA,,,Y,0,0,,,2010-08-08 11:54,2010-08-08 19:41,admin,admin,,,
727,89570,784,11649,841,1,0,N,N,N,CP_Drtn,TT_Task,DT_FixedDrtn,RV_OK,TK_NotStart,A17330,plumbing connections under slab on grade,,248,184,16,0,0,0,16,0,0,0,,,,2010-11-23 08:00,2010-11-24 16:00,,2010-10-13 08:00,2010-10-14 16:00,2010-10-13 08:00,2010-10-14 16:00,2010-10-13 08:00,2010-10-14 16:00,,2010-11-23 08:00,2010-11-24 16:00,,PT_Normal,,,,,fVI4XD8sQ0y60c28QXzpuQ,j9KAFraTzEKuJli1ErsDUA,,,N,0,0,,,2010-08-08 11:54,2010-08-08 11:54,admin,admin,,,
728,89571,784,11645,841,0,0,N,N,N,CP_Drtn,TT_Mile,DT_FixedDrtn,RV_OK,TK_NotStart,A17340,Start Villa construction,,0,0,0,0,0,0,0,0,0,0,,,,2010-08-18 08:00,2010-08-18 08:00,,2010-08-18 08:00,2010-08-18 08:00,2010-08-18 08:00,2010-08-18 08:00,2010-08-18 08:00,2010-08-18 08:00,,2010-08-18 08:00,2010-08-18 08:00,,PT_Normal,,,,,mt/CI6Yyl0eVw0Kq4gDW5g,IK6NMQYkpE6WdRQQgp4y/A,,,Y,0,0,,,2010-08-08 11:54,2010-08-08 19:41,admin,admin,,,
729,89572,784,11645,841,0,0,N,N,N,CP_Drtn,TT_FinMile,DT_FixedDrtn,RV_OK,TK_NotStart,A17350,finish Villa construction,,0,0,0,0,0,0,0,0,0,0,,,,2010-12-28 16:00,2010-12-28 16:00,,2010-12-28 16:00,2010-12-28 16:00,2010-12-28 16:00,2010-12-28 16:00,2010-12-28 16:00,2010-12-28 16:00,,2010-12-28 16:00,2010-12-28 16:00,,PT_Normal,,,,,pObZEQRG8Ei/yTx9AbHZAw,9D5MPkjKqUG790+2S8kcyg,,,Y,0,0,,,2010-08-08 11:54,2010-08-08 19:41,admin,admin,,,
730,89573,784,11645,841,0,0,N,N,N,CP_Drtn,TT_Mile,DT_FixedDrtn,RV_OK,TK_NotStart,A17360,IFC drawings,,0,0,0,0,0,0,0,0,0,0,,,,2010-06-21 08:00,2010-06-21 08:00,,2010-06-21 08:00,2010-06-21 08:00,2010-06-21 08:00,2010-06-21 08:00,2010-06-21 08:00,2010-06-21 08:00,,2010-06-21 08:00,2010-06-21 08:00,,PT_Normal,,,,,vSxHe8UpYEankVVpT6Q5ZQ,tinbWYnhU0edL712vdp1VQ,,,Y,0,0,,,2010-08-08 11:54,2010-08-08 19:41,admin,admin,,,
731,89574,784,11648,841,1,0,N,N,N,CP_Drtn,TT_Task,DT_FixedDUR2,RV_OK,TK_NotStart,A17370,pouring for ground floor's slab,,0,0,8,0,0,0,8,0,0,0,,,,2010-10-24 08:00,2010-10-24 16:00,,2010-10-24 08:00,2010-10-24 16:00,2010-10-24 08:00,2010-10-24 16:00,2010-10-24 08:00,2010-10-24 16:00,,2010-10-24 08:00,2010-10-24 16:00,,PT_Normal,,,,,x66sxdHUmka+3VOsI5s2hw,7Xq8rR3Ym0O6scZXonbuKQ,,,Y,0,0,,,2010-08-08 11:54,2010-08-08 19:41,admin,admin,,,
732,89575,784,11648,841,1,0,N,N,N,CP_Drtn,TT_Task,DT_FixedDUR2,RV_OK,TK_NotStart,A17380,pouring for 1st floor's slab,,0,0,8,0,0,0,8,0,0,0,,,,2010-11-11 08:00,2010-11-11 16:00,,2010-11-11 08:00,2010-11-11 16:00,2010-11-11 08:00,2010-11-11 16:00,2010-11-11 08:00,2010-11-11 16:00,,2010-11-11 08:00,2010-11-11 16:00,,PT_Normal,,,,,92PNIPSLVkSxkEYjldvMvw,ZsHqprKcXUiscCSCpoBzrA,,,Y,0,0,,,2010-08-08 11:54,2010-08-08 19:41,admin,admin,,,
733,89576,784,11648,841,1,0,N,N,N,CP_Drtn,TT_Task,DT_FixedDUR2,RV_OK,TK_NotStart,A17390,pouring for roof floor's slab,,0,0,8,0,0,0,8,0,0,0,,,,2010-12-01 08:00,2010-12-01 16:00,,2010-12-01 08:00,2010-12-01 16:00,2010-12-01 08:00,2010-12-01 16:00,2010-12-01 08:00,2010-12-01 16:00,,2010-12-01 08:00,2010-12-01 16:00,,PT_Normal,,,,,34q0vgQRckmmokNIqGnhNg,rPtdArb6EUOPJxmaQKLNsQ,,,Y,0,0,,,2010-08-08 11:54,2010-08-08 19:41,admin,admin,,,
734,89577,784,11648,841,1,0,N,N,N,CP_Drtn,TT_Task,DT_FixedDrtn,RV_OK,TK_NotStart,A17400,Fence work,,16,16,400,0,0,0,400,0,0,0,,,,2010-10-27 08:00,2010-12-28 16:00,,2010-10-25 08:00,2010-12-26 16:00,2010-10-25 08:00,2010-12-26 16:00,2010-10-25 08:00,2010-12-26 16:00,,2010-10-27 08:00,2010-12-28 16:00,,PT_Normal,,,,,8VXvSHBm/UuZq6wrPnxKqQ,2fR19rh50kOmzZGZdvBL+g,,,N,0,0,,,2010-08-08 11:54,2010-08-08 11:54,admin,admin,,,
735,89578,784,11645,841,1,0,N,N,N,CP_Drtn,TT_Task,DT_FixedDUR2,RV_OK,TK_NotStart,A17410,Fence Drawings IFC,,392,376,8,0,0,0,8,0,0,0,,,,2010-10-14 08:00,2010-10-14 16:00,,2010-08-18 08:00,2010-08-18 16:00,2010-08-18 08:00,2010-08-18 16:00,2010-08-18 08:00,2010-08-18 16:00,,2010-10-14 08:00,2010-10-14 16:00,,PT_Normal,,,,,EFldBjKiAkCG3As4SgQlaQ,BQd3Ly8KZk+X956Tg0zFaQ,,,N,0,0,,,2010-08-08 11:54,2010-08-08 11:54,admin,admin,,,
736,89579,784,11647,873,1,0,N,N,N,CP_Drtn,TT_Task,DT_FixedDUR2,RV_OK,TK_NotStart,A17420,backfilling between P.C Foundation,,0,0,16,0,0,0,16,0,0,0,,,,2010-09-16 08:00,2010-09-18 16:00,,2010-09-16 08:00,2010-09-18 16:00,2010-09-16 08:00,2010-09-18 16:00,2010-09-16 08:00,2010-09-18 16:00,,2010-09-16 08:00,2010-09-18 16:00,,PT_Normal,,,,,uvBb5akGHk6QfUcFetuthA,VTZuVjVjxkyNuj8a/FRcsw,,,Y,0,0,,,2010-08-08 11:54,2010-08-08 19:41,admin,admin,,,
737,89580,784,11648,873,1,0,N,N,N,CP_Drtn,TT_Task,DT_FixedDUR2,RV_OK,TK_NotStart,A17440,Brick works for 1st floor,,48,0,40,0,0,0,40,0,0,0,,,,2010-12-06 08:00,2010-12-11 16:00,,2010-11-29 08:00,2010-12-04 16:00,2010-11-29 08:00,2010-12-04 16:00,2010-11-29 08:00,2010-12-04 16:00,,2010-12-06 08:00,2010-12-11 16:00,,PT_Normal,,,,,2xr69ZkxS0OphjykoQIlXg,D/Sy0ieXUkiVlrhBs2NZsw,,,N,0,0,,,2010-08-08 11:54,2010-08-08 11:54,admin,admin,,,
738,89581,784,11648,873,1,0,N,N,N,CP_Drtn,TT_Task,DT_FixedDUR2,RV_OK,TK_NotStart,A17450,Brick works for roof floor,,0,0,40,0,0,0,40,0,0,0,,,,2010-12-12 08:00,2010-12-16 16:00,,2010-12-12 08:00,2010-12-16 16:00,2010-12-12 08:00,2010-12-16 16:00,2010-12-12 08:00,2010-12-16 16:00,,2010-12-12 08:00,2010-12-16 16:00,,PT_Normal,,,,,lNzBchya70OPWNP+h53dqQ,mE34MiVZME+CZtXRQwGhPQ,,,Y,0,0,,,2010-08-08 11:54,2010-08-08 19:41,admin,admin,,,
739,89582,784,11650,873,1,0,N,N,N,CP_Drtn,TT_Task,DT_FixedDUR2,RV_OK,TK_NotStart,A17460,Internal plastering for 1st floor,,48,24,64,0,0,0,64,0,0,0,,,,2010-12-14 08:00,2010-12-22 16:00,,2010-12-07 08:00,2010-12-15 16:00,2010-12-07 08:00,2010-12-15 16:00,2010-12-07 08:00,2010-12-15 16:00,,2010-12-14 08:00,2010-12-22 16:00,,PT_Normal,,,,,xBVzH7OwQEug4DpAIzJlgQ,kaC+W5T/Pk2Z/AfCp0RbRA,,,N,0,0,,,2010-08-08 11:54,2010-08-08 11:54,admin,admin,,,
740,89583,784,11650,873,1,0,N,N,N,CP_Drtn,TT_Task,DT_FixedDUR2,RV_OK,TK_NotStart,A17470,Internal plastering for roof floor,,24,24,40,0,0,0,40,0,0,0,,,,2010-12-23 08:00,2010-12-28 16:00,,2010-12-20 08:00,2010-12-25 16:00,2010-12-20 08:00,2010-12-25 16:00,2010-12-20 08:00,2010-12-25 16:00,,2010-12-23 08:00,2010-12-28 16:00,,PT_Normal,,,,,gW7Si7A6PU2E9tvpwXzEJw,o38elzh8YU6LPfnVtJFG/w,,,N,0,0,,,2010-08-08 11:54,2010-08-08 11:54,admin,admin,,,
741,89584,784,11649,873,1,0,N,N,N,CP_Drtn,TT_Task,DT_FixedDUR2,RV_OK,TK_NotStart,A17480,electrical conduits for ground floor walls,,64,0,16,0,0,0,16,0,0,0,,,,2010-12-02 08:00,2010-12-04 16:00,,2010-11-23 08:00,2010-11-24 16:00,2010-11-23 08:00,2010-11-24 16:00,2010-11-23 08:00,2010-11-24 16:00,,2010-12-02 08:00,2010-12-04 16:00,,PT_Normal,,,,,QXKGqhtVCE+7HwrJ0ElkvQ,tBbgXgRJEkuY4z9fJ+rreg,,,N,0,0,,,2010-08-08 11:54,2010-08-08 11:54,admin,admin,,,
742,89585,784,11649,873,1,0,N,N,N,CP_Drtn,TT_Task,DT_FixedDUR2,RV_OK,TK_NotStart,A17490,electrical conduits for 1st floor walls,,48,0,16,0,0,0,16,0,0,0,,,,2010-12-12 08:00,2010-12-13 16:00,,2010-12-05 08:00,2010-12-06 16:00,2010-12-05 08:00,2010-12-06 16:00,2010-12-05 08:00,2010-12-06 16:00,,2010-12-12 08:00,2010-12-13 16:00,,PT_Normal,,,,,PKH0DQtbvkKARVRhA9rNuQ,IT3ELc43kUKJj6rMYssaTw,,,N,0,0,,,2010-08-08 11:54,2010-08-08 11:54,admin,admin,,,
743,89586,784,11649,873,1,0,N,N,N,CP_Drtn,TT_Task,DT_FixedDUR2,RV_OK,TK_NotStart,A17500,electrical conduits for roof floor walls,,24,0,16,0,0,0,16,0,0,0,,,,2010-12-21 08:00,2010-12-22 16:00,,2010-12-18 08:00,2010-12-19 16:00,2010-12-18 08:00,2010-12-19 16:00,2010-12-18 08:00,2010-12-19 16:00,,2010-12-21 08:00,2010-12-22 16:00,,PT_Normal,,,,,K3oGb1RLRkKE9WkrdFba7Q,ddBSStXL9Uqvgr00vllvUA,,,N,0,0,,,2010-08-08 11:54,2010-08-08 11:54,admin,admin,,,
744,89587,784,11653,841,1,0,N,N,N,CP_Drtn,TT_Task,DT_FixedDUR2,RV_OK,TK_NotStart,A17510,excavation,,0,0,80,0,0,0,80,0,0,0,,,,2010-08-18 08:00,2010-08-29 16:00,,2010-08-18 08:00,2010-08-29 16:00,2010-08-18 08:00,2010-08-29 16:00,2010-08-18 08:00,2010-08-29 16:00,,2010-08-18 08:00,2010-08-29 16:00,,PT_Normal,,,,,kJR7adnhPUCql+bTQk9JWg,gObVAUc7vUGj2dRRel9WBg,,,Y,0,0,,,2010-08-08 11:54,2010-08-08 19:41,admin,admin,,,
745,89588,784,11653,841,1,0,N,N,N,CP_Drtn,TT_Task,DT_FixedDUR2,RV_OK,TK_NotStart,A17520,soil replacement,,0,0,96,0,0,0,96,0,0,0,,,,2010-08-30 08:00,2010-09-12 16:00,,2010-08-30 08:00,2010-09-12 16:00,2010-08-30 08:00,2010-09-12 16:00,2010-08-30 08:00,2010-09-12 16:00,,2010-08-30 08:00,2010-09-12 16:00,,PT_Normal,,,,,gHgXP2Utt0iQqSFkFsJb/g,2ZnNSzLuZEGzwX9aJmeN0g,,,Y,0,0,,,2010-08-08 11:54,2010-08-08 19:41,admin,admin,,,
746,89589,784,11654,841,1,0,N,N,N,CP_Drtn,TT_Task,DT_FixedDUR2,RV_OK,TK_NotStart,A17530,Plain Concrete Foundation,,0,0,16,0,0,0,16,0,0,0,,,,2010-09-13 08:00,2010-09-14 16:00,,2010-09-13 08:00,2010-09-14 16:00,2010-09-13 08:00,2010-09-14 16:00,2010-09-13 08:00,2010-09-14 16:00,,2010-09-13 08:00,2010-09-14 16:00,,PT_Normal,,,,,m2LideAUmEyTFeUBWhqQ2A,I32qIASIGESK5+zbSvwLeQ,,,Y,0,0,,,2010-08-08 11:54,2010-08-08 19:41,admin,admin,,,
747,89590,784,11654,841,1,0,N,N,N,CP_Drtn,TT_Task,DT_FixedDUR2,RV_OK,TK_NotStart,A17540,Reinforced Concrete Foundation,,0,0,56,0,0,0,56,0,0,0,,,,2010-09-19 08:00,2010-09-26 16:00,,2010-09-19 08:00,2010-09-26 16:00,2010-09-19 08:00,2010-09-26 16:00,2010-09-19 08:00,2010-09-26 16:00,,2010-09-19 08:00,2010-09-26 16:00,,PT_Normal,,,,,W+hEtedSik2DrU8o6X4wGw,6N6fEzy7AESsZBgaOn1H9w,,,Y,0,0,,,2010-08-08 11:54,2010-08-08 19:41,admin,admin,,,
748,89591,784,11654,841,1,0,N,N,N,CP_Drtn,TT_Task,DT_FixedDUR2,RV_OK,TK_NotStart,A17550,under ground  brick works,,0,0,16,0,0,0,16,0,0,0,,,,2010-10-04 08:00,2010-10-05 16:00,,2010-10-04 08:00,2010-10-05 16:00,2010-10-04 08:00,2010-10-05 16:00,2010-10-04 08:00,2010-10-05 16:00,,2010-10-04 08:00,2010-10-05 16:00,,PT_Normal,,,,,fuZ/mQu/Q0eGIKlXmTXlug,28ca+4yAiEeVDZTdhUBH2g,,,Y,0,0,,,2010-08-08 11:54,2010-08-08 19:41,admin,admin,,,
749,89592,784,11654,841,1,0,N,N,N,CP_Drtn,TT_Task,DT_FixedDUR2,RV_OK,TK_NotStart,A17560,under ground insulation for RC & Brick work,,0,0,16,0,0,0,16,0,0,0,,,,2010-10-06 08:00,2010-10-07 16:00,,2010-10-06 08:00,2010-10-07 16:00,2010-10-06 08:00,2010-10-07 16:00,2010-10-06 08:00,2010-10-07 16:00,,2010-10-06 08:00,2010-10-07 16:00,,PT_Normal,,,,,4HodwF5UZ0OUrgftE/H64g,QTdrhJkawUm8+xgn1tvnwA,,,Y,0,0,,,2010-08-08 11:54,2010-08-08 19:41,admin,admin,,,
750,89593,784,11654,841,1,0,N,N,N,CP_Drtn,TT_Task,DT_FixedDUR2,RV_OK,TK_NotStart,A17570,backfilling for under ground,,0,0,32,0,0,0,32,0,0,0,,,,2010-10-09 08:00,2010-10-12 16:00,,2010-10-09 08:00,2010-10-12 16:00,2010-10-09 08:00,2010-10-12 16:00,2010-10-09 08:00,2010-10-12 16:00,,2010-10-09 08:00,2010-10-12 16:00,,PT_Normal,,,,,5tSAtwzzMEO3swbVGvlw0w,bXXhdksOk02CWORrQjqPIQ,,,Y,0,0,,,2010-08-08 11:54,2010-08-08 19:41,admin,admin,,,
751,89594,784,11654,841,1,0,N,N,N,CP_Drtn,TT_Task,DT_FixedDUR2,RV_OK,TK_NotStart,A17580,P.C slab on grade 10CM,,64,0,8,0,0,0,8,0,0,0,,,,2010-11-25 08:00,2010-11-25 16:00,,2010-11-11 08:00,2010-11-11 16:00,2010-11-11 08:00,2010-11-11 16:00,2010-11-11 08:00,2010-11-11 16:00,,2010-11-25 08:00,2010-11-25 16:00,,PT_Normal,,,,,8eKA7rhvGUeR+bqLSkAu8Q,GMXu6mVxQEeCz3bxeJNn+A,,,N,0,0,,,2010-08-08 11:54,2010-08-08 11:54,admin,admin,,,
752,89595,784,11654,841,1,0,N,N,N,CP_Drtn,TT_Task,DT_FixedDUR2,RV_OK,TK_NotStart,A17590,moisture insulation with membrane sheets,,64,0,16,0,0,0,16,0,0,0,,,,2010-11-27 08:00,2010-11-28 16:00,,2010-11-13 08:00,2010-11-14 16:00,2010-11-13 08:00,2010-11-14 16:00,2010-11-13 08:00,2010-11-14 16:00,,2010-11-27 08:00,2010-11-28 16:00,,PT_Normal,,,,,upd3zwMTXES19D9sqWD/pQ,YRfZcO+82U2Io+AkGu7bhg,,,N,0,0,,,2010-08-08 11:54,2010-08-08 11:54,admin,admin,,,
753,89596,784,11654,841,1,0,N,N,N,CP_Drtn,TT_Task,DT_FixedDUR2,RV_OK,TK_NotStart,A17600,R.C slab on grade,,64,0,16,0,0,0,16,0,0,0,,,,2010-11-29 08:00,2010-11-30 16:00,,2010-11-20 08:00,2010-11-21 16:00,2010-11-20 08:00,2010-11-21 16:00,2010-11-20 08:00,2010-11-21 16:00,,2010-11-29 08:00,2010-11-30 16:00,,PT_Normal,,,,,i5MEBB5Vvk2XIl++8iQaOA,/TBdyh8QE0W4CBw2UjqSFw,,,N,0,0,,,2010-08-08 11:54,2010-08-08 11:54,admin,admin,,,
754,89597,784,11655,841,1,0,N,N,N,CP_Drtn,TT_Task,DT_FixedDUR2,RV_OK,TK_NotStart,A17610,columns for ground floor,,0,0,48,0,0,0,48,0,0,0,,,,2010-09-27 08:00,2010-10-03 16:00,,2010-09-27 08:00,2010-10-03 16:00,2010-09-27 08:00,2010-10-03 16:00,2010-09-27 08:00,2010-10-03 16:00,,2010-09-27 08:00,2010-10-03 16:00,,PT_Normal,,,,,rDA+0lHly0qRhC8ipvogaw,cgaG45tiWEi1iVBds9sGZA,,,Y,0,0,,,2010-08-08 11:54,2010-08-08 19:41,admin,admin,,,
755,89598,784,11655,841,1,0,N,N,N,CP_Drtn,TT_Task,DT_FixedDUR2,RV_OK,TK_NotStart,A17620,slab for ground floor,,0,0,72,0,0,0,72,0,0,0,,,,2010-10-13 08:00,2010-10-23 16:00,,2010-10-13 08:00,2010-10-23 16:00,2010-10-13 08:00,2010-10-23 16:00,2010-10-13 08:00,2010-10-23 16:00,,2010-10-13 08:00,2010-10-23 16:00,,PT_Normal,,,,,jMNADTYN50+8wQo68LNvYQ,ID4snHcqH0iY5FKJVa6w6w,,,Y,0,0,,,2010-08-08 11:54,2010-08-08 19:41,admin,admin,,,
756,89599,784,11655,841,1,0,N,N,N,CP_Drtn,TT_Task,DT_FixedDUR2,RV_OK,TK_NotStart,A17630,columns for 1st floor,,0,0,48,0,0,0,48,0,0,0,,,,2010-10-25 08:00,2010-10-31 16:00,,2010-10-25 08:00,2010-10-31 16:00,2010-10-25 08:00,2010-10-31 16:00,2010-10-25 08:00,2010-10-31 16:00,,2010-10-25 08:00,2010-10-31 16:00,,PT_Normal,,,,,j2+ZPfKMI0i+ZDk3ASjftQ,kycaiqTzgE6UMAIgQXKyWQ,,,Y,0,0,,,2010-08-08 11:54,2010-08-08 19:41,admin,admin,,,
757,89600,784,11655,841,1,0,N,N,N,CP_Drtn,TT_Task,DT_FixedDUR2,RV_OK,TK_NotStart,A17640,slab for 1st floor,,0,0,72,0,0,0,72,0,0,0,,,,2010-11-01 08:00,2010-11-10 16:00,,2010-11-01 08:00,2010-11-10 16:00,2010-11-01 08:00,2010-11-10 16:00,2010-11-01 08:00,2010-11-10 16:00,,2010-11-01 08:00,2010-11-10 16:00,,PT_Normal,,,,,Y6/O56qzy0mEyXnEkzQURw,5AUcy5NUnE+z7gt3jGpWcg,,,Y,0,0,,,2010-08-08 11:54,2010-08-08 19:41,admin,admin,,,
758,89601,784,11655,841,1,0,N,N,N,CP_Drtn,TT_Task,DT_FixedDUR2,RV_OK,TK_NotStart,A17650,columns for roof floor,,0,0,32,0,0,0,32,0,0,0,,,,2010-11-20 08:00,2010-11-23 16:00,,2010-11-20 08:00,2010-11-23 16:00,2010-11-20 08:00,2010-11-23 16:00,2010-11-20 08:00,2010-11-23 16:00,,2010-11-20 08:00,2010-11-23 16:00,,PT_Normal,,,,,BQqDUCNGd0OVzZiBsUEeAA,oLbwppsnREq11mDJv5G5rA,,,Y,0,0,,,2010-08-08 11:54,2010-08-08 19:41,admin,admin,,,
759,89602,784,11655,841,1,0,N,N,N,CP_Drtn,TT_Task,DT_FixedDUR2,RV_OK,TK_NotStart,A17660,slab for roof floor,,0,0,48,0,0,0,48,0,0,0,,,,2010-11-24 08:00,2010-11-30 16:00,,2010-11-24 08:00,2010-11-30 16:00,2010-11-24 08:00,2010-11-30 16:00,2010-11-24 08:00,2010-11-30 16:00,,2010-11-24 08:00,2010-11-30 16:00,,PT_Normal,,,,,50PrgQvyXEOVHq6FeLlJkw,crTbcp1J7U6ZmzujSiHEqg,,,Y,0,0,,,2010-08-08 11:54,2010-08-08 19:41,admin,admin,,,
760,89603,784,11655,841,1,0,N,N,N,CP_Drtn,TT_Task,DT_FixedDUR2,RV_OK,TK_NotStart,A17670,Brick works for ground floor,,64,0,40,0,0,0,40,0,0,0,,,,2010-11-20 08:00,2010-11-24 16:00,,2010-11-06 08:00,2010-11-10 16:00,2010-11-06 08:00,2010-11-10 16:00,2010-11-06 08:00,2010-11-10 16:00,,2010-11-20 08:00,2010-11-24 16:00,,PT_Normal,,,,,RTbvuYHrMEKYrQG7d9TaTw,NXIXs1EEAE+M3ddobo1e9g,,,N,0,0,,,2010-08-08 11:54,2010-08-08 11:54,admin,admin,,,
761,89604,784,11656,841,1,0,N,N,N,CP_Drtn,TT_Task,DT_FixedDrtn,RV_OK,TK_NotStart,A17680,electrical conduits for ground floor's slab,,8,8,16,0,0,0,16,0,0,0,,,,2010-10-19 08:00,2010-10-20 16:00,,2010-10-18 08:00,2010-10-19 16:00,2010-10-18 08:00,2010-10-19 16:00,2010-10-18 08:00,2010-10-19 16:00,,2010-10-19 08:00,2010-10-20 16:00,,PT_Normal,,,,,XFxZMkOR5EqPwd4w+ViGcg,iQpi5WuMKkywP9+enbBfIA,,,N,0,0,,,2010-08-08 11:54,2010-08-08 11:54,admin,admin,,,
762,89605,784,11656,841,1,0,N,N,N,CP_Drtn,TT_Task,DT_FixedDrtn,RV_OK,TK_NotStart,A17690,electrical conduits for 1st floor slab,,8,8,16,0,0,0,16,0,0,0,,,,2010-11-07 08:00,2010-11-08 16:00,,2010-11-06 08:00,2010-11-07 16:00,2010-11-06 08:00,2010-11-07 16:00,2010-11-06 08:00,2010-11-07 16:00,,2010-11-07 08:00,2010-11-08 16:00,,PT_Normal,,,,,DHBCz3OOhk679zJ/Kd6JxA,b+Se6N+iSkuihWpcqCWf9Q,,,N,0,0,,,2010-08-08 11:54,2010-08-08 11:54,admin,admin,,,
763,89606,784,11656,841,1,0,N,N,N,CP_Drtn,TT_Task,DT_FixedDrtn,RV_OK,TK_NotStart,A17700,electrical conduits for roof slab,,8,8,8,0,0,0,8,0,0,0,,,,2010-11-29 08:00,2010-11-29 16:00,,2010-11-28 08:00,2010-11-28 16:00,2010-11-28 08:00,2010-11-28 16:00,2010-11-28 08:00,2010-11-28 16:00,,2010-11-29 08:00,2010-11-29 16:00,,PT_Normal,,,,,vRb9eOk+40y2jhdzDPVY4A,gx0d94oujE+HnzyjesW13Q,,,N,0,0,,,2010-08-08 11:54,2010-08-08 11:54,admin,admin,,,
764,89607,784,11657,841,1,0,N,N,N,CP_Drtn,TT_Task,DT_FixedDUR2,RV_OK,TK_NotStart,A17710,Internal plastering for ground floor,,64,16,64,0,0,0,64,0,0,0,,,,2010-12-05 08:00,2010-12-13 16:00,,2010-11-25 08:00,2010-12-04 16:00,2010-11-25 08:00,2010-12-04 16:00,2010-11-25 08:00,2010-12-04 16:00,,2010-12-05 08:00,2010-12-13 16:00,,PT_Normal,,,,,ap3nwxqt1k6nVhqzKeULig,fcl+mPaXA0WnAXc7iT0Mfg,,,N,0,0,,,2010-08-08 11:54,2010-08-08 11:54,admin,admin,,,
765,89608,784,11657,841,1,0,N,N,N,CP_Drtn,TT_Task,DT_FixedDUR2,RV_OK,TK_NotStart,A17720,External plastering,,0,0,80,0,0,0,80,0,0,0,,,,2010-12-18 08:00,2010-12-28 16:00,,2010-12-18 08:00,2010-12-28 16:00,2010-12-18 08:00,2010-12-28 16:00,2010-12-18 08:00,2010-12-28 16:00,,2010-12-18 08:00,2010-12-28 16:00,,PT_Normal,,,,,Jzu7vE92iESdN2qLyjaawg,NGQLzeHobE+PX9AdaixYqA,,,Y,0,0,,,2010-08-08 11:54,2010-08-08 19:41,admin,admin,,,
766,89609,784,11656,841,1,0,N,N,N,CP_Drtn,TT_Task,DT_FixedDrtn,RV_OK,TK_NotStart,A17730,plumbing connections under slab on grade,,248,184,16,0,0,0,16,0,0,0,,,,2010-11-23 08:00,2010-11-24 16:00,,2010-10-13 08:00,2010-10-14 16:00,2010-10-13 08:00,2010-10-14 16:00,2010-10-13 08:00,2010-10-14 16:00,,2010-11-23 08:00,2010-11-24 16:00,,PT_Normal,,,,,uGWkNIqUp0+3VDfN8VW1Cw,FKHZto0v4Uqot5+BY5Leew,,,N,0,0,,,2010-08-08 11:54,2010-08-08 11:54,admin,admin,,,
767,89610,784,11652,841,0,0,N,N,N,CP_Drtn,TT_Mile,DT_FixedDrtn,RV_OK,TK_NotStart,A17740,Start Villa construction,,0,0,0,0,0,0,0,0,0,0,,,,2010-08-18 08:00,2010-08-18 08:00,,2010-08-18 08:00,2010-08-18 08:00,2010-08-18 08:00,2010-08-18 08:00,2010-08-18 08:00,2010-08-18 08:00,,2010-08-18 08:00,2010-08-18 08:00,,PT_Normal,,,,,PyOEbFsv7k6Gy6DPgY2mIA,mezuNliU3Eat2RDNeNznCA,,,Y,0,0,,,2010-08-08 11:54,2010-08-08 19:41,admin,admin,,,
768,89611,784,11652,841,0,0,N,N,N,CP_Drtn,TT_FinMile,DT_FixedDrtn,RV_OK,TK_NotStart,A17750,finish Villa construction,,0,0,0,0,0,0,0,0,0,0,,,,2010-12-28 16:00,2010-12-28 16:00,,2010-12-28 16:00,2010-12-28 16:00,2010-12-28 16:00,2010-12-28 16:00,2010-12-28 16:00,2010-12-28 16:00,,2010-12-28 16:00,2010-12-28 16:00,,PT_Normal,,,,,KcaNRWDK3Uq52ePx0AdOjw,0ZM1sCb2WUCtAQq5DrmESw,,,Y,0,0,,,2010-08-08 11:54,2010-08-08 19:41,admin,admin,,,
769,89612,784,11652,841,0,0,N,N,N,CP_Drtn,TT_Mile,DT_FixedDrtn,RV_OK,TK_NotStart,A17760,IFC drawings,,0,0,0,0,0,0,0,0,0,0,,,,2010-06-21 08:00,2010-06-21 08:00,,2010-06-21 08:00,2010-06-21 08:00,2010-06-21 08:00,2010-06-21 08:00,2010-06-21 08:00,2010-06-21 08:00,,2010-06-21 08:00,2010-06-21 08:00,,PT_Normal,,,,,DlcQ3HPbd0uqWqlUc03u6w,3k/Qhh2ZeU+RAqxQ8fvU+A,,,Y,0,0,,,2010-08-08 11:54,2010-08-08 19:41,admin,admin,,,
770,89613,784,11655,841,1,0,N,N,N,CP_Drtn,TT_Task,DT_FixedDUR2,RV_OK,TK_NotStart,A17770,pouring for ground floor's slab,,0,0,8,0,0,0,8,0,0,0,,,,2010-10-24 08:00,2010-10-24 16:00,,2010-10-24 08:00,2010-10-24 16:00,2010-10-24 08:00,2010-10-24 16:00,2010-10-24 08:00,2010-10-24 16:00,,2010-10-24 08:00,2010-10-24 16:00,,PT_Normal,,,,,y7oLl7GAC0irqF1bfDW6Pw,kXmcYva8iUSrolrqduKQHg,,,Y,0,0,,,2010-08-08 11:54,2010-08-08 19:41,admin,admin,,,
771,89614,784,11655,841,1,0,N,N,N,CP_Drtn,TT_Task,DT_FixedDUR2,RV_OK,TK_NotStart,A17780,pouring for 1st floor's slab,,0,0,8,0,0,0,8,0,0,0,,,,2010-11-11 08:00,2010-11-11 16:00,,2010-11-11 08:00,2010-11-11 16:00,2010-11-11 08:00,2010-11-11 16:00,2010-11-11 08:00,2010-11-11 16:00,,2010-11-11 08:00,2010-11-11 16:00,,PT_Normal,,,,,/tuEDaskCEW1b/W5NtGIBQ,vPG01kzchUSIjjTQRgTcMg,,,Y,0,0,,,2010-08-08 11:54,2010-08-08 19:41,admin,admin,,,
772,89615,784,11655,841,1,0,N,N,N,CP_Drtn,TT_Task,DT_FixedDUR2,RV_OK,TK_NotStart,A17790,pouring for roof floor's slab,,0,0,8,0,0,0,8,0,0,0,,,,2010-12-01 08:00,2010-12-01 16:00,,2010-12-01 08:00,2010-12-01 16:00,2010-12-01 08:00,2010-12-01 16:00,2010-12-01 08:00,2010-12-01 16:00,,2010-12-01 08:00,2010-12-01 16:00,,PT_Normal,,,,,UrKG0KYnbkiZ1VfsOZa+fQ,MKbes0zSEka6slxb0pKbgQ,,,Y,0,0,,,2010-08-08 11:54,2010-08-08 19:41,admin,admin,,,
773,89616,784,11655,841,1,0,N,N,N,CP_Drtn,TT_Task,DT_FixedDrtn,RV_OK,TK_NotStart,A17800,Fence work,,16,16,400,0,0,0,400,0,0,0,,,,2010-10-27 08:00,2010-12-28 16:00,,2010-10-25 08:00,2010-12-26 16:00,2010-10-25 08:00,2010-12-26 16:00,2010-10-25 08:00,2010-12-26 16:00,,2010-10-27 08:00,2010-12-28 16:00,,PT_Normal,,,,,wZ2SC2EAj06N2z7tpQFq/g,LsLgDx49RkuwQ6LoyHFWYA,,,N,0,0,,,2010-08-08 11:54,2010-08-08 11:54,admin,admin,,,
774,89617,784,11652,841,1,0,N,N,N,CP_Drtn,TT_Task,DT_FixedDUR2,RV_OK,TK_NotStart,A17810,Fence Drawings IFC,,392,376,8,0,0,0,8,0,0,0,,,,2010-10-14 08:00,2010-10-14 16:00,,2010-08-18 08:00,2010-08-18 16:00,2010-08-18 08:00,2010-08-18 16:00,2010-08-18 08:00,2010-08-18 16:00,,2010-10-14 08:00,2010-10-14 16:00,,PT_Normal,,,,,nJI/U385qU+eHgEimRCMag,yNCTnQceC0205r7m19mxOQ,,,N,0,0,,,2010-08-08 11:54,2010-08-08 11:54,admin,admin,,,
775,89618,784,11654,873,1,0,N,N,N,CP_Drtn,TT_Task,DT_FixedDUR2,RV_OK,TK_NotStart,A17820,backfilling between P.C Foundation,,0,0,16,0,0,0,16,0,0,0,,,,2010-09-16 08:00,2010-09-18 16:00,,2010-09-16 08:00,2010-09-18 16:00,2010-09-16 08:00,2010-09-18 16:00,2010-09-16 08:00,2010-09-18 16:00,,2010-09-16 08:00,2010-09-18 16:00,,PT_Normal,,,,,sip2yLBH/ESMQK66dfyXrA,7nLsu61eC0q3cJnFDtsZuA,,,Y,0,0,,,2010-08-08 11:54,2010-08-08 19:41,admin,admin,,,
776,89619,784,11655,873,1,0,N,N,N,CP_Drtn,TT_Task,DT_FixedDUR2,RV_OK,TK_NotStart,A17840,Brick works for 1st floor,,48,0,40,0,0,0,40,0,0,0,,,,2010-12-06 08:00,2010-12-11 16:00,,2010-11-29 08:00,2010-12-04 16:00,2010-11-29 08:00,2010-12-04 16:00,2010-11-29 08:00,2010-12-04 16:00,,2010-12-06 08:00,2010-12-11 16:00,,PT_Normal,,,,,KWATI4aiVkWfZzsqB2fyaQ,jy52tFQy1UaVIL6AjQ3Imw,,,N,0,0,,,2010-08-08 11:54,2010-08-08 11:54,admin,admin,,,
777,89620,784,11655,873,1,0,N,N,N,CP_Drtn,TT_Task,DT_FixedDUR2,RV_OK,TK_NotStart,A17850,Brick works for roof floor,,0,0,40,0,0,0,40,0,0,0,,,,2010-12-12 08:00,2010-12-16 16:00,,2010-12-12 08:00,2010-12-16 16:00,2010-12-12 08:00,2010-12-16 16:00,2010-12-12 08:00,2010-12-16 16:00,,2010-12-12 08:00,2010-12-16 16:00,,PT_Normal,,,,,6hz/t5nceEOdi93plmYJGA,g+1r7tk/Z0CCjFVK63kV9A,,,Y,0,0,,,2010-08-08 11:54,2010-08-08 19:41,admin,admin,,,
778,89621,784,11657,873,1,0,N,N,N,CP_Drtn,TT_Task,DT_FixedDUR2,RV_OK,TK_NotStart,A17860,Internal plastering for 1st floor,,48,24,64,0,0,0,64,0,0,0,,,,2010-12-14 08:00,2010-12-22 16:00,,2010-12-07 08:00,2010-12-15 16:00,2010-12-07 08:00,2010-12-15 16:00,2010-12-07 08:00,2010-12-15 16:00,,2010-12-14 08:00,2010-12-22 16:00,,PT_Normal,,,,,1DGoP4LR50i+rJFJar0Jfw,HdVibnPj+U6ie49FKsBFGQ,,,N,0,0,,,2010-08-08 11:54,2010-08-08 11:54,admin,admin,,,
779,89622,784,11657,873,1,0,N,N,N,CP_Drtn,TT_Task,DT_FixedDUR2,RV_OK,TK_NotStart,A17870,Internal plastering for roof floor,,24,24,40,0,0,0,40,0,0,0,,,,2010-12-23 08:00,2010-12-28 16:00,,2010-12-20 08:00,2010-12-25 16:00,2010-12-20 08:00,2010-12-25 16:00,2010-12-20 08:00,2010-12-25 16:00,,2010-12-23 08:00,2010-12-28 16:00,,PT_Normal,,,,,QHpmuRP35kyRbGH9ZerAyw,2dxyuSzIpEGnZYq73CC7Bg,,,N,0,0,,,2010-08-08 11:54,2010-08-08 11:54,admin,admin,,,
780,89623,784,11656,873,1,0,N,N,N,CP_Drtn,TT_Task,DT_FixedDUR2,RV_OK,TK_NotStart,A17880,electrical conduits for ground floor walls,,64,0,16,0,0,0,16,0,0,0,,,,2010-12-02 08:00,2010-12-04 16:00,,2010-11-23 08:00,2010-11-24 16:00,2010-11-23 08:00,2010-11-24 16:00,2010-11-23 08:00,2010-11-24 16:00,,2010-12-02 08:00,2010-12-04 16:00,,PT_Normal,,,,,WdbpDeICukuzWAPKm6S+Mw,gv6DaogXwU6HKgFk8uy0lA,,,N,0,0,,,2010-08-08 11:54,2010-08-08 11:54,admin,admin,,,
781,89624,784,11656,873,1,0,N,N,N,CP_Drtn,TT_Task,DT_FixedDUR2,RV_OK,TK_NotStart,A17890,electrical conduits for 1st floor walls,,48,0,16,0,0,0,16,0,0,0,,,,2010-12-12 08:00,2010-12-13 16:00,,2010-12-05 08:00,2010-12-06 16:00,2010-12-05 08:00,2010-12-06 16:00,2010-12-05 08:00,2010-12-06 16:00,,2010-12-12 08:00,2010-12-13 16:00,,PT_Normal,,,,,HGfkgkPo40aJzYsscGKFjQ,xAZS6rW5wUC31p3FbQe0Uw,,,N,0,0,,,2010-08-08 11:54,2010-08-08 11:54,admin,admin,,,
782,89625,784,11656,873,1,0,N,N,N,CP_Drtn,TT_Task,DT_FixedDUR2,RV_OK,TK_NotStart,A17900,electrical conduits for roof floor walls,,24,0,16,0,0,0,16,0,0,0,,,,2010-12-21 08:00,2010-12-22 16:00,,2010-12-18 08:00,2010-12-19 16:00,2010-12-18 08:00,2010-12-19 16:00,2010-12-18 08:00,2010-12-19 16:00,,2010-12-21 08:00,2010-12-22 16:00,,PT_Normal,,,,,40JaYgNtdE2FbP0jeQPz4Q,IJlAeW1XTEWjB7TQkBMxaA,,,N,0,0,,,2010-08-08 11:54,2010-08-08 11:54,admin,admin,,,
783,89626,784,11660,841,1,0,N,N,N,CP_Drtn,TT_Task,DT_FixedDUR2,RV_OK,TK_NotStart,A17910,excavation,,0,0,80,0,0,0,80,0,0,0,,,,2010-08-18 08:00,2010-08-29 16:00,,2010-08-18 08:00,2010-08-29 16:00,2010-08-18 08:00,2010-08-29 16:00,2010-08-18 08:00,2010-08-29 16:00,,2010-08-18 08:00,2010-08-29 16:00,,PT_Normal,,,,,qNPrrNx5v0yS+Z/EsGgwfQ,GtZwNOoOpk+a+2DLeVzYEQ,,,Y,0,0,,,2010-08-08 11:54,2010-08-08 19:41,admin,admin,,,
784,89627,784,11660,841,1,0,N,N,N,CP_Drtn,TT_Task,DT_FixedDUR2,RV_OK,TK_NotStart,A17920,soil replacement,,0,0,96,0,0,0,96,0,0,0,,,,2010-08-30 08:00,2010-09-12 16:00,,2010-08-30 08:00,2010-09-12 16:00,2010-08-30 08:00,2010-09-12 16:00,2010-08-30 08:00,2010-09-12 16:00,,2010-08-30 08:00,2010-09-12 16:00,,PT_Normal,,,,,EIbtdaLnEU2wcMY/l5e+CQ,+ViCExrJ8EGc51hyIkwZtQ,,,Y,0,0,,,2010-08-08 11:54,2010-08-08 19:41,admin,admin,,,
785,89628,784,11661,841,1,0,N,N,N,CP_Drtn,TT_Task,DT_FixedDUR2,RV_OK,TK_NotStart,A17930,Plain Concrete Foundation,,0,0,16,0,0,0,16,0,0,0,,,,2010-09-13 08:00,2010-09-14 16:00,,2010-09-13 08:00,2010-09-14 16:00,2010-09-13 08:00,2010-09-14 16:00,2010-09-13 08:00,2010-09-14 16:00,,2010-09-13 08:00,2010-09-14 16:00,,PT_Normal,,,,,+xAlMeaFTk2rqLALyblN4Q,RbbSDZ7gv0qGgbRaSHoUIA,,,Y,0,0,,,2010-08-08 11:54,2010-08-08 19:41,admin,admin,,,
786,89629,784,11661,841,1,0,N,N,N,CP_Drtn,TT_Task,DT_FixedDUR2,RV_OK,TK_NotStart,A17940,Reinforced Concrete Foundation,,0,0,56,0,0,0,56,0,0,0,,,,2010-09-19 08:00,2010-09-26 16:00,,2010-09-19 08:00,2010-09-26 16:00,2010-09-19 08:00,2010-09-26 16:00,2010-09-19 08:00,2010-09-26 16:00,,2010-09-19 08:00,2010-09-26 16:00,,PT_Normal,,,,,I8u4gWu/pUqG8AtWlxnl6Q,CB6/VPcJykeN1hj7k0yNWA,,,Y,0,0,,,2010-08-08 11:54,2010-08-08 19:41,admin,admin,,,
787,89630,784,11661,841,1,0,N,N,N,CP_Drtn,TT_Task,DT_FixedDUR2,RV_OK,TK_NotStart,A17950,under ground  brick works,,0,0,16,0,0,0,16,0,0,0,,,,2010-10-04 08:00,2010-10-05 16:00,,2010-10-04 08:00,2010-10-05 16:00,2010-10-04 08:00,2010-10-05 16:00,2010-10-04 08:00,2010-10-05 16:00,,2010-10-04 08:00,2010-10-05 16:00,,PT_Normal,,,,,+byDLGH6nUyCZavyktfE6g,pp2c068T+UKoR11oHfmp7Q,,,Y,0,0,,,2010-08-08 11:54,2010-08-08 19:41,admin,admin,,,
788,89631,784,11661,841,1,0,N,N,N,CP_Drtn,TT_Task,DT_FixedDUR2,RV_OK,TK_NotStart,A17960,under ground insulation for RC & Brick work,,0,0,16,0,0,0,16,0,0,0,,,,2010-10-06 08:00,2010-10-07 16:00,,2010-10-06 08:00,2010-10-07 16:00,2010-10-06 08:00,2010-10-07 16:00,2010-10-06 08:00,2010-10-07 16:00,,2010-10-06 08:00,2010-10-07 16:00,,PT_Normal,,,,,nKKsEUoOgkOrkSWf7M7Naw,/xSGXzUcoUO35UHOpJInBw,,,Y,0,0,,,2010-08-08 11:54,2010-08-08 19:41,admin,admin,,,
789,89632,784,11661,841,1,0,N,N,N,CP_Drtn,TT_Task,DT_FixedDUR2,RV_OK,TK_NotStart,A17970,backfilling for under ground,,0,0,32,0,0,0,32,0,0,0,,,,2010-10-09 08:00,2010-10-12 16:00,,2010-10-09 08:00,2010-10-12 16:00,2010-10-09 08:00,2010-10-12 16:00,2010-10-09 08:00,2010-10-12 16:00,,2010-10-09 08:00,2010-10-12 16:00,,PT_Normal,,,,,qswo7sZCzEOUDeIY2qdjxQ,dj9K7gSOXU+VyFf1YqRkKQ,,,Y,0,0,,,2010-08-08 11:54,2010-08-08 19:41,admin,admin,,,
790,89633,784,11661,841,1,0,N,N,N,CP_Drtn,TT_Task,DT_FixedDUR2,RV_OK,TK_NotStart,A17980,P.C slab on grade 10CM,,64,0,8,0,0,0,8,0,0,0,,,,2010-11-25 08:00,2010-11-25 16:00,,2010-11-11 08:00,2010-11-11 16:00,2010-11-11 08:00,2010-11-11 16:00,2010-11-11 08:00,2010-11-11 16:00,,2010-11-25 08:00,2010-11-25 16:00,,PT_Normal,,,,,5lyHIwv2JkSYfJ/7mHc9gg,AL9/Yeu05kCkWptRjzbdrg,,,N,0,0,,,2010-08-08 11:54,2010-08-08 11:54,admin,admin,,,
791,89634,784,11661,841,1,0,N,N,N,CP_Drtn,TT_Task,DT_FixedDUR2,RV_OK,TK_NotStart,A17990,moisture insulation with membrane sheets,,64,0,16,0,0,0,16,0,0,0,,,,2010-11-27 08:00,2010-11-28 16:00,,2010-11-13 08:00,2010-11-14 16:00,2010-11-13 08:00,2010-11-14 16:00,2010-11-13 08:00,2010-11-14 16:00,,2010-11-27 08:00,2010-11-28 16:00,,PT_Normal,,,,,zDL4Y+5FdkiKouWwMEzKcA,5O0DF6vhLUCIch28LgOsDw,,,N,0,0,,,2010-08-08 11:54,2010-08-08 11:54,admin,admin,,,
792,89635,784,11661,841,1,0,N,N,N,CP_Drtn,TT_Task,DT_FixedDUR2,RV_OK,TK_NotStart,A18000,R.C slab on grade,,64,0,16,0,0,0,16,0,0,0,,,,2010-11-29 08:00,2010-11-30 16:00,,2010-11-20 08:00,2010-11-21 16:00,2010-11-20 08:00,2010-11-21 16:00,2010-11-20 08:00,2010-11-21 16:00,,2010-11-29 08:00,2010-11-30 16:00,,PT_Normal,,,,,TM6Q5ywgb0Ke+WN5YJFLPw,98CaGxKyrECtGkuWaFn2gg,,,N,0,0,,,2010-08-08 11:54,2010-08-08 11:54,admin,admin,,,
793,89636,784,11662,841,1,0,N,N,N,CP_Drtn,TT_Task,DT_FixedDUR2,RV_OK,TK_NotStart,A18010,columns for ground floor,,0,0,48,0,0,0,48,0,0,0,,,,2010-09-27 08:00,2010-10-03 16:00,,2010-09-27 08:00,2010-10-03 16:00,2010-09-27 08:00,2010-10-03 16:00,2010-09-27 08:00,2010-10-03 16:00,,2010-09-27 08:00,2010-10-03 16:00,,PT_Normal,,,,,gw6VdY4lmEm649XWJU4bGA,qMZDbf3ExkaHLj7eyNIOEw,,,Y,0,0,,,2010-08-08 11:54,2010-08-08 19:41,admin,admin,,,
794,89637,784,11662,841,1,0,N,N,N,CP_Drtn,TT_Task,DT_FixedDUR2,RV_OK,TK_NotStart,A18020,slab for ground floor,,0,0,72,0,0,0,72,0,0,0,,,,2010-10-13 08:00,2010-10-23 16:00,,2010-10-13 08:00,2010-10-23 16:00,2010-10-13 08:00,2010-10-23 16:00,2010-10-13 08:00,2010-10-23 16:00,,2010-10-13 08:00,2010-10-23 16:00,,PT_Normal,,,,,b4PEzeiinE63CWLJ1hjiSQ,sCRhH1u6+kCve0qINaLcpA,,,Y,0,0,,,2010-08-08 11:54,2010-08-08 19:41,admin,admin,,,
795,89638,784,11662,841,1,0,N,N,N,CP_Drtn,TT_Task,DT_FixedDUR2,RV_OK,TK_NotStart,A18030,columns for 1st floor,,0,0,48,0,0,0,48,0,0,0,,,,2010-10-25 08:00,2010-10-31 16:00,,2010-10-25 08:00,2010-10-31 16:00,2010-10-25 08:00,2010-10-31 16:00,2010-10-25 08:00,2010-10-31 16:00,,2010-10-25 08:00,2010-10-31 16:00,,PT_Normal,,,,,6e+dQ1qt3kCyrA6X5Fl48g,4rN1vOKMTki778DxDRngnA,,,Y,0,0,,,2010-08-08 11:54,2010-08-08 19:41,admin,admin,,,
796,89639,784,11662,841,1,0,N,N,N,CP_Drtn,TT_Task,DT_FixedDUR2,RV_OK,TK_NotStart,A18040,slab for 1st floor,,0,0,72,0,0,0,72,0,0,0,,,,2010-11-01 08:00,2010-11-10 16:00,,2010-11-01 08:00,2010-11-10 16:00,2010-11-01 08:00,2010-11-10 16:00,2010-11-01 08:00,2010-11-10 16:00,,2010-11-01 08:00,2010-11-10 16:00,,PT_Normal,,,,,hBpn0ZyYYUuaOFOueymK1g,fxoipnaaVkCPYGoMy+tx6Q,,,Y,0,0,,,2010-08-08 11:54,2010-08-08 19:41,admin,admin,,,
797,89640,784,11662,841,1,0,N,N,N,CP_Drtn,TT_Task,DT_FixedDUR2,RV_OK,TK_NotStart,A18050,columns for roof floor,,0,0,32,0,0,0,32,0,0,0,,,,2010-11-20 08:00,2010-11-23 16:00,,2010-11-20 08:00,2010-11-23 16:00,2010-11-20 08:00,2010-11-23 16:00,2010-11-20 08:00,2010-11-23 16:00,,2010-11-20 08:00,2010-11-23 16:00,,PT_Normal,,,,,OPjVHgHXbUWaWfgWGHEUFg,KoSSqk2p5k+6Fmqmp3XtJQ,,,Y,0,0,,,2010-08-08 11:54,2010-08-08 19:41,admin,admin,,,
798,89641,784,11662,841,1,0,N,N,N,CP_Drtn,TT_Task,DT_FixedDUR2,RV_OK,TK_NotStart,A18060,slab for roof floor,,0,0,48,0,0,0,48,0,0,0,,,,2010-11-24 08:00,2010-11-30 16:00,,2010-11-24 08:00,2010-11-30 16:00,2010-11-24 08:00,2010-11-30 16:00,2010-11-24 08:00,2010-11-30 16:00,,2010-11-24 08:00,2010-11-30 16:00,,PT_Normal,,,,,HlEGKpvD50m8xHFB0cwX/Q,8E4EmOkmL0KzUR/BoWFoOA,,,Y,0,0,,,2010-08-08 11:54,2010-08-08 19:41,admin,admin,,,
799,89642,784,11662,841,1,0,N,N,N,CP_Drtn,TT_Task,DT_FixedDUR2,RV_OK,TK_NotStart,A18070,Brick works for ground floor,,64,0,40,0,0,0,40,0,0,0,,,,2010-11-20 08:00,2010-11-24 16:00,,2010-11-06 08:00,2010-11-10 16:00,2010-11-06 08:00,2010-11-10 16:00,2010-11-06 08:00,2010-11-10 16:00,,2010-11-20 08:00,2010-11-24 16:00,,PT_Normal,,,,,ls6fS64UmESb3FCP8nZlvQ,MpumRqxu7kalYEf0KIY9ag,,,N,0,0,,,2010-08-08 11:54,2010-08-08 11:54,admin,admin,,,
800,89643,784,11663,841,1,0,N,N,N,CP_Drtn,TT_Task,DT_FixedDrtn,RV_OK,TK_NotStart,A18080,electrical conduits for ground floor's slab,,8,8,16,0,0,0,16,0,0,0,,,,2010-10-19 08:00,2010-10-20 16:00,,2010-10-18 08:00,2010-10-19 16:00,2010-10-18 08:00,2010-10-19 16:00,2010-10-18 08:00,2010-10-19 16:00,,2010-10-19 08:00,2010-10-20 16:00,,PT_Normal,,,,,4RsK0fBYrEStKbBvV9UcSw,XbOCWH5Rvk+DQ/77sTRQ1A,,,N,0,0,,,2010-08-08 11:54,2010-08-08 11:54,admin,admin,,,
801,89644,784,11663,841,1,0,N,N,N,CP_Drtn,TT_Task,DT_FixedDrtn,RV_OK,TK_NotStart,A18090,electrical conduits for 1st floor slab,,8,8,16,0,0,0,16,0,0,0,,,,2010-11-07 08:00,2010-11-08 16:00,,2010-11-06 08:00,2010-11-07 16:00,2010-11-06 08:00,2010-11-07 16:00,2010-11-06 08:00,2010-11-07 16:00,,2010-11-07 08:00,2010-11-08 16:00,,PT_Normal,,,,,dNCc76Tm+kGowKqOp//JJQ,UxLmYhx4sUKMnuCDS1e7Bw,,,N,0,0,,,2010-08-08 11:54,2010-08-08 11:54,admin,admin,,,
802,89645,784,11663,841,1,0,N,N,N,CP_Drtn,TT_Task,DT_FixedDrtn,RV_OK,TK_NotStart,A18100,electrical conduits for roof slab,,8,8,8,0,0,0,8,0,0,0,,,,2010-11-29 08:00,2010-11-29 16:00,,2010-11-28 08:00,2010-11-28 16:00,2010-11-28 08:00,2010-11-28 16:00,2010-11-28 08:00,2010-11-28 16:00,,2010-11-29 08:00,2010-11-29 16:00,,PT_Normal,,,,,7KArcxCnz0a8m0H+VMKpQg,1EE1HC4acka9wz7Kh4h+Fg,,,N,0,0,,,2010-08-08 11:54,2010-08-08 11:54,admin,admin,,,
803,89646,784,11664,841,1,0,N,N,N,CP_Drtn,TT_Task,DT_FixedDUR2,RV_OK,TK_NotStart,A18110,Internal plastering for ground floor,,64,16,64,0,0,0,64,0,0,0,,,,2010-12-05 08:00,2010-12-13 16:00,,2010-11-25 08:00,2010-12-04 16:00,2010-11-25 08:00,2010-12-04 16:00,2010-11-25 08:00,2010-12-04 16:00,,2010-12-05 08:00,2010-12-13 16:00,,PT_Normal,,,,,0njFMvwNs0WiqECsgySwhg,/MRY9Ur/skiGJdJxDDXFRA,,,N,0,0,,,2010-08-08 11:54,2010-08-08 11:54,admin,admin,,,
804,89647,784,11664,841,1,0,N,N,N,CP_Drtn,TT_Task,DT_FixedDUR2,RV_OK,TK_NotStart,A18120,External plastering,,0,0,80,0,0,0,80,0,0,0,,,,2010-12-18 08:00,2010-12-28 16:00,,2010-12-18 08:00,2010-12-28 16:00,2010-12-18 08:00,2010-12-28 16:00,2010-12-18 08:00,2010-12-28 16:00,,2010-12-18 08:00,2010-12-28 16:00,,PT_Normal,,,,,vMmHldx30U+XH2k9r9P2ZQ,+mEckG2cX0KSnA7ikEQ/PA,,,Y,0,0,,,2010-08-08 11:54,2010-08-08 19:41,admin,admin,,,
805,89648,784,11663,841,1,0,N,N,N,CP_Drtn,TT_Task,DT_FixedDrtn,RV_OK,TK_NotStart,A18130,plumbing connections under slab on grade,,248,184,16,0,0,0,16,0,0,0,,,,2010-11-23 08:00,2010-11-24 16:00,,2010-10-13 08:00,2010-10-14 16:00,2010-10-13 08:00,2010-10-14 16:00,2010-10-13 08:00,2010-10-14 16:00,,2010-11-23 08:00,2010-11-24 16:00,,PT_Normal,,,,,sRl5jIeuHkuCqJ9DqZKHSg,WNX6NN/igUebGWUS98esjQ,,,N,0,0,,,2010-08-08 11:54,2010-08-08 11:54,admin,admin,,,
806,89649,784,11659,841,0,0,N,N,N,CP_Drtn,TT_Mile,DT_FixedDrtn,RV_OK,TK_NotStart,A18140,Start Villa construction,,0,0,0,0,0,0,0,0,0,0,,,,2010-08-18 08:00,2010-08-18 08:00,,2010-08-18 08:00,2010-08-18 08:00,2010-08-18 08:00,2010-08-18 08:00,2010-08-18 08:00,2010-08-18 08:00,,2010-08-18 08:00,2010-08-18 08:00,,PT_Normal,,,,,mZDTq4rIV0+JSC8hTNjpGA,K3Z0ekBBLUuQtyAwlA6LMA,,,Y,0,0,,,2010-08-08 11:54,2010-08-08 19:41,admin,admin,,,
807,89650,784,11659,841,0,0,N,N,N,CP_Drtn,TT_FinMile,DT_FixedDrtn,RV_OK,TK_NotStart,A18150,finish Villa construction,,0,0,0,0,0,0,0,0,0,0,,,,2010-12-28 16:00,2010-12-28 16:00,,2010-12-28 16:00,2010-12-28 16:00,2010-12-28 16:00,2010-12-28 16:00,2010-12-28 16:00,2010-12-28 16:00,,2010-12-28 16:00,2010-12-28 16:00,,PT_Normal,,,,,1fi4jJQro0CKe5A/Khk/UA,MeSAQwOyz0+dcJBYxFHWZg,,,Y,0,0,,,2010-08-08 11:54,2010-08-08 19:41,admin,admin,,,
808,89651,784,11659,841,0,0,N,N,N,CP_Drtn,TT_Mile,DT_FixedDrtn,RV_OK,TK_NotStart,A18160,IFC drawings,,0,0,0,0,0,0,0,0,0,0,,,,2010-06-21 08:00,2010-06-21 08:00,,2010-06-21 08:00,2010-06-21 08:00,2010-06-21 08:00,2010-06-21 08:00,2010-06-21 08:00,2010-06-21 08:00,,2010-06-21 08:00,2010-06-21 08:00,,PT_Normal,,,,,pTs5VneotUW55KRsxPYd0w,ihfuoWZdakWNumz9qkPkKw,,,Y,0,0,,,2010-08-08 11:54,2010-08-08 19:41,admin,admin,,,
809,89652,784,11662,841,1,0,N,N,N,CP_Drtn,TT_Task,DT_FixedDUR2,RV_OK,TK_NotStart,A18170,pouring for ground floor's slab,,0,0,8,0,0,0,8,0,0,0,,,,2010-10-24 08:00,2010-10-24 16:00,,2010-10-24 08:00,2010-10-24 16:00,2010-10-24 08:00,2010-10-24 16:00,2010-10-24 08:00,2010-10-24 16:00,,2010-10-24 08:00,2010-10-24 16:00,,PT_Normal,,,,,YPwrADMjF0Oy2CONpcyBcw,a3/4FLDmwkahbHEIMOMOzw,,,Y,0,0,,,2010-08-08 11:54,2010-08-08 19:41,admin,admin,,,
810,89653,784,11662,841,1,0,N,N,N,CP_Drtn,TT_Task,DT_FixedDUR2,RV_OK,TK_NotStart,A18180,pouring for 1st floor's slab,,0,0,8,0,0,0,8,0,0,0,,,,2010-11-11 08:00,2010-11-11 16:00,,2010-11-11 08:00,2010-11-11 16:00,2010-11-11 08:00,2010-11-11 16:00,2010-11-11 08:00,2010-11-11 16:00,,2010-11-11 08:00,2010-11-11 16:00,,PT_Normal,,,,,97BjdW+2PE+ccfzq5dwBZA,9ilm4IKKJUSofuiZdW+CLw,,,Y,0,0,,,2010-08-08 11:54,2010-08-08 19:41,admin,admin,,,
811,89654,784,11662,841,1,0,N,N,N,CP_Drtn,TT_Task,DT_FixedDUR2,RV_OK,TK_NotStart,A18190,pouring for roof floor's slab,,0,0,8,0,0,0,8,0,0,0,,,,2010-12-01 08:00,2010-12-01 16:00,,2010-12-01 08:00,2010-12-01 16:00,2010-12-01 08:00,2010-12-01 16:00,2010-12-01 08:00,2010-12-01 16:00,,2010-12-01 08:00,2010-12-01 16:00,,PT_Normal,,,,,FIS6p9KElkKATPIx197UaA,PQnzJHSVZkiYi4ojdvTXTw,,,Y,0,0,,,2010-08-08 11:54,2010-08-08 19:41,admin,admin,,,
812,89655,784,11662,841,1,0,N,N,N,CP_Drtn,TT_Task,DT_FixedDrtn,RV_OK,TK_NotStart,A18200,Fence work,,16,16,400,0,0,0,400,0,0,0,,,,2010-10-27 08:00,2010-12-28 16:00,,2010-10-25 08:00,2010-12-26 16:00,2010-10-25 08:00,2010-12-26 16:00,2010-10-25 08:00,2010-12-26 16:00,,2010-10-27 08:00,2010-12-28 16:00,,PT_Normal,,,,,pwZqwYz1d0qUjm0omCtjLw,djEJRlcy1EGhPEsBZo/OZw,,,N,0,0,,,2010-08-08 11:54,2010-08-08 11:54,admin,admin,,,
813,89656,784,11659,841,1,0,N,N,N,CP_Drtn,TT_Task,DT_FixedDUR2,RV_OK,TK_NotStart,A18210,Fence Drawings IFC,,392,376,8,0,0,0,8,0,0,0,,,,2010-10-14 08:00,2010-10-14 16:00,,2010-08-18 08:00,2010-08-18 16:00,2010-08-18 08:00,2010-08-18 16:00,2010-08-18 08:00,2010-08-18 16:00,,2010-10-14 08:00,2010-10-14 16:00,,PT_Normal,,,,,Txeeo9QuoU6zyZLkKKo3eQ,MLYy8rk4a06o13MtujNFEA,,,N,0,0,,,2010-08-08 11:54,2010-08-08 11:54,admin,admin,,,
814,89657,784,11661,873,1,0,N,N,N,CP_Drtn,TT_Task,DT_FixedDUR2,RV_OK,TK_NotStart,A18220,backfilling between P.C Foundation,,0,0,16,0,0,0,16,0,0,0,,,,2010-09-16 08:00,2010-09-18 16:00,,2010-09-16 08:00,2010-09-18 16:00,2010-09-16 08:00,2010-09-18 16:00,2010-09-16 08:00,2010-09-18 16:00,,2010-09-16 08:00,2010-09-18 16:00,,PT_Normal,,,,,xh+K3nZOnEu7Szt9S0gIzg,eXnUcZUvI0Cj8R8YYWZVng,,,Y,0,0,,,2010-08-08 11:54,2010-08-08 19:41,admin,admin,,,
815,89658,784,11662,873,1,0,N,N,N,CP_Drtn,TT_Task,DT_FixedDUR2,RV_OK,TK_NotStart,A18240,Brick works for 1st floor,,48,0,40,0,0,0,40,0,0,0,,,,2010-12-06 08:00,2010-12-11 16:00,,2010-11-29 08:00,2010-12-04 16:00,2010-11-29 08:00,2010-12-04 16:00,2010-11-29 08:00,2010-12-04 16:00,,2010-12-06 08:00,2010-12-11 16:00,,PT_Normal,,,,,RtZaPs1EF0+uRXh4aIn/Ig,PuTRU/oCeE2WRCqJ9/e1Rg,,,N,0,0,,,2010-08-08 11:54,2010-08-08 11:54,admin,admin,,,
816,89659,784,11662,873,1,0,N,N,N,CP_Drtn,TT_Task,DT_FixedDUR2,RV_OK,TK_NotStart,A18250,Brick works for roof floor,,0,0,40,0,0,0,40,0,0,0,,,,2010-12-12 08:00,2010-12-16 16:00,,2010-12-12 08:00,2010-12-16 16:00,2010-12-12 08:00,2010-12-16 16:00,2010-12-12 08:00,2010-12-16 16:00,,2010-12-12 08:00,2010-12-16 16:00,,PT_Normal,,,,,aih1yQg02U+uwaz7un8kLw,tJcJJ+yzgUKaTo6GO7t7Tg,,,Y,0,0,,,2010-08-08 11:54,2010-08-08 19:41,admin,admin,,,
817,89660,784,11664,873,1,0,N,N,N,CP_Drtn,TT_Task,DT_FixedDUR2,RV_OK,TK_NotStart,A18260,Internal plastering for 1st floor,,48,24,64,0,0,0,64,0,0,0,,,,2010-12-14 08:00,2010-12-22 16:00,,2010-12-07 08:00,2010-12-15 16:00,2010-12-07 08:00,2010-12-15 16:00,2010-12-07 08:00,2010-12-15 16:00,,2010-12-14 08:00,2010-12-22 16:00,,PT_Normal,,,,,cG6afoCccEW1aqk4dT++Yw,tNLkLy2kV0OLvsjmToEIWg,,,N,0,0,,,2010-08-08 11:54,2010-08-08 11:54,admin,admin,,,
818,89661,784,11664,873,1,0,N,N,N,CP_Drtn,TT_Task,DT_FixedDUR2,RV_OK,TK_NotStart,A18270,Internal plastering for roof floor,,24,24,40,0,0,0,40,0,0,0,,,,2010-12-23 08:00,2010-12-28 16:00,,2010-12-20 08:00,2010-12-25 16:00,2010-12-20 08:00,2010-12-25 16:00,2010-12-20 08:00,2010-12-25 16:00,,2010-12-23 08:00,2010-12-28 16:00,,PT_Normal,,,,,MAgPh07ap0a8N/EZfMKemA,hgRlg+sohkSdKazpmrfS8g,,,N,0,0,,,2010-08-08 11:54,2010-08-08 11:54,admin,admin,,,
819,89662,784,11663,873,1,0,N,N,N,CP_Drtn,TT_Task,DT_FixedDUR2,RV_OK,TK_NotStart,A18280,electrical conduits for ground floor walls,,64,0,16,0,0,0,16,0,0,0,,,,2010-12-02 08:00,2010-12-04 16:00,,2010-11-23 08:00,2010-11-24 16:00,2010-11-23 08:00,2010-11-24 16:00,2010-11-23 08:00,2010-11-24 16:00,,2010-12-02 08:00,2010-12-04 16:00,,PT_Normal,,,,,J3E6CMHd3U6ZGOhp1Q++lg,GzZ+DCOYXEqcye6vUhbBaQ,,,N,0,0,,,2010-08-08 11:54,2010-08-08 11:54,admin,admin,,,
820,89663,784,11663,873,1,0,N,N,N,CP_Drtn,TT_Task,DT_FixedDUR2,RV_OK,TK_NotStart,A18290,electrical conduits for 1st floor walls,,48,0,16,0,0,0,16,0,0,0,,,,2010-12-12 08:00,2010-12-13 16:00,,2010-12-05 08:00,2010-12-06 16:00,2010-12-05 08:00,2010-12-06 16:00,2010-12-05 08:00,2010-12-06 16:00,,2010-12-12 08:00,2010-12-13 16:00,,PT_Normal,,,,,Gvf25PF77kSfg8Wb2RGH6w,R0/s2ngJIUuixvAkzvYTuA,,,N,0,0,,,2010-08-08 11:54,2010-08-08 11:54,admin,admin,,,
821,89664,784,11663,873,1,0,N,N,N,CP_Drtn,TT_Task,DT_FixedDUR2,RV_OK,TK_NotStart,A18300,electrical conduits for roof floor walls,,24,0,16,0,0,0,16,0,0,0,,,,2010-12-21 08:00,2010-12-22 16:00,,2010-12-18 08:00,2010-12-19 16:00,2010-12-18 08:00,2010-12-19 16:00,2010-12-18 08:00,2010-12-19 16:00,,2010-12-21 08:00,2010-12-22 16:00,,PT_Normal,,,,,9Fp12VTMYUGuhGvSr/R0rg,GvgXBR5v3kuXdLMGKeH5kw,,,N,0,0,,,2010-08-08 11:54,2010-08-08 11:54,admin,admin,,,
822,89665,784,11667,841,1,0,N,N,N,CP_Drtn,TT_Task,DT_FixedDUR2,RV_OK,TK_NotStart,A18310,excavation,,104,0,16,0,0,0,16,0,0,0,,,,2010-08-28 08:00,2010-08-29 16:00,,2010-08-12 08:00,2010-08-14 16:00,2010-08-12 08:00,2010-08-14 16:00,2010-08-12 08:00,2010-08-14 16:00,,2010-08-28 08:00,2010-08-29 16:00,,PT_Normal,,,,,r5D3C9SL+EaE6rbZ+Dh3oQ,cQlwGyNIgUyTVfyW6/b42w,,,N,0,0,,,2010-08-08 11:54,2010-08-08 19:23,admin,admin,,,
823,89666,784,11667,841,1,0,N,N,N,CP_Drtn,TT_Task,DT_FixedDUR2,RV_OK,TK_NotStart,A18320,soil replacement,,104,0,96,0,0,0,96,0,0,0,,,,2010-08-30 08:00,2010-09-12 16:00,,2010-08-15 08:00,2010-08-28 16:00,2010-08-15 08:00,2010-08-28 16:00,2010-08-15 08:00,2010-08-28 16:00,,2010-08-30 08:00,2010-09-12 16:00,,PT_Normal,,,,,6okx60P6AkGBywjLSZoW1Q,BO5g2CsilUSzhxurgCo4nA,,,N,0,0,,,2010-08-08 11:54,2010-08-08 19:23,admin,admin,,,
824,89667,784,11668,841,1,0,N,N,N,CP_Drtn,TT_Task,DT_FixedDUR2,RV_OK,TK_NotStart,A18330,Plain Concrete Foundation,,104,0,16,0,0,0,16,0,0,0,,,,2010-09-13 08:00,2010-09-14 16:00,,2010-08-29 08:00,2010-08-30 16:00,2010-08-29 08:00,2010-08-30 16:00,2010-08-29 08:00,2010-08-30 16:00,,2010-09-13 08:00,2010-09-14 16:00,,PT_Normal,,,,,71Lis9BrfkShiZmsZjvQ0g,2CufNcHgbU6oZDGLZofbXA,,,N,0,0,,,2010-08-08 11:54,2010-08-08 19:23,admin,admin,,,
825,89668,784,11668,841,1,0,N,N,N,CP_Drtn,TT_Task,DT_FixedDUR2,RV_OK,TK_NotStart,A18340,Reinforced Concrete Foundation,,104,0,56,0,0,0,56,0,0,0,,,,2010-09-19 08:00,2010-09-26 16:00,,2010-09-04 08:00,2010-09-11 16:00,2010-09-04 08:00,2010-09-11 16:00,2010-09-04 08:00,2010-09-11 16:00,,2010-09-19 08:00,2010-09-26 16:00,,PT_Normal,,,,,mrPg+Rva4066BGVfwdFjFw,2SgAYgcxoEGKu9UVQMtzUQ,,,N,0,0,,,2010-08-08 11:54,2010-08-08 19:23,admin,admin,,,
826,89669,784,11668,841,1,0,N,N,N,CP_Drtn,TT_Task,DT_FixedDUR2,RV_OK,TK_NotStart,A18350,under ground  brick works,,104,0,16,0,0,0,16,0,0,0,,,,2010-10-04 08:00,2010-10-05 16:00,,2010-09-19 08:00,2010-09-20 16:00,2010-09-19 08:00,2010-09-20 16:00,2010-09-19 08:00,2010-09-20 16:00,,2010-10-04 08:00,2010-10-05 16:00,,PT_Normal,,,,,jDJ/oJvKnECnlNPnWq6lqw,nDXiD7PKokyB2drYnL3A9w,,,N,0,0,,,2010-08-08 11:54,2010-08-08 19:23,admin,admin,,,
827,89670,784,11668,841,1,0,N,N,N,CP_Drtn,TT_Task,DT_FixedDUR2,RV_OK,TK_NotStart,A18360,under ground insulation for RC & Brick work,,104,0,16,0,0,0,16,0,0,0,,,,2010-10-06 08:00,2010-10-07 16:00,,2010-09-21 08:00,2010-09-22 16:00,2010-09-21 08:00,2010-09-22 16:00,2010-09-21 08:00,2010-09-22 16:00,,2010-10-06 08:00,2010-10-07 16:00,,PT_Normal,,,,,12RxrbgpD0+z99lc6v6dpA,7oJGusM++Uao6Kh3SiWlqA,,,N,0,0,,,2010-08-08 11:54,2010-08-08 19:23,admin,admin,,,
828,89671,784,11668,841,1,0,N,N,N,CP_Drtn,TT_Task,DT_FixedDUR2,RV_OK,TK_NotStart,A18370,backfilling for under ground,,104,0,32,0,0,0,32,0,0,0,,,,2010-10-09 08:00,2010-10-12 16:00,,2010-09-23 08:00,2010-09-27 16:00,2010-09-23 08:00,2010-09-27 16:00,2010-09-23 08:00,2010-09-27 16:00,,2010-10-09 08:00,2010-10-12 16:00,,PT_Normal,,,,,73z/ibG8xUyvXFQ3U89Avg,DVqWwzkdmUySvCYkVytD3w,,,N,0,0,,,2010-08-08 11:54,2010-08-08 19:23,admin,admin,,,
829,89672,784,11668,841,1,0,N,N,N,CP_Drtn,TT_Task,DT_FixedDUR2,RV_OK,TK_NotStart,A18380,P.C slab on grade 10CM,,168,0,8,0,0,0,8,0,0,0,,,,2010-11-25 08:00,2010-11-25 16:00,,2010-10-27 08:00,2010-10-27 16:00,2010-10-27 08:00,2010-10-27 16:00,2010-10-27 08:00,2010-10-27 16:00,,2010-11-25 08:00,2010-11-25 16:00,,PT_Normal,,,,,7xVYoj2q9UindwDDB6gtfw,FuTEuXRBP0SwDOR3wqKQjg,,,N,0,0,,,2010-08-08 11:54,2010-08-08 19:23,admin,admin,,,
830,89673,784,11668,841,1,0,N,N,N,CP_Drtn,TT_Task,DT_FixedDUR2,RV_OK,TK_NotStart,A18390,moisture insulation with membrane sheets,,168,0,16,0,0,0,16,0,0,0,,,,2010-11-27 08:00,2010-11-28 16:00,,2010-10-28 08:00,2010-10-30 16:00,2010-10-28 08:00,2010-10-30 16:00,2010-10-28 08:00,2010-10-30 16:00,,2010-11-27 08:00,2010-11-28 16:00,,PT_Normal,,,,,avAJk8EP50uxytwgdaQKVA,qUoRg0KE4kK1nwzAFhQqeQ,,,N,0,0,,,2010-08-08 11:54,2010-08-08 19:23,admin,admin,,,
831,89674,784,11668,841,1,0,N,N,N,CP_Drtn,TT_Task,DT_FixedDUR2,RV_OK,TK_NotStart,A18400,R.C slab on grade,,168,0,16,0,0,0,16,0,0,0,,,,2010-11-29 08:00,2010-11-30 16:00,,2010-10-31 08:00,2010-11-01 16:00,2010-10-31 08:00,2010-11-01 16:00,2010-10-31 08:00,2010-11-01 16:00,,2010-11-29 08:00,2010-11-30 16:00,,PT_Normal,,,,,bSILo5yj0USLzIDyXc0Jiw,9gWMZQhgEkuz9dDARJsdBQ,,,N,0,0,,,2010-08-08 11:54,2010-08-08 19:23,admin,admin,,,
832,89675,784,11669,841,1,0,N,N,N,CP_Drtn,TT_Task,DT_FixedDUR2,RV_OK,TK_NotStart,A18410,columns for ground floor,,104,0,48,0,0,0,48,0,0,0,,,,2010-09-27 08:00,2010-10-03 16:00,,2010-09-12 08:00,2010-09-18 16:00,2010-09-12 08:00,2010-09-18 16:00,2010-09-12 08:00,2010-09-18 16:00,,2010-09-27 08:00,2010-10-03 16:00,,PT_Normal,,,,,j8WIgSx2MU2uzErVMqx5EA,4mAqBIiTpUCJFthd125nNg,,,N,0,0,,,2010-08-08 11:54,2010-08-08 19:23,admin,admin,,,
833,89676,784,11669,841,1,0,N,N,N,CP_Drtn,TT_Task,DT_FixedDUR2,RV_OK,TK_NotStart,A18420,slab for ground floor,,104,0,72,0,0,0,72,0,0,0,,,,2010-10-13 08:00,2010-10-23 16:00,,2010-09-28 08:00,2010-10-07 16:00,2010-09-28 08:00,2010-10-07 16:00,2010-09-28 08:00,2010-10-07 16:00,,2010-10-13 08:00,2010-10-23 16:00,,PT_Normal,,,,,LsnioUnNqEaHOsfhzGuI2Q,XkxJEtvmrUa6LwKtcvn80g,,,N,0,0,,,2010-08-08 11:54,2010-08-08 19:23,admin,admin,,,
834,89677,784,11669,841,1,0,N,N,N,CP_Drtn,TT_Task,DT_FixedDUR2,RV_OK,TK_NotStart,A18430,columns for 1st floor,,104,0,48,0,0,0,48,0,0,0,,,,2010-10-25 08:00,2010-10-31 16:00,,2010-10-10 08:00,2010-10-16 16:00,2010-10-10 08:00,2010-10-16 16:00,2010-10-10 08:00,2010-10-16 16:00,,2010-10-25 08:00,2010-10-31 16:00,,PT_Normal,,,,,Lk0tlhEgUk27c4DQt7+sDg,BFrSfEKNLEGnusVxj4nByw,,,N,0,0,,,2010-08-08 11:54,2010-08-08 19:23,admin,admin,,,
835,89678,784,11669,841,1,0,N,N,N,CP_Drtn,TT_Task,DT_FixedDUR2,RV_OK,TK_NotStart,A18440,slab for 1st floor,,104,0,72,0,0,0,72,0,0,0,,,,2010-11-01 08:00,2010-11-10 16:00,,2010-10-17 08:00,2010-10-26 16:00,2010-10-17 08:00,2010-10-26 16:00,2010-10-17 08:00,2010-10-26 16:00,,2010-11-01 08:00,2010-11-10 16:00,,PT_Normal,,,,,yLTmecwmEUmZnR0W6Cb0tg,SaXn3hkwIkiahXODAGWVdA,,,N,0,0,,,2010-08-08 11:54,2010-08-08 19:23,admin,admin,,,
836,89679,784,11669,841,1,0,N,N,N,CP_Drtn,TT_Task,DT_FixedDUR2,RV_OK,TK_NotStart,A18450,columns for roof floor,,104,0,32,0,0,0,32,0,0,0,,,,2010-11-20 08:00,2010-11-23 16:00,,2010-10-31 08:00,2010-11-03 16:00,2010-10-31 08:00,2010-11-03 16:00,2010-10-31 08:00,2010-11-03 16:00,,2010-11-20 08:00,2010-11-23 16:00,,PT_Normal,,,,,p/aeJaMb1kiqRtEJboFcSA,U9Y3ME1xkkG3cjyfKXoOBg,,,N,0,0,,,2010-08-08 11:54,2010-08-08 19:23,admin,admin,,,
837,89680,784,11669,841,1,0,N,N,N,CP_Drtn,TT_Task,DT_FixedDUR2,RV_OK,TK_NotStart,A18460,slab for roof floor,,104,0,48,0,0,0,48,0,0,0,,,,2010-11-24 08:00,2010-11-30 16:00,,2010-11-04 08:00,2010-11-10 16:00,2010-11-04 08:00,2010-11-10 16:00,2010-11-04 08:00,2010-11-10 16:00,,2010-11-24 08:00,2010-11-30 16:00,,PT_Normal,,,,,sA3AOPl/E0ClSuRoQadAEw,IlMiSSKtAUeWZeCMSPsYkQ,,,N,0,0,,,2010-08-08 11:54,2010-08-08 19:23,admin,admin,,,
838,89681,784,11669,841,1,0,N,N,N,CP_Drtn,TT_Task,DT_FixedDUR2,RV_OK,TK_NotStart,A18470,Brick works for ground floor,,168,0,40,0,0,0,40,0,0,0,,,,2010-11-20 08:00,2010-11-24 16:00,,2010-10-21 08:00,2010-10-26 16:00,2010-10-21 08:00,2010-10-26 16:00,2010-10-21 08:00,2010-10-26 16:00,,2010-11-20 08:00,2010-11-24 16:00,,PT_Normal,,,,,xqCvpTO1SEq/y80WNfNj6A,eDf5CRDDXkqG7Mv+AK4LCg,,,N,0,0,,,2010-08-08 11:54,2010-08-08 19:23,admin,admin,,,
839,89682,784,11670,841,1,0,N,N,N,CP_Drtn,TT_Task,DT_FixedDrtn,RV_OK,TK_NotStart,A18480,electrical conduits for ground floor's slab,,112,8,16,0,0,0,16,0,0,0,,,,2010-10-19 08:00,2010-10-20 16:00,,2010-10-03 08:00,2010-10-04 16:00,2010-10-03 08:00,2010-10-04 16:00,2010-10-03 08:00,2010-10-04 16:00,,2010-10-19 08:00,2010-10-20 16:00,,PT_Normal,,,,,KdOObxqKRk2vWyfZnAv8Jw,ZJp4cwKYlUO5aIeTkxfYKA,,,N,0,0,,,2010-08-08 11:54,2010-08-08 19:23,admin,admin,,,
840,89683,784,11670,841,1,0,N,N,N,CP_Drtn,TT_Task,DT_FixedDrtn,RV_OK,TK_NotStart,A18490,electrical conduits for 1st floor slab,,112,8,16,0,0,0,16,0,0,0,,,,2010-11-07 08:00,2010-11-08 16:00,,2010-10-21 08:00,2010-10-23 16:00,2010-10-21 08:00,2010-10-23 16:00,2010-10-21 08:00,2010-10-23 16:00,,2010-11-07 08:00,2010-11-08 16:00,,PT_Normal,,,,,TbqGUTaFn0Cc122fb/CShQ,p9mqkx6ZmEy1kKhnVQ8GPw,,,N,0,0,,,2010-08-08 11:54,2010-08-08 19:23,admin,admin,,,
841,89684,784,11670,841,1,0,N,N,N,CP_Drtn,TT_Task,DT_FixedDrtn,RV_OK,TK_NotStart,A18500,electrical conduits for roof slab,,112,8,8,0,0,0,8,0,0,0,,,,2010-11-29 08:00,2010-11-29 16:00,,2010-11-08 08:00,2010-11-08 16:00,2010-11-08 08:00,2010-11-08 16:00,2010-11-08 08:00,2010-11-08 16:00,,2010-11-29 08:00,2010-11-29 16:00,,PT_Normal,,,,,AZc5KHtSHE+ZJD0FRI5Ovw,o/IFfUt/H0SjN2xt/C04ow,,,N,0,0,,,2010-08-08 11:54,2010-08-08 19:23,admin,admin,,,
842,89685,784,11671,841,1,0,N,N,N,CP_Drtn,TT_Task,DT_FixedDUR2,RV_OK,TK_NotStart,A18510,Internal plastering for ground floor,,168,0,64,0,0,0,64,0,0,0,,,,2010-12-05 08:00,2010-12-13 16:00,,2010-11-06 08:00,2010-11-14 16:00,2010-11-06 08:00,2010-11-14 16:00,2010-11-06 08:00,2010-11-14 16:00,,2010-12-05 08:00,2010-12-13 16:00,,PT_Normal,,,,,D/yhheXtVEyiDPa16RVn2Q,qemUBgjWKEmxqVfVWieIOQ,,,N,0,0,,,2010-08-08 11:54,2010-08-08 19:23,admin,admin,,,
843,89686,784,11671,841,1,0,N,N,N,CP_Drtn,TT_Task,DT_FixedDUR2,RV_OK,TK_NotStart,A18520,External plastering,,104,0,80,0,0,0,80,0,0,0,,,,2010-12-18 08:00,2010-12-28 16:00,,2010-12-02 08:00,2010-12-13 16:00,2010-12-02 08:00,2010-12-13 16:00,2010-12-02 08:00,2010-12-13 16:00,,2010-12-18 08:00,2010-12-28 16:00,,PT_Normal,,,,,BuW8vn1wCEy9YCDRxKQJwQ,gD4YSJap5kqTgz64aQ7CYA,,,N,0,0,,,2010-08-08 11:54,2010-08-08 19:23,admin,admin,,,
844,89687,784,11670,841,1,0,N,N,N,CP_Drtn,TT_Task,DT_FixedDrtn,RV_OK,TK_NotStart,A18530,plumbing connections under slab on grade,,352,184,16,0,0,0,16,0,0,0,,,,2010-11-23 08:00,2010-11-24 16:00,,2010-09-28 08:00,2010-09-29 16:00,2010-09-28 08:00,2010-09-29 16:00,2010-09-28 08:00,2010-09-29 16:00,,2010-11-23 08:00,2010-11-24 16:00,,PT_Normal,,,,,+8V2f/qhYUSOKatPBW8xvg,vMaJNKksOE6XvTkQq9lH+w,,,N,0,0,,,2010-08-08 11:54,2010-08-08 19:23,admin,admin,,,
845,89688,784,11666,841,0,0,N,N,N,CP_Drtn,TT_Mile,DT_FixedDrtn,RV_OK,TK_NotStart,A18540,Start Villa construction,,104,0,0,0,0,0,0,0,0,0,,,,2010-08-28 08:00,2010-08-28 08:00,,2010-08-12 08:00,2010-08-12 08:00,2010-08-12 08:00,2010-08-12 08:00,2010-08-12 08:00,2010-08-12 08:00,,2010-08-28 08:00,2010-08-28 08:00,,PT_Normal,,,,,JqGAaI9OCEO8uIPDGETF4w,l8OHXQMEM0S+9pc7LKA+zQ,,,N,0,0,,,2010-08-08 11:54,2010-08-08 19:23,admin,admin,,,
846,89689,784,11666,841,0,0,N,N,N,CP_Drtn,TT_FinMile,DT_FixedDrtn,RV_OK,TK_NotStart,A18550,finish Villa construction,,104,104,0,0,0,0,0,0,0,0,,,,2010-12-28 16:00,2010-12-28 16:00,,2010-12-13 16:00,2010-12-13 16:00,2010-12-13 16:00,2010-12-13 16:00,2010-12-13 16:00,2010-12-13 16:00,,2010-12-28 16:00,2010-12-28 16:00,,PT_Normal,,,,,z3dpFfLjhk6FKEqet0BG7w,DvVWD6ThmE62ara2Aodong,,,N,0,0,,,2010-08-08 11:54,2010-08-08 19:23,admin,admin,,,
847,89690,784,11666,841,0,0,N,N,N,CP_Drtn,TT_Mile,DT_FixedDrtn,RV_OK,TK_NotStart,A18560,IFC drawings,,104,0,0,0,0,0,0,0,0,0,,,,2010-07-06 08:00,2010-07-06 08:00,,2010-06-21 08:00,2010-06-21 08:00,2010-06-21 08:00,2010-06-21 08:00,2010-06-21 08:00,2010-06-21 08:00,,2010-07-06 08:00,2010-07-06 08:00,,PT_Normal,,,,,N+694po2kESB4us02AFnVg,7de/Gbu6KU+hoq5/SFPhVw,,,N,0,0,,,2010-08-08 11:54,2010-08-08 19:23,admin,admin,,,
848,89691,784,11669,841,1,0,N,N,N,CP_Drtn,TT_Task,DT_FixedDUR2,RV_OK,TK_NotStart,A18570,pouring for ground floor's slab,,104,0,8,0,0,0,8,0,0,0,,,,2010-10-24 08:00,2010-10-24 16:00,,2010-10-09 08:00,2010-10-09 16:00,2010-10-09 08:00,2010-10-09 16:00,2010-10-09 08:00,2010-10-09 16:00,,2010-10-24 08:00,2010-10-24 16:00,,PT_Normal,,,,,ro1Vjd2M1EexGDS/bL2NkA,+Pa1kNWX3kuQUxjQAORX3A,,,N,0,0,,,2010-08-08 11:54,2010-08-08 19:23,admin,admin,,,
849,89692,784,11669,841,1,0,N,N,N,CP_Drtn,TT_Task,DT_FixedDUR2,RV_OK,TK_NotStart,A18580,pouring for 1st floor's slab,,104,0,8,0,0,0,8,0,0,0,,,,2010-11-11 08:00,2010-11-11 16:00,,2010-10-27 08:00,2010-10-27 16:00,2010-10-27 08:00,2010-10-27 16:00,2010-10-27 08:00,2010-10-27 16:00,,2010-11-11 08:00,2010-11-11 16:00,,PT_Normal,,,,,440Xq/bNUE+NIUZ0NvxCBA,uiExpzkGwU+Er5VTiN+pkQ,,,N,0,0,,,2010-08-08 11:54,2010-08-08 19:23,admin,admin,,,
850,89693,784,11669,841,1,0,N,N,N,CP_Drtn,TT_Task,DT_FixedDUR2,RV_OK,TK_NotStart,A18590,pouring for roof floor's slab,,104,0,8,0,0,0,8,0,0,0,,,,2010-12-01 08:00,2010-12-01 16:00,,2010-11-11 08:00,2010-11-11 16:00,2010-11-11 08:00,2010-11-11 16:00,2010-11-11 08:00,2010-11-11 16:00,,2010-12-01 08:00,2010-12-01 16:00,,PT_Normal,,,,,d3AeIJSHbU6BnZY5L5RNZg,UoeBe2JgP0mXYxZ7DN+pYQ,,,N,0,0,,,2010-08-08 11:54,2010-08-08 19:23,admin,admin,,,
851,89694,784,11669,841,1,0,N,N,N,CP_Drtn,TT_Task,DT_FixedDrtn,RV_OK,TK_NotStart,A18600,Fence work,,120,16,400,0,0,0,400,0,0,0,,,,2010-10-27 08:00,2010-12-28 16:00,,2010-10-10 08:00,2010-12-11 16:00,2010-10-10 08:00,2010-12-11 16:00,2010-10-10 08:00,2010-12-11 16:00,,2010-10-27 08:00,2010-12-28 16:00,,PT_Normal,,,,,+ZLC8P53TUmlegJ28hbGxw,38itMXU+j0yrkispKiVxsw,,,N,0,0,,,2010-08-08 11:54,2010-08-08 19:23,admin,admin,,,
852,89695,784,11666,841,1,0,N,N,N,CP_Drtn,TT_Task,DT_FixedDUR2,RV_OK,TK_NotStart,A18610,Fence Drawings IFC,,432,312,8,0,0,0,8,0,0,0,,,,2010-10-14 08:00,2010-10-14 16:00,,2010-08-12 08:00,2010-08-12 16:00,2010-08-12 08:00,2010-08-12 16:00,2010-08-12 08:00,2010-08-12 16:00,,2010-10-14 08:00,2010-10-14 16:00,,PT_Normal,,,,,GEcsQbFN7UK2w4GAFNEttQ,Ub+xX7RB30+KPetHnnkapA,,,N,0,0,,,2010-08-08 11:54,2010-08-08 19:23,admin,admin,,,
853,89696,784,11668,873,1,0,N,N,N,CP_Drtn,TT_Task,DT_FixedDUR2,RV_OK,TK_NotStart,A18620,backfilling between P.C Foundation,,72,0,16,0,0,0,16,0,0,0,,,,2010-09-16 08:00,2010-09-18 16:00,,2010-09-01 08:00,2010-09-02 16:00,2010-09-01 08:00,2010-09-02 16:00,2010-09-01 08:00,2010-09-02 16:00,,2010-09-16 08:00,2010-09-18 16:00,,PT_Normal,,,,,AOq6rEw4wkOAx/1OcNBx9w,va14fVScV06f6nLpxM+naA,,,N,0,0,,,2010-08-08 11:54,2010-08-08 19:23,admin,admin,,,
854,89697,784,11669,873,1,0,N,N,N,CP_Drtn,TT_Task,DT_FixedDUR2,RV_OK,TK_NotStart,A18640,Brick works for 1st floor,,184,0,40,0,0,0,40,0,0,0,,,,2010-12-06 08:00,2010-12-11 16:00,,2010-11-09 08:00,2010-11-14 16:00,2010-11-09 08:00,2010-11-14 16:00,2010-11-09 08:00,2010-11-14 16:00,,2010-12-06 08:00,2010-12-11 16:00,,PT_Normal,,,,,bLN2tUzuOEO+kyBX1tKvjw,A1QpsZ9dgk+fOZnUAfOkDQ,,,N,0,0,,,2010-08-08 11:54,2010-08-08 19:23,admin,admin,,,
855,89698,784,11669,873,1,0,N,N,N,CP_Drtn,TT_Task,DT_FixedDUR2,RV_OK,TK_NotStart,A18650,Brick works for roof floor,,104,0,40,0,0,0,40,0,0,0,,,,2010-12-12 08:00,2010-12-16 16:00,,2010-11-27 08:00,2010-12-01 16:00,2010-11-27 08:00,2010-12-01 16:00,2010-11-27 08:00,2010-12-01 16:00,,2010-12-12 08:00,2010-12-16 16:00,,PT_Normal,,,,,jPJfVBjw+EuYWZGlJX/smw,SOTXzLO7OUyctckQg6DTfg,,,N,0,0,,,2010-08-08 11:54,2010-08-08 19:23,admin,admin,,,
856,89699,784,11671,873,1,0,N,N,N,CP_Drtn,TT_Task,DT_FixedDUR2,RV_OK,TK_NotStart,A18660,Internal plastering for 1st floor,,184,56,64,0,0,0,64,0,0,0,,,,2010-12-14 08:00,2010-12-22 16:00,,2010-11-17 08:00,2010-11-25 16:00,2010-11-17 08:00,2010-11-25 16:00,2010-11-17 08:00,2010-11-25 16:00,,2010-12-14 08:00,2010-12-22 16:00,,PT_Normal,,,,,4oYxyx9fN069gS1DpX0DGA,uxRkovti2EOhxWPGyG9ucg,,,N,0,0,,,2010-08-08 11:54,2010-08-08 19:23,admin,admin,,,
857,89700,784,11671,873,1,0,N,N,N,CP_Drtn,TT_Task,DT_FixedDUR2,RV_OK,TK_NotStart,A18670,Internal plastering for roof floor,,128,24,40,0,0,0,40,0,0,0,,,,2010-12-23 08:00,2010-12-28 16:00,,2010-12-05 08:00,2010-12-09 16:00,2010-12-05 08:00,2010-12-09 16:00,2010-12-05 08:00,2010-12-09 16:00,,2010-12-23 08:00,2010-12-28 16:00,,PT_Normal,,,,,fE8aFqZDVUqQr02fwCO4zg,rslO29XSEU+poJJoD1ybag,,,N,0,0,,,2010-08-08 11:54,2010-08-08 19:23,admin,admin,,,
858,89701,784,11670,873,1,0,N,N,N,CP_Drtn,TT_Task,DT_FixedDUR2,RV_OK,TK_NotStart,A18680,electrical conduits for ground floor walls,,200,0,16,0,0,0,16,0,0,0,,,,2010-12-02 08:00,2010-12-04 16:00,,2010-11-03 08:00,2010-11-04 16:00,2010-11-03 08:00,2010-11-04 16:00,2010-11-03 08:00,2010-11-04 16:00,,2010-12-02 08:00,2010-12-04 16:00,,PT_Normal,,,,,8A18QgHxP0uX8YnyS4IBrg,2aEH4+Lm2UWPQyMm0ZU7Iw,,,N,0,0,,,2010-08-08 11:54,2010-08-08 19:23,admin,admin,,,
859,89702,784,11670,873,1,0,N,N,N,CP_Drtn,TT_Task,DT_FixedDUR2,RV_OK,TK_NotStart,A18690,electrical conduits for 1st floor walls,,184,0,16,0,0,0,16,0,0,0,,,,2010-12-12 08:00,2010-12-13 16:00,,2010-11-15 08:00,2010-11-16 16:00,2010-11-15 08:00,2010-11-16 16:00,2010-11-15 08:00,2010-11-16 16:00,,2010-12-12 08:00,2010-12-13 16:00,,PT_Normal,,,,,e8mx79Xuk0aCthILpZAG+A,Eo2xGs4GMEmJOJzTQ35ftw,,,N,0,0,,,2010-08-08 11:54,2010-08-08 19:23,admin,admin,,,
860,89703,784,11670,873,1,0,N,N,N,CP_Drtn,TT_Task,DT_FixedDUR2,RV_OK,TK_NotStart,A18700,electrical conduits for roof floor walls,,128,0,16,0,0,0,16,0,0,0,,,,2010-12-21 08:00,2010-12-22 16:00,,2010-12-02 08:00,2010-12-04 16:00,2010-12-02 08:00,2010-12-04 16:00,2010-12-02 08:00,2010-12-04 16:00,,2010-12-21 08:00,2010-12-22 16:00,,PT_Normal,,,,,BdbI98/JzUepmt6fs1WtcA,/KGDvqu910GNWcK8uEv5Rw,,,N,0,0,,,2010-08-08 11:54,2010-08-08 19:23,admin,admin,,,
861,89704,784,11674,841,1,0,N,N,N,CP_Drtn,TT_Task,DT_FixedDUR2,RV_OK,TK_NotStart,A18710,excavation,,104,0,16,0,0,0,16,0,0,0,,,,2010-08-28 08:00,2010-08-29 16:00,,2010-08-12 08:00,2010-08-14 16:00,2010-08-12 08:00,2010-08-14 16:00,2010-08-12 08:00,2010-08-14 16:00,,2010-08-28 08:00,2010-08-29 16:00,,PT_Normal,,,,,zix583BkHkiTlhXJh/En0A,MaE2vRAleEuNRNOweBuAxw,,,N,0,0,,,2010-08-08 11:54,2010-08-08 19:24,admin,admin,,,
862,89705,784,11674,841,1,0,N,N,N,CP_Drtn,TT_Task,DT_FixedDUR2,RV_OK,TK_NotStart,A18720,soil replacement,,104,0,96,0,0,0,96,0,0,0,,,,2010-08-30 08:00,2010-09-12 16:00,,2010-08-15 08:00,2010-08-28 16:00,2010-08-15 08:00,2010-08-28 16:00,2010-08-15 08:00,2010-08-28 16:00,,2010-08-30 08:00,2010-09-12 16:00,,PT_Normal,,,,,M/RsBvchMUuArn4VgdBZVQ,R2OMC8lNrE2FjQT9CKg9/w,,,N,0,0,,,2010-08-08 11:54,2010-08-08 19:24,admin,admin,,,
863,89706,784,11675,841,1,0,N,N,N,CP_Drtn,TT_Task,DT_FixedDUR2,RV_OK,TK_NotStart,A18730,Plain Concrete Foundation,,104,0,16,0,0,0,16,0,0,0,,,,2010-09-13 08:00,2010-09-14 16:00,,2010-08-29 08:00,2010-08-30 16:00,2010-08-29 08:00,2010-08-30 16:00,2010-08-29 08:00,2010-08-30 16:00,,2010-09-13 08:00,2010-09-14 16:00,,PT_Normal,,,,,RXvIdLAJZ0eSxLP9xiKoOQ,LRJUbRsUtEKMNnUSvGMc7w,,,N,0,0,,,2010-08-08 11:54,2010-08-08 19:24,admin,admin,,,
864,89707,784,11675,841,1,0,N,N,N,CP_Drtn,TT_Task,DT_FixedDUR2,RV_OK,TK_NotStart,A18740,Reinforced Concrete Foundation,,104,0,56,0,0,0,56,0,0,0,,,,2010-09-19 08:00,2010-09-26 16:00,,2010-09-04 08:00,2010-09-11 16:00,2010-09-04 08:00,2010-09-11 16:00,2010-09-04 08:00,2010-09-11 16:00,,2010-09-19 08:00,2010-09-26 16:00,,PT_Normal,,,,,NIODhpiDl0i6gzcmUK5rgw,OnQjh5BlHUKEMuNb2iNYQg,,,N,0,0,,,2010-08-08 11:54,2010-08-08 19:24,admin,admin,,,
865,89708,784,11675,841,1,0,N,N,N,CP_Drtn,TT_Task,DT_FixedDUR2,RV_OK,TK_NotStart,A18750,under ground  brick works,,104,0,16,0,0,0,16,0,0,0,,,,2010-10-04 08:00,2010-10-05 16:00,,2010-09-19 08:00,2010-09-20 16:00,2010-09-19 08:00,2010-09-20 16:00,2010-09-19 08:00,2010-09-20 16:00,,2010-10-04 08:00,2010-10-05 16:00,,PT_Normal,,,,,TI75M/dQxUCbs4nIs5x9Aw,L8CxlotzIUC8sVWbjaE1TA,,,N,0,0,,,2010-08-08 11:54,2010-08-08 19:24,admin,admin,,,
866,89709,784,11675,841,1,0,N,N,N,CP_Drtn,TT_Task,DT_FixedDUR2,RV_OK,TK_NotStart,A18760,under ground insulation for RC & Brick work,,104,0,16,0,0,0,16,0,0,0,,,,2010-10-06 08:00,2010-10-07 16:00,,2010-09-21 08:00,2010-09-22 16:00,2010-09-21 08:00,2010-09-22 16:00,2010-09-21 08:00,2010-09-22 16:00,,2010-10-06 08:00,2010-10-07 16:00,,PT_Normal,,,,,mGWrs3BKzU6XaxL8bYAmUw,ZZHba1HXZ0S8t3FiJM02Pg,,,N,0,0,,,2010-08-08 11:54,2010-08-08 19:24,admin,admin,,,
867,89710,784,11675,841,1,0,N,N,N,CP_Drtn,TT_Task,DT_FixedDUR2,RV_OK,TK_NotStart,A18770,backfilling for under ground,,104,0,32,0,0,0,32,0,0,0,,,,2010-10-09 08:00,2010-10-12 16:00,,2010-09-23 08:00,2010-09-27 16:00,2010-09-23 08:00,2010-09-27 16:00,2010-09-23 08:00,2010-09-27 16:00,,2010-10-09 08:00,2010-10-12 16:00,,PT_Normal,,,,,P9hFdMNr30i0IpBU8Sbodw,kMAxwbsCJUawVZ+fsme40g,,,N,0,0,,,2010-08-08 11:54,2010-08-08 19:24,admin,admin,,,
868,89711,784,11675,841,1,0,N,N,N,CP_Drtn,TT_Task,DT_FixedDUR2,RV_OK,TK_NotStart,A18780,P.C slab on grade 10CM,,168,0,8,0,0,0,8,0,0,0,,,,2010-11-25 08:00,2010-11-25 16:00,,2010-10-27 08:00,2010-10-27 16:00,2010-10-27 08:00,2010-10-27 16:00,2010-10-27 08:00,2010-10-27 16:00,,2010-11-25 08:00,2010-11-25 16:00,,PT_Normal,,,,,3BCpp7i0tEC5MdyszTzF3g,GKDkMLyu20aKpoZoF+W2hQ,,,N,0,0,,,2010-08-08 11:54,2010-08-08 19:24,admin,admin,,,
869,89712,784,11675,841,1,0,N,N,N,CP_Drtn,TT_Task,DT_FixedDUR2,RV_OK,TK_NotStart,A18790,moisture insulation with membrane sheets,,168,0,16,0,0,0,16,0,0,0,,,,2010-11-27 08:00,2010-11-28 16:00,,2010-10-28 08:00,2010-10-30 16:00,2010-10-28 08:00,2010-10-30 16:00,2010-10-28 08:00,2010-10-30 16:00,,2010-11-27 08:00,2010-11-28 16:00,,PT_Normal,,,,,TEXMlrfAEEGk9FkGQEwKjQ,xjUnj/VokEO+rDoLO1X75A,,,N,0,0,,,2010-08-08 11:54,2010-08-08 19:24,admin,admin,,,
870,89713,784,11675,841,1,0,N,N,N,CP_Drtn,TT_Task,DT_FixedDUR2,RV_OK,TK_NotStart,A18800,R.C slab on grade,,168,0,16,0,0,0,16,0,0,0,,,,2010-11-29 08:00,2010-11-30 16:00,,2010-10-31 08:00,2010-11-01 16:00,2010-10-31 08:00,2010-11-01 16:00,2010-10-31 08:00,2010-11-01 16:00,,2010-11-29 08:00,2010-11-30 16:00,,PT_Normal,,,,,E+SKqj7vckeSNTDo/kp+NA,D5wY96RdD0eV5zdc7ycjGQ,,,N,0,0,,,2010-08-08 11:54,2010-08-08 19:24,admin,admin,,,
871,89714,784,11676,841,1,0,N,N,N,CP_Drtn,TT_Task,DT_FixedDUR2,RV_OK,TK_NotStart,A18810,columns for ground floor,,104,0,48,0,0,0,48,0,0,0,,,,2010-09-27 08:00,2010-10-03 16:00,,2010-09-12 08:00,2010-09-18 16:00,2010-09-12 08:00,2010-09-18 16:00,2010-09-12 08:00,2010-09-18 16:00,,2010-09-27 08:00,2010-10-03 16:00,,PT_Normal,,,,,wGhPIAdxu0GX/7bu8GJhoA,elBkqLd2A0q1FX7TY5Ub3w,,,N,0,0,,,2010-08-08 11:54,2010-08-08 19:24,admin,admin,,,
872,89715,784,11676,841,1,0,N,N,N,CP_Drtn,TT_Task,DT_FixedDUR2,RV_OK,TK_NotStart,A18820,slab for ground floor,,104,0,72,0,0,0,72,0,0,0,,,,2010-10-13 08:00,2010-10-23 16:00,,2010-09-28 08:00,2010-10-07 16:00,2010-09-28 08:00,2010-10-07 16:00,2010-09-28 08:00,2010-10-07 16:00,,2010-10-13 08:00,2010-10-23 16:00,,PT_Normal,,,,,ZNHS8YXRUEy3DFLGBmczjA,289x7HU4ZEWz70S3HkcsgA,,,N,0,0,,,2010-08-08 11:54,2010-08-08 19:24,admin,admin,,,
873,89716,784,11676,841,1,0,N,N,N,CP_Drtn,TT_Task,DT_FixedDUR2,RV_OK,TK_NotStart,A18830,columns for 1st floor,,104,0,48,0,0,0,48,0,0,0,,,,2010-10-25 08:00,2010-10-31 16:00,,2010-10-10 08:00,2010-10-16 16:00,2010-10-10 08:00,2010-10-16 16:00,2010-10-10 08:00,2010-10-16 16:00,,2010-10-25 08:00,2010-10-31 16:00,,PT_Normal,,,,,ThHzwyCCzE6/+9cc5NZ8fg,f1QDGtZ1DEavrvMvcczXUg,,,N,0,0,,,2010-08-08 11:54,2010-08-08 19:24,admin,admin,,,
874,89717,784,11676,841,1,0,N,N,N,CP_Drtn,TT_Task,DT_FixedDUR2,RV_OK,TK_NotStart,A18840,slab for 1st floor,,104,0,72,0,0,0,72,0,0,0,,,,2010-11-01 08:00,2010-11-10 16:00,,2010-10-17 08:00,2010-10-26 16:00,2010-10-17 08:00,2010-10-26 16:00,2010-10-17 08:00,2010-10-26 16:00,,2010-11-01 08:00,2010-11-10 16:00,,PT_Normal,,,,,RVoO7M/oXkyJqArBte+a8A,GAJcLh1d60On9/IpGtRaVg,,,N,0,0,,,2010-08-08 11:54,2010-08-08 19:24,admin,admin,,,
875,89718,784,11676,841,1,0,N,N,N,CP_Drtn,TT_Task,DT_FixedDUR2,RV_OK,TK_NotStart,A18850,columns for roof floor,,104,0,32,0,0,0,32,0,0,0,,,,2010-11-20 08:00,2010-11-23 16:00,,2010-10-31 08:00,2010-11-03 16:00,2010-10-31 08:00,2010-11-03 16:00,2010-10-31 08:00,2010-11-03 16:00,,2010-11-20 08:00,2010-11-23 16:00,,PT_Normal,,,,,m7LezR81Fk+V0kU1/N6gyw,jp4aiO9GQE+StMYv8vHC3w,,,N,0,0,,,2010-08-08 11:54,2010-08-08 19:24,admin,admin,,,
876,89719,784,11676,841,1,0,N,N,N,CP_Drtn,TT_Task,DT_FixedDUR2,RV_OK,TK_NotStart,A18860,slab for roof floor,,104,0,48,0,0,0,48,0,0,0,,,,2010-11-24 08:00,2010-11-30 16:00,,2010-11-04 08:00,2010-11-10 16:00,2010-11-04 08:00,2010-11-10 16:00,2010-11-04 08:00,2010-11-10 16:00,,2010-11-24 08:00,2010-11-30 16:00,,PT_Normal,,,,,/7ruO7E530mx24rM252gaQ,S5BlIHJW9Eq14PbJofkreQ,,,N,0,0,,,2010-08-08 11:54,2010-08-08 19:24,admin,admin,,,
877,89720,784,11676,841,1,0,N,N,N,CP_Drtn,TT_Task,DT_FixedDUR2,RV_OK,TK_NotStart,A18870,Brick works for ground floor,,168,0,40,0,0,0,40,0,0,0,,,,2010-11-20 08:00,2010-11-24 16:00,,2010-10-21 08:00,2010-10-26 16:00,2010-10-21 08:00,2010-10-26 16:00,2010-10-21 08:00,2010-10-26 16:00,,2010-11-20 08:00,2010-11-24 16:00,,PT_Normal,,,,,nd/Iw8XaSUqXK1LKkboKQQ,XOtlTSAGNUK2Po7NtSiN9w,,,N,0,0,,,2010-08-08 11:54,2010-08-08 19:24,admin,admin,,,
878,89721,784,11677,841,1,0,N,N,N,CP_Drtn,TT_Task,DT_FixedDrtn,RV_OK,TK_NotStart,A18880,electrical conduits for ground floor's slab,,112,8,16,0,0,0,16,0,0,0,,,,2010-10-19 08:00,2010-10-20 16:00,,2010-10-03 08:00,2010-10-04 16:00,2010-10-03 08:00,2010-10-04 16:00,2010-10-03 08:00,2010-10-04 16:00,,2010-10-19 08:00,2010-10-20 16:00,,PT_Normal,,,,,Q125Y1trxkWH3NVMKl7sMw,79Mm9WcwCEa23bRqkCpinQ,,,N,0,0,,,2010-08-08 11:54,2010-08-08 19:24,admin,admin,,,
879,89722,784,11677,841,1,0,N,N,N,CP_Drtn,TT_Task,DT_FixedDrtn,RV_OK,TK_NotStart,A18890,electrical conduits for 1st floor slab,,112,8,16,0,0,0,16,0,0,0,,,,2010-11-07 08:00,2010-11-08 16:00,,2010-10-21 08:00,2010-10-23 16:00,2010-10-21 08:00,2010-10-23 16:00,2010-10-21 08:00,2010-10-23 16:00,,2010-11-07 08:00,2010-11-08 16:00,,PT_Normal,,,,,yBQSQVunYE+vIuWWf1Ergw,4zYHqlXxr0SFthROuvtXOg,,,N,0,0,,,2010-08-08 11:54,2010-08-08 19:24,admin,admin,,,
880,89723,784,11677,841,1,0,N,N,N,CP_Drtn,TT_Task,DT_FixedDrtn,RV_OK,TK_NotStart,A18900,electrical conduits for roof slab,,112,8,8,0,0,0,8,0,0,0,,,,2010-11-29 08:00,2010-11-29 16:00,,2010-11-08 08:00,2010-11-08 16:00,2010-11-08 08:00,2010-11-08 16:00,2010-11-08 08:00,2010-11-08 16:00,,2010-11-29 08:00,2010-11-29 16:00,,PT_Normal,,,,,ba5vBFdOYUeJUuptS6wMSA,kLnbpEFqdUOrk2hz5th+DQ,,,N,0,0,,,2010-08-08 11:54,2010-08-08 19:24,admin,admin,,,
881,89724,784,11678,841,1,0,N,N,N,CP_Drtn,TT_Task,DT_FixedDUR2,RV_OK,TK_NotStart,A18910,Internal plastering for ground floor,,168,0,64,0,0,0,64,0,0,0,,,,2010-12-05 08:00,2010-12-13 16:00,,2010-11-06 08:00,2010-11-14 16:00,2010-11-06 08:00,2010-11-14 16:00,2010-11-06 08:00,2010-11-14 16:00,,2010-12-05 08:00,2010-12-13 16:00,,PT_Normal,,,,,jGUifAmeKUuZpBpDyAGm4A,OMZDZiAKkEKpwd0J3o+3Bw,,,N,0,0,,,2010-08-08 11:54,2010-08-08 19:24,admin,admin,,,
882,89725,784,11678,841,1,0,N,N,N,CP_Drtn,TT_Task,DT_FixedDUR2,RV_OK,TK_NotStart,A18920,External plastering,,104,0,80,0,0,0,80,0,0,0,,,,2010-12-18 08:00,2010-12-28 16:00,,2010-12-02 08:00,2010-12-13 16:00,2010-12-02 08:00,2010-12-13 16:00,2010-12-02 08:00,2010-12-13 16:00,,2010-12-18 08:00,2010-12-28 16:00,,PT_Normal,,,,,7feOll03qU+JfbVbrsKCyQ,kwMFZJ8u206+HMtFOdPBcw,,,N,0,0,,,2010-08-08 11:54,2010-08-08 19:24,admin,admin,,,
883,89726,784,11677,841,1,0,N,N,N,CP_Drtn,TT_Task,DT_FixedDrtn,RV_OK,TK_NotStart,A18930,plumbing connections under slab on grade,,352,184,16,0,0,0,16,0,0,0,,,,2010-11-23 08:00,2010-11-24 16:00,,2010-09-28 08:00,2010-09-29 16:00,2010-09-28 08:00,2010-09-29 16:00,2010-09-28 08:00,2010-09-29 16:00,,2010-11-23 08:00,2010-11-24 16:00,,PT_Normal,,,,,wuDOprwqQUiCx/vAR6E3UA,LM+me9vmak2AxdVk4PoAyw,,,N,0,0,,,2010-08-08 11:54,2010-08-08 19:24,admin,admin,,,
884,89727,784,11673,841,0,0,N,N,N,CP_Drtn,TT_Mile,DT_FixedDrtn,RV_OK,TK_NotStart,A18940,Start Villa construction,,104,0,0,0,0,0,0,0,0,0,,,,2010-08-28 08:00,2010-08-28 08:00,,2010-08-12 08:00,2010-08-12 08:00,2010-08-12 08:00,2010-08-12 08:00,2010-08-12 08:00,2010-08-12 08:00,,2010-08-28 08:00,2010-08-28 08:00,,PT_Normal,,,,,95h0vG1mSEGIz28hitn9hQ,tPJJ0Yl0vE22JfYGF4KtDg,,,N,0,0,,,2010-08-08 11:54,2010-08-08 19:24,admin,admin,,,
885,89728,784,11673,841,0,0,N,N,N,CP_Drtn,TT_FinMile,DT_FixedDrtn,RV_OK,TK_NotStart,A18950,finish Villa construction,,104,104,0,0,0,0,0,0,0,0,,,,2010-12-28 16:00,2010-12-28 16:00,,2010-12-13 16:00,2010-12-13 16:00,2010-12-13 16:00,2010-12-13 16:00,2010-12-13 16:00,2010-12-13 16:00,,2010-12-28 16:00,2010-12-28 16:00,,PT_Normal,,,,,qpWKVeEvNUGQhkdbsLj0aA,QNALWWtrX0u6Kra6tBf95A,,,N,0,0,,,2010-08-08 11:54,2010-08-08 19:24,admin,admin,,,
886,89729,784,11673,841,0,0,N,N,N,CP_Drtn,TT_Mile,DT_FixedDrtn,RV_OK,TK_NotStart,A18960,IFC drawings,,104,0,0,0,0,0,0,0,0,0,,,,2010-07-06 08:00,2010-07-06 08:00,,2010-06-21 08:00,2010-06-21 08:00,2010-06-21 08:00,2010-06-21 08:00,2010-06-21 08:00,2010-06-21 08:00,,2010-07-06 08:00,2010-07-06 08:00,,PT_Normal,,,,,1P4eHzAC4Eqsw0fcXmlRTQ,PVtWhHm06UuQlpc7ns5ttw,,,N,0,0,,,2010-08-08 11:54,2010-08-08 19:24,admin,admin,,,
887,89730,784,11676,841,1,0,N,N,N,CP_Drtn,TT_Task,DT_FixedDUR2,RV_OK,TK_NotStart,A18970,pouring for ground floor's slab,,104,0,8,0,0,0,8,0,0,0,,,,2010-10-24 08:00,2010-10-24 16:00,,2010-10-09 08:00,2010-10-09 16:00,2010-10-09 08:00,2010-10-09 16:00,2010-10-09 08:00,2010-10-09 16:00,,2010-10-24 08:00,2010-10-24 16:00,,PT_Normal,,,,,QXf2VJE4Q0GoIzx+0IRyaw,zWZG+wfgUkeHr9mxQkwGeA,,,N,0,0,,,2010-08-08 11:54,2010-08-08 19:24,admin,admin,,,
888,89731,784,11676,841,1,0,N,N,N,CP_Drtn,TT_Task,DT_FixedDUR2,RV_OK,TK_NotStart,A18980,pouring for 1st floor's slab,,104,0,8,0,0,0,8,0,0,0,,,,2010-11-11 08:00,2010-11-11 16:00,,2010-10-27 08:00,2010-10-27 16:00,2010-10-27 08:00,2010-10-27 16:00,2010-10-27 08:00,2010-10-27 16:00,,2010-11-11 08:00,2010-11-11 16:00,,PT_Normal,,,,,hFKoBveKpUyuoZouwOJPmA,WdYu9fn0xkaowylwGHD/rQ,,,N,0,0,,,2010-08-08 11:54,2010-08-08 19:24,admin,admin,,,
889,89732,784,11676,841,1,0,N,N,N,CP_Drtn,TT_Task,DT_FixedDUR2,RV_OK,TK_NotStart,A18990,pouring for roof floor's slab,,104,0,8,0,0,0,8,0,0,0,,,,2010-12-01 08:00,2010-12-01 16:00,,2010-11-11 08:00,2010-11-11 16:00,2010-11-11 08:00,2010-11-11 16:00,2010-11-11 08:00,2010-11-11 16:00,,2010-12-01 08:00,2010-12-01 16:00,,PT_Normal,,,,,v7pkC2z04U6pNXCZrNs9fA,xy4gAZ1pm0WWjXVVi6mR/Q,,,N,0,0,,,2010-08-08 11:54,2010-08-08 19:24,admin,admin,,,
890,89733,784,11676,841,1,0,N,N,N,CP_Drtn,TT_Task,DT_FixedDrtn,RV_OK,TK_NotStart,A19000,Fence work,,120,16,400,0,0,0,400,0,0,0,,,,2010-10-27 08:00,2010-12-28 16:00,,2010-10-10 08:00,2010-12-11 16:00,2010-10-10 08:00,2010-12-11 16:00,2010-10-10 08:00,2010-12-11 16:00,,2010-10-27 08:00,2010-12-28 16:00,,PT_Normal,,,,,UIuM7DbMGU+udMngLyfQeA,k9riRD0wckKF5aspoumchA,,,N,0,0,,,2010-08-08 11:54,2010-08-08 19:24,admin,admin,,,
891,89734,784,11673,841,1,0,N,N,N,CP_Drtn,TT_Task,DT_FixedDUR2,RV_OK,TK_NotStart,A19010,Fence Drawings IFC,,432,312,8,0,0,0,8,0,0,0,,,,2010-10-14 08:00,2010-10-14 16:00,,2010-08-12 08:00,2010-08-12 16:00,2010-08-12 08:00,2010-08-12 16:00,2010-08-12 08:00,2010-08-12 16:00,,2010-10-14 08:00,2010-10-14 16:00,,PT_Normal,,,,,efSJlW6CAEeibjeoYN7i8g,4/+065BVAk2V03a+c4Segw,,,N,0,0,,,2010-08-08 11:54,2010-08-08 19:24,admin,admin,,,
892,89735,784,11675,873,1,0,N,N,N,CP_Drtn,TT_Task,DT_FixedDUR2,RV_OK,TK_NotStart,A19020,backfilling between P.C Foundation,,72,0,16,0,0,0,16,0,0,0,,,,2010-09-16 08:00,2010-09-18 16:00,,2010-09-01 08:00,2010-09-02 16:00,2010-09-01 08:00,2010-09-02 16:00,2010-09-01 08:00,2010-09-02 16:00,,2010-09-16 08:00,2010-09-18 16:00,,PT_Normal,,,,,QOSM5wmrGUGMcAA6BVTzDw,E7TpOVGPZEOjXV7AnczScQ,,,N,0,0,,,2010-08-08 11:54,2010-08-08 19:24,admin,admin,,,
893,89736,784,11676,873,1,0,N,N,N,CP_Drtn,TT_Task,DT_FixedDUR2,RV_OK,TK_NotStart,A19040,Brick works for 1st floor,,184,0,40,0,0,0,40,0,0,0,,,,2010-12-06 08:00,2010-12-11 16:00,,2010-11-09 08:00,2010-11-14 16:00,2010-11-09 08:00,2010-11-14 16:00,2010-11-09 08:00,2010-11-14 16:00,,2010-12-06 08:00,2010-12-11 16:00,,PT_Normal,,,,,QZepP5WCeUOylBHvOIwgKw,nmnqc1r6DkOmh0XUrMSJAQ,,,N,0,0,,,2010-08-08 11:54,2010-08-08 19:24,admin,admin,,,
894,89737,784,11676,873,1,0,N,N,N,CP_Drtn,TT_Task,DT_FixedDUR2,RV_OK,TK_NotStart,A19050,Brick works for roof floor,,104,0,40,0,0,0,40,0,0,0,,,,2010-12-12 08:00,2010-12-16 16:00,,2010-11-27 08:00,2010-12-01 16:00,2010-11-27 08:00,2010-12-01 16:00,2010-11-27 08:00,2010-12-01 16:00,,2010-12-12 08:00,2010-12-16 16:00,,PT_Normal,,,,,/1meOF+8gUW4l+Wy11CrpA,2g61MSRZMECip5cK1jgxOA,,,N,0,0,,,2010-08-08 11:54,2010-08-08 19:24,admin,admin,,,
895,89738,784,11678,873,1,0,N,N,N,CP_Drtn,TT_Task,DT_FixedDUR2,RV_OK,TK_NotStart,A19060,Internal plastering for 1st floor,,184,56,64,0,0,0,64,0,0,0,,,,2010-12-14 08:00,2010-12-22 16:00,,2010-11-17 08:00,2010-11-25 16:00,2010-11-17 08:00,2010-11-25 16:00,2010-11-17 08:00,2010-11-25 16:00,,2010-12-14 08:00,2010-12-22 16:00,,PT_Normal,,,,,Eg2fqWBXUkGsumszLMT+gg,Gb9H5c91G0CmED9an13Vig,,,N,0,0,,,2010-08-08 11:54,2010-08-08 19:24,admin,admin,,,
896,89739,784,11678,873,1,0,N,N,N,CP_Drtn,TT_Task,DT_FixedDUR2,RV_OK,TK_NotStart,A19070,Internal plastering for roof floor,,128,24,40,0,0,0,40,0,0,0,,,,2010-12-23 08:00,2010-12-28 16:00,,2010-12-05 08:00,2010-12-09 16:00,2010-12-05 08:00,2010-12-09 16:00,2010-12-05 08:00,2010-12-09 16:00,,2010-12-23 08:00,2010-12-28 16:00,,PT_Normal,,,,,eKq80yvrrEO2LNhzhfp7Pw,1xNEiFA7/Ee9LUh8RzqDWg,,,N,0,0,,,2010-08-08 11:54,2010-08-08 19:24,admin,admin,,,
897,89740,784,11677,873,1,0,N,N,N,CP_Drtn,TT_Task,DT_FixedDUR2,RV_OK,TK_NotStart,A19080,electrical conduits for ground floor walls,,200,0,16,0,0,0,16,0,0,0,,,,2010-12-02 08:00,2010-12-04 16:00,,2010-11-03 08:00,2010-11-04 16:00,2010-11-03 08:00,2010-11-04 16:00,2010-11-03 08:00,2010-11-04 16:00,,2010-12-02 08:00,2010-12-04 16:00,,PT_Normal,,,,,D8dqgsymrU2Wq0ZHHDQjUw,ShXgUMesDk2KmqYhFppN+A,,,N,0,0,,,2010-08-08 11:54,2010-08-08 19:24,admin,admin,,,
898,89741,784,11677,873,1,0,N,N,N,CP_Drtn,TT_Task,DT_FixedDUR2,RV_OK,TK_NotStart,A19090,electrical conduits for 1st floor walls,,184,0,16,0,0,0,16,0,0,0,,,,2010-12-12 08:00,2010-12-13 16:00,,2010-11-15 08:00,2010-11-16 16:00,2010-11-15 08:00,2010-11-16 16:00,2010-11-15 08:00,2010-11-16 16:00,,2010-12-12 08:00,2010-12-13 16:00,,PT_Normal,,,,,zw7nsoEbi02x87PNjzpWHA,frHqUIpWHkmv2uR4vi/rYQ,,,N,0,0,,,2010-08-08 11:54,2010-08-08 19:24,admin,admin,,,
899,89742,784,11677,873,1,0,N,N,N,CP_Drtn,TT_Task,DT_FixedDUR2,RV_OK,TK_NotStart,A19100,electrical conduits for roof floor walls,,128,0,16,0,0,0,16,0,0,0,,,,2010-12-21 08:00,2010-12-22 16:00,,2010-12-02 08:00,2010-12-04 16:00,2010-12-02 08:00,2010-12-04 16:00,2010-12-02 08:00,2010-12-04 16:00,,2010-12-21 08:00,2010-12-22 16:00,,PT_Normal,,,,,WBAXUgBK00Sm1ix3ypRDow,uIFz5dg5vUWlmlvgOsc8RA,,,N,0,0,,,2010-08-08 11:54,2010-08-08 19:24,admin,admin,,,
