,task_id,proj_id,wbs_id,clndr_id,est_wt,phys_complete_pct,rev_fdbk_flag,lock_plan_flag,auto_compute_act_flag,complete_pct_type,task_type,duration_type,review_type,status_code,task_code,task_name,rsrc_id,total_float_hr_cnt,free_float_hr_cnt,remain_drtn_hr_cnt,act_work_qty,remain_work_qty,target_work_qty,target_drtn_hr_cnt,target_equip_qty,act_equip_qty,remain_equip_qty,cstr_date,act_start_date,act_end_date,late_start_date,late_end_date,expect_end_date,early_start_date,early_end_date,restart_date,reend_date,target_start_date,target_end_date,review_end_date,rem_late_start_date,rem_late_end_date,cstr_type,priority_type,suspend_date,resume_date,float_path,float_path_order,guid,tmpl_guid,cstr_date2,cstr_type2,driving_path_flag,act_this_per_work_qty,act_this_per_equip_qty,external_early_start_date,external_late_end_date,create_date,update_date,create_user,update_user
0,88346,1340,12027,1671,1,0,N,N,N,CP_Drtn,TT_Task,DT_FixedDrtn,RV_OK,TK_NotStart,SD 100,Shop Drawings submittal,,40,0,80,0,0,0,80,0,0,0,,,,2012-01-20 08:00,2012-01-29 16:00,,2012-01-15 08:00,2012-01-24 16:00,2012-01-15 08:00,2012-01-24 16:00,2012-01-15 08:00,2012-01-24 16:00,,2012-01-20 08:00,2012-01-29 16:00,,PT_Normal,,,,,5DdtdwtWGUWJvEeMa1iCrA,JIzrv/VjjkWyJQ9CFmnssg,,,N,0,0,,,2011-12-08 16:07,2011-12-08 16:59,admin,admin
1,88347,1340,12027,1671,1,0,N,N,N,CP_Drtn,TT_Task,DT_FixedDUR2,RV_OK,TK_NotStart,SD 150,Shop Drawings Approval,,40,0,80,0,0,0,80,0,0,0,,,,2012-01-25 08:00,2012-02-03 16:00,,2012-01-20 08:00,2012-01-29 16:00,2012-01-20 08:00,2012-01-29 16:00,2012-01-20 08:00,2012-01-29 16:00,,2012-01-25 08:00,2012-02-03 16:00,,PT_Normal,,,,,C9IQcGGhoEKSc2joU5t/bQ,LPONaTkfk0C4rYXBaiUmMQ,,,N,0,0,,,2011-12-08 16:07,2011-12-08 16:59,admin,admin
2,88348,1340,12024,1671,1,0,N,N,N,CP_Drtn,TT_Task,DT_FixedDrtn,RV_OK,TK_NotStart,SD 120,Shop Drawings submittal,,128,0,56,0,0,0,56,0,0,0,,,,2012-02-15 08:00,2012-02-21 16:00,,2012-01-30 08:00,2012-02-05 16:00,2012-01-30 08:00,2012-02-05 16:00,2012-01-30 08:00,2012-02-05 16:00,,2012-02-15 08:00,2012-02-21 16:00,,PT_Normal,,,,,7CY+fJVbkk6X40iIG+pF7g,OskgUfzcnEKHX/JlSyqFyA,,,N,0,0,,,2011-12-08 16:07,2011-12-08 16:59,admin,admin
3,88349,1340,12024,1671,1,0,N,N,N,CP_Drtn,TT_Task,DT_FixedDUR2,RV_OK,TK_NotStart,SD 180,Shop Drawings Approval,,128,0,56,0,0,0,56,0,0,0,,,,2012-02-22 08:00,2012-02-28 16:00,,2012-02-06 08:00,2012-02-12 16:00,2012-02-06 08:00,2012-02-12 16:00,2012-02-06 08:00,2012-02-12 16:00,,2012-02-22 08:00,2012-02-28 16:00,,PT_Normal,,,,,8zfBLfeK7UqKUDHzdzEeCA,+OdwDwWP70irQOKORbC+gw,,,N,0,0,,,2011-12-08 16:07,2011-12-08 16:59,admin,admin
4,88350,1340,12026,1671,1,0,N,N,N,CP_Drtn,TT_Task,DT_FixedDUR2,RV_OK,TK_NotStart,A1000,Excavation Works,,8,0,48,0,0,0,48,0,0,0,,,,2012-04-28 08:00,2012-05-03 16:00,,2012-04-27 08:00,2012-05-02 16:00,2012-04-27 08:00,2012-05-02 16:00,2012-04-27 08:00,2012-05-02 16:00,,2012-04-28 08:00,2012-05-03 16:00,,PT_Normal,,,,,LiRlnnnvSkmcuw7DJ8pjcQ,1vOLRG3SzUiUUlnygTVYCQ,,,N,0,0,,,2011-12-08 16:07,2011-12-08 17:01,admin,admin
5,88351,1340,12026,1671,1,0,N,N,N,CP_Drtn,TT_Task,DT_FixedDUR2,RV_OK,TK_NotStart,A1020,Backfill Works,,8,8,32,0,0,0,32,0,0,0,,,,2012-05-28 08:00,2012-05-31 16:00,,2012-05-27 08:00,2012-05-30 16:00,2012-05-27 08:00,2012-05-30 16:00,2012-05-27 08:00,2012-05-30 16:00,,2012-05-28 08:00,2012-05-31 16:00,,PT_Normal,,,,,39R24KmHuE+e3qSZAK4Rzg,YrjfIsInP06eacLXtnS7iw,,,N,0,0,,,2011-12-08 16:07,2011-12-08 17:01,admin,admin
6,88352,1340,12019,1671,0,0,N,N,N,CP_Drtn,TT_Mile,DT_FixedDrtn,RV_OK,TK_NotStart,A1040,Project Start,,0,0,0,0,0,0,0,0,0,0,,,,2012-01-01 08:00,2012-01-01 08:00,,2012-01-01 08:00,2012-01-01 08:00,2012-01-01 08:00,2012-01-01 08:00,2012-01-01 08:00,2012-01-01 08:00,,2012-01-01 08:00,2012-01-01 08:00,,PT_Normal,,,,,A/9JJLIRGECHpi9KRrxbPA,j/6ZSyZdTESjph24wLiI0A,,,Y,0,0,,,2011-12-08 16:07,2011-12-08 16:07,admin,admin
7,88353,1340,12019,1671,0,0,N,N,N,CP_Drtn,TT_FinMile,DT_FixedDrtn,RV_OK,TK_NotStart,A1050,Project Finish,,0,0,0,0,0,0,0,0,0,0,,,,2012-05-31 16:00,2012-05-31 16:00,,2012-05-31 16:00,2012-05-31 16:00,2012-05-31 16:00,2012-05-31 16:00,2012-05-31 16:00,2012-05-31 16:00,,2012-05-31 16:00,2012-05-31 16:00,,PT_Normal,,,,,M6dXQXX4YkCArI9jXCw5OA,RJFT6p9q0UC+SBosVSLldg,,,Y,0,0,,,2011-12-08 16:07,2011-12-08 17:01,admin,admin
8,88354,1340,12031,1671,1,0,N,N,N,CP_Drtn,TT_Task,DT_FixedDUR2,RV_OK,TK_NotStart,A1070,Plain Concrete For Footings,,8,0,32,0,0,0,32,0,0,0,,,,2012-05-04 08:00,2012-05-07 16:00,,2012-05-03 08:00,2012-05-06 16:00,2012-05-03 08:00,2012-05-06 16:00,2012-05-03 08:00,2012-05-06 16:00,,2012-05-04 08:00,2012-05-07 16:00,,PT_Normal,,,,,6khVPWGDQkqOpXH0IZNCbQ,9Ua2PYdTtE+ofRHN5gVfkg,,,N,0,0,,,2011-12-08 16:07,2011-12-08 17:01,admin,admin
9,88355,1340,12031,1671,1,0,N,N,N,CP_Drtn,TT_Task,DT_FixedDUR2,RV_OK,TK_NotStart,A1080,Reinforced Concrete For Footings,,8,0,48,0,0,0,48,0,0,0,,,,2012-05-08 08:00,2012-05-13 16:00,,2012-05-07 08:00,2012-05-12 16:00,2012-05-07 08:00,2012-05-12 16:00,2012-05-07 08:00,2012-05-12 16:00,,2012-05-08 08:00,2012-05-13 16:00,,PT_Normal,,,,,GVY1M2idB0eZgIVomGdnZQ,fdMwZWGB6kuVEv+wMTRBdg,,,N,0,0,,,2011-12-08 16:07,2011-12-08 17:01,admin,admin
10,88356,1340,12031,1671,1,0,N,N,N,CP_Drtn,TT_Task,DT_FixedDUR2,RV_OK,TK_NotStart,A1130,Floor Reinforced Concrete At Levet (+5.70),,0,0,200,0,0,0,200,0,0,0,,,,2012-02-04 08:00,2012-02-28 16:00,,2012-02-04 08:00,2012-02-28 16:00,2012-02-04 08:00,2012-02-28 16:00,2012-02-04 08:00,2012-02-28 16:00,,2012-02-04 08:00,2012-02-28 16:00,,PT_Normal,,,,,ATcbjZk2lUCJ3TBOGGysAQ,auTio7Ahw0C5R0ki8gX5uw,,,Y,0,0,,,2011-12-08 16:07,2011-12-08 16:59,admin,admin
11,88357,1340,12028,1671,1,0,N,N,N,CP_Drtn,TT_Task,DT_FixedDUR2,RV_OK,TK_NotStart,A1210,Masonry Works,,0,0,120,0,0,0,120,0,0,0,,,,2012-02-29 08:00,2012-03-14 16:00,,2012-02-29 08:00,2012-03-14 16:00,2012-02-29 08:00,2012-03-14 16:00,2012-02-29 08:00,2012-03-14 16:00,,2012-02-29 08:00,2012-03-14 16:00,,PT_Normal,,,,,NCs8/UcON0WE+DH8cbcyNw,M6lNj4vfSk6vTY4FYQbWaQ,,,Y,0,0,,,2011-12-08 16:07,2011-12-08 16:59,admin,admin
12,88358,1340,12025,1671,1,0,N,N,N,CP_Drtn,TT_Task,DT_FixedDrtn,RV_OK,TK_NotStart,SD 260,Shop Drawings submittal,,248,0,80,0,0,0,80,0,0,0,,,,2012-04-14 08:00,2012-04-23 16:00,,2012-03-14 08:00,2012-03-23 16:00,2012-03-14 08:00,2012-03-23 16:00,2012-03-14 08:00,2012-03-23 16:00,,2012-04-14 08:00,2012-04-23 16:00,,PT_Normal,,,,,A+0N/59n40utD9c3UBnVwQ,QO9bdjm4DEWWju00OO7gyw,,,N,0,0,,,2011-12-08 16:07,2011-12-08 17:01,admin,admin
13,88359,1340,12025,1671,1,0,N,N,N,CP_Drtn,TT_Task,DT_FixedDUR2,RV_OK,TK_NotStart,SD 270,Shop Drawings Approval,,248,0,80,0,0,0,80,0,0,0,,,,2012-04-24 08:00,2012-05-03 16:00,,2012-03-24 08:00,2012-04-02 16:00,2012-03-24 08:00,2012-04-02 16:00,2012-03-24 08:00,2012-04-02 16:00,,2012-04-24 08:00,2012-05-03 16:00,,PT_Normal,,,,,FaGZKmxp90ePHqYESZ0MuQ,Bgv6EdnxskOGwffQ4mZwdw,,,N,0,0,,,2011-12-08 16:07,2011-12-08 17:01,admin,admin
14,88360,1340,12032,1671,1,0,N,N,N,CP_Drtn,TT_Task,DT_FixedDUR2,RV_OK,TK_NotStart,A1250,Internal Plastering,,0,0,160,0,0,0,160,0,0,0,,,,2012-04-03 08:00,2012-04-22 16:00,,2012-04-03 08:00,2012-04-22 16:00,2012-04-03 08:00,2012-04-22 16:00,2012-04-03 08:00,2012-04-22 16:00,,2012-04-03 08:00,2012-04-22 16:00,,PT_Normal,,,,,41aNtzx2LUq0onRb6w6zhw,DMcdNpFEvEm4StuSSBX5Aw,,,Y,0,0,,,2011-12-08 16:07,2011-12-08 16:59,admin,admin
15,88361,1340,12033,1671,1,0,N,N,N,CP_Drtn,TT_Task,DT_FixedDUR2,RV_OK,TK_NotStart,A1260,Doors  erection,,24,24,112,0,0,0,112,0,0,0,,,,2012-05-18 08:00,2012-05-31 16:00,,2012-05-15 08:00,2012-05-28 16:00,2012-05-15 08:00,2012-05-28 16:00,2012-05-15 08:00,2012-05-28 16:00,,2012-05-18 08:00,2012-05-31 16:00,,PT_Normal,,,,,5MHm7DUcG0e6gmlUVbI3Gw,Mrv4WLvEc0i06mWKlyt8Ww,,,N,0,0,,,2011-12-08 16:07,2011-12-08 17:01,admin,admin
16,88362,1340,12032,1671,1,0,N,N,N,CP_Drtn,TT_Task,DT_FixedDUR2,RV_OK,TK_NotStart,A1270,EXternal Plastering,,0,0,160,0,0,0,160,0,0,0,,,,2012-04-25 08:00,2012-05-14 16:00,,2012-04-25 08:00,2012-05-14 16:00,2012-04-25 08:00,2012-05-14 16:00,2012-04-25 08:00,2012-05-14 16:00,,2012-04-25 08:00,2012-05-14 16:00,,PT_Normal,,,,,lLgc0gWSak2ihmUEcF521g,5SQBS01Sg02eua4UjDKz7A,,,Y,0,0,,,2011-12-08 16:07,2011-12-08 17:01,admin,admin
17,88363,1340,12032,1671,1,0,N,N,N,CP_Drtn,TT_Task,DT_FixedDUR2,RV_OK,TK_NotStart,A1280,Internal Painting,,0,0,120,0,0,0,120,0,0,0,,,,2012-05-17 08:00,2012-05-31 16:00,,2012-05-17 08:00,2012-05-31 16:00,2012-05-17 08:00,2012-05-31 16:00,2012-05-17 08:00,2012-05-31 16:00,,2012-05-17 08:00,2012-05-31 16:00,,PT_Normal,,,,,tPArkjaPeUSomfspaKyDuw,5sMmr++so0iqYfsPxVkaNw,,,Y,0,0,,,2011-12-08 16:07,2011-12-08 17:01,admin,admin
18,88364,1340,12034,1671,1,0,N,N,N,CP_Drtn,TT_Task,DT_FixedDUR2,RV_OK,TK_NotStart,A1340,Supply works,,248,248,160,0,0,0,160,0,0,0,,,,2012-05-04 08:00,2012-05-23 16:00,,2012-04-03 08:00,2012-04-22 16:00,2012-04-03 08:00,2012-04-22 16:00,2012-04-03 08:00,2012-04-22 16:00,,2012-05-04 08:00,2012-05-23 16:00,,PT_Normal,,,,,arlGY/xnlEOxPi5QKPDEHg,1oE9uEbx6Eeu/jTfBSVR0w,,,N,0,0,,,2011-12-08 16:07,2011-12-08 17:01,admin,admin
19,88365,1340,12034,1671,1,0,N,N,N,CP_Drtn,TT_Task,DT_FixedDUR2,RV_OK,TK_NotStart,A1350,Drainage works,,0,0,160,0,0,0,160,0,0,0,,,,2012-05-04 08:00,2012-05-23 16:00,,2012-05-04 08:00,2012-05-23 16:00,2012-05-04 08:00,2012-05-23 16:00,2012-05-04 08:00,2012-05-23 16:00,,2012-05-04 08:00,2012-05-23 16:00,,PT_Normal,,,,,PJcD5RPUxk+in/37H+x4VQ,wecgukJwAk6bLj1qtEnc7A,,,Y,0,0,,,2011-12-08 16:07,2011-12-08 17:01,admin,admin
20,88366,1340,12031,1671,1,0,N,N,N,CP_Drtn,TT_Task,DT_FixedDUR2,RV_OK,TK_NotStart,A1140,Floor Reinforced Concrete At Levet (+10.30),,0,0,96,0,0,0,96,0,0,0,,,,2012-03-15 08:00,2012-03-26 16:00,,2012-03-15 08:00,2012-03-26 16:00,2012-03-15 08:00,2012-03-26 16:00,2012-03-15 08:00,2012-03-26 16:00,,2012-03-15 08:00,2012-03-26 16:00,,PT_Normal,,,,,cU4ZS2FKqkC1ybHii2XW1g,Oy2Z3UiqkU6dOVntBEJQ0A,,,Y,0,0,,,2011-12-08 16:07,2011-12-08 16:59,admin,admin
21,88367,1340,12020,1671,1,0,N,N,N,CP_Drtn,TT_Task,DT_FixedDUR2,RV_OK,TK_NotStart,A1360,Mobilization,,0,0,56,0,0,0,56,0,0,0,,,,2012-01-01 08:00,2012-01-07 16:00,,2012-01-01 08:00,2012-01-07 16:00,2012-01-01 08:00,2012-01-07 16:00,2012-01-01 08:00,2012-01-07 16:00,,2012-01-01 08:00,2012-01-07 16:00,,PT_Normal,,,,,eslePGU3BEyr03dUteCrEA,,,,Y,0,0,,,2011-12-08 16:07,2011-12-08 17:06,admin,admin
22,88368,1340,12020,1671,1,0,N,N,N,CP_Drtn,TT_Task,DT_FixedDUR2,RV_OK,TK_NotStart,A1370,Steel Fence & Signboards,,0,0,56,0,0,0,56,0,0,0,,,,2012-01-08 08:00,2012-01-14 16:00,,2012-01-08 08:00,2012-01-14 16:00,2012-01-08 08:00,2012-01-14 16:00,2012-01-08 08:00,2012-01-14 16:00,,2012-01-08 08:00,2012-01-14 16:00,,PT_Normal,,,,,LLN/hR2zvki5sb+ku2GBVg,,,,Y,0,0,,,2011-12-08 16:07,2011-12-08 16:14,admin,admin
23,88369,1340,12022,1671,1,0,N,N,N,CP_Drtn,TT_Task,DT_FixedDUR2,RV_OK,TK_NotStart,A1380,Demolishing & Removing Asphalt Layers,,0,0,80,0,0,0,80,0,0,0,,,,2012-04-24 08:00,2012-05-03 16:00,,2012-04-24 08:00,2012-05-03 16:00,2012-04-24 08:00,2012-05-03 16:00,2012-04-24 08:00,2012-05-03 16:00,,2012-04-24 08:00,2012-05-03 16:00,,PT_Normal,,,,,82M/A30s0UiuNFfhL0+azg,,,,Y,0,0,,,2011-12-08 16:07,2011-12-08 17:01,admin,admin
24,88370,1340,12022,1671,1,0,N,N,N,CP_Drtn,TT_Task,DT_FixedDUR2,RV_OK,TK_NotStart,A1390,Demolishing & Removing R.C Floor Concrete,,8,0,80,0,0,0,80,0,0,0,,,,2012-04-18 08:00,2012-04-27 16:00,,2012-04-17 08:00,2012-04-26 16:00,2012-04-17 08:00,2012-04-26 16:00,2012-04-17 08:00,2012-04-26 16:00,,2012-04-18 08:00,2012-04-27 16:00,,PT_Normal,,,,,OOvE3ZH5WEOFmSxuKsoQ+Q,,,,N,0,0,,,2011-12-08 16:07,2011-12-08 17:01,admin,admin
25,88371,1340,12022,1671,1,0,N,N,N,CP_Drtn,TT_Task,DT_FixedDUR2,RV_OK,TK_NotStart,A1400,Demolishing & Removing  Roof Tiles,,0,0,80,0,0,0,80,0,0,0,,,,2012-01-15 08:00,2012-01-24 16:00,,2012-01-15 08:00,2012-01-24 16:00,2012-01-15 08:00,2012-01-24 16:00,2012-01-15 08:00,2012-01-24 16:00,,2012-01-15 08:00,2012-01-24 16:00,,PT_Normal,,,,,99p5KYnn2kq13PD0uT5HBQ,,,,Y,0,0,,,2011-12-08 16:07,2011-12-08 16:59,admin,admin
26,88372,1340,12022,1671,1,0,N,N,N,CP_Drtn,TT_Task,DT_FixedDUR2,RV_OK,TK_NotStart,A1410,Demolishing & Removing  Roof R.C Bed Stales (26),,0,0,80,0,0,0,80,0,0,0,,,,2012-01-25 08:00,2012-02-03 16:00,,2012-01-25 08:00,2012-02-03 16:00,2012-01-25 08:00,2012-02-03 16:00,2012-01-25 08:00,2012-02-03 16:00,,2012-01-25 08:00,2012-02-03 16:00,,PT_Normal,,,,,L18VOtTnskS07Wr8UtrVuA,,,,Y,0,0,,,2011-12-08 16:07,2011-12-08 16:59,admin,admin
27,88373,1340,12031,1671,1,0,N,N,N,CP_Drtn,TT_Task,DT_FixedDUR2,RV_OK,TK_NotStart,A1150,Concrete Coves,,72,72,80,0,0,0,80,0,0,0,,,,2012-05-07 08:00,2012-05-16 16:00,,2012-04-28 08:00,2012-05-07 16:00,2012-04-28 08:00,2012-05-07 16:00,2012-04-28 08:00,2012-05-07 16:00,,2012-05-07 08:00,2012-05-16 16:00,,PT_Normal,,,,,OhTZXP4omUKXoENn0McWjw,,,,N,0,0,,,2011-12-08 16:07,2011-12-08 17:01,admin,admin
28,88374,1340,12029,1671,1,0,N,N,N,CP_Drtn,TT_Task,DT_FixedDUR2,RV_OK,TK_NotStart,A3530,Cold Bitumen For UnderGround,,8,0,32,0,0,0,32,0,0,0,,,,2012-05-14 08:00,2012-05-17 16:00,,2012-05-13 08:00,2012-05-16 16:00,2012-05-13 08:00,2012-05-16 16:00,2012-05-13 08:00,2012-05-16 16:00,,2012-05-14 08:00,2012-05-17 16:00,,PT_Normal,,,,,hLVjakO2cUeDsvagNkCM/w,6ODYFYlh0kOZsIXvYBP2Cg,,,N,0,0,,,2011-12-08 16:07,2011-12-08 17:01,admin,admin
29,88375,1340,12029,1671,1,0,N,N,N,CP_Drtn,TT_Task,DT_FixedDUR2,RV_OK,TK_NotStart,A3670,Insulation For Concrete  Roof,,472,472,56,0,0,0,56,0,0,0,,,,2012-05-25 08:00,2012-05-31 16:00,,2012-03-27 08:00,2012-04-02 16:00,2012-03-27 08:00,2012-04-02 16:00,2012-03-27 08:00,2012-04-02 16:00,,2012-05-25 08:00,2012-05-31 16:00,,PT_Normal,,,,,BJLNjfHGEk2O6hEgHUmDJg,ajLZml2cwk2HCTIzRKEzOw,,,N,0,0,,,2011-12-08 16:07,2011-12-08 17:01,admin,admin
30,88376,1340,12034,1671,1,0,N,N,N,CP_Drtn,TT_Task,DT_FixedDUR2,RV_OK,TK_NotStart,A1420,Sanitary Ware Erection,,0,0,64,0,0,0,64,0,0,0,,,,2012-05-24 08:00,2012-05-31 16:00,,2012-05-24 08:00,2012-05-31 16:00,2012-05-24 08:00,2012-05-31 16:00,2012-05-24 08:00,2012-05-31 16:00,,2012-05-24 08:00,2012-05-31 16:00,,PT_Normal,,,,,lYMq1vadw0K4EwknZoZtBw,,,,Y,0,0,,,2011-12-08 16:07,2011-12-08 17:01,admin,admin
31,88377,1340,12033,1671,1,0,N,N,N,CP_Drtn,TT_Task,DT_FixedDUR2,RV_OK,TK_NotStart,A3680,Windows erection,,24,24,112,0,0,0,112,0,0,0,,,,2012-05-18 08:00,2012-05-31 16:00,,2012-05-15 08:00,2012-05-28 16:00,2012-05-15 08:00,2012-05-28 16:00,2012-05-15 08:00,2012-05-28 16:00,,2012-05-18 08:00,2012-05-31 16:00,,PT_Normal,,,,,6axbrSXVY0GQ0S+bExfUSQ,,,,N,0,0,,,2011-12-08 16:07,2011-12-08 17:01,admin,admin
32,88378,1340,12032,1671,1,0,N,N,N,CP_Drtn,TT_Task,DT_FixedDUR2,RV_OK,TK_NotStart,A1290,Dry Mix Painting,,0,0,120,0,0,0,120,0,0,0,,,,2012-05-17 08:00,2012-05-31 16:00,,2012-05-17 08:00,2012-05-31 16:00,2012-05-17 08:00,2012-05-31 16:00,2012-05-17 08:00,2012-05-31 16:00,,2012-05-17 08:00,2012-05-31 16:00,,PT_Normal,,,,,eDXuBucb1Em7L5zLAuyDqQ,,,,Y,0,0,,,2011-12-08 16:07,2011-12-08 17:01,admin,admin
33,88379,1340,12032,1671,1,0,N,N,N,CP_Drtn,TT_Task,DT_FixedDUR2,RV_OK,TK_NotStart,A1300,Flooring Works,,0,0,160,0,0,0,160,0,0,0,,,,2012-04-23 08:00,2012-05-12 16:00,,2012-04-23 08:00,2012-05-12 16:00,2012-04-23 08:00,2012-05-12 16:00,2012-04-23 08:00,2012-05-12 16:00,,2012-04-23 08:00,2012-05-12 16:00,,PT_Normal,,,,,cm4tHeNzqUajrZivZfA7Ng,,,,Y,0,0,,,2011-12-08 16:07,2011-12-08 17:01,admin,admin
34,88380,1340,12032,1671,1,0,N,N,N,CP_Drtn,TT_Task,DT_FixedDUR2,RV_OK,TK_NotStart,A1310,False Ceiling,,0,0,200,0,0,0,200,0,0,0,,,,2012-04-28 08:00,2012-05-22 16:00,,2012-04-28 08:00,2012-05-22 16:00,2012-04-28 08:00,2012-05-22 16:00,2012-04-28 08:00,2012-05-22 16:00,,2012-04-28 08:00,2012-05-22 16:00,,PT_Normal,,,,,CV4E1g709k+EFWtDK9+HGg,,,,Y,0,0,,,2011-12-08 16:07,2011-12-08 17:01,admin,admin
35,88381,1340,12032,1671,1,0,N,N,N,CP_Drtn,TT_Task,DT_FixedDUR2,RV_OK,TK_NotStart,A1320,Partitions,,32,32,120,0,0,0,120,0,0,0,,,,2012-05-17 08:00,2012-05-31 16:00,,2012-05-13 08:00,2012-05-27 16:00,2012-05-13 08:00,2012-05-27 16:00,2012-05-13 08:00,2012-05-27 16:00,,2012-05-17 08:00,2012-05-31 16:00,,PT_Normal,,,,,HvQVKwxI6kKualju/y/RdQ,,,,N,0,0,,,2011-12-08 16:07,2011-12-08 17:01,admin,admin
36,88396,1340,12032,1671,1,0,N,N,N,CP_Drtn,TT_Task,DT_FixedDUR2,RV_OK,TK_NotStart,A1330,Epoxy Painting,,32,32,120,0,0,0,120,0,0,0,,,,2012-05-17 08:00,2012-05-31 16:00,,2012-05-13 08:00,2012-05-27 16:00,2012-05-13 08:00,2012-05-27 16:00,2012-05-13 08:00,2012-05-27 16:00,,2012-05-17 08:00,2012-05-31 16:00,,PT_Normal,,,,,N+rahZAVf0KoTK096CYkKA,,,,N,0,0,,,2011-12-08 16:35,2011-12-08 17:01,admin,admin
