,task_id,proj_id,wbs_id,clndr_id,est_wt,phys_complete_pct,rev_fdbk_flag,lock_plan_flag,auto_compute_act_flag,complete_pct_type,task_type,duration_type,review_type,status_code,task_code,task_name,rsrc_id,total_float_hr_cnt,free_float_hr_cnt,remain_drtn_hr_cnt,act_work_qty,remain_work_qty,target_work_qty,target_drtn_hr_cnt,target_equip_qty,act_equip_qty,remain_equip_qty,cstr_date,act_start_date,act_end_date,late_start_date,late_end_date,expect_end_date,early_start_date,early_end_date,restart_date,reend_date,target_start_date,target_end_date,review_end_date,rem_late_start_date,rem_late_end_date,cstr_type,priority_type,suspend_date,resume_date,float_path,float_path_order,guid,tmpl_guid,cstr_date2,cstr_type2,driving_path_flag,act_this_per_work_qty,act_this_per_equip_qty,external_early_start_date,external_late_end_date,create_date,update_date,create_user,update_user
0,89974,1594,12808,1772,1,0,N,N,N,CP_Drtn,TT_Task,DT_FixedDUR2,RV_OK,TK_NotStart,A1000,Excavation,,2920,0,16,0,0,0,16,0,0,0,,,,2013-11-25 08:00,2013-11-26 16:00,,2012-09-25 08:00,2012-09-26 16:00,2012-09-25 08:00,2012-09-26 16:00,2012-09-25 08:00,2012-09-26 16:00,,2013-11-25 08:00,2013-11-26 16:00,,PT_Normal,,,,,m46KdPPFnESLTJHCSUu1PQ,,,,N,0,0,,,2012-01-05 11:03,2012-01-23 18:19,admin,admin
1,89975,1594,12808,1772,1,0,N,N,N,CP_Drtn,TT_Task,DT_FixedDUR2,RV_OK,TK_NotStart,A1010,Foundation,,2920,0,40,0,0,0,40,0,0,0,,,,2013-11-27 08:00,2013-12-02 16:00,,2012-09-27 08:00,2012-10-02 16:00,2012-09-27 08:00,2012-10-02 16:00,2012-09-27 08:00,2012-10-02 16:00,,2013-11-27 08:00,2013-12-02 16:00,,PT_Normal,,,,,Bs7CZok/oU65iMtSN+2WCQ,,,,N,0,0,,,2012-01-05 11:03,2012-01-23 18:19,admin,admin
2,89976,1594,12808,1772,1,0,N,N,N,CP_Drtn,TT_Task,DT_FixedDUR2,RV_OK,TK_NotStart,A1020,Tank installation,,2920,0,24,0,0,0,24,0,0,0,,,,2013-12-09 08:00,2013-12-11 16:00,,2012-10-09 08:00,2012-10-11 16:00,2012-10-09 08:00,2012-10-11 16:00,2012-10-09 08:00,2012-10-11 16:00,,2013-12-09 08:00,2013-12-11 16:00,,PT_Normal,,,,,g3ZJczJwjU2LTnw7YWPeRA,,,,N,0,0,,,2012-01-05 11:03,2012-01-23 18:19,admin,admin
3,89977,1594,12808,1772,1,0,N,N,N,CP_Drtn,TT_Task,DT_FixedDUR2,RV_OK,TK_NotStart,A1030,Backfilling,,2920,0,16,0,0,0,16,0,0,0,,,,2013-12-12 08:00,2013-12-14 16:00,,2012-10-13 08:00,2012-10-14 16:00,2012-10-13 08:00,2012-10-14 16:00,2012-10-13 08:00,2012-10-14 16:00,,2013-12-12 08:00,2013-12-14 16:00,,PT_Normal,,,,,LbpHjI8IUE2ErjG3RyF/oQ,,,,N,0,0,,,2012-01-05 11:03,2012-01-23 18:19,admin,admin
4,89978,1594,12808,1772,1,0,N,N,N,CP_Drtn,TT_Task,DT_FixedDUR2,RV_OK,TK_NotStart,A1040,Canopy system installation,,2920,0,56,0,0,0,56,0,0,0,,,,2013-12-15 08:00,2013-12-22 16:00,,2012-10-15 08:00,2012-10-22 16:00,2012-10-15 08:00,2012-10-22 16:00,2012-10-15 08:00,2012-10-22 16:00,,2013-12-15 08:00,2013-12-22 16:00,,PT_Normal,,,,,gpwMd0cDv0eWnk5BmXDp5g,,,,N,0,0,,,2012-01-05 11:03,2012-01-23 18:19,admin,admin
5,89979,1594,12808,1772,1,0,N,N,N,CP_Drtn,TT_Task,DT_FixedDUR2,RV_OK,TK_NotStart,A1050,Fuel dispenser installation,,2920,0,16,0,0,0,16,0,0,0,,,,2013-12-23 08:00,2013-12-24 16:00,,2012-10-23 08:00,2012-10-24 16:00,2012-10-23 08:00,2012-10-24 16:00,2012-10-23 08:00,2012-10-24 16:00,,2013-12-23 08:00,2013-12-24 16:00,,PT_Normal,,,,,6njgm+2cCU2/HzW7vtMJoA,,,,N,0,0,,,2012-01-05 11:03,2012-01-23 18:19,admin,admin
6,89980,1594,12808,1772,1,0,N,N,N,CP_Drtn,TT_Task,DT_FixedDUR2,RV_OK,TK_NotStart,A1060,Casting slab concrete,,2920,2920,40,0,0,0,40,0,0,0,,,,2013-12-25 08:00,2013-12-30 16:00,,2012-10-25 08:00,2012-10-30 16:00,2012-10-25 08:00,2012-10-30 16:00,2012-10-25 08:00,2012-10-30 16:00,,2013-12-25 08:00,2013-12-30 16:00,,PT_Normal,,,,,iJ5305KuWkC9ueOvHW50UA,,,,N,0,0,,,2012-01-05 11:03,2012-01-23 18:19,admin,admin
7,89990,1594,12788,1772,1,0,N,N,N,CP_Drtn,TT_Task,DT_FixedDUR2,RV_OK,TK_NotStart,A1070,Excavation,,3336,0,16,0,0,0,16,0,0,0,,,,2013-10-23 08:00,2013-10-24 16:00,,2012-06-24 08:00,2012-06-25 16:00,2012-06-24 08:00,2012-06-25 16:00,2012-06-24 08:00,2012-06-25 16:00,,2013-10-23 08:00,2013-10-24 16:00,,PT_Normal,,,,,MPY205dx60SP3ytq5tBuyw,m46KdPPFnESLTJHCSUu1PQ,,,N,0,0,,,2012-01-05 11:20,2012-01-23 18:13,admin,admin
8,89991,1594,12788,1772,1,0,N,N,N,CP_Drtn,TT_Task,DT_FixedDUR2,RV_OK,TK_NotStart,A1080,Foundation,,3336,0,40,0,0,0,40,0,0,0,,,,2013-10-26 08:00,2013-10-30 16:00,,2012-06-26 08:00,2012-07-01 16:00,2012-06-26 08:00,2012-07-01 16:00,2012-06-26 08:00,2012-07-01 16:00,,2013-10-26 08:00,2013-10-30 16:00,,PT_Normal,,,,,td5MyLpnbEyW9KOK8d0m0A,Bs7CZok/oU65iMtSN+2WCQ,,,N,0,0,,,2012-01-05 11:20,2012-01-23 18:13,admin,admin
9,89992,1594,12788,1772,1,0,N,N,N,CP_Drtn,TT_Task,DT_FixedDUR2,RV_OK,TK_NotStart,A1090,Columns,,3336,0,32,0,0,0,32,0,0,0,,,,2013-10-31 08:00,2013-11-04 16:00,,2012-07-02 08:00,2012-07-05 16:00,2012-07-02 08:00,2012-07-05 16:00,2012-07-02 08:00,2012-07-05 16:00,,2013-10-31 08:00,2013-11-04 16:00,,PT_Normal,,,,,KC8ypy1+xEuMqcpUNUYuKA,,,,N,0,0,,,2012-01-05 11:21,2012-01-23 18:13,admin,admin
10,89993,1594,12788,1772,1,0,N,N,N,CP_Drtn,TT_Task,DT_FixedDUR2,RV_OK,TK_NotStart,A1100,Roof slab,,3336,0,56,0,0,0,56,0,0,0,,,,2013-11-05 08:00,2013-11-12 16:00,,2012-07-07 08:00,2012-07-14 16:00,2012-07-07 08:00,2012-07-14 16:00,2012-07-07 08:00,2012-07-14 16:00,,2013-11-05 08:00,2013-11-12 16:00,,PT_Normal,,,,,OnSzAGiT1EaOe9WVWLJY9w,,,,N,0,0,,,2012-01-05 11:21,2012-01-23 18:13,admin,admin
11,89994,1594,12788,1772,1,0,N,N,N,CP_Drtn,TT_Task,DT_FixedDUR2,RV_OK,TK_NotStart,A1110,Masonry under slab on grade,,3336,0,56,0,0,0,56,0,0,0,,,,2013-11-13 08:00,2013-11-20 16:00,,2012-07-15 08:00,2012-07-22 16:00,2012-07-15 08:00,2012-07-22 16:00,2012-07-15 08:00,2012-07-22 16:00,,2013-11-13 08:00,2013-11-20 16:00,,PT_Normal,,,,,d3SauDehbEebZysHtOpmKg,,,,N,0,0,,,2012-01-05 11:21,2012-01-23 18:13,admin,admin
12,89995,1594,12788,1772,1,0,N,N,N,CP_Drtn,TT_Task,DT_FixedDUR2,RV_OK,TK_NotStart,A1120,Slab on grade,,3336,0,8,0,0,0,8,0,0,0,,,,2013-11-27 08:00,2013-11-27 16:00,,2012-07-29 08:00,2012-07-29 16:00,2012-07-29 08:00,2012-07-29 16:00,2012-07-29 08:00,2012-07-29 16:00,,2013-11-27 08:00,2013-11-27 16:00,,PT_Normal,,,,,EiDm2g/NfkiATtJAM54jQA,,,,N,0,0,,,2012-01-05 11:21,2012-01-23 18:13,admin,admin
13,89996,1594,12788,1772,1,0,N,N,N,CP_Drtn,TT_Task,DT_FixedDUR2,RV_OK,TK_NotStart,A1130,Finishing works,,3336,3336,168,0,0,0,168,0,0,0,,,,2013-12-07 08:00,2013-12-30 16:00,,2012-08-07 08:00,2012-08-30 16:00,2012-08-07 08:00,2012-08-30 16:00,2012-08-07 08:00,2012-08-30 16:00,,2013-12-07 08:00,2013-12-30 16:00,,PT_Normal,,,,,Pq1F54K3p0Grv3AlKnc+/w,,,,N,0,0,,,2012-01-05 11:21,2012-01-23 18:13,admin,admin
14,89998,1594,12808,1772,1,0,N,N,N,CP_Drtn,TT_Task,DT_FixedDUR2,RV_OK,TK_NotStart,A1150,Columns,,2920,0,40,0,0,0,40,0,0,0,,,,2013-12-03 08:00,2013-12-08 16:00,,2012-10-03 08:00,2012-10-08 16:00,2012-10-03 08:00,2012-10-08 16:00,2012-10-03 08:00,2012-10-08 16:00,,2013-12-03 08:00,2013-12-08 16:00,,PT_Normal,,,,,Dy7wwTXAW0678ykTZKXylQ,,,,N,0,0,,,2012-01-05 11:22,2012-01-23 18:19,admin,admin
15,89999,1594,12788,1772,1,0,N,N,N,CP_Drtn,TT_Task,DT_FixedDUR2,RV_OK,TK_NotStart,A1160,Footing insulation&backfilling,,3336,0,40,0,0,0,40,0,0,0,,,,2013-11-21 08:00,2013-11-26 16:00,,2012-07-23 08:00,2012-07-28 16:00,2012-07-23 08:00,2012-07-28 16:00,2012-07-23 08:00,2012-07-28 16:00,,2013-11-21 08:00,2013-11-26 16:00,,PT_Normal,,,,,/z8mwKMoeU2MFgoYyCp+/Q,,,,N,0,0,,,2012-01-05 11:33,2012-01-23 18:13,admin,admin
16,90000,1594,12788,1772,1,0,N,N,N,CP_Drtn,TT_Task,DT_FixedDUR2,RV_OK,TK_NotStart,A1170,Ground floor masonry,,3336,0,56,0,0,0,56,0,0,0,,,,2013-11-28 08:00,2013-12-05 16:00,,2012-07-30 08:00,2012-08-06 16:00,2012-07-30 08:00,2012-08-06 16:00,2012-07-30 08:00,2012-08-06 16:00,,2013-11-28 08:00,2013-12-05 16:00,,PT_Normal,,,,,NZPY+xryTkKqSYVJrhz8ig,,,,N,0,0,,,2012-01-05 11:33,2012-01-23 18:13,admin,admin
17,90001,1594,12369,1772,1,0,N,N,N,CP_Drtn,TT_Task,DT_FixedDUR2,RV_OK,TK_NotStart,A1180,Sunshade erection,,2992,0,80,0,0,0,80,0,0,0,,,,2013-12-14 08:00,2013-12-24 16:00,,2012-10-03 08:00,2012-10-14 16:00,2012-10-03 08:00,2012-10-14 16:00,2012-10-03 08:00,2012-10-14 16:00,,2013-12-14 08:00,2013-12-24 16:00,,PT_Normal,,,,,yVlTClPSr028gwirDAcxag,,,,N,0,0,,,2012-01-05 11:38,2012-01-23 18:19,admin,admin
18,90003,1594,12369,1772,1,0,N,N,N,CP_Drtn,TT_Task,DT_FixedDUR2,RV_OK,TK_NotStart,A1200,Bollard erection,,2992,2992,16,0,0,0,16,0,0,0,,,,2013-12-29 08:00,2013-12-30 16:00,,2012-10-18 08:00,2012-10-20 16:00,2012-10-18 08:00,2012-10-20 16:00,2012-10-18 08:00,2012-10-20 16:00,,2013-12-29 08:00,2013-12-30 16:00,,PT_Normal,,,,,dTDq3zloVkGO0U1Qfk8ydQ,,,,N,0,0,,,2012-01-05 11:38,2012-01-23 18:19,admin,admin
19,90004,1594,12369,1772,1,0,N,N,N,CP_Drtn,TT_Task,DT_FixedDUR2,RV_OK,TK_NotStart,A1210,wheel stop,,2992,0,16,0,0,0,16,0,0,0,,,,2013-12-26 08:00,2013-12-28 16:00,,2012-10-16 08:00,2012-10-17 16:00,2012-10-16 08:00,2012-10-17 16:00,2012-10-16 08:00,2012-10-17 16:00,,2013-12-26 08:00,2013-12-28 16:00,,PT_Normal,,,,,+DBrtefpKE2HMCwrx5DH7Q,,,,N,0,0,,,2012-01-05 11:38,2012-01-23 18:19,admin,admin
20,90006,1594,12369,1772,1,0,N,N,N,CP_Drtn,TT_Task,DT_FixedDUR2,RV_OK,TK_NotStart,A1230,Paving,,2992,0,8,0,0,0,8,0,0,0,,,,2013-12-25 08:00,2013-12-25 16:00,,2012-10-15 08:00,2012-10-15 16:00,2012-10-15 08:00,2012-10-15 16:00,2012-10-15 08:00,2012-10-15 16:00,,2013-12-25 08:00,2013-12-25 16:00,,PT_Normal,,,,,XijcyY0gM0m3FICCdpQYrw,,,,N,0,0,,,2012-01-05 11:38,2012-01-23 18:19,admin,admin
21,90007,1594,12369,1772,1,0,N,N,N,CP_Drtn,TT_Task,DT_FixedDUR2,RV_OK,TK_NotStart,A1240,Excavation,,2992,0,16,0,0,0,16,0,0,0,,,,2013-12-05 08:00,2013-12-07 16:00,,2012-09-25 08:00,2012-09-26 16:00,2012-09-25 08:00,2012-09-26 16:00,2012-09-25 08:00,2012-09-26 16:00,,2013-12-05 08:00,2013-12-07 16:00,,PT_Normal,,,,,a7467wScI0WuIjyqdCUdRQ,MPY205dx60SP3ytq5tBuyw,,,N,0,0,,,2012-01-05 11:38,2012-01-23 18:19,admin,admin
22,90008,1594,12369,1772,1,0,N,N,N,CP_Drtn,TT_Task,DT_FixedDUR2,RV_OK,TK_NotStart,A1250,Foundation,,2992,0,40,0,0,0,40,0,0,0,,,,2013-12-08 08:00,2013-12-12 16:00,,2012-09-27 08:00,2012-10-02 16:00,2012-09-27 08:00,2012-10-02 16:00,2012-09-27 08:00,2012-10-02 16:00,,2013-12-08 08:00,2013-12-12 16:00,,PT_Normal,,,,,XlYpyToGaUSq5TTU/Dnh5Q,td5MyLpnbEyW9KOK8d0m0A,,,N,0,0,,,2012-01-05 11:38,2012-01-23 18:19,admin,admin
23,90009,1594,12368,1772,1,0,N,N,N,CP_Drtn,TT_Task,DT_FixedDUR2,RV_OK,TK_NotStart,A1280,Sunshade erection,,2672,0,80,0,0,0,80,0,0,0,,,,2013-12-14 08:00,2013-12-24 16:00,,2012-11-19 08:00,2012-11-29 16:00,2012-11-19 08:00,2012-11-29 16:00,2012-11-19 08:00,2012-11-29 16:00,,2013-12-14 08:00,2013-12-24 16:00,,PT_Normal,,,,,HaVh8N4Frku3yze1UDN1Kw,yVlTClPSr028gwirDAcxag,,,N,0,0,,,2012-01-05 11:47,2012-01-23 18:19,admin,admin
24,90010,1594,12368,1772,1,0,N,N,N,CP_Drtn,TT_Task,DT_FixedDUR2,RV_OK,TK_NotStart,A1310,Bollard erection,,2672,2672,16,0,0,0,16,0,0,0,,,,2013-12-29 08:00,2013-12-30 16:00,,2012-12-04 08:00,2012-12-05 16:00,2012-12-04 08:00,2012-12-05 16:00,2012-12-04 08:00,2012-12-05 16:00,,2013-12-29 08:00,2013-12-30 16:00,,PT_Normal,,,,,GsVyhX/IMUixzjg9VPMDAw,dTDq3zloVkGO0U1Qfk8ydQ,,,N,0,0,,,2012-01-05 11:47,2012-01-23 18:19,admin,admin
25,90011,1594,12368,1772,1,0,N,N,N,CP_Drtn,TT_Task,DT_FixedDUR2,RV_OK,TK_NotStart,A1300,wheel stop,,2672,0,16,0,0,0,16,0,0,0,,,,2013-12-26 08:00,2013-12-28 16:00,,2012-12-02 08:00,2012-12-03 16:00,2012-12-02 08:00,2012-12-03 16:00,2012-12-02 08:00,2012-12-03 16:00,,2013-12-26 08:00,2013-12-28 16:00,,PT_Normal,,,,,fntoeOmc9U+nwcY5XhMfRA,+DBrtefpKE2HMCwrx5DH7Q,,,N,0,0,,,2012-01-05 11:47,2012-01-23 18:19,admin,admin
26,90012,1594,12368,1772,1,0,N,N,N,CP_Drtn,TT_Task,DT_FixedDUR2,RV_OK,TK_NotStart,A1290,Paving,,2672,0,8,0,0,0,8,0,0,0,,,,2013-12-25 08:00,2013-12-25 16:00,,2012-12-01 08:00,2012-12-01 16:00,2012-12-01 08:00,2012-12-01 16:00,2012-12-01 08:00,2012-12-01 16:00,,2013-12-25 08:00,2013-12-25 16:00,,PT_Normal,,,,,jxlqi2NjZ0i1YV/Ox2/uYg,XijcyY0gM0m3FICCdpQYrw,,,N,0,0,,,2012-01-05 11:47,2012-01-23 18:19,admin,admin
27,90013,1594,12368,1772,1,0,N,N,N,CP_Drtn,TT_Task,DT_FixedDUR2,RV_OK,TK_NotStart,A1260,Excavation,,2672,0,16,0,0,0,16,0,0,0,,,,2013-12-05 08:00,2013-12-07 16:00,,2012-11-11 08:00,2012-11-12 16:00,2012-11-11 08:00,2012-11-12 16:00,2012-11-11 08:00,2012-11-12 16:00,,2013-12-05 08:00,2013-12-07 16:00,,PT_Normal,,,,,A9oTsM/zgE+TAFY0+/rrGQ,a7467wScI0WuIjyqdCUdRQ,,,N,0,0,,,2012-01-05 11:47,2012-01-23 18:19,admin,admin
28,90014,1594,12368,1772,1,0,N,N,N,CP_Drtn,TT_Task,DT_FixedDUR2,RV_OK,TK_NotStart,A1270,Foundation,,2672,0,40,0,0,0,40,0,0,0,,,,2013-12-08 08:00,2013-12-12 16:00,,2012-11-13 08:00,2012-11-18 16:00,2012-11-13 08:00,2012-11-18 16:00,2012-11-13 08:00,2012-11-18 16:00,,2013-12-08 08:00,2013-12-12 16:00,,PT_Normal,,,,,lyQ4gDkdmEWts0UDEU7fxA,XlYpyToGaUSq5TTU/Dnh5Q,,,N,0,0,,,2012-01-05 11:47,2012-01-23 18:19,admin,admin
29,90015,1594,12365,1772,1,0,N,N,N,CP_Drtn,TT_Task,DT_FixedDUR2,RV_OK,TK_NotStart,A1320,Excavation,,2200,0,24,0,0,0,24,0,0,0,,,,2013-10-09 08:00,2013-10-12 16:00,,2012-11-22 08:00,2012-11-25 16:00,2012-11-22 08:00,2012-11-25 16:00,2012-11-22 08:00,2012-11-25 16:00,,2013-10-09 08:00,2013-10-12 16:00,,PT_Normal,,,,,afvhh7587EmprhWnvymLHg,MPY205dx60SP3ytq5tBuyw,,,N,0,0,,,2012-01-05 12:00,2012-01-23 18:13,admin,admin
30,90016,1594,12365,1772,1,0,N,N,N,CP_Drtn,TT_Task,DT_FixedDUR2,RV_OK,TK_NotStart,A1330,Foundation,,2200,0,80,0,0,0,80,0,0,0,,,,2013-10-13 08:00,2013-10-23 16:00,,2012-11-26 08:00,2012-12-06 16:00,2012-11-26 08:00,2012-12-06 16:00,2012-11-26 08:00,2012-12-06 16:00,,2013-10-13 08:00,2013-10-23 16:00,,PT_Normal,,,,,Csc76L1ec0+VW/Yle5uZOQ,td5MyLpnbEyW9KOK8d0m0A,,,N,0,0,,,2012-01-05 12:00,2012-01-23 18:13,admin,admin
31,90017,1594,12365,1772,1,0,N,N,N,CP_Drtn,TT_Task,DT_FixedDUR2,RV_OK,TK_NotStart,A1340,Columns,,2200,0,56,0,0,0,56,0,0,0,,,,2013-10-24 08:00,2013-10-31 16:00,,2012-12-08 08:00,2012-12-15 16:00,2012-12-08 08:00,2012-12-15 16:00,2012-12-08 08:00,2012-12-15 16:00,,2013-10-24 08:00,2013-10-31 16:00,,PT_Normal,,,,,PxP7CTwsrkKWHacunTJlJw,KC8ypy1+xEuMqcpUNUYuKA,,,N,0,0,,,2012-01-05 12:00,2012-01-23 18:13,admin,admin
32,90018,1594,12365,1772,1,0,N,N,N,CP_Drtn,TT_Task,DT_FixedDUR2,RV_OK,TK_NotStart,A1350,Entrance beam,,2200,0,40,0,0,0,40,0,0,0,,,,2013-11-12 08:00,2013-11-17 16:00,,2012-12-26 08:00,2012-12-31 16:00,2012-12-26 08:00,2012-12-31 16:00,2012-12-26 08:00,2012-12-31 16:00,,2013-11-12 08:00,2013-11-17 16:00,,PT_Normal,,,,,iiaaXEICaUKU1lI0Wbyp1w,,,,N,0,0,,,2012-01-05 12:01,2012-01-23 18:13,admin,admin
33,90020,1594,12365,1772,1,0,N,N,N,CP_Drtn,TT_Task,DT_FixedDUR2,RV_OK,TK_NotStart,A1370,Finishing works,,2200,2200,240,0,0,0,240,0,0,0,,,,2013-11-26 08:00,2013-12-30 16:00,,2013-01-09 08:00,2013-02-12 16:00,2013-01-09 08:00,2013-02-12 16:00,2013-01-09 08:00,2013-02-12 16:00,,2013-11-26 08:00,2013-12-30 16:00,,PT_Normal,,,,,qwJj62hRq0Gx1Zs5udEJGw,,,,N,0,0,,,2012-01-05 12:01,2012-01-23 18:13,admin,admin
34,90021,1594,12365,1772,1,0,N,N,N,CP_Drtn,TT_Task,DT_FixedDUR2,RV_OK,TK_NotStart,A1380,Masonry works,,2200,0,56,0,0,0,56,0,0,0,,,,2013-11-18 08:00,2013-11-25 16:00,,2013-01-01 08:00,2013-01-08 16:00,2013-01-01 08:00,2013-01-08 16:00,2013-01-01 08:00,2013-01-08 16:00,,2013-11-18 08:00,2013-11-25 16:00,,PT_Normal,,,,,+phcpD1DtUSxsLKASG1SGQ,,,,N,0,0,,,2012-01-05 12:01,2012-01-23 18:13,admin,admin
35,90022,1594,12365,1772,1,0,N,N,N,CP_Drtn,TT_Task,DT_FixedDUR2,RV_OK,TK_NotStart,A1390,Gate house slab,,2200,0,40,0,0,0,40,0,0,0,,,,2013-11-02 08:00,2013-11-06 16:00,,2012-12-16 08:00,2012-12-20 16:00,2012-12-16 08:00,2012-12-20 16:00,2012-12-16 08:00,2012-12-20 16:00,,2013-11-02 08:00,2013-11-06 16:00,,PT_Normal,,,,,sk16j8r4EkOfdPEWe32j9A,,,,N,0,0,,,2012-01-05 12:01,2012-01-23 18:13,admin,admin
36,90023,1594,12365,1772,1,0,N,N,N,CP_Drtn,TT_Task,DT_FixedDUR2,RV_OK,TK_NotStart,A1400,columns-2,,2200,0,32,0,0,0,32,0,0,0,,,,2013-11-07 08:00,2013-11-11 16:00,,2012-12-22 08:00,2012-12-25 16:00,2012-12-22 08:00,2012-12-25 16:00,2012-12-22 08:00,2012-12-25 16:00,,2013-11-07 08:00,2013-11-11 16:00,,PT_Normal,,,,,yK1ph/bkYU+SlwXC2zBCuA,,,,N,0,0,,,2012-01-05 12:51,2012-01-23 18:13,admin,admin
37,90024,1594,12364,1772,1,0,N,N,N,CP_Drtn,TT_Task,DT_FixedDUR2,RV_OK,TK_NotStart,A1410,Excavation,,4488,0,16,0,0,0,16,0,0,0,,,,2013-11-20 08:00,2013-11-21 16:00,,2012-02-05 08:00,2012-02-06 16:00,2012-02-05 08:00,2012-02-06 16:00,2012-02-05 08:00,2012-02-06 16:00,,2013-11-20 08:00,2013-11-21 16:00,,PT_Normal,,,,,i47u9b2eREyFCJtiQ29R6w,,,,N,0,0,,,2012-01-05 13:14,2012-01-23 18:13,admin,admin
38,90025,1594,12364,1772,1,0,N,N,N,CP_Drtn,TT_Task,DT_FixedDUR2,RV_OK,TK_NotStart,A1420,Foundation,,4488,0,56,0,0,0,56,0,0,0,,,,2013-11-23 08:00,2013-11-30 16:00,,2012-02-07 08:00,2012-02-14 16:00,2012-02-07 08:00,2012-02-14 16:00,2012-02-07 08:00,2012-02-14 16:00,,2013-11-23 08:00,2013-11-30 16:00,,PT_Normal,,,,,Dzz7rSz0nkOP4zmum4cIwA,,,,N,0,0,,,2012-01-05 13:14,2012-01-23 18:13,admin,admin
39,90026,1594,12364,1772,1,0,N,N,N,CP_Drtn,TT_Task,DT_FixedDUR2,RV_OK,TK_NotStart,A1430,Column,,4488,0,56,0,0,0,56,0,0,0,,,,2013-12-01 08:00,2013-12-08 16:00,,2012-02-15 08:00,2012-02-22 16:00,2012-02-15 08:00,2012-02-22 16:00,2012-02-15 08:00,2012-02-22 16:00,,2013-12-01 08:00,2013-12-08 16:00,,PT_Normal,,,,,YGYrFV4/HEKMFKJEUzcLZQ,,,,N,0,0,,,2012-01-05 13:14,2012-01-23 18:13,admin,admin
40,90027,1594,12364,1772,1,0,N,N,N,CP_Drtn,TT_Task,DT_FixedDUR2,RV_OK,TK_NotStart,A1440,First floor slab,,4488,0,40,0,0,0,40,0,0,0,,,,2013-12-09 08:00,2013-12-14 16:00,,2012-02-23 08:00,2012-02-28 16:00,2012-02-23 08:00,2012-02-28 16:00,2012-02-23 08:00,2012-02-28 16:00,,2013-12-09 08:00,2013-12-14 16:00,,PT_Normal,,,,,mACmKsvqLEKm+fH0ial1SQ,,,,N,0,0,,,2012-01-05 13:14,2012-01-23 18:13,admin,admin
41,90028,1594,12364,1772,1,0,N,N,N,CP_Drtn,TT_Task,DT_FixedDUR2,RV_OK,TK_NotStart,A1450,Roofing,,4488,0,24,0,0,0,24,0,0,0,,,,2013-12-15 08:00,2013-12-17 16:00,,2012-02-29 08:00,2012-03-03 16:00,2012-02-29 08:00,2012-03-03 16:00,2012-02-29 08:00,2012-03-03 16:00,,2013-12-15 08:00,2013-12-17 16:00,,PT_Normal,,,,,fcG2JS2zeEqHQGA4R4cQhA,,,,N,0,0,,,2012-01-05 13:14,2012-01-23 18:13,admin,admin
42,90031,1594,12364,1772,1,0,N,N,N,CP_Drtn,TT_Task,DT_FixedDUR2,RV_OK,TK_NotStart,A1480,Finishing works,,4488,4488,80,0,0,0,80,0,0,0,,,,2013-12-19 08:00,2013-12-30 16:00,,2012-03-05 08:00,2012-03-15 16:00,2012-03-05 08:00,2012-03-15 16:00,2012-03-05 08:00,2012-03-15 16:00,,2013-12-19 08:00,2013-12-30 16:00,,PT_Normal,,,,,PByPDX48hEybBg0ZxpH0VQ,,,,N,0,0,,,2012-01-05 13:14,2012-01-23 18:13,admin,admin
43,90032,1594,12364,1772,1,0,N,N,N,CP_Drtn,TT_Task,DT_FixedDUR2,RV_OK,TK_NotStart,A1490,Steel ladder erection,,4488,0,8,0,0,0,8,0,0,0,,,,2013-12-18 08:00,2013-12-18 16:00,,2012-03-04 08:00,2012-03-04 16:00,2012-03-04 08:00,2012-03-04 16:00,2012-03-04 08:00,2012-03-04 16:00,,2013-12-18 08:00,2013-12-18 16:00,,PT_Normal,,,,,7VE+mmFJfEqQI7Js8r0hNA,,,,N,0,0,,,2012-01-05 13:14,2012-01-23 18:13,admin,admin
44,90033,1594,12852,1772,1,0,N,N,N,CP_Drtn,TT_Task,DT_FixedDUR2,RV_OK,TK_NotStart,A1500,Excavation,,1744,0,24,0,0,0,24,0,0,0,,,,2013-06-18 08:00,2013-06-20 16:00,,2012-10-07 08:00,2012-10-09 16:00,2012-10-07 08:00,2012-10-09 16:00,2012-10-07 08:00,2012-10-09 16:00,,2013-06-18 08:00,2013-06-20 16:00,,PT_Normal,,,,,lbAjpJ91Akegij84DPXdpw,,,,N,0,0,,,2012-01-05 13:19,2012-01-23 18:13,admin,admin
45,90034,1594,12852,1772,1,0,N,N,N,CP_Drtn,TT_Task,DT_FixedDUR2,RV_OK,TK_NotStart,A1510,Foundation,,1744,0,144,0,0,0,144,0,0,0,,,,2013-06-22 08:00,2013-07-11 16:00,,2012-10-10 08:00,2012-10-30 16:00,2012-10-10 08:00,2012-10-30 16:00,2012-10-10 08:00,2012-10-30 16:00,,2013-06-22 08:00,2013-07-11 16:00,,PT_Normal,,,,,cBvefUJzfEKtTgnt4Kb1sA,,,,N,0,0,,,2012-01-05 13:19,2012-01-23 18:13,admin,admin
46,90035,1594,12852,1772,1,0,N,N,N,CP_Drtn,TT_Task,DT_FixedDUR2,RV_OK,TK_NotStart,A1520,Columns,,1744,0,56,0,0,0,56,0,0,0,,,,2013-07-13 08:00,2013-07-20 16:00,,2012-10-31 08:00,2012-11-07 16:00,2012-10-31 08:00,2012-11-07 16:00,2012-10-31 08:00,2012-11-07 16:00,,2013-07-13 08:00,2013-07-20 16:00,,PT_Normal,,,,,fNv3LJ0dZk6W/o+2VUCQuQ,,,,N,0,0,,,2012-01-05 13:19,2012-01-23 18:13,admin,admin
47,90036,1594,12852,1772,1,0,N,N,N,CP_Drtn,TT_Task,DT_FixedDUR2,RV_OK,TK_NotStart,A1530,Ground floor slab,,1744,0,112,0,0,0,112,0,0,0,,,,2013-07-21 08:00,2013-08-05 16:00,,2012-11-08 08:00,2012-11-24 16:00,2012-11-08 08:00,2012-11-24 16:00,2012-11-08 08:00,2012-11-24 16:00,,2013-07-21 08:00,2013-08-05 16:00,,PT_Normal,,,,,lACTpxsblUeZ5jxb345Lrg,,,,N,0,0,,,2012-01-05 13:19,2012-01-23 18:13,admin,admin
48,90037,1594,12852,1772,1,0,N,N,N,CP_Drtn,TT_Task,DT_FixedDUR2,RV_OK,TK_NotStart,A1540,Ground floor masonry,,1744,0,80,0,0,0,80,0,0,0,,,,2013-09-05 08:00,2013-09-16 16:00,,2012-12-25 08:00,2013-01-05 16:00,2012-12-25 08:00,2013-01-05 16:00,2012-12-25 08:00,2013-01-05 16:00,,2013-09-05 08:00,2013-09-16 16:00,,PT_Normal,,,,,etHJuTXnyk2l5DOWuX5kMw,,,,N,0,0,,,2012-01-05 13:19,2012-01-23 18:13,admin,admin
49,90038,1594,12852,1772,1,0,N,N,N,CP_Drtn,TT_Task,DT_FixedDUR2,RV_OK,TK_NotStart,A1550,Masonry under slab on grade,,1744,0,80,0,0,0,80,0,0,0,,,,2013-08-06 08:00,2013-08-17 16:00,,2012-11-25 08:00,2012-12-05 16:00,2012-11-25 08:00,2012-12-05 16:00,2012-11-25 08:00,2012-12-05 16:00,,2013-08-06 08:00,2013-08-17 16:00,,PT_Normal,,,,,DgK7YpgNT0+YNBvbJzbIlA,,,,N,0,0,,,2012-01-05 13:19,2012-01-23 18:13,admin,admin
50,90039,1594,12852,1772,1,0,N,N,N,CP_Drtn,TT_Task,DT_FixedDUR2,RV_OK,TK_NotStart,A1560,Slab on grade,,1744,0,16,0,0,0,16,0,0,0,,,,2013-09-03 08:00,2013-09-04 16:00,,2012-12-23 08:00,2012-12-24 16:00,2012-12-23 08:00,2012-12-24 16:00,2012-12-23 08:00,2012-12-24 16:00,,2013-09-03 08:00,2013-09-04 16:00,,PT_Normal,,,,,CkO9zvJHEEiYTaykl3R7Sw,,,,N,0,0,,,2012-01-05 13:19,2012-01-23 18:13,admin,admin
51,90040,1594,12852,1772,1,0,N,N,N,CP_Drtn,TT_Task,DT_FixedDUR2,RV_OK,TK_NotStart,A1570,Footing insulation&backfilling,,1744,0,112,0,0,0,112,0,0,0,,,,2013-08-18 08:00,2013-09-02 16:00,,2012-12-06 08:00,2012-12-22 16:00,2012-12-06 08:00,2012-12-22 16:00,2012-12-06 08:00,2012-12-22 16:00,,2013-08-18 08:00,2013-09-02 16:00,,PT_Normal,,,,,Rv2RxA42HUu1dvxAypxKzw,,,,N,0,0,,,2012-01-05 13:19,2012-01-23 18:13,admin,admin
52,90041,1594,12852,1772,1,0,N,N,N,CP_Drtn,TT_Task,DT_FixedDUR2,RV_OK,TK_NotStart,A1580,Finishing works,,1744,0,168,0,0,0,168,0,0,0,,,,2013-09-17 08:00,2013-10-10 16:00,,2013-01-06 08:00,2013-01-29 16:00,2013-01-06 08:00,2013-01-29 16:00,2013-01-06 08:00,2013-01-29 16:00,,2013-09-17 08:00,2013-10-10 16:00,,PT_Normal,,,,,eTR3SHxbskeQfO2cB5H2VQ,,,,N,0,0,,,2012-01-05 13:27,2012-01-23 18:13,admin,admin
53,90042,1594,12852,1772,1,0,N,N,N,CP_Drtn,TT_Task,DT_FixedDUR2,RV_OK,TK_NotStart,A1590,Steel roof erection,,2184,2184,112,0,0,0,112,0,0,0,,,,2013-12-15 08:00,2013-12-30 16:00,,2013-01-30 08:00,2013-02-14 16:00,2013-01-30 08:00,2013-02-14 16:00,2013-01-30 08:00,2013-02-14 16:00,,2013-12-15 08:00,2013-12-30 16:00,,PT_Normal,,,,,9rzgoeSX8UGROPE1yWS+zw,,,,N,0,0,,,2012-01-05 13:28,2012-01-23 18:13,admin,admin
54,90043,1594,12852,1772,1,0,N,N,N,CP_Drtn,TT_Task,DT_FixedDUR2,RV_OK,TK_NotStart,A1600,Steel columns erection,,2712,528,40,0,0,0,40,0,0,0,,,,2013-12-09 08:00,2013-12-14 16:00,,2012-11-08 08:00,2012-11-13 16:00,2012-11-08 08:00,2012-11-13 16:00,2012-11-08 08:00,2012-11-13 16:00,,2013-12-09 08:00,2013-12-14 16:00,,PT_Normal,,,,,BfO5yZ4znUKEGu1L74NBOA,,,,N,0,0,,,2012-01-05 13:35,2012-01-23 18:13,admin,admin
55,90046,1594,12848,1772,1,0,N,N,N,CP_Drtn,TT_Task,DT_FixedDUR2,RV_OK,TK_NotStart,A1630,Masonry works,,1880,0,56,0,0,0,56,0,0,0,,,,2013-09-21 08:00,2013-09-28 16:00,,2012-12-20 08:00,2012-12-27 16:00,2012-12-20 08:00,2012-12-27 16:00,2012-12-20 08:00,2012-12-27 16:00,,2013-09-21 08:00,2013-09-28 16:00,,PT_Normal,,,,,gRqd+09bF0G73QHeDS840w,,,,N,0,0,,,2012-01-05 13:52,2012-01-23 18:13,admin,admin
56,90047,1594,12848,1772,1,0,N,N,N,CP_Drtn,TT_Task,DT_FixedDUR2,RV_OK,TK_NotStart,A1640,Finishing works,,1880,0,160,0,0,0,160,0,0,0,,,,2013-09-29 08:00,2013-10-21 16:00,,2012-12-29 08:00,2013-01-20 16:00,2012-12-29 08:00,2013-01-20 16:00,2012-12-29 08:00,2013-01-20 16:00,,2013-09-29 08:00,2013-10-21 16:00,,PT_Normal,,,,,62S4CcsX7Ua3Lca/qdLk/w,,,,N,0,0,,,2012-01-05 13:52,2012-01-23 18:13,admin,admin
57,90050,1594,12848,1772,1,0,N,N,N,CP_Drtn,TT_Task,DT_FixedDUR2,RV_OK,TK_NotStart,A1670,Steel structure erection,,1880,0,80,0,0,0,80,0,0,0,,,,2013-09-09 08:00,2013-09-19 16:00,,2012-12-09 08:00,2012-12-19 16:00,2012-12-09 08:00,2012-12-19 16:00,2012-12-09 08:00,2012-12-19 16:00,,2013-09-09 08:00,2013-09-19 16:00,,PT_Normal,,,,,pXXhOY9DU0yNl7QoV+Bhqg,,,,N,0,0,,,2012-01-05 13:52,2012-01-23 18:13,admin,admin
58,90051,1594,12848,1772,1,0,N,N,N,CP_Drtn,TT_Task,DT_FixedDUR2,RV_OK,TK_NotStart,A1680,Excavation,,1880,0,24,0,0,0,24,0,0,0,,,,2013-07-08 08:00,2013-07-10 16:00,,2012-10-07 08:00,2012-10-09 16:00,2012-10-07 08:00,2012-10-09 16:00,2012-10-07 08:00,2012-10-09 16:00,,2013-07-08 08:00,2013-07-10 16:00,,PT_Normal,,,,,pDQEGWqYK0KTZFDYwerJQQ,lbAjpJ91Akegij84DPXdpw,,,N,0,0,,,2012-01-05 13:55,2012-01-23 18:13,admin,admin
59,90052,1594,12848,1772,1,0,N,N,N,CP_Drtn,TT_Task,DT_FixedDUR2,RV_OK,TK_NotStart,A1690,Foundation,,1880,0,144,0,0,0,144,0,0,0,,,,2013-07-11 08:00,2013-07-31 16:00,,2012-10-10 08:00,2012-10-30 16:00,2012-10-10 08:00,2012-10-30 16:00,2012-10-10 08:00,2012-10-30 16:00,,2013-07-11 08:00,2013-07-31 16:00,,PT_Normal,,,,,eVNoW7/dc06g4dvQUxnqWw,cBvefUJzfEKtTgnt4Kb1sA,,,N,0,0,,,2012-01-05 13:55,2012-01-23 18:13,admin,admin
60,90053,1594,12848,1772,1,0,N,N,N,CP_Drtn,TT_Task,DT_FixedDUR2,RV_OK,TK_NotStart,A1700,Columns,,1880,0,56,0,0,0,56,0,0,0,,,,2013-08-01 08:00,2013-08-08 16:00,,2012-10-31 08:00,2012-11-07 16:00,2012-10-31 08:00,2012-11-07 16:00,2012-10-31 08:00,2012-11-07 16:00,,2013-08-01 08:00,2013-08-08 16:00,,PT_Normal,,,,,bUzhulJhYE6qrXVvVRs2gQ,fNv3LJ0dZk6W/o+2VUCQuQ,,,N,0,0,,,2012-01-05 13:55,2012-01-23 18:13,admin,admin
61,90054,1594,12848,1772,1,0,N,N,N,CP_Drtn,TT_Task,DT_FixedDUR2,RV_OK,TK_NotStart,A1710,Masonry under slab on grade,,1880,0,80,0,0,0,80,0,0,0,,,,2013-08-10 08:00,2013-08-20 16:00,,2012-11-08 08:00,2012-11-19 16:00,2012-11-08 08:00,2012-11-19 16:00,2012-11-08 08:00,2012-11-19 16:00,,2013-08-10 08:00,2013-08-20 16:00,,PT_Normal,,,,,8ouI/DIVT0Cnczfis9iijQ,DgK7YpgNT0+YNBvbJzbIlA,,,N,0,0,,,2012-01-05 14:01,2012-01-23 18:13,admin,admin
62,90055,1594,12848,1772,1,0,N,N,N,CP_Drtn,TT_Task,DT_FixedDUR2,RV_OK,TK_NotStart,A1720,Footing insulation&backfilling,,1880,0,112,0,0,0,112,0,0,0,,,,2013-08-21 08:00,2013-09-05 16:00,,2012-11-20 08:00,2012-12-05 16:00,2012-11-20 08:00,2012-12-05 16:00,2012-11-20 08:00,2012-12-05 16:00,,2013-08-21 08:00,2013-09-05 16:00,,PT_Normal,,,,,xJ3oGGEJYUOygZRcOc28Mw,Rv2RxA42HUu1dvxAypxKzw,,,N,0,0,,,2012-01-05 14:01,2012-01-23 18:13,admin,admin
63,90056,1594,12848,1772,1,0,N,N,N,CP_Drtn,TT_Task,DT_FixedDUR2,RV_OK,TK_NotStart,A1730,Slab on grade,,1880,0,16,0,0,0,16,0,0,0,,,,2013-09-07 08:00,2013-09-08 16:00,,2012-12-06 08:00,2012-12-08 16:00,2012-12-06 08:00,2012-12-08 16:00,2012-12-06 08:00,2012-12-08 16:00,,2013-09-07 08:00,2013-09-08 16:00,,PT_Normal,,,,,9ODYpNh1LkOgm/eZWrb+Ew,CkO9zvJHEEiYTaykl3R7Sw,,,N,0,0,,,2012-01-05 14:02,2012-01-23 18:13,admin,admin
64,90057,1594,12764,1772,1,0,N,N,N,CP_Drtn,TT_Task,DT_FixedDUR2,RV_OK,TK_NotStart,A1740,Excavation,,3496,0,24,0,0,0,24,0,0,0,,,,2013-09-07 08:00,2013-09-09 16:00,,2012-04-15 08:00,2012-04-17 16:00,2012-04-15 08:00,2012-04-17 16:00,2012-04-15 08:00,2012-04-17 16:00,,2013-09-07 08:00,2013-09-09 16:00,,PT_Normal,,,,,wUNGo/83JkejVZNbARL7BA,lbAjpJ91Akegij84DPXdpw,,,N,0,0,,,2012-01-05 14:19,2012-01-23 18:13,admin,admin
65,90058,1594,12764,1772,1,0,N,N,N,CP_Drtn,TT_Task,DT_FixedDUR2,RV_OK,TK_NotStart,A1750,Foundation,,3496,0,144,0,0,0,144,0,0,0,,,,2013-09-10 08:00,2013-09-30 16:00,,2012-04-18 08:00,2012-05-08 16:00,2012-04-18 08:00,2012-05-08 16:00,2012-04-18 08:00,2012-05-08 16:00,,2013-09-10 08:00,2013-09-30 16:00,,PT_Normal,,,,,kwolqFn6h02w7oV1zhKw2A,cBvefUJzfEKtTgnt4Kb1sA,,,N,0,0,,,2012-01-05 14:19,2012-01-23 18:13,admin,admin
66,90059,1594,12764,1772,1,0,N,N,N,CP_Drtn,TT_Task,DT_FixedDUR2,RV_OK,TK_NotStart,A1760,Columns,,3496,0,56,0,0,0,56,0,0,0,,,,2013-10-01 08:00,2013-10-08 16:00,,2012-05-09 08:00,2012-05-16 16:00,2012-05-09 08:00,2012-05-16 16:00,2012-05-09 08:00,2012-05-16 16:00,,2013-10-01 08:00,2013-10-08 16:00,,PT_Normal,,,,,luLyoGB7TEa9q18F6fxTFQ,fNv3LJ0dZk6W/o+2VUCQuQ,,,N,0,0,,,2012-01-05 14:19,2012-01-23 18:13,admin,admin
67,90060,1594,12764,1772,1,0,N,N,N,CP_Drtn,TT_Task,DT_FixedDUR2,RV_OK,TK_NotStart,A1770,Ground floor slab,,3496,0,112,0,0,0,112,0,0,0,,,,2013-10-09 08:00,2013-10-24 16:00,,2012-05-17 08:00,2012-06-02 16:00,2012-05-17 08:00,2012-06-02 16:00,2012-05-17 08:00,2012-06-02 16:00,,2013-10-09 08:00,2013-10-24 16:00,,PT_Normal,,,,,enP9aff92Uac0KjsxjMKcw,lACTpxsblUeZ5jxb345Lrg,,,N,0,0,,,2012-01-05 14:19,2012-01-23 18:13,admin,admin
68,90061,1594,12764,1772,1,0,N,N,N,CP_Drtn,TT_Task,DT_FixedDUR2,RV_OK,TK_NotStart,A1820,Ground floor masonry,,3496,0,80,0,0,0,80,0,0,0,,,,2013-11-25 08:00,2013-12-05 16:00,,2012-07-03 08:00,2012-07-14 16:00,2012-07-03 08:00,2012-07-14 16:00,2012-07-03 08:00,2012-07-14 16:00,,2013-11-25 08:00,2013-12-05 16:00,,PT_Normal,,,,,vWuxMj/YSUOLsJk/1BNU0g,etHJuTXnyk2l5DOWuX5kMw,,,N,0,0,,,2012-01-05 14:19,2012-01-23 18:13,admin,admin
69,90062,1594,12764,1772,1,0,N,N,N,CP_Drtn,TT_Task,DT_FixedDUR2,RV_OK,TK_NotStart,A1790,Masonry under slab on grade,,3496,0,80,0,0,0,80,0,0,0,,,,2013-10-26 08:00,2013-11-05 16:00,,2012-06-03 08:00,2012-06-13 16:00,2012-06-03 08:00,2012-06-13 16:00,2012-06-03 08:00,2012-06-13 16:00,,2013-10-26 08:00,2013-11-05 16:00,,PT_Normal,,,,,cuxbIY7oJ0WaWnQ5jy2Ltw,DgK7YpgNT0+YNBvbJzbIlA,,,N,0,0,,,2012-01-05 14:19,2012-01-23 18:13,admin,admin
70,90063,1594,12764,1772,1,0,N,N,N,CP_Drtn,TT_Task,DT_FixedDUR2,RV_OK,TK_NotStart,A1810,Slab on grade,,3496,0,16,0,0,0,16,0,0,0,,,,2013-11-23 08:00,2013-11-24 16:00,,2012-07-01 08:00,2012-07-02 16:00,2012-07-01 08:00,2012-07-02 16:00,2012-07-01 08:00,2012-07-02 16:00,,2013-11-23 08:00,2013-11-24 16:00,,PT_Normal,,,,,ExWMzUiQ9kO9pO4U/jZGCQ,CkO9zvJHEEiYTaykl3R7Sw,,,N,0,0,,,2012-01-05 14:19,2012-01-23 18:13,admin,admin
71,90064,1594,12764,1772,1,0,N,N,N,CP_Drtn,TT_Task,DT_FixedDUR2,RV_OK,TK_NotStart,A1800,Footing insulation&backfilling,,3496,0,112,0,0,0,112,0,0,0,,,,2013-11-06 08:00,2013-11-21 16:00,,2012-06-14 08:00,2012-06-30 16:00,2012-06-14 08:00,2012-06-30 16:00,2012-06-14 08:00,2012-06-30 16:00,,2013-11-06 08:00,2013-11-21 16:00,,PT_Normal,,,,,uS8uTx1w8U+/d2vLdfHEGw,Rv2RxA42HUu1dvxAypxKzw,,,N,0,0,,,2012-01-05 14:19,2012-01-23 18:13,admin,admin
72,90065,1594,12764,1772,1,0,N,N,N,CP_Drtn,TT_Task,DT_FixedDUR2,RV_OK,TK_NotStart,A1830,Finishing works,,3496,3496,168,0,0,0,168,0,0,0,,,,2013-12-07 08:00,2013-12-30 16:00,,2012-07-15 08:00,2012-08-07 16:00,2012-07-15 08:00,2012-08-07 16:00,2012-07-15 08:00,2012-08-07 16:00,,2013-12-07 08:00,2013-12-30 16:00,,PT_Normal,,,,,Ss+zb/Uj3kyajTjBXIrSBQ,eTR3SHxbskeQfO2cB5H2VQ,,,N,0,0,,,2012-01-05 14:19,2012-01-23 18:13,admin,admin
73,90066,1594,12764,1772,1,0,N,N,N,CP_Drtn,TT_Task,DT_FixedDUR2,RV_OK,TK_NotStart,A1780,Steel columns erection,,4024,4024,40,0,0,0,40,0,0,0,,,,2013-12-25 08:00,2013-12-30 16:00,,2012-05-17 08:00,2012-05-22 16:00,2012-05-17 08:00,2012-05-22 16:00,2012-05-17 08:00,2012-05-22 16:00,,2013-12-25 08:00,2013-12-30 16:00,,PT_Normal,,,,,KJ8yE1n/Fk2kc0UjHS9U/g,BfO5yZ4znUKEGu1L74NBOA,,,N,0,0,,,2012-01-05 14:19,2012-01-23 18:13,admin,admin
74,90080,1594,12363,1772,1,0,N,N,N,CP_Drtn,TT_Task,DT_FixedDUR2,RV_OK,TK_NotStart,A1840,Excavation,,3976,0,24,0,0,0,24,0,0,0,,,,2013-09-07 08:00,2013-09-09 16:00,,2012-02-05 08:00,2012-02-07 16:00,2012-02-05 08:00,2012-02-07 16:00,2012-02-05 08:00,2012-02-07 16:00,,2013-09-07 08:00,2013-09-09 16:00,,PT_Normal,,,,,+1N9zUE7C0OrOb0KPJ83wA,wUNGo/83JkejVZNbARL7BA,,,N,0,0,,,2012-01-05 14:49,2012-01-23 18:13,admin,admin
75,90081,1594,12363,1772,1,0,N,N,N,CP_Drtn,TT_Task,DT_FixedDUR2,RV_OK,TK_NotStart,A1850,Foundation,,3976,0,144,0,0,0,144,0,0,0,,,,2013-09-10 08:00,2013-09-30 16:00,,2012-02-08 08:00,2012-02-28 16:00,2012-02-08 08:00,2012-02-28 16:00,2012-02-08 08:00,2012-02-28 16:00,,2013-09-10 08:00,2013-09-30 16:00,,PT_Normal,,,,,LizpRTD1gE+qtyx7Dzq4KQ,kwolqFn6h02w7oV1zhKw2A,,,N,0,0,,,2012-01-05 14:49,2012-01-23 18:13,admin,admin
76,90082,1594,12363,1772,1,0,N,N,N,CP_Drtn,TT_Task,DT_FixedDUR2,RV_OK,TK_NotStart,A1860,Columns,,3976,0,56,0,0,0,56,0,0,0,,,,2013-10-01 08:00,2013-10-08 16:00,,2012-02-29 08:00,2012-03-07 16:00,2012-02-29 08:00,2012-03-07 16:00,2012-02-29 08:00,2012-03-07 16:00,,2013-10-01 08:00,2013-10-08 16:00,,PT_Normal,,,,,KrgiFxX1HUuFc0tI/24RaQ,luLyoGB7TEa9q18F6fxTFQ,,,N,0,0,,,2012-01-05 14:49,2012-01-23 18:13,admin,admin
77,90083,1594,12363,1772,1,0,N,N,N,CP_Drtn,TT_Task,DT_FixedDUR2,RV_OK,TK_NotStart,A1870,Ground floor slab,,3976,0,112,0,0,0,112,0,0,0,,,,2013-10-09 08:00,2013-10-24 16:00,,2012-03-08 08:00,2012-03-24 16:00,2012-03-08 08:00,2012-03-24 16:00,2012-03-08 08:00,2012-03-24 16:00,,2013-10-09 08:00,2013-10-24 16:00,,PT_Normal,,,,,5IGbnSsmpkm5e+KopIOHvQ,enP9aff92Uac0KjsxjMKcw,,,N,0,0,,,2012-01-05 14:49,2012-01-23 18:13,admin,admin
78,90084,1594,12363,1772,1,0,N,N,N,CP_Drtn,TT_Task,DT_FixedDUR2,RV_OK,TK_NotStart,A1920,Ground floor masonry,,3976,0,80,0,0,0,80,0,0,0,,,,2013-11-25 08:00,2013-12-05 16:00,,2012-04-24 08:00,2012-05-05 16:00,2012-04-24 08:00,2012-05-05 16:00,2012-04-24 08:00,2012-05-05 16:00,,2013-11-25 08:00,2013-12-05 16:00,,PT_Normal,,,,,6x/Fufr0EUCgH9fd3l618w,vWuxMj/YSUOLsJk/1BNU0g,,,N,0,0,,,2012-01-05 14:49,2012-01-23 18:13,admin,admin
79,90085,1594,12363,1772,1,0,N,N,N,CP_Drtn,TT_Task,DT_FixedDUR2,RV_OK,TK_NotStart,A1890,Masonry under slab on grade,,3976,0,80,0,0,0,80,0,0,0,,,,2013-10-26 08:00,2013-11-05 16:00,,2012-03-25 08:00,2012-04-04 16:00,2012-03-25 08:00,2012-04-04 16:00,2012-03-25 08:00,2012-04-04 16:00,,2013-10-26 08:00,2013-11-05 16:00,,PT_Normal,,,,,a7Kdfp08uk+ILHtOHOHAYA,cuxbIY7oJ0WaWnQ5jy2Ltw,,,N,0,0,,,2012-01-05 14:49,2012-01-23 18:13,admin,admin
80,90086,1594,12363,1772,1,0,N,N,N,CP_Drtn,TT_Task,DT_FixedDUR2,RV_OK,TK_NotStart,A1910,Slab on grade,,3976,0,16,0,0,0,16,0,0,0,,,,2013-11-23 08:00,2013-11-24 16:00,,2012-04-22 08:00,2012-04-23 16:00,2012-04-22 08:00,2012-04-23 16:00,2012-04-22 08:00,2012-04-23 16:00,,2013-11-23 08:00,2013-11-24 16:00,,PT_Normal,,,,,5h324xENnU26hGHbUVjkyA,ExWMzUiQ9kO9pO4U/jZGCQ,,,N,0,0,,,2012-01-05 14:49,2012-01-23 18:13,admin,admin
81,90087,1594,12363,1772,1,0,N,N,N,CP_Drtn,TT_Task,DT_FixedDUR2,RV_OK,TK_NotStart,A1900,Footing insulation&backfilling,,3976,0,112,0,0,0,112,0,0,0,,,,2013-11-06 08:00,2013-11-21 16:00,,2012-04-05 08:00,2012-04-21 16:00,2012-04-05 08:00,2012-04-21 16:00,2012-04-05 08:00,2012-04-21 16:00,,2013-11-06 08:00,2013-11-21 16:00,,PT_Normal,,,,,3aoIuI0ic0qopRqRGsPL6A,uS8uTx1w8U+/d2vLdfHEGw,,,N,0,0,,,2012-01-05 14:49,2012-01-23 18:13,admin,admin
82,90088,1594,12363,1772,1,0,N,N,N,CP_Drtn,TT_Task,DT_FixedDUR2,RV_OK,TK_NotStart,A1930,Finishing works,,3976,3976,168,0,0,0,168,0,0,0,,,,2013-12-07 08:00,2013-12-30 16:00,,2012-05-06 08:00,2012-05-29 16:00,2012-05-06 08:00,2012-05-29 16:00,2012-05-06 08:00,2012-05-29 16:00,,2013-12-07 08:00,2013-12-30 16:00,,PT_Normal,,,,,VtdNWcy5yUGIegVFH1EYXQ,Ss+zb/Uj3kyajTjBXIrSBQ,,,N,0,0,,,2012-01-05 14:49,2012-01-23 18:13,admin,admin
83,90099,1594,12860,1772,1,0,N,N,N,CP_Drtn,TT_Task,DT_FixedDUR2,RV_OK,TK_NotStart,A1940,Excavation,,1352,0,40,0,0,0,40,0,0,0,,,,2013-04-04 08:00,2013-04-09 16:00,,2012-09-19 08:00,2012-09-24 16:00,2012-09-19 08:00,2012-09-24 16:00,2012-09-19 08:00,2012-09-24 16:00,,2013-04-04 08:00,2013-04-09 16:00,,PT_Normal,,,,,i/Jq3ylGw0abWGvXoVuvJg,+1N9zUE7C0OrOb0KPJ83wA,,,N,0,0,,,2012-01-05 15:55,2012-01-23 18:13,admin,admin
84,90100,1594,12860,1772,1,0,N,N,N,CP_Drtn,TT_Task,DT_FixedDUR2,RV_OK,TK_NotStart,A1950,Foundation,,1352,0,144,0,0,0,144,0,0,0,,,,2013-04-10 08:00,2013-04-30 16:00,,2012-09-25 08:00,2012-10-15 16:00,2012-09-25 08:00,2012-10-15 16:00,2012-09-25 08:00,2012-10-15 16:00,,2013-04-10 08:00,2013-04-30 16:00,,PT_Normal,,,,,ORnInsb6TE6DZF/U66c3vg,LizpRTD1gE+qtyx7Dzq4KQ,,,N,0,0,,,2012-01-05 15:55,2012-01-23 18:13,admin,admin
85,90101,1594,12860,1772,1,0,N,N,N,CP_Drtn,TT_Task,DT_FixedDUR2,RV_OK,TK_NotStart,A1960,Basement Columns&foundation wall,,1352,0,56,0,0,0,56,0,0,0,,,,2013-05-01 08:00,2013-05-08 16:00,,2012-10-16 08:00,2012-10-23 16:00,2012-10-16 08:00,2012-10-23 16:00,2012-10-16 08:00,2012-10-23 16:00,,2013-05-01 08:00,2013-05-08 16:00,,PT_Normal,,,,,Hc/U2JoubUagXGvofVGljQ,KrgiFxX1HUuFc0tI/24RaQ,,,N,0,0,,,2012-01-05 15:55,2012-01-23 18:13,admin,admin
86,90102,1594,12860,1772,1,0,N,N,N,CP_Drtn,TT_Task,DT_FixedDUR2,RV_OK,TK_NotStart,A1970,Ground floor slab,,1352,0,112,0,0,0,112,0,0,0,,,,2013-06-11 08:00,2013-06-26 16:00,,2012-11-26 08:00,2012-12-11 16:00,2012-11-26 08:00,2012-12-11 16:00,2012-11-26 08:00,2012-12-11 16:00,,2013-06-11 08:00,2013-06-26 16:00,,PT_Normal,,,,,cMpND8624EmkBu0EhPxEKg,5IGbnSsmpkm5e+KopIOHvQ,,,N,0,0,,,2012-01-05 15:55,2012-01-23 18:13,admin,admin
87,90103,1594,12860,1772,1,0,N,N,N,CP_Drtn,TT_Task,DT_FixedDUR2,RV_OK,TK_NotStart,A2010,Ground floor masonry,,1352,0,80,0,0,0,80,0,0,0,,,,2013-06-27 08:00,2013-07-08 16:00,,2012-12-12 08:00,2012-12-23 16:00,2012-12-12 08:00,2012-12-23 16:00,2012-12-12 08:00,2012-12-23 16:00,,2013-06-27 08:00,2013-07-08 16:00,,PT_Normal,,,,,RbEO11E5iESinrpum2ZOaw,6x/Fufr0EUCgH9fd3l618w,,,N,0,0,,,2012-01-05 15:55,2012-01-23 18:13,admin,admin
88,90107,1594,12860,1772,1,0,N,N,N,CP_Drtn,TT_Task,DT_FixedDUR2,RV_OK,TK_NotStart,A2020,Finishing works,,1352,0,240,0,0,0,240,0,0,0,,,,2013-07-09 08:00,2013-08-12 16:00,,2012-12-24 08:00,2013-01-27 16:00,2012-12-24 08:00,2013-01-27 16:00,2012-12-24 08:00,2013-01-27 16:00,,2013-07-09 08:00,2013-08-12 16:00,,PT_Normal,,,,,NlfXQgSn6kCgYgNiIUQu0A,VtdNWcy5yUGIegVFH1EYXQ,,,N,0,0,,,2012-01-05 15:55,2012-01-23 18:13,admin,admin
89,90108,1594,12860,1772,1,0,N,N,N,CP_Drtn,TT_Task,DT_FixedDUR2,RV_OK,TK_NotStart,A2030,Basement slab,,1352,0,112,0,0,0,112,0,0,0,,,,2013-05-09 08:00,2013-05-25 16:00,,2012-10-24 08:00,2012-11-08 16:00,2012-10-24 08:00,2012-11-08 16:00,2012-10-24 08:00,2012-11-08 16:00,,2013-05-09 08:00,2013-05-25 16:00,,PT_Normal,,,,,FksAmJpTlU68Z9ZyrSYV/A,,,,N,0,0,,,2012-01-05 15:56,2012-01-23 18:13,admin,admin
90,90109,1594,12860,1772,1,0,N,N,N,CP_Drtn,TT_Task,DT_FixedDUR2,RV_OK,TK_NotStart,A2040,Ground floor columns,,1352,0,112,0,0,0,112,0,0,0,,,,2013-05-26 08:00,2013-06-10 16:00,,2012-11-10 08:00,2012-11-25 16:00,2012-11-10 08:00,2012-11-25 16:00,2012-11-10 08:00,2012-11-25 16:00,,2013-05-26 08:00,2013-06-10 16:00,,PT_Normal,,,,,G2qcnr1ZOUa9zPw2ibOLWw,,,,N,0,0,,,2012-01-05 15:57,2012-01-23 18:13,admin,admin
91,90110,1594,12792,1772,1,0,N,N,N,CP_Drtn,TT_Task,DT_FixedDUR2,RV_OK,TK_NotStart,A2050,Excavation,,3288,0,40,0,0,0,40,0,0,0,,,,2013-05-29 08:00,2013-06-03 16:00,,2012-02-05 08:00,2012-02-09 16:00,2012-02-05 08:00,2012-02-09 16:00,2012-02-05 08:00,2012-02-09 16:00,,2013-05-29 08:00,2013-06-03 16:00,,PT_Normal,,,,,tdh0mcF16EmAkZiFvjuJEQ,+1N9zUE7C0OrOb0KPJ83wA,,,N,0,0,,,2012-01-05 16:54,2012-01-23 18:13,admin,admin
92,90111,1594,12792,1772,1,0,N,N,N,CP_Drtn,TT_Task,DT_FixedDUR2,RV_OK,TK_NotStart,A2060,Foundation,,3288,0,160,0,0,0,160,0,0,0,,,,2013-06-04 08:00,2013-06-26 16:00,,2012-02-11 08:00,2012-03-04 16:00,2012-02-11 08:00,2012-03-04 16:00,2012-02-11 08:00,2012-03-04 16:00,,2013-06-04 08:00,2013-06-26 16:00,,PT_Normal,,,,,qXYAIRk9LEulTTDoaaWRCw,LizpRTD1gE+qtyx7Dzq4KQ,,,N,0,0,,,2012-01-05 16:54,2012-01-23 18:13,admin,admin
93,90112,1594,12792,1772,1,0,N,N,N,CP_Drtn,TT_Task,DT_FixedDUR2,RV_OK,TK_NotStart,A2070,Columns,,3288,0,56,0,0,0,56,0,0,0,,,,2013-06-27 08:00,2013-07-04 16:00,,2012-03-05 08:00,2012-03-12 16:00,2012-03-05 08:00,2012-03-12 16:00,2012-03-05 08:00,2012-03-12 16:00,,2013-06-27 08:00,2013-07-04 16:00,,PT_Normal,,,,,ptbO7+1K6kuUSqCb8D9mzw,KrgiFxX1HUuFc0tI/24RaQ,,,N,0,0,,,2012-01-05 16:54,2012-01-23 18:13,admin,admin
94,90113,1594,12792,1772,1,0,N,N,N,CP_Drtn,TT_Task,DT_FixedDUR2,RV_OK,TK_NotStart,A2080,Ground floor slab,,3288,0,160,0,0,0,160,0,0,0,,,,2013-07-06 08:00,2013-07-28 16:00,,2012-03-13 08:00,2012-04-04 16:00,2012-03-13 08:00,2012-04-04 16:00,2012-03-13 08:00,2012-04-04 16:00,,2013-07-06 08:00,2013-07-28 16:00,,PT_Normal,,,,,EFmuOjbAVky+6v4HTS2GnQ,5IGbnSsmpkm5e+KopIOHvQ,,,N,0,0,,,2012-01-05 16:54,2012-01-23 18:13,admin,admin
95,90114,1594,12792,1772,1,0,N,N,N,CP_Drtn,TT_Task,DT_FixedDUR2,RV_OK,TK_NotStart,A2120,Ground floor masonry,,3288,0,80,0,0,0,80,0,0,0,,,,2013-09-05 08:00,2013-09-16 16:00,,2012-05-14 08:00,2012-05-24 16:00,2012-05-14 08:00,2012-05-24 16:00,2012-05-14 08:00,2012-05-24 16:00,,2013-09-05 08:00,2013-09-16 16:00,,PT_Normal,,,,,waGTX2GwJ0CbdgTDFUTFDg,6x/Fufr0EUCgH9fd3l618w,,,N,0,0,,,2012-01-05 16:54,2012-01-23 18:13,admin,admin
96,90115,1594,12792,1772,1,0,N,N,N,CP_Drtn,TT_Task,DT_FixedDUR2,RV_OK,TK_NotStart,A2090,Masonry under slab on grade,,3288,0,120,0,0,0,120,0,0,0,,,,2013-07-29 08:00,2013-08-14 16:00,,2012-04-05 08:00,2012-04-22 16:00,2012-04-05 08:00,2012-04-22 16:00,2012-04-05 08:00,2012-04-22 16:00,,2013-07-29 08:00,2013-08-14 16:00,,PT_Normal,,,,,qbMq42rBRUmMxgI16xlEUA,a7Kdfp08uk+ILHtOHOHAYA,,,N,0,0,,,2012-01-05 16:54,2012-01-23 18:13,admin,admin
97,90116,1594,12792,1772,1,0,N,N,N,CP_Drtn,TT_Task,DT_FixedDUR2,RV_OK,TK_NotStart,A2110,Slab on grade,,3288,0,32,0,0,0,32,0,0,0,,,,2013-09-01 08:00,2013-09-04 16:00,,2012-05-09 08:00,2012-05-13 16:00,2012-05-09 08:00,2012-05-13 16:00,2012-05-09 08:00,2012-05-13 16:00,,2013-09-01 08:00,2013-09-04 16:00,,PT_Normal,,,,,ziFHI3YB2UyvU9lPQyQNiw,5h324xENnU26hGHbUVjkyA,,,N,0,0,,,2012-01-05 16:54,2012-01-23 18:13,admin,admin
98,90117,1594,12792,1772,1,0,N,N,N,CP_Drtn,TT_Task,DT_FixedDUR2,RV_OK,TK_NotStart,A2100,Footing insulation&backfilling,,3288,0,112,0,0,0,112,0,0,0,,,,2013-08-15 08:00,2013-08-31 16:00,,2012-04-23 08:00,2012-05-08 16:00,2012-04-23 08:00,2012-05-08 16:00,2012-04-23 08:00,2012-05-08 16:00,,2013-08-15 08:00,2013-08-31 16:00,,PT_Normal,,,,,265jX8CNyUeRSBhvlQhhwg,3aoIuI0ic0qopRqRGsPL6A,,,N,0,0,,,2012-01-05 16:54,2012-01-23 18:13,admin,admin
99,90118,1594,12792,1772,1,0,N,N,N,CP_Drtn,TT_Task,DT_FixedDUR2,RV_OK,TK_NotStart,A2130,Finishing works,,3288,0,280,0,0,0,280,0,0,0,,,,2013-09-17 08:00,2013-10-27 16:00,,2012-05-26 08:00,2012-07-04 16:00,2012-05-26 08:00,2012-07-04 16:00,2012-05-26 08:00,2012-07-04 16:00,,2013-09-17 08:00,2013-10-27 16:00,,PT_Normal,,,,,uftjd2UgTUGN3/t67+NEkA,VtdNWcy5yUGIegVFH1EYXQ,,,N,0,0,,,2012-01-05 16:54,2012-01-23 18:13,admin,admin
100,90119,1594,12768,1772,1,0,N,N,N,CP_Drtn,TT_Task,DT_FixedDUR2,RV_OK,TK_NotStart,A2140,Excavation,,928,0,80,0,0,0,80,0,0,0,,,,2012-11-18 08:00,2012-11-28 16:00,,2012-07-05 08:00,2012-07-16 16:00,2012-07-05 08:00,2012-07-16 16:00,2012-07-05 08:00,2012-07-16 16:00,,2012-11-18 08:00,2012-11-28 16:00,,PT_Normal,,,,,KvGCvuZtskOQW6WhPQm5kA,MPY205dx60SP3ytq5tBuyw,,,N,0,0,,,2012-01-08 11:17,2012-01-23 18:13,admin,admin
101,90120,1594,12768,1772,1,0,N,N,N,CP_Drtn,TT_Task,DT_FixedDUR2,RV_OK,TK_NotStart,A2150,Foundation,,928,0,200,0,0,0,200,0,0,0,,,,2012-11-29 08:00,2012-12-27 16:00,,2012-07-17 08:00,2012-08-14 16:00,2012-07-17 08:00,2012-08-14 16:00,2012-07-17 08:00,2012-08-14 16:00,,2012-11-29 08:00,2012-12-27 16:00,,PT_Normal,,,,,DwgI9l8YKEqfNVMqVoJzuQ,td5MyLpnbEyW9KOK8d0m0A,,,N,0,0,,,2012-01-08 11:17,2012-01-23 18:13,admin,admin
102,90121,1594,12768,1772,1,0,N,N,N,CP_Drtn,TT_Task,DT_FixedDUR2,RV_OK,TK_NotStart,A2160,Ground floor Columns,,928,0,120,0,0,0,120,0,0,0,,,,2012-12-29 08:00,2013-01-14 16:00,,2012-08-15 08:00,2012-09-01 16:00,2012-08-15 08:00,2012-09-01 16:00,2012-08-15 08:00,2012-09-01 16:00,,2012-12-29 08:00,2013-01-14 16:00,,PT_Normal,,,,,kkDRDwspsUOlcVdM2ZIaqw,KC8ypy1+xEuMqcpUNUYuKA,,,N,0,0,,,2012-01-08 11:17,2012-01-23 18:13,admin,admin
103,90122,1594,12768,1772,1,0,N,N,N,CP_Drtn,TT_Task,DT_FixedDUR2,RV_OK,TK_NotStart,A2170,Ground floor slab,,928,0,240,0,0,0,240,0,0,0,,,,2013-01-15 08:00,2013-02-18 16:00,,2012-09-02 08:00,2012-10-06 16:00,2012-09-02 08:00,2012-10-06 16:00,2012-09-02 08:00,2012-10-06 16:00,,2013-01-15 08:00,2013-02-18 16:00,,PT_Normal,,,,,/sPYGpbvg0S23mEjP3OmzA,,,,N,0,0,,,2012-01-08 11:18,2012-01-23 18:13,admin,admin
104,90123,1594,12768,1772,1,0,N,N,N,CP_Drtn,TT_Task,DT_FixedDUR2,RV_OK,TK_NotStart,A2180,First floor columns,,928,0,120,0,0,0,120,0,0,0,,,,2013-02-19 08:00,2013-03-07 16:00,,2012-10-07 08:00,2012-10-23 16:00,2012-10-07 08:00,2012-10-23 16:00,2012-10-07 08:00,2012-10-23 16:00,,2013-02-19 08:00,2013-03-07 16:00,,PT_Normal,,,,,Z66X6SLQIkqepmzqnbk/hA,,,,N,0,0,,,2012-01-08 11:18,2012-01-23 18:13,admin,admin
105,90124,1594,12768,1772,1,0,N,N,N,CP_Drtn,TT_Task,DT_FixedDUR2,RV_OK,TK_NotStart,A2190,First floor slab,,2808,2808,160,0,0,0,160,0,0,0,,,,2013-12-08 08:00,2013-12-30 16:00,,2012-10-24 08:00,2012-11-15 16:00,2012-10-24 08:00,2012-11-15 16:00,2012-10-24 08:00,2012-11-15 16:00,,2013-12-08 08:00,2013-12-30 16:00,,PT_Normal,,,,,i7v1G+vKb0+IjotYWNr96g,,,,N,0,0,,,2012-01-08 11:18,2012-01-23 18:13,admin,admin
106,90125,1594,12768,1772,1,0,N,N,N,CP_Drtn,TT_Task,DT_FixedDUR2,RV_OK,TK_NotStart,A2200,Finishing works,,1568,1568,720,0,0,0,720,0,0,0,,,,2013-09-17 08:00,2013-12-30 16:00,,2013-01-31 08:00,2013-05-15 16:00,2013-01-31 08:00,2013-05-15 16:00,2013-01-31 08:00,2013-05-15 16:00,,2013-09-17 08:00,2013-12-30 16:00,,PT_Normal,,,,,1u3k3bfLRECGwCEvz1c29g,,,,N,0,0,,,2012-01-08 11:44,2012-01-23 18:13,admin,admin
107,90126,1594,12768,1772,1,0,N,N,N,CP_Drtn,TT_Task,DT_FixedDUR2,RV_OK,TK_NotStart,A2210,Masonry works,,928,0,240,0,0,0,240,0,0,0,,,,2013-05-12 08:00,2013-06-15 16:00,,2012-12-27 08:00,2013-01-30 16:00,2012-12-27 08:00,2013-01-30 16:00,2012-12-27 08:00,2013-01-30 16:00,,2013-05-12 08:00,2013-06-15 16:00,,PT_Normal,,,,,4HB8nQ2F9kScgrTJxPh4Xg,,,,N,0,0,,,2012-01-08 11:46,2012-01-23 18:13,admin,admin
108,90127,1594,12768,1772,1,0,N,N,N,CP_Drtn,TT_Task,DT_FixedDUR2,RV_OK,TK_NotStart,A2220,Slab on grade,,928,0,80,0,0,0,80,0,0,0,,,,2013-04-30 08:00,2013-05-11 16:00,,2012-12-16 08:00,2012-12-26 16:00,2012-12-16 08:00,2012-12-26 16:00,2012-12-16 08:00,2012-12-26 16:00,,2013-04-30 08:00,2013-05-11 16:00,,PT_Normal,,,,,DGV2e9vh2EKMrgg+3k8f6A,,,,N,0,0,,,2012-01-08 11:47,2012-01-23 18:13,admin,admin
109,90128,1594,12768,1772,1,0,N,N,N,CP_Drtn,TT_Task,DT_FixedDUR2,RV_OK,TK_NotStart,A2230,Masonry under slab on grade,,928,0,160,0,0,0,160,0,0,0,,,,2013-03-09 08:00,2013-03-31 16:00,,2012-10-24 08:00,2012-11-15 16:00,2012-10-24 08:00,2012-11-15 16:00,2012-10-24 08:00,2012-11-15 16:00,,2013-03-09 08:00,2013-03-31 16:00,,PT_Normal,,,,,5nawUH7HNk6nzLixzXKDNA,,,,N,0,0,,,2012-01-08 11:47,2012-01-23 18:13,admin,admin
110,90129,1594,12768,1772,1,0,N,N,N,CP_Drtn,TT_Task,DT_FixedDUR2,RV_OK,TK_NotStart,A2240,Footing insulation&backfilling,,928,0,200,0,0,0,200,0,0,0,,,,2013-04-01 08:00,2013-04-29 16:00,,2012-11-17 08:00,2012-12-15 16:00,2012-11-17 08:00,2012-12-15 16:00,2012-11-17 08:00,2012-12-15 16:00,,2013-04-01 08:00,2013-04-29 16:00,,PT_Normal,,,,,e9OWDDg1jkWRrYo8r4brlg,,,,N,0,0,,,2012-01-08 11:47,2012-01-23 18:13,admin,admin
111,90131,1594,12836,1772,1,0,N,N,N,CP_Drtn,TT_Task,DT_FixedDUR2,RV_OK,TK_NotStart,A2260,Excavation,,992,0,80,0,0,0,80,0,0,0,,,,2012-12-23 08:00,2013-01-02 16:00,,2012-07-31 08:00,2012-08-11 16:00,2012-07-31 08:00,2012-08-11 16:00,2012-07-31 08:00,2012-08-11 16:00,,2012-12-23 08:00,2013-01-02 16:00,,PT_Normal,,,,,DGBImho8NUeH72ExUzLRsQ,KvGCvuZtskOQW6WhPQm5kA,,,N,0,0,,,2012-01-08 11:56,2012-01-23 18:13,admin,admin
112,90132,1594,12836,1772,1,0,N,N,N,CP_Drtn,TT_Task,DT_FixedDUR2,RV_OK,TK_NotStart,A2280,Foundation,,992,0,200,0,0,0,200,0,0,0,,,,2013-01-03 08:00,2013-01-31 16:00,,2012-08-12 08:00,2012-09-09 16:00,2012-08-12 08:00,2012-09-09 16:00,2012-08-12 08:00,2012-09-09 16:00,,2013-01-03 08:00,2013-01-31 16:00,,PT_Normal,,,,,EDzAM7gYaU+8pdBv4yKtaQ,DwgI9l8YKEqfNVMqVoJzuQ,,,N,0,0,,,2012-01-08 11:56,2012-01-23 18:13,admin,admin
113,90133,1594,12836,1772,1,0,N,N,N,CP_Drtn,TT_Task,DT_FixedDUR2,RV_OK,TK_NotStart,A2290,Ground floor Columns,,992,0,120,0,0,0,120,0,0,0,,,,2013-02-02 08:00,2013-02-18 16:00,,2012-09-10 08:00,2012-09-26 16:00,2012-09-10 08:00,2012-09-26 16:00,2012-09-10 08:00,2012-09-26 16:00,,2013-02-02 08:00,2013-02-18 16:00,,PT_Normal,,,,,TqQ9Ray6/kiSCtX98+Qrxw,kkDRDwspsUOlcVdM2ZIaqw,,,N,0,0,,,2012-01-08 11:56,2012-01-23 18:13,admin,admin
114,90134,1594,12836,1772,1,0,N,N,N,CP_Drtn,TT_Task,DT_FixedDUR2,RV_OK,TK_NotStart,A2300,Ground floor slab,,992,0,160,0,0,0,160,0,0,0,,,,2013-02-19 08:00,2013-03-13 16:00,,2012-09-27 08:00,2012-10-20 16:00,2012-09-27 08:00,2012-10-20 16:00,2012-09-27 08:00,2012-10-20 16:00,,2013-02-19 08:00,2013-03-13 16:00,,PT_Normal,,,,,I2X7q3M0sku6qI2EG9mZag,/sPYGpbvg0S23mEjP3OmzA,,,N,0,0,,,2012-01-08 11:56,2012-01-23 18:13,admin,admin
115,90135,1594,12836,1772,1,0,N,N,N,CP_Drtn,TT_Task,DT_FixedDUR2,RV_OK,TK_NotStart,A2310,First floor columns,,992,0,120,0,0,0,120,0,0,0,,,,2013-03-14 08:00,2013-03-31 16:00,,2012-10-21 08:00,2012-11-06 16:00,2012-10-21 08:00,2012-11-06 16:00,2012-10-21 08:00,2012-11-06 16:00,,2013-03-14 08:00,2013-03-31 16:00,,PT_Normal,,,,,Et7ArnK6JE+6VNel7t36Mw,Z66X6SLQIkqepmzqnbk/hA,,,N,0,0,,,2012-01-08 11:56,2012-01-23 18:13,admin,admin
116,90136,1594,12836,1772,1,0,N,N,N,CP_Drtn,TT_Task,DT_FixedDUR2,RV_OK,TK_NotStart,A2320,First floor slab,,2712,2712,160,0,0,0,160,0,0,0,,,,2013-12-08 08:00,2013-12-30 16:00,,2012-11-07 08:00,2012-11-29 16:00,2012-11-07 08:00,2012-11-29 16:00,2012-11-07 08:00,2012-11-29 16:00,,2013-12-08 08:00,2013-12-30 16:00,,PT_Normal,,,,,Qs7ngIn1SE+hMAYD6Mw4Hw,i7v1G+vKb0+IjotYWNr96g,,,N,0,0,,,2012-01-08 11:56,2012-01-23 18:13,admin,admin
117,90137,1594,12836,1772,1,0,N,N,N,CP_Drtn,TT_Task,DT_FixedDUR2,RV_OK,TK_NotStart,A2370,Finishing works,,992,0,720,0,0,0,720,0,0,0,,,,2013-07-09 08:00,2013-10-21 16:00,,2013-02-14 08:00,2013-05-29 16:00,2013-02-14 08:00,2013-05-29 16:00,2013-02-14 08:00,2013-05-29 16:00,,2013-07-09 08:00,2013-10-21 16:00,,PT_Normal,,,,,r/oKkbBkkUuEIGHK3hbdmg,1u3k3bfLRECGwCEvz1c29g,,,N,0,0,,,2012-01-08 11:56,2012-01-23 18:13,admin,admin
118,90138,1594,12836,1772,1,0,N,N,N,CP_Drtn,TT_Task,DT_FixedDUR2,RV_OK,TK_NotStart,A2360,Masonry works,,992,0,240,0,0,0,240,0,0,0,,,,2013-06-04 08:00,2013-07-08 16:00,,2013-01-10 08:00,2013-02-13 16:00,2013-01-10 08:00,2013-02-13 16:00,2013-01-10 08:00,2013-02-13 16:00,,2013-06-04 08:00,2013-07-08 16:00,,PT_Normal,,,,,CGX3JoAZZESPhu88VwE6JA,4HB8nQ2F9kScgrTJxPh4Xg,,,N,0,0,,,2012-01-08 11:56,2012-01-23 18:13,admin,admin
119,90139,1594,12836,1772,1,0,N,N,N,CP_Drtn,TT_Task,DT_FixedDUR2,RV_OK,TK_NotStart,A2350,Slab on grade,,992,0,80,0,0,0,80,0,0,0,,,,2013-05-23 08:00,2013-06-03 16:00,,2012-12-30 08:00,2013-01-09 16:00,2012-12-30 08:00,2013-01-09 16:00,2012-12-30 08:00,2013-01-09 16:00,,2013-05-23 08:00,2013-06-03 16:00,,PT_Normal,,,,,97KxLwINiE+NyUdyuyunPg,DGV2e9vh2EKMrgg+3k8f6A,,,N,0,0,,,2012-01-08 11:56,2012-01-23 18:13,admin,admin
120,90140,1594,12836,1772,1,0,N,N,N,CP_Drtn,TT_Task,DT_FixedDUR2,RV_OK,TK_NotStart,A2330,Masonry under slab on grade,,992,0,160,0,0,0,160,0,0,0,,,,2013-04-01 08:00,2013-04-23 16:00,,2012-11-07 08:00,2012-11-29 16:00,2012-11-07 08:00,2012-11-29 16:00,2012-11-07 08:00,2012-11-29 16:00,,2013-04-01 08:00,2013-04-23 16:00,,PT_Normal,,,,,m/SMyTZ0VUqOIuNJhF0Yvg,5nawUH7HNk6nzLixzXKDNA,,,N,0,0,,,2012-01-08 11:56,2012-01-23 18:13,admin,admin
121,90141,1594,12836,1772,1,0,N,N,N,CP_Drtn,TT_Task,DT_FixedDUR2,RV_OK,TK_NotStart,A2340,Footing insulation&backfilling,,992,0,200,0,0,0,200,0,0,0,,,,2013-04-24 08:00,2013-05-22 16:00,,2012-12-01 08:00,2012-12-29 16:00,2012-12-01 08:00,2012-12-29 16:00,2012-12-01 08:00,2012-12-29 16:00,,2013-04-24 08:00,2013-05-22 16:00,,PT_Normal,,,,,CDRiaMmink2EqH4mJwutIg,e9OWDDg1jkWRrYo8r4brlg,,,N,0,0,,,2012-01-08 11:56,2012-01-23 18:13,admin,admin
122,90143,1594,12828,1772,1,0,N,N,N,CP_Drtn,TT_Task,DT_FixedDUR2,RV_OK,TK_NotStart,A2380,Excavation,,1608,0,80,0,0,0,80,0,0,0,,,,2013-01-27 08:00,2013-02-06 16:00,,2012-06-06 08:00,2012-06-17 16:00,2012-06-06 08:00,2012-06-17 16:00,2012-06-06 08:00,2012-06-17 16:00,,2013-01-27 08:00,2013-02-06 16:00,,PT_Normal,,,,,k9QWf0A5NUSrp7+E4Gb1OQ,DGBImho8NUeH72ExUzLRsQ,,,N,0,0,,,2012-01-08 13:04,2012-01-23 18:13,admin,admin
123,90144,1594,12828,1772,1,0,N,N,N,CP_Drtn,TT_Task,DT_FixedDUR2,RV_OK,TK_NotStart,A2390,Foundation,,1608,0,200,0,0,0,200,0,0,0,,,,2013-02-07 08:00,2013-03-07 16:00,,2012-06-18 08:00,2012-07-16 16:00,2012-06-18 08:00,2012-07-16 16:00,2012-06-18 08:00,2012-07-16 16:00,,2013-02-07 08:00,2013-03-07 16:00,,PT_Normal,,,,,UgsTZnHZXkOHJfeHRlZ1uw,EDzAM7gYaU+8pdBv4yKtaQ,,,N,0,0,,,2012-01-08 13:04,2012-01-23 18:13,admin,admin
124,90145,1594,12828,1772,1,0,N,N,N,CP_Drtn,TT_Task,DT_FixedDUR2,RV_OK,TK_NotStart,A2400,Ground floor Columns,,1608,0,120,0,0,0,120,0,0,0,,,,2013-03-09 08:00,2013-03-25 16:00,,2012-07-17 08:00,2012-08-02 16:00,2012-07-17 08:00,2012-08-02 16:00,2012-07-17 08:00,2012-08-02 16:00,,2013-03-09 08:00,2013-03-25 16:00,,PT_Normal,,,,,F2xJqCxt0kWUUFk6Haox4Q,TqQ9Ray6/kiSCtX98+Qrxw,,,N,0,0,,,2012-01-08 13:04,2012-01-23 18:13,admin,admin
125,90146,1594,12828,1772,1,0,N,N,N,CP_Drtn,TT_Task,DT_FixedDUR2,RV_OK,TK_NotStart,A2410,Ground floor slab,,1608,0,160,0,0,0,160,0,0,0,,,,2013-03-26 08:00,2013-04-17 16:00,,2012-08-04 08:00,2012-08-26 16:00,2012-08-04 08:00,2012-08-26 16:00,2012-08-04 08:00,2012-08-26 16:00,,2013-03-26 08:00,2013-04-17 16:00,,PT_Normal,,,,,Th0g6FhirUiSPCc+JSI+IQ,I2X7q3M0sku6qI2EG9mZag,,,N,0,0,,,2012-01-08 13:04,2012-01-23 18:13,admin,admin
126,90147,1594,12828,1772,1,0,N,N,N,CP_Drtn,TT_Task,DT_FixedDUR2,RV_OK,TK_NotStart,A2420,First floor columns,,1608,0,120,0,0,0,120,0,0,0,,,,2013-04-18 08:00,2013-05-05 16:00,,2012-08-27 08:00,2012-09-12 16:00,2012-08-27 08:00,2012-09-12 16:00,2012-08-27 08:00,2012-09-12 16:00,,2013-04-18 08:00,2013-05-05 16:00,,PT_Normal,,,,,yDpFEK4ziECjGRLCeFhIUQ,Et7ArnK6JE+6VNel7t36Mw,,,N,0,0,,,2012-01-08 13:04,2012-01-23 18:13,admin,admin
127,90148,1594,12828,1772,1,0,N,N,N,CP_Drtn,TT_Task,DT_FixedDUR2,RV_OK,TK_NotStart,A2430,First floor slab,,3088,3088,160,0,0,0,160,0,0,0,,,,2013-12-08 08:00,2013-12-30 16:00,,2012-09-13 08:00,2012-10-06 16:00,2012-09-13 08:00,2012-10-06 16:00,2012-09-13 08:00,2012-10-06 16:00,,2013-12-08 08:00,2013-12-30 16:00,,PT_Normal,,,,,LHP6lXuivE+UYG0pTC4tsA,Qs7ngIn1SE+hMAYD6Mw4Hw,,,N,0,0,,,2012-01-08 13:04,2012-01-23 18:13,admin,admin
128,90149,1594,12828,1772,1,0,N,N,N,CP_Drtn,TT_Task,DT_FixedDUR2,RV_OK,TK_NotStart,A2480,Finishing works,,1608,0,480,0,0,0,480,0,0,0,,,,2013-08-13 08:00,2013-10-21 16:00,,2012-12-22 08:00,2013-02-28 16:00,2012-12-22 08:00,2013-02-28 16:00,2012-12-22 08:00,2013-02-28 16:00,,2013-08-13 08:00,2013-10-21 16:00,,PT_Normal,,,,,vz5tariXp0iPZ5de1XvzuA,r/oKkbBkkUuEIGHK3hbdmg,,,N,0,0,,,2012-01-08 13:04,2012-01-23 18:13,admin,admin
129,90150,1594,12828,1772,1,0,N,N,N,CP_Drtn,TT_Task,DT_FixedDUR2,RV_OK,TK_NotStart,A2470,Masonry works,,1608,0,240,0,0,0,240,0,0,0,,,,2013-07-09 08:00,2013-08-12 16:00,,2012-11-17 08:00,2012-12-20 16:00,2012-11-17 08:00,2012-12-20 16:00,2012-11-17 08:00,2012-12-20 16:00,,2013-07-09 08:00,2013-08-12 16:00,,PT_Normal,,,,,MUOP9vAwWkmvKWKrR16TeQ,CGX3JoAZZESPhu88VwE6JA,,,N,0,0,,,2012-01-08 13:04,2012-01-23 18:13,admin,admin
130,90151,1594,12828,1772,1,0,N,N,N,CP_Drtn,TT_Task,DT_FixedDUR2,RV_OK,TK_NotStart,A2460,Slab on grade,,1608,0,80,0,0,0,80,0,0,0,,,,2013-06-27 08:00,2013-07-08 16:00,,2012-11-05 08:00,2012-11-15 16:00,2012-11-05 08:00,2012-11-15 16:00,2012-11-05 08:00,2012-11-15 16:00,,2013-06-27 08:00,2013-07-08 16:00,,PT_Normal,,,,,2wUC2I2lnEqs3Vb+0VlxIw,97KxLwINiE+NyUdyuyunPg,,,N,0,0,,,2012-01-08 13:04,2012-01-23 18:13,admin,admin
131,90152,1594,12828,1772,1,0,N,N,N,CP_Drtn,TT_Task,DT_FixedDUR2,RV_OK,TK_NotStart,A2440,Masonry under slab on grade,,1608,0,160,0,0,0,160,0,0,0,,,,2013-05-06 08:00,2013-05-28 16:00,,2012-09-13 08:00,2012-10-06 16:00,2012-09-13 08:00,2012-10-06 16:00,2012-09-13 08:00,2012-10-06 16:00,,2013-05-06 08:00,2013-05-28 16:00,,PT_Normal,,,,,Lq7HueTD3kGYuCl2yS/n6A,m/SMyTZ0VUqOIuNJhF0Yvg,,,N,0,0,,,2012-01-08 13:04,2012-01-23 18:13,admin,admin
132,90153,1594,12828,1772,1,0,N,N,N,CP_Drtn,TT_Task,DT_FixedDUR2,RV_OK,TK_NotStart,A2450,Footing insulation&backfilling,,1608,0,200,0,0,0,200,0,0,0,,,,2013-05-29 08:00,2013-06-26 16:00,,2012-10-07 08:00,2012-11-04 16:00,2012-10-07 08:00,2012-11-04 16:00,2012-10-07 08:00,2012-11-04 16:00,,2013-05-29 08:00,2013-06-26 16:00,,PT_Normal,,,,,2jrOwxweJk2n+uiV8T+1Mg,CDRiaMmink2EqH4mJwutIg,,,N,0,0,,,2012-01-08 13:04,2012-01-23 18:13,admin,admin
133,90154,1594,12824,1772,1,0,N,N,N,CP_Drtn,TT_Task,DT_FixedDUR2,RV_OK,TK_NotStart,A2490,Excavation,,992,0,56,0,0,0,56,0,0,0,,,,2012-10-11 08:00,2012-10-18 16:00,,2012-05-20 08:00,2012-05-27 16:00,2012-05-20 08:00,2012-05-27 16:00,2012-05-20 08:00,2012-05-27 16:00,,2012-10-11 08:00,2012-10-18 16:00,,PT_Normal,,,,,Xl0OgzU6TEmdVJGlTuvc4A,tdh0mcF16EmAkZiFvjuJEQ,,,N,0,0,,,2012-01-08 13:16,2012-01-23 18:13,admin,admin
134,90155,1594,12824,1772,1,0,N,N,N,CP_Drtn,TT_Task,DT_FixedDUR2,RV_OK,TK_NotStart,A2500,Foundation,,992,0,200,0,0,0,200,0,0,0,,,,2012-10-20 08:00,2012-11-17 16:00,,2012-05-28 08:00,2012-06-25 16:00,2012-05-28 08:00,2012-06-25 16:00,2012-05-28 08:00,2012-06-25 16:00,,2012-10-20 08:00,2012-11-17 16:00,,PT_Normal,,,,,wOyEiBy65kyqvu91PUKNBQ,qXYAIRk9LEulTTDoaaWRCw,,,N,0,0,,,2012-01-08 13:16,2012-01-23 18:13,admin,admin
135,90156,1594,12824,1772,1,0,N,N,N,CP_Drtn,TT_Task,DT_FixedDUR2,RV_OK,TK_NotStart,A2510,Columns,,992,0,80,0,0,0,80,0,0,0,,,,2012-11-18 08:00,2012-11-28 16:00,,2012-06-26 08:00,2012-07-07 16:00,2012-06-26 08:00,2012-07-07 16:00,2012-06-26 08:00,2012-07-07 16:00,,2012-11-18 08:00,2012-11-28 16:00,,PT_Normal,,,,,0DJZ2VS7g0yJzMlBCwGQuA,ptbO7+1K6kuUSqCb8D9mzw,,,N,0,0,,,2012-01-08 13:16,2012-01-23 18:13,admin,admin
136,90157,1594,12824,1772,1,0,N,N,N,CP_Drtn,TT_Task,DT_FixedDUR2,RV_OK,TK_NotStart,A2520,Ground floor slab,,992,0,160,0,0,0,160,0,0,0,,,,2012-11-29 08:00,2012-12-22 16:00,,2012-07-08 08:00,2012-07-30 16:00,2012-07-08 08:00,2012-07-30 16:00,2012-07-08 08:00,2012-07-30 16:00,,2012-11-29 08:00,2012-12-22 16:00,,PT_Normal,,,,,uhtivDYxwkyCkL8eqrQ4dw,EFmuOjbAVky+6v4HTS2GnQ,,,N,0,0,,,2012-01-08 13:16,2012-01-23 18:13,admin,admin
137,90158,1594,12824,1772,1,0,N,N,N,CP_Drtn,TT_Task,DT_FixedDUR2,RV_OK,TK_NotStart,A2560,Ground floor masonry,,2288,0,120,0,0,0,120,0,0,0,,,,2013-08-07 08:00,2013-08-24 16:00,,2012-09-08 08:00,2012-09-24 16:00,2012-09-08 08:00,2012-09-24 16:00,2012-09-08 08:00,2012-09-24 16:00,,2013-08-07 08:00,2013-08-24 16:00,,PT_Normal,,,,,GZzNnbM8/06haOESh30UdA,waGTX2GwJ0CbdgTDFUTFDg,,,N,0,0,,,2012-01-08 13:16,2012-01-23 18:13,admin,admin
138,90159,1594,12824,1772,1,0,N,N,N,CP_Drtn,TT_Task,DT_FixedDUR2,RV_OK,TK_NotStart,A2530,Masonry under slab on grade,,2288,0,120,0,0,0,120,0,0,0,,,,2013-06-30 08:00,2013-07-16 16:00,,2012-07-31 08:00,2012-08-16 16:00,2012-07-31 08:00,2012-08-16 16:00,2012-07-31 08:00,2012-08-16 16:00,,2013-06-30 08:00,2013-07-16 16:00,,PT_Normal,,,,,wEaJDipP9E2eq9fTXpy6zg,qbMq42rBRUmMxgI16xlEUA,,,N,0,0,,,2012-01-08 13:16,2012-01-23 18:13,admin,admin
139,90160,1594,12824,1772,1,0,N,N,N,CP_Drtn,TT_Task,DT_FixedDUR2,RV_OK,TK_NotStart,A2550,Slab on grade,,2288,0,32,0,0,0,32,0,0,0,,,,2013-08-03 08:00,2013-08-06 16:00,,2012-09-03 08:00,2012-09-06 16:00,2012-09-03 08:00,2012-09-06 16:00,2012-09-03 08:00,2012-09-06 16:00,,2013-08-03 08:00,2013-08-06 16:00,,PT_Normal,,,,,zzEz226ao0eRGeEh0/TRsA,ziFHI3YB2UyvU9lPQyQNiw,,,N,0,0,,,2012-01-08 13:16,2012-01-23 18:13,admin,admin
140,90161,1594,12824,1772,1,0,N,N,N,CP_Drtn,TT_Task,DT_FixedDUR2,RV_OK,TK_NotStart,A2540,Footing insulation&backfilling,,2288,0,112,0,0,0,112,0,0,0,,,,2013-07-17 08:00,2013-08-01 16:00,,2012-08-18 08:00,2012-09-02 16:00,2012-08-18 08:00,2012-09-02 16:00,2012-08-18 08:00,2012-09-02 16:00,,2013-07-17 08:00,2013-08-01 16:00,,PT_Normal,,,,,on8i+rOIt0mXJvb8csl9eA,265jX8CNyUeRSBhvlQhhwg,,,N,0,0,,,2012-01-08 13:16,2012-01-23 18:13,admin,admin
141,90162,1594,12824,1772,1,0,N,N,N,CP_Drtn,TT_Task,DT_FixedDUR2,RV_OK,TK_NotStart,A2570,Finishing works,,2288,0,480,0,0,0,480,0,0,0,,,,2013-08-25 08:00,2013-11-02 16:00,,2012-09-25 08:00,2012-12-03 16:00,2012-09-25 08:00,2012-12-03 16:00,2012-09-25 08:00,2012-12-03 16:00,,2013-08-25 08:00,2013-11-02 16:00,,PT_Normal,,,,,zgeOJX+7MUWrYmYXsl6taw,uftjd2UgTUGN3/t67+NEkA,,,N,0,0,,,2012-01-08 13:16,2012-01-23 18:13,admin,admin
142,90163,1594,12832,1772,1,0,N,N,N,CP_Drtn,TT_Task,DT_FixedDUR2,RV_OK,TK_NotStart,A2580,Excavation,,1008,0,80,0,0,0,80,0,0,0,,,,2013-01-27 08:00,2013-02-06 16:00,,2012-09-02 08:00,2012-09-12 16:00,2012-09-02 08:00,2012-09-12 16:00,2012-09-02 08:00,2012-09-12 16:00,,2013-01-27 08:00,2013-02-06 16:00,,PT_Normal,,,,,aYoaWRsRxE6OxN9Cq0EBYA,k9QWf0A5NUSrp7+E4Gb1OQ,,,N,0,0,,,2012-01-08 13:30,2012-01-23 18:13,admin,admin
143,90164,1594,12832,1772,1,0,N,N,N,CP_Drtn,TT_Task,DT_FixedDUR2,RV_OK,TK_NotStart,A2590,Foundation,,1008,0,200,0,0,0,200,0,0,0,,,,2013-02-07 08:00,2013-03-07 16:00,,2012-09-13 08:00,2012-10-11 16:00,2012-09-13 08:00,2012-10-11 16:00,2012-09-13 08:00,2012-10-11 16:00,,2013-02-07 08:00,2013-03-07 16:00,,PT_Normal,,,,,aYNef5MCW0C1RKM3xps/vg,UgsTZnHZXkOHJfeHRlZ1uw,,,N,0,0,,,2012-01-08 13:30,2012-01-23 18:13,admin,admin
144,90165,1594,12832,1772,1,0,N,N,N,CP_Drtn,TT_Task,DT_FixedDUR2,RV_OK,TK_NotStart,A2600,Ground floor Columns,,1008,0,120,0,0,0,120,0,0,0,,,,2013-03-09 08:00,2013-03-25 16:00,,2012-10-13 08:00,2012-10-29 16:00,2012-10-13 08:00,2012-10-29 16:00,2012-10-13 08:00,2012-10-29 16:00,,2013-03-09 08:00,2013-03-25 16:00,,PT_Normal,,,,,j+om8e0zA0u30wRNBU01/Q,F2xJqCxt0kWUUFk6Haox4Q,,,N,0,0,,,2012-01-08 13:30,2012-01-23 18:13,admin,admin
145,90166,1594,12832,1772,1,0,N,N,N,CP_Drtn,TT_Task,DT_FixedDUR2,RV_OK,TK_NotStart,A2610,Ground floor slab,,1008,0,160,0,0,0,160,0,0,0,,,,2013-03-26 08:00,2013-04-17 16:00,,2012-10-30 08:00,2012-11-21 16:00,2012-10-30 08:00,2012-11-21 16:00,2012-10-30 08:00,2012-11-21 16:00,,2013-03-26 08:00,2013-04-17 16:00,,PT_Normal,,,,,XrU1eB9Ozk25EPD4uxy3Cw,Th0g6FhirUiSPCc+JSI+IQ,,,N,0,0,,,2012-01-08 13:30,2012-01-23 18:13,admin,admin
146,90167,1594,12832,1772,1,0,N,N,N,CP_Drtn,TT_Task,DT_FixedDUR2,RV_OK,TK_NotStart,A2620,First floor columns,,1008,0,120,0,0,0,120,0,0,0,,,,2013-04-18 08:00,2013-05-05 16:00,,2012-11-22 08:00,2012-12-09 16:00,2012-11-22 08:00,2012-12-09 16:00,2012-11-22 08:00,2012-12-09 16:00,,2013-04-18 08:00,2013-05-05 16:00,,PT_Normal,,,,,G5SMzj1ABUKpOgcvvwjjMQ,yDpFEK4ziECjGRLCeFhIUQ,,,N,0,0,,,2012-01-08 13:30,2012-01-23 18:13,admin,admin
147,90168,1594,12832,1772,1,0,N,N,N,CP_Drtn,TT_Task,DT_FixedDUR2,RV_OK,TK_NotStart,A2630,First floor slab,,2488,2488,160,0,0,0,160,0,0,0,,,,2013-12-08 08:00,2013-12-30 16:00,,2012-12-10 08:00,2013-01-01 16:00,2012-12-10 08:00,2013-01-01 16:00,2012-12-10 08:00,2013-01-01 16:00,,2013-12-08 08:00,2013-12-30 16:00,,PT_Normal,,,,,XP5HZ9RHCEmb0jS+4IR1+Q,LHP6lXuivE+UYG0pTC4tsA,,,N,0,0,,,2012-01-08 13:30,2012-01-23 18:13,admin,admin
148,90169,1594,12832,1772,1,0,N,N,N,CP_Drtn,TT_Task,DT_FixedDUR2,RV_OK,TK_NotStart,A2680,Finishing works,,1008,0,480,0,0,0,480,0,0,0,,,,2013-08-13 08:00,2013-10-21 16:00,,2013-03-19 08:00,2013-05-27 16:00,2013-03-19 08:00,2013-05-27 16:00,2013-03-19 08:00,2013-05-27 16:00,,2013-08-13 08:00,2013-10-21 16:00,,PT_Normal,,,,,R5npl8WVHEmDEDoIYFMO2w,vz5tariXp0iPZ5de1XvzuA,,,N,0,0,,,2012-01-08 13:30,2012-01-23 18:13,admin,admin
149,90170,1594,12832,1772,1,0,N,N,N,CP_Drtn,TT_Task,DT_FixedDUR2,RV_OK,TK_NotStart,A2670,Masonry works,,1008,0,240,0,0,0,240,0,0,0,,,,2013-07-09 08:00,2013-08-12 16:00,,2013-02-12 08:00,2013-03-18 16:00,2013-02-12 08:00,2013-03-18 16:00,2013-02-12 08:00,2013-03-18 16:00,,2013-07-09 08:00,2013-08-12 16:00,,PT_Normal,,,,,y6ped9ehK0a3TjU17JmsVw,MUOP9vAwWkmvKWKrR16TeQ,,,N,0,0,,,2012-01-08 13:30,2012-01-23 18:13,admin,admin
150,90171,1594,12832,1772,1,0,N,N,N,CP_Drtn,TT_Task,DT_FixedDUR2,RV_OK,TK_NotStart,A2660,Slab on grade,,1008,0,80,0,0,0,80,0,0,0,,,,2013-06-27 08:00,2013-07-08 16:00,,2013-01-31 08:00,2013-02-11 16:00,2013-01-31 08:00,2013-02-11 16:00,2013-01-31 08:00,2013-02-11 16:00,,2013-06-27 08:00,2013-07-08 16:00,,PT_Normal,,,,,4WKk2gxQKUCKbdRRBNETgQ,2wUC2I2lnEqs3Vb+0VlxIw,,,N,0,0,,,2012-01-08 13:30,2012-01-23 18:13,admin,admin
151,90172,1594,12832,1772,1,0,N,N,N,CP_Drtn,TT_Task,DT_FixedDUR2,RV_OK,TK_NotStart,A2640,Masonry under slab on grade,,1008,0,160,0,0,0,160,0,0,0,,,,2013-05-06 08:00,2013-05-28 16:00,,2012-12-10 08:00,2013-01-01 16:00,2012-12-10 08:00,2013-01-01 16:00,2012-12-10 08:00,2013-01-01 16:00,,2013-05-06 08:00,2013-05-28 16:00,,PT_Normal,,,,,ucbExlDh+0urh+hQwqwt0A,Lq7HueTD3kGYuCl2yS/n6A,,,N,0,0,,,2012-01-08 13:30,2012-01-23 18:13,admin,admin
152,90173,1594,12832,1772,1,0,N,N,N,CP_Drtn,TT_Task,DT_FixedDUR2,RV_OK,TK_NotStart,A2650,Footing insulation&backfilling,,1008,0,200,0,0,0,200,0,0,0,,,,2013-05-29 08:00,2013-06-26 16:00,,2013-01-02 08:00,2013-01-30 16:00,2013-01-02 08:00,2013-01-30 16:00,2013-01-02 08:00,2013-01-30 16:00,,2013-05-29 08:00,2013-06-26 16:00,,PT_Normal,,,,,qxlsF4ZK/EeVW66h5rcxkw,2jrOwxweJk2n+uiV8T+1Mg,,,N,0,0,,,2012-01-08 13:30,2012-01-23 18:13,admin,admin
153,90174,1594,12804,1772,1,0,N,N,N,CP_Drtn,TT_Task,DT_FixedDUR2,RV_OK,TK_NotStart,A2690,Excavation,,2288,0,80,0,0,0,80,0,0,0,,,,2013-01-03 08:00,2013-01-14 16:00,,2012-02-05 08:00,2012-02-15 16:00,2012-02-05 08:00,2012-02-15 16:00,2012-02-05 08:00,2012-02-15 16:00,,2013-01-03 08:00,2013-01-14 16:00,,PT_Normal,,,,,hUe2yZosI0W8OgpejwUm0Q,k9QWf0A5NUSrp7+E4Gb1OQ,,,N,0,0,,,2012-01-08 13:32,2012-01-23 18:13,admin,admin
154,90175,1594,12804,1772,1,0,N,N,N,CP_Drtn,TT_Task,DT_FixedDUR2,RV_OK,TK_NotStart,A2700,Foundation,,2288,0,200,0,0,0,200,0,0,0,,,,2013-01-15 08:00,2013-02-12 16:00,,2012-02-16 08:00,2012-03-15 16:00,2012-02-16 08:00,2012-03-15 16:00,2012-02-16 08:00,2012-03-15 16:00,,2013-01-15 08:00,2013-02-12 16:00,,PT_Normal,,,,,WqTQqfHDTUG4L9Em6WrVvQ,UgsTZnHZXkOHJfeHRlZ1uw,,,N,0,0,,,2012-01-08 13:32,2012-01-23 18:13,admin,admin
155,90176,1594,12804,1772,1,0,N,N,N,CP_Drtn,TT_Task,DT_FixedDUR2,RV_OK,TK_NotStart,A2710,Ground floor Columns,,2288,0,120,0,0,0,120,0,0,0,,,,2013-02-13 08:00,2013-03-02 16:00,,2012-03-17 08:00,2012-04-02 16:00,2012-03-17 08:00,2012-04-02 16:00,2012-03-17 08:00,2012-04-02 16:00,,2013-02-13 08:00,2013-03-02 16:00,,PT_Normal,,,,,kfaOR0prVUmg78ks25ilTg,F2xJqCxt0kWUUFk6Haox4Q,,,N,0,0,,,2012-01-08 13:32,2012-01-23 18:13,admin,admin
156,90177,1594,12804,1772,1,0,N,N,N,CP_Drtn,TT_Task,DT_FixedDUR2,RV_OK,TK_NotStart,A2720,Ground floor slab,,2288,0,160,0,0,0,160,0,0,0,,,,2013-03-03 08:00,2013-03-25 16:00,,2012-04-03 08:00,2012-04-25 16:00,2012-04-03 08:00,2012-04-25 16:00,2012-04-03 08:00,2012-04-25 16:00,,2013-03-03 08:00,2013-03-25 16:00,,PT_Normal,,,,,gtGNBzSgfkCkRF3es8eQdA,Th0g6FhirUiSPCc+JSI+IQ,,,N,0,0,,,2012-01-08 13:32,2012-01-23 18:13,admin,admin
157,90178,1594,12804,1772,1,0,N,N,N,CP_Drtn,TT_Task,DT_FixedDUR2,RV_OK,TK_NotStart,A2730,First floor columns,,2288,0,120,0,0,0,120,0,0,0,,,,2013-03-26 08:00,2013-04-11 16:00,,2012-04-26 08:00,2012-05-13 16:00,2012-04-26 08:00,2012-05-13 16:00,2012-04-26 08:00,2012-05-13 16:00,,2013-03-26 08:00,2013-04-11 16:00,,PT_Normal,,,,,vVvIf9IptU+6Uhg2v72sxw,yDpFEK4ziECjGRLCeFhIUQ,,,N,0,0,,,2012-01-08 13:32,2012-01-23 18:13,admin,admin
158,90179,1594,12804,1772,1,0,N,N,N,CP_Drtn,TT_Task,DT_FixedDUR2,RV_OK,TK_NotStart,A2740,First floor slab,,3928,3928,160,0,0,0,160,0,0,0,,,,2013-12-08 08:00,2013-12-30 16:00,,2012-05-14 08:00,2012-06-05 16:00,2012-05-14 08:00,2012-06-05 16:00,2012-05-14 08:00,2012-06-05 16:00,,2013-12-08 08:00,2013-12-30 16:00,,PT_Normal,,,,,JOIiyyjG1USSVcrQpc3hoA,LHP6lXuivE+UYG0pTC4tsA,,,N,0,0,,,2012-01-08 13:32,2012-01-23 18:13,admin,admin
159,90180,1594,12804,1772,1,0,N,N,N,CP_Drtn,TT_Task,DT_FixedDUR2,RV_OK,TK_NotStart,A2790,Finishing works,,2288,0,480,0,0,0,480,0,0,0,,,,2013-07-21 08:00,2013-09-28 16:00,,2012-08-21 08:00,2012-10-29 16:00,2012-08-21 08:00,2012-10-29 16:00,2012-08-21 08:00,2012-10-29 16:00,,2013-07-21 08:00,2013-09-28 16:00,,PT_Normal,,,,,0kYhucfp/UCroj7H2ARnpg,vz5tariXp0iPZ5de1XvzuA,,,N,0,0,,,2012-01-08 13:32,2012-01-23 18:13,admin,admin
160,90181,1594,12804,1772,1,0,N,N,N,CP_Drtn,TT_Task,DT_FixedDUR2,RV_OK,TK_NotStart,A2780,Masonry works,,2288,0,240,0,0,0,240,0,0,0,,,,2013-06-16 08:00,2013-07-20 16:00,,2012-07-17 08:00,2012-08-20 16:00,2012-07-17 08:00,2012-08-20 16:00,2012-07-17 08:00,2012-08-20 16:00,,2013-06-16 08:00,2013-07-20 16:00,,PT_Normal,,,,,D7KGTuY7ZU6nBI/ErV94tA,MUOP9vAwWkmvKWKrR16TeQ,,,N,0,0,,,2012-01-08 13:32,2012-01-23 18:13,admin,admin
161,90182,1594,12804,1772,1,0,N,N,N,CP_Drtn,TT_Task,DT_FixedDUR2,RV_OK,TK_NotStart,A2770,Slab on grade,,2288,0,80,0,0,0,80,0,0,0,,,,2013-06-04 08:00,2013-06-15 16:00,,2012-07-05 08:00,2012-07-16 16:00,2012-07-05 08:00,2012-07-16 16:00,2012-07-05 08:00,2012-07-16 16:00,,2013-06-04 08:00,2013-06-15 16:00,,PT_Normal,,,,,kUayp8YM2UWTht2rv7gRLQ,2wUC2I2lnEqs3Vb+0VlxIw,,,N,0,0,,,2012-01-08 13:32,2012-01-23 18:13,admin,admin
162,90183,1594,12804,1772,1,0,N,N,N,CP_Drtn,TT_Task,DT_FixedDUR2,RV_OK,TK_NotStart,A2750,Masonry under slab on grade,,2288,0,160,0,0,0,160,0,0,0,,,,2013-04-13 08:00,2013-05-05 16:00,,2012-05-14 08:00,2012-06-05 16:00,2012-05-14 08:00,2012-06-05 16:00,2012-05-14 08:00,2012-06-05 16:00,,2013-04-13 08:00,2013-05-05 16:00,,PT_Normal,,,,,HdQu/RbFRUOl7YbSR2t0vg,Lq7HueTD3kGYuCl2yS/n6A,,,N,0,0,,,2012-01-08 13:32,2012-01-23 18:13,admin,admin
163,90184,1594,12804,1772,1,0,N,N,N,CP_Drtn,TT_Task,DT_FixedDUR2,RV_OK,TK_NotStart,A2760,Footing insulation&backfilling,,2288,0,200,0,0,0,200,0,0,0,,,,2013-05-06 08:00,2013-06-03 16:00,,2012-06-06 08:00,2012-07-04 16:00,2012-06-06 08:00,2012-07-04 16:00,2012-06-06 08:00,2012-07-04 16:00,,2013-05-06 08:00,2013-06-03 16:00,,PT_Normal,,,,,oSte124K8EqhlBDuw4SHfw,2jrOwxweJk2n+uiV8T+1Mg,,,N,0,0,,,2012-01-08 13:32,2012-01-23 18:13,admin,admin
164,90185,1594,12820,1772,1,0,N,N,N,CP_Drtn,TT_Task,DT_FixedDUR2,RV_OK,TK_NotStart,A2800,Excavation,,648,0,56,0,0,0,56,0,0,0,,,,2013-04-24 08:00,2013-05-01 16:00,,2013-01-20 08:00,2013-01-27 16:00,2013-01-20 08:00,2013-01-27 16:00,2013-01-20 08:00,2013-01-27 16:00,,2013-04-24 08:00,2013-05-01 16:00,,PT_Normal,,,,,1i7Gm81vX02fKLStd21Psw,Xl0OgzU6TEmdVJGlTuvc4A,,,N,0,0,,,2012-01-08 13:47,2012-01-23 18:13,admin,admin
165,90186,1594,12820,1772,1,0,N,N,N,CP_Drtn,TT_Task,DT_FixedDUR2,RV_OK,TK_NotStart,A2810,Foundation,,648,0,200,0,0,0,200,0,0,0,,,,2013-05-02 08:00,2013-05-30 16:00,,2013-01-28 08:00,2013-02-25 16:00,2013-01-28 08:00,2013-02-25 16:00,2013-01-28 08:00,2013-02-25 16:00,,2013-05-02 08:00,2013-05-30 16:00,,PT_Normal,,,,,XFEX3ByqlkWlRDEj3TPC2g,wOyEiBy65kyqvu91PUKNBQ,,,N,0,0,,,2012-01-08 13:47,2012-01-23 18:13,admin,admin
166,90187,1594,12820,1772,1,0,N,N,N,CP_Drtn,TT_Task,DT_FixedDUR2,RV_OK,TK_NotStart,A2820,Columns,,648,0,80,0,0,0,80,0,0,0,,,,2013-06-01 08:00,2013-06-11 16:00,,2013-02-26 08:00,2013-03-09 16:00,2013-02-26 08:00,2013-03-09 16:00,2013-02-26 08:00,2013-03-09 16:00,,2013-06-01 08:00,2013-06-11 16:00,,PT_Normal,,,,,bHNfmT5kX0ORELUNwwarHQ,0DJZ2VS7g0yJzMlBCwGQuA,,,N,0,0,,,2012-01-08 13:47,2012-01-23 18:13,admin,admin
167,90188,1594,12820,1772,1,0,N,N,N,CP_Drtn,TT_Task,DT_FixedDUR2,RV_OK,TK_NotStart,A2830,Ground floor slab,,648,0,120,0,0,0,120,0,0,0,,,,2013-06-12 08:00,2013-06-29 16:00,,2013-03-10 08:00,2013-03-26 16:00,2013-03-10 08:00,2013-03-26 16:00,2013-03-10 08:00,2013-03-26 16:00,,2013-06-12 08:00,2013-06-29 16:00,,PT_Normal,,,,,R3pFwBvLikykaXxoB/mlow,uhtivDYxwkyCkL8eqrQ4dw,,,N,0,0,,,2012-01-08 13:47,2012-01-23 18:13,admin,admin
168,90189,1594,12820,1772,1,0,N,N,N,CP_Drtn,TT_Task,DT_FixedDUR2,RV_OK,TK_NotStart,A2870,Ground floor masonry,,648,0,120,0,0,0,120,0,0,0,,,,2013-08-07 08:00,2013-08-24 16:00,,2013-05-05 08:00,2013-05-21 16:00,2013-05-05 08:00,2013-05-21 16:00,2013-05-05 08:00,2013-05-21 16:00,,2013-08-07 08:00,2013-08-24 16:00,,PT_Normal,,,,,LGqy2xi5Z0G+uY3+y95DEA,GZzNnbM8/06haOESh30UdA,,,N,0,0,,,2012-01-08 13:47,2012-01-23 18:13,admin,admin
169,90190,1594,12820,1772,1,0,N,N,N,CP_Drtn,TT_Task,DT_FixedDUR2,RV_OK,TK_NotStart,A2840,Masonry under slab on grade,,648,0,120,0,0,0,120,0,0,0,,,,2013-06-30 08:00,2013-07-16 16:00,,2013-03-27 08:00,2013-04-13 16:00,2013-03-27 08:00,2013-04-13 16:00,2013-03-27 08:00,2013-04-13 16:00,,2013-06-30 08:00,2013-07-16 16:00,,PT_Normal,,,,,By/qeSRZtk+BRlCB/tOCsg,wEaJDipP9E2eq9fTXpy6zg,,,N,0,0,,,2012-01-08 13:47,2012-01-23 18:13,admin,admin
170,90191,1594,12820,1772,1,0,N,N,N,CP_Drtn,TT_Task,DT_FixedDUR2,RV_OK,TK_NotStart,A2860,Slab on grade,,648,0,32,0,0,0,32,0,0,0,,,,2013-08-03 08:00,2013-08-06 16:00,,2013-04-30 08:00,2013-05-04 16:00,2013-04-30 08:00,2013-05-04 16:00,2013-04-30 08:00,2013-05-04 16:00,,2013-08-03 08:00,2013-08-06 16:00,,PT_Normal,,,,,GelDmdmPoUWZM1EXAwgBVg,zzEz226ao0eRGeEh0/TRsA,,,N,0,0,,,2012-01-08 13:47,2012-01-23 18:13,admin,admin
171,90192,1594,12820,1772,1,0,N,N,N,CP_Drtn,TT_Task,DT_FixedDUR2,RV_OK,TK_NotStart,A2850,Footing insulation&backfilling,,648,0,112,0,0,0,112,0,0,0,,,,2013-07-17 08:00,2013-08-01 16:00,,2013-04-14 08:00,2013-04-29 16:00,2013-04-14 08:00,2013-04-29 16:00,2013-04-14 08:00,2013-04-29 16:00,,2013-07-17 08:00,2013-08-01 16:00,,PT_Normal,,,,,Hg5ZJ77UDECdAWj6HDQmEw,on8i+rOIt0mXJvb8csl9eA,,,N,0,0,,,2012-01-08 13:47,2012-01-23 18:13,admin,admin
172,90193,1594,12820,1772,1,0,N,N,N,CP_Drtn,TT_Task,DT_FixedDUR2,RV_OK,TK_NotStart,A2880,Finishing works,,648,0,480,0,0,0,480,0,0,0,,,,2013-08-25 08:00,2013-11-02 16:00,,2013-05-22 08:00,2013-07-30 16:00,2013-05-22 08:00,2013-07-30 16:00,2013-05-22 08:00,2013-07-30 16:00,,2013-08-25 08:00,2013-11-02 16:00,,PT_Normal,,,,,/DvSNF/QLUObpWnOdkvwXw,zgeOJX+7MUWrYmYXsl6taw,,,N,0,0,,,2012-01-08 13:47,2012-01-23 18:13,admin,admin
173,90194,1594,12784,1772,1,0,N,N,N,CP_Drtn,TT_Task,DT_FixedDUR2,RV_OK,TK_NotStart,A2890,Excavation,,1352,0,80,0,0,0,80,0,0,0,,,,2012-08-20 08:00,2012-08-30 16:00,,2012-02-05 08:00,2012-02-15 16:00,2012-02-05 08:00,2012-02-15 16:00,2012-02-05 08:00,2012-02-15 16:00,,2012-08-20 08:00,2012-08-30 16:00,,PT_Normal,,,,,iG0rwvf6Ak+QQX3IE9o2FQ,hUe2yZosI0W8OgpejwUm0Q,,,N,0,0,,,2012-01-08 14:21,2012-01-23 18:13,admin,admin
174,90195,1594,12784,1772,1,0,N,N,N,CP_Drtn,TT_Task,DT_FixedDUR2,RV_OK,TK_NotStart,A2900,Foundation,,1352,0,200,0,0,0,200,0,0,0,,,,2012-09-01 08:00,2012-09-29 16:00,,2012-02-16 08:00,2012-03-15 16:00,2012-02-16 08:00,2012-03-15 16:00,2012-02-16 08:00,2012-03-15 16:00,,2012-09-01 08:00,2012-09-29 16:00,,PT_Normal,,,,,MgGadOxwDU+/1+n+vezewg,WqTQqfHDTUG4L9Em6WrVvQ,,,N,0,0,,,2012-01-08 14:21,2012-01-23 18:13,admin,admin
175,90196,1594,12784,1772,1,0,N,N,N,CP_Drtn,TT_Task,DT_FixedDUR2,RV_OK,TK_NotStart,A2910,Ground floor Columns,,1352,0,120,0,0,0,120,0,0,0,,,,2012-09-30 08:00,2012-10-16 16:00,,2012-03-17 08:00,2012-04-02 16:00,2012-03-17 08:00,2012-04-02 16:00,2012-03-17 08:00,2012-04-02 16:00,,2012-09-30 08:00,2012-10-16 16:00,,PT_Normal,,,,,ynw07xx3m0iZzrsUpV11ew,kfaOR0prVUmg78ks25ilTg,,,N,0,0,,,2012-01-08 14:21,2012-01-23 18:13,admin,admin
176,90197,1594,12784,1772,1,0,N,N,N,CP_Drtn,TT_Task,DT_FixedDUR2,RV_OK,TK_NotStart,A2920,Ground floor slab,,1352,0,160,0,0,0,160,0,0,0,,,,2012-10-17 08:00,2012-11-08 16:00,,2012-04-03 08:00,2012-04-25 16:00,2012-04-03 08:00,2012-04-25 16:00,2012-04-03 08:00,2012-04-25 16:00,,2012-10-17 08:00,2012-11-08 16:00,,PT_Normal,,,,,ckF6+2BbKkS7DcPHsFy8fA,gtGNBzSgfkCkRF3es8eQdA,,,N,0,0,,,2012-01-08 14:21,2012-01-23 18:13,admin,admin
177,90198,1594,12784,1772,1,0,N,N,N,CP_Drtn,TT_Task,DT_FixedDUR2,RV_OK,TK_NotStart,A2930,First floor columns,,1352,0,120,0,0,0,120,0,0,0,,,,2012-11-10 08:00,2012-11-26 16:00,,2012-04-26 08:00,2012-05-13 16:00,2012-04-26 08:00,2012-05-13 16:00,2012-04-26 08:00,2012-05-13 16:00,,2012-11-10 08:00,2012-11-26 16:00,,PT_Normal,,,,,SM4U1Vs6cU2tqTm4ajlYnw,vVvIf9IptU+6Uhg2v72sxw,,,N,0,0,,,2012-01-08 14:21,2012-01-23 18:13,admin,admin
178,90199,1594,12784,1772,1,0,N,N,N,CP_Drtn,TT_Task,DT_FixedDUR2,RV_OK,TK_NotStart,A2940,First floor slab,,1352,0,160,0,0,0,160,0,0,0,,,,2012-11-27 08:00,2012-12-19 16:00,,2012-05-14 08:00,2012-06-05 16:00,2012-05-14 08:00,2012-06-05 16:00,2012-05-14 08:00,2012-06-05 16:00,,2012-11-27 08:00,2012-12-19 16:00,,PT_Normal,,,,,8VX3JRWEzkShUzCzgc3LOA,JOIiyyjG1USSVcrQpc3hoA,,,N,0,0,,,2012-01-08 14:21,2012-01-23 18:13,admin,admin
179,90200,1594,12784,1772,1,0,N,N,N,CP_Drtn,TT_Task,DT_FixedDUR2,RV_OK,TK_NotStart,A2990,Finishing works,,2208,0,480,0,0,0,480,0,0,0,,,,2013-07-09 08:00,2013-09-16 16:00,,2012-08-21 08:00,2012-10-29 16:00,2012-08-21 08:00,2012-10-29 16:00,2012-08-21 08:00,2012-10-29 16:00,,2013-07-09 08:00,2013-09-16 16:00,,PT_Normal,,,,,UENaBWffs0Sl5ZEzCjNwIA,0kYhucfp/UCroj7H2ARnpg,,,N,0,0,,,2012-01-08 14:21,2012-01-23 18:13,admin,admin
180,90201,1594,12784,1772,1,0,N,N,N,CP_Drtn,TT_Task,DT_FixedDUR2,RV_OK,TK_NotStart,A2980,Masonry works,,2208,0,240,0,0,0,240,0,0,0,,,,2013-06-04 08:00,2013-07-08 16:00,,2012-07-17 08:00,2012-08-20 16:00,2012-07-17 08:00,2012-08-20 16:00,2012-07-17 08:00,2012-08-20 16:00,,2013-06-04 08:00,2013-07-08 16:00,,PT_Normal,,,,,VqCVNn3q+0mGhesvwEePWQ,D7KGTuY7ZU6nBI/ErV94tA,,,N,0,0,,,2012-01-08 14:21,2012-01-23 18:13,admin,admin
181,90202,1594,12784,1772,1,0,N,N,N,CP_Drtn,TT_Task,DT_FixedDUR2,RV_OK,TK_NotStart,A2970,Slab on grade,,2208,0,80,0,0,0,80,0,0,0,,,,2013-05-23 08:00,2013-06-03 16:00,,2012-07-05 08:00,2012-07-16 16:00,2012-07-05 08:00,2012-07-16 16:00,2012-07-05 08:00,2012-07-16 16:00,,2013-05-23 08:00,2013-06-03 16:00,,PT_Normal,,,,,OHXVlhB3EEi7EkDuSlaYSQ,kUayp8YM2UWTht2rv7gRLQ,,,N,0,0,,,2012-01-08 14:21,2012-01-23 18:13,admin,admin
182,90203,1594,12784,1772,1,0,N,N,N,CP_Drtn,TT_Task,DT_FixedDUR2,RV_OK,TK_NotStart,A2950,Masonry under slab on grade,,2208,0,160,0,0,0,160,0,0,0,,,,2013-04-01 08:00,2013-04-23 16:00,,2012-05-14 08:00,2012-06-05 16:00,2012-05-14 08:00,2012-06-05 16:00,2012-05-14 08:00,2012-06-05 16:00,,2013-04-01 08:00,2013-04-23 16:00,,PT_Normal,,,,,HFlV+FwGcUiCxC4/EYpZ2g,HdQu/RbFRUOl7YbSR2t0vg,,,N,0,0,,,2012-01-08 14:21,2012-01-23 18:13,admin,admin
183,90204,1594,12784,1772,1,0,N,N,N,CP_Drtn,TT_Task,DT_FixedDUR2,RV_OK,TK_NotStart,A2960,Footing insulation&backfilling,,2208,0,200,0,0,0,200,0,0,0,,,,2013-04-24 08:00,2013-05-22 16:00,,2012-06-06 08:00,2012-07-04 16:00,2012-06-06 08:00,2012-07-04 16:00,2012-06-06 08:00,2012-07-04 16:00,,2013-04-24 08:00,2013-05-22 16:00,,PT_Normal,,,,,os/L8wxgFk6cYgOpaOKhEg,oSte124K8EqhlBDuw4SHfw,,,N,0,0,,,2012-01-08 14:21,2012-01-23 18:13,admin,admin
184,90205,1594,12772,1772,1,0,N,N,N,CP_Drtn,TT_Task,DT_FixedDUR2,RV_OK,TK_NotStart,A3000,Excavation,,928,0,120,0,0,0,120,0,0,0,,,,2012-06-19 08:00,2012-07-05 16:00,,2012-02-05 08:00,2012-02-21 16:00,2012-02-05 08:00,2012-02-21 16:00,2012-02-05 08:00,2012-02-21 16:00,,2012-06-19 08:00,2012-07-05 16:00,,PT_Normal,,,,,sYY7DeR9jUCRHabDb9Ss9w,1i7Gm81vX02fKLStd21Psw,,,N,0,0,,,2012-01-08 14:42,2012-01-23 18:13,admin,admin
185,90206,1594,12772,1772,1,0,N,N,N,CP_Drtn,TT_Task,DT_FixedDUR2,RV_OK,TK_NotStart,A3010,Foundation,,928,0,360,0,0,0,360,0,0,0,,,,2012-07-07 08:00,2012-08-27 16:00,,2012-02-22 08:00,2012-04-14 16:00,2012-02-22 08:00,2012-04-14 16:00,2012-02-22 08:00,2012-04-14 16:00,,2012-07-07 08:00,2012-08-27 16:00,,PT_Normal,,,,,gkcub6cTcEORd/AGcbsA6g,XFEX3ByqlkWlRDEj3TPC2g,,,N,0,0,,,2012-01-08 14:42,2012-01-23 18:13,admin,admin
186,90207,1594,12772,1772,1,0,N,N,N,CP_Drtn,TT_Task,DT_FixedDUR2,RV_OK,TK_NotStart,A3020,Columns,,928,0,120,0,0,0,120,0,0,0,,,,2012-08-28 08:00,2012-09-13 16:00,,2012-04-15 08:00,2012-05-01 16:00,2012-04-15 08:00,2012-05-01 16:00,2012-04-15 08:00,2012-05-01 16:00,,2012-08-28 08:00,2012-09-13 16:00,,PT_Normal,,,,,BioFLgmywU+Lcrxd6ek03Q,bHNfmT5kX0ORELUNwwarHQ,,,N,0,0,,,2012-01-08 14:42,2012-01-23 18:13,admin,admin
187,90209,1594,12772,1772,1,0,N,N,N,CP_Drtn,TT_Task,DT_FixedDUR2,RV_OK,TK_NotStart,A3070,Ground floor masonry,,2288,0,160,0,0,0,160,0,0,0,,,,2013-06-27 08:00,2013-07-20 16:00,,2012-07-29 08:00,2012-08-20 16:00,2012-07-29 08:00,2012-08-20 16:00,2012-07-29 08:00,2012-08-20 16:00,,2013-06-27 08:00,2013-07-20 16:00,,PT_Normal,,,,,nszv6+BTuE2pFTYtw1279A,LGqy2xi5Z0G+uY3+y95DEA,,,N,0,0,,,2012-01-08 14:42,2012-01-23 18:13,admin,admin
188,90210,1594,12772,1772,1,0,N,N,N,CP_Drtn,TT_Task,DT_FixedDUR2,RV_OK,TK_NotStart,A3040,Masonry under slab on grade,,928,0,160,0,0,0,160,0,0,0,,,,2012-09-15 08:00,2012-10-07 16:00,,2012-05-02 08:00,2012-05-24 16:00,2012-05-02 08:00,2012-05-24 16:00,2012-05-02 08:00,2012-05-24 16:00,,2012-09-15 08:00,2012-10-07 16:00,,PT_Normal,,,,,aMvnEU71FUSq/V8qJIvbWA,By/qeSRZtk+BRlCB/tOCsg,,,N,0,0,,,2012-01-08 14:42,2012-01-23 18:13,admin,admin
189,90211,1594,12772,1772,1,0,N,N,N,CP_Drtn,TT_Task,DT_FixedDUR2,RV_OK,TK_NotStart,A3060,Slab on grade,,928,0,80,0,0,0,80,0,0,0,,,,2012-11-06 08:00,2012-11-17 16:00,,2012-06-24 08:00,2012-07-04 16:00,2012-06-24 08:00,2012-07-04 16:00,2012-06-24 08:00,2012-07-04 16:00,,2012-11-06 08:00,2012-11-17 16:00,,PT_Normal,,,,,ZzsMnH8dyEqgcd4PMbMHRA,GelDmdmPoUWZM1EXAwgBVg,,,N,0,0,,,2012-01-08 14:42,2012-01-23 18:13,admin,admin
190,90212,1594,12772,1772,1,0,N,N,N,CP_Drtn,TT_Task,DT_FixedDUR2,RV_OK,TK_NotStart,A3050,Footing insulation&backfilling,,928,0,200,0,0,0,200,0,0,0,,,,2012-10-08 08:00,2012-11-05 16:00,,2012-05-26 08:00,2012-06-23 16:00,2012-05-26 08:00,2012-06-23 16:00,2012-05-26 08:00,2012-06-23 16:00,,2012-10-08 08:00,2012-11-05 16:00,,PT_Normal,,,,,X9E+VvVZ4kimRnnkbAzNWw,Hg5ZJ77UDECdAWj6HDQmEw,,,N,0,0,,,2012-01-08 14:42,2012-01-23 18:13,admin,admin
191,90213,1594,12772,1772,1,0,N,N,N,CP_Drtn,TT_Task,DT_FixedDUR2,RV_OK,TK_NotStart,A3080,Finishing works,,2288,0,720,0,0,0,720,0,0,0,,,,2013-07-21 08:00,2013-11-02 16:00,,2012-08-21 08:00,2012-12-03 16:00,2012-08-21 08:00,2012-12-03 16:00,2012-08-21 08:00,2012-12-03 16:00,,2013-07-21 08:00,2013-11-02 16:00,,PT_Normal,,,,,Ys6nKdT5e0WlZZRkQBUUOg,/DvSNF/QLUObpWnOdkvwXw,,,N,0,0,,,2012-01-08 14:42,2012-01-23 18:13,admin,admin
192,90214,1594,12772,1772,1,0,N,N,N,CP_Drtn,TT_Task,DT_FixedDUR2,RV_OK,TK_NotStart,A3090,Steel roof erection,,2288,0,160,0,0,0,160,0,0,0,,,,2013-06-04 08:00,2013-06-26 16:00,,2012-07-05 08:00,2012-07-28 16:00,2012-07-05 08:00,2012-07-28 16:00,2012-07-05 08:00,2012-07-28 16:00,,2013-06-04 08:00,2013-06-26 16:00,,PT_Normal,,,,,UfAu7CPccECAYHLQ/0SGvA,,,,N,0,0,,,2012-01-09 10:29,2012-01-23 18:13,admin,admin
193,90216,1594,12840,1772,1,0,N,N,N,CP_Drtn,TT_Task,DT_FixedDUR2,RV_OK,TK_NotStart,A3100,Excavation,,1928,0,120,0,0,0,120,0,0,0,,,,2012-11-12 08:00,2012-11-28 16:00,,2012-02-05 08:00,2012-02-21 16:00,2012-02-05 08:00,2012-02-21 16:00,2012-02-05 08:00,2012-02-21 16:00,,2012-11-12 08:00,2012-11-28 16:00,,PT_Normal,,,,,x1PYO6RAG0aF+o41Oo+ICQ,sYY7DeR9jUCRHabDb9Ss9w,,,N,0,0,,,2012-01-09 10:56,2012-01-23 18:13,admin,admin
194,90217,1594,12840,1772,1,0,N,N,N,CP_Drtn,TT_Task,DT_FixedDUR2,RV_OK,TK_NotStart,A3110,Foundation,,1928,0,400,0,0,0,400,0,0,0,,,,2012-11-29 08:00,2013-01-26 16:00,,2012-02-22 08:00,2012-04-19 16:00,2012-02-22 08:00,2012-04-19 16:00,2012-02-22 08:00,2012-04-19 16:00,,2012-11-29 08:00,2013-01-26 16:00,,PT_Normal,,,,,PpHW6iRv1ESDt9uYiFhniQ,gkcub6cTcEORd/AGcbsA6g,,,N,0,0,,,2012-01-09 10:56,2012-01-23 18:13,admin,admin
195,90218,1594,12840,1772,1,0,N,N,N,CP_Drtn,TT_Task,DT_FixedDUR2,RV_OK,TK_NotStart,A3120,Columns,,1928,0,160,0,0,0,160,0,0,0,,,,2013-01-27 08:00,2013-02-18 16:00,,2012-04-21 08:00,2012-05-13 16:00,2012-04-21 08:00,2012-05-13 16:00,2012-04-21 08:00,2012-05-13 16:00,,2013-01-27 08:00,2013-02-18 16:00,,PT_Normal,,,,,3hbmzbil+Emb95x+BcLW2Q,BioFLgmywU+Lcrxd6ek03Q,,,N,0,0,,,2012-01-09 10:56,2012-01-23 18:13,admin,admin
196,90219,1594,12840,1772,1,0,N,N,N,CP_Drtn,TT_Task,DT_FixedDUR2,RV_OK,TK_NotStart,A3170,Ground floor masonry,,1928,0,240,0,0,0,240,0,0,0,,,,2013-06-04 08:00,2013-07-08 16:00,,2012-08-27 08:00,2012-09-30 16:00,2012-08-27 08:00,2012-09-30 16:00,2012-08-27 08:00,2012-09-30 16:00,,2013-06-04 08:00,2013-07-08 16:00,,PT_Normal,,,,,CDDv16lmg0+eOxOYhV0lRQ,nszv6+BTuE2pFTYtw1279A,,,N,0,0,,,2012-01-09 10:56,2012-01-23 18:13,admin,admin
197,90220,1594,12840,1772,1,0,N,N,N,CP_Drtn,TT_Task,DT_FixedDUR2,RV_OK,TK_NotStart,A3130,Masonry under slab on grade,,1928,0,200,0,0,0,200,0,0,0,,,,2013-02-19 08:00,2013-03-19 16:00,,2012-05-14 08:00,2012-06-11 16:00,2012-05-14 08:00,2012-06-11 16:00,2012-05-14 08:00,2012-06-11 16:00,,2013-02-19 08:00,2013-03-19 16:00,,PT_Normal,,,,,MuUoCvv/WEqwzheZ8p1eqw,aMvnEU71FUSq/V8qJIvbWA,,,N,0,0,,,2012-01-09 10:56,2012-01-23 18:13,admin,admin
198,90221,1594,12840,1772,1,0,N,N,N,CP_Drtn,TT_Task,DT_FixedDUR2,RV_OK,TK_NotStart,A3150,Slab on grade,,1928,0,120,0,0,0,120,0,0,0,,,,2013-04-24 08:00,2013-05-11 16:00,,2012-07-17 08:00,2012-08-02 16:00,2012-07-17 08:00,2012-08-02 16:00,2012-07-17 08:00,2012-08-02 16:00,,2013-04-24 08:00,2013-05-11 16:00,,PT_Normal,,,,,7GDrwvVU2U66JKR79fk/Zw,ZzsMnH8dyEqgcd4PMbMHRA,,,N,0,0,,,2012-01-09 10:56,2012-01-23 18:13,admin,admin
199,90222,1594,12840,1772,1,0,N,N,N,CP_Drtn,TT_Task,DT_FixedDUR2,RV_OK,TK_NotStart,A3140,Footing insulation&backfilling,,1928,0,240,0,0,0,240,0,0,0,,,,2013-03-20 08:00,2013-04-23 16:00,,2012-06-12 08:00,2012-07-16 16:00,2012-06-12 08:00,2012-07-16 16:00,2012-06-12 08:00,2012-07-16 16:00,,2013-03-20 08:00,2013-04-23 16:00,,PT_Normal,,,,,9JxtunzwMUy0FAxgX+G2Vg,X9E+VvVZ4kimRnnkbAzNWw,,,N,0,0,,,2012-01-09 10:56,2012-01-23 18:13,admin,admin
200,90223,1594,12840,1772,1,0,N,N,N,CP_Drtn,TT_Task,DT_FixedDUR2,RV_OK,TK_NotStart,A3180,Finishing works,,1928,0,960,0,0,0,960,0,0,0,,,,2013-07-09 08:00,2013-11-25 16:00,,2012-10-01 08:00,2013-02-17 16:00,2012-10-01 08:00,2013-02-17 16:00,2012-10-01 08:00,2013-02-17 16:00,,2013-07-09 08:00,2013-11-25 16:00,,PT_Normal,,,,,eyd8DH+RQk+as5oPA6LlIA,Ys6nKdT5e0WlZZRkQBUUOg,,,N,0,0,,,2012-01-09 10:56,2012-01-23 18:13,admin,admin
201,90224,1594,12840,1772,1,0,N,N,N,CP_Drtn,TT_Task,DT_FixedDUR2,RV_OK,TK_NotStart,A3160,Steel roof erection,,1928,0,160,0,0,0,160,0,0,0,,,,2013-05-12 08:00,2013-06-03 16:00,,2012-08-04 08:00,2012-08-26 16:00,2012-08-04 08:00,2012-08-26 16:00,2012-08-04 08:00,2012-08-26 16:00,,2013-05-12 08:00,2013-06-03 16:00,,PT_Normal,,,,,pVEYuhzNT0ezJdDhCjMQCw,UfAu7CPccECAYHLQ/0SGvA,,,N,0,0,,,2012-01-09 10:56,2012-01-23 18:13,admin,admin
202,90225,1594,12446,1772,1,0,N,N,N,CP_Drtn,TT_Task,DT_FixedDUR2,RV_OK,TK_NotStart,A3190,Excavation,,1624,0,40,0,0,0,40,0,0,0,,,,2013-02-21 08:00,2013-02-26 16:00,,2012-06-30 08:00,2012-07-04 16:00,2012-06-30 08:00,2012-07-04 16:00,2012-06-30 08:00,2012-07-04 16:00,,2013-02-21 08:00,2013-02-26 16:00,,PT_Normal,,,,,1uKelu5PkUmak17qfzXzLQ,tdh0mcF16EmAkZiFvjuJEQ,,,N,0,0,,,2012-01-09 13:11,2012-01-23 18:13,admin,admin
203,90226,1594,12446,1772,1,0,N,N,N,CP_Drtn,TT_Task,DT_FixedDUR2,RV_OK,TK_NotStart,A3200,Foundation,,1624,0,200,0,0,0,200,0,0,0,,,,2013-02-27 08:00,2013-03-27 16:00,,2012-07-05 08:00,2012-08-02 16:00,2012-07-05 08:00,2012-08-02 16:00,2012-07-05 08:00,2012-08-02 16:00,,2013-02-27 08:00,2013-03-27 16:00,,PT_Normal,,,,,Bgx5IYPvHEGc81mj64DCvQ,qXYAIRk9LEulTTDoaaWRCw,,,N,0,0,,,2012-01-09 13:11,2012-01-23 18:13,admin,admin
204,90227,1594,12446,1772,1,0,N,N,N,CP_Drtn,TT_Task,DT_FixedDUR2,RV_OK,TK_NotStart,A3210,Ground floor Columns,,1624,0,120,0,0,0,120,0,0,0,,,,2013-03-28 08:00,2013-04-14 16:00,,2012-08-04 08:00,2012-08-20 16:00,2012-08-04 08:00,2012-08-20 16:00,2012-08-04 08:00,2012-08-20 16:00,,2013-03-28 08:00,2013-04-14 16:00,,PT_Normal,,,,,nBsK2Xi7kE2egor6GtcA0A,ptbO7+1K6kuUSqCb8D9mzw,,,N,0,0,,,2012-01-09 13:11,2012-01-23 18:13,admin,admin
205,90228,1594,12446,1772,1,0,N,N,N,CP_Drtn,TT_Task,DT_FixedDUR2,RV_OK,TK_NotStart,A3220,Ground floor slab,,1624,0,160,0,0,0,160,0,0,0,,,,2013-04-15 08:00,2013-05-07 16:00,,2012-08-21 08:00,2012-09-12 16:00,2012-08-21 08:00,2012-09-12 16:00,2012-08-21 08:00,2012-09-12 16:00,,2013-04-15 08:00,2013-05-07 16:00,,PT_Normal,,,,,KKHP0wg01k2QJHeeHB9cGQ,EFmuOjbAVky+6v4HTS2GnQ,,,N,0,0,,,2012-01-09 13:11,2012-01-23 18:13,admin,admin
206,90229,1594,12446,1772,1,0,N,N,N,CP_Drtn,TT_Task,DT_FixedDUR2,RV_OK,TK_NotStart,A3260,Ground floor masonry,,1624,0,160,0,0,0,160,0,0,0,,,,2013-06-16 08:00,2013-07-08 16:00,,2012-10-22 08:00,2012-11-13 16:00,2012-10-22 08:00,2012-11-13 16:00,2012-10-22 08:00,2012-11-13 16:00,,2013-06-16 08:00,2013-07-08 16:00,,PT_Normal,,,,,bVpfSEjIAU2XsinGfUBIgg,waGTX2GwJ0CbdgTDFUTFDg,,,N,0,0,,,2012-01-09 13:11,2012-01-23 18:13,admin,admin
207,90230,1594,12446,1772,1,0,N,N,N,CP_Drtn,TT_Task,DT_FixedDUR2,RV_OK,TK_NotStart,A3230,Masonry under slab on grade,,1624,0,120,0,0,0,120,0,0,0,,,,2013-05-08 08:00,2013-05-25 16:00,,2012-09-13 08:00,2012-09-30 16:00,2012-09-13 08:00,2012-09-30 16:00,2012-09-13 08:00,2012-09-30 16:00,,2013-05-08 08:00,2013-05-25 16:00,,PT_Normal,,,,,V57qMlWe7kqM0HScB5ST7w,qbMq42rBRUmMxgI16xlEUA,,,N,0,0,,,2012-01-09 13:11,2012-01-23 18:13,admin,admin
208,90231,1594,12446,1772,1,0,N,N,N,CP_Drtn,TT_Task,DT_FixedDUR2,RV_OK,TK_NotStart,A3250,Slab on grade,,1624,0,32,0,0,0,32,0,0,0,,,,2013-06-11 08:00,2013-06-15 16:00,,2012-10-17 08:00,2012-10-21 16:00,2012-10-17 08:00,2012-10-21 16:00,2012-10-17 08:00,2012-10-21 16:00,,2013-06-11 08:00,2013-06-15 16:00,,PT_Normal,,,,,iz0SS8azbkeb40/erxcRpw,ziFHI3YB2UyvU9lPQyQNiw,,,N,0,0,,,2012-01-09 13:11,2012-01-23 18:13,admin,admin
209,90232,1594,12446,1772,1,0,N,N,N,CP_Drtn,TT_Task,DT_FixedDUR2,RV_OK,TK_NotStart,A3240,Footing insulation&backfilling,,1624,0,112,0,0,0,112,0,0,0,,,,2013-05-26 08:00,2013-06-10 16:00,,2012-10-01 08:00,2012-10-16 16:00,2012-10-01 08:00,2012-10-16 16:00,2012-10-01 08:00,2012-10-16 16:00,,2013-05-26 08:00,2013-06-10 16:00,,PT_Normal,,,,,bGgevqhLOUW7JMPZULkyZA,265jX8CNyUeRSBhvlQhhwg,,,N,0,0,,,2012-01-09 13:11,2012-01-23 18:13,admin,admin
210,90233,1594,12446,1772,1,0,N,N,N,CP_Drtn,TT_Task,DT_FixedDUR2,RV_OK,TK_NotStart,A3270,Finishing works,,1624,0,480,0,0,0,480,0,0,0,,,,2013-07-09 08:00,2013-09-16 16:00,,2012-11-14 08:00,2013-01-22 16:00,2012-11-14 08:00,2013-01-22 16:00,2012-11-14 08:00,2013-01-22 16:00,,2013-07-09 08:00,2013-09-16 16:00,,PT_Normal,,,,,erdo+82JaEKgC3NnLpN9eQ,uftjd2UgTUGN3/t67+NEkA,,,N,0,0,,,2012-01-09 13:11,2012-01-23 18:13,admin,admin
211,90234,1594,12445,1772,1,0,N,N,N,CP_Drtn,TT_Task,DT_FixedDUR2,RV_OK,TK_NotStart,A3280,Excavation,,1624,0,40,0,0,0,40,0,0,0,,,,2013-02-16 08:00,2013-02-20 16:00,,2012-06-24 08:00,2012-06-28 16:00,2012-06-24 08:00,2012-06-28 16:00,2012-06-24 08:00,2012-06-28 16:00,,2013-02-16 08:00,2013-02-20 16:00,,PT_Normal,,,,,k+sdvgeV2U6Gyimwx9x/Bg,KvGCvuZtskOQW6WhPQm5kA,,,N,0,0,,,2012-01-09 13:12,2012-01-23 18:13,admin,admin
212,90235,1594,12445,1772,1,0,N,N,N,CP_Drtn,TT_Task,DT_FixedDUR2,RV_OK,TK_NotStart,A3290,Foundation,,1992,0,200,0,0,0,200,0,0,0,,,,2013-04-16 08:00,2013-05-14 16:00,,2012-06-30 08:00,2012-07-28 16:00,2012-06-30 08:00,2012-07-28 16:00,2012-06-30 08:00,2012-07-28 16:00,,2013-04-16 08:00,2013-05-14 16:00,,PT_Normal,,,,,rQlCDWOubE6BiRJG4C/vHQ,DwgI9l8YKEqfNVMqVoJzuQ,,,N,0,0,,,2012-01-09 13:12,2012-01-23 18:13,admin,admin
213,90236,1594,12445,1772,1,0,N,N,N,CP_Drtn,TT_Task,DT_FixedDUR2,RV_OK,TK_NotStart,A3300,Ground floor Columns,,1992,0,120,0,0,0,120,0,0,0,,,,2013-05-15 08:00,2013-06-01 16:00,,2012-07-29 08:00,2012-08-14 16:00,2012-07-29 08:00,2012-08-14 16:00,2012-07-29 08:00,2012-08-14 16:00,,2013-05-15 08:00,2013-06-01 16:00,,PT_Normal,,,,,Rccxx453r0yqizfmO55HQQ,kkDRDwspsUOlcVdM2ZIaqw,,,N,0,0,,,2012-01-09 13:12,2012-01-23 18:13,admin,admin
214,90237,1594,12445,1772,1,0,N,N,N,CP_Drtn,TT_Task,DT_FixedDUR2,RV_OK,TK_NotStart,A3310,Ground floor slab&stairs,,1992,0,160,0,0,0,160,0,0,0,,,,2013-06-02 08:00,2013-06-24 16:00,,2012-08-15 08:00,2012-09-06 16:00,2012-08-15 08:00,2012-09-06 16:00,2012-08-15 08:00,2012-09-06 16:00,,2013-06-02 08:00,2013-06-24 16:00,,PT_Normal,,,,,KmJXfE+wuUSEaxFRjozrbg,/sPYGpbvg0S23mEjP3OmzA,,,N,0,0,,,2012-01-09 13:12,2012-01-23 18:13,admin,admin
215,90238,1594,12445,1772,1,0,N,N,N,CP_Drtn,TT_Task,DT_FixedDUR2,RV_OK,TK_NotStart,A3320,First floor columns,,1992,0,56,0,0,0,56,0,0,0,,,,2013-06-25 08:00,2013-07-02 16:00,,2012-09-08 08:00,2012-09-15 16:00,2012-09-08 08:00,2012-09-15 16:00,2012-09-08 08:00,2012-09-15 16:00,,2013-06-25 08:00,2013-07-02 16:00,,PT_Normal,,,,,8sXW1k8HuUKnVmA/Zqp1fQ,Z66X6SLQIkqepmzqnbk/hA,,,N,0,0,,,2012-01-09 13:12,2012-01-23 18:13,admin,admin
216,90239,1594,12445,1772,1,0,N,N,N,CP_Drtn,TT_Task,DT_FixedDUR2,RV_OK,TK_NotStart,A3330,First floor slab&stairs,,1992,0,112,0,0,0,112,0,0,0,,,,2013-07-03 08:00,2013-07-18 16:00,,2012-09-16 08:00,2012-10-01 16:00,2012-09-16 08:00,2012-10-01 16:00,2012-09-16 08:00,2012-10-01 16:00,,2013-07-03 08:00,2013-07-18 16:00,,PT_Normal,,,,,LktsUhFuqkyP+DrnXsHB/w,i7v1G+vKb0+IjotYWNr96g,,,N,0,0,,,2012-01-09 13:12,2012-01-23 18:13,admin,admin
217,90240,1594,12445,1772,1,0,N,N,N,CP_Drtn,TT_Task,DT_FixedDUR2,RV_OK,TK_NotStart,A3340,Second floor columns,,1992,0,56,0,0,0,56,0,0,0,,,,2013-07-20 08:00,2013-07-27 16:00,,2012-10-02 08:00,2012-10-09 16:00,2012-10-02 08:00,2012-10-09 16:00,2012-10-02 08:00,2012-10-09 16:00,,2013-07-20 08:00,2013-07-27 16:00,,PT_Normal,,,,,O6QjS0T3E0m12BlmpagXYw,,,,N,0,0,,,2012-01-09 13:15,2012-01-23 18:13,admin,admin
218,90241,1594,12445,1772,1,0,N,N,N,CP_Drtn,TT_Task,DT_FixedDUR2,RV_OK,TK_NotStart,A3350,Second floor slab&stairs,,1992,0,112,0,0,0,112,0,0,0,,,,2013-07-28 08:00,2013-08-12 16:00,,2012-10-10 08:00,2012-10-25 16:00,2012-10-10 08:00,2012-10-25 16:00,2012-10-10 08:00,2012-10-25 16:00,,2013-07-28 08:00,2013-08-12 16:00,,PT_Normal,,,,,N7PPMU7U20Wnw9gKa4wmkw,,,,N,0,0,,,2012-01-09 13:15,2012-01-23 18:13,admin,admin
219,90242,1594,12445,1772,1,0,N,N,N,CP_Drtn,TT_Task,DT_FixedDUR2,RV_OK,TK_NotStart,A3360,Control console&steel roof erection,,1992,0,240,0,0,0,240,0,0,0,,,,2013-08-13 08:00,2013-09-16 16:00,,2012-10-27 08:00,2012-11-29 16:00,2012-10-27 08:00,2012-11-29 16:00,2012-10-27 08:00,2012-11-29 16:00,,2013-08-13 08:00,2013-09-16 16:00,,PT_Normal,,,,,CI6tYbHYfkGW0TkwoQBpUw,,,,N,0,0,,,2012-01-09 13:18,2012-01-23 18:13,admin,admin
220,90243,1594,12445,1772,1,0,N,N,N,CP_Drtn,TT_Task,DT_FixedDUR2,RV_OK,TK_NotStart,A3370,Masonry works,,1992,0,240,0,0,0,240,0,0,0,,,,2013-09-17 08:00,2013-10-21 16:00,,2012-12-01 08:00,2013-01-03 16:00,2012-12-01 08:00,2013-01-03 16:00,2012-12-01 08:00,2013-01-03 16:00,,2013-09-17 08:00,2013-10-21 16:00,,PT_Normal,,,,,FOVdSM5RNESaOXBttVRM8g,,,,N,0,0,,,2012-01-09 13:20,2012-01-23 18:13,admin,admin
221,90244,1594,12445,1772,1,0,N,N,N,CP_Drtn,TT_Task,DT_FixedDUR2,RV_OK,TK_NotStart,A3380,Finishing works,,1992,1992,480,0,0,0,480,0,0,0,,,,2013-10-22 08:00,2013-12-30 16:00,,2013-01-05 08:00,2013-03-14 16:00,2013-01-05 08:00,2013-03-14 16:00,2013-01-05 08:00,2013-03-14 16:00,,2013-10-22 08:00,2013-12-30 16:00,,PT_Normal,,,,,WhFZQ+eBUEeKTYZmKiOmQA,,,,N,0,0,,,2012-01-09 13:20,2012-01-23 18:13,admin,admin
222,90245,1594,12840,1772,1,0,N,N,N,CP_Drtn,TT_Task,DT_FixedDUR2,RV_OK,TK_NotStart,A3390,Wheel crane erection,,3256,3256,112,0,0,0,112,0,0,0,,,,2013-12-15 08:00,2013-12-30 16:00,,2012-08-27 08:00,2012-09-11 16:00,2012-08-27 08:00,2012-09-11 16:00,2012-08-27 08:00,2012-09-11 16:00,,2013-12-15 08:00,2013-12-30 16:00,,PT_Normal,,,,,WSrDsbPE40OpD+PYVXTVuw,,,,N,0,0,,,2012-01-09 13:22,2012-01-23 18:13,admin,admin
223,90261,1594,12844,1772,1,0,N,N,N,CP_Drtn,TT_Task,DT_FixedDUR2,RV_OK,TK_NotStart,A3400,Excavation,,2728,0,56,0,0,0,56,0,0,0,,,,2013-03-09 08:00,2013-03-16 16:00,,2012-02-05 08:00,2012-02-12 16:00,2012-02-05 08:00,2012-02-12 16:00,2012-02-05 08:00,2012-02-12 16:00,,2013-03-09 08:00,2013-03-16 16:00,,PT_Normal,,,,,PEVoSbPJOkaKd6gL9G9tlQ,1i7Gm81vX02fKLStd21Psw,,,N,0,0,,,2012-01-09 16:49,2012-01-23 18:13,admin,admin
224,90262,1594,12844,1772,1,0,N,N,N,CP_Drtn,TT_Task,DT_FixedDUR2,RV_OK,TK_NotStart,A3410,Foundation,,2728,0,200,0,0,0,200,0,0,0,,,,2013-03-17 08:00,2013-04-14 16:00,,2012-02-13 08:00,2012-03-12 16:00,2012-02-13 08:00,2012-03-12 16:00,2012-02-13 08:00,2012-03-12 16:00,,2013-03-17 08:00,2013-04-14 16:00,,PT_Normal,,,,,FyQJKP26kEmj/AeEhXcwog,XFEX3ByqlkWlRDEj3TPC2g,,,N,0,0,,,2012-01-09 16:49,2012-01-23 18:13,admin,admin
225,90263,1594,12844,1772,1,0,N,N,N,CP_Drtn,TT_Task,DT_FixedDUR2,RV_OK,TK_NotStart,A3420,Columns,,2728,0,80,0,0,0,80,0,0,0,,,,2013-04-15 08:00,2013-04-25 16:00,,2012-03-13 08:00,2012-03-24 16:00,2012-03-13 08:00,2012-03-24 16:00,2012-03-13 08:00,2012-03-24 16:00,,2013-04-15 08:00,2013-04-25 16:00,,PT_Normal,,,,,1pfnqW/MD0OPKrBBylqiMg,bHNfmT5kX0ORELUNwwarHQ,,,N,0,0,,,2012-01-09 16:49,2012-01-23 18:13,admin,admin
226,90264,1594,12844,1772,1,0,N,N,N,CP_Drtn,TT_Task,DT_FixedDUR2,RV_OK,TK_NotStart,A3430,Ground floor slab,,2728,0,120,0,0,0,120,0,0,0,,,,2013-04-27 08:00,2013-05-13 16:00,,2012-03-25 08:00,2012-04-10 16:00,2012-03-25 08:00,2012-04-10 16:00,2012-03-25 08:00,2012-04-10 16:00,,2013-04-27 08:00,2013-05-13 16:00,,PT_Normal,,,,,/QC0HbDFwUCFhnghm5I7Zg,R3pFwBvLikykaXxoB/mlow,,,N,0,0,,,2012-01-09 16:49,2012-01-23 18:13,admin,admin
227,90265,1594,12844,1772,1,0,N,N,N,CP_Drtn,TT_Task,DT_FixedDUR2,RV_OK,TK_NotStart,A3470,Ground floor masonry,,2728,0,120,0,0,0,120,0,0,0,,,,2013-06-22 08:00,2013-07-08 16:00,,2012-05-20 08:00,2012-06-05 16:00,2012-05-20 08:00,2012-06-05 16:00,2012-05-20 08:00,2012-06-05 16:00,,2013-06-22 08:00,2013-07-08 16:00,,PT_Normal,,,,,ZIRj8KTpeUqIq0eGj8HL+w,LGqy2xi5Z0G+uY3+y95DEA,,,N,0,0,,,2012-01-09 16:49,2012-01-23 18:13,admin,admin
228,90266,1594,12844,1772,1,0,N,N,N,CP_Drtn,TT_Task,DT_FixedDUR2,RV_OK,TK_NotStart,A3440,Masonry under slab on grade,,2728,0,120,0,0,0,120,0,0,0,,,,2013-05-14 08:00,2013-05-30 16:00,,2012-04-11 08:00,2012-04-28 16:00,2012-04-11 08:00,2012-04-28 16:00,2012-04-11 08:00,2012-04-28 16:00,,2013-05-14 08:00,2013-05-30 16:00,,PT_Normal,,,,,U5G1yq3zs0Gj02fqJyanyw,By/qeSRZtk+BRlCB/tOCsg,,,N,0,0,,,2012-01-09 16:49,2012-01-23 18:13,admin,admin
229,90267,1594,12844,1772,1,0,N,N,N,CP_Drtn,TT_Task,DT_FixedDUR2,RV_OK,TK_NotStart,A3460,Slab on grade,,2728,0,32,0,0,0,32,0,0,0,,,,2013-06-17 08:00,2013-06-20 16:00,,2012-05-15 08:00,2012-05-19 16:00,2012-05-15 08:00,2012-05-19 16:00,2012-05-15 08:00,2012-05-19 16:00,,2013-06-17 08:00,2013-06-20 16:00,,PT_Normal,,,,,CfBgYzKmyUKIKSMWqAqtNQ,GelDmdmPoUWZM1EXAwgBVg,,,N,0,0,,,2012-01-09 16:49,2012-01-23 18:13,admin,admin
230,90268,1594,12844,1772,1,0,N,N,N,CP_Drtn,TT_Task,DT_FixedDUR2,RV_OK,TK_NotStart,A3450,Footing insulation&backfilling,,2728,0,112,0,0,0,112,0,0,0,,,,2013-06-01 08:00,2013-06-16 16:00,,2012-04-29 08:00,2012-05-14 16:00,2012-04-29 08:00,2012-05-14 16:00,2012-04-29 08:00,2012-05-14 16:00,,2013-06-01 08:00,2013-06-16 16:00,,PT_Normal,,,,,5YTCwEXEik6b2BwIm1Arhg,Hg5ZJ77UDECdAWj6HDQmEw,,,N,0,0,,,2012-01-09 16:49,2012-01-23 18:13,admin,admin
231,90269,1594,12844,1772,1,0,N,N,N,CP_Drtn,TT_Task,DT_FixedDUR2,RV_OK,TK_NotStart,A3480,Finishing works,,2728,0,480,0,0,0,480,0,0,0,,,,2013-07-09 08:00,2013-09-16 16:00,,2012-06-06 08:00,2012-08-14 16:00,2012-06-06 08:00,2012-08-14 16:00,2012-06-06 08:00,2012-08-14 16:00,,2013-07-09 08:00,2013-09-16 16:00,,PT_Normal,,,,,1o1WpgOzOk6eIJAoaxH0jQ,/DvSNF/QLUObpWnOdkvwXw,,,N,0,0,,,2012-01-09 16:49,2012-01-23 18:13,admin,admin
232,90270,1594,12449,1772,1,0,N,N,N,CP_Drtn,TT_Task,DT_FixedDUR2,RV_OK,TK_NotStart,A3510,Sunshade erection,,4464,0,80,0,0,0,80,0,0,0,,,,2013-12-04 08:00,2013-12-15 16:00,,2012-02-22 08:00,2012-03-04 16:00,2012-02-22 08:00,2012-03-04 16:00,2012-02-22 08:00,2012-03-04 16:00,,2013-12-04 08:00,2013-12-15 16:00,,PT_Normal,,,,,7oB1lZmv1U21fK7NOorIAg,yVlTClPSr028gwirDAcxag,,,N,0,0,,,2012-01-09 16:53,2012-01-23 18:13,admin,admin
233,90271,1594,12449,1772,1,0,N,N,N,CP_Drtn,TT_Task,DT_FixedDUR2,RV_OK,TK_NotStart,A3540,Bollard erection,,4464,4464,32,0,0,0,32,0,0,0,,,,2013-12-26 08:00,2013-12-30 16:00,,2012-03-15 08:00,2012-03-19 16:00,2012-03-15 08:00,2012-03-19 16:00,2012-03-15 08:00,2012-03-19 16:00,,2013-12-26 08:00,2013-12-30 16:00,,PT_Normal,,,,,LkD5Wd6YR0G0UBS2xCj2bQ,dTDq3zloVkGO0U1Qfk8ydQ,,,N,0,0,,,2012-01-09 16:53,2012-01-23 18:13,admin,admin
234,90272,1594,12449,1772,1,0,N,N,N,CP_Drtn,TT_Task,DT_FixedDUR2,RV_OK,TK_NotStart,A3530,wheel stop,,4464,0,32,0,0,0,32,0,0,0,,,,2013-12-22 08:00,2013-12-25 16:00,,2012-03-11 08:00,2012-03-14 16:00,2012-03-11 08:00,2012-03-14 16:00,2012-03-11 08:00,2012-03-14 16:00,,2013-12-22 08:00,2013-12-25 16:00,,PT_Normal,,,,,1tIRgdcZGk6plz2r354OtQ,+DBrtefpKE2HMCwrx5DH7Q,,,N,0,0,,,2012-01-09 16:53,2012-01-23 18:13,admin,admin
235,90273,1594,12449,1772,1,0,N,N,N,CP_Drtn,TT_Task,DT_FixedDUR2,RV_OK,TK_NotStart,A3520,Paving,,4464,0,40,0,0,0,40,0,0,0,,,,2013-12-16 08:00,2013-12-21 16:00,,2012-03-05 08:00,2012-03-10 16:00,2012-03-05 08:00,2012-03-10 16:00,2012-03-05 08:00,2012-03-10 16:00,,2013-12-16 08:00,2013-12-21 16:00,,PT_Normal,,,,,lY+/Qi2EnEWQDpMqwBfAmg,XijcyY0gM0m3FICCdpQYrw,,,N,0,0,,,2012-01-09 16:53,2012-01-23 18:13,admin,admin
236,90274,1594,12449,1772,1,0,N,N,N,CP_Drtn,TT_Task,DT_FixedDUR2,RV_OK,TK_NotStart,A3490,Excavation,,4464,0,40,0,0,0,40,0,0,0,,,,2013-11-17 08:00,2013-11-21 16:00,,2012-02-05 08:00,2012-02-09 16:00,2012-02-05 08:00,2012-02-09 16:00,2012-02-05 08:00,2012-02-09 16:00,,2013-11-17 08:00,2013-11-21 16:00,,PT_Normal,,,,,QP/4dAOxl0OHTbkLOMmMpQ,a7467wScI0WuIjyqdCUdRQ,,,N,0,0,,,2012-01-09 16:53,2012-01-23 18:13,admin,admin
237,90275,1594,12449,1772,1,0,N,N,N,CP_Drtn,TT_Task,DT_FixedDUR2,RV_OK,TK_NotStart,A3500,Foundation,,4464,0,80,0,0,0,80,0,0,0,,,,2013-11-23 08:00,2013-12-03 16:00,,2012-02-11 08:00,2012-02-21 16:00,2012-02-11 08:00,2012-02-21 16:00,2012-02-11 08:00,2012-02-21 16:00,,2013-11-23 08:00,2013-12-03 16:00,,PT_Normal,,,,,IiRVwooJj02pK2ey9RyXMg,XlYpyToGaUSq5TTU/Dnh5Q,,,N,0,0,,,2012-01-09 16:53,2012-01-23 18:13,admin,admin
238,90276,1594,12450,1772,1,0,N,N,N,CP_Drtn,TT_Task,DT_FixedDUR2,RV_OK,TK_NotStart,A3550,Excavation,,1992,0,160,0,0,0,160,0,0,0,,,,2012-10-17 08:00,2012-11-08 16:00,,2012-01-01 08:00,2012-01-23 16:00,2012-01-01 08:00,2012-01-23 16:00,2012-01-01 08:00,2012-01-23 16:00,,2012-10-17 08:00,2012-11-08 16:00,,PT_Normal,,,,,zsTeQHk7p0e/hnGLwQo2UQ,PEVoSbPJOkaKd6gL9G9tlQ,,,N,0,0,,,2012-01-09 16:57,2012-01-23 18:13,admin,admin
239,90277,1594,12450,1772,1,0,N,N,N,CP_Drtn,TT_Task,DT_FixedDUR2,RV_OK,TK_NotStart,A3560,Foundation,,1992,0,360,0,0,0,360,0,0,0,,,,2012-11-10 08:00,2012-12-31 16:00,,2012-01-24 08:00,2012-03-15 16:00,2012-01-24 08:00,2012-03-15 16:00,2012-01-24 08:00,2012-03-15 16:00,,2012-11-10 08:00,2012-12-31 16:00,,PT_Normal,,,,,sHan12Cjv06vCKvXtvcPFA,FyQJKP26kEmj/AeEhXcwog,,,N,0,0,,,2012-01-09 16:57,2012-01-23 18:13,admin,admin
240,90278,1594,12450,1772,1,0,N,N,N,CP_Drtn,TT_Task,DT_FixedDUR2,RV_OK,TK_NotStart,A3570,Columns,,1992,0,160,0,0,0,160,0,0,0,,,,2013-01-01 08:00,2013-01-23 16:00,,2012-03-17 08:00,2012-04-08 16:00,2012-03-17 08:00,2012-04-08 16:00,2012-03-17 08:00,2012-04-08 16:00,,2013-01-01 08:00,2013-01-23 16:00,,PT_Normal,,,,,qI1CRQ6HT0OgB8aEz9haMw,1pfnqW/MD0OPKrBBylqiMg,,,N,0,0,,,2012-01-09 16:57,2012-01-23 18:13,admin,admin
241,90279,1594,12450,1772,1,0,N,N,N,CP_Drtn,TT_Task,DT_FixedDUR2,RV_OK,TK_NotStart,A3580,Ground floor slab,,1992,0,360,0,0,0,360,0,0,0,,,,2013-01-24 08:00,2013-03-17 16:00,,2012-04-09 08:00,2012-05-30 16:00,2012-04-09 08:00,2012-05-30 16:00,2012-04-09 08:00,2012-05-30 16:00,,2013-01-24 08:00,2013-03-17 16:00,,PT_Normal,,,,,twlm9YIMn0+nyt2s9yqZDA,/QC0HbDFwUCFhnghm5I7Zg,,,N,0,0,,,2012-01-09 16:57,2012-01-23 18:13,admin,admin
242,90280,1594,12450,1772,1,0,N,N,N,CP_Drtn,TT_Task,DT_FixedDUR2,RV_OK,TK_NotStart,A3620,Ground floor masonry,,1992,0,240,0,0,0,240,0,0,0,,,,2013-06-04 08:00,2013-07-08 16:00,,2012-08-18 08:00,2012-09-20 16:00,2012-08-18 08:00,2012-09-20 16:00,2012-08-18 08:00,2012-09-20 16:00,,2013-06-04 08:00,2013-07-08 16:00,,PT_Normal,,,,,XHTdWls9DUWnFDDwOVhpZA,ZIRj8KTpeUqIq0eGj8HL+w,,,N,0,0,,,2012-01-09 16:57,2012-01-23 18:13,admin,admin
243,90281,1594,12450,1772,1,0,N,N,N,CP_Drtn,TT_Task,DT_FixedDUR2,RV_OK,TK_NotStart,A3590,Masonry under slab on grade,,1992,0,240,0,0,0,240,0,0,0,,,,2013-03-18 08:00,2013-04-21 16:00,,2012-05-31 08:00,2012-07-04 16:00,2012-05-31 08:00,2012-07-04 16:00,2012-05-31 08:00,2012-07-04 16:00,,2013-03-18 08:00,2013-04-21 16:00,,PT_Normal,,,,,uejzIKM7l0SYcyPeyAQTMQ,U5G1yq3zs0Gj02fqJyanyw,,,N,0,0,,,2012-01-09 16:57,2012-01-23 18:13,admin,admin
244,90282,1594,12450,1772,1,0,N,N,N,CP_Drtn,TT_Task,DT_FixedDUR2,RV_OK,TK_NotStart,A3610,Slab on grade,,1992,0,56,0,0,0,56,0,0,0,,,,2013-05-27 08:00,2013-06-03 16:00,,2012-08-09 08:00,2012-08-16 16:00,2012-08-09 08:00,2012-08-16 16:00,2012-08-09 08:00,2012-08-16 16:00,,2013-05-27 08:00,2013-06-03 16:00,,PT_Normal,,,,,TTWGg7mG/02gXNU+ZQk3Bw,CfBgYzKmyUKIKSMWqAqtNQ,,,N,0,0,,,2012-01-09 16:57,2012-01-23 18:13,admin,admin
245,90283,1594,12450,1772,1,0,N,N,N,CP_Drtn,TT_Task,DT_FixedDUR2,RV_OK,TK_NotStart,A3600,Footing insulation&backfilling,,1992,0,240,0,0,0,240,0,0,0,,,,2013-04-22 08:00,2013-05-26 16:00,,2012-07-05 08:00,2012-08-08 16:00,2012-07-05 08:00,2012-08-08 16:00,2012-07-05 08:00,2012-08-08 16:00,,2013-04-22 08:00,2013-05-26 16:00,,PT_Normal,,,,,xuia8oTU0k2fuv2rl+qxMA,5YTCwEXEik6b2BwIm1Arhg,,,N,0,0,,,2012-01-09 16:57,2012-01-23 18:13,admin,admin
246,90284,1594,12450,1772,1,0,N,N,N,CP_Drtn,TT_Task,DT_FixedDUR2,RV_OK,TK_NotStart,A3630,Finishing works,,1992,0,720,0,0,0,720,0,0,0,,,,2013-07-09 08:00,2013-10-21 16:00,,2012-09-22 08:00,2013-01-03 16:00,2012-09-22 08:00,2013-01-03 16:00,2012-09-22 08:00,2013-01-03 16:00,,2013-07-09 08:00,2013-10-21 16:00,,PT_Normal,,,,,CYgUGOlCE0y+AhqiWU/Dww,1o1WpgOzOk6eIJAoaxH0jQ,,,N,0,0,,,2012-01-09 16:57,2012-01-23 18:13,admin,admin
247,90285,1594,12776,1772,1,0,N,N,N,CP_Drtn,TT_Task,DT_FixedDUR2,RV_OK,TK_NotStart,A3640,Excavation,,2008,0,120,0,0,0,120,0,0,0,,,,2012-11-24 08:00,2012-12-10 16:00,,2012-02-05 08:00,2012-02-21 16:00,2012-02-05 08:00,2012-02-21 16:00,2012-02-05 08:00,2012-02-21 16:00,,2012-11-24 08:00,2012-12-10 16:00,,PT_Normal,,,,,ops2FNS5KU2woRfOymacRQ,,,,N,0,0,,,2012-01-10 15:26,2012-01-23 18:13,admin,admin
248,90286,1594,12776,1772,1,0,N,N,N,CP_Drtn,TT_Task,DT_FixedDUR2,RV_OK,TK_NotStart,A3650,Foundations,,2008,0,480,0,0,0,480,0,0,0,,,,2012-12-11 08:00,2013-02-18 16:00,,2012-02-22 08:00,2012-05-01 16:00,2012-02-22 08:00,2012-05-01 16:00,2012-02-22 08:00,2012-05-01 16:00,,2012-12-11 08:00,2013-02-18 16:00,,PT_Normal,,,,,LB5AkHaP3UuqX6vVZwq4JA,,,,N,0,0,,,2012-01-10 15:26,2012-01-23 18:13,admin,admin
249,90287,1594,12776,1772,1,0,N,N,N,CP_Drtn,TT_Task,DT_FixedDUR2,RV_OK,TK_NotStart,A3660,Concrete skeleton,,2008,0,720,0,0,0,720,0,0,0,,,,2013-02-19 08:00,2013-06-03 16:00,,2012-05-02 08:00,2012-08-14 16:00,2012-05-02 08:00,2012-08-14 16:00,2012-05-02 08:00,2012-08-14 16:00,,2013-02-19 08:00,2013-06-03 16:00,,PT_Normal,,,,,e5yC7YGRpEanTbM2d360Og,,,,N,0,0,,,2012-01-10 15:26,2012-01-23 18:13,admin,admin
250,90288,1594,12776,1772,1,0,N,N,N,CP_Drtn,TT_Task,DT_FixedDUR2,RV_OK,TK_NotStart,A3670,Finishing works,,2008,0,720,0,0,0,720,0,0,0,,,,2013-06-04 08:00,2013-09-16 16:00,,2012-08-15 08:00,2012-11-27 16:00,2012-08-15 08:00,2012-11-27 16:00,2012-08-15 08:00,2012-11-27 16:00,,2013-06-04 08:00,2013-09-16 16:00,,PT_Normal,,,,,SC6VOhZCA0GYfPyIj7qEoA,,,,N,0,0,,,2012-01-10 15:26,2012-01-23 18:13,admin,admin
251,90289,1594,12776,1772,1,0,N,N,N,CP_Drtn,TT_Task,DT_FixedDUR2,RV_OK,TK_NotStart,A3680,Backfilling around shelters,,2008,2008,720,0,0,0,720,0,0,0,,,,2013-09-17 08:00,2013-12-30 16:00,,2012-11-28 08:00,2013-03-12 16:00,2012-11-28 08:00,2013-03-12 16:00,2012-11-28 08:00,2013-03-12 16:00,,2013-09-17 08:00,2013-12-30 16:00,,PT_Normal,,,,,maL4ggkWXEmxg7R32F/8qg,,,,N,0,0,,,2012-01-10 15:26,2012-01-23 18:13,admin,admin
252,90290,1594,12780,1772,1,0,N,N,N,CP_Drtn,TT_Task,DT_FixedDUR2,RV_OK,TK_NotStart,A3690,Excavation,,0,0,120,0,0,0,120,0,0,0,,,,2012-10-07 08:00,2012-10-23 16:00,,2012-10-07 08:00,2012-10-23 16:00,2012-10-07 08:00,2012-10-23 16:00,2012-10-07 08:00,2012-10-23 16:00,,2012-10-07 08:00,2012-10-23 16:00,,PT_Normal,,,,,DUlAUh0PDEuTtpzKNH1QyA,ops2FNS5KU2woRfOymacRQ,,,Y,0,0,,,2012-01-16 10:51,2012-01-23 17:31,admin,admin
253,90291,1594,12780,1772,1,0,N,N,N,CP_Drtn,TT_Task,DT_FixedDUR2,RV_OK,TK_NotStart,A3700,Foundations,,0,0,480,0,0,0,480,0,0,0,,,,2012-10-24 08:00,2013-01-01 16:00,,2012-10-24 08:00,2013-01-01 16:00,2012-10-24 08:00,2013-01-01 16:00,2012-10-24 08:00,2013-01-01 16:00,,2012-10-24 08:00,2013-01-01 16:00,,PT_Normal,,,,,/apsPFswzEmwAzq/arLmZA,LB5AkHaP3UuqX6vVZwq4JA,,,Y,0,0,,,2012-01-16 10:51,2012-01-23 17:31,admin,admin
254,90292,1594,12780,1772,1,0,N,N,N,CP_Drtn,TT_Task,DT_FixedDUR2,RV_OK,TK_NotStart,A3710,Concrete skeleton,,0,0,960,0,0,0,960,0,0,0,,,,2013-01-02 08:00,2013-05-21 16:00,,2013-01-02 08:00,2013-05-21 16:00,2013-01-02 08:00,2013-05-21 16:00,2013-01-02 08:00,2013-05-21 16:00,,2013-01-02 08:00,2013-05-21 16:00,,PT_Normal,,,,,qNDox4+c5ECiyDuRm4LJNA,e5yC7YGRpEanTbM2d360Og,,,Y,0,0,,,2012-01-16 10:51,2012-01-23 17:32,admin,admin
255,90293,1594,12780,1772,1,0,N,N,N,CP_Drtn,TT_Task,DT_FixedDUR2,RV_OK,TK_NotStart,A3720,Finishing works,,0,0,720,0,0,0,720,0,0,0,,,,2013-05-22 08:00,2013-09-03 16:00,,2013-05-22 08:00,2013-09-03 16:00,2013-05-22 08:00,2013-09-03 16:00,2013-05-22 08:00,2013-09-03 16:00,,2013-05-22 08:00,2013-09-03 16:00,,PT_Normal,,,,,BdCUUa5Ca06/yD5orRXNQA,SC6VOhZCA0GYfPyIj7qEoA,,,Y,0,0,,,2012-01-16 10:51,2012-01-23 17:32,admin,admin
256,90294,1594,12780,1772,1,0,N,N,N,CP_Drtn,TT_Task,DT_FixedDUR2,RV_OK,TK_NotStart,A3730,Backfilling around shelters,,0,0,720,0,0,0,720,0,0,0,,,,2013-09-04 08:00,2013-12-17 16:00,,2013-09-04 08:00,2013-12-17 16:00,2013-09-04 08:00,2013-12-17 16:00,2013-09-04 08:00,2013-12-17 16:00,,2013-09-04 08:00,2013-12-17 16:00,,PT_Normal,,,,,i1Skc1tD5Uay8e8v4NAIUg,maL4ggkWXEmxg7R32F/8qg,,,Y,0,0,,,2012-01-16 10:51,2012-01-23 17:32,admin,admin
257,92887,1594,12770,1772,1,0,N,N,N,CP_Drtn,TT_Task,DT_FixedDUR2,RV_OK,TK_NotStart,A9720,HVAC WORKS,,928,928,1200,0,0,0,1200,0,0,0,,,,2013-07-09 08:00,2013-12-30 16:00,,2013-02-24 08:00,2013-08-17 16:00,2013-02-24 08:00,2013-08-17 16:00,2013-02-24 08:00,2013-08-17 16:00,,2013-07-09 08:00,2013-12-30 16:00,,PT_Normal,,,,,lC40e1V1kEa8ltIBmqE9mA,,,,N,0,0,,,2012-01-22 09:49,2012-01-23 18:13,admin,admin
258,92888,1594,12771,1772,1,0,N,N,N,CP_Drtn,TT_Task,DT_FixedDUR2,RV_OK,TK_NotStart,A9730,Electrical works,,928,928,1200,0,0,0,1200,0,0,0,,,,2013-07-09 08:00,2013-12-30 16:00,,2013-02-24 08:00,2013-08-17 16:00,2013-02-24 08:00,2013-08-17 16:00,2013-02-24 08:00,2013-08-17 16:00,,2013-07-09 08:00,2013-12-30 16:00,,PT_Normal,,,,,t3YvLyZFGEWTR5o8h7lmSw,,,,N,0,0,,,2012-01-22 09:56,2012-01-23 18:13,admin,admin
259,92889,1594,12778,1772,1,0,N,N,N,CP_Drtn,TT_Task,DT_FixedDUR2,RV_OK,TK_NotStart,A9740,HVAC WORKS,,2088,2088,1200,0,0,0,1200,0,0,0,,,,2013-07-09 08:00,2013-12-30 16:00,,2012-09-08 08:00,2013-02-28 16:00,2012-09-08 08:00,2013-02-28 16:00,2012-09-08 08:00,2013-02-28 16:00,,2013-07-09 08:00,2013-12-30 16:00,,PT_Normal,,,,,dw768DiqCUWV25cCGn3zxQ,lC40e1V1kEa8ltIBmqE9mA,,,N,0,0,,,2012-01-22 11:10,2012-01-23 18:13,admin,admin
260,92890,1594,12779,1772,1,0,N,N,N,CP_Drtn,TT_Task,DT_FixedDUR2,RV_OK,TK_NotStart,A9750,Electrical works,,2088,2088,1200,0,0,0,1200,0,0,0,,,,2013-07-09 08:00,2013-12-30 16:00,,2012-09-08 08:00,2013-02-28 16:00,2012-09-08 08:00,2013-02-28 16:00,2012-09-08 08:00,2013-02-28 16:00,,2013-07-09 08:00,2013-12-30 16:00,,PT_Normal,,,,,1LmeTsCx/EqHcFsVz7BALQ,t3YvLyZFGEWTR5o8h7lmSw,,,N,0,0,,,2012-01-22 11:10,2012-01-23 18:13,admin,admin
261,92891,1594,12782,1772,1,0,N,N,N,CP_Drtn,TT_Task,DT_FixedDUR2,RV_OK,TK_NotStart,A9760,HVAC WORKS,,168,168,1200,0,0,0,1200,0,0,0,,,,2013-07-09 08:00,2013-12-30 16:00,,2013-06-15 08:00,2013-12-05 16:00,2013-06-15 08:00,2013-12-05 16:00,2013-06-15 08:00,2013-12-05 16:00,,2013-07-09 08:00,2013-12-30 16:00,,PT_Normal,,,,,AZaywOWdMEGxSJFHkJSWTQ,dw768DiqCUWV25cCGn3zxQ,,,N,0,0,,,2012-01-22 11:17,2012-01-23 18:13,admin,admin
262,92892,1594,12783,1772,1,0,N,N,N,CP_Drtn,TT_Task,DT_FixedDUR2,RV_OK,TK_NotStart,A9770,Electrical works,,168,168,1200,0,0,0,1200,0,0,0,,,,2013-07-09 08:00,2013-12-30 16:00,,2013-06-15 08:00,2013-12-05 16:00,2013-06-15 08:00,2013-12-05 16:00,2013-06-15 08:00,2013-12-05 16:00,,2013-07-09 08:00,2013-12-30 16:00,,PT_Normal,,,,,A6QClc6mY0u2nmCmCDXRLQ,1LmeTsCx/EqHcFsVz7BALQ,,,N,0,0,,,2012-01-22 11:17,2012-01-23 18:13,admin,admin
263,92893,1594,12786,1772,1,0,N,N,N,CP_Drtn,TT_Task,DT_FixedDUR2,RV_OK,TK_NotStart,A9780,HVAC WORKS,,2208,2208,1200,0,0,0,1200,0,0,0,,,,2013-07-09 08:00,2013-12-30 16:00,,2012-08-21 08:00,2013-02-11 16:00,2012-08-21 08:00,2013-02-11 16:00,2012-08-21 08:00,2013-02-11 16:00,,2013-07-09 08:00,2013-12-30 16:00,,PT_Normal,,,,,nZGqY3J9BUOsJI0I1GiU3Q,AZaywOWdMEGxSJFHkJSWTQ,,,N,0,0,,,2012-01-22 11:25,2012-01-23 18:13,admin,admin
264,92894,1594,12787,1772,1,0,N,N,N,CP_Drtn,TT_Task,DT_FixedDUR2,RV_OK,TK_NotStart,A9790,Electrical works,,2208,2208,1200,0,0,0,1200,0,0,0,,,,2013-07-09 08:00,2013-12-30 16:00,,2012-08-21 08:00,2013-02-11 16:00,2012-08-21 08:00,2013-02-11 16:00,2012-08-21 08:00,2013-02-11 16:00,,2013-07-09 08:00,2013-12-30 16:00,,PT_Normal,,,,,uTpb6IxLs0uRyAFZ5/0VtA,A6QClc6mY0u2nmCmCDXRLQ,,,N,0,0,,,2012-01-22 11:25,2012-01-23 18:13,admin,admin
265,92895,1594,12794,1772,1,0,N,N,N,CP_Drtn,TT_Task,DT_FixedDUR2,RV_OK,TK_NotStart,A9800,HVAC WORKS,,3288,3288,720,0,0,0,720,0,0,0,,,,2013-09-17 08:00,2013-12-30 16:00,,2012-05-26 08:00,2012-09-06 16:00,2012-05-26 08:00,2012-09-06 16:00,2012-05-26 08:00,2012-09-06 16:00,,2013-09-17 08:00,2013-12-30 16:00,,PT_Normal,,,,,uq2QwcWEskuAN5Uc6OyFfA,nZGqY3J9BUOsJI0I1GiU3Q,,,N,0,0,,,2012-01-22 11:27,2012-01-23 18:13,admin,admin
266,92896,1594,12795,1772,1,0,N,N,N,CP_Drtn,TT_Task,DT_FixedDUR2,RV_OK,TK_NotStart,A9810,Electrical works,,3288,3288,720,0,0,0,720,0,0,0,,,,2013-09-17 08:00,2013-12-30 16:00,,2012-05-26 08:00,2012-09-06 16:00,2012-05-26 08:00,2012-09-06 16:00,2012-05-26 08:00,2012-09-06 16:00,,2013-09-17 08:00,2013-12-30 16:00,,PT_Normal,,,,,xzp4INLpIEW+6rBzoDDogw,uTpb6IxLs0uRyAFZ5/0VtA,,,N,0,0,,,2012-01-22 11:27,2012-01-23 18:13,admin,admin
267,92897,1594,12802,1772,1,0,N,N,N,CP_Drtn,TT_Task,DT_FixedDUR2,RV_OK,TK_NotStart,A9820,HVAC WORKS,,1624,1624,960,0,0,0,960,0,0,0,,,,2013-08-13 08:00,2013-12-30 16:00,,2012-12-19 08:00,2013-05-07 16:00,2012-12-19 08:00,2013-05-07 16:00,2012-12-19 08:00,2013-05-07 16:00,,2013-08-13 08:00,2013-12-30 16:00,,PT_Normal,,,,,M7qlMGoI6EW6jJbiL/Lc0w,uq2QwcWEskuAN5Uc6OyFfA,,,N,0,0,,,2012-01-22 11:32,2012-01-23 18:13,admin,admin
268,92898,1594,12803,1772,1,0,N,N,N,CP_Drtn,TT_Task,DT_FixedDUR2,RV_OK,TK_NotStart,A9830,Electrical works,,1624,1624,960,0,0,0,960,0,0,0,,,,2013-08-13 08:00,2013-12-30 16:00,,2012-12-19 08:00,2013-05-07 16:00,2012-12-19 08:00,2013-05-07 16:00,2012-12-19 08:00,2013-05-07 16:00,,2013-08-13 08:00,2013-12-30 16:00,,PT_Normal,,,,,7lhe0eNB0EiDBDKEiRoQFQ,uTpb6IxLs0uRyAFZ5/0VtA,,,N,0,0,,,2012-01-22 11:32,2012-01-23 18:13,admin,admin
269,92899,1594,12798,1772,1,0,N,N,N,CP_Drtn,TT_Task,DT_FixedDUR2,RV_OK,TK_NotStart,A9840,HVAC WORKS,,1592,1592,960,0,0,0,960,0,0,0,,,,2013-08-13 08:00,2013-12-30 16:00,,2012-12-24 08:00,2013-05-12 16:00,2012-12-24 08:00,2013-05-12 16:00,2012-12-24 08:00,2013-05-12 16:00,,2013-08-13 08:00,2013-12-30 16:00,,PT_Normal,,,,,x/2gBlPRk0eUNCeAX0PvyQ,M7qlMGoI6EW6jJbiL/Lc0w,,,N,0,0,,,2012-01-22 11:45,2012-01-23 18:13,admin,admin
270,92900,1594,12799,1772,1,0,N,N,N,CP_Drtn,TT_Task,DT_FixedDUR2,RV_OK,TK_NotStart,A9850,Electrical works,,1352,1352,1200,0,0,0,1200,0,0,0,,,,2013-07-09 08:00,2013-12-30 16:00,,2012-12-24 08:00,2013-06-16 16:00,2012-12-24 08:00,2013-06-16 16:00,2012-12-24 08:00,2013-06-16 16:00,,2013-07-09 08:00,2013-12-30 16:00,,PT_Normal,,,,,yvVX3aFBe0CFNVxZih5nZA,uTpb6IxLs0uRyAFZ5/0VtA,,,N,0,0,,,2012-01-22 11:45,2012-01-23 18:13,admin,admin
271,92901,1594,12858,1772,1,0,N,N,N,CP_Drtn,TT_Task,DT_FixedDUR2,RV_OK,TK_NotStart,A9860,HVAC WORKS,,1992,1992,1200,0,0,0,1200,0,0,0,,,,2013-07-09 08:00,2013-12-30 16:00,,2012-09-22 08:00,2013-03-14 16:00,2012-09-22 08:00,2013-03-14 16:00,2012-09-22 08:00,2013-03-14 16:00,,2013-07-09 08:00,2013-12-30 16:00,,PT_Normal,,,,,qJSNKzu90UiGDMS0R5527A,x/2gBlPRk0eUNCeAX0PvyQ,,,N,0,0,,,2012-01-22 11:48,2012-01-23 18:13,admin,admin
272,92902,1594,12859,1772,1,0,N,N,N,CP_Drtn,TT_Task,DT_FixedDUR2,RV_OK,TK_NotStart,A9870,Electrical works,,1992,1992,1200,0,0,0,1200,0,0,0,,,,2013-07-09 08:00,2013-12-30 16:00,,2012-09-22 08:00,2013-03-14 16:00,2012-09-22 08:00,2013-03-14 16:00,2012-09-22 08:00,2013-03-14 16:00,,2013-07-09 08:00,2013-12-30 16:00,,PT_Normal,,,,,Fw41zh4fAkyeoeaTD7q52A,yvVX3aFBe0CFNVxZih5nZA,,,N,0,0,,,2012-01-22 11:48,2012-01-23 18:13,admin,admin
273,92903,1594,12854,1772,1,0,N,N,N,CP_Drtn,TT_Task,DT_FixedDUR2,RV_OK,TK_NotStart,A9880,HVAC WORKS,,1744,1744,720,0,0,0,720,0,0,0,,,,2013-09-17 08:00,2013-12-30 16:00,,2013-01-06 08:00,2013-04-20 16:00,2013-01-06 08:00,2013-04-20 16:00,2013-01-06 08:00,2013-04-20 16:00,,2013-09-17 08:00,2013-12-30 16:00,,PT_Normal,,,,,CGqYuQxNfEiqYsLMtLRwAg,qJSNKzu90UiGDMS0R5527A,,,N,0,0,,,2012-01-22 11:54,2012-01-23 18:13,admin,admin
274,92904,1594,12855,1772,1,0,N,N,N,CP_Drtn,TT_Task,DT_FixedDUR2,RV_OK,TK_NotStart,A9890,Electrical works,,1744,1744,720,0,0,0,720,0,0,0,,,,2013-09-17 08:00,2013-12-30 16:00,,2013-01-06 08:00,2013-04-20 16:00,2013-01-06 08:00,2013-04-20 16:00,2013-01-06 08:00,2013-04-20 16:00,,2013-09-17 08:00,2013-12-30 16:00,,PT_Normal,,,,,Nz+gA3UGHEC6Olg6iJamKg,Fw41zh4fAkyeoeaTD7q52A,,,N,0,0,,,2012-01-22 11:54,2012-01-23 18:13,admin,admin
275,92905,1594,12850,1772,1,0,N,N,N,CP_Drtn,TT_Task,DT_FixedDUR2,RV_OK,TK_NotStart,A9900,HVAC WORKS,,1880,1880,480,0,0,0,480,0,0,0,,,,2013-10-22 08:00,2013-12-30 16:00,,2013-01-21 08:00,2013-03-31 16:00,2013-01-21 08:00,2013-03-31 16:00,2013-01-21 08:00,2013-03-31 16:00,,2013-10-22 08:00,2013-12-30 16:00,,PT_Normal,,,,,8srXV+klfkaKVIWsbKzvew,CGqYuQxNfEiqYsLMtLRwAg,,,N,0,0,,,2012-01-22 11:56,2012-01-23 18:13,admin,admin
276,92906,1594,12851,1772,1,0,N,N,N,CP_Drtn,TT_Task,DT_FixedDUR2,RV_OK,TK_NotStart,A9910,Electrical works,,1880,1880,480,0,0,0,480,0,0,0,,,,2013-10-22 08:00,2013-12-30 16:00,,2013-01-21 08:00,2013-03-31 16:00,2013-01-21 08:00,2013-03-31 16:00,2013-01-21 08:00,2013-03-31 16:00,,2013-10-22 08:00,2013-12-30 16:00,,PT_Normal,,,,,FiimWI0wUkSOj6heQDQGVw,Nz+gA3UGHEC6Olg6iJamKg,,,N,0,0,,,2012-01-22 11:56,2012-01-23 18:13,admin,admin
277,92907,1594,12843,1772,1,0,N,N,N,CP_Drtn,TT_Task,DT_FixedDUR2,RV_OK,TK_NotStart,A9920,Electrical works,,1928,1928,720,0,0,0,720,0,0,0,,,,2013-09-17 08:00,2013-12-30 16:00,,2012-12-10 08:00,2013-03-24 16:00,2012-12-10 08:00,2013-03-24 16:00,2012-12-10 08:00,2013-03-24 16:00,,2013-09-17 08:00,2013-12-30 16:00,,PT_Normal,,,,,xbty920FoECwNVkCgTGAdA,Nz+gA3UGHEC6Olg6iJamKg,,,N,0,0,,,2012-01-22 12:00,2012-01-23 18:13,admin,admin
278,92908,1594,12842,1772,1,0,N,N,N,CP_Drtn,TT_Task,DT_FixedDUR2,RV_OK,TK_NotStart,A9930,HVAC WORKS,,1928,1928,720,0,0,0,720,0,0,0,,,,2013-09-17 08:00,2013-12-30 16:00,,2012-12-10 08:00,2013-03-24 16:00,2012-12-10 08:00,2013-03-24 16:00,2012-12-10 08:00,2013-03-24 16:00,,2013-09-17 08:00,2013-12-30 16:00,,PT_Normal,,,,,O1O2SB4pKEedGVx2KQKDcw,CGqYuQxNfEiqYsLMtLRwAg,,,N,0,0,,,2012-01-22 12:00,2012-01-23 18:13,admin,admin
279,92909,1594,12834,1772,1,0,N,N,N,CP_Drtn,TT_Task,DT_FixedDUR2,RV_OK,TK_NotStart,A9940,HVAC WORKS,,1008,1008,720,0,0,0,720,0,0,0,,,,2013-09-17 08:00,2013-12-30 16:00,,2013-04-23 08:00,2013-08-05 16:00,2013-04-23 08:00,2013-08-05 16:00,2013-04-23 08:00,2013-08-05 16:00,,2013-09-17 08:00,2013-12-30 16:00,,PT_Normal,,,,,O7Frlgy7BEmr4fwmPOv2CA,CGqYuQxNfEiqYsLMtLRwAg,,,N,0,0,,,2012-01-22 13:15,2012-01-23 18:13,admin,admin
280,92910,1594,12835,1772,1,0,N,N,N,CP_Drtn,TT_Task,DT_FixedDUR2,RV_OK,TK_NotStart,A9950,Electrical works,,1008,1008,720,0,0,0,720,0,0,0,,,,2013-09-17 08:00,2013-12-30 16:00,,2013-04-23 08:00,2013-08-05 16:00,2013-04-23 08:00,2013-08-05 16:00,2013-04-23 08:00,2013-08-05 16:00,,2013-09-17 08:00,2013-12-30 16:00,,PT_Normal,,,,,zFlWrjYQMEuTCvJbIoOZ1g,Nz+gA3UGHEC6Olg6iJamKg,,,N,0,0,,,2012-01-22 13:15,2012-01-23 18:13,admin,admin
281,92911,1594,12830,1772,1,0,N,N,N,CP_Drtn,TT_Task,DT_FixedDUR2,RV_OK,TK_NotStart,A9960,HVAC WORKS,,1608,1608,720,0,0,0,720,0,0,0,,,,2013-09-17 08:00,2013-12-30 16:00,,2013-01-26 08:00,2013-05-09 16:00,2013-01-26 08:00,2013-05-09 16:00,2013-01-26 08:00,2013-05-09 16:00,,2013-09-17 08:00,2013-12-30 16:00,,PT_Normal,,,,,u0A5w1CFKE2GQIJwdRf+XA,O7Frlgy7BEmr4fwmPOv2CA,,,N,0,0,,,2012-01-22 13:22,2012-01-23 18:13,admin,admin
282,92912,1594,12831,1772,1,0,N,N,N,CP_Drtn,TT_Task,DT_FixedDUR2,RV_OK,TK_NotStart,A9970,Electrical works,,1608,1608,720,0,0,0,720,0,0,0,,,,2013-09-17 08:00,2013-12-30 16:00,,2013-01-26 08:00,2013-05-09 16:00,2013-01-26 08:00,2013-05-09 16:00,2013-01-26 08:00,2013-05-09 16:00,,2013-09-17 08:00,2013-12-30 16:00,,PT_Normal,,,,,DgD9T780EEilB/J7HMkdZg,zFlWrjYQMEuTCvJbIoOZ1g,,,N,0,0,,,2012-01-22 13:22,2012-01-23 18:13,admin,admin
283,92913,1594,12826,1772,1,0,N,N,N,CP_Drtn,TT_Task,DT_FixedDUR2,RV_OK,TK_NotStart,A9980,HVAC WORKS,,2288,2288,720,0,0,0,720,0,0,0,,,,2013-09-17 08:00,2013-12-30 16:00,,2012-10-18 08:00,2013-01-30 16:00,2012-10-18 08:00,2013-01-30 16:00,2012-10-18 08:00,2013-01-30 16:00,,2013-09-17 08:00,2013-12-30 16:00,,PT_Normal,,,,,7boQ1H0LfU6nUR2p4ksRDA,u0A5w1CFKE2GQIJwdRf+XA,,,N,0,0,,,2012-01-22 13:27,2012-01-23 18:13,admin,admin
284,92914,1594,12827,1772,1,0,N,N,N,CP_Drtn,TT_Task,DT_FixedDUR2,RV_OK,TK_NotStart,A9990,Electrical works,,2288,2288,720,0,0,0,720,0,0,0,,,,2013-09-17 08:00,2013-12-30 16:00,,2012-10-18 08:00,2013-01-30 16:00,2012-10-18 08:00,2013-01-30 16:00,2012-10-18 08:00,2013-01-30 16:00,,2013-09-17 08:00,2013-12-30 16:00,,PT_Normal,,,,,6xKxlySakkOlVXL55vX1+w,DgD9T780EEilB/J7HMkdZg,,,N,0,0,,,2012-01-22 13:28,2012-01-23 18:13,admin,admin
285,92915,1594,12823,1772,1,0,N,N,N,CP_Drtn,TT_Task,DT_FixedDUR2,RV_OK,TK_NotStart,A10000,Electrical works,,648,648,720,0,0,0,720,0,0,0,,,,2013-09-17 08:00,2013-12-30 16:00,,2013-06-15 08:00,2013-09-26 16:00,2013-06-15 08:00,2013-09-26 16:00,2013-06-15 08:00,2013-09-26 16:00,,2013-09-17 08:00,2013-12-30 16:00,,PT_Normal,,,,,8yAwxMQH2UK+eL2s//cZnA,6xKxlySakkOlVXL55vX1+w,,,N,0,0,,,2012-01-22 13:29,2012-01-23 18:13,admin,admin
286,92916,1594,12822,1772,1,0,N,N,N,CP_Drtn,TT_Task,DT_FixedDUR2,RV_OK,TK_NotStart,A10010,HVAC WORKS,,648,648,720,0,0,0,720,0,0,0,,,,2013-09-17 08:00,2013-12-30 16:00,,2013-06-15 08:00,2013-09-26 16:00,2013-06-15 08:00,2013-09-26 16:00,2013-06-15 08:00,2013-09-26 16:00,,2013-09-17 08:00,2013-12-30 16:00,,PT_Normal,,,,,QWiPHWUfL06eNmXWTSBr+Q,7boQ1H0LfU6nUR2p4ksRDA,,,N,0,0,,,2012-01-22 13:29,2012-01-23 18:13,admin,admin
287,92917,1594,12806,1772,1,0,N,N,N,CP_Drtn,TT_Task,DT_FixedDUR2,RV_OK,TK_NotStart,A10020,HVAC WORKS,,2288,2288,960,0,0,0,960,0,0,0,,,,2013-08-13 08:00,2013-12-30 16:00,,2012-09-13 08:00,2013-01-30 16:00,2012-09-13 08:00,2013-01-30 16:00,2012-09-13 08:00,2013-01-30 16:00,,2013-08-13 08:00,2013-12-30 16:00,,PT_Normal,,,,,AXGVKF50SUWc8WVlROTLbA,O1O2SB4pKEedGVx2KQKDcw,,,N,0,0,,,2012-01-22 13:33,2012-01-23 18:13,admin,admin
288,92918,1594,12807,1772,1,0,N,N,N,CP_Drtn,TT_Task,DT_FixedDUR2,RV_OK,TK_NotStart,A10030,Electrical works,,2288,2288,960,0,0,0,960,0,0,0,,,,2013-08-13 08:00,2013-12-30 16:00,,2012-09-13 08:00,2013-01-30 16:00,2012-09-13 08:00,2013-01-30 16:00,2012-09-13 08:00,2013-01-30 16:00,,2013-08-13 08:00,2013-12-30 16:00,,PT_Normal,,,,,xk14n2YPpUy2VELpsn2RqA,xbty920FoECwNVkCgTGAdA,,,N,0,0,,,2012-01-22 13:33,2012-01-23 18:13,admin,admin
289,92919,1594,12846,1772,1,0,N,N,N,CP_Drtn,TT_Task,DT_FixedDUR2,RV_OK,TK_NotStart,A10040,HVAC WORKS,,2728,2728,960,0,0,0,960,0,0,0,,,,2013-08-13 08:00,2013-12-30 16:00,,2012-07-11 08:00,2012-11-27 16:00,2012-07-11 08:00,2012-11-27 16:00,2012-07-11 08:00,2012-11-27 16:00,,2013-08-13 08:00,2013-12-30 16:00,,PT_Normal,,,,,BiTrGv0010eLAMCfT0i4RA,8srXV+klfkaKVIWsbKzvew,,,N,0,0,,,2012-01-22 13:55,2012-01-23 18:13,admin,admin
290,92920,1594,12847,1772,1,0,N,N,N,CP_Drtn,TT_Task,DT_FixedDUR2,RV_OK,TK_NotStart,A10050,Electrical works,,2728,2728,960,0,0,0,960,0,0,0,,,,2013-08-13 08:00,2013-12-30 16:00,,2012-07-11 08:00,2012-11-27 16:00,2012-07-11 08:00,2012-11-27 16:00,2012-07-11 08:00,2012-11-27 16:00,,2013-08-13 08:00,2013-12-30 16:00,,PT_Normal,,,,,fK+iUvvJPEaNzuauvC89gg,FiimWI0wUkSOj6heQDQGVw,,,N,0,0,,,2012-01-22 13:55,2012-01-23 18:13,admin,admin
291,92921,1594,12838,1772,1,0,N,N,N,CP_Drtn,TT_Task,DT_FixedDUR2,RV_OK,TK_NotStart,A10060,HVAC WORKS,,992,992,960,0,0,0,960,0,0,0,,,,2013-08-13 08:00,2013-12-30 16:00,,2013-03-21 08:00,2013-08-07 16:00,2013-03-21 08:00,2013-08-07 16:00,2013-03-21 08:00,2013-08-07 16:00,,2013-08-13 08:00,2013-12-30 16:00,,PT_Normal,,,,,Zt9thxrmPk+IOti41xeC2Q,8srXV+klfkaKVIWsbKzvew,,,N,0,0,,,2012-01-22 14:06,2012-01-23 18:13,admin,admin
292,92922,1594,12839,1772,1,0,N,N,N,CP_Drtn,TT_Task,DT_FixedDUR2,RV_OK,TK_NotStart,A10070,Electrical works,,992,992,960,0,0,0,960,0,0,0,,,,2013-08-13 08:00,2013-12-30 16:00,,2013-03-21 08:00,2013-08-07 16:00,2013-03-21 08:00,2013-08-07 16:00,2013-03-21 08:00,2013-08-07 16:00,,2013-08-13 08:00,2013-12-30 16:00,,PT_Normal,,,,,2vpenqF9XkGMLkF1Rf+CIg,FiimWI0wUkSOj6heQDQGVw,,,N,0,0,,,2012-01-22 14:07,2012-01-23 18:13,admin,admin
293,92923,1594,12774,1772,1,0,N,N,N,CP_Drtn,TT_Task,DT_FixedDUR2,RV_OK,TK_NotStart,A10080,HVAC WORKS,,2288,2288,960,0,0,0,960,0,0,0,,,,2013-08-13 08:00,2013-12-30 16:00,,2012-09-13 08:00,2013-01-30 16:00,2012-09-13 08:00,2013-01-30 16:00,2012-09-13 08:00,2013-01-30 16:00,,2013-08-13 08:00,2013-12-30 16:00,,PT_Normal,,,,,2zL8GANFeE+C1z2ERNp2Gw,lC40e1V1kEa8ltIBmqE9mA,,,N,0,0,,,2012-01-22 14:22,2012-01-23 18:13,admin,admin
294,92924,1594,12775,1772,1,0,N,N,N,CP_Drtn,TT_Task,DT_FixedDUR2,RV_OK,TK_NotStart,A10090,Electrical works,,2288,2288,960,0,0,0,960,0,0,0,,,,2013-08-13 08:00,2013-12-30 16:00,,2012-09-13 08:00,2013-01-30 16:00,2012-09-13 08:00,2013-01-30 16:00,2012-09-13 08:00,2013-01-30 16:00,,2013-08-13 08:00,2013-12-30 16:00,,PT_Normal,,,,,ws3inQoU2U2keVnnivRwXQ,t3YvLyZFGEWTR5o8h7lmSw,,,N,0,0,,,2012-01-22 14:22,2012-01-23 18:13,admin,admin
295,93836,1594,13062,1772,0,0,N,N,N,CP_Drtn,TT_Mile,DT_FixedDrtn,RV_OK,TK_NotStart,A10100,Commencement date,,0,0,0,0,0,0,0,0,0,0,,,,2012-01-01 08:00,2012-01-01 08:00,,2012-01-01 08:00,2012-01-01 08:00,2012-01-01 08:00,2012-01-01 08:00,2012-01-01 08:00,2012-01-01 08:00,,2012-01-01 08:00,2012-01-01 08:00,,PT_Normal,,,,,X2h1ZIYhB0GgaSRz3UlBDg,,,,Y,0,0,,,2012-01-23 16:37,2012-01-23 16:55,admin,admin
296,93837,1594,13062,1772,0,0,N,N,N,CP_Drtn,TT_FinMile,DT_FixedDrtn,RV_OK,TK_NotStart,A10110,Project handing over,,0,0,0,0,0,0,0,0,0,0,,,,2013-12-30 16:00,2013-12-30 16:00,,2013-12-30 16:00,2013-12-30 16:00,2013-12-30 16:00,2013-12-30 16:00,2013-12-30 16:00,2013-12-30 16:00,,2013-12-30 16:00,2013-12-30 16:00,,PT_Normal,,,,,MNFOxdDizUecs5ELm1R1yA,,,,Y,0,0,,,2012-01-23 16:37,2012-01-23 18:13,admin,admin
297,93838,1594,13063,1772,1,0,N,N,N,CP_Drtn,TT_Task,DT_FixedDUR2,RV_OK,TK_NotStart,A10120,Mobilization,,0,0,240,0,0,0,240,0,0,0,,,,2012-01-01 08:00,2012-02-04 16:00,,2012-01-01 08:00,2012-02-04 16:00,2012-01-01 08:00,2012-02-04 16:00,2012-01-01 08:00,2012-02-04 16:00,,2012-01-01 08:00,2012-02-04 16:00,,PT_Normal,,,,,UsVTWei2CkWFiwJ9SzxfSA,,,,Y,0,0,,,2012-01-23 16:38,2012-01-23 16:55,admin,admin
298,93839,1594,13063,1772,1,0,N,N,N,CP_Drtn,TT_Task,DT_FixedDUR2,RV_OK,TK_NotStart,A10130,Demobilization,,0,0,160,0,0,0,160,0,0,0,,,,2013-12-08 08:00,2013-12-30 16:00,,2013-12-08 08:00,2013-12-30 16:00,2013-12-08 08:00,2013-12-30 16:00,2013-12-08 08:00,2013-12-30 16:00,,2013-12-08 08:00,2013-12-30 16:00,,PT_Normal,,,,,ccJbx3cKtEKqm2ccgVEcaw,,,,Y,0,0,,,2012-01-23 16:38,2012-01-23 18:13,admin,admin
299,93840,1594,13064,1772,1,0,N,N,N,CP_Drtn,TT_Task,DT_FixedDUR2,RV_OK,TK_NotStart,A10210,Masonry works,,1920,0,56,0,0,0,56,0,0,0,,,,2013-09-21 08:00,2013-09-28 16:00,,2012-12-15 08:00,2012-12-22 16:00,2012-12-15 08:00,2012-12-22 16:00,2012-12-15 08:00,2012-12-22 16:00,,2013-09-21 08:00,2013-09-28 16:00,,PT_Normal,,,,,jvpoPtCiI0um2kchXz8s+Q,gRqd+09bF0G73QHeDS840w,,,N,0,0,,,2012-01-23 18:15,2012-01-23 18:18,admin,admin
300,93841,1594,13064,1772,1,0,N,N,N,CP_Drtn,TT_Task,DT_FixedDUR2,RV_OK,TK_NotStart,A10220,Finishing works,,1920,0,160,0,0,0,160,0,0,0,,,,2013-09-29 08:00,2013-10-21 16:00,,2012-12-23 08:00,2013-01-14 16:00,2012-12-23 08:00,2013-01-14 16:00,2012-12-23 08:00,2013-01-14 16:00,,2013-09-29 08:00,2013-10-21 16:00,,PT_Normal,,,,,UKHQh2irRkGQHr6ZlMMrgQ,62S4CcsX7Ua3Lca/qdLk/w,,,N,0,0,,,2012-01-23 18:15,2012-01-23 18:18,admin,admin
301,93843,1594,13064,1772,1,0,N,N,N,CP_Drtn,TT_Task,DT_FixedDUR2,RV_OK,TK_NotStart,A10140,Excavation,,1920,0,24,0,0,0,24,0,0,0,,,,2013-07-02 08:00,2013-07-04 16:00,,2012-09-25 08:00,2012-09-27 16:00,2012-09-25 08:00,2012-09-27 16:00,2012-09-25 08:00,2012-09-27 16:00,,2013-07-02 08:00,2013-07-04 16:00,,PT_Normal,,,,,O8CBb/WOeEaEFFQ2vqD1Pw,pDQEGWqYK0KTZFDYwerJQQ,,,N,0,0,,,2012-01-23 18:15,2012-01-23 18:18,admin,admin
302,93844,1594,13064,1772,1,0,N,N,N,CP_Drtn,TT_Task,DT_FixedDUR2,RV_OK,TK_NotStart,A10150,Foundation,,1920,0,144,0,0,0,144,0,0,0,,,,2013-07-06 08:00,2013-07-25 16:00,,2012-09-29 08:00,2012-10-18 16:00,2012-09-29 08:00,2012-10-18 16:00,2012-09-29 08:00,2012-10-18 16:00,,2013-07-06 08:00,2013-07-25 16:00,,PT_Normal,,,,,zSSfAFPe3kOCcErFgS0YTQ,eVNoW7/dc06g4dvQUxnqWw,,,N,0,0,,,2012-01-23 18:15,2012-01-23 18:18,admin,admin
303,93845,1594,13064,1772,1,0,N,N,N,CP_Drtn,TT_Task,DT_FixedDUR2,RV_OK,TK_NotStart,A10160,Columns,,1920,0,56,0,0,0,56,0,0,0,,,,2013-07-27 08:00,2013-08-03 16:00,,2012-10-20 08:00,2012-10-27 16:00,2012-10-20 08:00,2012-10-27 16:00,2012-10-20 08:00,2012-10-27 16:00,,2013-07-27 08:00,2013-08-03 16:00,,PT_Normal,,,,,B4HEVPLUGk2SXXNH4bRsDw,bUzhulJhYE6qrXVvVRs2gQ,,,N,0,0,,,2012-01-23 18:15,2012-01-23 18:18,admin,admin
304,93846,1594,13064,1772,1,0,N,N,N,CP_Drtn,TT_Task,DT_FixedDUR2,RV_OK,TK_NotStart,A10170,Masonry under slab on grade,,1920,0,80,0,0,0,80,0,0,0,,,,2013-08-21 08:00,2013-09-01 16:00,,2012-11-14 08:00,2012-11-25 16:00,2012-11-14 08:00,2012-11-25 16:00,2012-11-14 08:00,2012-11-25 16:00,,2013-08-21 08:00,2013-09-01 16:00,,PT_Normal,,,,,pOZTtezIzUmesvF2iPk+Rw,8ouI/DIVT0Cnczfis9iijQ,,,N,0,0,,,2012-01-23 18:15,2012-01-23 18:18,admin,admin
305,93847,1594,13064,1772,1,0,N,N,N,CP_Drtn,TT_Task,DT_FixedDUR2,RV_OK,TK_NotStart,A10180,Footing insulation&backfilling,,1920,0,112,0,0,0,112,0,0,0,,,,2013-09-02 08:00,2013-09-17 16:00,,2012-11-26 08:00,2012-12-11 16:00,2012-11-26 08:00,2012-12-11 16:00,2012-11-26 08:00,2012-12-11 16:00,,2013-09-02 08:00,2013-09-17 16:00,,PT_Normal,,,,,WKbZPoqMaEG6atkFfuZGgA,xJ3oGGEJYUOygZRcOc28Mw,,,N,0,0,,,2012-01-23 18:15,2012-01-23 18:18,admin,admin
306,93848,1594,13064,1772,1,0,N,N,N,CP_Drtn,TT_Task,DT_FixedDUR2,RV_OK,TK_NotStart,A10190,Slab on grade,,1920,0,16,0,0,0,16,0,0,0,,,,2013-09-18 08:00,2013-09-19 16:00,,2012-12-12 08:00,2012-12-13 16:00,2012-12-12 08:00,2012-12-13 16:00,2012-12-12 08:00,2012-12-13 16:00,,2013-09-18 08:00,2013-09-19 16:00,,PT_Normal,,,,,igF7Edv7wEGss5V70Uemow,9ODYpNh1LkOgm/eZWrb+Ew,,,N,0,0,,,2012-01-23 18:15,2012-01-23 18:18,admin,admin
307,93849,1594,13064,1772,1,0,N,N,N,CP_Drtn,TT_Task,DT_FixedDUR2,RV_OK,TK_NotStart,A10230,Ground floor slab,,1920,0,120,0,0,0,120,0,0,0,,,,2013-08-04 08:00,2013-08-20 16:00,,2012-10-28 08:00,2012-11-13 16:00,2012-10-28 08:00,2012-11-13 16:00,2012-10-28 08:00,2012-11-13 16:00,,2013-08-04 08:00,2013-08-20 16:00,,PT_Normal,,,,,HWOqq5/Z0E2e3DyRtknKeg,,,,N,0,0,,,2012-01-23 18:15,2012-01-23 18:18,admin,admin
308,93850,1594,13066,1772,1,0,N,N,N,CP_Drtn,TT_Task,DT_FixedDUR2,RV_OK,TK_NotStart,A10240,HVAC WORKS,,1920,1920,480,0,0,0,480,0,0,0,,,,2013-10-22 08:00,2013-12-30 16:00,,2013-01-15 08:00,2013-03-25 16:00,2013-01-15 08:00,2013-03-25 16:00,2013-01-15 08:00,2013-03-25 16:00,,2013-10-22 08:00,2013-12-30 16:00,,PT_Normal,,,,,vYxtn3HcrEOs/mCkcw1THw,8srXV+klfkaKVIWsbKzvew,,,N,0,0,,,2012-01-23 18:17,2012-01-23 18:18,admin,admin
309,93851,1594,13067,1772,1,0,N,N,N,CP_Drtn,TT_Task,DT_FixedDUR2,RV_OK,TK_NotStart,A10250,Electrical works,,1920,1920,480,0,0,0,480,0,0,0,,,,2013-10-22 08:00,2013-12-30 16:00,,2013-01-15 08:00,2013-03-25 16:00,2013-01-15 08:00,2013-03-25 16:00,2013-01-15 08:00,2013-03-25 16:00,,2013-10-22 08:00,2013-12-30 16:00,,PT_Normal,,,,,rio7q7nkO0e4pwwZmVlbSQ,FiimWI0wUkSOj6heQDQGVw,,,N,0,0,,,2012-01-23 18:18,2012-01-23 18:18,admin,admin
310,93852,1594,13068,1772,1,0,N,N,N,CP_Drtn,TT_Task,DT_FixedDUR2,RV_OK,TK_NotStart,A10260,External fence,,48,48,4240,0,0,0,4240,0,0,0,,,,2012-04-22 08:00,2013-12-30 16:00,,2012-04-15 08:00,2013-12-23 16:00,2012-04-15 08:00,2013-12-23 16:00,2012-04-15 08:00,2013-12-23 16:00,,2012-04-22 08:00,2013-12-30 16:00,,PT_Normal,,,,,M7DVKGo3+kCphrYfvIBIrg,,,,N,0,0,,,2012-01-23 18:29,2012-01-23 18:30,admin,admin
