,task_id,proj_id,wbs_id,clndr_id,est_wt,phys_complete_pct,rev_fdbk_flag,lock_plan_flag,auto_compute_act_flag,complete_pct_type,task_type,duration_type,review_type,status_code,task_code,task_name,rsrc_id,total_float_hr_cnt,free_float_hr_cnt,remain_drtn_hr_cnt,act_work_qty,remain_work_qty,target_work_qty,target_drtn_hr_cnt,target_equip_qty,act_equip_qty,remain_equip_qty,cstr_date,act_start_date,act_end_date,late_start_date,late_end_date,expect_end_date,early_start_date,early_end_date,restart_date,reend_date,target_start_date,target_end_date,review_end_date,rem_late_start_date,rem_late_end_date,cstr_type,priority_type,suspend_date,resume_date,float_path,float_path_order,guid,tmpl_guid,cstr_date2,cstr_type2,driving_path_flag,act_this_per_work_qty,act_this_per_equip_qty,external_early_start_date,external_late_end_date,create_date,update_date,create_user,update_user
0,117734,3208,17763,794,1,0,N,N,N,CP_Drtn,TT_Task,DT_FixedDUR2,RV_OK,TK_NotStart,V-1-60,Backfilling under slab on grade,,5776,0,32,0,0,0,32,0,0,0,,,,2014-06-17 08:00,2014-06-20 17:00,,2012-06-25 08:00,2012-06-28 17:00,2012-06-25 08:00,2012-06-28 17:00,2012-06-25 08:00,2012-06-28 17:00,,2014-06-17 08:00,2014-06-20 17:00,,PT_Normal,,,,,vxfIs/uEo0eUljH8OI1mWA,P+laH7BehEKLWy0RRQUK/A,,,N,0,0,,,2012-04-18 10:06,2012-04-18 17:22,admin,admin
1,117735,3208,17762,794,1,0,N,N,N,CP_Drtn,TT_Task,DT_FixedDUR2,RV_OK,TK_NotStart,V-1-10,P.c footing,,5776,0,40,0,0,0,40,0,0,0,,,,2014-05-15 08:00,2014-05-19 17:00,,2012-05-23 08:00,2012-05-27 17:00,2012-05-23 08:00,2012-05-27 17:00,2012-05-23 08:00,2012-05-27 17:00,,2014-05-15 08:00,2014-05-19 17:00,,PT_Normal,,,,,EslaiURN2UC8O/cGYFhaEA,rWhBAZkh+UeQbamarZIS4w,,,N,0,0,,,2012-04-18 10:06,2012-04-18 17:22,admin,admin
2,117736,3208,17762,794,1,0,N,N,N,CP_Drtn,TT_Task,DT_FixedDUR2,RV_OK,TK_NotStart,V-1-20,R.c concrete foundations,,5776,0,96,0,0,0,96,0,0,0,,,,2014-05-20 08:00,2014-05-31 17:00,,2012-05-28 08:00,2012-06-08 17:00,2012-05-28 08:00,2012-06-08 17:00,2012-05-28 08:00,2012-06-08 17:00,,2014-05-20 08:00,2014-05-31 17:00,,PT_Normal,,,,,I1HJ+tEbiEa2m+wZsMVwzQ,fVuZKCCEqUqoIXD0vyQdjg,,,N,0,0,,,2012-04-18 10:06,2012-04-18 17:22,admin,admin
3,117737,3208,17764,794,1,0,N,N,N,CP_Drtn,TT_Task,DT_FixedDUR2,RV_OK,TK_NotStart,V-1-30,Ground floor columns,3926,5776,0,64,0,128,128,64,0,0,0,,,,2014-06-01 08:00,2014-06-08 17:00,,2012-06-09 08:00,2012-06-16 17:00,2012-06-09 08:00,2012-06-16 17:00,2012-06-09 08:00,2012-06-16 17:00,,2014-06-01 08:00,2014-06-08 17:00,,PT_Normal,,,,,8LrREFLuoUqNMxgGd2lXjA,5yj8BGn/C0W6NJuhsTVhXg,,,N,0,0,,,2012-04-18 10:06,2012-04-18 17:22,admin,admin
4,117738,3208,17764,794,1,0,N,N,N,CP_Drtn,TT_Task,DT_FixedDUR2,RV_OK,TK_NotStart,V-1-70,Ground floor slab&beams&staircase,3926,5776,0,120,0,240,240,120,0,0,0,,,,2014-06-21 08:00,2014-07-05 17:00,,2012-06-29 08:00,2012-07-13 17:00,2012-06-29 08:00,2012-07-13 17:00,2012-06-29 08:00,2012-07-13 17:00,,2014-06-21 08:00,2014-07-05 17:00,,PT_Normal,,,,,Mnxa52kcOk2vNkemj/80bw,K8QiAQZJ8E2G/KYlcddHdA,,,N,0,0,,,2012-04-18 10:06,2012-04-18 17:22,admin,admin
5,117739,3208,17764,794,1,0,N,N,N,CP_Drtn,TT_Task,DT_FixedDUR2,RV_OK,TK_NotStart,V-1-80,First floor columns,3926,5832,56,64,0,128,128,64,0,0,0,,,,2014-07-13 08:00,2014-07-20 17:00,,2012-07-14 08:00,2012-07-21 17:00,2012-07-14 08:00,2012-07-21 17:00,2012-07-14 08:00,2012-07-21 17:00,,2014-07-13 08:00,2014-07-20 17:00,,PT_Normal,,,,,YxVmYBkHAU+VKVvIFPRXbg,eGnUQOIpGkKxFd9hCQ2QWw,,,N,0,0,,,2012-04-18 10:06,2012-04-18 17:22,admin,admin
6,117740,3208,17764,794,1,0,N,N,N,CP_Drtn,TT_Task,DT_FixedDUR2,RV_OK,TK_NotStart,V-1-90,First floor slab&beams&staircase,3926,5776,0,120,0,240,240,120,0,0,0,,,,2014-07-21 08:00,2014-08-04 17:00,,2012-07-29 08:00,2012-08-12 17:00,2012-07-29 08:00,2012-08-12 17:00,2012-07-29 08:00,2012-08-12 17:00,,2014-07-21 08:00,2014-08-04 17:00,,PT_Normal,,,,,tRPWy7I4CkqC4IxttsgyWQ,qchE/fPDA0mMKwCLVYROIg,,,N,0,0,,,2012-04-18 10:06,2012-04-18 17:22,admin,admin
7,117741,3208,17764,794,1,0,N,N,N,CP_Drtn,TT_Task,DT_FixedDUR2,RV_OK,TK_NotStart,V-1-100,Roof columns,3926,6160,0,40,0,80,80,40,0,0,0,,,,2014-09-22 08:00,2014-09-26 17:00,,2012-08-13 08:00,2012-08-17 17:00,2012-08-13 08:00,2012-08-17 17:00,2012-08-13 08:00,2012-08-17 17:00,,2014-09-22 08:00,2014-09-26 17:00,,PT_Normal,,,,,wIXY+qRKJk2Nf92crcnKRw,+QYvubRQAkGs6mSahC7qWg,,,N,0,0,,,2012-04-18 10:06,2012-04-18 17:22,admin,admin
8,117742,3208,17764,794,1,0,N,N,N,CP_Drtn,TT_Task,DT_FixedDUR2,RV_OK,TK_NotStart,V-1-120,Roof slab,3926,6160,0,40,0,80,80,40,0,0,0,,,,2014-09-27 08:00,2014-10-01 17:00,,2012-08-18 08:00,2012-08-22 17:00,2012-08-18 08:00,2012-08-22 17:00,2012-08-18 08:00,2012-08-22 17:00,,2014-09-27 08:00,2014-10-01 17:00,,PT_Normal,,,,,bgzOQTdy/Ee+POlMyn26+Q,3WqknFkuD0eWsVgJp9+EuA,,,N,0,0,,,2012-04-18 10:06,2012-04-18 17:22,admin,admin
9,117743,3208,17765,794,1,0,N,N,N,CP_Drtn,TT_Task,DT_FixedDUR2,RV_OK,TK_NotStart,V-1-40,Masonry under slab on grade,3927,5776,0,32,0,32,32,32,0,0,0,,,,2014-06-09 08:00,2014-06-12 17:00,,2012-06-17 08:00,2012-06-20 17:00,2012-06-17 08:00,2012-06-20 17:00,2012-06-17 08:00,2012-06-20 17:00,,2014-06-09 08:00,2014-06-12 17:00,,PT_Normal,,,,,+/6dTavMykOPQLiupQsKsg,kdLCU35NK06AA/H0CJ4kcQ,,,N,0,0,,,2012-04-18 10:06,2012-04-18 17:22,admin,admin
10,117744,3208,17766,794,1,0,N,N,N,CP_Drtn,TT_Task,DT_FixedDUR2,RV_OK,TK_NotStart,V-1-50,Footings&masonry insulation,,5776,0,32,0,0,0,32,0,0,0,,,,2014-06-13 08:00,2014-06-16 17:00,,2012-06-21 08:00,2012-06-24 17:00,2012-06-21 08:00,2012-06-24 17:00,2012-06-21 08:00,2012-06-24 17:00,,2014-06-13 08:00,2014-06-16 17:00,,PT_Normal,,,,,+6BXy257y0aarqHXCEEWBA,EV8tQZqf6ESVKFIk0OiwsA,,,N,0,0,,,2012-04-18 10:06,2012-04-18 17:22,admin,admin
11,117745,3208,17765,794,1,0,N,N,N,CP_Drtn,TT_Task,DT_FixedDUR2,RV_OK,TK_NotStart,V-1-140,Masonry works,3927,5776,0,160,0,160,160,160,0,0,0,,,,2014-08-20 08:00,2014-09-08 17:00,,2012-08-28 08:00,2012-09-16 17:00,2012-08-28 08:00,2012-09-16 17:00,2012-08-28 08:00,2012-09-16 17:00,,2014-08-20 08:00,2014-09-08 17:00,,PT_Normal,,,,,PFJGWBEJoEG6kiQWLdtFDA,CJq6zTuHLkWrIYXM74TVbA,,,N,0,0,,,2012-04-18 10:06,2012-04-18 17:22,admin,admin
12,117746,3208,17767,794,1,0,N,N,N,CP_Drtn,TT_Task,DT_FixedDUR2,RV_OK,TK_NotStart,V-1-180,External plaster works,,5776,0,168,0,0,0,168,0,0,0,,,,2014-09-09 08:00,2014-09-29 17:00,,2012-09-17 08:00,2012-10-07 17:00,2012-09-17 08:00,2012-10-07 17:00,2012-09-17 08:00,2012-10-07 17:00,,2014-09-09 08:00,2014-09-29 17:00,,PT_Normal,,,,,Ib3npoQvdEykEuQfjcFg0A,vJvp6gwuTEGwkZOdmZmDww,,,N,0,0,,,2012-04-18 10:06,2012-04-18 17:22,admin,admin
13,117747,3208,17768,794,1,0,N,N,N,CP_Drtn,TT_Task,DT_FixedDUR2,RV_OK,TK_NotStart,V-1-200,Flooring works(garnite& marbles),,5776,55,80,0,0,0,80,0,0,0,,,,2014-09-30 08:00,2014-10-09 17:00,,2012-10-08 08:00,2012-10-17 17:00,2012-10-08 08:00,2012-10-17 17:00,2012-10-08 08:00,2012-10-17 17:00,,2014-09-30 08:00,2014-10-09 17:00,,PT_Normal,,,,,I9kABvTxdUWVATvltCzRmg,lYHio5sIrU65FimKnSL+MA,,,N,0,0,,,2012-04-18 10:06,2012-04-18 17:22,admin,admin
14,117748,3208,17769,794,1,0,N,N,N,CP_Drtn,TT_Task,DT_FixedDUR2,RV_OK,TK_NotStart,V-1-220,External painting,,5721,0,80,0,0,0,80,0,0,0,,,,2014-10-10 08:00,2014-10-19 17:00,,2012-10-24 16:00,2012-11-03 16:00,2012-10-24 16:00,2012-11-03 16:00,2012-10-24 16:00,2012-11-03 16:00,,2014-10-10 08:00,2014-10-19 17:00,,PT_Normal,,,,,i9wCcXUCtk6dljpt6uMA2Q,Bzy4KMKJRkKejLAEfUGmcA,,,N,0,0,,,2012-04-18 10:06,2012-04-18 17:22,admin,admin
15,117749,3208,17766,794,1,0,N,N,N,CP_Drtn,TT_Task,DT_FixedDUR2,RV_OK,TK_NotStart,V-1-160,Thermal insulation,,6160,0,56,0,0,0,56,0,0,0,,,,2014-10-14 08:00,2014-10-20 17:00,,2012-09-04 08:00,2012-09-10 17:00,2012-09-04 08:00,2012-09-10 17:00,2012-09-04 08:00,2012-09-10 17:00,,2014-10-14 08:00,2014-10-20 17:00,,PT_Normal,,,,,/gKnRj+6fkuOtqSu5HojQw,i4Llo7ZmyE2/VD2qHcehjQ,,,N,0,0,,,2012-04-18 10:06,2012-04-18 17:22,admin,admin
16,117750,3208,17766,794,1,0,N,N,N,CP_Drtn,TT_Task,DT_FixedDUR2,RV_OK,TK_NotStart,V-1-150,Water proofing insulation,,6160,0,56,0,0,0,56,0,0,0,,,,2014-10-07 08:00,2014-10-13 17:00,,2012-08-28 08:00,2012-09-03 17:00,2012-08-28 08:00,2012-09-03 17:00,2012-08-28 08:00,2012-09-03 17:00,,2014-10-07 08:00,2014-10-13 17:00,,PT_Normal,,,,,lqBMlLU7v0aUfZQ1nFaqnw,RXtnIQVT2km1J+qBz2SrGw,,,N,0,0,,,2012-04-18 10:06,2012-04-18 17:22,admin,admin
17,117751,3208,17770,794,1,0,N,N,N,CP_Drtn,TT_Task,DT_FixedDUR2,RV_OK,TK_NotStart,V-1-230,Doors & windows erection,,5729,5721,80,0,0,0,80,0,0,0,,,,2014-10-21 08:00,2014-10-30 17:00,,2012-11-03 16:00,2012-11-13 16:00,2012-11-03 16:00,2012-11-13 16:00,2012-11-03 16:00,2012-11-13 16:00,,2014-10-21 08:00,2014-10-30 17:00,,PT_Normal,,,,,sflqcuKsUUaTLL5nPXONhg,gWuwP0LZfkGTxvwjcqmJig,,,N,0,0,,,2012-04-18 10:06,2012-04-18 17:22,admin,admin
18,117752,3208,17771,794,1,0,N,N,N,CP_Drtn,TT_Task,DT_FixedDUR2,RV_OK,TK_NotStart,V-1-190,Mechanical & electrical works,,6112,6104,80,0,0,0,80,0,0,0,,,,2014-10-21 08:00,2014-10-30 17:00,,2012-09-17 08:00,2012-09-26 17:00,2012-09-17 08:00,2012-09-26 17:00,2012-09-17 08:00,2012-09-26 17:00,,2014-10-21 08:00,2014-10-30 17:00,,PT_Normal,,,,,OKR97cGB10+lG5OeiawuDA,Zztkg30/z0+sneGM0sNXYQ,,,N,0,0,,,2012-04-18 10:06,2012-04-18 17:22,admin,admin
19,117753,3208,17766,794,1,0,N,N,N,CP_Drtn,TT_Task,DT_FixedDUR2,RV_OK,TK_NotStart,V-1-130,Slopped concrete,,6160,0,40,0,0,0,40,0,0,0,,,,2014-10-02 08:00,2014-10-06 17:00,,2012-08-23 08:00,2012-08-27 17:00,2012-08-23 08:00,2012-08-27 17:00,2012-08-23 08:00,2012-08-27 17:00,,2014-10-02 08:00,2014-10-06 17:00,,PT_Normal,,,,,c8q1dlP9bUOsNUcHVVehJA,v7RYkWjI6EyC3oEf/ySU9A,,,N,0,0,,,2012-04-18 10:06,2012-04-18 17:22,admin,admin
20,117754,3208,17766,794,1,0,N,N,N,CP_Drtn,TT_Task,DT_FixedDUR2,RV_OK,TK_NotStart,V-1-170,Ceramic tiles,,6160,6152,80,0,0,0,80,0,0,0,,,,2014-10-21 08:00,2014-10-30 17:00,,2012-09-11 08:00,2012-09-20 17:00,2012-09-11 08:00,2012-09-20 17:00,2012-09-11 08:00,2012-09-20 17:00,,2014-10-21 08:00,2014-10-30 17:00,,PT_Normal,,,,,jysjLL9IC0uOQAoP/yWN9g,hqnubqZTckaJEFiWb5ejgg,,,N,0,0,,,2012-04-18 10:06,2012-04-18 17:22,admin,admin
21,117755,3208,17764,794,1,0,N,N,N,CP_Drtn,TT_Task,DT_FixedDUR2,RV_OK,TK_NotStart,V-1-110,Slab on grade(R.C&P.C),3926,5856,80,40,0,80,80,40,0,0,0,,,,2014-08-15 08:00,2014-08-19 17:00,,2012-08-13 08:00,2012-08-17 17:00,2012-08-13 08:00,2012-08-17 17:00,2012-08-13 08:00,2012-08-17 17:00,,2014-08-15 08:00,2014-08-19 17:00,,PT_Normal,,,,,YBrIMSJmMk6o8IU0I2Ioew,dEOM/i4yIkSiT98sBjOx3g,,,N,0,0,,,2012-04-18 10:06,2012-04-18 17:22,admin,admin
22,117756,3208,17774,3695,1,0,N,N,N,CP_Drtn,TT_Task,DT_FixedDUR2,RV_OK,TK_NotStart,V-2-10,Backfilling under slab on grade,,4696,0,32,0,0,0,32,0,0,0,,,,2014-05-27 08:00,2014-05-31 16:00,,2012-06-10 08:00,2012-06-13 16:00,2012-06-10 08:00,2012-06-13 16:00,2012-06-10 08:00,2012-06-13 16:00,,2014-05-27 08:00,2014-05-31 16:00,,PT_Normal,,,,,hOHj99TfPE6cLNtCkx0Lrw,ShDE/fIDOEOkyKnTryHZaQ,,,N,0,0,,,2012-04-18 10:06,2012-04-18 17:22,admin,admin
23,117757,3208,17773,3695,1,0,N,N,N,CP_Drtn,TT_Task,DT_FixedDUR2,RV_OK,TK_NotStart,V-2-20,P.c footing,,4696,0,40,0,0,0,40,0,0,0,,,,2014-04-19 08:00,2014-04-23 16:00,,2012-05-02 08:00,2012-05-07 16:00,2012-05-02 08:00,2012-05-07 16:00,2012-05-02 08:00,2012-05-07 16:00,,2014-04-19 08:00,2014-04-23 16:00,,PT_Normal,,,,,79dFmGwFWEy+ALSjwqDzGw,JGztBaBEFUi4ejOX00RDDQ,,,N,0,0,,,2012-04-18 10:06,2012-04-18 17:22,admin,admin
24,117758,3208,17773,3695,1,0,N,N,N,CP_Drtn,TT_Task,DT_FixedDUR2,RV_OK,TK_NotStart,V-2-30,R.c concrete foundations,,4696,0,96,0,0,0,96,0,0,0,,,,2014-04-24 08:00,2014-05-07 16:00,,2012-05-08 08:00,2012-05-21 16:00,2012-05-08 08:00,2012-05-21 16:00,2012-05-08 08:00,2012-05-21 16:00,,2014-04-24 08:00,2014-05-07 16:00,,PT_Normal,,,,,NxRcUXGhwku7GiCqPt/9Lg,uoWvhbWPi02TAt/0tFC18A,,,N,0,0,,,2012-04-18 10:06,2012-04-18 17:22,admin,admin
25,117759,3208,17775,3695,1,0,N,N,N,CP_Drtn,TT_Task,DT_FixedDUR2,RV_OK,TK_NotStart,V-2-40,Ground floor columns,,4696,0,64,0,0,0,64,0,0,0,,,,2014-05-08 08:00,2014-05-17 16:00,,2012-05-22 08:00,2012-05-30 16:00,2012-05-22 08:00,2012-05-30 16:00,2012-05-22 08:00,2012-05-30 16:00,,2014-05-08 08:00,2014-05-17 16:00,,PT_Normal,,,,,bqKNJSMeYUWFOXpkOSyAbw,NTmP0MKWP0SIgEOoeou5uw,,,N,0,0,,,2012-04-18 10:06,2012-04-18 17:22,admin,admin
26,117760,3208,17775,3695,1,0,N,N,N,CP_Drtn,TT_Task,DT_FixedDUR2,RV_OK,TK_NotStart,V-2-50,Ground floor slab&beams&staircase,,4696,0,120,0,0,0,120,0,0,0,,,,2014-06-01 08:00,2014-06-17 16:00,,2012-06-14 08:00,2012-07-01 16:00,2012-06-14 08:00,2012-07-01 16:00,2012-06-14 08:00,2012-07-01 16:00,,2014-06-01 08:00,2014-06-17 16:00,,PT_Normal,,,,,0/GPWmX49E+FnEVyUSlmLw,O7Ur98dYnUmDFrS+UBA/Nw,,,N,0,0,,,2012-04-18 10:06,2012-04-18 17:22,admin,admin
27,117761,3208,17775,3695,1,0,N,N,N,CP_Drtn,TT_Task,DT_FixedDUR2,RV_OK,TK_NotStart,V-2-60,First floor columns,,4752,56,64,0,0,0,64,0,0,0,,,,2014-06-26 08:00,2014-07-05 16:00,,2012-07-02 08:00,2012-07-10 16:00,2012-07-02 08:00,2012-07-10 16:00,2012-07-02 08:00,2012-07-10 16:00,,2014-06-26 08:00,2014-07-05 16:00,,PT_Normal,,,,,2+7pRLnaR0OV7/rCHU71dg,j5MCnIx0kEK5irgSwVpEsg,,,N,0,0,,,2012-04-18 10:06,2012-04-18 17:22,admin,admin
28,117762,3208,17775,3695,1,0,N,N,N,CP_Drtn,TT_Task,DT_FixedDUR2,RV_OK,TK_NotStart,V-2-70,First floor slab&beams&staircase,,4696,0,120,0,0,0,120,0,0,0,,,,2014-07-06 08:00,2014-07-22 16:00,,2012-07-19 08:00,2012-08-05 16:00,2012-07-19 08:00,2012-08-05 16:00,2012-07-19 08:00,2012-08-05 16:00,,2014-07-06 08:00,2014-07-22 16:00,,PT_Normal,,,,,JfcOb2sZrUebkYNTQM/Ajg,PUzomu8sN0OBErpq7iFRtg,,,N,0,0,,,2012-04-18 10:06,2012-04-18 17:22,admin,admin
29,117763,3208,17775,3695,1,0,N,N,N,CP_Drtn,TT_Task,DT_FixedDUR2,RV_OK,TK_NotStart,V-2-80,Roof columns,,5072,0,40,0,0,0,40,0,0,0,,,,2014-09-16 08:00,2014-09-21 16:00,,2012-08-06 08:00,2012-08-11 16:00,2012-08-06 08:00,2012-08-11 16:00,2012-08-06 08:00,2012-08-11 16:00,,2014-09-16 08:00,2014-09-21 16:00,,PT_Normal,,,,,ZPi3QsfyiUiqA+NhtWQ9fQ,VS0+PfTvKkSNzig6bkLsoQ,,,N,0,0,,,2012-04-18 10:06,2012-04-18 17:22,admin,admin
30,117764,3208,17775,3695,1,0,N,N,N,CP_Drtn,TT_Task,DT_FixedDUR2,RV_OK,TK_NotStart,V-2-90,Roof slab,,5072,0,40,0,0,0,40,0,0,0,,,,2014-09-22 08:00,2014-09-27 16:00,,2012-08-12 08:00,2012-08-16 16:00,2012-08-12 08:00,2012-08-16 16:00,2012-08-12 08:00,2012-08-16 16:00,,2014-09-22 08:00,2014-09-27 16:00,,PT_Normal,,,,,1u0LeiuFikKFqqKL1DGUCw,jmcikE5MZ0i7k0XYKSP8ZQ,,,N,0,0,,,2012-04-18 10:06,2012-04-18 17:22,admin,admin
31,117765,3208,17776,3695,1,0,N,N,N,CP_Drtn,TT_Task,DT_FixedDUR2,RV_OK,TK_NotStart,V-2-100,Masonry under slab on grade,,4696,0,32,0,0,0,32,0,0,0,,,,2014-05-18 08:00,2014-05-21 16:00,,2012-05-31 08:00,2012-06-04 16:00,2012-05-31 08:00,2012-06-04 16:00,2012-05-31 08:00,2012-06-04 16:00,,2014-05-18 08:00,2014-05-21 16:00,,PT_Normal,,,,,UW5ZMfhTRku22ITduwNYRA,C1FJZpxxSUCW8n44CvoAZQ,,,N,0,0,,,2012-04-18 10:06,2012-04-18 17:22,admin,admin
32,117766,3208,17777,3695,1,0,N,N,N,CP_Drtn,TT_Task,DT_FixedDUR2,RV_OK,TK_NotStart,V-2-110,Footings&masonry insulation,,4696,0,32,0,0,0,32,0,0,0,,,,2014-05-22 08:00,2014-05-26 16:00,,2012-06-05 08:00,2012-06-09 16:00,2012-06-05 08:00,2012-06-09 16:00,2012-06-05 08:00,2012-06-09 16:00,,2014-05-22 08:00,2014-05-26 16:00,,PT_Normal,,,,,Ayc4m58v1UKQatP7r3Uz/Q,9ovx4tBIaEiwakPcsvK4xw,,,N,0,0,,,2012-04-18 10:06,2012-04-18 17:22,admin,admin
33,117767,3208,17776,3695,1,0,N,N,N,CP_Drtn,TT_Task,DT_FixedDUR2,RV_OK,TK_NotStart,V-2-120,Masonry works,,4696,0,160,0,0,0,160,0,0,0,,,,2014-08-10 08:00,2014-09-01 16:00,,2012-08-30 08:00,2012-09-22 16:00,2012-08-30 08:00,2012-09-22 16:00,2012-08-30 08:00,2012-09-22 16:00,,2014-08-10 08:00,2014-09-01 16:00,,PT_Normal,,,,,03qZ97gfdkG6yBsNfiWK3g,zBh3B56pVUiei6ZWEsMWGg,,,N,0,0,,,2012-04-18 10:06,2012-04-18 17:22,admin,admin
34,117768,3208,17778,3695,1,0,N,N,N,CP_Drtn,TT_Task,DT_FixedDUR2,RV_OK,TK_NotStart,V-2-130,External plaster works,,4696,0,168,0,0,0,168,0,0,0,,,,2014-09-02 08:00,2014-09-25 16:00,,2012-09-23 08:00,2012-10-16 16:00,2012-09-23 08:00,2012-10-16 16:00,2012-09-23 08:00,2012-10-16 16:00,,2014-09-02 08:00,2014-09-25 16:00,,PT_Normal,,,,,jzNQpEsQW0mDdi4Wzyciag,mgU4YxMbFU+flchtIhUZww,,,N,0,0,,,2012-04-18 10:06,2012-04-18 17:22,admin,admin
35,117769,3208,17779,3695,1,0,N,N,N,CP_Drtn,TT_Task,DT_FixedDUR2,RV_OK,TK_NotStart,V-2-140,Flooring works,,4696,0,80,0,0,0,80,0,0,0,,,,2014-09-27 08:00,2014-10-07 16:00,,2012-10-17 08:00,2012-11-05 16:00,2012-10-17 08:00,2012-11-05 16:00,2012-10-17 08:00,2012-11-05 16:00,,2014-09-27 08:00,2014-10-07 16:00,,PT_Normal,,,,,tPhK7mOWW0q0e2QGRCbtiw,Z7+C8FXRDE64O+3CJFZmXg,,,N,0,0,,,2012-04-18 10:06,2012-04-18 17:22,admin,admin
36,117770,3208,17780,3695,1,0,N,N,N,CP_Drtn,TT_Task,DT_FixedDUR2,RV_OK,TK_NotStart,V-2-150,External painting,,4696,0,80,0,0,0,80,0,0,0,,,,2014-10-08 08:00,2014-10-19 16:00,,2012-11-06 08:00,2012-11-17 16:00,2012-11-06 08:00,2012-11-17 16:00,2012-11-06 08:00,2012-11-17 16:00,,2014-10-08 08:00,2014-10-19 16:00,,PT_Normal,,,,,Ek/oxXwW30uAneiSEGc+sQ,SsJLss852EuhBJz9zxLIDA,,,N,0,0,,,2012-04-18 10:06,2012-04-18 17:22,admin,admin
37,117771,3208,17781,3695,1,0,N,N,N,CP_Drtn,TT_Task,DT_FixedDUR2,RV_OK,TK_NotStart,V-2-160,Doors & windows erection,,4696,4688,80,0,0,0,80,0,0,0,,,,2014-10-20 08:00,2014-10-30 16:00,,2012-11-18 08:00,2012-11-28 16:00,2012-11-18 08:00,2012-11-28 16:00,2012-11-18 08:00,2012-11-28 16:00,,2014-10-20 08:00,2014-10-30 16:00,,PT_Normal,,,,,iGJFHOHZBU+vsO/arXNDcA,hOvIiFneBUuGDAoXz7DpDg,,,N,0,0,,,2012-04-18 10:06,2012-04-18 17:22,admin,admin
38,117772,3208,17782,3695,1,0,N,N,N,CP_Drtn,TT_Task,DT_FixedDUR2,RV_OK,TK_NotStart,V-2-170,Mechanical & electrical works,,5024,5016,80,0,0,0,80,0,0,0,,,,2014-10-20 08:00,2014-10-30 16:00,,2012-09-23 08:00,2012-10-03 16:00,2012-09-23 08:00,2012-10-03 16:00,2012-09-23 08:00,2012-10-03 16:00,,2014-10-20 08:00,2014-10-30 16:00,,PT_Normal,,,,,j0LQJPRYbkKJ0zl9V62j6g,ntgfkJ9PiUmK7uEFGihCiA,,,N,0,0,,,2012-04-18 10:06,2012-04-18 17:22,admin,admin
39,117773,3208,17777,3695,1,0,N,N,N,CP_Drtn,TT_Task,DT_FixedDUR2,RV_OK,TK_NotStart,V-2-180,Thermal insulation,,5072,0,56,0,0,0,56,0,0,0,,,,2014-10-12 08:00,2014-10-19 16:00,,2012-09-08 08:00,2012-09-15 16:00,2012-09-08 08:00,2012-09-15 16:00,2012-09-08 08:00,2012-09-15 16:00,,2014-10-12 08:00,2014-10-19 16:00,,PT_Normal,,,,,aLeY27Mu702lJ9bxynulMA,IHaGQG3HA0+vvIC/LTcSrQ,,,N,0,0,,,2012-04-18 10:06,2012-04-18 17:22,admin,admin
40,117774,3208,17777,3695,1,0,N,N,N,CP_Drtn,TT_Task,DT_FixedDUR2,RV_OK,TK_NotStart,V-2-190,Water proofing insulation,,5072,0,56,0,0,0,56,0,0,0,,,,2014-10-04 08:00,2014-10-11 16:00,,2012-08-30 08:00,2012-09-06 16:00,2012-08-30 08:00,2012-09-06 16:00,2012-08-30 08:00,2012-09-06 16:00,,2014-10-04 08:00,2014-10-11 16:00,,PT_Normal,,,,,0abYMOfyUkqYgbCOB2EKcw,i/z+RVkE0USyxUt2OUdAYA,,,N,0,0,,,2012-04-18 10:06,2012-04-18 17:22,admin,admin
41,117775,3208,17777,3695,1,0,N,N,N,CP_Drtn,TT_Task,DT_FixedDUR2,RV_OK,TK_NotStart,V-2-200,Slopped concrete,,5072,0,40,0,0,0,40,0,0,0,,,,2014-09-28 08:00,2014-10-02 16:00,,2012-08-25 08:00,2012-08-29 16:00,2012-08-25 08:00,2012-08-29 16:00,2012-08-25 08:00,2012-08-29 16:00,,2014-09-28 08:00,2014-10-02 16:00,,PT_Normal,,,,,ZADSR+KoGU6dyY6desLs/Q,KRz+mjgGtk2KZ4mfpVP3bw,,,N,0,0,,,2012-04-18 10:06,2012-04-18 17:22,admin,admin
42,117776,3208,17777,3695,1,0,N,N,N,CP_Drtn,TT_Task,DT_FixedDUR2,RV_OK,TK_NotStart,V-2-210,Cement tiles,,5072,5064,80,0,0,0,80,0,0,0,,,,2014-10-20 08:00,2014-10-30 16:00,,2012-09-16 08:00,2012-09-26 16:00,2012-09-16 08:00,2012-09-26 16:00,2012-09-16 08:00,2012-09-26 16:00,,2014-10-20 08:00,2014-10-30 16:00,,PT_Normal,,,,,wCLvQAc6f0uvHJgk57vOTw,CoYQ5VkebECNrUFmmxKONQ,,,N,0,0,,,2012-04-18 10:06,2012-04-18 17:22,admin,admin
43,117777,3208,17775,3695,1,0,N,N,N,CP_Drtn,TT_Task,DT_FixedDUR2,RV_OK,TK_NotStart,V-2-220,Slab on grade(R.C&P.C),,4776,80,40,0,0,0,40,0,0,0,,,,2014-08-04 08:00,2014-08-09 16:00,,2012-08-06 08:00,2012-08-11 16:00,2012-08-06 08:00,2012-08-11 16:00,2012-08-06 08:00,2012-08-11 16:00,,2014-08-04 08:00,2014-08-09 16:00,,PT_Normal,,,,,8tns5x5rvkaIINmtiLn7lA,vMWm8BD9jUOtj+hq3wgSig,,,N,0,0,,,2012-04-18 10:06,2012-04-18 17:22,admin,admin
44,117778,3208,17784,794,1,0,N,N,N,CP_Drtn,TT_Task,DT_FixedDUR2,RV_OK,TK_NotStart,A1200,Mobilization,,7,0,168,0,0,0,168,0,0,0,,,,2012-05-02 16:00,2012-05-23 16:00,,2012-05-02 08:00,2012-05-22 17:00,2012-05-02 08:00,2012-05-22 17:00,2012-05-02 08:00,2012-05-22 17:00,,2012-05-02 16:00,2012-05-23 16:00,,PT_Normal,,,,,4Y16IEFGcU2tQfD+ACmspg,9g1sE2VB1U6pIuVC6r00HQ,,,Y,0,0,,,2012-04-18 10:07,2012-04-18 17:22,admin,admin
45,117779,3208,17784,794,1,0,N,N,N,CP_Drtn,TT_Task,DT_FixedDUR2,RV_OK,TK_NotStart,A1210,Demobilization,,7271,7264,24,0,0,0,24,0,0,0,,,,2014-10-27 16:00,2014-10-30 16:00,,2012-05-02 08:00,2012-05-04 17:00,2012-05-02 08:00,2012-05-04 17:00,2012-05-02 08:00,2012-05-04 17:00,,2014-10-27 16:00,2014-10-30 16:00,,PT_Normal,,,,,rUyxr16nxkSTvXtjynk7Vg,6UtKfu3ZSky5fTxS8brGMA,,,N,0,0,,,2012-04-18 10:07,2012-04-18 17:22,admin,admin
46,117780,3208,17770,1142,1,0,N,N,N,CP_Drtn,TT_Task,DT_FixedDUR2,RV_OK,TK_NotStart,V-1-240,Wood cladding,,4904,4896,80,0,0,0,80,0,0,0,,,,2014-10-20 08:00,2014-10-30 16:00,,2012-11-04 08:00,2012-11-14 16:00,2012-11-04 08:00,2012-11-14 16:00,2012-11-04 08:00,2012-11-14 16:00,,2014-10-20 08:00,2014-10-30 16:00,,PT_Normal,,,,,8rmXlcS3E0OBruE9YYuedA,,,,N,0,0,,,2012-04-18 10:11,2012-04-18 17:22,admin,admin
47,117781,3208,17783,1142,0,0,N,N,N,CP_Drtn,TT_Mile,DT_FixedDrtn,RV_OK,TK_NotStart,A1230,Commencement date,,6256,6248,0,0,0,0,0,0,0,0,,,,2014-10-30 16:00,2014-10-30 16:00,,2012-05-02 08:00,2012-05-02 08:00,2012-05-02 08:00,2012-05-02 08:00,2012-05-02 08:00,2012-05-02 08:00,,2014-10-30 16:00,2014-10-30 16:00,,PT_Normal,,,,,LvxZ7hNckUyDl6T7B1JjwQ,,,,N,0,0,,,2012-04-18 10:13,2012-04-19 10:29,admin,admin
48,117782,3208,17783,1142,0,0,N,N,N,CP_Drtn,TT_FinMile,DT_FixedDrtn,RV_OK,TK_NotStart,A1240,Project handing over,,8,0,0,0,0,0,0,0,0,0,,,,2014-10-30 16:00,2014-10-30 16:00,,2014-10-30 08:00,2014-10-30 08:00,2014-10-30 08:00,2014-10-30 08:00,2014-10-30 08:00,2014-10-30 08:00,,2014-10-30 16:00,2014-10-30 16:00,,PT_Normal,,,,,mIPn9v1GxkuuKBdOffbqRQ,,,,Y,0,0,,,2012-04-18 10:13,2012-04-19 10:29,admin,admin
49,117783,3208,17783,1142,1,0,N,N,N,CP_Drtn,TT_WBS,DT_FixedDrtn,RV_OK,TK_NotStart,A1250,Site handing over,,8,0,6248,0,0,0,6248,0,0,0,,,,2014-10-30 16:00,2014-10-30 16:00,,2012-05-02 08:00,2014-10-30 08:00,2012-05-02 08:00,2014-10-30 08:00,2012-05-02 08:00,2014-10-30 08:00,,2014-10-30 16:00,2014-10-30 16:00,,PT_Normal,,,,,dlsBKs+ZQUG3SmNU8vZCOQ,,,,Y,0,0,,,2012-04-18 10:13,2012-04-19 11:14,admin,admin
50,117784,3208,17783,1142,0,0,N,N,N,CP_Drtn,TT_Mile,DT_FixedDrtn,RV_OK,TK_NotStart,A1260,Recieve advanced payments,,6256,6248,0,0,0,0,0,0,0,0,,,,2014-10-30 16:00,2014-10-30 16:00,,2012-05-02 08:00,2012-05-02 08:00,2012-05-02 08:00,2012-05-02 08:00,2012-05-02 08:00,2012-05-02 08:00,,2014-10-30 16:00,2014-10-30 16:00,,PT_Normal,,,,,N+zXGu6zxk65oh+3I+8DEQ,,,,N,0,0,,,2012-04-18 10:13,2012-04-19 11:14,admin,admin
51,117785,3208,17783,1142,0,0,N,N,N,CP_Drtn,TT_Mile,DT_FixedDrtn,RV_OK,TK_NotStart,A1270,Contract signature,,6256,6248,0,0,0,0,0,0,0,0,,,,2014-10-30 16:00,2014-10-30 16:00,,2012-05-02 08:00,2012-05-02 08:00,2012-05-02 08:00,2012-05-02 08:00,2012-05-02 08:00,2012-05-02 08:00,,2014-10-30 16:00,2014-10-30 16:00,,PT_Normal,,,,,/eDY9FkTDU622aeGqocYrw,,,,N,0,0,,,2012-04-18 10:13,2012-04-19 11:15,admin,admin
52,117786,3208,17768,1142,1,0,N,N,N,CP_Drtn,TT_Task,DT_FixedDUR2,RV_OK,TK_NotStart,V-1-210,Stone cladding,,4904,0,56,0,0,0,56,0,0,0,,,,2014-10-02 08:00,2014-10-09 16:00,,2012-10-17 08:00,2012-10-24 16:00,2012-10-17 08:00,2012-10-24 16:00,2012-10-17 08:00,2012-10-24 16:00,,2014-10-02 08:00,2014-10-09 16:00,,PT_Normal,,,,,7L/ecMNhZ0u0eq7U4H2zKw,,,,N,0,0,,,2012-04-18 10:14,2012-04-18 17:22,admin,admin
53,117787,3208,17770,1142,1,0,N,N,N,CP_Drtn,TT_Task,DT_FixedDUR2,RV_OK,TK_NotStart,V-1-250,Hand rails&louvers,,4944,4936,40,0,0,0,40,0,0,0,,,,2014-10-26 08:00,2014-10-30 16:00,,2012-11-04 08:00,2012-11-08 16:00,2012-11-04 08:00,2012-11-08 16:00,2012-11-04 08:00,2012-11-08 16:00,,2014-10-26 08:00,2014-10-30 16:00,,PT_Normal,,,,,T5MY0Eew9UKQnI9gvCoLOA,,,,N,0,0,,,2012-04-18 10:20,2012-04-18 17:22,admin,admin
54,117790,3208,17787,794,1,0,N,N,N,CP_Drtn,TT_Task,DT_FixedDUR2,RV_OK,TK_NotStart,A1290,Excavation&Replacement works,,2440,0,4800,0,0,0,4800,0,0,0,,,,2013-03-10 08:00,2014-10-30 17:00,,2012-05-09 08:00,2013-12-29 17:00,2012-05-09 08:00,2013-12-29 17:00,2012-05-09 08:00,2013-12-29 17:00,,2013-03-10 08:00,2014-10-30 17:00,,PT_Normal,,,,,2LpaplHIzk+V8DorjpZnrg,,,,N,0,0,,,2012-04-18 11:35,2012-04-18 17:22,admin,admin
55,119973,3208,17787,794,1,0,N,N,N,CP_Drtn,TT_Task,DT_FixedDUR2,RV_OK,TK_NotStart,A1300,Backfilling arround retaining wall,,5776,5768,1520,0,0,0,1520,0,0,0,,,,2014-04-24 08:00,2014-10-30 17:00,,2012-05-02 08:00,2012-11-07 17:00,2012-05-02 08:00,2012-11-07 17:00,2012-05-02 08:00,2012-11-07 17:00,,2014-04-24 08:00,2014-10-30 17:00,,PT_Normal,,,,,D8GXk2qalUOJDUruMaMWDA,,,,N,0,0,,,2012-04-18 16:42,2012-04-19 10:29,admin,admin
56,119974,3208,17787,794,1,0,N,N,N,CP_Drtn,TT_Task,DT_FixedDUR2,RV_OK,TK_NotStart,A1310,Retaining walls for internal fences,,5776,5768,1520,0,0,0,1520,0,0,0,,,,2014-04-24 08:00,2014-10-30 17:00,,2012-05-02 08:00,2012-11-07 17:00,2012-05-02 08:00,2012-11-07 17:00,2012-05-02 08:00,2012-11-07 17:00,,2014-04-24 08:00,2014-10-30 17:00,,PT_Normal,,,,,5d+/Y3ktpUOtLA6BuVVVUw,,,,N,0,0,,,2012-04-18 16:45,2012-04-19 10:29,admin,admin
57,119975,3208,17791,794,1,0,N,N,N,CP_Drtn,TT_Task,DT_FixedDUR2,RV_OK,TK_NotStart,A1320,Gate - 1,,48,40,1160,0,0,0,1160,0,0,0,,,,2014-06-08 08:00,2014-10-30 17:00,,2014-06-02 08:00,2014-10-24 17:00,2014-06-02 08:00,2014-10-24 17:00,2014-06-02 08:00,2014-10-24 17:00,,2014-06-08 08:00,2014-10-30 17:00,,PT_Normal,,,,,nuaeugR7NES6QN9RBcSCLg,,,,N,0,0,,,2012-04-18 17:08,2012-04-18 17:22,admin,admin
58,119976,3208,17791,794,1,0,N,N,N,CP_Drtn,TT_Task,DT_FixedDUR2,RV_OK,TK_NotStart,A1330,Gate - 2,,48,40,1160,0,0,0,1160,0,0,0,,,,2014-06-08 08:00,2014-10-30 17:00,,2014-06-02 08:00,2014-10-24 17:00,2014-06-02 08:00,2014-10-24 17:00,2014-06-02 08:00,2014-10-24 17:00,,2014-06-08 08:00,2014-10-30 17:00,,PT_Normal,,,,,3MWXv6akFU2An4M0dci/vA,,,,N,0,0,,,2012-04-18 17:08,2012-04-18 17:22,admin,admin
59,119977,3208,17792,794,1,0,N,N,N,CP_Drtn,TT_Task,DT_FixedDUR2,RV_OK,TK_NotStart,A1340,Excavation,,8,0,960,0,0,0,960,0,0,0,,,,2014-04-24 08:00,2014-08-21 17:00,,2014-04-23 08:00,2014-08-20 17:00,2014-04-23 08:00,2014-08-20 17:00,2014-04-23 08:00,2014-08-20 17:00,,2014-04-24 08:00,2014-08-21 17:00,,PT_Normal,,,,,2n6/rzqYPUOrCCRGkFXOhQ,,,,N,0,0,,,2012-04-19 09:52,2012-04-19 09:52,admin,admin
60,119978,3208,17792,794,1,0,N,N,N,CP_Drtn,TT_Task,DT_FixedDUR2,RV_OK,TK_NotStart,A1350,P.C & R.C Footings,,8,0,960,0,0,0,960,0,0,0,,,,2014-05-04 08:00,2014-08-31 17:00,,2014-05-03 08:00,2014-08-30 17:00,2014-05-03 08:00,2014-08-30 17:00,2014-05-03 08:00,2014-08-30 17:00,,2014-05-04 08:00,2014-08-31 17:00,,PT_Normal,,,,,FfHjwz4qWkK9+vLG0VLUtQ,,,,N,0,0,,,2012-04-19 09:52,2012-04-19 09:52,admin,admin
61,119979,3208,17792,794,1,0,N,N,N,CP_Drtn,TT_Task,DT_FixedDUR2,RV_OK,TK_NotStart,A1360,Coulmns & retaining walls,,8,0,960,0,0,0,960,0,0,0,,,,2014-05-14 08:00,2014-09-10 17:00,,2014-05-13 08:00,2014-09-09 17:00,2014-05-13 08:00,2014-09-09 17:00,2014-05-13 08:00,2014-09-09 17:00,,2014-05-14 08:00,2014-09-10 17:00,,PT_Normal,,,,,en6XLZ4GzE6Vyy7oqQkf3w,,,,N,0,0,,,2012-04-19 09:52,2012-04-19 09:55,admin,admin
62,119980,3208,17792,794,1,0,N,N,N,CP_Drtn,TT_Task,DT_FixedDUR2,RV_OK,TK_NotStart,A1370,Bituminous Insulation,,8,0,960,0,0,0,960,0,0,0,,,,2014-05-24 08:00,2014-09-20 17:00,,2014-05-23 08:00,2014-09-19 17:00,2014-05-23 08:00,2014-09-19 17:00,2014-05-23 08:00,2014-09-19 17:00,,2014-05-24 08:00,2014-09-20 17:00,,PT_Normal,,,,,nGZWuwF6PUaRFf+yDq/l9g,,,,N,0,0,,,2012-04-19 09:52,2012-04-19 09:53,admin,admin
63,119981,3208,17792,794,1,0,N,N,N,CP_Drtn,TT_Task,DT_FixedDUR2,RV_OK,TK_NotStart,A1380,Masonry works,,8,0,960,0,0,0,960,0,0,0,,,,2014-06-03 08:00,2014-09-30 17:00,,2014-06-02 08:00,2014-09-29 17:00,2014-06-02 08:00,2014-09-29 17:00,2014-06-02 08:00,2014-09-29 17:00,,2014-06-03 08:00,2014-09-30 17:00,,PT_Normal,,,,,Cf2P+jiXt0u0Sp3zDGE+rQ,,,,N,0,0,,,2012-04-19 09:52,2012-04-19 09:55,admin,admin
64,119982,3208,17792,794,1,0,N,N,N,CP_Drtn,TT_Task,DT_FixedDUR2,RV_OK,TK_NotStart,A1390,External plaster,,8,0,960,0,0,0,960,0,0,0,,,,2014-06-13 08:00,2014-10-10 17:00,,2014-06-12 08:00,2014-10-09 17:00,2014-06-12 08:00,2014-10-09 17:00,2014-06-12 08:00,2014-10-09 17:00,,2014-06-13 08:00,2014-10-10 17:00,,PT_Normal,,,,,8dmJAU28402qUPZlYY5TXw,,,,N,0,0,,,2012-04-19 09:52,2012-04-19 09:55,admin,admin
65,119983,3208,17792,794,1,0,N,N,N,CP_Drtn,TT_Task,DT_FixedDUR2,RV_OK,TK_NotStart,A1400,Stone cladding,,8,0,960,0,0,0,960,0,0,0,,,,2014-06-23 08:00,2014-10-20 17:00,,2014-06-22 08:00,2014-10-19 17:00,2014-06-22 08:00,2014-10-19 17:00,2014-06-22 08:00,2014-10-19 17:00,,2014-06-23 08:00,2014-10-20 17:00,,PT_Normal,,,,,d+0GfqD9Dk+XdVsnqmzYIw,,,,N,0,0,,,2012-04-19 09:52,2012-04-19 09:55,admin,admin
66,119984,3208,17792,794,1,0,N,N,N,CP_Drtn,TT_Task,DT_FixedDUR2,RV_OK,TK_NotStart,A1410,Painting,,8,0,960,0,0,0,960,0,0,0,,,,2014-07-03 08:00,2014-10-30 17:00,,2014-07-02 08:00,2014-10-29 17:00,2014-07-02 08:00,2014-10-29 17:00,2014-07-02 08:00,2014-10-29 17:00,,2014-07-03 08:00,2014-10-30 17:00,,PT_Normal,,,,,r+xwo1nyokSgW/r0gKzxCg,,,,N,0,0,,,2012-04-19 09:55,2012-04-19 09:56,admin,admin
67,119985,3208,17788,794,1,0,N,N,N,CP_Drtn,TT_Task,DT_FixedDUR2,RV_OK,TK_NotStart,A1420,landscape works,,7,0,4720,0,0,0,4720,0,0,0,,,,2013-03-19 16:00,2014-10-30 16:00,,2013-03-19 08:00,2014-10-29 17:00,2013-03-19 08:00,2014-10-29 17:00,2013-03-19 08:00,2014-10-29 17:00,,2013-03-19 16:00,2014-10-30 16:00,,PT_Normal,,,,,VIcqneKf+0aH7Tg7smWMGw,,,,Y,0,0,,,2012-04-19 11:11,2012-04-19 11:13,admin,admin
68,119986,3208,17789,794,1,0,N,N,N,CP_Drtn,TT_Task,DT_FixedDUR2,RV_OK,TK_NotStart,A1430,Water supply networks,,2648,2640,4000,0,0,0,4000,0,0,0,,,,2013-06-18 08:00,2014-10-30 17:00,,2012-07-22 08:00,2013-12-03 17:00,2012-07-22 08:00,2013-12-03 17:00,2012-07-22 08:00,2013-12-03 17:00,,2013-06-18 08:00,2014-10-30 17:00,,PT_Normal,,,,,kieaAZ+bbkW1hWrEQ4HOPg,,,,N,0,0,,,2012-04-19 11:20,2012-04-19 11:21,admin,admin
69,119987,3208,17789,794,1,0,N,N,N,CP_Drtn,TT_Task,DT_FixedDUR2,RV_OK,TK_NotStart,A1440,Sewage network,,2168,2160,4000,0,0,0,4000,0,0,0,,,,2013-06-18 08:00,2014-10-30 17:00,,2012-09-20 08:00,2014-02-01 17:00,2012-09-20 08:00,2014-02-01 17:00,2012-09-20 08:00,2014-02-01 17:00,,2013-06-18 08:00,2014-10-30 17:00,,PT_Normal,,,,,I4UFV1olk0KsYfH2DsfqJw,,,,N,0,0,,,2012-04-19 11:20,2012-04-19 11:21,admin,admin
70,119988,3208,17789,794,1,0,N,N,N,CP_Drtn,TT_Task,DT_FixedDUR2,RV_OK,TK_NotStart,A1450,Storm drainage network,,1528,1520,4000,0,0,0,4000,0,0,0,,,,2013-06-18 08:00,2014-10-30 17:00,,2012-12-09 08:00,2014-04-22 17:00,2012-12-09 08:00,2014-04-22 17:00,2012-12-09 08:00,2014-04-22 17:00,,2013-06-18 08:00,2014-10-30 17:00,,PT_Normal,,,,,p55iIxjrsEaNxjAEfR61ig,,,,N,0,0,,,2012-04-19 11:20,2012-04-19 11:24,admin,admin
71,119989,3208,17789,794,1,0,N,N,N,CP_Drtn,TT_Task,DT_FixedDUR2,RV_OK,TK_NotStart,A1460,Fire & irrigation network,,2728,2720,3200,0,0,0,3200,0,0,0,,,,2013-09-26 08:00,2014-10-30 17:00,,2012-10-20 08:00,2013-11-23 17:00,2012-10-20 08:00,2013-11-23 17:00,2012-10-20 08:00,2013-11-23 17:00,,2013-09-26 08:00,2014-10-30 17:00,,PT_Normal,,,,,wWJqoKxLRk2cboPSp8phXw,,,,N,0,0,,,2012-04-19 11:20,2012-04-19 12:59,admin,admin
72,119991,3208,17789,794,1,0,N,N,N,CP_Drtn,TT_Task,DT_FixedDUR2,RV_OK,TK_NotStart,A1470,Irrigation equipment,,2328,2320,3200,0,0,0,3200,0,0,0,,,,2013-09-26 08:00,2014-10-30 17:00,,2012-12-09 08:00,2014-01-12 17:00,2012-12-09 08:00,2014-01-12 17:00,2012-12-09 08:00,2014-01-12 17:00,,2013-09-26 08:00,2014-10-30 17:00,,PT_Normal,,,,,QtEeD+gaz0iG2CNXN7XDUg,,,,N,0,0,,,2012-04-19 11:24,2012-04-19 12:59,admin,admin
73,119992,3208,17789,794,1,0,N,N,N,CP_Drtn,TT_Task,DT_FixedDUR2,RV_OK,TK_NotStart,A1480,Water features,,88,80,1440,0,0,0,1440,0,0,0,,,,2014-05-04 08:00,2014-10-30 17:00,,2014-04-23 08:00,2014-10-19 17:00,2014-04-23 08:00,2014-10-19 17:00,2014-04-23 08:00,2014-10-19 17:00,,2014-05-04 08:00,2014-10-30 17:00,,PT_Normal,,,,,ueB3vNanIk+BDvENH+M5eA,,,,N,0,0,,,2012-04-19 11:25,2012-04-19 11:55,admin,admin
74,119993,3208,17789,794,1,0,N,N,N,CP_Drtn,TT_Task,DT_FixedDUR2,RV_OK,TK_NotStart,A1490,Electrical networks,,1128,1120,4000,0,0,0,4000,0,0,0,,,,2013-06-18 08:00,2014-10-30 17:00,,2013-01-28 08:00,2014-06-11 17:00,2013-01-28 08:00,2014-06-11 17:00,2013-01-28 08:00,2014-06-11 17:00,,2013-06-18 08:00,2014-10-30 17:00,,PT_Normal,,,,,Tahv4w0qBkC+5o3PHd4npg,,,,N,0,0,,,2012-04-19 11:26,2012-04-19 11:40,admin,admin
