,task_id,proj_id,wbs_id,clndr_id,est_wt,phys_complete_pct,rev_fdbk_flag,lock_plan_flag,auto_compute_act_flag,complete_pct_type,task_type,duration_type,review_type,status_code,task_code,task_name,rsrc_id,total_float_hr_cnt,free_float_hr_cnt,remain_drtn_hr_cnt,act_work_qty,remain_work_qty,target_work_qty,target_drtn_hr_cnt,target_equip_qty,act_equip_qty,remain_equip_qty,cstr_date,act_start_date,act_end_date,late_start_date,late_end_date,expect_end_date,early_start_date,early_end_date,restart_date,reend_date,target_start_date,target_end_date,review_end_date,rem_late_start_date,rem_late_end_date,cstr_type,priority_type,suspend_date,resume_date,float_path,float_path_order,guid,tmpl_guid,cstr_date2,cstr_type2,driving_path_flag,act_this_per_work_qty,act_this_per_equip_qty,external_early_start_date,external_late_end_date,create_date,update_date,create_user,update_user
0,100231,2212,13935,841,0,0,N,N,N,CP_Drtn,TT_Mile,DT_FixedDrtn,RV_OK,TK_NotStart,A1000,Commencement date,,0,0,0,0,0,0,0,0,0,0,,,,2012-01-01 08:00,2012-01-01 08:00,,2012-01-01 08:00,2012-01-01 08:00,2012-01-01 08:00,2012-01-01 08:00,2012-01-01 08:00,2012-01-01 08:00,,2012-01-01 08:00,2012-01-01 08:00,,PT_Normal,,,,,stA1X73F80CJlm1dPntDEA,,,,Y,0,0,,,2012-02-02 10:06,2012-02-02 11:00,admin,admin
1,100232,2212,13935,841,0,0,N,N,N,CP_Drtn,TT_FinMile,DT_FixedDrtn,RV_OK,TK_NotStart,A1010,Project handing over,,0,0,0,0,0,0,0,0,0,0,,,,2012-04-15 16:00,2012-04-15 16:00,,2012-04-15 16:00,2012-04-15 16:00,2012-04-15 16:00,2012-04-15 16:00,2012-04-15 16:00,2012-04-15 16:00,,2012-04-15 16:00,2012-04-15 16:00,,PT_Normal,,,,,G3+CN3IcQ06Y0ApSQlV+sw,,,,Y,0,0,,,2012-02-02 10:06,2012-02-05 13:13,admin,admin
2,100233,2212,13988,841,1,0,N,N,N,CP_Drtn,TT_Task,DT_FixedDUR2,RV_OK,TK_NotStart,A1020,Cleaning site,,168,0,112,0,0,0,112,0,0,0,,,,2012-02-11 08:00,2012-02-26 16:00,,2012-01-17 08:00,2012-02-01 16:00,2012-01-17 08:00,2012-02-01 16:00,2012-01-17 08:00,2012-02-01 16:00,,2012-02-11 08:00,2012-02-26 16:00,,PT_Normal,,,,,mssJ5UbcV0OGfjhy2AmpIA,,,,N,0,0,,,2012-02-02 10:08,2012-02-05 13:05,admin,admin
3,100234,2212,13988,841,1,0,N,N,N,CP_Drtn,TT_Task,DT_FixedDUR2,RV_OK,TK_NotStart,A1030,Excavation,,168,0,112,0,0,0,112,0,0,0,,,,2012-02-27 08:00,2012-03-13 16:00,,2012-02-02 08:00,2012-02-18 16:00,2012-02-02 08:00,2012-02-18 16:00,2012-02-02 08:00,2012-02-18 16:00,,2012-02-27 08:00,2012-03-13 16:00,,PT_Normal,,,,,S6mG16V4hUSRMJCePhTgsA,,,,N,0,0,,,2012-02-02 10:09,2012-02-05 13:05,admin,admin
4,100235,2212,13988,841,1,0,N,N,N,CP_Drtn,TT_Task,DT_FixedDUR2,RV_OK,TK_NotStart,A1040,Backfilling,,168,0,112,0,0,0,112,0,0,0,,,,2012-03-14 08:00,2012-03-29 16:00,,2012-02-19 08:00,2012-03-05 16:00,2012-02-19 08:00,2012-03-05 16:00,2012-02-19 08:00,2012-03-05 16:00,,2012-03-14 08:00,2012-03-29 16:00,,PT_Normal,,,,,MTT7w2m92k6kdrx3j8vRtQ,,,,N,0,0,,,2012-02-02 10:09,2012-02-05 13:05,admin,admin
5,100236,2212,13988,841,1,0,N,N,N,CP_Drtn,TT_Task,DT_FixedDUR2,RV_OK,TK_NotStart,A1050,Base course,,168,168,112,0,0,0,112,0,0,0,,,,2012-03-31 08:00,2012-04-15 16:00,,2012-03-06 08:00,2012-03-21 16:00,2012-03-06 08:00,2012-03-21 16:00,2012-03-06 08:00,2012-03-21 16:00,,2012-03-31 08:00,2012-04-15 16:00,,PT_Normal,,,,,2JE/IfAsE0eSyj1yw8J+ZQ,,,,N,0,0,,,2012-02-02 10:09,2012-02-05 13:05,admin,admin
6,100237,2212,13934,841,1,0,N,N,N,CP_Drtn,TT_Task,DT_FixedDUR2,RV_OK,TK_NotStart,A1060,Excavation,,88,0,112,0,0,0,112,0,0,0,,,,2012-01-30 08:00,2012-02-14 16:00,,2012-01-17 08:00,2012-02-01 16:00,2012-01-17 08:00,2012-02-01 16:00,2012-01-17 08:00,2012-02-01 16:00,,2012-01-30 08:00,2012-02-14 16:00,,PT_Normal,,,,,hemFrksdbESfLgD9TEjpmg,,,,N,0,0,,,2012-02-02 10:10,2012-02-05 13:07,admin,admin
7,100238,2212,13934,841,1,0,N,N,N,CP_Drtn,TT_Task,DT_FixedDUR2,RV_OK,TK_NotStart,A1070,P.C footings,,88,0,240,0,0,0,240,0,0,0,,,,2012-02-05 08:00,2012-03-10 16:00,,2012-01-23 08:00,2012-02-26 16:00,2012-01-23 08:00,2012-02-26 16:00,2012-01-23 08:00,2012-02-26 16:00,,2012-02-05 08:00,2012-03-10 16:00,,PT_Normal,,,,,SyTzOECrxE+9scROGvlDOA,,,,N,0,0,,,2012-02-02 10:11,2012-02-05 13:07,admin,admin
8,100239,2212,13934,841,1,0,N,N,N,CP_Drtn,TT_Task,DT_FixedDUR2,RV_OK,TK_NotStart,A1080,R.C footings,,88,0,240,0,0,0,240,0,0,0,,,,2012-02-09 08:00,2012-03-14 16:00,,2012-01-28 08:00,2012-03-01 16:00,2012-01-28 08:00,2012-03-01 16:00,2012-01-28 08:00,2012-03-01 16:00,,2012-02-09 08:00,2012-03-14 16:00,,PT_Normal,,,,,3eaoP88su0yqjlvIRurQEA,,,,N,0,0,,,2012-02-02 10:12,2012-02-05 13:07,admin,admin
9,100240,2212,13934,841,1,0,N,N,N,CP_Drtn,TT_Task,DT_FixedDUR2,RV_OK,TK_NotStart,A1090,R.C columns,,88,0,240,0,0,0,240,0,0,0,,,,2012-02-18 08:00,2012-03-22 16:00,,2012-02-05 08:00,2012-03-10 16:00,2012-02-05 08:00,2012-03-10 16:00,2012-02-05 08:00,2012-03-10 16:00,,2012-02-18 08:00,2012-03-22 16:00,,PT_Normal,,,,,sS9/6GIuhkW9Y1ut3aLeBw,,,,N,0,0,,,2012-02-02 10:12,2012-02-05 13:07,admin,admin
10,100241,2212,13934,841,1,0,N,N,N,CP_Drtn,TT_Task,DT_FixedDUR2,RV_OK,TK_NotStart,A1100,Insulation works,,88,0,160,0,0,0,160,0,0,0,,,,2012-02-29 08:00,2012-03-22 16:00,,2012-02-16 08:00,2012-03-10 16:00,2012-02-16 08:00,2012-03-10 16:00,2012-02-16 08:00,2012-03-10 16:00,,2012-02-29 08:00,2012-03-22 16:00,,PT_Normal,,,,,aGedAUQQgUaqueTkQD4ryw,,,,N,0,0,,,2012-02-02 10:12,2012-02-05 13:07,admin,admin
11,100242,2212,13934,841,1,0,N,N,N,CP_Drtn,TT_Task,DT_FixedDUR2,RV_OK,TK_NotStart,A1110,Masonry works,,88,0,160,0,0,0,160,0,0,0,,,,2012-03-06 08:00,2012-03-28 16:00,,2012-02-22 08:00,2012-03-15 16:00,2012-02-22 08:00,2012-03-15 16:00,2012-02-22 08:00,2012-03-15 16:00,,2012-03-06 08:00,2012-03-28 16:00,,PT_Normal,,,,,ZtGPWNLG20yE7rMQb2rHNA,,,,N,0,0,,,2012-02-02 10:12,2012-02-05 13:07,admin,admin
12,100243,2212,13934,841,1,0,N,N,N,CP_Drtn,TT_Task,DT_FixedDUR2,RV_OK,TK_NotStart,A1120,R.C Ground beam,,88,0,240,0,0,0,240,0,0,0,,,,2012-02-09 08:00,2012-03-14 16:00,,2012-01-28 08:00,2012-03-01 16:00,2012-01-28 08:00,2012-03-01 16:00,2012-01-28 08:00,2012-03-01 16:00,,2012-02-09 08:00,2012-03-14 16:00,,PT_Normal,,,,,JnSZ/xG7FEWW43D7NcMocA,,,,N,0,0,,,2012-02-02 10:13,2012-02-05 13:07,admin,admin
13,100244,2212,13934,841,1,0,N,N,N,CP_Drtn,TT_Task,DT_FixedDUR2,RV_OK,TK_NotStart,A1130,R.C Upper beam,,88,0,160,0,0,0,160,0,0,0,,,,2012-03-12 08:00,2012-04-03 16:00,,2012-02-28 08:00,2012-03-21 16:00,2012-02-28 08:00,2012-03-21 16:00,2012-02-28 08:00,2012-03-21 16:00,,2012-03-12 08:00,2012-04-03 16:00,,PT_Normal,,,,,63KikblCtEWnM0mzXE9FvA,,,,N,0,0,,,2012-02-02 10:14,2012-02-05 13:07,admin,admin
14,100245,2212,13934,841,1,0,N,N,N,CP_Drtn,TT_Task,DT_FixedDUR2,RV_OK,TK_NotStart,A1140,Plaster works,,88,0,160,0,0,0,160,0,0,0,,,,2012-03-18 08:00,2012-04-09 16:00,,2012-03-05 08:00,2012-03-27 16:00,2012-03-05 08:00,2012-03-27 16:00,2012-03-05 08:00,2012-03-27 16:00,,2012-03-18 08:00,2012-04-09 16:00,,PT_Normal,,,,,mnEdtk96FU6nFaoT/bdrAw,,,,N,0,0,,,2012-02-02 10:17,2012-02-05 13:07,admin,admin
15,100246,2212,13934,841,1,0,N,N,N,CP_Drtn,TT_Task,DT_FixedDUR2,RV_OK,TK_NotStart,A1150,Painting works,,88,88,160,0,0,0,160,0,0,0,,,,2012-03-24 08:00,2012-04-15 16:00,,2012-03-11 08:00,2012-04-02 16:00,2012-03-11 08:00,2012-04-02 16:00,2012-03-11 08:00,2012-04-02 16:00,,2012-03-24 08:00,2012-04-15 16:00,,PT_Normal,,,,,8ydTJ2SBMkGnfX3ONR7tOg,,,,N,0,0,,,2012-02-02 10:18,2012-02-05 13:07,admin,admin
16,100256,2212,13936,841,1,0,N,N,N,CP_Drtn,TT_Task,DT_FixedDUR2,RV_OK,TK_NotStart,A1240,Excavation,,0,0,32,0,0,0,32,0,0,0,,,,2012-01-17 08:00,2012-01-21 16:00,,2012-01-17 08:00,2012-01-21 16:00,2012-01-17 08:00,2012-01-21 16:00,2012-01-17 08:00,2012-01-21 16:00,,2012-01-17 08:00,2012-01-21 16:00,,PT_Normal,,,,,Ny+M+qY2vEiCAk7FPJUzBw,HkvNlGb5tESrXqyM6AYvAA,,,Y,0,0,,,2012-02-02 10:26,2012-02-05 13:05,admin,admin
17,100257,2212,13936,841,1,0,N,N,N,CP_Drtn,TT_Task,DT_FixedDUR2,RV_OK,TK_NotStart,A1250,P.C footings,,0,0,56,0,0,0,56,0,0,0,,,,2012-01-22 08:00,2012-01-29 16:00,,2012-01-22 08:00,2012-01-29 16:00,2012-01-22 08:00,2012-01-29 16:00,2012-01-22 08:00,2012-01-29 16:00,,2012-01-22 08:00,2012-01-29 16:00,,PT_Normal,,,,,oQJ4tJ6XXUyKohSCfPQxsQ,Aqts2Dfq30eHsW4X8eg8Lg,,,Y,0,0,,,2012-02-02 10:26,2012-02-05 13:05,admin,admin
18,100258,2212,13936,841,1,0,N,N,N,CP_Drtn,TT_Task,DT_FixedDUR2,RV_OK,TK_NotStart,A1260,R.C footings,,0,0,80,0,0,0,80,0,0,0,,,,2012-01-30 08:00,2012-02-09 16:00,,2012-01-30 08:00,2012-02-09 16:00,2012-01-30 08:00,2012-02-09 16:00,2012-01-30 08:00,2012-02-09 16:00,,2012-01-30 08:00,2012-02-09 16:00,,PT_Normal,,,,,Ny3uPl5qHEeXzxYWcUdyGg,dtr6yWFttUyLY4FCsJV9Ug,,,Y,0,0,,,2012-02-02 10:26,2012-02-05 13:05,admin,admin
19,100259,2212,13936,841,1,0,N,N,N,CP_Drtn,TT_Task,DT_FixedDUR2,RV_OK,TK_NotStart,A1270,R.C columns,,0,0,40,0,0,0,40,0,0,0,,,,2012-02-11 08:00,2012-02-15 16:00,,2012-02-11 08:00,2012-02-15 16:00,2012-02-11 08:00,2012-02-15 16:00,2012-02-11 08:00,2012-02-15 16:00,,2012-02-11 08:00,2012-02-15 16:00,,PT_Normal,,,,,lWsR+XYAfkSnel/tGtQ3uA,cvSc871ncEGD9x2XyhnR4A,,,Y,0,0,,,2012-02-02 10:26,2012-02-05 13:05,admin,admin
20,100260,2212,13936,841,1,0,N,N,N,CP_Drtn,TT_Task,DT_FixedDUR2,RV_OK,TK_NotStart,A1280,R.C slab,,0,0,56,0,0,0,56,0,0,0,,,,2012-02-16 08:00,2012-02-23 16:00,,2012-02-16 08:00,2012-02-23 16:00,2012-02-16 08:00,2012-02-23 16:00,2012-02-16 08:00,2012-02-23 16:00,,2012-02-16 08:00,2012-02-23 16:00,,PT_Normal,,,,,MD7FJw1WV0ipLocmTBtH/w,,,,Y,0,0,,,2012-02-02 10:26,2012-02-05 13:05,admin,admin
21,100261,2212,13936,841,1,0,N,N,N,CP_Drtn,TT_Task,DT_FixedDUR2,RV_OK,TK_NotStart,A1290,Masonry works,,0,0,112,0,0,0,112,0,0,0,,,,2012-02-25 08:00,2012-03-11 16:00,,2012-02-25 08:00,2012-03-11 16:00,2012-02-25 08:00,2012-03-11 16:00,2012-02-25 08:00,2012-03-11 16:00,,2012-02-25 08:00,2012-03-11 16:00,,PT_Normal,,,,,Nn/9uOJhxUGTJJgE3GuWfw,,,,Y,0,0,,,2012-02-02 10:29,2012-02-05 13:05,admin,admin
22,100262,2212,13936,841,1,0,N,N,N,CP_Drtn,TT_Task,DT_FixedDUR2,RV_OK,TK_NotStart,A1300,Finishing works,,0,0,240,0,0,0,240,0,0,0,,,,2012-03-12 08:00,2012-04-15 16:00,,2012-03-12 08:00,2012-04-15 16:00,2012-03-12 08:00,2012-04-15 16:00,2012-03-12 08:00,2012-04-15 16:00,,2012-03-12 08:00,2012-04-15 16:00,,PT_Normal,,,,,8Pp1oacS50KyjGU96thizA,,,,Y,0,0,,,2012-02-02 10:29,2012-02-05 13:05,admin,admin
23,100263,2212,13989,841,1,0,N,N,N,CP_Drtn,TT_Task,DT_FixedDUR2,RV_OK,TK_NotStart,A1310,Mobilization,,0,0,112,0,0,0,112,0,0,0,,,,2012-01-01 08:00,2012-01-16 16:00,,2012-01-01 08:00,2012-01-16 16:00,2012-01-01 08:00,2012-01-16 16:00,2012-01-01 08:00,2012-01-16 16:00,,2012-01-01 08:00,2012-01-16 16:00,,PT_Normal,,,,,pLPBHdGehEijswsMCAZ0Qg,,,,Y,0,0,,,2012-02-02 10:57,2012-02-02 11:00,admin,admin
24,100264,2212,13989,841,1,0,N,N,N,CP_Drtn,TT_Task,DT_FixedDUR2,RV_OK,TK_NotStart,A1320,Demobilization,,0,0,16,0,0,0,16,0,0,0,,,,2012-04-14 08:00,2012-04-15 16:00,,2012-04-14 08:00,2012-04-15 16:00,2012-04-14 08:00,2012-04-15 16:00,2012-04-14 08:00,2012-04-15 16:00,,2012-04-14 08:00,2012-04-15 16:00,,PT_Normal,,,,,2h8sytu/cUCPSQfI7eSi2A,,,,Y,0,0,,,2012-02-02 10:57,2012-02-05 13:13,admin,admin
25,100866,2212,13933,841,1,0,N,N,N,CP_Drtn,TT_Task,DT_FixedDUR2,RV_OK,TK_NotStart,A1330,Excavation,,88,0,160,0,0,0,160,0,0,0,,,,2012-01-30 08:00,2012-02-21 16:00,,2012-01-17 08:00,2012-02-08 16:00,2012-01-17 08:00,2012-02-08 16:00,2012-01-17 08:00,2012-02-08 16:00,,2012-01-30 08:00,2012-02-21 16:00,,PT_Normal,,,,,A0fdSMAMj0KXRWIAzon7qg,hemFrksdbESfLgD9TEjpmg,,,N,0,0,,,2012-02-05 13:11,2012-02-05 13:12,admin,admin
26,100867,2212,13933,841,1,0,N,N,N,CP_Drtn,TT_Task,DT_FixedDUR2,RV_OK,TK_NotStart,A1340,P.C footings,,88,0,320,0,0,0,320,0,0,0,,,,2012-02-05 08:00,2012-03-21 16:00,,2012-01-23 08:00,2012-03-08 16:00,2012-01-23 08:00,2012-03-08 16:00,2012-01-23 08:00,2012-03-08 16:00,,2012-02-05 08:00,2012-03-21 16:00,,PT_Normal,,,,,cCo84j9k0Um312Cp9UVdlQ,SyTzOECrxE+9scROGvlDOA,,,N,0,0,,,2012-02-05 13:11,2012-02-05 13:12,admin,admin
27,100868,2212,13933,841,1,0,N,N,N,CP_Drtn,TT_Task,DT_FixedDUR2,RV_OK,TK_NotStart,A1350,R.C footings,,88,0,320,0,0,0,320,0,0,0,,,,2012-02-09 08:00,2012-03-26 16:00,,2012-01-28 08:00,2012-03-13 16:00,2012-01-28 08:00,2012-03-13 16:00,2012-01-28 08:00,2012-03-13 16:00,,2012-02-09 08:00,2012-03-26 16:00,,PT_Normal,,,,,29YejlxgXESCV3g+LuwD8Q,3eaoP88su0yqjlvIRurQEA,,,N,0,0,,,2012-02-05 13:11,2012-02-05 13:12,admin,admin
28,100869,2212,13933,841,1,0,N,N,N,CP_Drtn,TT_Task,DT_FixedDUR2,RV_OK,TK_NotStart,A1370,R.C columns,,88,0,320,0,0,0,320,0,0,0,,,,2012-02-18 08:00,2012-04-03 16:00,,2012-02-05 08:00,2012-03-21 16:00,2012-02-05 08:00,2012-03-21 16:00,2012-02-05 08:00,2012-03-21 16:00,,2012-02-18 08:00,2012-04-03 16:00,,PT_Normal,,,,,9Ffc5PktJkWKc+4Q2xP/jg,sS9/6GIuhkW9Y1ut3aLeBw,,,N,0,0,,,2012-02-05 13:11,2012-02-05 13:12,admin,admin
29,100870,2212,13933,841,1,0,N,N,N,CP_Drtn,TT_Task,DT_FixedDUR2,RV_OK,TK_NotStart,A1380,Insulation works,,88,0,240,0,0,0,240,0,0,0,,,,2012-02-29 08:00,2012-04-03 16:00,,2012-02-16 08:00,2012-03-21 16:00,2012-02-16 08:00,2012-03-21 16:00,2012-02-16 08:00,2012-03-21 16:00,,2012-02-29 08:00,2012-04-03 16:00,,PT_Normal,,,,,C4dVcOBHgk6FxYF42tCSJw,aGedAUQQgUaqueTkQD4ryw,,,N,0,0,,,2012-02-05 13:11,2012-02-05 13:12,admin,admin
30,100871,2212,13933,841,1,0,N,N,N,CP_Drtn,TT_Task,DT_FixedDUR2,RV_OK,TK_NotStart,A1390,Masonry works,,88,0,240,0,0,0,240,0,0,0,,,,2012-03-06 08:00,2012-04-09 16:00,,2012-02-22 08:00,2012-03-27 16:00,2012-02-22 08:00,2012-03-27 16:00,2012-02-22 08:00,2012-03-27 16:00,,2012-03-06 08:00,2012-04-09 16:00,,PT_Normal,,,,,LrWZQvPdbUqHsen3RMS8Yg,ZtGPWNLG20yE7rMQb2rHNA,,,N,0,0,,,2012-02-05 13:11,2012-02-05 13:12,admin,admin
31,100872,2212,13933,841,1,0,N,N,N,CP_Drtn,TT_Task,DT_FixedDUR2,RV_OK,TK_NotStart,A1360,R.C Ground beam,,88,0,320,0,0,0,320,0,0,0,,,,2012-02-09 08:00,2012-03-26 16:00,,2012-01-28 08:00,2012-03-13 16:00,2012-01-28 08:00,2012-03-13 16:00,2012-01-28 08:00,2012-03-13 16:00,,2012-02-09 08:00,2012-03-26 16:00,,PT_Normal,,,,,PaDcU547tkuDtYMTZZRtrg,JnSZ/xG7FEWW43D7NcMocA,,,N,0,0,,,2012-02-05 13:11,2012-02-05 13:12,admin,admin
32,100873,2212,13933,841,1,0,N,N,N,CP_Drtn,TT_Task,DT_FixedDUR2,RV_OK,TK_NotStart,A1400,R.C Upper beam,,88,88,240,0,0,0,240,0,0,0,,,,2012-03-12 08:00,2012-04-15 16:00,,2012-02-28 08:00,2012-04-02 16:00,2012-02-28 08:00,2012-04-02 16:00,2012-02-28 08:00,2012-04-02 16:00,,2012-03-12 08:00,2012-04-15 16:00,,PT_Normal,,,,,jaH5vEcLukmw+nSWI5M4PA,63KikblCtEWnM0mzXE9FvA,,,N,0,0,,,2012-02-05 13:11,2012-02-05 13:12,admin,admin
