,task_id,proj_id,wbs_id,clndr_id,est_wt,phys_complete_pct,rev_fdbk_flag,lock_plan_flag,auto_compute_act_flag,complete_pct_type,task_type,duration_type,review_type,status_code,task_code,task_name,rsrc_id,total_float_hr_cnt,free_float_hr_cnt,remain_drtn_hr_cnt,act_work_qty,remain_work_qty,target_work_qty,target_drtn_hr_cnt,target_equip_qty,act_equip_qty,remain_equip_qty,cstr_date,act_start_date,act_end_date,late_start_date,late_end_date,expect_end_date,early_start_date,early_end_date,restart_date,reend_date,target_start_date,target_end_date,review_end_date,rem_late_start_date,rem_late_end_date,cstr_type,priority_type,suspend_date,resume_date,float_path,float_path_order,guid,tmpl_guid,cstr_date2,cstr_type2,driving_path_flag,act_this_per_work_qty,act_this_per_equip_qty,external_early_start_date,external_late_end_date,create_date,update_date,create_user,update_user
0,128376,3714,19670,794,1,0,N,N,N,CP_Drtn,TT_Task,DT_FixedDUR2,RV_OK,TK_NotStart,A1000,Pipes & fittings installation,,128,0,360,0,0,0,360,0,0,0,,,,2012-07-01 08:00,2012-08-14 17:00,,2012-06-15 08:00,2012-07-29 17:00,2012-06-15 08:00,2012-07-29 17:00,2012-06-15 08:00,2012-07-29 17:00,,2012-07-01 08:00,2012-08-14 17:00,,PT_Normal,,,,,wiDUgRbuYkyvDCK17n/EFw,,,,N,0,0,,,2012-05-09 13:03,2012-05-10 13:23,admin,NotPrmUser
1,128377,3714,19670,794,1,0,N,N,N,CP_Drtn,TT_Task,DT_FixedDUR2,RV_OK,TK_NotStart,A1010,fire hose cabient & fire extinguisher & sprinklers erection,,128,120,240,0,0,0,240,0,0,0,,,,2012-08-15 08:00,2012-09-13 17:00,,2012-07-30 08:00,2012-08-28 17:00,2012-07-30 08:00,2012-08-28 17:00,2012-07-30 08:00,2012-08-28 17:00,,2012-08-15 08:00,2012-09-13 17:00,,PT_Normal,,,,,1kQjigQ4BUKCS1/XEN4s+A,,,,N,0,0,,,2012-05-09 13:03,2012-05-10 13:23,admin,NotPrmUser
2,128378,3714,19670,794,1,0,N,N,N,CP_Drtn,TT_Task,DT_FixedDUR2,RV_OK,TK_NotStart,A1020,pumbs installation,,8,0,80,0,0,0,80,0,0,0,,,,2012-09-14 08:00,2012-09-23 17:00,,2012-09-13 08:00,2012-09-22 17:00,2012-09-13 08:00,2012-09-22 17:00,2012-09-13 08:00,2012-09-22 17:00,,2012-09-14 08:00,2012-09-23 17:00,,PT_Normal,,,,,7OAH5j3vvEG320DqprFSmA,,,,Y,0,0,,,2012-05-09 13:03,2012-05-10 13:47,admin,NotPrmUser
3,128379,3714,19670,794,1,0,N,N,N,CP_Drtn,TT_Task,DT_FixedDUR2,RV_OK,TK_NotStart,A1030,FM200 Installation,,8,0,240,0,0,0,240,0,0,0,,,,2012-09-24 08:00,2012-10-23 17:00,,2012-09-23 08:00,2012-10-22 17:00,2012-09-23 08:00,2012-10-22 17:00,2012-09-23 08:00,2012-10-22 17:00,,2012-09-24 08:00,2012-10-23 17:00,,PT_Normal,,,,,vzByHneSmUOZK53Zcvh6gQ,,,,Y,0,0,,,2012-05-09 13:03,2012-05-10 13:47,admin,NotPrmUser
4,128380,3714,19678,794,1,0,N,N,N,CP_Drtn,TT_Task,DT_FixedDUR2,RV_OK,TK_NotStart,A1040,Mobilization,,8,0,112,0,0,0,112,0,0,0,,,,2012-06-02 08:00,2012-06-15 17:00,,2012-06-01 08:00,2012-06-14 17:00,2012-06-01 08:00,2012-06-14 17:00,2012-06-01 08:00,2012-06-14 17:00,,2012-06-02 08:00,2012-06-15 17:00,,PT_Normal,,,,,Dyh3PBwW10arhE69EmeOoQ,,,,Y,0,0,,,2012-05-09 13:05,2012-05-10 13:47,admin,NotPrmUser
5,128381,3714,19678,794,1,0,N,N,N,CP_Drtn,TT_Task,DT_FixedDUR2,RV_OK,TK_NotStart,A1050,Demobilization,,8,0,40,0,0,0,40,0,0,0,,,,2012-10-26 08:00,2012-10-30 17:00,,2012-10-25 08:00,2012-10-29 17:00,2012-10-25 08:00,2012-10-29 17:00,2012-10-25 08:00,2012-10-29 17:00,,2012-10-26 08:00,2012-10-30 17:00,,PT_Normal,,,,,b2rsJbcj0ES6OBAEn+topQ,,,,Y,0,0,,,2012-05-09 13:05,2012-05-10 13:47,admin,NotPrmUser
6,128382,3714,19674,794,0,0,N,N,N,CP_Drtn,TT_Mile,DT_FixedDrtn,RV_OK,TK_NotStart,A1060,Site handing over,,8,0,0,0,0,0,0,0,0,0,,,,2012-06-02 08:00,2012-06-02 08:00,,2012-06-01 08:00,2012-06-01 08:00,2012-06-01 08:00,2012-06-01 08:00,2012-06-01 08:00,2012-06-01 08:00,,2012-06-02 08:00,2012-06-02 08:00,,PT_Normal,,,,,bSCHtV+chUunMQ3/QCBLcw,,,,Y,0,0,,,2012-05-09 13:05,2012-05-10 13:47,admin,NotPrmUser
7,128383,3714,19674,794,0,0,N,N,N,CP_Drtn,TT_Mile,DT_FixedDrtn,RV_OK,TK_NotStart,A1070,Contract agreement,,8,0,0,0,0,0,0,0,0,0,,,,2012-06-02 08:00,2012-06-02 08:00,,2012-06-01 08:00,2012-06-01 08:00,2012-06-01 08:00,2012-06-01 08:00,2012-06-01 08:00,2012-06-01 08:00,,2012-06-02 08:00,2012-06-02 08:00,,PT_Normal,,,,,zTTfs2+1dUqq/QDBA8ZF6Q,,,,Y,0,0,,,2012-05-09 13:05,2012-05-10 13:47,admin,NotPrmUser
8,128384,3714,19674,794,0,0,N,N,N,CP_Drtn,TT_Mile,DT_FixedDrtn,RV_OK,TK_NotStart,A1080,Recieve advanced payment,,8,0,0,0,0,0,0,0,0,0,,,,2012-06-02 08:00,2012-06-02 08:00,,2012-06-01 08:00,2012-06-01 08:00,2012-06-01 08:00,2012-06-01 08:00,2012-06-01 08:00,2012-06-01 08:00,,2012-06-02 08:00,2012-06-02 08:00,,PT_Normal,,,,,5kug5DM1YkaKbx1zfMoLtA,,,,Y,0,0,,,2012-05-09 13:05,2012-05-10 13:47,admin,NotPrmUser
9,128385,3714,19674,794,0,0,N,N,N,CP_Drtn,TT_Mile,DT_FixedDrtn,RV_OK,TK_NotStart,A1090,Commencement date,,8,0,0,0,0,0,0,0,0,0,,,,2012-06-02 08:00,2012-06-02 08:00,,2012-06-01 08:00,2012-06-01 08:00,2012-06-01 08:00,2012-06-01 08:00,2012-06-01 08:00,2012-06-01 08:00,,2012-06-02 08:00,2012-06-02 08:00,,PT_Normal,,,,,jlgHPMQx1067vfTVdTKV2A,,,,Y,0,0,,,2012-05-09 13:05,2012-05-10 13:47,admin,NotPrmUser
10,128387,3714,19668,794,1,0,N,N,N,CP_Drtn,TT_Task,DT_FixedDUR2,RV_OK,TK_NotStart,A1100,Conduits & boxes erection,,8,0,240,0,0,0,240,0,0,0,,,,2012-06-16 08:00,2012-07-15 17:00,,2012-06-15 08:00,2012-07-14 17:00,2012-06-15 08:00,2012-07-14 17:00,2012-06-15 08:00,2012-07-14 17:00,,2012-06-16 08:00,2012-07-15 17:00,,PT_Normal,,,,,eizp/hdmLEumCvLQr/YwDQ,,,,Y,0,0,,,2012-05-09 16:47,2012-05-10 13:47,admin,NotPrmUser
11,128388,3714,19668,794,1,0,N,N,N,CP_Drtn,TT_Task,DT_FixedDUR2,RV_OK,TK_NotStart,A1110,Cable tray erection,,8,0,240,0,0,0,240,0,0,0,,,,2012-07-01 08:00,2012-07-30 17:00,,2012-06-30 08:00,2012-07-29 17:00,2012-06-30 08:00,2012-07-29 17:00,2012-06-30 08:00,2012-07-29 17:00,,2012-07-01 08:00,2012-07-30 17:00,,PT_Normal,,,,,+LqrtHX2k0S82+c/AU9InQ,,,,Y,0,0,,,2012-05-09 16:47,2012-05-10 13:47,admin,NotPrmUser
12,128389,3714,19668,794,1,0,N,N,N,CP_Drtn,TT_Task,DT_FixedDUR2,RV_OK,TK_NotStart,A1120,Wiring & cables,,8,0,160,0,0,0,160,0,0,0,,,,2012-07-31 08:00,2012-08-19 17:00,,2012-07-30 08:00,2012-08-18 17:00,2012-07-30 08:00,2012-08-18 17:00,2012-07-30 08:00,2012-08-18 17:00,,2012-07-31 08:00,2012-08-19 17:00,,PT_Normal,,,,,xBOEF6clI0q7mMd706Fvlw,,,,Y,0,0,,,2012-05-09 16:47,2012-05-10 13:47,admin,NotPrmUser
13,128390,3714,19668,794,1,0,N,N,N,CP_Drtn,TT_Task,DT_FixedDUR2,RV_OK,TK_NotStart,A1130,Pulling cables,,8,0,240,0,0,0,240,0,0,0,,,,2012-08-20 08:00,2012-09-18 17:00,,2012-08-19 08:00,2012-09-17 17:00,2012-08-19 08:00,2012-09-17 17:00,2012-08-19 08:00,2012-09-17 17:00,,2012-08-20 08:00,2012-09-18 17:00,,PT_Normal,,,,,xvdpWRbw402LmQb95IyQMw,,,,Y,0,0,,,2012-05-09 16:47,2012-05-10 13:47,admin,NotPrmUser
14,128391,3714,19676,794,0,0,N,N,N,CP_Drtn,TT_Mile,DT_FixedDrtn,RV_OK,TK_NotStart,A1140,Distribution board P.O,,64,0,0,0,0,0,0,0,0,0,,,,2012-07-03 08:00,2012-07-03 08:00,,2012-06-25 08:00,2012-06-25 08:00,2012-06-25 08:00,2012-06-25 08:00,2012-06-25 08:00,2012-06-25 08:00,,2012-07-03 08:00,2012-07-03 08:00,,PT_Normal,,,,,V/n3HUGhI0mnOrqjEXUJ3Q,,,,N,0,0,,,2012-05-09 16:48,2012-05-10 12:50,admin,NotPrmUser
15,128392,3714,19676,794,0,0,N,N,N,CP_Drtn,TT_Mile,DT_FixedDrtn,RV_OK,TK_NotStart,A1150,Lighting fixtures,,88,0,0,0,0,0,0,0,0,0,,,,2012-08-25 08:00,2012-08-25 08:00,,2012-08-14 08:00,2012-08-14 08:00,2012-08-14 08:00,2012-08-14 08:00,2012-08-14 08:00,2012-08-14 08:00,,2012-08-25 08:00,2012-08-25 08:00,,PT_Normal,,,,,Ia8sO1/zKUGVZrA8OFMSVA,,,,N,0,0,,,2012-05-09 16:48,2012-05-10 12:50,admin,NotPrmUser
16,128395,3714,19676,794,0,0,N,N,N,CP_Drtn,TT_Mile,DT_FixedDrtn,RV_OK,TK_NotStart,A1180,EPABX system & dataP.O,,32,0,0,0,0,0,0,0,0,0,,,,2012-08-18 08:00,2012-08-18 08:00,,2012-08-14 08:00,2012-08-14 08:00,2012-08-14 08:00,2012-08-14 08:00,2012-08-14 08:00,2012-08-14 08:00,,2012-08-18 08:00,2012-08-18 08:00,,PT_Normal,,,,,/3C/qSeINkWAubFOzmMIWA,Ia8sO1/zKUGVZrA8OFMSVA,,,N,0,0,,,2012-05-09 16:53,2012-05-10 13:47,admin,NotPrmUser
17,128396,3714,19676,794,0,0,N,N,N,CP_Drtn,TT_Mile,DT_FixedDrtn,RV_OK,TK_NotStart,A1190,Bus ducts P.O,,32,0,0,0,0,0,0,0,0,0,,,,2012-07-19 08:00,2012-07-19 08:00,,2012-07-15 08:00,2012-07-15 08:00,2012-07-15 08:00,2012-07-15 08:00,2012-07-15 08:00,2012-07-15 08:00,,2012-07-19 08:00,2012-07-19 08:00,,PT_Normal,,,,,ZTZUiYgHrUiT0lYPr4JlNQ,Ia8sO1/zKUGVZrA8OFMSVA,,,N,0,0,,,2012-05-09 16:54,2012-05-10 13:23,admin,NotPrmUser
18,128397,3714,19676,794,0,0,N,N,N,CP_Drtn,TT_Mile,DT_FixedDrtn,RV_OK,TK_NotStart,A1200,UPS P.O,,32,0,0,0,0,0,0,0,0,0,,,,2012-07-19 08:00,2012-07-19 08:00,,2012-07-15 08:00,2012-07-15 08:00,2012-07-15 08:00,2012-07-15 08:00,2012-07-15 08:00,2012-07-15 08:00,,2012-07-19 08:00,2012-07-19 08:00,,PT_Normal,,,,,k9gmDEkXp0KmMqHcurB2DQ,,,,N,0,0,,,2012-05-09 16:56,2012-05-10 13:23,admin,NotPrmUser
19,128398,3714,19676,794,0,0,N,N,N,CP_Drtn,TT_Mile,DT_FixedDrtn,RV_OK,TK_NotStart,A1210,Fire alarm system P.O,,64,0,0,0,0,0,0,0,0,0,,,,2012-08-02 08:00,2012-08-02 08:00,,2012-07-25 08:00,2012-07-25 08:00,2012-07-25 08:00,2012-07-25 08:00,2012-07-25 08:00,2012-07-25 08:00,,2012-08-02 08:00,2012-08-02 08:00,,PT_Normal,,,,,AYI+PrKW4Eu9tpzQSgL0nQ,k9gmDEkXp0KmMqHcurB2DQ,,,N,0,0,,,2012-05-09 16:57,2012-05-10 13:23,admin,NotPrmUser
20,128399,3714,19677,794,0,0,N,N,N,CP_Drtn,TT_FinMile,DT_FixedDrtn,RV_OK,TK_NotStart,A1220,Distribution board Delivery,,64,56,0,0,0,0,0,0,0,0,,,,2012-09-30 17:00,2012-09-30 17:00,,2012-09-22 17:00,2012-09-22 17:00,2012-09-22 17:00,2012-09-22 17:00,2012-09-22 17:00,2012-09-22 17:00,,2012-09-30 17:00,2012-09-30 17:00,,PT_Normal,,,,,nr0esbtC70qVYd9vtcdwnQ,V/n3HUGhI0mnOrqjEXUJ3Q,,,N,0,0,,,2012-05-09 16:58,2012-05-10 13:46,admin,NotPrmUser
21,128400,3714,19677,794,0,0,N,N,N,CP_Drtn,TT_FinMile,DT_FixedDrtn,RV_OK,TK_NotStart,A1230,Lighting fixtures Delivery,,88,80,0,0,0,0,0,0,0,0,,,,2012-09-23 17:00,2012-09-23 17:00,,2012-09-12 17:00,2012-09-12 17:00,2012-09-12 17:00,2012-09-12 17:00,2012-09-12 17:00,2012-09-12 17:00,,2012-09-23 17:00,2012-09-23 17:00,,PT_Normal,,,,,iXSWMKWE8ECtmDUSXhevGw,Ia8sO1/zKUGVZrA8OFMSVA,,,N,0,0,,,2012-05-09 16:58,2012-05-10 13:46,admin,NotPrmUser
22,128401,3714,19677,794,0,0,N,N,N,CP_Drtn,TT_FinMile,DT_FixedDrtn,RV_OK,TK_NotStart,A1240,EPABX system  & data Delivery,,32,0,0,0,0,0,0,0,0,0,,,,2012-10-16 17:00,2012-10-16 17:00,,2012-10-12 17:00,2012-10-12 17:00,2012-10-12 17:00,2012-10-12 17:00,2012-10-12 17:00,2012-10-12 17:00,,2012-10-16 17:00,2012-10-16 17:00,,PT_Normal,,,,,Y6m5Cuu2U0G5QeQ9kXE/7Q,/3C/qSeINkWAubFOzmMIWA,,,N,0,0,,,2012-05-09 16:58,2012-05-10 14:24,admin,NotPrmUser
23,128402,3714,19677,794,0,0,N,N,N,CP_Drtn,TT_FinMile,DT_FixedDrtn,RV_OK,TK_NotStart,A1250,Bus ducts  Delivery,,32,16,0,0,0,0,0,0,0,0,,,,2012-10-16 17:00,2012-10-16 17:00,,2012-10-12 17:00,2012-10-12 17:00,2012-10-12 17:00,2012-10-12 17:00,2012-10-12 17:00,2012-10-12 17:00,,2012-10-16 17:00,2012-10-16 17:00,,PT_Normal,,,,,zO0lGeMb0UCDHGkjEhPjPg,ZTZUiYgHrUiT0lYPr4JlNQ,,,N,0,0,,,2012-05-09 16:58,2012-05-10 13:46,admin,NotPrmUser
24,128403,3714,19677,794,0,0,N,N,N,CP_Drtn,TT_FinMile,DT_FixedDrtn,RV_OK,TK_NotStart,A1260,UPS  Delivery,,32,0,0,0,0,0,0,0,0,0,,,,2012-10-16 17:00,2012-10-16 17:00,,2012-10-12 17:00,2012-10-12 17:00,2012-10-12 17:00,2012-10-12 17:00,2012-10-12 17:00,2012-10-12 17:00,,2012-10-16 17:00,2012-10-16 17:00,,PT_Normal,,,,,WNBC61YE6UqsmIql+cjOzg,k9gmDEkXp0KmMqHcurB2DQ,,,N,0,0,,,2012-05-09 16:58,2012-05-10 13:23,admin,NotPrmUser
25,128404,3714,19677,794,0,0,N,N,N,CP_Drtn,TT_FinMile,DT_FixedDrtn,RV_OK,TK_NotStart,A1270,Fire alarm system  Delivery,,64,56,0,0,0,0,0,0,0,0,,,,2012-09-30 17:00,2012-09-30 17:00,,2012-09-22 17:00,2012-09-22 17:00,2012-09-22 17:00,2012-09-22 17:00,2012-09-22 17:00,2012-09-22 17:00,,2012-09-30 17:00,2012-09-30 17:00,,PT_Normal,,,,,xvZh+eNcuUy8V3BziXWzbg,AYI+PrKW4Eu9tpzQSgL0nQ,,,N,0,0,,,2012-05-09 16:58,2012-05-10 13:46,admin,NotPrmUser
26,128405,3714,19676,794,0,0,N,N,N,CP_Drtn,TT_Mile,DT_FixedDrtn,RV_OK,TK_NotStart,A1280,Transformers P.O,,32,0,0,0,0,0,0,0,0,0,,,,2012-07-19 08:00,2012-07-19 08:00,,2012-07-15 08:00,2012-07-15 08:00,2012-07-15 08:00,2012-07-15 08:00,2012-07-15 08:00,2012-07-15 08:00,,2012-07-19 08:00,2012-07-19 08:00,,PT_Normal,,,,,Wrqq5kLXyEirUDxe7Klrdw,,,,N,0,0,,,2012-05-09 17:09,2012-05-10 13:23,admin,NotPrmUser
27,128406,3714,19676,794,0,0,N,N,N,CP_Drtn,TT_Mile,DT_FixedDrtn,RV_OK,TK_NotStart,A1290,Generators P.O,,32,0,0,0,0,0,0,0,0,0,,,,2012-07-19 08:00,2012-07-19 08:00,,2012-07-15 08:00,2012-07-15 08:00,2012-07-15 08:00,2012-07-15 08:00,2012-07-15 08:00,2012-07-15 08:00,,2012-07-19 08:00,2012-07-19 08:00,,PT_Normal,,,,,v+VLABywvUWeSSin/oc7FA,,,,N,0,0,,,2012-05-09 17:10,2012-05-10 13:23,admin,NotPrmUser
28,128407,3714,19677,794,0,0,N,N,N,CP_Drtn,TT_FinMile,DT_FixedDrtn,RV_OK,TK_NotStart,A1300,Transformers Delivery,,32,16,0,0,0,0,0,0,0,0,,,,2012-10-16 17:00,2012-10-16 17:00,,2012-10-12 17:00,2012-10-12 17:00,2012-10-12 17:00,2012-10-12 17:00,2012-10-12 17:00,2012-10-12 17:00,,2012-10-16 17:00,2012-10-16 17:00,,PT_Normal,,,,,GdkNZ9k/Z0ScMpXbV/aY+w,Wrqq5kLXyEirUDxe7Klrdw,,,N,0,0,,,2012-05-09 17:16,2012-05-10 13:46,admin,NotPrmUser
29,128408,3714,19677,794,0,0,N,N,N,CP_Drtn,TT_FinMile,DT_FixedDrtn,RV_OK,TK_NotStart,A1310,Generators Delivery,,32,16,0,0,0,0,0,0,0,0,,,,2012-10-16 17:00,2012-10-16 17:00,,2012-10-12 17:00,2012-10-12 17:00,2012-10-12 17:00,2012-10-12 17:00,2012-10-12 17:00,2012-10-12 17:00,,2012-10-16 17:00,2012-10-16 17:00,,PT_Normal,,,,,f7HFJo7AkkelnhALo0rMqQ,v+VLABywvUWeSSin/oc7FA,,,N,0,0,,,2012-05-09 17:16,2012-05-10 13:46,admin,NotPrmUser
30,128409,3714,19682,794,0,0,N,N,N,CP_Drtn,TT_Mile,DT_FixedDrtn,RV_OK,TK_NotStart,A1320,Booster pump P.O,,8,0,0,0,0,0,0,0,0,0,,,,2012-06-16 08:00,2012-06-16 08:00,,2012-06-15 08:00,2012-06-15 08:00,2012-06-15 08:00,2012-06-15 08:00,2012-06-15 08:00,2012-06-15 08:00,,2012-06-16 08:00,2012-06-16 08:00,,PT_Normal,,,,,E9sdK+ed60CTT5QNPLZS/w,,,,Y,0,0,,,2012-05-09 17:49,2012-05-10 13:47,admin,NotPrmUser
31,128410,3714,19683,794,0,0,N,N,N,CP_Drtn,TT_FinMile,DT_FixedDrtn,RV_OK,TK_NotStart,A1330,Booster pump Delivery,,8,0,0,0,0,0,0,0,0,0,,,,2012-09-13 17:00,2012-09-13 17:00,,2012-09-12 17:00,2012-09-12 17:00,2012-09-12 17:00,2012-09-12 17:00,2012-09-12 17:00,2012-09-12 17:00,,2012-09-13 17:00,2012-09-13 17:00,,PT_Normal,,,,,QTAcPXZzs0eg0iM4XzlD/g,,,,Y,0,0,,,2012-05-09 17:49,2012-05-10 13:47,admin,NotPrmUser
32,128411,3714,19682,794,0,0,N,N,N,CP_Drtn,TT_Mile,DT_FixedDrtn,RV_OK,TK_NotStart,A1340,FM 200 P.O,,328,0,0,0,0,0,0,0,0,0,,,,2012-07-26 08:00,2012-07-26 08:00,,2012-06-15 08:00,2012-06-15 08:00,2012-06-15 08:00,2012-06-15 08:00,2012-06-15 08:00,2012-06-15 08:00,,2012-07-26 08:00,2012-07-26 08:00,,PT_Normal,,,,,YgYTvrbFs0KKK0QSsCWFYA,,,,N,0,0,,,2012-05-09 17:49,2012-05-10 13:23,admin,NotPrmUser
33,128412,3714,19683,794,0,0,N,N,N,CP_Drtn,TT_FinMile,DT_FixedDrtn,RV_OK,TK_NotStart,A1350,FM 200 delivery,,328,320,0,0,0,0,0,0,0,0,,,,2012-09-23 17:00,2012-09-23 17:00,,2012-08-13 17:00,2012-08-13 17:00,2012-08-13 17:00,2012-08-13 17:00,2012-08-13 17:00,2012-08-13 17:00,,2012-09-23 17:00,2012-09-23 17:00,,PT_Normal,,,,,dy2FL6CIbUamCq1hjTNsdg,,,,N,0,0,,,2012-05-09 17:50,2012-05-10 13:23,admin,NotPrmUser
34,128413,3714,19682,794,0,0,N,N,N,CP_Drtn,TT_Mile,DT_FixedDrtn,RV_OK,TK_NotStart,A1360,Fans P.O,,136,0,0,0,0,0,0,0,0,0,,,,2012-07-02 08:00,2012-07-02 08:00,,2012-06-15 08:00,2012-06-15 08:00,2012-06-15 08:00,2012-06-15 08:00,2012-06-15 08:00,2012-06-15 08:00,,2012-07-02 08:00,2012-07-02 08:00,,PT_Normal,,,,,S0qtcw/xJkKOD0vUjbs8Zg,,,,N,0,0,,,2012-05-09 17:50,2012-05-10 13:23,admin,NotPrmUser
35,128414,3714,19683,794,0,0,N,N,N,CP_Drtn,TT_FinMile,DT_FixedDrtn,RV_OK,TK_NotStart,A1370,Fans delivery,,136,32,0,0,0,0,0,0,0,0,,,,2012-09-29 17:00,2012-09-29 17:00,,2012-09-12 17:00,2012-09-12 17:00,2012-09-12 17:00,2012-09-12 17:00,2012-09-12 17:00,2012-09-12 17:00,,2012-09-29 17:00,2012-09-29 17:00,,PT_Normal,,,,,Tdv7+bylFkGjHs+n6KtbjQ,,,,N,0,0,,,2012-05-09 17:50,2012-05-10 13:23,admin,NotPrmUser
36,128415,3714,19683,794,0,0,N,N,N,CP_Drtn,TT_FinMile,DT_FixedDrtn,RV_OK,TK_NotStart,A1380,Air outlets delivery,,264,160,0,0,0,0,0,0,0,0,,,,2012-09-15 17:00,2012-09-15 17:00,,2012-08-13 17:00,2012-08-13 17:00,2012-08-13 17:00,2012-08-13 17:00,2012-08-13 17:00,2012-08-13 17:00,,2012-09-15 17:00,2012-09-15 17:00,,PT_Normal,,,,,RldHLS4QLkGjSYvFYqjIog,,,,N,0,0,,,2012-05-09 17:50,2012-05-10 13:23,admin,NotPrmUser
37,128416,3714,19682,794,0,0,N,N,N,CP_Drtn,TT_Mile,DT_FixedDrtn,RV_OK,TK_NotStart,A1390,Air outlets P.O,,264,0,0,0,0,0,0,0,0,0,,,,2012-07-18 08:00,2012-07-18 08:00,,2012-06-15 08:00,2012-06-15 08:00,2012-06-15 08:00,2012-06-15 08:00,2012-06-15 08:00,2012-06-15 08:00,,2012-07-18 08:00,2012-07-18 08:00,,PT_Normal,,,,,7aH+q8d5ekK+A1XH5TV6eA,,,,N,0,0,,,2012-05-09 17:51,2012-05-10 13:23,admin,NotPrmUser
38,128423,3714,19668,794,1,0,N,N,N,CP_Drtn,TT_Task,DT_FixedDUR2,RV_OK,TK_NotStart,A1400,Wiring devices,,8,0,168,0,0,0,168,0,0,0,,,,2012-09-14 08:00,2012-10-04 17:00,,2012-09-13 08:00,2012-10-03 17:00,2012-09-13 08:00,2012-10-03 17:00,2012-09-13 08:00,2012-10-03 17:00,,2012-09-14 08:00,2012-10-04 17:00,,PT_Normal,,,,,dyPHQ4LxjkaTQ9tGh1AHCA,,,,Y,0,0,,,2012-05-10 10:14,2012-05-10 13:47,admin,NotPrmUser
39,128424,3714,19668,794,1,0,N,N,N,CP_Drtn,TT_Task,DT_FixedDUR2,RV_OK,TK_NotStart,A1410,Light fixtures erection,,8,0,200,0,0,0,200,0,0,0,,,,2012-09-24 08:00,2012-10-18 17:00,,2012-09-23 08:00,2012-10-17 17:00,2012-09-23 08:00,2012-10-17 17:00,2012-09-23 08:00,2012-10-17 17:00,,2012-09-24 08:00,2012-10-18 17:00,,PT_Normal,,,,,YFrvvoNWykGrYzFg6C/ryw,,,,Y,0,0,,,2012-05-10 10:14,2012-05-10 13:47,admin,NotPrmUser
40,128425,3714,19668,794,1,0,N,N,N,CP_Drtn,TT_Task,DT_FixedDUR2,RV_OK,TK_NotStart,A1420,Panel boards installation,,8,0,240,0,0,0,240,0,0,0,,,,2012-10-01 08:00,2012-10-30 17:00,,2012-09-30 08:00,2012-10-29 17:00,2012-09-30 08:00,2012-10-29 17:00,2012-09-30 08:00,2012-10-29 17:00,,2012-10-01 08:00,2012-10-30 17:00,,PT_Normal,,,,,FspJIzsG+Ey6gd1zWjW/lQ,,,,Y,0,0,,,2012-05-10 10:15,2012-05-10 13:47,admin,NotPrmUser
41,128426,3714,19668,794,1,0,N,N,N,CP_Drtn,TT_Task,DT_FixedDUR2,RV_OK,TK_NotStart,A1430,Fire alarm system installation,,8,0,240,0,0,0,240,0,0,0,,,,2012-10-01 08:00,2012-10-30 17:00,,2012-09-30 08:00,2012-10-29 17:00,2012-09-30 08:00,2012-10-29 17:00,2012-09-30 08:00,2012-10-29 17:00,,2012-10-01 08:00,2012-10-30 17:00,,PT_Normal,,,,,ZXgwSjavFkukTafzEI7D/w,,,,Y,0,0,,,2012-05-10 10:15,2012-05-10 13:47,admin,NotPrmUser
42,128427,3714,19668,794,1,0,N,N,N,CP_Drtn,TT_Task,DT_FixedDUR2,RV_OK,TK_NotStart,A1440,Generator erection,,16,8,112,0,0,0,112,0,0,0,,,,2012-10-17 08:00,2012-10-30 17:00,,2012-10-15 08:00,2012-10-28 17:00,2012-10-15 08:00,2012-10-28 17:00,2012-10-15 08:00,2012-10-28 17:00,,2012-10-17 08:00,2012-10-30 17:00,,PT_Normal,,,,,ET1MBOweiES/HlfecHfx6g,,,,N,0,0,,,2012-05-10 10:16,2012-05-10 13:46,admin,NotPrmUser
43,128428,3714,19668,794,1,0,N,N,N,CP_Drtn,TT_Task,DT_FixedDUR2,RV_OK,TK_NotStart,A1450,Ring main unit erection,,16,8,112,0,0,0,112,0,0,0,,,,2012-10-17 08:00,2012-10-30 17:00,,2012-10-15 08:00,2012-10-28 17:00,2012-10-15 08:00,2012-10-28 17:00,2012-10-15 08:00,2012-10-28 17:00,,2012-10-17 08:00,2012-10-30 17:00,,PT_Normal,,,,,54dpgCRhhkixj3O7lYU0Sg,,,,N,0,0,,,2012-05-10 10:16,2012-05-10 13:46,admin,NotPrmUser
44,128429,3714,19668,794,1,0,N,N,N,CP_Drtn,TT_Task,DT_FixedDUR2,RV_OK,TK_NotStart,A1460,Transformers erection,,16,8,112,0,0,0,112,0,0,0,,,,2012-10-17 08:00,2012-10-30 17:00,,2012-10-15 08:00,2012-10-28 17:00,2012-10-15 08:00,2012-10-28 17:00,2012-10-15 08:00,2012-10-28 17:00,,2012-10-17 08:00,2012-10-30 17:00,,PT_Normal,,,,,RW+6IiGRZEGVTEZt+t+opg,,,,N,0,0,,,2012-05-10 10:16,2012-05-10 13:46,admin,NotPrmUser
45,128430,3714,19668,794,1,0,N,N,N,CP_Drtn,TT_Task,DT_FixedDUR2,RV_OK,TK_NotStart,A1470,UPS & central system erection,,32,24,112,0,0,0,112,0,0,0,,,,2012-10-17 08:00,2012-10-30 17:00,,2012-10-13 08:00,2012-10-26 17:00,2012-10-13 08:00,2012-10-26 17:00,2012-10-13 08:00,2012-10-26 17:00,,2012-10-17 08:00,2012-10-30 17:00,,PT_Normal,,,,,mIfaMIqvtEKpK3wNO9uyOA,,,,N,0,0,,,2012-05-10 10:17,2012-05-10 13:23,admin,NotPrmUser
46,128431,3714,19668,794,1,0,N,N,N,CP_Drtn,TT_Task,DT_FixedDUR2,RV_OK,TK_NotStart,A1480,CCTV system installation,,16,8,240,0,0,0,240,0,0,0,,,,2012-10-01 08:00,2012-10-30 17:00,,2012-09-29 08:00,2012-10-28 17:00,2012-09-29 08:00,2012-10-28 17:00,2012-09-29 08:00,2012-10-28 17:00,,2012-10-01 08:00,2012-10-30 17:00,,PT_Normal,,,,,UnLa/9uYLUKNUz//Y55/hw,,,,N,0,0,,,2012-05-10 10:17,2012-05-10 13:46,admin,NotPrmUser
47,128432,3714,19668,794,1,0,N,N,N,CP_Drtn,TT_Task,DT_FixedDUR2,RV_OK,TK_NotStart,A1490,Builders work,,8,0,240,0,0,0,240,0,0,0,,,,2012-09-24 08:00,2012-10-23 17:00,,2012-09-23 08:00,2012-10-22 17:00,2012-09-23 08:00,2012-10-22 17:00,2012-09-23 08:00,2012-10-22 17:00,,2012-09-24 08:00,2012-10-23 17:00,,PT_Normal,,,,,gteNA4KwoEWHEO2pSFpv+w,,,,Y,0,0,,,2012-05-10 11:25,2012-05-10 13:47,NotPrmUser,NotPrmUser
48,128433,3714,19674,794,0,0,N,N,N,CP_Drtn,TT_FinMile,DT_FixedDrtn,RV_OK,TK_NotStart,A1500,Project handing over,,8,0,0,0,0,0,0,0,0,0,,,,2012-10-30 17:00,2012-10-30 17:00,,2012-10-29 17:00,2012-10-29 17:00,2012-10-29 17:00,2012-10-29 17:00,2012-10-29 17:00,2012-10-29 17:00,,2012-10-30 17:00,2012-10-30 17:00,,PT_Normal,,,,,0yDLnnbVuk++997iDObyGQ,,,,Y,0,0,,,2012-05-10 11:28,2012-05-10 13:47,NotPrmUser,NotPrmUser
49,128434,3714,19668,794,1,0,N,N,N,CP_Drtn,TT_Task,DT_FixedDUR2,RV_OK,TK_NotStart,A1510,Earthing & lightining protection systems,,104,96,112,0,0,0,112,0,0,0,,,,2012-10-17 08:00,2012-10-30 17:00,,2012-10-04 08:00,2012-10-17 17:00,2012-10-04 08:00,2012-10-17 17:00,2012-10-04 08:00,2012-10-17 17:00,,2012-10-17 08:00,2012-10-30 17:00,,PT_Normal,,,,,YEzHrPdfOU+7Fwdaa+md5g,,,,N,0,0,,,2012-05-10 11:29,2012-05-10 13:46,NotPrmUser,NotPrmUser
50,128718,3714,19760,794,1,0,N,N,N,CP_Drtn,TT_Task,DT_FixedDUR2,RV_OK,TK_NotStart,A1520,TESTING,,8,0,56,0,0,0,56,0,0,0,,,,2012-10-24 08:00,2012-10-30 17:00,,2012-10-23 08:00,2012-10-29 17:00,2012-10-23 08:00,2012-10-29 17:00,2012-10-23 08:00,2012-10-29 17:00,,2012-10-24 08:00,2012-10-30 17:00,,PT_Normal,,,,,kshNKBhVXEW8YRZsBBMPNw,,,,Y,0,0,,,2012-05-10 12:48,2012-05-10 13:47,NotPrmUser,NotPrmUser
51,128719,3714,19672,794,1,0,N,N,N,CP_Drtn,TT_Task,DT_FixedDUR2,RV_OK,TK_NotStart,A1530,Pipes & fitings installation,,408,0,240,0,0,0,240,0,0,0,,,,2012-08-05 08:00,2012-09-03 17:00,,2012-06-15 08:00,2012-07-14 17:00,2012-06-15 08:00,2012-07-14 17:00,2012-06-15 08:00,2012-07-14 17:00,,2012-08-05 08:00,2012-09-03 17:00,,PT_Normal,,,,,Pi34F0h/QEW0JMS6XEex5Q,,,,N,0,0,,,2012-05-10 12:56,2012-05-10 13:23,NotPrmUser,NotPrmUser
52,128720,3714,19672,794,1,0,N,N,N,CP_Drtn,TT_Task,DT_FixedDUR2,RV_OK,TK_NotStart,A1540,Floor drains & floor clean outs installations,,408,0,120,0,0,0,120,0,0,0,,,,2012-09-04 08:00,2012-09-18 17:00,,2012-07-15 08:00,2012-07-29 17:00,2012-07-15 08:00,2012-07-29 17:00,2012-07-15 08:00,2012-07-29 17:00,,2012-09-04 08:00,2012-09-18 17:00,,PT_Normal,,,,,b6O7NgRx2U6otDoaTJv/Jg,,,,N,0,0,,,2012-05-10 12:56,2012-05-10 13:23,NotPrmUser,NotPrmUser
53,128721,3714,19672,794,1,0,N,N,N,CP_Drtn,TT_Task,DT_FixedDUR2,RV_OK,TK_NotStart,A1550,Sanitary fixtures installations,,408,0,160,0,0,0,160,0,0,0,,,,2012-09-19 08:00,2012-10-08 17:00,,2012-07-30 08:00,2012-08-18 17:00,2012-07-30 08:00,2012-08-18 17:00,2012-07-30 08:00,2012-08-18 17:00,,2012-09-19 08:00,2012-10-08 17:00,,PT_Normal,,,,,nqYMwo2iA0O9Nmyy97xJiw,,,,N,0,0,,,2012-05-10 12:56,2012-05-10 13:23,NotPrmUser,NotPrmUser
54,128722,3714,19672,794,1,0,N,N,N,CP_Drtn,TT_Task,DT_FixedDUR2,RV_OK,TK_NotStart,A1560,Heaters & equipments installations,,408,400,120,0,0,0,120,0,0,0,,,,2012-10-09 08:00,2012-10-23 17:00,,2012-08-19 08:00,2012-09-02 17:00,2012-08-19 08:00,2012-09-02 17:00,2012-08-19 08:00,2012-09-02 17:00,,2012-10-09 08:00,2012-10-23 17:00,,PT_Normal,,,,,JIy3ZM+ij0enzAMZG05zOA,,,,N,0,0,,,2012-05-10 13:03,2012-05-10 13:23,NotPrmUser,NotPrmUser
55,128723,3714,19671,794,1,0,N,N,N,CP_Drtn,TT_Task,DT_FixedDUR2,RV_OK,TK_NotStart,A1570,Galvanized duct installation,,104,0,240,0,0,0,240,0,0,0,,,,2012-06-28 08:00,2012-07-27 17:00,,2012-06-15 08:00,2012-07-14 17:00,2012-06-15 08:00,2012-07-14 17:00,2012-06-15 08:00,2012-07-14 17:00,,2012-06-28 08:00,2012-07-27 17:00,,PT_Normal,,,,,sKK5867KrkCWxHfKHWAY3A,,,,N,0,0,,,2012-05-10 13:06,2012-05-10 13:23,NotPrmUser,NotPrmUser
56,128724,3714,19671,794,1,0,N,N,N,CP_Drtn,TT_Task,DT_FixedDUR2,RV_OK,TK_NotStart,A1580,Pipe and valves installation,,104,0,240,0,0,0,240,0,0,0,,,,2012-07-28 08:00,2012-08-26 17:00,,2012-07-15 08:00,2012-08-13 17:00,2012-07-15 08:00,2012-08-13 17:00,2012-07-15 08:00,2012-08-13 17:00,,2012-07-28 08:00,2012-08-26 17:00,,PT_Normal,,,,,oC1DxjnuI0Oly6ijKOXObg,,,,N,0,0,,,2012-05-10 13:12,2012-05-10 13:23,NotPrmUser,NotPrmUser
57,128725,3714,19671,794,1,0,N,N,N,CP_Drtn,TT_Task,DT_FixedDUR2,RV_OK,TK_NotStart,A1590,"Pipes , duct insulation & cladding",,104,0,160,0,0,0,160,0,0,0,,,,2012-08-27 08:00,2012-09-15 17:00,,2012-08-14 08:00,2012-09-02 17:00,2012-08-14 08:00,2012-09-02 17:00,2012-08-14 08:00,2012-09-02 17:00,,2012-08-27 08:00,2012-09-15 17:00,,PT_Normal,,,,,95icb5/uDU6MHDoT3a5PWA,,,,N,0,0,,,2012-05-10 13:13,2012-05-10 13:23,NotPrmUser,NotPrmUser
58,128726,3714,19671,794,1,0,N,N,N,CP_Drtn,TT_Task,DT_FixedDUR2,RV_OK,TK_NotStart,A1600,Split units & equipments erection,,104,96,80,0,0,0,80,0,0,0,,,,2012-10-14 08:00,2012-10-23 17:00,,2012-10-01 08:00,2012-10-10 17:00,2012-10-01 08:00,2012-10-10 17:00,2012-10-01 08:00,2012-10-10 17:00,,2012-10-14 08:00,2012-10-23 17:00,,PT_Normal,,,,,02ZY0pSQpEiQJhy8euA05Q,,,,N,0,0,,,2012-05-10 13:13,2012-05-10 13:23,NotPrmUser,NotPrmUser
59,128727,3714,19671,794,1,0,N,N,N,CP_Drtn,TT_Task,DT_FixedDUR2,RV_OK,TK_NotStart,A1610,Air outlets installation,,104,0,112,0,0,0,112,0,0,0,,,,2012-09-16 08:00,2012-09-29 17:00,,2012-09-03 08:00,2012-09-16 17:00,2012-09-03 08:00,2012-09-16 17:00,2012-09-03 08:00,2012-09-16 17:00,,2012-09-16 08:00,2012-09-29 17:00,,PT_Normal,,,,,PTRFGW8ZWUCxk/zXL/NcaA,,,,N,0,0,,,2012-05-10 13:16,2012-05-10 13:23,NotPrmUser,NotPrmUser
60,128728,3714,19671,794,1,0,N,N,N,CP_Drtn,TT_Task,DT_FixedDUR2,RV_OK,TK_NotStart,A1620,Fans erection,,104,0,112,0,0,0,112,0,0,0,,,,2012-09-30 08:00,2012-10-13 17:00,,2012-09-17 08:00,2012-09-30 17:00,2012-09-17 08:00,2012-09-30 17:00,2012-09-17 08:00,2012-09-30 17:00,,2012-09-30 08:00,2012-10-13 17:00,,PT_Normal,,,,,Py3VJh2ry0KqfiibxHxFbQ,,,,N,0,0,,,2012-05-10 13:18,2012-05-10 13:23,NotPrmUser,NotPrmUser
61,128729,3714,19760,794,1,0,N,N,N,CP_Drtn,TT_Task,DT_FixedDUR2,RV_OK,TK_NotStart,A1630,Start up & commissioning,,8,0,32,0,0,0,32,0,0,0,,,,2012-10-27 08:00,2012-10-30 17:00,,2012-10-26 08:00,2012-10-29 17:00,2012-10-26 08:00,2012-10-29 17:00,2012-10-26 08:00,2012-10-29 17:00,,2012-10-27 08:00,2012-10-30 17:00,,PT_Normal,,,,,UhF2/gXCIkyctwhmaq5GEQ,,,,Y,0,0,,,2012-05-10 13:22,2012-05-10 13:47,NotPrmUser,NotPrmUser
