,task_id,proj_id,wbs_id,clndr_id,est_wt,phys_complete_pct,rev_fdbk_flag,lock_plan_flag,auto_compute_act_flag,complete_pct_type,task_type,duration_type,review_type,status_code,task_code,task_name,rsrc_id,total_float_hr_cnt,free_float_hr_cnt,remain_drtn_hr_cnt,act_work_qty,remain_work_qty,target_work_qty,target_drtn_hr_cnt,target_equip_qty,act_equip_qty,remain_equip_qty,cstr_date,act_start_date,act_end_date,late_start_date,late_end_date,expect_end_date,early_start_date,early_end_date,restart_date,reend_date,target_start_date,target_end_date,review_end_date,rem_late_start_date,rem_late_end_date,cstr_type,priority_type,suspend_date,resume_date,float_path,float_path_order,guid,tmpl_guid,cstr_date2,cstr_type2,driving_path_flag,act_this_per_work_qty,act_this_per_equip_qty,external_early_start_date,external_late_end_date,create_date,update_date,create_user,update_user,old_restart_date,old_reend_date,old_remain_drtn_hr_cnt
0,83888,766,10682,841,0,0,N,N,N,CP_Drtn,TT_Mile,DT_FixedDrtn,RV_OK,TK_NotStart,A1000,Receiving IFC drawings,,0,0,0,0,0,0,0,0,0,0,,,,2010-07-10 08:00,2010-07-10 08:00,,2010-07-10 08:00,2010-07-10 08:00,2010-07-10 08:00,2010-07-10 08:00,2010-07-10 08:00,2010-07-10 08:00,,2010-07-10 08:00,2010-07-10 08:00,,PT_Normal,,,,,B0mNQ6WdCEC/nkxtk6wHfQ,,,,Y,0,0,,,2010-06-29 15:36,2010-07-06 15:13,admin,admin,,,
1,83889,766,10682,841,0,0,N,N,N,CP_Drtn,TT_Mile,DT_FixedDrtn,RV_OK,TK_NotStart,A1010,Receiving advance payement,,0,0,0,0,0,0,0,0,0,0,,,,2010-07-10 08:00,2010-07-10 08:00,,2010-07-10 08:00,2010-07-10 08:00,2010-07-10 08:00,2010-07-10 08:00,2010-07-10 08:00,2010-07-10 08:00,,2010-07-10 08:00,2010-07-10 08:00,,PT_Normal,,,,,tsw7qGchI0Koh7M2tcreRg,,,,Y,0,0,,,2010-06-29 15:36,2010-07-06 15:13,admin,admin,,,
2,83890,766,10682,841,0,0,N,N,N,CP_Drtn,TT_Mile,DT_FixedDrtn,RV_OK,TK_NotStart,A1020,start construction phase,,0,0,0,0,0,0,0,0,0,0,,,,2010-07-19 08:00,2010-07-19 08:00,,2010-07-19 08:00,2010-07-19 08:00,2010-07-19 08:00,2010-07-19 08:00,2010-07-19 08:00,2010-07-19 08:00,,2010-07-19 08:00,2010-07-19 08:00,,PT_Normal,,,,,EZkCZjLIAkG1J2CzGRknsw,,,,Y,0,0,,,2010-06-29 15:36,2010-07-06 15:13,admin,admin,,,
3,83891,766,10682,841,0,0,N,N,N,CP_Drtn,TT_FinMile,DT_FixedDrtn,RV_OK,TK_NotStart,A1030,finish construction,,0,0,0,0,0,0,0,0,0,0,,,,2011-04-10 16:00,2011-04-10 16:00,,2011-04-10 16:00,2011-04-10 16:00,2011-04-10 16:00,2011-04-10 16:00,2011-04-10 16:00,2011-04-10 16:00,,2011-04-10 16:00,2011-04-10 16:00,,PT_Normal,,,,,CPdrc8BafE+CXTEJ9ETvwg,,,,Y,0,0,,,2010-06-29 15:36,2010-07-06 15:13,admin,admin,,,
4,83963,766,10685,841,1,0,N,N,N,CP_Drtn,TT_Task,DT_FixedDUR2,RV_OK,TK_NotStart,A1330,columns Formwork & Rft. Part 2,,0,0,80,0,0,0,80,0,0,0,,,,2010-07-19 08:00,2010-07-29 16:00,,2010-07-19 08:00,2010-07-29 16:00,2010-07-19 08:00,2010-07-29 16:00,2010-07-19 08:00,2010-07-29 16:00,,2010-07-19 08:00,2010-07-29 16:00,,PT_Normal,,,,,+upb8ujqUEWndAiJRa1e1g,,,,Y,0,0,,,2010-06-30 11:56,2010-07-06 15:13,admin,admin,,,
5,83964,766,10685,841,1,0,N,N,N,CP_Drtn,TT_Task,DT_FixedDUR2,RV_OK,TK_NotStart,A1340,Columns Pouring Part2,,0,0,8,0,0,0,8,0,0,0,,,,2010-07-31 08:00,2010-07-31 16:00,,2010-07-31 08:00,2010-07-31 16:00,2010-07-31 08:00,2010-07-31 16:00,2010-07-31 08:00,2010-07-31 16:00,,2010-07-31 08:00,2010-07-31 16:00,,PT_Normal,,,,,4at5/9Mk+EKibwkfkLZYlA,,,,Y,0,0,,,2010-06-30 11:56,2010-07-06 15:13,admin,admin,,,
6,83965,766,10685,841,1,0,N,N,N,CP_Drtn,TT_Task,DT_FixedDUR2,RV_OK,TK_NotStart,A1350,Slab Formwork & Rft. Part1,,280,0,80,0,0,0,80,0,0,0,,,,2010-08-29 08:00,2010-09-11 16:00,,2010-07-19 08:00,2010-07-29 16:00,2010-07-19 08:00,2010-07-29 16:00,2010-07-19 08:00,2010-07-29 16:00,,2010-08-29 08:00,2010-09-11 16:00,,PT_Normal,,,,,ykmdjJ+gj0q48VGyoljOMQ,,,,N,0,0,,,2010-06-30 12:14,2010-07-06 15:13,admin,admin,,,
7,83966,766,10685,841,1,0,N,N,N,CP_Drtn,TT_Task,DT_FixedDUR2,RV_OK,TK_NotStart,A1360,Slab Pouring Part1,,280,0,8,0,0,0,8,0,0,0,,,,2010-09-12 08:00,2010-09-12 16:00,,2010-07-31 08:00,2010-07-31 16:00,2010-07-31 08:00,2010-07-31 16:00,2010-07-31 08:00,2010-07-31 16:00,,2010-09-12 08:00,2010-09-12 16:00,,PT_Normal,,,,,AJMmie85YEKxbB+uFg3/wQ,,,,N,0,0,,,2010-06-30 12:14,2010-07-06 15:13,admin,admin,,,
8,83967,766,10685,841,1,0,N,N,N,CP_Drtn,TT_Task,DT_FixedDUR2,RV_OK,TK_NotStart,A1370,Slab Formwork & Rft. Part2,,0,0,88,0,0,0,88,0,0,0,,,,2010-08-03 08:00,2010-08-15 16:00,,2010-08-03 08:00,2010-08-15 16:00,2010-08-03 08:00,2010-08-15 16:00,2010-08-03 08:00,2010-08-15 16:00,,2010-08-03 08:00,2010-08-15 16:00,,PT_Normal,,,,,sdv3Sx5AbUmRY/UPtXf7dg,,,,Y,0,0,,,2010-06-30 12:14,2010-07-06 15:13,admin,admin,,,
9,83968,766,10685,841,1,0,N,N,N,CP_Drtn,TT_Task,DT_FixedDUR2,RV_OK,TK_NotStart,A1380,Slab Pouring  Part2,,0,0,8,0,0,0,8,0,0,0,,,,2010-08-16 08:00,2010-08-16 16:00,,2010-08-16 08:00,2010-08-16 16:00,2010-08-16 08:00,2010-08-16 16:00,2010-08-16 08:00,2010-08-16 16:00,,2010-08-16 08:00,2010-08-16 16:00,,PT_Normal,,,,,meh/k+X9ZUW8RX3mxzp0pA,,,,Y,0,0,,,2010-06-30 12:14,2010-07-06 15:13,admin,admin,,,
10,84010,766,10686,841,1,0,N,N,N,CP_Drtn,TT_Task,DT_FixedDUR2,RV_OK,TK_NotStart,A1390,columns Formwork & Rft. Part1,,280,0,80,0,0,0,80,0,0,0,,,,2010-09-15 08:00,2010-09-26 16:00,,2010-08-03 08:00,2010-08-14 16:00,2010-08-03 08:00,2010-08-14 16:00,2010-08-03 08:00,2010-08-14 16:00,,2010-09-15 08:00,2010-09-26 16:00,,PT_Normal,,,,,/x5fSEZlc0C9tJhTF68FTw,aoAXnv9EYkKsSuO3clPmlw,,,N,0,0,,,2010-06-30 14:41,2010-07-06 15:13,admin,admin,,,
11,84011,766,10686,841,1,0,N,N,N,CP_Drtn,TT_Task,DT_FixedDUR2,RV_OK,TK_NotStart,A1400,Columns Pouring Part1,,280,0,8,0,0,0,8,0,0,0,,,,2010-09-27 08:00,2010-09-27 16:00,,2010-08-15 08:00,2010-08-15 16:00,2010-08-15 08:00,2010-08-15 16:00,2010-08-15 08:00,2010-08-15 16:00,,2010-09-27 08:00,2010-09-27 16:00,,PT_Normal,,,,,xV4aq7Ex/0eCYYoEN0PoJA,6Yuzhj7HgEaDUMY89kX9nQ,,,N,0,0,,,2010-06-30 14:41,2010-07-06 15:13,admin,admin,,,
12,84012,766,10686,841,1,0,N,N,N,CP_Drtn,TT_Task,DT_FixedDUR2,RV_OK,TK_NotStart,A1410,columns Formwork & Rft. Part 2,,0,0,80,0,0,0,80,0,0,0,,,,2010-08-19 08:00,2010-08-30 16:00,,2010-08-19 08:00,2010-08-30 16:00,2010-08-19 08:00,2010-08-30 16:00,2010-08-19 08:00,2010-08-30 16:00,,2010-08-19 08:00,2010-08-30 16:00,,PT_Normal,,,,,VqpN1W0D4UaVAxCR5zNXyg,+upb8ujqUEWndAiJRa1e1g,,,Y,0,0,,,2010-06-30 14:41,2010-07-06 15:13,admin,admin,,,
13,84013,766,10686,841,1,0,N,N,N,CP_Drtn,TT_Task,DT_FixedDUR2,RV_OK,TK_NotStart,A1440,Columns Pouring Part2,,0,0,8,0,0,0,8,0,0,0,,,,2010-08-31 08:00,2010-08-31 16:00,,2010-08-31 08:00,2010-08-31 16:00,2010-08-31 08:00,2010-08-31 16:00,2010-08-31 08:00,2010-08-31 16:00,,2010-08-31 08:00,2010-08-31 16:00,,PT_Normal,,,,,AmaZuFlK+0KH4hBqhLHUsQ,4at5/9Mk+EKibwkfkLZYlA,,,Y,0,0,,,2010-06-30 14:41,2010-07-06 15:13,admin,admin,,,
14,84014,766,10686,841,1,0,N,N,N,CP_Drtn,TT_Task,DT_FixedDUR2,RV_OK,TK_NotStart,A1420,Slab Formwork & Rft. Part1,,280,0,112,0,0,0,112,0,0,0,,,,2010-09-30 08:00,2010-10-16 16:00,,2010-08-18 08:00,2010-09-02 16:00,2010-08-18 08:00,2010-09-02 16:00,2010-08-18 08:00,2010-09-02 16:00,,2010-09-30 08:00,2010-10-16 16:00,,PT_Normal,,,,,lvOMnlnPk0Ooy0fr2MJ2Mg,ykmdjJ+gj0q48VGyoljOMQ,,,N,0,0,,,2010-06-30 14:41,2010-07-06 15:13,admin,admin,,,
15,84015,766,10686,841,1,0,N,N,N,CP_Drtn,TT_Task,DT_FixedDUR2,RV_OK,TK_NotStart,A1450,Slab Pouring Part1,,280,0,8,0,0,0,8,0,0,0,,,,2010-10-17 08:00,2010-10-17 16:00,,2010-09-04 08:00,2010-09-04 16:00,2010-09-04 08:00,2010-09-04 16:00,2010-09-04 08:00,2010-09-04 16:00,,2010-10-17 08:00,2010-10-17 16:00,,PT_Normal,,,,,hmtF0hc3hEatyjJRz+8ufw,AJMmie85YEKxbB+uFg3/wQ,,,N,0,0,,,2010-06-30 14:41,2010-07-06 15:13,admin,admin,,,
16,84016,766,10686,841,1,0,N,N,N,CP_Drtn,TT_Task,DT_FixedDUR2,RV_OK,TK_NotStart,A1460,Slab Formwork & Rft. Part2,,0,0,112,0,0,0,112,0,0,0,,,,2010-09-04 08:00,2010-09-21 16:00,,2010-09-04 08:00,2010-09-21 16:00,2010-09-04 08:00,2010-09-21 16:00,2010-09-04 08:00,2010-09-21 16:00,,2010-09-04 08:00,2010-09-21 16:00,,PT_Normal,,,,,A43YPS70iUGK46o3ZPKk8A,sdv3Sx5AbUmRY/UPtXf7dg,,,Y,0,0,,,2010-06-30 14:41,2010-07-06 15:13,admin,admin,,,
17,84017,766,10686,841,1,0,N,N,N,CP_Drtn,TT_Task,DT_FixedDUR2,RV_OK,TK_NotStart,A1480,Slab Pouring  Part2,,0,0,8,0,0,0,8,0,0,0,,,,2010-09-22 08:00,2010-09-22 16:00,,2010-09-22 08:00,2010-09-22 16:00,2010-09-22 08:00,2010-09-22 16:00,2010-09-22 08:00,2010-09-22 16:00,,2010-09-22 08:00,2010-09-22 16:00,,PT_Normal,,,,,mxx9/U4A/EmS8rTQynZbfw,meh/k+X9ZUW8RX3mxzp0pA,,,Y,0,0,,,2010-06-30 14:41,2010-07-06 15:13,admin,admin,,,
18,84020,766,10687,841,1,0,N,N,N,CP_Drtn,TT_Task,DT_FixedDUR2,RV_OK,TK_NotStart,A1490,columns Formwork & Rft. Part1,,280,0,80,0,0,0,80,0,0,0,,,,2010-10-20 08:00,2010-10-31 16:00,,2010-09-07 08:00,2010-09-20 16:00,2010-09-07 08:00,2010-09-20 16:00,2010-09-07 08:00,2010-09-20 16:00,,2010-10-20 08:00,2010-10-31 16:00,,PT_Normal,,,,,iMhupRz+X0292H/tyXjZAg,/x5fSEZlc0C9tJhTF68FTw,,,N,0,0,,,2010-06-30 14:42,2010-07-06 15:13,admin,admin,,,
19,84021,766,10687,841,1,0,N,N,N,CP_Drtn,TT_Task,DT_FixedDUR2,RV_OK,TK_NotStart,A1500,Columns Pouring Part1,,280,0,8,0,0,0,8,0,0,0,,,,2010-11-01 08:00,2010-11-01 16:00,,2010-09-21 08:00,2010-09-21 16:00,2010-09-21 08:00,2010-09-21 16:00,2010-09-21 08:00,2010-09-21 16:00,,2010-11-01 08:00,2010-11-01 16:00,,PT_Normal,,,,,p74IxpBuX0u/4Mv9REjhHA,xV4aq7Ex/0eCYYoEN0PoJA,,,N,0,0,,,2010-06-30 14:42,2010-07-06 15:13,admin,admin,,,
20,84022,766,10687,841,1,0,N,N,N,CP_Drtn,TT_Task,DT_FixedDUR2,RV_OK,TK_NotStart,A1510,columns Formwork & Rft. Part 2,,0,0,80,0,0,0,80,0,0,0,,,,2010-09-26 08:00,2010-10-06 16:00,,2010-09-26 08:00,2010-10-06 16:00,2010-09-26 08:00,2010-10-06 16:00,2010-09-26 08:00,2010-10-06 16:00,,2010-09-26 08:00,2010-10-06 16:00,,PT_Normal,,,,,9ts6LpkJaEqZDZKV/6dzfg,VqpN1W0D4UaVAxCR5zNXyg,,,Y,0,0,,,2010-06-30 14:42,2010-07-06 15:13,admin,admin,,,
21,84023,766,10687,841,1,0,N,N,N,CP_Drtn,TT_Task,DT_FixedDUR2,RV_OK,TK_NotStart,A1540,Columns Pouring Part2,,0,0,8,0,0,0,8,0,0,0,,,,2010-10-07 08:00,2010-10-07 16:00,,2010-10-07 08:00,2010-10-07 16:00,2010-10-07 08:00,2010-10-07 16:00,2010-10-07 08:00,2010-10-07 16:00,,2010-10-07 08:00,2010-10-07 16:00,,PT_Normal,,,,,fXBUBB540E2jsKVZfDKecw,AmaZuFlK+0KH4hBqhLHUsQ,,,Y,0,0,,,2010-06-30 14:42,2010-07-06 15:13,admin,admin,,,
22,84024,766,10687,841,1,0,N,N,N,CP_Drtn,TT_Task,DT_FixedDUR2,RV_OK,TK_NotStart,A1520,Slab Formwork & Rft. Part1,,280,0,112,0,0,0,112,0,0,0,,,,2010-11-04 08:00,2010-11-24 16:00,,2010-09-25 08:00,2010-10-10 16:00,2010-09-25 08:00,2010-10-10 16:00,2010-09-25 08:00,2010-10-10 16:00,,2010-11-04 08:00,2010-11-24 16:00,,PT_Normal,,,,,6eR2PC6WoEW6sxiHIAeS8A,lvOMnlnPk0Ooy0fr2MJ2Mg,,,N,0,0,,,2010-06-30 14:42,2010-07-06 15:13,admin,admin,,,
23,84025,766,10687,841,1,0,N,N,N,CP_Drtn,TT_Task,DT_FixedDUR2,RV_OK,TK_NotStart,A1550,Slab Pouring Part1,,280,0,8,0,0,0,8,0,0,0,,,,2010-11-25 08:00,2010-11-25 16:00,,2010-10-11 08:00,2010-10-11 16:00,2010-10-11 08:00,2010-10-11 16:00,2010-10-11 08:00,2010-10-11 16:00,,2010-11-25 08:00,2010-11-25 16:00,,PT_Normal,,,,,64YE9/ad1kmNb+Ii3rcljA,hmtF0hc3hEatyjJRz+8ufw,,,N,0,0,,,2010-06-30 14:42,2010-07-06 15:13,admin,admin,,,
24,84026,766,10687,841,1,0,N,N,N,CP_Drtn,TT_Task,DT_FixedDUR2,RV_OK,TK_NotStart,A1560,Slab Formwork & Rft. Part2,,0,0,112,0,0,0,112,0,0,0,,,,2010-10-11 08:00,2010-10-26 16:00,,2010-10-11 08:00,2010-10-26 16:00,2010-10-11 08:00,2010-10-26 16:00,2010-10-11 08:00,2010-10-26 16:00,,2010-10-11 08:00,2010-10-26 16:00,,PT_Normal,,,,,IxehTJgBZU2KT+Ed8xbfaQ,A43YPS70iUGK46o3ZPKk8A,,,Y,0,0,,,2010-06-30 14:42,2010-07-06 15:13,admin,admin,,,
25,84027,766,10687,841,1,0,N,N,N,CP_Drtn,TT_Task,DT_FixedDUR2,RV_OK,TK_NotStart,A1580,Slab Pouring  Part2,,0,0,8,0,0,0,8,0,0,0,,,,2010-10-27 08:00,2010-10-27 16:00,,2010-10-27 08:00,2010-10-27 16:00,2010-10-27 08:00,2010-10-27 16:00,2010-10-27 08:00,2010-10-27 16:00,,2010-10-27 08:00,2010-10-27 16:00,,PT_Normal,,,,,Z2YcwPL6/UyCdQue5jiKag,mxx9/U4A/EmS8rTQynZbfw,,,Y,0,0,,,2010-06-30 14:42,2010-07-06 15:13,admin,admin,,,
26,84030,766,10688,841,1,0,N,N,N,CP_Drtn,TT_Task,DT_FixedDUR2,RV_OK,TK_NotStart,A1590,columns Formwork & Rft. Part1,,280,0,80,0,0,0,80,0,0,0,,,,2010-11-29 08:00,2010-12-09 16:00,,2010-10-14 08:00,2010-10-25 16:00,2010-10-14 08:00,2010-10-25 16:00,2010-10-14 08:00,2010-10-25 16:00,,2010-11-29 08:00,2010-12-09 16:00,,PT_Normal,,,,,HuIKnccS3UCxOUloSEu4Lg,iMhupRz+X0292H/tyXjZAg,,,N,0,0,,,2010-06-30 14:43,2010-07-06 15:13,admin,admin,,,
27,84031,766,10688,841,1,0,N,N,N,CP_Drtn,TT_Task,DT_FixedDUR2,RV_OK,TK_NotStart,A1600,Columns Pouring Part1,,280,0,8,0,0,0,8,0,0,0,,,,2010-12-11 08:00,2010-12-11 16:00,,2010-10-26 08:00,2010-10-26 16:00,2010-10-26 08:00,2010-10-26 16:00,2010-10-26 08:00,2010-10-26 16:00,,2010-12-11 08:00,2010-12-11 16:00,,PT_Normal,,,,,vXHor1I8KEau3sA0cAhKZg,p74IxpBuX0u/4Mv9REjhHA,,,N,0,0,,,2010-06-30 14:43,2010-07-06 15:13,admin,admin,,,
28,84032,766,10688,841,1,0,N,N,N,CP_Drtn,TT_Task,DT_FixedDUR2,RV_OK,TK_NotStart,A1610,columns Formwork & Rft. Part 2,,0,0,80,0,0,0,80,0,0,0,,,,2010-10-31 08:00,2010-11-10 16:00,,2010-10-31 08:00,2010-11-10 16:00,2010-10-31 08:00,2010-11-10 16:00,2010-10-31 08:00,2010-11-10 16:00,,2010-10-31 08:00,2010-11-10 16:00,,PT_Normal,,,,,KOrRuN+ObEi0WYPUV+/BJw,9ts6LpkJaEqZDZKV/6dzfg,,,Y,0,0,,,2010-06-30 14:43,2010-07-06 15:13,admin,admin,,,
29,84033,766,10688,841,1,0,N,N,N,CP_Drtn,TT_Task,DT_FixedDUR2,RV_OK,TK_NotStart,A1640,Columns Pouring Part2,,0,0,8,0,0,0,8,0,0,0,,,,2010-11-11 08:00,2010-11-11 16:00,,2010-11-11 08:00,2010-11-11 16:00,2010-11-11 08:00,2010-11-11 16:00,2010-11-11 08:00,2010-11-11 16:00,,2010-11-11 08:00,2010-11-11 16:00,,PT_Normal,,,,,WTsa+FtXFEC8760CrmliRA,fXBUBB540E2jsKVZfDKecw,,,Y,0,0,,,2010-06-30 14:43,2010-07-06 15:13,admin,admin,,,
30,84034,766,10688,841,1,0,N,N,N,CP_Drtn,TT_Task,DT_FixedDUR2,RV_OK,TK_NotStart,A1620,Slab Formwork & Rft. Part1,,280,0,112,0,0,0,112,0,0,0,,,,2010-12-14 08:00,2010-12-29 16:00,,2010-10-30 08:00,2010-11-14 16:00,2010-10-30 08:00,2010-11-14 16:00,2010-10-30 08:00,2010-11-14 16:00,,2010-12-14 08:00,2010-12-29 16:00,,PT_Normal,,,,,IgOclDblDUmy9fZwKSek2A,6eR2PC6WoEW6sxiHIAeS8A,,,N,0,0,,,2010-06-30 14:43,2010-07-06 15:13,admin,admin,,,
31,84035,766,10688,841,1,0,N,N,N,CP_Drtn,TT_Task,DT_FixedDUR2,RV_OK,TK_NotStart,A1650,Slab Pouring Part1,,280,0,8,0,0,0,8,0,0,0,,,,2010-12-30 08:00,2010-12-30 16:00,,2010-11-20 08:00,2010-11-20 16:00,2010-11-20 08:00,2010-11-20 16:00,2010-11-20 08:00,2010-11-20 16:00,,2010-12-30 08:00,2010-12-30 16:00,,PT_Normal,,,,,01/dLzVsUEis7X/UshZkwg,64YE9/ad1kmNb+Ii3rcljA,,,N,0,0,,,2010-06-30 14:43,2010-07-06 15:13,admin,admin,,,
32,84036,766,10688,841,1,0,N,N,N,CP_Drtn,TT_Task,DT_FixedDUR2,RV_OK,TK_NotStart,A1660,Slab Formwork & Rft. Part2,,0,0,112,0,0,0,112,0,0,0,,,,2010-11-20 08:00,2010-12-05 16:00,,2010-11-20 08:00,2010-12-05 16:00,2010-11-20 08:00,2010-12-05 16:00,2010-11-20 08:00,2010-12-05 16:00,,2010-11-20 08:00,2010-12-05 16:00,,PT_Normal,,,,,KXXm8hwwOUKK16E2vPSSQQ,IxehTJgBZU2KT+Ed8xbfaQ,,,Y,0,0,,,2010-06-30 14:43,2010-07-06 15:13,admin,admin,,,
33,84037,766,10688,841,1,0,N,N,N,CP_Drtn,TT_Task,DT_FixedDUR2,RV_OK,TK_NotStart,A1680,Slab Pouring  Part2,,0,0,8,0,0,0,8,0,0,0,,,,2010-12-06 08:00,2010-12-06 16:00,,2010-12-06 08:00,2010-12-06 16:00,2010-12-06 08:00,2010-12-06 16:00,2010-12-06 08:00,2010-12-06 16:00,,2010-12-06 08:00,2010-12-06 16:00,,PT_Normal,,,,,tmikWwjb/ECDV8SUAX2dog,Z2YcwPL6/UyCdQue5jiKag,,,Y,0,0,,,2010-06-30 14:43,2010-07-06 15:13,admin,admin,,,
34,84040,766,10689,841,1,0,N,N,N,CP_Drtn,TT_Task,DT_FixedDUR2,RV_OK,TK_NotStart,A1690,columns Formwork & Rft. Part1,,280,0,80,0,0,0,80,0,0,0,,,,2011-01-03 08:00,2011-01-13 16:00,,2010-11-23 08:00,2010-12-04 16:00,2010-11-23 08:00,2010-12-04 16:00,2010-11-23 08:00,2010-12-04 16:00,,2011-01-03 08:00,2011-01-13 16:00,,PT_Normal,,,,,5khGsxmswkqagHXnVUbl9w,HuIKnccS3UCxOUloSEu4Lg,,,N,0,0,,,2010-06-30 14:44,2010-07-06 15:13,admin,admin,,,
35,84041,766,10689,841,1,0,N,N,N,CP_Drtn,TT_Task,DT_FixedDUR2,RV_OK,TK_NotStart,A1700,Columns Pouring Part1,,280,0,8,0,0,0,8,0,0,0,,,,2011-01-15 08:00,2011-01-15 16:00,,2010-12-05 08:00,2010-12-05 16:00,2010-12-05 08:00,2010-12-05 16:00,2010-12-05 08:00,2010-12-05 16:00,,2011-01-15 08:00,2011-01-15 16:00,,PT_Normal,,,,,zgS4yaeqI0mbmbatp3uSFg,vXHor1I8KEau3sA0cAhKZg,,,N,0,0,,,2010-06-30 14:44,2010-07-06 15:13,admin,admin,,,
36,84042,766,10689,841,1,0,N,N,N,CP_Drtn,TT_Task,DT_FixedDUR2,RV_OK,TK_NotStart,A1710,columns Formwork & Rft. Part 2,,0,0,80,0,0,0,80,0,0,0,,,,2010-12-09 08:00,2010-12-20 16:00,,2010-12-09 08:00,2010-12-20 16:00,2010-12-09 08:00,2010-12-20 16:00,2010-12-09 08:00,2010-12-20 16:00,,2010-12-09 08:00,2010-12-20 16:00,,PT_Normal,,,,,8XTGd4T3TEujiv7f8lrDFw,KOrRuN+ObEi0WYPUV+/BJw,,,Y,0,0,,,2010-06-30 14:44,2010-07-06 15:13,admin,admin,,,
37,84043,766,10689,841,1,0,N,N,N,CP_Drtn,TT_Task,DT_FixedDUR2,RV_OK,TK_NotStart,A1740,Columns Pouring Part2,,0,0,8,0,0,0,8,0,0,0,,,,2010-12-21 08:00,2010-12-21 16:00,,2010-12-21 08:00,2010-12-21 16:00,2010-12-21 08:00,2010-12-21 16:00,2010-12-21 08:00,2010-12-21 16:00,,2010-12-21 08:00,2010-12-21 16:00,,PT_Normal,,,,,TJthZLGlAUSbXWMJENLkzw,WTsa+FtXFEC8760CrmliRA,,,Y,0,0,,,2010-06-30 14:44,2010-07-06 15:13,admin,admin,,,
38,84044,766,10689,841,1,0,N,N,N,CP_Drtn,TT_Task,DT_FixedDUR2,RV_OK,TK_NotStart,A1720,Slab Formwork & Rft. Part1,,280,0,112,0,0,0,112,0,0,0,,,,2011-01-18 08:00,2011-02-02 16:00,,2010-12-08 08:00,2010-12-23 16:00,2010-12-08 08:00,2010-12-23 16:00,2010-12-08 08:00,2010-12-23 16:00,,2011-01-18 08:00,2011-02-02 16:00,,PT_Normal,,,,,9iBqN33cakiuBqZZCbeGzA,IgOclDblDUmy9fZwKSek2A,,,N,0,0,,,2010-06-30 14:44,2010-07-06 15:13,admin,admin,,,
39,84045,766,10689,841,1,0,N,N,N,CP_Drtn,TT_Task,DT_FixedDUR2,RV_OK,TK_NotStart,A1750,Slab Pouring Part1,,280,0,8,0,0,0,8,0,0,0,,,,2011-02-03 08:00,2011-02-03 16:00,,2010-12-25 08:00,2010-12-25 16:00,2010-12-25 08:00,2010-12-25 16:00,2010-12-25 08:00,2010-12-25 16:00,,2011-02-03 08:00,2011-02-03 16:00,,PT_Normal,,,,,jP3utwV5BkWLerN1aGYHUw,01/dLzVsUEis7X/UshZkwg,,,N,0,0,,,2010-06-30 14:44,2010-07-06 15:13,admin,admin,,,
40,84046,766,10689,841,1,0,N,N,N,CP_Drtn,TT_Task,DT_FixedDUR2,RV_OK,TK_NotStart,A1760,Slab Formwork & Rft. Part2,,0,0,112,0,0,0,112,0,0,0,,,,2010-12-25 08:00,2011-01-09 16:00,,2010-12-25 08:00,2011-01-09 16:00,2010-12-25 08:00,2011-01-09 16:00,2010-12-25 08:00,2011-01-09 16:00,,2010-12-25 08:00,2011-01-09 16:00,,PT_Normal,,,,,ScgJzClJNkqiwlA5PjqtCg,KXXm8hwwOUKK16E2vPSSQQ,,,Y,0,0,,,2010-06-30 14:44,2010-07-06 15:13,admin,admin,,,
41,84047,766,10689,841,1,0,N,N,N,CP_Drtn,TT_Task,DT_FixedDUR2,RV_OK,TK_NotStart,A1780,Slab Pouring  Part2,,0,0,8,0,0,0,8,0,0,0,,,,2011-01-10 08:00,2011-01-10 16:00,,2011-01-10 08:00,2011-01-10 16:00,2011-01-10 08:00,2011-01-10 16:00,2011-01-10 08:00,2011-01-10 16:00,,2011-01-10 08:00,2011-01-10 16:00,,PT_Normal,,,,,WTiAcB2C+EmTp8QpSOxGzA,tmikWwjb/ECDV8SUAX2dog,,,Y,0,0,,,2010-06-30 14:44,2010-07-06 15:13,admin,admin,,,
42,84050,766,10690,841,1,0,N,N,N,CP_Drtn,TT_Task,DT_FixedDUR2,RV_OK,TK_NotStart,A1790,columns Formwork & Rft. Part1,,280,0,80,0,0,0,80,0,0,0,,,,2011-02-07 08:00,2011-02-17 16:00,,2010-12-28 08:00,2011-01-08 16:00,2010-12-28 08:00,2011-01-08 16:00,2010-12-28 08:00,2011-01-08 16:00,,2011-02-07 08:00,2011-02-17 16:00,,PT_Normal,,,,,6l7kcoVfREqAebxawtA64g,5khGsxmswkqagHXnVUbl9w,,,N,0,0,,,2010-06-30 14:44,2010-07-06 15:13,admin,admin,,,
43,84051,766,10690,841,1,0,N,N,N,CP_Drtn,TT_Task,DT_FixedDUR2,RV_OK,TK_NotStart,A1800,Columns Pouring Part1,,280,0,8,0,0,0,8,0,0,0,,,,2011-02-19 08:00,2011-02-19 16:00,,2011-01-09 08:00,2011-01-09 16:00,2011-01-09 08:00,2011-01-09 16:00,2011-01-09 08:00,2011-01-09 16:00,,2011-02-19 08:00,2011-02-19 16:00,,PT_Normal,,,,,bRRPi9PTTkiK/IAwiQRtFw,zgS4yaeqI0mbmbatp3uSFg,,,N,0,0,,,2010-06-30 14:44,2010-07-06 15:13,admin,admin,,,
44,84052,766,10690,841,1,0,N,N,N,CP_Drtn,TT_Task,DT_FixedDUR2,RV_OK,TK_NotStart,A1810,columns Formwork & Rft. Part 2,,0,0,80,0,0,0,80,0,0,0,,,,2011-01-13 08:00,2011-01-24 16:00,,2011-01-13 08:00,2011-01-24 16:00,2011-01-13 08:00,2011-01-24 16:00,2011-01-13 08:00,2011-01-24 16:00,,2011-01-13 08:00,2011-01-24 16:00,,PT_Normal,,,,,OYnj54ORR0O6iEdDNsYFjA,8XTGd4T3TEujiv7f8lrDFw,,,Y,0,0,,,2010-06-30 14:44,2010-07-06 15:13,admin,admin,,,
45,84053,766,10690,841,1,0,N,N,N,CP_Drtn,TT_Task,DT_FixedDUR2,RV_OK,TK_NotStart,A1840,Columns Pouring Part2,,0,0,8,0,0,0,8,0,0,0,,,,2011-01-25 08:00,2011-01-25 16:00,,2011-01-25 08:00,2011-01-25 16:00,2011-01-25 08:00,2011-01-25 16:00,2011-01-25 08:00,2011-01-25 16:00,,2011-01-25 08:00,2011-01-25 16:00,,PT_Normal,,,,,70v6oWKee0eg47iANtlATA,TJthZLGlAUSbXWMJENLkzw,,,Y,0,0,,,2010-06-30 14:44,2010-07-06 15:13,admin,admin,,,
46,84054,766,10690,841,1,0,N,N,N,CP_Drtn,TT_Task,DT_FixedDUR2,RV_OK,TK_NotStart,A1820,Slab Formwork & Rft. Part1,,280,0,112,0,0,0,112,0,0,0,,,,2011-02-22 08:00,2011-03-09 16:00,,2011-01-12 08:00,2011-01-27 16:00,2011-01-12 08:00,2011-01-27 16:00,2011-01-12 08:00,2011-01-27 16:00,,2011-02-22 08:00,2011-03-09 16:00,,PT_Normal,,,,,xVj4optzSE2C8h2T4Dx95A,9iBqN33cakiuBqZZCbeGzA,,,N,0,0,,,2010-06-30 14:44,2010-07-06 15:13,admin,admin,,,
47,84055,766,10690,841,1,0,N,N,N,CP_Drtn,TT_Task,DT_FixedDUR2,RV_OK,TK_NotStart,A1850,Slab Pouring Part1,,280,0,8,0,0,0,8,0,0,0,,,,2011-03-10 08:00,2011-03-10 16:00,,2011-01-29 08:00,2011-01-29 16:00,2011-01-29 08:00,2011-01-29 16:00,2011-01-29 08:00,2011-01-29 16:00,,2011-03-10 08:00,2011-03-10 16:00,,PT_Normal,,,,,1sZTa6LaYkiUP2vnoCSviw,jP3utwV5BkWLerN1aGYHUw,,,N,0,0,,,2010-06-30 14:44,2010-07-06 15:13,admin,admin,,,
48,84056,766,10690,841,1,0,N,N,N,CP_Drtn,TT_Task,DT_FixedDUR2,RV_OK,TK_NotStart,A1860,Slab Formwork & Rft. Part2,,0,0,112,0,0,0,112,0,0,0,,,,2011-01-29 08:00,2011-02-13 16:00,,2011-01-29 08:00,2011-02-13 16:00,2011-01-29 08:00,2011-02-13 16:00,2011-01-29 08:00,2011-02-13 16:00,,2011-01-29 08:00,2011-02-13 16:00,,PT_Normal,,,,,pA+Zzbsp/UG1Yt11ltM7TQ,ScgJzClJNkqiwlA5PjqtCg,,,Y,0,0,,,2010-06-30 14:44,2010-07-06 15:13,admin,admin,,,
49,84057,766,10690,841,1,0,N,N,N,CP_Drtn,TT_Task,DT_FixedDUR2,RV_OK,TK_NotStart,A1880,Slab Pouring  Part2,,0,0,8,0,0,0,8,0,0,0,,,,2011-02-14 08:00,2011-02-14 16:00,,2011-02-14 08:00,2011-02-14 16:00,2011-02-14 08:00,2011-02-14 16:00,2011-02-14 08:00,2011-02-14 16:00,,2011-02-14 08:00,2011-02-14 16:00,,PT_Normal,,,,,oYotC7zPSkSjH8JFTDSvRA,WTiAcB2C+EmTp8QpSOxGzA,,,Y,0,0,,,2010-06-30 14:44,2010-07-06 15:13,admin,admin,,,
50,84060,766,10691,841,1,0,N,N,N,CP_Drtn,TT_Task,DT_FixedDUR2,RV_OK,TK_NotStart,A1890,columns Formwork & Rft. Part1,,280,0,80,0,0,0,80,0,0,0,,,,2011-03-14 08:00,2011-03-24 16:00,,2011-02-01 08:00,2011-02-12 16:00,2011-02-01 08:00,2011-02-12 16:00,2011-02-01 08:00,2011-02-12 16:00,,2011-03-14 08:00,2011-03-24 16:00,,PT_Normal,,,,,CkfqS6AIiEeUfUMV1+G2Kw,6l7kcoVfREqAebxawtA64g,,,N,0,0,,,2010-06-30 14:45,2010-07-06 15:13,admin,admin,,,
51,84061,766,10691,841,1,0,N,N,N,CP_Drtn,TT_Task,DT_FixedDUR2,RV_OK,TK_NotStart,A1900,Columns Pouring Part1,,280,0,8,0,0,0,8,0,0,0,,,,2011-03-26 08:00,2011-03-26 16:00,,2011-02-13 08:00,2011-02-13 16:00,2011-02-13 08:00,2011-02-13 16:00,2011-02-13 08:00,2011-02-13 16:00,,2011-03-26 08:00,2011-03-26 16:00,,PT_Normal,,,,,tBy+032LrU2iPM3JL304og,bRRPi9PTTkiK/IAwiQRtFw,,,N,0,0,,,2010-06-30 14:45,2010-07-06 15:13,admin,admin,,,
52,84062,766,10691,841,1,0,N,N,N,CP_Drtn,TT_Task,DT_FixedDUR2,RV_OK,TK_NotStart,A1910,columns Formwork & Rft. Part 2,,0,0,80,0,0,0,80,0,0,0,,,,2011-02-17 08:00,2011-02-28 16:00,,2011-02-17 08:00,2011-02-28 16:00,2011-02-17 08:00,2011-02-28 16:00,2011-02-17 08:00,2011-02-28 16:00,,2011-02-17 08:00,2011-02-28 16:00,,PT_Normal,,,,,o+2VLL+bL0SbJOhNy7/Lcw,OYnj54ORR0O6iEdDNsYFjA,,,Y,0,0,,,2010-06-30 14:45,2010-07-06 15:13,admin,admin,,,
53,84063,766,10691,841,1,0,N,N,N,CP_Drtn,TT_Task,DT_FixedDUR2,RV_OK,TK_NotStart,A1940,Columns Pouring Part2,,0,0,8,0,0,0,8,0,0,0,,,,2011-03-01 08:00,2011-03-01 16:00,,2011-03-01 08:00,2011-03-01 16:00,2011-03-01 08:00,2011-03-01 16:00,2011-03-01 08:00,2011-03-01 16:00,,2011-03-01 08:00,2011-03-01 16:00,,PT_Normal,,,,,6kt4cw6/wEW35GnvtTsEFQ,70v6oWKee0eg47iANtlATA,,,Y,0,0,,,2010-06-30 14:45,2010-07-06 15:13,admin,admin,,,
54,84064,766,10691,841,1,0,N,N,N,CP_Drtn,TT_Task,DT_FixedDUR2,RV_OK,TK_NotStart,A1920,Slab Formwork & Rft. Part1,,280,0,80,0,0,0,80,0,0,0,,,,2011-03-29 08:00,2011-04-09 16:00,,2011-02-16 08:00,2011-02-27 16:00,2011-02-16 08:00,2011-02-27 16:00,2011-02-16 08:00,2011-02-27 16:00,,2011-03-29 08:00,2011-04-09 16:00,,PT_Normal,,,,,pOACIkF/oUSr+n+b50qnGw,xVj4optzSE2C8h2T4Dx95A,,,N,0,0,,,2010-06-30 14:45,2010-07-06 15:13,admin,admin,,,
55,84065,766,10691,841,1,0,N,N,N,CP_Drtn,TT_Task,DT_FixedDUR2,RV_OK,TK_NotStart,A1950,Slab Pouring Part1,,280,280,8,0,0,0,8,0,0,0,,,,2011-04-10 08:00,2011-04-10 16:00,,2011-02-28 08:00,2011-02-28 16:00,2011-02-28 08:00,2011-02-28 16:00,2011-02-28 08:00,2011-02-28 16:00,,2011-04-10 08:00,2011-04-10 16:00,,PT_Normal,,,,,Zbkv0TIYU0WfVLwbGvljUg,1sZTa6LaYkiUP2vnoCSviw,,,N,0,0,,,2010-06-30 14:45,2010-07-06 15:13,admin,admin,,,
56,84066,766,10691,841,1,0,N,N,N,CP_Drtn,TT_Task,DT_FixedDUR2,RV_OK,TK_NotStart,A1960,Slab Formwork & Rft. Part2,,0,0,112,0,0,0,112,0,0,0,,,,2011-03-05 08:00,2011-03-20 16:00,,2011-03-05 08:00,2011-03-20 16:00,2011-03-05 08:00,2011-03-20 16:00,2011-03-05 08:00,2011-03-20 16:00,,2011-03-05 08:00,2011-03-20 16:00,,PT_Normal,,,,,XDmHdWhLT0u+WOsQ9jTkRQ,pA+Zzbsp/UG1Yt11ltM7TQ,,,Y,0,0,,,2010-06-30 14:45,2010-07-06 15:13,admin,admin,,,
57,84067,766,10691,841,1,0,N,N,N,CP_Drtn,TT_Task,DT_FixedDUR2,RV_OK,TK_NotStart,A1980,Slab Pouring  Part2,,0,0,8,0,0,0,8,0,0,0,,,,2011-03-21 08:00,2011-03-21 16:00,,2011-03-21 08:00,2011-03-21 16:00,2011-03-21 08:00,2011-03-21 16:00,2011-03-21 08:00,2011-03-21 16:00,,2011-03-21 08:00,2011-03-21 16:00,,PT_Normal,,,,,5y7Fi58aJE62nk2IIrvUKg,oYotC7zPSkSjH8JFTDSvRA,,,Y,0,0,,,2010-06-30 14:45,2010-07-06 15:13,admin,admin,,,
58,84068,766,10692,841,1,0,N,N,N,CP_Drtn,TT_Task,DT_FixedDUR2,RV_OK,TK_NotStart,A1990,submit ground floor's shop drawings for approval,,0,0,8,0,0,0,8,0,0,0,,,,2010-07-10 08:00,2010-07-10 16:00,,2010-07-10 08:00,2010-07-10 16:00,2010-07-10 08:00,2010-07-10 16:00,2010-07-10 08:00,2010-07-10 16:00,,2010-07-10 08:00,2010-07-10 16:00,,PT_Normal,,,,,WULwXb0dWkCVzsywhbbtGA,,,,Y,0,0,,,2010-06-30 16:44,2010-07-06 15:13,admin,admin,,,
59,84069,766,10692,841,0,0,N,N,N,CP_Drtn,TT_FinMile,DT_FixedDrtn,RV_OK,TK_NotStart,A2000,ground floor's shop drawings approval,,0,0,0,0,0,0,0,0,0,0,,,,2010-07-18 16:00,2010-07-18 16:00,,2010-07-18 16:00,2010-07-18 16:00,2010-07-18 16:00,2010-07-18 16:00,2010-07-18 16:00,2010-07-18 16:00,,2010-07-18 16:00,2010-07-18 16:00,,PT_Normal,,,,,bnGInRcB3UmOfyYlJK19bQ,,,,Y,0,0,,,2010-06-30 16:44,2010-07-06 15:13,admin,admin,,,
60,84070,766,10692,841,1,0,N,N,N,CP_Drtn,TT_Task,DT_FixedDUR2,RV_OK,TK_NotStart,A2010,submit 1st floor shop drawings for approval,,296,0,8,0,0,0,8,0,0,0,,,,2010-08-26 08:00,2010-08-26 16:00,,2010-07-14 08:00,2010-07-14 16:00,2010-07-14 08:00,2010-07-14 16:00,2010-07-14 08:00,2010-07-14 16:00,,2010-08-26 08:00,2010-08-26 16:00,,PT_Normal,,,,,sluGn4zsYU6ya9yS3bAD2w,,,,N,0,0,,,2010-06-30 16:44,2010-07-06 15:13,admin,admin,,,
61,84071,766,10692,841,0,0,N,N,N,CP_Drtn,TT_FinMile,DT_FixedDrtn,RV_OK,TK_NotStart,A2020,1st floor shop drawings approval,,296,16,0,0,0,0,0,0,0,0,,,,2010-09-04 16:00,2010-09-04 16:00,,2010-07-22 16:00,2010-07-22 16:00,2010-07-22 16:00,2010-07-22 16:00,2010-07-22 16:00,2010-07-22 16:00,,2010-09-04 16:00,2010-09-04 16:00,,PT_Normal,,,,,fwSwi1K12ky5fVNAIXBMyg,,,,N,0,0,,,2010-06-30 16:44,2010-07-06 15:13,admin,admin,,,
62,84072,766,10692,841,1,0,N,N,N,CP_Drtn,TT_Task,DT_FixedDUR2,RV_OK,TK_NotStart,A2030,submit 2nd floor shop drawings for approval,,504,0,8,0,0,0,8,0,0,0,,,,2010-10-03 08:00,2010-10-03 16:00,,2010-07-19 08:00,2010-07-19 16:00,2010-07-19 08:00,2010-07-19 16:00,2010-07-19 08:00,2010-07-19 16:00,,2010-10-03 08:00,2010-10-03 16:00,,PT_Normal,,,,,AjcP9Fp2rkis9/ygdz9qXA,,,,N,0,0,,,2010-06-30 16:44,2010-07-06 15:13,admin,admin,,,
63,84073,766,10692,841,0,0,N,N,N,CP_Drtn,TT_FinMile,DT_FixedDrtn,RV_OK,TK_NotStart,A2040,2nd floor shop drawings approval,,504,224,0,0,0,0,0,0,0,0,,,,2010-10-11 16:00,2010-10-11 16:00,,2010-07-27 16:00,2010-07-27 16:00,2010-07-27 16:00,2010-07-27 16:00,2010-07-27 16:00,2010-07-27 16:00,,2010-10-11 16:00,2010-10-11 16:00,,PT_Normal,,,,,r1gHBB8Aq02NQPVsFJ6Waw,,,,N,0,0,,,2010-06-30 16:44,2010-07-06 15:13,admin,admin,,,
64,84074,766,10692,841,1,0,N,N,N,CP_Drtn,TT_Task,DT_FixedDUR2,RV_OK,TK_NotStart,A2050,submit 3rd floor shop drawings for approval,,712,0,8,0,0,0,8,0,0,0,,,,2010-11-07 08:00,2010-11-07 16:00,,2010-07-24 08:00,2010-07-24 16:00,2010-07-24 08:00,2010-07-24 16:00,2010-07-24 08:00,2010-07-24 16:00,,2010-11-07 08:00,2010-11-07 16:00,,PT_Normal,,,,,iI4pRJ+Gq0uzMdWUVbPz8A,,,,N,0,0,,,2010-06-30 16:44,2010-07-06 15:13,admin,admin,,,
65,84075,766,10692,841,0,0,N,N,N,CP_Drtn,TT_FinMile,DT_FixedDrtn,RV_OK,TK_NotStart,A2060,3rd floor shop drawings approval,,712,432,0,0,0,0,0,0,0,0,,,,2010-11-20 16:00,2010-11-20 16:00,,2010-08-01 16:00,2010-08-01 16:00,2010-08-01 16:00,2010-08-01 16:00,2010-08-01 16:00,2010-08-01 16:00,,2010-11-20 16:00,2010-11-20 16:00,,PT_Normal,,,,,DruLTYTtOkWYXgsF9xNwRg,,,,N,0,0,,,2010-06-30 16:44,2010-07-06 15:13,admin,admin,,,
66,84076,766,10692,841,1,0,N,N,N,CP_Drtn,TT_Task,DT_FixedDUR2,RV_OK,TK_NotStart,A2070,submit 4th floor shop drawings for approval,,920,0,8,0,0,0,8,0,0,0,,,,2010-12-16 08:00,2010-12-16 16:00,,2010-07-28 08:00,2010-07-28 16:00,2010-07-28 08:00,2010-07-28 16:00,2010-07-28 08:00,2010-07-28 16:00,,2010-12-16 08:00,2010-12-16 16:00,,PT_Normal,,,,,VAqXWmVvsEmr452pzuhMkw,,,,N,0,0,,,2010-06-30 16:44,2010-07-06 15:13,admin,admin,,,
67,84077,766,10692,841,0,0,N,N,N,CP_Drtn,TT_FinMile,DT_FixedDrtn,RV_OK,TK_NotStart,A2080,4th floor shop drawings approval,,920,640,0,0,0,0,0,0,0,0,,,,2010-12-25 16:00,2010-12-25 16:00,,2010-08-05 16:00,2010-08-05 16:00,2010-08-05 16:00,2010-08-05 16:00,2010-08-05 16:00,2010-08-05 16:00,,2010-12-25 16:00,2010-12-25 16:00,,PT_Normal,,,,,05cLn0f2iU+auClWDTLJFQ,,,,N,0,0,,,2010-06-30 16:44,2010-07-06 15:13,admin,admin,,,
68,84078,766,10692,841,1,0,N,N,N,CP_Drtn,TT_Task,DT_FixedDUR2,RV_OK,TK_NotStart,A2090,submit 5th floor shop drawings for approval,,1128,0,8,0,0,0,8,0,0,0,,,,2011-01-20 08:00,2011-01-20 16:00,,2010-08-02 08:00,2010-08-02 16:00,2010-08-02 08:00,2010-08-02 16:00,2010-08-02 08:00,2010-08-02 16:00,,2011-01-20 08:00,2011-01-20 16:00,,PT_Normal,,,,,vCW3vlp5Ykyf8BuxhVczXA,,,,N,0,0,,,2010-06-30 16:44,2010-07-06 15:13,admin,admin,,,
69,84079,766,10692,841,0,0,N,N,N,CP_Drtn,TT_FinMile,DT_FixedDrtn,RV_OK,TK_NotStart,A2100,5th floor shop drawings approval,,1128,848,0,0,0,0,0,0,0,0,,,,2011-01-29 16:00,2011-01-29 16:00,,2010-08-10 16:00,2010-08-10 16:00,2010-08-10 16:00,2010-08-10 16:00,2010-08-10 16:00,2010-08-10 16:00,,2011-01-29 16:00,2011-01-29 16:00,,PT_Normal,,,,,1VpCEItMX0eqerJd3aWZmQ,,,,N,0,0,,,2010-06-30 16:44,2010-07-06 15:13,admin,admin,,,
70,84080,766,10692,841,1,0,N,N,N,CP_Drtn,TT_Task,DT_FixedDUR2,RV_OK,TK_NotStart,A2110,submit 6th floor shop drawings for approval,,1336,0,8,0,0,0,8,0,0,0,,,,2011-02-24 08:00,2011-02-24 16:00,,2010-08-07 08:00,2010-08-07 16:00,2010-08-07 08:00,2010-08-07 16:00,2010-08-07 08:00,2010-08-07 16:00,,2011-02-24 08:00,2011-02-24 16:00,,PT_Normal,,,,,IA1bqCwOOUK+e1UK5TlY/Q,,,,N,0,0,,,2010-06-30 16:44,2010-07-06 15:13,admin,admin,,,
71,84081,766,10692,841,0,0,N,N,N,CP_Drtn,TT_FinMile,DT_FixedDrtn,RV_OK,TK_NotStart,A2120,6th floor shop drawings approval,,1336,1056,0,0,0,0,0,0,0,0,,,,2011-03-05 16:00,2011-03-05 16:00,,2010-08-15 16:00,2010-08-15 16:00,2010-08-15 16:00,2010-08-15 16:00,2010-08-15 16:00,2010-08-15 16:00,,2011-03-05 16:00,2011-03-05 16:00,,PT_Normal,,,,,3t08YKV7iESU+bAu1Dm0ZQ,,,,N,0,0,,,2010-06-30 16:44,2010-07-06 15:13,admin,admin,,,
72,84137,766,10706,841,1,0,N,N,N,CP_Drtn,TT_Task,DT_FixedDUR2,RV_OK,TK_NotStart,A2130,columns Formwork & Rft.,,0,0,40,0,0,0,40,0,0,0,,,,2011-03-24 08:00,2011-03-29 16:00,,2011-03-24 08:00,2011-03-29 16:00,2011-03-24 08:00,2011-03-29 16:00,2011-03-24 08:00,2011-03-29 16:00,,2011-03-24 08:00,2011-03-29 16:00,,PT_Normal,,,,,5SNmjE2ox0WQgfAyTAnhSw,,,,Y,0,0,,,2010-07-06 11:34,2010-07-06 15:13,admin,admin,,,
73,84138,766,10706,841,1,0,N,N,N,CP_Drtn,TT_Task,DT_FixedDUR2,RV_OK,TK_NotStart,A2140,Columns Pouring,,0,0,8,0,0,0,8,0,0,0,,,,2011-03-30 08:00,2011-03-30 16:00,,2011-03-30 08:00,2011-03-30 16:00,2011-03-30 08:00,2011-03-30 16:00,2011-03-30 08:00,2011-03-30 16:00,,2011-03-30 08:00,2011-03-30 16:00,,PT_Normal,,,,,6uoWvDFggUa0sxEvalp87w,,,,Y,0,0,,,2010-07-06 11:36,2010-07-06 15:13,admin,admin,,,
74,84139,766,10706,841,1,0,N,N,N,CP_Drtn,TT_Task,DT_FixedDUR2,RV_OK,TK_NotStart,A2150,Slab Formwork & Rft.,,0,0,64,0,0,0,64,0,0,0,,,,2011-03-31 08:00,2011-04-09 16:00,,2011-03-31 08:00,2011-04-09 16:00,2011-03-31 08:00,2011-04-09 16:00,2011-03-31 08:00,2011-04-09 16:00,,2011-03-31 08:00,2011-04-09 16:00,,PT_Normal,,,,,xmDepzinQU2yEjF0hGBi7w,,,,Y,0,0,,,2010-07-06 11:36,2010-07-06 15:13,admin,admin,,,
75,84140,766,10706,841,1,0,N,N,N,CP_Drtn,TT_Task,DT_FixedDUR2,RV_OK,TK_NotStart,A2160,Slab Pouring,,0,0,8,0,0,0,8,0,0,0,,,,2011-04-10 08:00,2011-04-10 16:00,,2011-04-10 08:00,2011-04-10 16:00,2011-04-10 08:00,2011-04-10 16:00,2011-04-10 08:00,2011-04-10 16:00,,2011-04-10 08:00,2011-04-10 16:00,,PT_Normal,,,,,qs7xsosJE0W6y5CHJ/fdZw,,,,Y,0,0,,,2010-07-06 11:36,2010-07-06 15:13,admin,admin,,,
