,task_id,proj_id,wbs_id,clndr_id,est_wt,phys_complete_pct,rev_fdbk_flag,lock_plan_flag,auto_compute_act_flag,complete_pct_type,task_type,duration_type,review_type,status_code,task_code,task_name,rsrc_id,total_float_hr_cnt,free_float_hr_cnt,remain_drtn_hr_cnt,act_work_qty,remain_work_qty,target_work_qty,target_drtn_hr_cnt,target_equip_qty,act_equip_qty,remain_equip_qty,cstr_date,act_start_date,act_end_date,late_start_date,late_end_date,expect_end_date,early_start_date,early_end_date,restart_date,reend_date,target_start_date,target_end_date,review_end_date,rem_late_start_date,rem_late_end_date,cstr_type,priority_type,suspend_date,resume_date,float_path,float_path_order,guid,tmpl_guid,cstr_date2,cstr_type2,driving_path_flag,act_this_per_work_qty,act_this_per_equip_qty,external_early_start_date,external_late_end_date,create_date,update_date,create_user,update_user
0,89025,1442,12300,794,0,0,N,N,N,CP_Drtn,TT_Mile,DT_FixedDrtn,RV_OK,TK_NotStart,A1000,Site handing over,,0,0,0,0,0,0,0,0,0,0,,,,2012-01-01 08:00,2012-01-01 08:00,,2012-01-01 08:00,2012-01-01 08:00,2012-01-01 08:00,2012-01-01 08:00,2012-01-01 08:00,2012-01-01 08:00,,2012-01-01 08:00,2012-01-01 08:00,,PT_Normal,,,,,OId+9xoIBEGxrqbDLS09TQ,,,,Y,0,0,,,2011-12-25 13:46,2011-12-27 10:24,admin,admin
1,89026,1442,12300,794,0,0,N,N,N,CP_Drtn,TT_Mile,DT_FixedDrtn,RV_OK,TK_NotStart,A1010,Notice of commencement,,0,0,0,0,0,0,0,0,0,0,,,,2012-01-01 08:00,2012-01-01 08:00,,2012-01-01 08:00,2012-01-01 08:00,2012-01-01 08:00,2012-01-01 08:00,2012-01-01 08:00,2012-01-01 08:00,,2012-01-01 08:00,2012-01-01 08:00,,PT_Normal,,,,,9p47ZV+Pe0Gna1jQp2UBSg,,,,Y,0,0,,,2011-12-25 13:46,2011-12-27 10:24,admin,admin
2,89030,1442,12301,794,0,0,N,N,N,CP_Drtn,TT_FinMile,DT_FixedDrtn,RV_OK,TK_NotStart,A1050,Mobilization,,3864,3864,0,0,0,0,0,0,0,0,,,,2013-05-11 17:00,2013-05-11 17:00,,2012-01-14 17:00,2012-01-14 17:00,2012-01-14 17:00,2012-01-14 17:00,2012-01-14 17:00,2012-01-14 17:00,,2013-05-11 17:00,2013-05-11 17:00,,PT_Normal,,,,,j0synni3ikyiAq7EYrFscA,,,,N,0,0,,,2011-12-25 13:47,2012-01-14 07:51,admin,admin
3,89031,1442,12301,794,0,0,N,N,N,CP_Drtn,TT_FinMile,DT_FixedDrtn,RV_OK,TK_NotStart,A1060,Excavation&shoring,,3448,3448,0,0,0,0,0,0,0,0,,,,2013-05-11 17:00,2013-05-11 17:00,,2012-03-06 17:00,2012-03-06 17:00,2012-03-06 17:00,2012-03-06 17:00,2012-03-06 17:00,2012-03-06 17:00,,2013-05-11 17:00,2013-05-11 17:00,,PT_Normal,,,,,fApXFrVdH069EcN1jZmY1w,,,,N,0,0,,,2011-12-25 13:47,2012-01-14 07:51,admin,admin
4,89032,1442,12301,794,0,0,N,N,N,CP_Drtn,TT_FinMile,DT_FixedDrtn,RV_OK,TK_NotStart,A1070,Pile works(construction&testing),,3048,3048,0,0,0,0,0,0,0,0,,,,2013-05-11 17:00,2013-05-11 17:00,,2012-04-25 17:00,2012-04-25 17:00,2012-04-25 17:00,2012-04-25 17:00,2012-04-25 17:00,2012-04-25 17:00,,2013-05-11 17:00,2013-05-11 17:00,,PT_Normal,,,,,/8/oHRTOOUyyoTwN/VaaCw,,,,N,0,0,,,2011-12-25 13:47,2012-01-14 07:51,admin,admin
5,89033,1442,12302,794,0,0,N,N,N,CP_Drtn,TT_FinMile,DT_FixedDrtn,RV_OK,TK_NotStart,A1080,Structure construction,,672,672,0,0,0,0,0,0,0,0,,,,2013-05-11 17:00,2013-05-11 17:00,,2013-02-16 17:00,2013-02-16 17:00,2013-02-16 17:00,2013-02-16 17:00,2013-02-16 17:00,2013-02-16 17:00,,2013-05-11 17:00,2013-05-11 17:00,,PT_Normal,,,,,EYt9prqWJ0mpz7DM8WULRg,,,,N,0,0,,,2011-12-25 13:48,2012-01-14 07:51,admin,admin
6,89034,1442,12302,794,0,0,N,N,N,CP_Drtn,TT_FinMile,DT_FixedDrtn,RV_OK,TK_NotStart,A1090,conveying system,,3976,3976,0,0,0,0,0,0,0,0,,,,2013-05-11 17:00,2013-05-11 17:00,,2012-01-01 08:00,2012-01-01 08:00,2012-01-01 08:00,2012-01-01 08:00,2012-01-01 08:00,2012-01-01 08:00,,2013-05-11 17:00,2013-05-11 17:00,,PT_Normal,,,,,Ht495aWEjUmamFxzwPkxiA,,,,N,0,0,,,2011-12-25 13:48,2012-01-14 07:51,admin,admin
7,89035,1442,12302,794,0,0,N,N,N,CP_Drtn,TT_FinMile,DT_FixedDrtn,RV_OK,TK_NotStart,A1100,MEP works,,0,0,0,0,0,0,0,0,0,0,,,,2013-05-11 17:00,2013-05-11 17:00,,2013-05-11 17:00,2013-05-11 17:00,2013-05-11 17:00,2013-05-11 17:00,2013-05-11 17:00,2013-05-11 17:00,,2013-05-11 17:00,2013-05-11 17:00,,PT_Normal,,,,,VWBo/bFA2Eybk0U0q/ZUIw,,,,Y,0,0,,,2011-12-25 13:48,2012-01-14 07:51,admin,admin
8,89036,1442,12303,794,0,0,N,N,N,CP_Drtn,TT_FinMile,DT_FixedDrtn,RV_OK,TK_NotStart,A1110,External cladding & facade,,200,200,0,0,0,0,0,0,0,0,,,,2013-05-11 17:00,2013-05-11 17:00,,2013-04-16 17:00,2013-04-16 17:00,2013-04-16 17:00,2013-04-16 17:00,2013-04-16 17:00,2013-04-16 17:00,,2013-05-11 17:00,2013-05-11 17:00,,PT_Normal,,,,,A8O1lrNVCUKpFqo/YbqMtg,,,,N,0,0,,,2011-12-25 13:49,2012-01-14 07:51,admin,admin
9,89037,1442,12303,794,0,0,N,N,N,CP_Drtn,TT_FinMile,DT_FixedDrtn,RV_OK,TK_NotStart,A1120,Finishes & external works,,0,0,0,0,0,0,0,0,0,0,,,,2013-05-11 17:00,2013-05-11 17:00,,2013-05-11 17:00,2013-05-11 17:00,2013-05-11 17:00,2013-05-11 17:00,2013-05-11 17:00,2013-05-11 17:00,,2013-05-11 17:00,2013-05-11 17:00,,PT_Normal,,,,,8Hz/ZlvL4Um2Vhb4v5CtTQ,,,,Y,0,0,,,2011-12-25 13:49,2012-01-14 07:51,admin,admin
10,89038,1442,12303,794,0,0,N,N,N,CP_Drtn,TT_FinMile,DT_FixedDrtn,RV_OK,TK_NotStart,A1130,Project handing over,,0,0,0,0,0,0,0,0,0,0,,,,2013-05-11 17:00,2013-05-11 17:00,,2013-05-11 17:00,2013-05-11 17:00,2013-05-11 17:00,2013-05-11 17:00,2013-05-11 17:00,2013-05-11 17:00,,2013-05-11 17:00,2013-05-11 17:00,,PT_Normal,,,,,tD2ctnF8Zkeqv6wFKoAxGA,,,,Y,0,0,,,2011-12-25 13:49,2012-01-14 07:51,admin,admin
11,89040,1442,12297,794,1,0,N,N,N,CP_Drtn,TT_Task,DT_FixedDUR2,RV_OK,TK_NotStart,A1150,Dewatering system installation,,0,0,24,0,0,0,24,0,0,0,,,,2012-02-14 08:00,2012-02-16 17:00,,2012-02-14 08:00,2012-02-16 17:00,2012-02-14 08:00,2012-02-16 17:00,2012-02-14 08:00,2012-02-16 17:00,,2012-02-14 08:00,2012-02-16 17:00,,PT_Normal,,,,,nrBtvJ8pAEui6cX5uEEelA,,,,Y,0,0,,,2011-12-25 14:01,2012-01-14 07:31,admin,admin
12,89041,1442,12297,794,1,0,N,N,N,CP_Drtn,TT_Task,DT_FixedDUR2,RV_OK,TK_NotStart,A1160,Excavation support(Sheet piles),,0,0,240,0,0,0,240,0,0,0,,,,2012-01-15 08:00,2012-02-13 17:00,,2012-01-15 08:00,2012-02-13 17:00,2012-01-15 08:00,2012-02-13 17:00,2012-01-15 08:00,2012-02-13 17:00,,2012-01-15 08:00,2012-02-13 17:00,,PT_Normal,,,,,DR7i5dbrqkebM2l9N5ZQdQ,,,,Y,0,0,,,2011-12-25 14:01,2012-01-14 07:30,admin,admin
13,89042,1442,12297,794,1,0,N,N,N,CP_Drtn,TT_Task,DT_FixedDUR2,RV_OK,TK_NotStart,A1170,Excavation,,0,0,80,0,0,0,80,0,0,0,,,,2012-02-26 08:00,2012-03-06 17:00,,2012-02-26 08:00,2012-03-06 17:00,2012-02-26 08:00,2012-03-06 17:00,2012-02-26 08:00,2012-03-06 17:00,,2012-02-26 08:00,2012-03-06 17:00,,PT_Normal,,,,,V2kiwoOAZEi6ddt0W3ZXQw,,,,Y,0,0,,,2011-12-25 14:02,2012-01-14 07:31,admin,admin
14,89043,1442,12297,794,1,0,N,N,N,CP_Drtn,TT_Task,DT_FixedDUR2,RV_OK,TK_NotStart,A1180,Boring concrete piles,,0,0,360,0,0,0,360,0,0,0,,,,2012-03-07 08:00,2012-04-20 17:00,,2012-03-07 08:00,2012-04-20 17:00,2012-03-07 08:00,2012-04-20 17:00,2012-03-07 08:00,2012-04-20 17:00,,2012-03-07 08:00,2012-04-20 17:00,,PT_Normal,,,,,21OsAtcTakKbpGT0aAmMYg,,,,Y,0,0,,,2011-12-25 14:02,2012-01-14 07:31,admin,admin
15,89044,1442,12297,794,1,0,N,N,N,CP_Drtn,TT_Task,DT_FixedDUR2,RV_OK,TK_NotStart,A1190,Tests for footing piles,,0,0,40,0,0,0,40,0,0,0,,,,2012-04-21 08:00,2012-04-25 17:00,,2012-04-21 08:00,2012-04-25 17:00,2012-04-21 08:00,2012-04-25 17:00,2012-04-21 08:00,2012-04-25 17:00,,2012-04-21 08:00,2012-04-25 17:00,,PT_Normal,,,,,Av040cLyxES8WsBEkhhcMQ,,,,Y,0,0,,,2011-12-25 14:02,2012-01-14 07:31,admin,admin
16,89045,1442,12297,794,1,0,N,N,N,CP_Drtn,TT_Task,DT_FixedDUR2,RV_OK,TK_NotStart,A1200,Pile caps& ground beams,,0,0,112,0,0,0,112,0,0,0,,,,2012-04-26 08:00,2012-05-09 17:00,,2012-04-26 08:00,2012-05-09 17:00,2012-04-26 08:00,2012-05-09 17:00,2012-04-26 08:00,2012-05-09 17:00,,2012-04-26 08:00,2012-05-09 17:00,,PT_Normal,,,,,fW+2U9r7LEaOfQYuyOSWUw,,,,Y,0,0,,,2011-12-25 14:02,2012-01-14 07:31,admin,admin
17,89046,1442,12297,794,1,0,N,N,N,CP_Drtn,TT_Task,DT_FixedDUR2,RV_OK,TK_NotStart,A1210,Backfilling,,0,0,40,0,0,0,40,0,0,0,,,,2012-05-10 08:00,2012-05-14 17:00,,2012-05-10 08:00,2012-05-14 17:00,2012-05-10 08:00,2012-05-14 17:00,2012-05-10 08:00,2012-05-14 17:00,,2012-05-10 08:00,2012-05-14 17:00,,PT_Normal,,,,,12eQw8/UV0qof0SZOV3odw,,,,Y,0,0,,,2011-12-25 14:02,2012-01-14 07:31,admin,admin
18,89047,1442,12297,794,1,0,N,N,N,CP_Drtn,TT_Task,DT_FixedDUR2,RV_OK,TK_NotStart,A1220,Raft foundation,,0,0,72,0,0,0,72,0,0,0,,,,2012-05-15 08:00,2012-05-23 17:00,,2012-05-15 08:00,2012-05-23 17:00,2012-05-15 08:00,2012-05-23 17:00,2012-05-15 08:00,2012-05-23 17:00,,2012-05-15 08:00,2012-05-23 17:00,,PT_Normal,,,,,IUIpqdKi7kqpKA5xuU+FKA,,,,Y,0,0,,,2011-12-25 14:02,2012-01-14 07:31,admin,admin
19,89048,1442,12297,794,1,0,N,N,N,CP_Drtn,TT_Task,DT_FixedDUR2,RV_OK,TK_NotStart,A1230,Retaining walls&Ramps,,0,0,80,0,0,0,80,0,0,0,,,,2012-05-24 08:00,2012-06-02 17:00,,2012-05-24 08:00,2012-06-02 17:00,2012-05-24 08:00,2012-06-02 17:00,2012-05-24 08:00,2012-06-02 17:00,,2012-05-24 08:00,2012-06-02 17:00,,PT_Normal,,,,,l022xKSc5ESNuxikxT8hug,,,,Y,0,0,,,2011-12-25 14:02,2012-01-14 07:31,admin,admin
20,89049,1442,12297,794,1,0,N,N,N,CP_Drtn,TT_Task,DT_FixedDUR2,RV_OK,TK_NotStart,A1240,Basement Columns,,0,0,56,0,0,0,56,0,0,0,,,,2012-05-24 08:00,2012-05-30 17:00,,2012-05-24 08:00,2012-05-30 17:00,2012-05-24 08:00,2012-05-30 17:00,2012-05-24 08:00,2012-05-30 17:00,,2012-05-24 08:00,2012-05-30 17:00,,PT_Normal,,,,,4qo1/0rnD06s2MHQzmj/Cg,,,,Y,0,0,,,2011-12-25 14:02,2012-01-14 07:31,admin,admin
21,89050,1442,12297,794,1,0,N,N,N,CP_Drtn,TT_Task,DT_FixedDUR2,RV_OK,TK_NotStart,A1250,Basement slab,,0,0,112,0,0,0,112,0,0,0,,,,2012-05-31 08:00,2012-06-13 17:00,,2012-05-31 08:00,2012-06-13 17:00,2012-05-31 08:00,2012-06-13 17:00,2012-05-31 08:00,2012-06-13 17:00,,2012-05-31 08:00,2012-06-13 17:00,,PT_Normal,,,,,2V24KrSIRUyoN07HqFo3oA,,,,Y,0,0,,,2011-12-25 14:02,2012-01-14 07:31,admin,admin
22,89053,1442,12296,794,1,0,N,N,N,CP_Drtn,TT_Task,DT_FixedDUR2,RV_OK,TK_NotStart,A1280,Columns for ground floors,,0,0,56,0,0,0,56,0,0,0,,,,2012-06-14 08:00,2012-06-20 17:00,,2012-06-14 08:00,2012-06-20 17:00,2012-06-14 08:00,2012-06-20 17:00,2012-06-14 08:00,2012-06-20 17:00,,2012-06-14 08:00,2012-06-20 17:00,,PT_Normal,,,,,wLwfxw3N1ESCrbrfNAqpiw,,,,Y,0,0,,,2011-12-25 14:21,2012-01-14 07:31,admin,admin
23,89054,1442,12296,794,1,0,N,N,N,CP_Drtn,TT_Task,DT_FixedDUR2,RV_OK,TK_NotStart,A1290,Ground floor slab,,0,0,112,0,0,0,112,0,0,0,,,,2012-06-21 08:00,2012-07-04 17:00,,2012-06-21 08:00,2012-07-04 17:00,2012-06-21 08:00,2012-07-04 17:00,2012-06-21 08:00,2012-07-04 17:00,,2012-06-21 08:00,2012-07-04 17:00,,PT_Normal,,,,,Gv9iAU2ELUizh63oFi9gUA,,,,Y,0,0,,,2011-12-25 14:21,2012-01-14 07:31,admin,admin
24,89055,1442,12296,794,1,0,N,N,N,CP_Drtn,TT_Task,DT_FixedDUR2,RV_OK,TK_NotStart,A1300,Columns for mezzanine floor,,0,0,56,0,0,0,56,0,0,0,,,,2012-07-05 08:00,2012-07-11 17:00,,2012-07-05 08:00,2012-07-11 17:00,2012-07-05 08:00,2012-07-11 17:00,2012-07-05 08:00,2012-07-11 17:00,,2012-07-05 08:00,2012-07-11 17:00,,PT_Normal,,,,,9xQ0lluSVEWI6n6XXaxjXQ,,,,Y,0,0,,,2011-12-25 14:21,2012-01-14 07:31,admin,admin
25,89056,1442,12296,794,1,0,N,N,N,CP_Drtn,TT_Task,DT_FixedDUR2,RV_OK,TK_NotStart,A1310,Mezzanine floor slab,,0,0,112,0,0,0,112,0,0,0,,,,2012-07-12 08:00,2012-07-25 17:00,,2012-07-12 08:00,2012-07-25 17:00,2012-07-12 08:00,2012-07-25 17:00,2012-07-12 08:00,2012-07-25 17:00,,2012-07-12 08:00,2012-07-25 17:00,,PT_Normal,,,,,2vinPMMd9E6oocXq7H1Z2Q,,,,Y,0,0,,,2011-12-25 14:21,2012-01-14 07:31,admin,admin
26,89057,1442,12296,794,1,0,N,N,N,CP_Drtn,TT_Task,DT_FixedDUR2,RV_OK,TK_NotStart,A1320,First floor columns,,672,0,56,0,0,0,56,0,0,0,,,,2012-10-18 08:00,2012-10-24 17:00,,2012-07-26 08:00,2012-08-01 17:00,2012-07-26 08:00,2012-08-01 17:00,2012-07-26 08:00,2012-08-01 17:00,,2012-10-18 08:00,2012-10-24 17:00,,PT_Normal,,,,,jDe6O/1eaEmxz+rqW3mWfg,,,,N,0,0,,,2011-12-25 14:21,2012-01-14 07:51,admin,admin
27,89058,1442,12296,794,1,0,N,N,N,CP_Drtn,TT_Task,DT_FixedDUR2,RV_OK,TK_NotStart,A1330,First floor slab,,672,0,112,0,0,0,112,0,0,0,,,,2012-10-25 08:00,2012-11-07 17:00,,2012-08-02 08:00,2012-08-15 17:00,2012-08-02 08:00,2012-08-15 17:00,2012-08-02 08:00,2012-08-15 17:00,,2012-10-25 08:00,2012-11-07 17:00,,PT_Normal,,,,,ef4xdanETU+xRSN2/+yoaA,,,,N,0,0,,,2011-12-25 14:21,2012-01-14 07:51,admin,admin
28,89059,1442,12296,794,1,0,N,N,N,CP_Drtn,TT_Task,DT_FixedDUR2,RV_OK,TK_NotStart,A1340,Second floor columns,,672,0,56,0,0,0,56,0,0,0,,,,2012-11-08 08:00,2012-11-14 17:00,,2012-08-16 08:00,2012-08-22 17:00,2012-08-16 08:00,2012-08-22 17:00,2012-08-16 08:00,2012-08-22 17:00,,2012-11-08 08:00,2012-11-14 17:00,,PT_Normal,,,,,P9MId2LVFUOaAl41YDwQzg,,,,N,0,0,,,2011-12-25 14:21,2012-01-14 07:51,admin,admin
29,89060,1442,12296,794,1,0,N,N,N,CP_Drtn,TT_Task,DT_FixedDUR2,RV_OK,TK_NotStart,A1350,Second floor slab,,672,0,112,0,0,0,112,0,0,0,,,,2012-11-15 08:00,2012-11-28 17:00,,2012-08-23 08:00,2012-09-05 17:00,2012-08-23 08:00,2012-09-05 17:00,2012-08-23 08:00,2012-09-05 17:00,,2012-11-15 08:00,2012-11-28 17:00,,PT_Normal,,,,,ex6xTUdJYEy0veh+CTVbhg,,,,N,0,0,,,2011-12-25 14:21,2012-01-14 07:51,admin,admin
30,89061,1442,12296,794,1,0,N,N,N,CP_Drtn,TT_Task,DT_FixedDUR2,RV_OK,TK_NotStart,A1360,Third floor columns,,672,0,56,0,0,0,56,0,0,0,,,,2012-11-29 08:00,2012-12-05 17:00,,2012-09-06 08:00,2012-09-12 17:00,2012-09-06 08:00,2012-09-12 17:00,2012-09-06 08:00,2012-09-12 17:00,,2012-11-29 08:00,2012-12-05 17:00,,PT_Normal,,,,,Vu7hoJB6XU6XOhEpsJYf4g,,,,N,0,0,,,2011-12-25 14:21,2012-01-14 07:51,admin,admin
31,89062,1442,12296,794,1,0,N,N,N,CP_Drtn,TT_Task,DT_FixedDUR2,RV_OK,TK_NotStart,A1370,Third floor slab,,672,0,112,0,0,0,112,0,0,0,,,,2012-12-06 08:00,2012-12-19 17:00,,2012-09-13 08:00,2012-09-26 17:00,2012-09-13 08:00,2012-09-26 17:00,2012-09-13 08:00,2012-09-26 17:00,,2012-12-06 08:00,2012-12-19 17:00,,PT_Normal,,,,,b2RPxRNfd0q/bypzpfxjRQ,,,,N,0,0,,,2011-12-25 14:21,2012-01-14 07:51,admin,admin
32,89063,1442,12296,794,1,0,N,N,N,CP_Drtn,TT_Task,DT_FixedDUR2,RV_OK,TK_NotStart,A1380,Fourth floor columns,,672,0,56,0,0,0,56,0,0,0,,,,2012-12-20 08:00,2012-12-26 17:00,,2012-09-27 08:00,2012-10-03 17:00,2012-09-27 08:00,2012-10-03 17:00,2012-09-27 08:00,2012-10-03 17:00,,2012-12-20 08:00,2012-12-26 17:00,,PT_Normal,,,,,QdvmuLdqgU+gQWW/Hr2YLw,,,,N,0,0,,,2011-12-25 14:21,2012-01-14 07:51,admin,admin
33,89064,1442,12296,794,1,0,N,N,N,CP_Drtn,TT_Task,DT_FixedDUR2,RV_OK,TK_NotStart,A1390,Fourth floor slab,,672,0,112,0,0,0,112,0,0,0,,,,2012-12-27 08:00,2013-01-09 17:00,,2012-10-04 08:00,2012-10-17 17:00,2012-10-04 08:00,2012-10-17 17:00,2012-10-04 08:00,2012-10-17 17:00,,2012-12-27 08:00,2013-01-09 17:00,,PT_Normal,,,,,5ndyF5QQiEepJxzBp6qFsQ,,,,N,0,0,,,2011-12-25 14:21,2012-01-14 07:51,admin,admin
34,89065,1442,12296,794,1,0,N,N,N,CP_Drtn,TT_Task,DT_FixedDUR2,RV_OK,TK_NotStart,A1400,Fifth floor columns,,672,0,56,0,0,0,56,0,0,0,,,,2013-01-10 08:00,2013-01-16 17:00,,2012-10-18 08:00,2012-10-24 17:00,2012-10-18 08:00,2012-10-24 17:00,2012-10-18 08:00,2012-10-24 17:00,,2013-01-10 08:00,2013-01-16 17:00,,PT_Normal,,,,,k8BruxOTE0yaWcw99DEZQg,,,,N,0,0,,,2011-12-25 14:21,2012-01-14 07:51,admin,admin
35,89066,1442,12296,794,1,0,N,N,N,CP_Drtn,TT_Task,DT_FixedDUR2,RV_OK,TK_NotStart,A1410,Fifth floor slab,,672,0,112,0,0,0,112,0,0,0,,,,2013-01-17 08:00,2013-01-30 17:00,,2012-10-25 08:00,2012-11-07 17:00,2012-10-25 08:00,2012-11-07 17:00,2012-10-25 08:00,2012-11-07 17:00,,2013-01-17 08:00,2013-01-30 17:00,,PT_Normal,,,,,nEmyHYXZAEK4Tz0UnBpdhg,,,,N,0,0,,,2011-12-25 14:21,2012-01-14 07:51,admin,admin
36,89067,1442,12296,794,1,0,N,N,N,CP_Drtn,TT_Task,DT_FixedDUR2,RV_OK,TK_NotStart,A1420,Sixth floor columns,,672,0,56,0,0,0,56,0,0,0,,,,2013-01-31 08:00,2013-02-06 17:00,,2012-11-08 08:00,2012-11-14 17:00,2012-11-08 08:00,2012-11-14 17:00,2012-11-08 08:00,2012-11-14 17:00,,2013-01-31 08:00,2013-02-06 17:00,,PT_Normal,,,,,x82lJgQ/HU2bFODFOm38ow,,,,N,0,0,,,2011-12-25 14:37,2012-01-14 07:51,admin,admin
37,89068,1442,12296,794,1,0,N,N,N,CP_Drtn,TT_Task,DT_FixedDUR2,RV_OK,TK_NotStart,A1430,Sixth floor slab,,672,0,112,0,0,0,112,0,0,0,,,,2013-02-07 08:00,2013-02-20 17:00,,2012-11-15 08:00,2012-11-28 17:00,2012-11-15 08:00,2012-11-28 17:00,2012-11-15 08:00,2012-11-28 17:00,,2013-02-07 08:00,2013-02-20 17:00,,PT_Normal,,,,,w2W5nx0dSkKTDWH/mQGeUQ,,,,N,0,0,,,2011-12-25 14:37,2012-01-14 07:51,admin,admin
38,89069,1442,12296,794,1,0,N,N,N,CP_Drtn,TT_Task,DT_FixedDUR2,RV_OK,TK_NotStart,A1440,Seventh floor slab,,672,0,112,0,0,0,112,0,0,0,,,,2013-02-28 08:00,2013-03-13 17:00,,2012-12-06 08:00,2012-12-19 17:00,2012-12-06 08:00,2012-12-19 17:00,2012-12-06 08:00,2012-12-19 17:00,,2013-02-28 08:00,2013-03-13 17:00,,PT_Normal,,,,,NbBjd/c++UiY2SPrtAC1pw,,,,N,0,0,,,2011-12-25 14:37,2012-01-14 07:51,admin,admin
39,89070,1442,12296,794,1,0,N,N,N,CP_Drtn,TT_Task,DT_FixedDUR2,RV_OK,TK_NotStart,A1450,Seventh floor columns,,672,0,56,0,0,0,56,0,0,0,,,,2013-02-21 08:00,2013-02-27 17:00,,2012-11-29 08:00,2012-12-05 17:00,2012-11-29 08:00,2012-12-05 17:00,2012-11-29 08:00,2012-12-05 17:00,,2013-02-21 08:00,2013-02-27 17:00,,PT_Normal,,,,,/NGU/QfBC0WL4U/eTC2DyQ,,,,N,0,0,,,2011-12-25 14:37,2012-01-14 07:51,admin,admin
40,89071,1442,12296,794,1,0,N,N,N,CP_Drtn,TT_Task,DT_FixedDUR2,RV_OK,TK_NotStart,A1460,Eighth floor columns,,672,0,56,0,0,0,56,0,0,0,,,,2013-03-14 08:00,2013-03-20 17:00,,2012-12-20 08:00,2012-12-26 17:00,2012-12-20 08:00,2012-12-26 17:00,2012-12-20 08:00,2012-12-26 17:00,,2013-03-14 08:00,2013-03-20 17:00,,PT_Normal,,,,,fWsqrvSMSE2hSGZt5BqLOw,,,,N,0,0,,,2011-12-25 14:37,2012-01-14 07:51,admin,admin
41,89072,1442,12296,794,1,0,N,N,N,CP_Drtn,TT_Task,DT_FixedDUR2,RV_OK,TK_NotStart,A1470,Eighth floor slab,,672,0,112,0,0,0,112,0,0,0,,,,2013-03-21 08:00,2013-04-03 17:00,,2012-12-27 08:00,2013-01-09 17:00,2012-12-27 08:00,2013-01-09 17:00,2012-12-27 08:00,2013-01-09 17:00,,2013-03-21 08:00,2013-04-03 17:00,,PT_Normal,,,,,+HA4CtFr10KyHtHt2HUA3g,,,,N,0,0,,,2011-12-25 14:37,2012-01-14 07:51,admin,admin
42,89073,1442,12296,794,1,0,N,N,N,CP_Drtn,TT_Task,DT_FixedDUR2,RV_OK,TK_NotStart,A1480,Ninth floor columns,,672,0,56,0,0,0,56,0,0,0,,,,2013-04-04 08:00,2013-04-10 17:00,,2013-01-10 08:00,2013-01-16 17:00,2013-01-10 08:00,2013-01-16 17:00,2013-01-10 08:00,2013-01-16 17:00,,2013-04-04 08:00,2013-04-10 17:00,,PT_Normal,,,,,QWDsCYmpqU+669KeEsaEdw,,,,N,0,0,,,2011-12-25 14:44,2012-01-14 07:51,admin,admin
43,89074,1442,12296,794,1,0,N,N,N,CP_Drtn,TT_Task,DT_FixedDUR2,RV_OK,TK_NotStart,A1490,Ninth Floor slab,,672,0,112,0,0,0,112,0,0,0,,,,2013-04-11 08:00,2013-04-24 17:00,,2013-01-17 08:00,2013-01-30 17:00,2013-01-17 08:00,2013-01-30 17:00,2013-01-17 08:00,2013-01-30 17:00,,2013-04-11 08:00,2013-04-24 17:00,,PT_Normal,,,,,DiSHA9wWAkiI+Mz3bDKBeA,,,,N,0,0,,,2011-12-25 14:44,2012-01-14 07:51,admin,admin
44,89075,1442,12296,794,1,0,N,N,N,CP_Drtn,TT_Task,DT_FixedDUR2,RV_OK,TK_NotStart,A1500,Roof floor columns,,672,0,56,0,0,0,56,0,0,0,,,,2013-04-25 08:00,2013-05-01 17:00,,2013-01-31 08:00,2013-02-06 17:00,2013-01-31 08:00,2013-02-06 17:00,2013-01-31 08:00,2013-02-06 17:00,,2013-04-25 08:00,2013-05-01 17:00,,PT_Normal,,,,,8tU3FZunQUqXswjL2Fj8+w,,,,N,0,0,,,2011-12-25 14:44,2012-01-14 07:51,admin,admin
45,89076,1442,12296,794,1,0,N,N,N,CP_Drtn,TT_Task,DT_FixedDUR2,RV_OK,TK_NotStart,A1510,Roof floor slab,,672,0,80,0,0,0,80,0,0,0,,,,2013-05-02 08:00,2013-05-11 17:00,,2013-02-07 08:00,2013-02-16 17:00,2013-02-07 08:00,2013-02-16 17:00,2013-02-07 08:00,2013-02-16 17:00,,2013-05-02 08:00,2013-05-11 17:00,,PT_Normal,,,,,OC1ZIyHSska3vM7f3+/inw,,,,N,0,0,,,2011-12-25 14:44,2012-01-14 07:51,admin,admin
46,89129,1442,12304,794,1,0,N,N,N,CP_Drtn,TT_Task,DT_FixedDUR2,RV_OK,TK_NotStart,A1540,Mobilization,,0,0,112,0,0,0,112,0,0,0,,,,2012-01-01 08:00,2012-01-14 17:00,,2012-01-01 08:00,2012-01-14 17:00,2012-01-01 08:00,2012-01-14 17:00,2012-01-01 08:00,2012-01-14 17:00,,2012-01-01 08:00,2012-01-14 17:00,,PT_Normal,,,,,Owi/Tj7zkEiZvFWBPDCNFQ,,,,Y,0,0,,,2011-12-25 15:55,2011-12-25 16:35,admin,admin
47,89130,1442,12304,794,1,0,N,N,N,CP_Drtn,TT_Task,DT_FixedDUR2,RV_OK,TK_NotStart,A1550,Demobilization,,0,0,24,0,0,0,24,0,0,0,,,,2013-05-09 08:00,2013-05-11 17:00,,2013-05-09 08:00,2013-05-11 17:00,2013-05-09 08:00,2013-05-11 17:00,2013-05-09 08:00,2013-05-11 17:00,,2013-05-09 08:00,2013-05-11 17:00,,PT_Normal,,,,,SW6JQem9r0+Pok+KjXmnvA,,,,Y,0,0,,,2011-12-25 15:55,2012-01-14 07:51,admin,admin
48,89131,1442,12295,794,1,0,N,N,N,CP_Drtn,TT_Task,DT_FixedDUR2,RV_OK,TK_NotStart,A1560,Masonry works,,0,0,1760,0,0,0,1760,0,0,0,,,,2012-07-26 08:00,2013-03-02 17:00,,2012-07-26 08:00,2013-03-02 17:00,2012-07-26 08:00,2013-03-02 17:00,2012-07-26 08:00,2013-03-02 17:00,,2012-07-26 08:00,2013-03-02 17:00,,PT_Normal,,,,,S4aXN1bVY0aBQQ2SRHWb8A,,,,Y,0,0,,,2011-12-25 16:44,2012-01-14 07:51,admin,admin
49,89132,1442,12294,794,1,0,N,N,N,CP_Drtn,TT_Task,DT_FixedDUR2,RV_OK,TK_NotStart,A1570,Internal plater,,0,0,1200,0,0,0,1200,0,0,0,,,,2012-10-24 08:00,2013-03-22 17:00,,2012-10-24 08:00,2013-03-22 17:00,2012-10-24 08:00,2013-03-22 17:00,2012-10-24 08:00,2013-03-22 17:00,,2012-10-24 08:00,2013-03-22 17:00,,PT_Normal,,,,,oakjCjqJ5kiqDBEKd8Hvbw,,,,Y,0,0,,,2011-12-25 16:46,2012-01-14 07:51,admin,admin
50,89133,1442,12294,794,1,0,N,N,N,CP_Drtn,TT_Task,DT_FixedDUR2,RV_OK,TK_NotStart,A1580,External plaster,,200,0,200,0,0,0,200,0,0,0,,,,2013-03-28 08:00,2013-04-21 17:00,,2013-03-03 08:00,2013-03-27 17:00,2013-03-03 08:00,2013-03-27 17:00,2013-03-03 08:00,2013-03-27 17:00,,2013-03-28 08:00,2013-04-21 17:00,,PT_Normal,,,,,CysOQudWLUSICVq+4jhQog,,,,N,0,0,,,2011-12-25 16:46,2012-01-14 07:51,admin,admin
51,89134,1442,12294,794,1,0,N,N,N,CP_Drtn,TT_Task,DT_FixedDUR2,RV_OK,TK_NotStart,A1590,Flooring works&wall cladding,,0,0,1200,0,0,0,1200,0,0,0,,,,2012-11-23 08:00,2013-04-21 17:00,,2012-11-23 08:00,2013-04-21 17:00,2012-11-23 08:00,2013-04-21 17:00,2012-11-23 08:00,2013-04-21 17:00,,2012-11-23 08:00,2013-04-21 17:00,,PT_Normal,,,,,c+C1/gKJ8kmUXEn4fk/drw,,,,Y,0,0,,,2011-12-25 17:32,2012-01-14 07:51,admin,admin
52,89135,1442,12294,794,1,0,N,N,N,CP_Drtn,TT_Task,DT_FixedDUR2,RV_OK,TK_NotStart,A1600,Gebson boards erection,,320,320,240,0,0,0,240,0,0,0,,,,2013-04-12 08:00,2013-05-11 17:00,,2013-03-03 08:00,2013-04-01 17:00,2013-03-03 08:00,2013-04-01 17:00,2013-03-03 08:00,2013-04-01 17:00,,2013-04-12 08:00,2013-05-11 17:00,,PT_Normal,,,,,ADnwzjISEUa6+g2+wHfdVA,,,,N,0,0,,,2011-12-25 17:32,2012-01-14 07:51,admin,admin
53,89136,1442,12294,794,1,0,N,N,N,CP_Drtn,TT_Task,DT_FixedDUR2,RV_OK,TK_NotStart,A1610,Doors erection,,80,80,160,0,0,0,160,0,0,0,,,,2013-04-22 08:00,2013-05-11 17:00,,2013-04-12 08:00,2013-05-01 17:00,2013-04-12 08:00,2013-05-01 17:00,2013-04-12 08:00,2013-05-01 17:00,,2013-04-22 08:00,2013-05-11 17:00,,PT_Normal,,,,,ueytUcIaJE+TTaG7RwvQCw,,,,N,0,0,,,2011-12-25 18:05,2012-01-14 07:51,admin,admin
54,89137,1442,12294,794,1,0,N,N,N,CP_Drtn,TT_Task,DT_FixedDUR2,RV_OK,TK_NotStart,A1620,External cladding & facade,,200,0,160,0,0,0,160,0,0,0,,,,2013-04-22 08:00,2013-05-11 17:00,,2013-03-28 08:00,2013-04-16 17:00,2013-03-28 08:00,2013-04-16 17:00,2013-03-28 08:00,2013-04-16 17:00,,2013-04-22 08:00,2013-05-11 17:00,,PT_Normal,,,,,wXfsgN9uFEKGkPuHJ+e/Ew,,,,N,0,0,,,2011-12-25 18:05,2012-01-14 07:51,admin,admin
55,89138,1442,12294,794,1,0,N,N,N,CP_Drtn,TT_Task,DT_FixedDUR2,RV_OK,TK_NotStart,A1630,Painting works,,0,0,1200,0,0,0,1200,0,0,0,,,,2012-12-13 08:00,2013-05-11 17:00,,2012-12-13 08:00,2013-05-11 17:00,2012-12-13 08:00,2013-05-11 17:00,2012-12-13 08:00,2013-05-11 17:00,,2012-12-13 08:00,2013-05-11 17:00,,PT_Normal,,,,,CNUVyb/US0u54nQG6gLXfw,,,,Y,0,0,,,2011-12-25 18:05,2012-01-14 07:51,admin,admin
56,89139,1442,12294,794,1,0,N,N,N,CP_Drtn,TT_Task,DT_FixedDUR2,RV_OK,TK_NotStart,A1640,Sanitary Fixtures installation,,0,0,160,0,0,0,160,0,0,0,,,,2013-04-22 08:00,2013-05-11 17:00,,2013-04-22 08:00,2013-05-11 17:00,2013-04-22 08:00,2013-05-11 17:00,2013-04-22 08:00,2013-05-11 17:00,,2013-04-22 08:00,2013-05-11 17:00,,PT_Normal,,,,,LYmroZRauE+0OUClUGEiGQ,,,,Y,0,0,,,2011-12-25 18:14,2012-01-14 07:51,admin,admin
57,89141,1442,12305,794,1,0,N,N,N,CP_Drtn,TT_Task,DT_FixedDUR2,RV_OK,TK_NotStart,A1650,Split units,,104,104,56,0,0,0,56,0,0,0,,,,2013-05-05 08:00,2013-05-11 17:00,,2013-04-22 08:00,2013-04-28 17:00,2013-04-22 08:00,2013-04-28 17:00,2013-04-22 08:00,2013-04-28 17:00,,2013-05-05 08:00,2013-05-11 17:00,,PT_Normal,,,,,UQ+HpTogKEenym9ZQkyAlQ,,,,N,0,0,,,2011-12-25 18:21,2012-01-14 07:51,admin,admin
58,89142,1442,12305,794,1,0,N,N,N,CP_Drtn,TT_Task,DT_FixedDUR2,RV_OK,TK_NotStart,A1660,Air grilles,,48,48,112,0,0,0,112,0,0,0,,,,2013-04-28 08:00,2013-05-11 17:00,,2013-04-22 08:00,2013-05-05 17:00,2013-04-22 08:00,2013-05-05 17:00,2013-04-22 08:00,2013-05-05 17:00,,2013-04-28 08:00,2013-05-11 17:00,,PT_Normal,,,,,sidlxp8nWkevI7QMaaIeQw,,,,N,0,0,,,2011-12-25 18:22,2012-01-14 07:51,admin,admin
59,89143,1442,12306,794,1,0,N,N,N,CP_Drtn,TT_Task,DT_FixedDUR2,RV_OK,TK_NotStart,A1670,Drainage works,,144,0,80,0,0,0,80,0,0,0,,,,2013-04-10 08:00,2013-04-19 17:00,,2013-03-23 08:00,2013-04-01 17:00,2013-03-23 08:00,2013-04-01 17:00,2013-03-23 08:00,2013-04-01 17:00,,2013-04-10 08:00,2013-04-19 17:00,,PT_Normal,,,,,Mti6X0YMoUKUT2Uji/bTRg,,,,N,0,0,,,2011-12-25 18:23,2012-01-14 07:51,admin,admin
60,89145,1442,12299,794,1,0,N,N,N,CP_Drtn,TT_Task,DT_FixedDUR2,RV_OK,TK_NotStart,A1690,Electrical water heater installation,,0,0,56,0,0,0,56,0,0,0,,,,2013-05-05 08:00,2013-05-11 17:00,,2013-05-05 08:00,2013-05-11 17:00,2013-05-05 08:00,2013-05-11 17:00,2013-05-05 08:00,2013-05-11 17:00,,2013-05-05 08:00,2013-05-11 17:00,,PT_Normal,,,,,7Fmcfgdbv0GVXK2I3BThow,,,,Y,0,0,,,2011-12-25 18:26,2012-01-14 07:51,admin,admin
61,89146,1442,12299,794,1,0,N,N,N,CP_Drtn,TT_Task,DT_FixedDUR2,RV_OK,TK_NotStart,A1700,Power circuits&socket outlets,,400,400,200,0,0,0,200,0,0,0,,,,2013-04-17 08:00,2013-05-11 17:00,,2013-02-26 08:00,2013-03-22 17:00,2013-02-26 08:00,2013-03-22 17:00,2013-02-26 08:00,2013-03-22 17:00,,2013-04-17 08:00,2013-05-11 17:00,,PT_Normal,,,,,A/5x62VFa0OgpeDba/jV9Q,,,,N,0,0,,,2011-12-25 18:27,2012-01-14 07:51,admin,admin
62,89147,1442,12299,794,1,0,N,N,N,CP_Drtn,TT_Task,DT_FixedDUR2,RV_OK,TK_NotStart,A1710,Telephone outlets,,400,400,160,0,0,0,160,0,0,0,,,,2013-04-22 08:00,2013-05-11 17:00,,2013-03-03 08:00,2013-03-22 17:00,2013-03-03 08:00,2013-03-22 17:00,2013-03-03 08:00,2013-03-22 17:00,,2013-04-22 08:00,2013-05-11 17:00,,PT_Normal,,,,,pPi6sjsO4EaDvXJ+aBGISw,,,,N,0,0,,,2011-12-25 18:27,2012-01-14 07:51,admin,admin
63,89148,1442,12305,794,1,0,N,N,N,CP_Drtn,TT_Task,DT_FixedDUR2,RV_OK,TK_NotStart,A1720,Fans,,80,80,80,0,0,0,80,0,0,0,,,,2013-05-02 08:00,2013-05-11 17:00,,2013-04-22 08:00,2013-05-01 17:00,2013-04-22 08:00,2013-05-01 17:00,2013-04-22 08:00,2013-05-01 17:00,,2013-05-02 08:00,2013-05-11 17:00,,PT_Normal,,,,,SE6xEmBQBE24G3qp/bzAbA,,,,N,0,0,,,2011-12-25 18:31,2012-01-14 07:51,admin,admin
64,89149,1442,12305,794,1,0,N,N,N,CP_Drtn,TT_Task,DT_FixedDUR2,RV_OK,TK_NotStart,A1730,Duct works,,48,0,1200,0,0,0,1200,0,0,0,,,,2012-11-29 08:00,2013-04-27 17:00,,2012-11-23 08:00,2013-04-21 17:00,2012-11-23 08:00,2013-04-21 17:00,2012-11-23 08:00,2013-04-21 17:00,,2012-11-29 08:00,2013-04-27 17:00,,PT_Normal,,,,,XLA4NuuQYkORtuUkmtBk9A,,,,N,0,0,,,2011-12-25 18:31,2012-01-14 07:51,admin,admin
65,89150,1442,12299,794,1,0,N,N,N,CP_Drtn,TT_Task,DT_FixedDUR2,RV_OK,TK_NotStart,A1740,Lighting outlets&switches,,400,400,160,0,0,0,160,0,0,0,,,,2013-04-22 08:00,2013-05-11 17:00,,2013-03-03 08:00,2013-03-22 17:00,2013-03-03 08:00,2013-03-22 17:00,2013-03-03 08:00,2013-03-22 17:00,,2013-04-22 08:00,2013-05-11 17:00,,PT_Normal,,,,,4OAlKT6TGUWyXTI0w1QlQA,,,,N,0,0,,,2011-12-25 18:34,2012-01-14 07:51,admin,admin
66,89151,1442,12299,794,1,0,N,N,N,CP_Drtn,TT_Task,DT_FixedDUR2,RV_OK,TK_NotStart,A1750,Distribution boards,,0,0,120,0,0,0,120,0,0,0,,,,2013-04-27 08:00,2013-05-11 17:00,,2013-04-27 08:00,2013-05-11 17:00,2013-04-27 08:00,2013-05-11 17:00,2013-04-27 08:00,2013-05-11 17:00,,2013-04-27 08:00,2013-05-11 17:00,,PT_Normal,,,,,C/lxy1ofUkCvHOYsxeCx/A,,,,Y,0,0,,,2011-12-25 18:38,2012-01-14 07:51,admin,admin
67,89152,1442,12299,794,1,0,N,N,N,CP_Drtn,TT_Task,DT_FixedDUR2,RV_OK,TK_NotStart,A1760,Fire alarm system,,0,0,80,0,0,0,80,0,0,0,,,,2013-05-02 08:00,2013-05-11 17:00,,2013-05-02 08:00,2013-05-11 17:00,2013-05-02 08:00,2013-05-11 17:00,2013-05-02 08:00,2013-05-11 17:00,,2013-05-02 08:00,2013-05-11 17:00,,PT_Normal,,,,,7hUUBNvkR02rrP9uLBL35Q,,,,Y,0,0,,,2011-12-25 18:38,2012-01-14 07:51,admin,admin
68,89153,1442,12299,794,1,0,N,N,N,CP_Drtn,TT_Task,DT_FixedDUR2,RV_OK,TK_NotStart,A1770,Telecomunication systems,,0,0,80,0,0,0,80,0,0,0,,,,2013-05-02 08:00,2013-05-11 17:00,,2013-05-02 08:00,2013-05-11 17:00,2013-05-02 08:00,2013-05-11 17:00,2013-05-02 08:00,2013-05-11 17:00,,2013-05-02 08:00,2013-05-11 17:00,,PT_Normal,,,,,QY8QfVG5N0uAya4XKVCHBw,,,,Y,0,0,,,2011-12-25 19:08,2012-01-14 07:51,admin,admin
69,89154,1442,12294,794,1,0,N,N,N,CP_Drtn,TT_Task,DT_FixedDUR2,RV_OK,TK_NotStart,A1780,External paintings,,200,200,160,0,0,0,160,0,0,0,,,,2013-04-22 08:00,2013-05-11 17:00,,2013-03-28 08:00,2013-04-16 17:00,2013-03-28 08:00,2013-04-16 17:00,2013-03-28 08:00,2013-04-16 17:00,,2013-04-22 08:00,2013-05-11 17:00,,PT_Normal,,,,,wg9nbEIiKEOM75UROo9iwg,,,,N,0,0,,,2011-12-25 19:13,2012-01-14 07:51,admin,admin
70,89155,1442,12306,794,1,0,N,N,N,CP_Drtn,TT_Task,DT_FixedDUR2,RV_OK,TK_NotStart,A1790,Water supply system,,400,400,960,0,0,0,960,0,0,0,,,,2013-01-12 08:00,2013-05-11 17:00,,2012-11-23 08:00,2013-03-22 17:00,2012-11-23 08:00,2013-03-22 17:00,2012-11-23 08:00,2013-03-22 17:00,,2013-01-12 08:00,2013-05-11 17:00,,PT_Normal,,,,,HU1jr8mr2Um1CbmV0gZ1OA,,,,N,0,0,,,2011-12-25 19:17,2012-01-14 07:51,admin,admin
71,89156,1442,12307,794,1,0,N,N,N,CP_Drtn,TT_Task,DT_FixedDUR2,RV_OK,TK_NotStart,A1800,Piping system,,144,0,56,0,0,0,56,0,0,0,,,,2013-04-25 08:00,2013-05-01 17:00,,2013-04-07 08:00,2013-04-13 17:00,2013-04-07 08:00,2013-04-13 17:00,2013-04-07 08:00,2013-04-13 17:00,,2013-04-25 08:00,2013-05-01 17:00,,PT_Normal,,,,,L1URNTTF+UKwRfj0x+NIWg,,,,N,0,0,,,2011-12-25 19:24,2012-01-14 07:51,admin,admin
72,89157,1442,12307,794,1,0,N,N,N,CP_Drtn,TT_Task,DT_FixedDUR2,RV_OK,TK_NotStart,A1810,Fire hose cabinet installation,,144,144,40,0,0,0,40,0,0,0,,,,2013-05-07 08:00,2013-05-11 17:00,,2013-04-19 08:00,2013-04-23 17:00,2013-04-19 08:00,2013-04-23 17:00,2013-04-19 08:00,2013-04-23 17:00,,2013-05-07 08:00,2013-05-11 17:00,,PT_Normal,,,,,K68+hWhFE0GoWZycGFkKMw,,,,N,0,0,,,2011-12-25 19:24,2012-01-14 07:51,admin,admin
73,89158,1442,12307,794,1,0,N,N,N,CP_Drtn,TT_Task,DT_FixedDUR2,RV_OK,TK_NotStart,A1820,Fire pump installation,,144,0,40,0,0,0,40,0,0,0,,,,2013-05-02 08:00,2013-05-06 17:00,,2013-04-14 08:00,2013-04-18 17:00,2013-04-14 08:00,2013-04-18 17:00,2013-04-14 08:00,2013-04-18 17:00,,2013-05-02 08:00,2013-05-06 17:00,,PT_Normal,,,,,Ynii13dCREiPiSkDduP7Rg,,,,N,0,0,,,2011-12-25 19:24,2012-01-14 07:51,admin,admin
74,89159,1442,12294,794,1,0,N,N,N,CP_Drtn,TT_Task,DT_FixedDUR2,RV_OK,TK_NotStart,A1680,Roof insulation,,200,200,160,0,0,0,160,0,0,0,,,,2013-04-22 08:00,2013-05-11 17:00,,2013-03-28 08:00,2013-04-16 17:00,2013-03-28 08:00,2013-04-16 17:00,2013-03-28 08:00,2013-04-16 17:00,,2013-04-22 08:00,2013-05-11 17:00,,PT_Normal,,,,,0tQrnYTqZ0OJhSMKqmva7w,,,,N,0,0,,,2011-12-25 19:26,2012-01-14 07:51,admin,admin
